# QTS - PHX3 DC1 (54MW) Construction Schedule - Current TFO Baseline

Schedule from Primavera P6, 2024-11-13 to 2026-08-26, data date 2026-01-14, A marks actual dates.

## Calendars

- QTS-PHX3 DC1 - 5 day w/ Holidays: Mon-Fri 08:00-12:00, 13:00-17:00; Sat-Sun off. Exceptions (off unless hours are given): 2024-11-28 to 2024-11-29, 2024-12-25, 2025-01-01, 2025-01-20, 2025-05-26, 2025-07-04, 2025-09-01, 2025-11-27 to 2025-11-28, 2025-12-24 to 2025-12-26, 2026-01-01 to 2026-01-02, 2026-01-19, 2026-05-25, 2026-07-03.
- QTS-PHX3 DC1 - 6 day w/ Holidays: Mon-Sat 08:00-12:00, 13:00-17:00; Sun off. Exceptions (off unless hours are given): 2024-11-28 to 2024-11-29, 2024-12-25, 2025-01-01, 2025-01-20, 2025-05-26, 2025-07-04, 2025-09-01, 2025-11-27 to 2025-11-28, 2025-12-25, 2026-01-01, 2026-01-19, 2026-05-25, 2026-07-04.
- **GLOBAL - 5 Day Workweek w/ Basic Holidays: Mon-Fri 08:00-12:00, 13:00-17:00; Sat-Sun off. Exceptions (off unless hours are given): 2024-11-28 to 2024-11-29, 2024-12-25, 2025-01-01, 2025-01-20, 2025-05-26, 2025-07-04, 2025-09-01, 2025-11-27 to 2025-11-28, 2025-12-25, 2026-01-01, 2026-01-19, 2026-05-25, 2026-07-03.
- QTS-PHX3 DC1 - 7 day No Holidays: Mon-Sun 08:00-12:00, 13:00-17:00.

## Schedule

| ID | WBS | Activity | Type | Duration | Start | Finish | Predecessors | Complete | Planned start | Planned finish | Total float | Free float | Constraint | Project Section-1 | Baseline | Layton Responsible Party | Project Section | Allucent CSI Group |
| --- | --- | --- | --- | --- | --- | --- | --- | --- | --- | --- | --- | --- | --- | --- | --- | --- | --- | --- |
|  | 1 | **Executive Summary** |  |  | 2025-01-15 | 2026-08-26 |  |  |  |  |  |  |  |  |  |  |  |  |
|  | 1 | **Milestones** |  |  | 2025-01-15 | 2026-08-26 |  |  |  |  |  |  |  |  |  |  |  |  |
|  | 1 | **Construction Milestones** |  |  | 2025-01-15 | 2026-08-26 |  |  |  |  |  |  |  |  |  |  |  |  |
| QTS-1030 |  | Start Construction | milestone | 0d | 2025-01-15 A | 2025-01-15 A | QTS-1371 | 100% | 2025-03-17 | 2025-03-17 |  |  |  | Exec Summary | IGMP |  |  |  |
| QTS-1020 |  | Site Mobilized | milestone | 0d | 2025-01-22 A | 2025-01-22 A | QTS-1201 FF | 100% | 2025-03-17 | 2025-03-17 |  |  |  | Exec Summary | IGMP |  |  |  |
| QTS-1031 |  | Site Preparation Pad Ready | milestone | 0d | 2025-03-14 A | 2025-03-14 A | QTS-4721 FF, QTS-41901 FF, QTS-41921 FF | 100% |  |  |  |  |  | Exec Summary | IGMP |  |  |  |
| QTS-8671 |  | Start Deep Foundations | milestone | 0d | 2025-03-17 A | 2025-03-17 A | QTS-10851 SS | 100% |  |  |  |  |  | Exec Summary | IGMP |  |  |  |
| QTS-1010 |  | Design Complete | milestone | 0d | 2025-04-07 A | 2025-04-07 A | QTS-15371 FF | 100% | 2025-03-31 | 2025-03-31 |  |  |  | Exec Summary | IGMP |  |  |  |
| QTS-1015 |  | Permitting Complete | milestone | 0d | 2025-04-07 A | 2025-04-07 A | QTS-19141 FF | 100% |  |  |  |  |  | Exec Summary | IGMP |  |  |  |
| QTS-19471 |  | Start Structural Steel | milestone | 0d | 2025-04-30 A | 2025-04-30 A | QTS-16911 SS | 100% | 2025-05-07 | 2025-05-07 |  |  |  | Exec Summary | IGMP |  |  |  |
| QTS-1033 |  | Foundations Complete (Footings, Foundation Walls, & Slabs) | milestone | 0d | 2025-06-25 A | 2025-06-25 A | QTS-15721 FF | 100% |  |  |  |  |  | Exec Summary | IGMP | Jason Johnston | Exec Summary | 01ADMIN |
| QTS-M3000 |  | Start Infrastructure Buildout | milestone | 0d | 2025-08-22 A | 2025-08-22 A | QTS-25441 SS | 100% |  |  |  |  |  | Exec Summary | IGMP | Jason Johnston | Exec Summary |  |
| QTS-1035 |  | Steel Complete | milestone | 0d | 2025-09-02 A | 2025-09-02 A | QTS-22621 FF, QTS-22981 FF | 100% |  |  |  |  |  | Exec Summary | IGMP | Jason Johnston | Exec Summary | 01ADMIN |
| QTS-1040 |  | Tilt Up Panels Complete | milestone | 0d | 2025-10-08 A | 2025-10-08 A | QTS-23261 FF | 100% |  |  |  |  |  | Exec Summary | IGMP | Jason Johnston | Exec Summary | 01ADMIN |
| QTS-1050 |  | Weather Tight (Dry-In) | milestone | 0d | 2025-10-15 A | 2025-10-15 A | QTS-23911 FF | 100% |  |  |  |  |  | Exec Summary | IGMP | Jason Johnston | Exec Summary | 01ADMIN |
| QTS-1045 |  | Building Enclosure Complete (Roof, Exterior Walls, Windows & Doors) | milestone | 0d | 2026-01-21 | 2026-01-21 | QTS-28991 FF, QTS-23261 FF, QTS-25141 FF, QTS-99480 FF, QTS-99470 FF |  |  |  | 72d |  |  | Exec Summary | IGMP | Jason Johnston | Exec Summary |  |
| QTS-1000 |  | GMP Contract Executed | milestone | 0d | 2026-01-22 | 2026-01-22 | QTS-11901 FF, QTS-1010 FF, QTS-18931 FF, QTS-19131 FF |  |  |  | 152d |  |  | Exec Summary | IGMP | Jason Johnston | Exec Summary | 01ADMIN |
| QTS-1000700 |  | FOH Energization Ready | milestone | 0d | 2026-02-02 | 2026-02-02 | QTS-120370 SF, DC1-SWBD-HSE-L2-1000 FF+1d |  |  |  | -6d | 0d | finish on or after 2026-02-02 | Exec Summary | IGMP | Jason Johnston | Exec Summary | 01ADMIN |
| QTS-1090 |  | Phase 1 - L3 Startup Cx Scripts Approved | milestone | 0d | 2026-02-02 | 2026-02-02 | QTS-24091 FF |  |  |  | -6d | 0d | as late as possible | Exec Summary | IGMP | Jason Johnston | Exec Summary |  |
| QTS-120370 |  | Start Commissioning (L3) | milestone | 0d | 2026-02-03 | 2026-02-03 | QTS-1030 SS, QTS-1090 |  |  |  | -6d | 0d | as late as possible | Exec Summary | IGMP | Jason Johnston | Exec Summary |  |
| QTS-102740 |  | BOH Early Access Energization Ready | milestone | 0d | 2026-02-03 | 2026-02-03 | DC1-SWBD-HSE-L2-1000 FF, DC1-SWBD-HSE-L3-1000 FF, DC1-SWBD-HSE-L3-1030 FF, QTS-1000700 FF+1d |  |  |  | -6d | 66d | finish on or before 2026-01-26 | Exec Summary | IGMP | Jason Johnston | Exec Summary |  |
| QTS-M1000 |  | Permanent Power Available | milestone | 0d | 2026-02-09 | 2026-02-09 | QTS-1101 FF |  |  |  | 3d | 2d |  | Exec Summary | IGMP | Jason Johnston | Exec Summary |  |
| QTS-1000520 |  | Network Live | milestone | 0d | 2026-02-11 | 2026-02-11 | QTS-1002990 FF |  |  |  | 1d | 0d |  | Exec Summary | IGMP | Jason Johnston | Exec Summary |  |
| QTS-1000710 |  | DH 2100 & 1100 Energization Ready (02/19/2025) | milestone | 0d | 2026-02-11 | 2026-02-11 | QTS-1000700 FF, QTS-1115.B FF, QTS-1115.A FF, QTS-1000520 FF |  |  |  | 1d | 0d | finish on or before 2026-02-19 | Exec Summary | IGMP | Jason Johnston | Exec Summary |  |
| QTS-1091 |  | L4 Functional Performance Testing Cx Scripts Approved | milestone | 0d | 2026-03-24 | 2026-03-24 | QTS-120370 SF |  |  |  | 6d | 0d | as late as possible | Exec Summary | IGMP | Jason Johnston | Exec Summary |  |
| QTS-1065 |  | Elect & Mech OFCI L2 Interior Installation Complete | milestone | 0d | 2026-04-09 | 2026-04-09 | QTS-4271 FF, DC1-RPP-L2-3490 FF, DC1-RPP-L2-3480 FF, DC1-RPP-L2-3470 FF, DC1-RPP-L2-3460 FF, DC1-RPP-L2-3450 FF, DC1-RPP-L2-3440 FF, DC1-RPP-L2-3550 FF, DC1-RPP-L2-3540 FF, DC1-RPP-L2-3530 FF, DC1-RPP-L2-3520 FF, DC1-RPP-L2-3510 FF, DC1-RPP-L2-3500 FF, DC1-RPP-L2-3610 FF, DC1-RPP-L2-3600 FF, DC1-RPP-L2-3590 FF, DC1-RPP-L2-3580 FF, DC1-RPP-L2-3570 FF, DC1-RPP-L2-3560 FF, DC1-RPP-L2-3670 FF, DC1-RPP-L2-3660 FF, DC1-RPP-L2-3650 FF, DC1-RPP-L2-3640 FF, DC1-RPP-L2-3630 FF, DC1-RPP-L2-3620 FF, DC1-RPP-L2-3730 FF, DC1-RPP-L2-3720 FF, DC1-RPP-L2-3710 FF, DC1-RPP-L2-3700 FF, DC1-RPP-L2-3690 FF, DC1-RPP-L2-3680 FF, DC1-RPP-L2-3790 FF, DC1-RPP-L2-3780 FF, DC1-RPP-L2-3770 FF, DC1-RPP-L2-3760 FF, DC1-RPP-L2-3750 FF, DC1-RPP-L2-3740 FF |  |  |  | 80d | 30d |  | Exec Summary | IGMP | Jason Johnston | Exec Summary |  |
| QTS-1130.A |  | FOH / BOH / Corridors Substantial Completion / TCO (05/01/26) | milestone | 0d | 2026-05-06 | 2026-05-06 | DC1-HSE-TAB-1000 FF, QTS-1004100 FF, QTS - 24451 FF, QTS-102740 FF, QTS-99130 FF, QTS-46891 FF, QTS-120010 FF, QTS-120330 FF, QTS-120250 FF |  |  |  | 78d |  | finish on or after 2026-05-06 | Exec Summary | IGMP | Jason Johnston | Exec Summary |  |
| QTS-1140 |  | Closeout Complete | milestone | 0d | 2026-08-26 | 2026-08-26 | QTS-1070.15 FF, QTS-11011 FF, QTS-11001 FF, QTS-30891 FF, QTS-31001 FF, QTS-29401 FF, QTS-30881 FF, QTS-30821 FF, QTS-19131 FF, QTS-99130 FF, QTS-18371 FF, QTS-17921 FF |  |  |  | 0d |  |  | Exec Summary | IGMP | Jason Johnston | Exec Summary |  |
| QTS-1150 |  | Final Certificate of Occupancy | milestone | 0d | 2026-08-26 | 2026-08-26 | QTS-29461 FF, QTS-1110.16 FF, QTS-1070.15 FF, QTS-1120.14 FF, QTS-1060.13 FF, QTS-1115.B10 FF, QTS-1002080 FF, QTS-1120.11 FF, QTS-1130.A10 FF, QTS-1130.F FF, QTS-1130.A FF, QTS-1130.B FF, QTS-1130.C FF, QTS-1130.D FF, QTS-1130.E FF, QTS-1110.6 FF |  |  |  | 0d |  |  | Exec Summary | IGMP | Jason Johnston | Exec Summary |  |
| QTS-1160 |  | Final Completion | milestone | 0d | 2026-08-26 | 2026-08-26 | DC1-L4-Cx-1045 FF, DC1-L4-Cx-1035 FF, DC1-L4-Cx-1025 FF, DC1-L4-Cx-1015 FF, QTS-49401 FF, QTS-14121 FF, DC1-DH1300-LB-1020 FF, DC1-DH2300-LB-1020 FF, DC1-DH1200-LB-1020 FF, DC1-DH2200-LB-1020 FF, DC1-DH1100-LB-1020 FF, DC1-DH2100-LB-1030 FF, QTS-101690 FF, QTS-101680 FF, QTS-23071 FF, QTS-22751 FF, QTS-22521 FF, QTS-13261 FF, QTS-14011 FF, QTS-50691 FF, QTS-13271 FF, QTS-15211 FF, QTS-14391 FF, QTS-12481 FF, DC1-POD-AC-L2-2660 FF, DC1-POD-AC-L2-2390 FF, DC1-POD-AC-L2-3390 FF, DC1-POD-AC-L2-3380 FF, DC1-POD-AC-L2-3370 FF, DC1-POD-AC-L2-3360 FF, DC1-POD-AC-L2-3350 FF, DC1-POD-AC-L2-3340 FF, DC1-POD-AC-L2-3330 FF, DC1-POD-AC-L2-3320 FF, DC1-POD-AC-L2-3310 FF, DC1-POD-AC-L2-3300 FF, DC1-POD-AC-L2-3290 FF, DC1-POD-AC-L2-3280 FF, DC1-POD-AC-L2-3270 FF, DC1-POD-AC-L2-3260 FF, DC1-POD-AC-L2-3250 FF, DC1-POD-AC-L2-3240 FF, DC1-POD-AC-L2-3230 FF, DC1-POD-AC-L2-3220 FF, DC1-POD-AC-L2-3210 FF, DC1-POD-AC-L2-3200 FF, DC1-POD-AC-L2-3190 FF, DC1-POD-AC-L2-3180 FF, DC1-POD-AC-L2-3170 FF, DC1-POD-AC-L2-3160 FF, DC1-POD-AC-L2-3150 FF, DC1-POD-AC-L2-3140 FF, DC1-POD-AC-L2-3130 FF, DC1-POD-AC-L2-3120 FF, DC1-POD-AC-L2-3110 FF, DC1-POD-AC-L2-3100 FF, DC1-POD-AC-L2-3090 FF, DC1-POD-AC-L2-3080 FF, DC1-POD-AC-L2-3070 FF, DC1-POD-AC-L2-3060 FF, DC1-POD-AC-L2-3050 FF, DC1-POD-AC-L2-3040 FF, DC1-POD-AC-L2-3030 FF, DC1-POD-AC-L2-3020 FF, DC1-POD-AC-L2-3010 FF, DC1-POD-AC-L2-3000 FF, DC1-POD-AC-L2-2990 FF, DC1-POD-AC-L2-2980 FF, DC1-POD-AC-L2-2970 FF, DC1-POD-AC-L2-2960 FF, DC1-POD-AC-L2-2950 FF, DC1-POD-AC-L2-2940 FF, DC1-POD-AC-L2-2930 FF, DC1-POD-AC-L2-2920 FF, DC1-POD-AC-L2-2910 FF, DC1-POD-AC-L2-2900 FF, DC1-POD-AC-L2-2890 FF, DC1-POD-AC-L2-2880 FF, DC1-POD-AC-L2-2870 FF, DC1-POD-AC-L2-2860 FF, DC1-POD-AC-L2-2850 FF, DC1-POD-AC-L2-2840 FF, DC1-POD-AC-L2-2830 FF, DC1-POD-AC-L2-2820 FF, DC1-POD-AC-L2-2810 FF, DC1-POD-AC-L2-2800 FF, DC1-POD-AC-L2-2790 FF, DC1-POD-AC-L2-2780 FF, DC1-POD-AC-L2-2770 FF, DC1-POD-AC-L2-2760 FF, DC1-POD-AC-L2-2750 FF, DC1-POD-AC-L2-2740 FF, DC1-POD-AC-L2-2730 FF, DC1-POD-AC-L2-2720 FF, DC1-POD-AC-L2-2710 FF, DC1-POD-AC-L2-2700 FF, DC1-POD-AC-L2-2690 FF, DC1-POD-AC-L2-2680 FF, DC1-POD-AC-L2-2670 FF, DC1-POD-AC-L2-2650 FF, DC1-POD-AC-L2-2640 FF, DC1-POD-AC-L2-2630 FF, DC1-POD-AC-L2-2620 FF, DC1-POD-AC-L2-2610 FF, DC1-POD-AC-L2-2600 FF, DC1-POD-AC-L2-2590 FF, DC1-POD-AC-L2-2580 FF, DC1-POD-AC-L2-2570 FF, DC1-POD-AC-L2-2560 FF, DC1-POD-AC-L2-2550 FF, DC1-POD-AC-L2-2540 FF, DC1-POD-AC-L2-2530 FF, DC1-POD-AC-L2-2520 FF, DC1-POD-AC-L2-2510 FF, DC1-POD-AC-L2-2500 FF, DC1-POD-AC-L2-2490 FF, DC1-POD-AC-L2-2480 FF, DC1-POD-AC-L2-2470 FF, DC1-POD-AC-L2-2460 FF, DC1-POD-AC-L2-2450 FF, DC1-POD-AC-L2-2440 FF, DC1-POD-AC-L2-2430 FF, DC1-POD-AC-L2-2420 FF, DC1-POD-AC-L2-2410 FF, DC1-POD-AC-L2-2400 FF, DC1-POD-AC-L2-2380 FF, DC1-POD-AC-L2-2370 FF, DC1-POD-AC-L2-2360 FF, DC1-POD-AC-L2-2350 FF, DC1-POD-AC-L2-2340 FF, DC1-POD-AC-L2-2330 FF, DC1-POD-AC-L2-2320 FF, DC1-POD-AC-L2-2310 FF, DC1-POD-AC-L2-2300 FF, DC1-POD-AC-L2-2290 FF, DC1-POD-AC-L2-2280 FF, DC1-POD-AC-L2-2270 FF, DC1-POD-AC-L2-2260 FF, DC1-POD-AC-L2-2250 FF, DC1-POD-AC-L2-2240 FF, DC1-POD-AC-L2-2230 FF, DC1-POD-AC-L2-2220 FF, DC1-POD-AC-L2-2210 FF, DC1-POD-AC-L2-2200 FF, DC1-POD-AC-L2-2190 FF, DC1-POD-AC-L2-2180 FF, DC1-POD-AC-L2-2170 FF, DC1-POD-AC-L2-2160 FF, DC1-POD-AC-L2-2150 FF, DC1-POD-AC-L2-2140 FF, DC1-POD-AC-L2-2130 FF, DC1-POD-AC-L2-2120 FF, DC1-POD-AC-L2-2110 FF, DC1-POD-AC-L2-2100 FF, DC1-POD-AC-L2-2090 FF, DC1-POD-AC-L2-2080 FF, DC1-POD-AC-L2-2070 FF, DC1-POD-AC-L2-2060 FF, DC1-POD-AC-L2-2050 FF, DC1-POD-AC-L2-2040 FF, DC1-POD-AC-L2-2030 FF, DC1-POD-AC-L2-2020 FF, DC1-POD-AC-L2-2010 FF, DC1-POD-AC-L2-2000 FF, DC1-POD-AC-L2-1270 FF, DC1-POD-AC-L2-1260 FF, DC1-POD-AC-L2-1250 FF, DC1-POD-AC-L2-1240 FF, DC1-POD-AC-L2-1230 FF, DC1-POD-AC-L2-1220 FF, DC1-POD-AC-L2-1210 FF, DC1-POD-AC-L2-1200 FF, DC1-POD-AC-L2-1190 FF, DC1-POD-AC-L2-1180 FF, DC1-POD-AC-L2-1170 FF, DC1-POD-AC-L2-1160 FF, DC1-POD-AC-L2-1150 FF, DC1-POD-AC-L2-1140 FF, DC1-POD-AC-L2-1130 FF, DC1-POD-AC-L2-1120 FF, DC1-POD-AC-L2-1110 FF, DC1-POD-AC-L2-1100 FF, DC1-POD-AC-L2-1090 FF, DC1-POD-AC-L2-1080 FF, DC1-POD-AC-L2-1070 FF, DC1-POD-AC-L2-1060 FF, DC1-POD-AC-L2-1050 FF, DC1-POD-AC-L2-1040 FF, DC1-POD-AC-L2-1030 FF, DC1-POD-AC-L2-1020 FF, DC1-POD-AC-L2-1010 FF, DC1-POD-AC-L2-1000 FF, QTS-50701 FF, QTS-50711 FF, QTS-50571 FF, QTS-50561 FF, QTS-50551 FF, QTS-50541 FF, QTS-50531 FF, QTS-50521 FF, QTS-50511 FF, QTS-50101 FF, QTS-30161 FF, QTS-8401 FF, QTS-8381 FF, QTS-8361 FF, QTS-8341 FF, QTS-8321 FF, QTS-17801 FF, QTS-8501 FF, QTS-8481 FF, QTS-8461 FF, QTS-8441 FF, QTS-8421 FF, QTS-17841 FF, QTS-8201 FF, QTS-8181 FF, QTS-8301 FF, QTS-8281 FF, QTS-8161 FF, QTS-8141 FF, QTS-8261 FF, QTS-8241 FF, QTS-8121 FF, QTS-8101 FF, QTS-8001 FF, QTS-7981 FF, QTS-8081 FF, QTS-8221 FF, QTS-17761 FF, QTS-17721 FF, QTS-8061 FF, QTS-8041 FF, QTS-7961 FF, QTS-7941 FF, QTS-8021 FF, QTS-6341 FF, QTS-42261 FF, QTS-24941 FF, QTS-17681 FF, QTS-28931 FF, QTS-14591 FF, QTS-14421 FF, QTS-21961 FF, QTS-29011 FF, QTS-29331 FF, QTS-30381 FF, QTS-22161 FF, QTS-1140 FF, QTS-1020 FF, QTS-1000 FF, QTS-1010 FF, QTS-1140, QTS-1150 FF, QTS-1033 FF, QTS-15551 FF, QTS-14601 FF, QTS-7011 FF, QTS-24521 FF, QTS-25271 FF, QTS-24531 FF, QTS-25281 FF, QTS-24541 FF, QTS-25291 FF, QTS-25901 FF, QTS-26871 FF, QTS-25911 FF, QTS-26881 FF, QTS-24551 FF, QTS-25301 FF, QTS-14431, QTS-18291 FF, QTS-42091 FF, QTS-25331 FF, QTS-18251 FF, QTS-6801 FF, QTS-18271 FF, QTS-18311 FF, QTS-18331 FF, QTS-6811 FF, QTS-6821 FF, QTS-6831 FF, QTS-6841 FF, QTS-14101 FF, QTS-23581 FF, QTS-14161 FF, QTS-14221 FF, QTS-14281 FF, QTS-14341 FF, QTS-34211 FF, QTS-34221 FF, QTS-34571 FF, QTS-34581 FF, QTS-34931 FF, QTS-34941 FF, QTS-35291 FF, QTS-35301 FF, QTS-37101 FF, QTS-37111 FF, QTS-37941 FF, QTS-37951 FF, QTS-24791 FF, QTS-22111 FF, QTS-22631 FF, QTS-17061 FF, QTS-24951 FF, QTS-11511 FF, QTS-11921 FF, QTS-3891 FF, QTS-17371 FF, QTS-4551 FF, QTS-17101 FF, QTS-22711 FF, QTS-5571 FF, QTS-11551 FF, QTS-12151 FF, QTS-11951 FF, QTS-23291 FF, QTS-3981 FF, QTS-17401 FF, QTS-13631 FF, QTS-11591 FF, QTS-42101 FF, QTS-11981 FF, QTS-4591 FF, QTS-4071 FF, QTS-17181 FF, QTS-42121 FF, QTS-5591 FF, QTS-4631 FF, QTS-11631 FF, QTS-12191 FF, QTS-12011 FF, QTS-4161 FF, QTS-17461 FF, QTS-13701 FF, QTS-5611 FF, QTS-5621 FF, QTS-42131 FF, QTS-12231 FF, QTS-4671 FF, QTS-17221 FF, QTS-13771 FF, QTS-11671 FF, QTS-12041 FF, QTS-5631 FF, QTS-4251 FF, QTS-12271 FF, QTS-17491 FF, QTS-42141 FF, QTS-44731 FF, QTS-13841 FF, QTS-4711 FF, QTS-44741 FF, QTS-5651 FF, QTS-44751 FF, QTS-12311 FF, QTS-7091 FF, QTS-13911 FF, QTS-7041 FF, QTS-7141 FF, QTS-7191 FF, QTS-7291 FF, QTS-17141 FF, QTS-17431 FF, QTS-24381 FF, QTS-25681 FF, QTS-25831 FF, QTS-47041 FF, QTS-47051 FF, QTS-19281 FF, QTS-19551 FF, QTS-19651 FF, QTS-19661 FF, QTS-19671 FF, QTS-19731 FF, QTS-19741 FF, QTS-19891 FF, QTS-19901 FF, QTS-20051 FF, QTS-20171 FF, QTS-20401 FF, QTS-20411 FF, QTS-20421 FF, QTS-20651 FF, QTS-20661 FF, QTS-20891 FF, QTS-21031 FF, QTS-21041 FF, QTS-21051 FF, QTS-21161 FF, QTS-21361 FF, QTS-21621 FF, QTS-23941 FF, QTS-24061 FF, QTS-27141 FF, QTS-19541 FF, QTS-19921 FF, QTS-19641 FF, QTS-19851 FF, QTS-19861 FF, QTS-19871 FF, QTS-20021 FF, QTS-20031 FF, QTS-20391 FF, QTS-20431 FF, QTS-20471 FF, QTS-20641 FF, QTS-20861 FF, QTS-20871 FF, QTS-22761 FF, QTS-21321 FF, QTS-21331 FF, QTS-21341 FF, QTS-21431 FF, QTS-21441 FF, QTS-21741 FF, QTS-23221 FF, QTS-23231 FF, QTS-21841 FF, QTS-21871 FF, QTS-21971 FF, QTS-22041 FF, QTS-22081 FF, QTS-22171 FF, QTS-22221 FF, QTS-23771 FF, QTS-23781 FF, QTS-24051 FF, QTS-22831 FF, QTS-24341 FF, QTS-24781 FF, QTS-25201 FF, QTS-25211 FF, QTS-27561 FF, QTS-18771 FF, QTS-18921 FF, QTS-20491 FF, QTS-21021 FF, QTS-19881 FF, QTS-20161 FF, QTS-20481 FF, QTS-20501 FF, QTS-24871 FF, QTS-21351 FF, QTS-21451 FF, QTS-21881 FF, QTS-21981 FF, QTS-25311 FF, QTS-22541 FF, QTS-25321 FF, QTS-22671 FF, QTS-22951 FF, QTS-23411 FF, QTS-25471 FF, QTS-28211 FF, QTS-19201 FF, QTS-21631 FF, QTS-21991 FF, QTS-22001 FF, QTS-22341 FF, QTS-22451 FF, QTS-22301 FF, QTS-22531 FF, QTS-22551 FF, QTS-22561 FF, QTS-22601 FF, QTS-22771 FF, QTS-22781 FF, QTS-22841 FF, QTS-22871 FF, QTS-22881 FF, QTS-22941 FF, QTS-22961 FF, QTS-23081 FF, QTS-23151 FF, QTS-23161 FF, QTS-23241 FF, QTS-23131 FF, QTS-22971 FF, QTS-23491 FF, QTS-23271 FF, QTS-23101 FF, QTS-23721 FF, QTS-23811 FF, QTS-23961 FF, QTS-23371 FF, QTS-23481 FF, QTS-23661 FF, QTS-25811 FF, QTS-23951 FF, QTS-26451 FF, QTS-42761 FF, QTS-42811 FF, QTS-42831 FF, QTS-42841 FF, QTS-42861 FF, QTS-42901 FF, QTS-25401 FF, QTS-42751 FF, QTS-42741 FF, QTS-24961 FF, QTS-25361 FF, QTS-25261 FF, QTS-16791 FF, QTS-25701 FF, QTS-26671 FF, QTS-27941 FF, QTS-6721 FF, QTS-49531 FF, QTS-20911 FF, QTS-42641 FF, QTS-4531 FF, QTS-4571 FF, QTS-4611 FF, QTS-25631 FF, QTS-25621 FF, QTS-4651 FF, QTS-25611 FF, QTS-4691 FF, QTS-30241 FF, QTS-30331 FF, QTS-30321 FF, QTS-24841 FF, QTS-25131 FF, QTS-15051 FF, QTS-13251 FF, QTS-15991 FF, QTS-24601 FF, QTS-25691 FF, QTS-24631 FF, QTS-24901 FF, QTS-25581 FF, QTS-42721 FF, QTS-42711 FF, QTS-42731 FF, QTS-49521 FF, QTS-18371 FF, QTS-17921 FF, QTS-25851 FF, QTS-25861 FF, QTS-25871 FF, QTS-28491 FF, QTS-28501 FF, QTS-25881 FF, QTS-25601 FF, QTS-29991 FF, QTS-25641 FF, QTS-30411 FF, QTS-23711 FF, QTS-30021 FF, QTS-41551 FF, QTS-41661 FF, QTS-41741 FF, QTS-41791 FF, QTS-41841 FF, QTS-41851 FF, QTS-6931 FF, QTS-41611 FF, QTS- 255221 FF, QTS-21661 FF, QTS-4521 FF, QTS-50151 FF, QTS-22661 FF, QTS-22181 FF, QTS-50161 FF, QTS-7051 FF, QTS-9901 FF, QTS-4561 FF, QTS-11771 FF, QTS-7101 FF, QTS-11761 FF, QTS-9931 FF, QTS-4601 FF, QTS-13191 FF, QTS-11791 FF, QTS-7151 FF, QTS-44631 FF, QTS-44641 FF, QTS-11781 FF, QTS-9961 FF, QTS-4641 FF, QTS-13201 FF, QTS-11811 FF, QTS-7201 FF, QTS-44651 FF, QTS-44661 FF, QTS-11801 FF, QTS-9991 FF, QTS-4681 FF, QTS-13211 FF, QTS-11831 FF, QTS-7251 FF, QTS-44671 FF, QTS-44681 FF, QTS-11821 FF, QTS-10021 FF, QTS-13221 FF, QTS-11851 FF, QTS-44691 FF, QTS-44701 FF, QTS-11841 FF, QTS-13231 FF, QTS-44711 FF, QTS-44721 FF, QTS-49511 FF, QTS-23601 FF, QTS-29191 FF, QTS-24701 FF, QTS-25091 FF, QTS-26171 FF, QTS-26471 FF, QTS-27321 FF, QTS-27301 FF, QTS-6771 FF, QTS-99040 FF, QTS-99050 FF, QTS-99060 FF, QTS-99070 FF, QTS-99080 FF, QTS-99090 FF, QTS-99100 FF, QTS-99110 FF, QTS-43491 FF, QTS-43511 FF, QTS-43521 FF, QTS-43531 FF, QTS-43541 FF, QTS-43551 FF, QTS-43561 FF, QTS-43571 FF, QTS-43581 FF, QTS-99120 FF, QTS-29791 FF, QTS-28861 FF, QTS-28871 FF, QTS-29381 FF, QTS-30031 FF, QTS-29431 FF, QTS-29441 FF, QTS-29801 FF, QTS-30261 FF, QTS-28881 FF, QTS-29141 FF, QTS-29451 FF, QTS-29131 FF, QTS-29391 FF, QTS-29641 FF, QTS-28581 FF, QTS-28721 FF, QTS-29311 FF, QTS-21101 FF, QTS-19321 FF, QTS-19331 FF, QTS-20061 FF, QTS-21551 FF, QTS-20201 FF, QTS-20211 FF, QTS-21191 FF, QTS-21891 FF, QTS-19341 FF, QTS-19751 FF, QTS-20221 FF, QTS-19681 FF, QTS-20071 FF, QTS-20571 FF, QTS-19151 FF, QTS-19211 FF, QTS-19931 FF, QTS-21111 FF, QTS-19351 FF, QTS-19361 FF, QTS-20081 FF, QTS-21561 FF, QTS-20231 FF, QTS-20241 FF, QTS-21201 FF, QTS-21901 FF, QTS-19371 FF, QTS-19761 FF, QTS-20251 FF, QTS-19691 FF, QTS-20091 FF, QTS-20581 FF, QTS-19161 FF, QTS-19221 FF, QTS-19941 FF, QTS-21121 FF, QTS-19381 FF, QTS-19391 FF, QTS-20101 FF, QTS-21571 FF, QTS-20261 FF, QTS-20271 FF, QTS-21211 FF, QTS-21911 FF, QTS-19401 FF, QTS-19771 FF, QTS-20281 FF, QTS-19701 FF, QTS-20111 FF, QTS-20591 FF, QTS-19171 FF, QTS-19231 FF, QTS-19951 FF, QTS-21131 FF, QTS-19411 FF, QTS-19421 FF, QTS-20121 FF, QTS-21581 FF, QTS-20291 FF, QTS-20301 FF, QTS-21221 FF, QTS-21921 FF, QTS-19431 FF, QTS-19781 FF, QTS-20311 FF, QTS-19711 FF, QTS-20131 FF, QTS-20601 FF, QTS-19181 FF, QTS-19241 FF, QTS-19961 FF, QTS-21141 FF, QTS-19441 FF, QTS-19451 FF, QTS-20141 FF, QTS-21591 FF, QTS-20321 FF, QTS-20331 FF, QTS-21231 FF, QTS-21931 FF, QTS-19461 FF, QTS-19791 FF, QTS-20341 FF, QTS-19721 FF, QTS-20151 FF, QTS-20611 FF, QTS-19191 FF, QTS-19251 FF, QTS-19971 FF, QTS-27231 FF, QTS-28521 FF, QTS-27861 FF, QTS-100310 FF, QTS-100320 FF, QTS-100560 FF, QTS-100570 FF, QTS-100860 FF, QTS-100870 FF, QTS-101100 FF, QTS-101110 FF, QTS-101340 FF, QTS-101350 FF, QTS-101580 FF, QTS-101590 FF, QTS-15921 FF, QTS-15891 FF, QTS-15951 FF, QTS-15981 FF, QTS-20451 FF, QTS-21281 FF, QTS-28031 FF, QTS-24011 FF, QTS-24131 FF, QTS-24031 FF, QTS-24151 FF, QTS-24041 FF, QTS-24161 FF, QTS-43641 FF, QTS-43651 FF, QTS-43661 FF, QTS-43671 FF, QTS-44231 FF, QTS-45681 FF, QTS-45701 FF, QTS-46081 FF, QTS-46091 FF, QTS-46101 FF, QTS-46111 FF, QTS-46121 FF, QTS-46131 FF, QTS-46141 FF, QTS-46151 FF, QTS-46161 FF, QTS-46171 FF, QTS-46181 FF, QTS-46191 FF, QTS-46201 FF, QTS-46211 FF, QTS-46221 FF, QTS-46231 FF, QTS-46241 FF, QTS-46251 FF, QTS-46261 FF, QTS-46271 FF, QTS-46301 FF, QTS-46311 FF, QTS-46321 FF, QTS-46331 FF, QTS-46341 FF, QTS-46351 FF, QTS-46361 FF, QTS-46371 FF, QTS-46381 FF, QTS-46391 FF, QTS-46401 FF, QTS-46411 FF, QTS-28961 FF, QTS-3121 FF, QTS-46281 FF, QTS-46291 FF |  |  |  | 0d |  | finish on or before 2026-09-01 | Exec Summary | IGMP | Jason Johnston | Exec Summary |  |

Notes:
- QTS-1040: allucent_notes_20251014_152335: Jason Johnston on 2025-10-13 10:10: Forgot to actualize milestone activity

| ID | WBS | Activity | Type | Duration | Start | Finish | Predecessors | Complete | Total float | Free float | Constraint | Calendar | Project Section-1 | Baseline | Layton Responsible Party | Project Section | Allucent CSI Group |
| --- | --- | --- | --- | --- | --- | --- | --- | --- | --- | --- | --- | --- | --- | --- | --- | --- | --- |
|  | 2 | **DH 2100 Milestones** |  |  | 2025-11-05 | 2026-06-01 |  |  |  |  |  |  |  |  |  |  |  |
| QTS-1060.1 |  | DH 2100 Gallery 2102 Room Ready To Receive Interior Equipment Level 1 Complete | milestone | 0d | 2025-11-05 A | 2025-11-05 A | QTS-23051 FF | 100% |  |  |  |  | Exec Summary | IGMP | Jason Johnston | Exec Summary | 01ADMIN |
| QTS-1115.A |  | DH 2100 Early Access Ready (Minimum 30 Days Prior to L3 Energization) | milestone | 0d | 2026-01-14 | 2026-01-14 | QTS-18851 FF, QTS-39281 FF, QTS-39221 FF, QTS-38561 FF, QTS-28851 FF, QTS-28041 FF |  | -7d | 0d | mandatory finish 2025-12-31 |  | Exec Summary | IGMP | Jason Johnston | Exec Summary | 01ADMIN |
| QTS-1070.1 |  | DH 2100 DCIM Headroom Level 2 Complete | milestone | 0d | 2026-02-02 | 2026-02-02 | QTS-1060.1 FF, QTS-43481 FF+12d, QTS-38561 FF, QTS-28851 FF, QTS-28041 FF |  | 1d | 0d |  |  | Exec Summary | IGMP | Jason Johnston | Exec Summary | 01ADMIN |
| QTS-1101 |  | DH 2100 Energize DC1-MVG-A1 | milestone | 0d | 2026-02-09 | 2026-02-09 | QTS-1070.1 FF+6d |  | 1d | 0d |  |  | Exec Summary | IGMP | Jason Johnston | Exec Summary |  |
| QTS-1100 |  | DH 2100 Energized MVG to Building SWR | milestone | 0d | 2026-02-11 | 2026-02-11 | QTS-M1000 FF, QTS-1101 FF+2d, QTS-1000710 FF |  | 1d | 0d |  |  | Exec Summary | IGMP | Jason Johnston | Exec Summary |  |
| QTS-1080.1 |  | DH 2100 DCIM Headroom Level 3 Complete | milestone | 0d | 2026-03-11 | 2026-03-11 | QTS-1070.1, QTS-13661 FF |  | 1d | 0d | as late as possible |  | Exec Summary | IGMP | Jason Johnston | Exec Summary |  |
| QTS-1110.1 |  | DH 2100 CX-L3 Complete | milestone | 0d | 2026-03-17 | 2026-03-17 | DC1-COD-L3-CX-1535 FF, DC1-COD-L3-CX-1520 FF, DC1-COD-L3-CX-1505 FF, DC1-COD-L3-CX-1490 FF, DC1-COD-L3-CX-1475 FF, DC1-COD-L3-CX-1460 FF, DC1-COD-L3-CX-1445 FF, DC1-COD-L3-CX-1430 FF, DC1-COD-L3-CX-1415 FF, DC1-COD-L3-CX-1400 FF, DC1-COD-L3-CX-1385 FF, DC1-COD-L3-CX-1370 FF, DC1-COD-L3-CX-1355 FF, DC1-COD-L3-CX-1340 FF, DC1-COD-L3-CX-1325 FF, DC1-COD-L3-CX-1310 FF, DC1-COD-L3-CX-1295 FF, DC1-COD-L3-CX-1280 FF, DC1-COD-L3-CX-1265 FF, DC1-COD-L3-CX-1250 FF, DC1-COD-L3-CX-1235 FF, DC1-COD-L3-CX-1220 FF, DC1-COD-L3-CX-1205 FF, DC1-COD-L3-CX-1190 FF, DC1-COD-L3-CX-1175 FF, DC1-COD-L3-CX-1160 FF, DC1-COD-L3-CX-1145 FF, DC1-COD-L3-CX-1130 FF, DC1-COD-L3-CX-1115 FF, DC1-COD-L3-CX-1100 FF, DC1-COD-L3-CX-1085 FF, DC1-COD-L3-CX-1070 FF, DC1-COD-L3-CX-1055 FF, DC1-COD-L3-CX-1040 FF, DC1-COD-L3-CX-1025 FF, DC1-COD-L3-CX-1010 FF, QTS-1101 FF |  | 33d |  |  |  | Exec Summary | IGMP | Jason Johnston | Exec Summary |  |
| QTS-1120.1 |  | DH 2100 CX-L4 & IST Complete | milestone | 0d | 2026-05-01 | 2026-05-01 | QTS-1110.1 FF, DC1-IST-1000 FF |  | 0d | 2d |  |  | Exec Summary | IGMP | Jason Johnston | Exec Summary |  |
| QTS-1120.11 |  | DH 2100 Substantial Completion / TCO (05/01/26) | milestone | 0d | 2026-05-05 | 2026-05-05 | QTS-1001660 FF, DC1-HSE-TAB-1010 FF, QTS-30881 FF, QTS-1281 FF, QTS-1120.1 FF |  | -2d | 79d | finish on or before 2026-05-01 | **GLOBAL - 5 Day Workweek w/ Basic Holidays |  |  |  |  |  |
| QTS-1130.A10 |  | DH 2100 TFO Scope Completion (6/1/26) | milestone | 0d | 2026-06-01 | 2026-06-01 | DC1-DH2100-LB-1050 FF, QTS-47621 FF, QTS-47631 FF, QTS-47611 FF, QTS-47331 FF, QTS-47301 FF, DC1-L4-Cx-1070 FF, DC1-L4-Cx-1060 FF |  | 0d | 61d | finish on or before 2026-06-01 | **GLOBAL - 5 Day Workweek w/ Basic Holidays |  |  |  |  |  |
|  | 3 | **DH 1100 Milestones** |  |  | 2025-12-04 | 2026-06-01 |  |  |  |  |  |  |  |  |  |  |  |
| QTS-1060.2 |  | DH 1100 Gallery 1102 Room Ready To Receive Interior Equipment Level 1 Complete | milestone | 0d | 2025-12-04 A | 2025-12-04 A | QTS-20771 FF, QTS-12971 FF | 100% |  |  |  |  | Exec Summary | IGMP | Jason Johnston | Exec Summary | 01ADMIN |
| QTS-1115.B |  | DH 1100 Early Access Ready (Minimum 30 Days Prior to L3 Energization) | milestone | 0d | 2026-01-14 | 2026-01-14 | QTS-6731 FF, QTS-21731 FF, QTS-6311 FF |  | -7d | 0d | mandatory finish 2025-12-31 |  | Exec Summary | IGMP | Jason Johnston | Exec Summary | 01ADMIN |
| QTS-1070.2 |  | DH 1100 DCIM Headroom Level 2 Complete | milestone | 0d | 2026-01-22 | 2026-01-22 | QTS-6731 FF, QTS-21731 FF, QTS-1060.2 FF, QTS-43451 FF+3d, QTS-6311 FF |  | 45d | 19d |  |  | Exec Summary | IGMP | Jason Johnston | Exec Summary | 01ADMIN |
| QTS-1080.2 |  | DH 1100 DCIM Headroom Level 3 Complete | milestone | 0d | 2026-02-18 | 2026-02-18 | QTS-1070.2 FF |  | 26d | 0d | as late as possible |  | Exec Summary | IGMP | Jason Johnston | Exec Summary |  |
| QTS-1110.2 |  | DH 1100 CX-L3 Complete | milestone | 0d | 2026-03-27 | 2026-03-27 | DC1-MOD3-L3-Cx-2200 FF, DC1-MOD3-L3-Cx-2170 FF, DC1-MOD3-L3-Cx-2140 FF, DC1-MOD3-L3-Cx-2110 FF, DC1-MOD3-L3-Cx-2080 FF, DC1-MOD3-L3-Cx-2050 FF, DC1-MOD3-L3-Cx-2020 FF, DC1-MOD2-L3-Cx-2200 FF, DC1-MOD2-L3-Cx-2170 FF, DC1-MOD2-L3-Cx-2140 FF, DC1-MOD2-L3-Cx-2110 FF, DC1-MOD2-L3-Cx-2080 FF, DC1-MOD2-L3-Cx-2050 FF, DC1-MOD2-L3-Cx-2020 FF, DC1-COD-L3-CX-2535 FF, DC1-COD-L3-CX-2520 FF, DC1-COD-L3-CX-2505 FF, DC1-COD-L3-CX-2490 FF, DC1-COD-L3-CX-2475 FF, DC1-COD-L3-CX-2460 FF, DC1-COD-L3-CX-2445 FF, DC1-COD-L3-CX-2430 FF, DC1-COD-L3-CX-2415 FF, DC1-COD-L3-CX-2400 FF, DC1-COD-L3-CX-2385 FF, DC1-COD-L3-CX-2370 FF, DC1-COD-L3-CX-2355 FF, DC1-COD-L3-CX-2340 FF, DC1-COD-L3-CX-2325 FF, DC1-COD-L3-CX-2310 FF, DC1-COD-L3-CX-2295 FF, DC1-COD-L3-CX-2280 FF, DC1-COD-L3-CX-2265 FF, DC1-COD-L3-CX-2250 FF, DC1-COD-L3-CX-2235 FF, DC1-COD-L3-CX-2220 FF, DC1-COD-L3-CX-2205 FF, DC1-COD-L3-CX-2190 FF, DC1-COD-L3-CX-2175 FF, DC1-COD-L3-CX-2160 FF, DC1-COD-L3-CX-2145 FF, DC1-COD-L3-CX-2130 FF, DC1-COD-L3-CX-2115 FF+5d, DC1-COD-L3-CX-2100 FF, DC1-COD-L3-CX-2085 FF, DC1-COD-L3-CX-2070 FF, DC1-COD-L3-CX-2055 FF, DC1-COD-L3-CX-2040 FF, DC1-COD-L3-CX-2025 FF, DC1-COD-L3-CX-2010 FF |  | 25d |  |  |  | Exec Summary | IGMP | Jason Johnston | Exec Summary |  |
| QTS-1120.2 |  | DH 1100 CX-L4 & IST Complete | milestone | 0d | 2026-05-01 | 2026-05-01 | QTS-39161 FF, DC1-IST-2000 FF, QTS-1110.2 FF |  | 0d |  |  |  | Exec Summary | IGMP | Jason Johnston | Exec Summary |  |
| QTS-1130.B |  | DH 1100 Substantial Completion / TCO (05/01/26) | milestone | 0d | 2026-05-01 | 2026-05-01 | QTS-1001720 FF, QTS-1120.2 FF, QTS-1291 FF, QTS-29401 FF, QTS-1045 FF, QTS-46851 FF |  | 0d | 81d | finish on or before 2026-05-01 |  | Exec Summary | IGMP | Jason Johnston | Exec Summary |  |
| QTS-1115.B10 |  | DH 1100 TFO Scope Completion (6/1/26) | milestone | 0d | 2026-06-01 | 2026-06-01 | DC1-DH1100-LB-1050 FF, DC1-ELEC-L4-Cx-1100 FF, DC1-MECH-L4-Cx-1100 FF |  | 0d | 61d | finish on or before 2026-06-01 | **GLOBAL - 5 Day Workweek w/ Basic Holidays |  |  |  |  |  |
|  | 4 | **DH 2200 Milestones** |  |  | 2026-01-20 | 2026-06-26 |  |  |  |  |  |  |  |  |  |  |  |
| QTS-1060.3 |  | DH 2200 Gallery 2202 Room Ready To Receive Interior Equipment Level 1 Complete | milestone | 0d | 2026-01-20 | 2026-01-20 | QTS-20771 FF, QTS-13001 FF |  | 68d | 0d |  |  | Exec Summary | IGMP | Jason Johnston | Exec Summary | 01ADMIN |
| QTS-1115.C |  | DH 2200 Early Access Ready (Minimum 30 Days Prior to L3 Energization) | milestone | 0d | 2026-01-20 | 2026-01-20 | QTS-1060.3 FF |  | 93d | 57d |  |  | Exec Summary | IGMP | Jason Johnston | Exec Summary | 01ADMIN |
| QTS-1070.3 |  | DH 2200 DCIM Headroom Level 2 Complete | milestone | 0d | 2026-01-27 | 2026-01-27 | QTS-1060.3 FF, QTS-38591 FF+2d |  | 63d | 38d |  |  | Exec Summary | IGMP | Jason Johnston | Exec Summary | 01ADMIN |
| QTS-1080.3 |  | DH 2200 DCIM Headroom Level 3 Complete | milestone | 0d | 2026-03-20 | 2026-03-20 | QTS-1070.3 FF, QTS-13731 FF |  | 25d | 0d | as late as possible |  | Exec Summary | IGMP | Jason Johnston | Exec Summary |  |
| QTS-1110.3 |  | DH 2200 CX-L3 Complete | milestone | 0d | 2026-04-09 | 2026-04-09 | DC1-CHWP-L3-Cx-2410 FF, DC1-CHWP-L3-Cx-2380 FF, DC1-CHWP-L3-Cx-2350 FF, DC1-CHWP-L3-Cx-2320 FF, DC1-CHWP-L3-Cx-2290 FF, DC1-CHWP-L3-Cx-2260 FF, DC1-CHWP-L3-Cx-2230 FF, DC1-CHLR-L3-Cx-2410 FF, DC1-CHLR-L3-Cx-2380 FF, DC1-CHLR-L3-Cx-2350 FF, DC1-CHLR-L3-Cx-2320 FF, DC1-CHLR-L3-Cx-2290 FF, DC1-CHLR-L3-Cx-2260 FF, DC1-CHLR-L3-Cx-2230 FF, DC1-MOD3-L3-Cx-2410 FF, DC1-MOD3-L3-Cx-2380 FF, DC1-MOD3-L3-Cx-2350 FF, DC1-MOD3-L3-Cx-2320 FF, DC1-MOD3-L3-Cx-2290 FF, DC1-MOD3-L3-Cx-2260 FF, DC1-MOD3-L3-Cx-2230 FF, DC1-MOD2-L3-Cx-2410 FF, DC1-MOD2-L3-Cx-2380 FF, DC1-MOD2-L3-Cx-2350 FF, DC1-MOD2-L3-Cx-2320 FF, DC1-MOD2-L3-Cx-2290 FF, DC1-MOD2-L3-Cx-2260 FF, DC1-MOD2-L3-Cx-2230 FF, QTS-1115.C FF |  | 36d | 35d |  |  | Exec Summary | IGMP | Jason Johnston | Exec Summary |  |
| QTS-1120.3 |  | DH 2200 CX-L4 & IST Complete | milestone | 0d | 2026-05-29 | 2026-05-29 | QTS-1110.3 FF, QTS-39341 FF, DC1-IST-2010 FF |  | 1d | 0d |  |  | Exec Summary | IGMP | Jason Johnston | Exec Summary |  |
| QTS-1130.C |  | DH 2200 Substantial Completion / TCO (06/01/26) | milestone | 0d | 2026-05-29 | 2026-05-29 | QTS-1001780 FF, QTS-44011 FF, QTS-31001 FF, QTS-1120.3 FF, QTS-1301 FF |  | 1d | 62d | finish on or before 2026-06-01 |  | Exec Summary | IGMP | Jason Johnston | Exec Summary |  |
| QTS-1060.13 |  | DH 2200 TFO Scope Completion (7/1/26) | milestone | 0d | 2026-06-26 | 2026-06-26 | DC1-DH2200-LB-1050 FF, QTS-47931 FF, QTS-47921 FF, QTS-47901 FF, QTS-48851 FF, QTS-48841 FF, QTS-48821 FF, DC1-ELEC-L4-Cx-1090 FF, DC1-MECH-L4-Cx-1090 FF |  | 3d | 42d | finish on or before 2026-07-01 | **GLOBAL - 5 Day Workweek w/ Basic Holidays |  |  |  |  |  |

Notes:
- QTS-1060.1: allucent_notes_20251104_160200: Jason Johnston on 2025-11-04 16:11: Update needed - Need to confirm with schedule this is actually complete. / allucent_notes_20251111_182405: Jason Johnston on 2025-11-04 16:11: Update needed - Need to confirm with schedule this is actually complete. / allucent_notes_20251118_192630: Jason Johnston on 2025-11-04 16:11: Update needed - Need to confirm with schedule this is actually complete. / allucent_notes: 2025-11-04 16:11 - User: Jason Johnston - Date Added: 2025-11-04 16:11 - Note: Update needed - Need to confirm with schedule this is actually complete.
- QTS-1115.A: allucent_notes_20251230_164549: Jason Johnston on 2025-12-16 15:44: Need to re-evaluate what this milestone is / Jason Johnston on 2025-12-30 16:44: No update / allucent_notes_20251216_165335: Jason Johnston on 2025-12-16 15:44: Need to re-evaluate what this milestone is / allucent_notes: 2025-12-16 15:44 - User: Jason Johnston - Date Added: 2025-12-16 15:44 - Note: Need to re-evaluate what this milestone is / 2025-12-30 16:44 - User: Jason Johnston - Date Added: 2025-12-30 16:44 - Note: No update
- QTS-1115.B: allucent_notes_20251230_164549: Jason Johnston on 2025-12-16 15:44: Need to re-evaluate what this milestone is / Jason Johnston on 2025-12-30 16:45: No update / allucent_notes_20251216_165335: Jason Johnston on 2025-12-16 15:44: Need to re-evaluate what this milestone is / allucent_notes: 2025-12-16 15:44 - User: Jason Johnston - Date Added: 2025-12-16 15:44 - Note: Need to re-evaluate what this milestone is / 2025-12-30 16:45 - User: Jason Johnston - Date Added: 2025-12-30 16:45 - Note: No update

| ID | WBS | Activity | Type | Duration | Start | Finish | Predecessors | Total float | Free float | Constraint | Calendar | Project Section-1 | Baseline | Layton Responsible Party | Project Section | Allucent CSI Group |
| --- | --- | --- | --- | --- | --- | --- | --- | --- | --- | --- | --- | --- | --- | --- | --- | --- |
|  | 5 | **DH 1200 Milestones** |  |  | 2026-01-16 | 2026-06-29 |  |  |  |  |  |  |  |  |  |  |
| QTS-1060.4 |  | DH 1200 Gallery 1202 Room Ready To Receive Interior Equipment Level 1 Complete | milestone | 0d | 2026-01-16 | 2026-01-16 | QTS-20771 FF, QTS-13031 FF | 65d | 0d |  |  | Exec Summary | IGMP | Jason Johnston | Exec Summary | 01ADMIN |
| QTS-1115.D |  | DH 1200 Early Access Ready (Minimum 30 Days Prior to L3 Energization) | milestone | 0d | 2026-01-16 | 2026-01-16 | QTS-1060.4 FF | 94d | 72d |  |  | Exec Summary | IGMP | Jason Johnston | Exec Summary | 01ADMIN |
| QTS-1070.4 |  | DH 1200 DCIM Headroom Level 2 Complete | milestone | 0d | 2026-02-03 | 2026-02-03 | QTS-38621 FF, QTS-1060.4 FF | 54d | 29d |  |  | Exec Summary | IGMP | Jason Johnston | Exec Summary |  |
| QTS-1080.4 |  | DH 1200 DCIM Headroom Level 3 Complete | milestone | 0d | 2026-03-16 | 2026-03-16 | QTS-1070.4 FF, QTS-13801 FF | 25d | 0d | as late as possible |  | Exec Summary | IGMP | Jason Johnston | Exec Summary |  |
| QTS-1110.4 |  | DH 1200 CX-L3 Complete | milestone | 0d | 2026-04-29 | 2026-04-29 | DC1-CHWP-L3-Cx-2620 FF, DC1-CHWP-L3-Cx-2590 FF, DC1-CHWP-L3-Cx-2560 FF, DC1-CHWP-L3-Cx-2530 FF, DC1-CHWP-L3-Cx-2500 FF, DC1-CHWP-L3-Cx-2470 FF, DC1-CHWP-L3-Cx-2440 FF, DC1-CHLR-L3-Cx-2690 FF, DC1-CHLR-L3-Cx-2660 FF, DC1-CHLR-L3-Cx-2630 FF, DC1-CHLR-L3-Cx-2600 FF, DC1-CHLR-L3-Cx-2570 FF, DC1-CHLR-L3-Cx-2540 FF, DC1-CHLR-L3-Cx-2510 FF, DC1-MOD2-L3-Cx-2620 FF, DC1-MOD2-L3-Cx-2590 FF, DC1-MOD2-L3-Cx-2560 FF, DC1-MOD2-L3-Cx-2530 FF, DC1-MOD2-L3-Cx-2500 FF, DC1-MOD2-L3-Cx-2470 FF, DC1-MOD2-L3-Cx-2440 FF, DC1-MOD3-L3-Cx-2620 FF, DC1-MOD3-L3-Cx-2590 FF, DC1-MOD3-L3-Cx-2560 FF, DC1-MOD3-L3-Cx-2530 FF, DC1-MOD3-L3-Cx-2500 FF, DC1-MOD3-L3-Cx-2470 FF, DC1-MOD3-L3-Cx-2440 FF, QTS-1115.D FF | 22d |  |  |  | Exec Summary | IGMP | Jason Johnston | Exec Summary |  |
| QTS-1120.4 |  | DH 1200 CX-L4 & IST Complete | milestone | 0d | 2026-06-01 | 2026-06-01 | QTS-1110.4 FF, QTS-39401 FF, DC1-IST-2020 FF | 0d |  |  |  | Exec Summary | IGMP | Jason Johnston | Exec Summary |  |
| QTS-1130.D |  | DH 1200 Substantial Completion / TCO (06/01/26) | milestone | 0d | 2026-06-01 | 2026-06-01 | QTS-1001840 FF, QTS-30891 FF, QTS-1120.4 FF, QTS-1311 FF | 0d | 61d | finish on or before 2026-06-01 |  | Exec Summary | IGMP | Jason Johnston | Exec Summary |  |
| QTS-1120.14 |  | DH 1200 TFO Scope Completion (7/1/26) | milestone | 0d | 2026-06-29 | 2026-06-29 | DC1-DH1200-LB-1050 FF, DC1-MECH-L4-Cx-1080 FF, DC1-ELEC-L4-Cx-1080 FF | 2d | 41d | finish on or before 2026-07-01 | **GLOBAL - 5 Day Workweek w/ Basic Holidays |  |  |  |  |  |
|  | 6 | **DH 2300 Milestones** |  |  | 2026-03-03 | 2026-08-26 |  |  |  |  |  |  |  |  |  |  |
| QTS-1060.5 |  | DH 2300 Gallery 2302 Room Ready To Receive Interior Equipment Level 1 Complete | milestone | 0d | 2026-03-03 | 2026-03-03 | QTS-13061 FF, QTS-1050 FF | 46d | 0d |  |  | Exec Summary | IGMP | Jason Johnston | Exec Summary | 01ADMIN |
| QTS-1115.E |  | DH 2300 Early Access Ready (Minimum 30 Days Prior to L3 Energization) | milestone | 0d | 2026-03-03 | 2026-03-03 | QTS-1060.5 FF | 107d | 63d |  |  | Exec Summary | IGMP | Jason Johnston | Exec Summary | 01ADMIN |
| QTS-1070.5 |  | DH 2300 DCIM Headroom Level 2 Complete | milestone | 0d | 2026-03-10 | 2026-03-10 | QTS-1060.5 FF, QTS-38651 FF | 41d |  |  |  | Exec Summary | IGMP | Jason Johnston | Exec Summary |  |
| QTS-1080.5 |  | DH 2300 DCIM Headroom Level 3 Complete | milestone | 0d | 2026-05-06 | 2026-05-06 | QTS-1070.5 FF, QTS-13871 FF | 0d |  | as late as possible |  | Exec Summary | IGMP | Jason Johnston | Exec Summary |  |
| QTS-1110.5 |  | DH 2300 CX-L3 Complete | milestone | 0d | 2026-06-01 | 2026-06-01 | DC1-CHWP-L3-Cx-2830 FF, DC1-CHWP-L3-Cx-2800 FF, DC1-CHWP-L3-Cx-2770 FF, DC1-CHWP-L3-Cx-2740 FF, DC1-CHWP-L3-Cx-2710 FF, DC1-CHWP-L3-Cx-2680 FF, DC1-CHWP-L3-Cx-2650 FF, DC1-CHLR-L3-Cx-2970 FF, DC1-CHLR-L3-Cx-2940 FF, DC1-CHLR-L3-Cx-2910 FF, DC1-CHLR-L3-Cx-2880 FF, DC1-CHLR-L3-Cx-2850 FF, DC1-CHLR-L3-Cx-2820 FF, DC1-CHLR-L3-Cx-2790 FF, DC1-MOD3-L3-Cx-2830 FF, DC1-MOD3-L3-Cx-2800 FF, DC1-MOD3-L3-Cx-2770 FF, DC1-MOD3-L3-Cx-2740 FF, DC1-MOD3-L3-Cx-2710 FF, DC1-MOD3-L3-Cx-2680 FF, DC1-MOD3-L3-Cx-2650 FF, DC1-MOD2-L3-Cx-2830 FF, DC1-MOD2-L3-Cx-2800 FF, DC1-MOD2-L3-Cx-2770 FF, DC1-MOD2-L3-Cx-2740 FF, DC1-MOD2-L3-Cx-2710 FF, DC1-MOD2-L3-Cx-2680 FF, DC1-MOD2-L3-Cx-2650 FF, DC1-COD-L3-CX-5775 FF, DC1-COD-L3-CX-5745 FF, DC1-COD-L3-CX-5715 FF, DC1-COD-L3-CX-5685 FF, DC1-COD-L3-CX-5655 FF, DC1-COD-L3-CX-5625 FF, DC1-COD-L3-CX-5595 FF, DC1-COD-L3-CX-5565 FF, DC1-COD-L3-CX-5535 FF, DC1-COD-L3-CX-5505 FF, DC1-COD-L3-CX-5475 FF, DC1-COD-L3-CX-5445 FF, DC1-COD-L3-CX-5415 FF, DC1-COD-L3-CX-5385 FF, DC1-COD-L3-CX-5355 FF, DC1-COD-L3-CX-5325 FF, DC1-COD-L3-CX-5295 FF, DC1-COD-L3-CX-5265 FF, DC1-COD-L3-CX-5235 FF, DC1-COD-L3-CX-5205 FF, DC1-COD-L3-CX-5175 FF, DC1-COD-L3-CX-5145 FF, DC1-COD-L3-CX-5115 FF, DC1-COD-L3-CX-5085 FF, DC1-COD-L3-CX-5055 FF, DC1-COD-L3-CX-5025 FF, DC1-COD-L3-CX-4995 FF, DC1-COD-L3-CX-4965 FF, DC1-COD-L3-CX-4935 FF, DC1-COD-L3-CX-4905 FF, DC1-COD-L3-CX-4875 FF, DC1-COD-L3-CX-4845 FF, DC1-COD-L3-CX-4815 FF, DC1-COD-L3-CX-4785 FF, DC1-COD-L3-CX-4755 FF, DC1-COD-L3-CX-4725 FF, QTS-1115.E FF | 44d | 41d |  |  | Exec Summary | IGMP | Jason Johnston | Exec Summary |  |
| QTS-1120.5 |  | DH 2300 CX-L4 & IST Complete | milestone | 0d | 2026-07-29 | 2026-07-29 | QTS-1110.5 FF, QTS-42011 FF, DC1-IST-2030 FF | 3d | 0d |  |  | Exec Summary | IGMP | Jason Johnston | Exec Summary |  |
| QTS-1130.E |  | DH 2300 Substantial Completion / TCO (08/03/26) | milestone | 0d | 2026-07-29 | 2026-07-29 | QTS-1001900 FF, QTS-11001 FF, QTS-1120.5 FF, QTS-1461 FF, QTS-46871 FF, QTS-46881 FF | 3d | 20d | finish on or before 2026-08-03 |  | Exec Summary | IGMP | Jason Johnston | Exec Summary |  |
| QTS-1070.15 |  | DH 2300 TFO Scope Completion (9/1/26) | milestone | 0d | 2026-08-26 | 2026-08-26 | DC1-DH2300-LB-1050 FF, QTS-48531 FF, QTS-48521 FF, QTS-48501 FF, QTS-48211 FF, QTS-48201 FF, QTS-48181 FF, DC1-MECH-L4-Cx-1070 FF, DC1-ELEC-L4-Cx-1070 FF | 0d |  | finish on or before 2026-09-01 | **GLOBAL - 5 Day Workweek w/ Basic Holidays |  |  |  |  |  |
|  | 7 | **DH 1300 Milestones** |  |  | 2026-02-16 | 2026-08-26 |  |  |  |  |  |  |  |  |  |  |
| QTS-1060.6 |  | DH 1300 Gallery 1302 Room Ready To Receive Interior Equipment Level 1 Complete | milestone | 0d | 2026-02-16 | 2026-02-16 | QTS-20771 FF, QTS-13091 FF | 62d | 0d |  |  | Exec Summary | IGMP | Jason Johnston | Exec Summary |  |
| QTS-1115.F |  | DH 1300 Early Access Ready (Minimum 30 Days Prior to L3 Energization) | milestone | 0d | 2026-02-16 | 2026-02-16 | QTS-1060.6 FF | 118d | 68d |  |  | Exec Summary | IGMP | Jason Johnston | Exec Summary |  |
| QTS-1070.6 |  | DH 1300 DCIM Headroom Level 2 Complete | milestone | 0d | 2026-02-23 | 2026-02-23 | QTS-1060.6 FF, QTS-38681 FF | 57d | 51d |  |  | Exec Summary | IGMP | Jason Johnston | Exec Summary |  |
| QTS-1080.6 |  | DH 1300 DCIM Headroom Level 3 Complete | milestone | 0d | 2026-05-05 | 2026-05-05 | QTS-1070.6 FF, QTS-13941 FF | 6d | 0d | as late as possible |  | Exec Summary | IGMP | Jason Johnston | Exec Summary |  |
| QTS-1110.6 |  | DH 1300 CX-L3 Complete | milestone | 0d | 2026-05-21 | 2026-05-21 | DC1-CHWP-L3-Cx-3040 FF, DC1-CHWP-L3-Cx-3010 FF, DC1-CHWP-L3-Cx-2980 FF, DC1-CHWP-L3-Cx-2950 FF, DC1-CHWP-L3-Cx-2920 FF, DC1-CHWP-L3-Cx-2890 FF, DC1-CHWP-L3-Cx-2860 FF, DC1-CHLR-L3-Cx-3250 FF, DC1-CHLR-L3-Cx-3220 FF, DC1-CHLR-L3-Cx-3190 FF, DC1-CHLR-L3-Cx-3160 FF, DC1-CHLR-L3-Cx-3130 FF, DC1-CHLR-L3-Cx-3100 FF, DC1-CHLR-L3-Cx-3070 FF, DC1-MOD3-L3-Cx-3040 FF, DC1-MOD3-L3-Cx-3010 FF, DC1-MOD3-L3-Cx-2980 FF, DC1-MOD3-L3-Cx-2950 FF, DC1-MOD3-L3-Cx-2920 FF, DC1-MOD3-L3-Cx-2890 FF, DC1-MOD3-L3-Cx-2860 FF, DC1-MOD2-L3-Cx-3040 FF, DC1-MOD2-L3-Cx-3010 FF, DC1-MOD2-L3-Cx-2980 FF, DC1-MOD2-L3-Cx-2950 FF, DC1-MOD2-L3-Cx-2920 FF, DC1-MOD2-L3-Cx-2890 FF, DC1-MOD2-L3-Cx-2860 FF, DC1-COD-L3-CX-6855 FF, DC1-COD-L3-CX-6825 FF, DC1-COD-L3-CX-6795 FF, DC1-COD-L3-CX-6765 FF, DC1-COD-L3-CX-6735 FF, DC1-COD-L3-CX-6705 FF, DC1-COD-L3-CX-6675 FF, DC1-COD-L3-CX-6645 FF, DC1-COD-L3-CX-6615 FF, DC1-COD-L3-CX-6585 FF, DC1-COD-L3-CX-6555 FF, DC1-COD-L3-CX-6525 FF, DC1-COD-L3-CX-6495 FF, DC1-COD-L3-CX-6465 FF, DC1-COD-L3-CX-6435 FF, DC1-COD-L3-CX-6405 FF, DC1-COD-L3-CX-6375 FF, DC1-COD-L3-CX-6345 FF, DC1-COD-L3-CX-6315 FF, DC1-COD-L3-CX-6285 FF, DC1-COD-L3-CX-6255 FF, DC1-COD-L3-CX-6225 FF, DC1-COD-L3-CX-6195 FF, DC1-COD-L3-CX-6165 FF, DC1-COD-L3-CX-6135 FF, DC1-COD-L3-CX-6105 FF, DC1-COD-L3-CX-6075 FF, DC1-COD-L3-CX-6045 FF, DC1-COD-L3-CX-6015 FF, DC1-COD-L3-CX-5985 FF, DC1-COD-L3-CX-5955 FF, DC1-COD-L3-CX-5925 FF, DC1-COD-L3-CX-5895 FF, DC1-COD-L3-CX-5865 FF, DC1-COD-L3-CX-5835 FF, DC1-COD-L3-CX-5805 FF, QTS-1115.F FF, QTS-1065 FF | 50d | 47d |  |  | Exec Summary | IGMP | Jason Johnston | Exec Summary |  |
| QTS-1120.6 |  | DH 1300 CX-L4 & IST Complete | milestone | 0d | 2026-07-29 | 2026-07-29 | QTS-1110.6 FF, QTS-42071 FF, DC1-IST-2040 FF | 3d | 0d |  |  | Exec Summary | IGMP | Jason Johnston | Exec Summary |  |
| QTS-1130.F |  | DH 1300 Substantial Completion / Closeout Complete / Certificate of Occupancy (08/03/26) | milestone | 0d | 2026-07-29 | 2026-07-29 | QTS-1001960 FF, QTS-11011 FF, QTS-1120.6 FF, QTS-1451 FF, QTS-3181 FF, QTS-30971 FF | 3d | 20d | finish on or before 2026-08-03 |  | Exec Summary | IGMP | Jason Johnston | Exec Summary |  |
| QTS-1110.16 |  | DH 1300 TFO Scope Completion (9/1/26) | milestone | 0d | 2026-08-26 | 2026-08-26 | DC1-DH1300-LB-1050 FF, DC1-MECH-L4-Cx-1060 FF, DC1-ELEC-L4-Cx-1060 FF | 0d |  | finish on or before 2026-09-01 | **GLOBAL - 5 Day Workweek w/ Basic Holidays |  |  |  |  |  |

| ID | WBS | Activity | Type | Duration | Start | Finish | Predecessors | Complete | Remaining | Planned start | Planned finish | Total float | Free float | Expected finish | Baseline | Layton Responsible Party | Project Section | Project Section-1 | Precon Phase | Allucent CSI Group |
| --- | --- | --- | --- | --- | --- | --- | --- | --- | --- | --- | --- | --- | --- | --- | --- | --- | --- | --- | --- | --- |
|  | 2 | **Durations (Calendar Days)** |  |  | 2025-01-15 | 2026-07-29 |  |  |  |  |  |  |  |  |  |  |  |  |  |  |
|  | 1 | **Overall Construction** |  |  | 2025-01-15 | 2026-07-29 |  |  |  |  |  |  |  |  |  |  |  |  |  |  |
| QTS-3181 |  | Construction Duration | level of effort | 328d | 2025-01-15 A | 2026-07-29 | QTS-1030 SS | 58% | 138d | 2025-01-21 | 2026-05-08 | 3d | 0d |  | IGMP | Jason Johnston | Exec Summary |  |  |  |
|  | 2 | **Monthly Reporting** |  |  | 2025-01-22 | 2026-07-29 |  |  |  |  |  |  |  |  |  |  |  |  |  |  |
| QTS-1191 |  | Pad Prep | level of effort | 23d | 2025-01-22 A | 2025-03-14 A | QTS-1201 | 100% |  | 2025-01-23 | 2025-02-24 |  |  |  | IGMP |  |  | Exec Summary |  |  |
| QTS-7311 |  | Piers, UG Utilities, Foundations (Including Elevator Pits) | level of effort | 62d | 2025-02-17 A | 2025-10-09 A | QTS-7301 SS, QTS-1191 | 100% |  | 2025-01-31 | 2025-04-28 |  |  |  | IGMP | Jason Johnston | Exec Summary | Exec Summary |  |  |
| QTS-16931 |  | Steel Erection (Includes Detailing) | level of effort | 59d | 2025-04-30 A | 2025-08-19 A | QTS-16911 SS | 100% |  | 2025-04-30 | 2025-07-23 |  |  |  | IGMP | Jason Johnston | Exec Summary | Exec Summary |  |  |
| QTS-15071 |  | Tilt Panels (Includes Casting) | level of effort | 72d | 2025-06-06 A | 2025-09-25 A | QTS-15041 SS | 100% |  | 2025-06-06 | 2025-09-17 |  |  |  | IGMP | Jason Johnston | Exec Summary | Exec Summary |  |  |
| QTS-19031 |  | Concrete (SOMD & SOG) | level of effort | 71d | 2025-06-23 A | 2025-10-28 A | QTS-18941 SS | 100% |  | 2025-06-23 | 2025-10-01 |  |  |  | IGMP | Jason Johnston | Exec Summary | Exec Summary |  |  |
| QTS-1291 |  | DH 1100 Buildout | level of effort | 174d | 2025-07-14 A | 2026-05-01 | QTS-1691 SS | 56% | 77d | 2025-08-22 | 2026-04-30 | 0d |  |  | IGMP | Jason Johnston | Exec Summary | Exec Summary |  |  |
| QTS-1281 |  | DH 2100 Buildout | level of effort | 197d | 2025-07-24 A | 2026-05-05 | QTS-19841 SS | 60% | 79d | 2025-07-24 | 2026-05-07 | -2d | 0d |  | IGMP | Jason Johnston | Exec Summary | Exec Summary |  |  |
| QTS-1301 |  | DH 2200 Buildout | level of effort | 197d | 2025-08-27 A | 2026-05-29 | QTS-1821 SS | 51% | 96d | 2025-08-27 | 2026-06-08 | 1d | 0d |  | IGMP | Jason Johnston | Exec Summary | Exec Summary |  |  |
| QTS-20881 |  | Roofing | level of effort | 80d | 2025-08-27 A | 2025-12-17 A | QTS-20771 SS | 100% |  | 2025-09-02 | 2025-12-24 |  |  |  | IGMP | Jason Johnston | Exec Summary | Exec Summary |  |  |
| QTS-1311 |  | DH 1200 Buildout | level of effort | 195d | 2025-09-02 A | 2026-06-01 | QTS-1951 SS | 50% | 97d | 2025-10-03 | 2026-07-13 | 0d |  |  | IGMP | Jason Johnston | Exec Summary | Exec Summary |  |  |
| QTS-1461 |  | DH 2300 Buildout | level of effort | 217d | 2025-09-24 A | 2026-07-29 | QTS-2081 SS | 36% | 138d | 2025-09-24 | 2026-08-03 | 3d | 0d |  | IGMP | Jason Johnston | Exec Summary | Exec Summary |  |  |
| QTS-1451 |  | DH 1300 Buildout | level of effort | 197d | 2025-10-21 A | 2026-07-29 | QTS-2211 SS | 30% | 138d | 2025-10-21 | 2026-07-31 | 3d | 0d |  | IGMP | Jason Johnston | Exec Summary | Exec Summary |  |  |
|  | 2 | **Preconstruction** |  |  | 2024-11-13 | 2026-04-29 |  |  |  |  |  |  |  |  |  |  |  |  |  |  |
|  | 2 | **Owner Contracting** |  |  | 2024-11-13 | 2025-05-19 |  |  |  |  |  |  |  |  |  |  |  |  |  |  |
| QTS-1371 |  | Notice to Proceed | milestone | 0d | 2024-11-13 A | 2024-11-13 A |  | 100% |  | 2025-01-31 | 2025-01-31 |  |  |  | IGMP |  |  | Preconstruction | Owner Contracting |  |
| QTS-1351 |  | IGMP Contract Review & Approval (Executed) |  | 18d | 2024-12-02 A | 2025-02-28 A | QTS-1371 | 100% |  | 2025-01-31 | 2025-02-25 |  |  |  | IGMP |  |  | Preconstruction | Owner Contracting |  |
| QTS-9711 |  | Issue Notice to Proceed (NTP/Early Release) |  | 1d | 2025-01-22 A | 2025-01-22 A | QTS-1371, QTS-1351 SS+24d, QTS-1011 SS | 100% |  | 2025-01-31 | 2025-01-31 |  |  |  | IGMP |  |  | Preconstruction | Owner Contracting |  |
| QTS-11901 |  | Final GMP Contract Review & Approval (Executed) |  | 28d | 2025-03-03 A | 2025-05-19 A | QTS-7001, QTS-1351, QTS-1151 | 100% |  | 2025-04-03 | 2025-05-12 |  |  |  | IGMP | Chris Perales | Preconstruction | Preconstruction | Owner Contracting | 01ADMIN |
| QTS-7001 |  | Layton Prepare & Submit Final GMP Schedule of Values |  | 8d | 2025-03-24 A | 2025-04-02 A | QTS-1351 | 100% |  |  |  |  |  |  | IGMP |  |  | Preconstruction | Owner Contracting |  |
|  | 3 | **Design** |  |  | 2024-11-13 | 2026-01-22 |  |  |  |  |  |  |  |  |  |  |  |  |  |  |
| QTS-1361 |  | Provide ABM for Steel Fabrication |  | 13d | 2024-11-13 A | 2024-11-27 A | QTS-1051 | 100% |  | 2025-01-31 | 2025-02-18 |  |  |  | GMP |  |  | Preconstruction | Design |  |
| QTS-5711 |  | Steel Subcontractor Process ABM |  | 5d | 2024-11-27 A | 2024-11-27 A | QTS-1361 | 100% |  | 2025-01-31 | 2025-02-06 |  |  |  | IGMP |  |  | Preconstruction |  |  |
| QTS-1381 |  | Construction Documents Package (IFP) |  | 5d | 2025-01-15 A | 2025-01-24 A | QTS-1371 | 100% |  | 2025-01-31 | 2025-02-06 |  |  |  | IGMP |  |  | Preconstruction |  |  |
| QTS-15371 |  | Construction Documents Package (IFC) |  | 14d | 2025-03-19 A | 2025-04-07 A | QTS-9721, QTS-1371 | 100% |  |  |  |  |  |  | IGMP |  |  | Preconstruction |  |  |
| QTS-16941 |  | Subcontractors Review & Prepare ROM Pricing for IFC |  | 7d | 2025-04-08 A | 2025-04-29 A | QTS-15371 | 100% |  | 2025-04-08 | 2025-04-16 |  |  |  | IGMP |  |  | Preconstruction |  |  |
| QTS-16951 |  | Subcontractors Review & Prepare Final Pricing for IFC |  | 15d | 2025-04-08 A | 2025-05-30 A | QTS-15371 | 100% |  | 2025-04-08 | 2025-04-28 |  |  |  | IGMP | Chris Perales |  | Preconstruction |  |  |
| QTS-18051 |  | Owner Review ROM Pricing for IFC |  | 5d | 2025-05-07 A | 2025-05-13 A | QTS-16941 | 100% |  |  |  |  |  |  | IGMP |  |  | Preconstruction |  |  |
| QTS-46901 |  | Owner Review & Approve Final Pricing for IFC |  | 4d | 2025-05-14 A | 2025-05-19 A | QTS-1371 SS | 100% |  |  |  |  |  |  | IGMP | Chris Perales |  | Preconstruction |  |  |
| QTS-18581 |  | Owner Review & Approve RTA Buyout |  | 33d | 2025-05-20 A | 2025-07-11 A | QTS-18051, QTS-16951, QTS-46901 | 100% |  | 2025-05-20 | 2025-07-07 |  |  |  | IGMP | Chris Perales | Preconstruction | Preconstruction |  | 01ADMIN |
| QTS-18831 |  | Revise & Resubmit Final Pricing for IFC |  | 5d | 2025-07-14 A | 2025-11-25 A | QTS-18581 | 100% |  | 2025-07-14 | 2025-07-18 |  |  |  | IGMP | Chris Perales | Preconstruction | Preconstruction |  | 01ADMIN |
| QTS-18931 |  | Owner Review & Approve Revised Final Pricing for IFC |  | 5d | 2025-11-26 A | 2026-01-14 | QTS-18831 | 80% | 1d | 2025-11-24 | 2025-12-02 | 152d | 0d | 2026-01-14 | IGMP | Chris Perales | Preconstruction | Preconstruction |  | 01ADMIN |
| QTS-19131 |  | Layton Execute CO's with Subcontractors |  | 5d | 2026-01-15 | 2026-01-22 | QTS-18581, QTS-18931 |  |  |  |  | 152d | 0d |  | IGMP | Chris Perales | Preconstruction | Preconstruction |  | 01ADMIN |

Notes:
- QTS-18831: allucent_notes: Andrew Melis on 2025-10-08 13:12: QTS and Layton review / and verification of changes that were / made. / allucent_notes_20251014_152335: Andrew Melis on 2025-08-12 15:08: Pricing is not ready and will be due 8/15. Updated pricing needed by subcontractors. / Andrew Melis on 2025-08-18 11:08: IFC pricing is being updated and resubmitted to QTS due to revisions by the Steel contractor. / Andrew Melis on 2025-08-26 15:08: This change order is in review w/ QTS and Layton to verify and validate the final pricing. / Andrew Melis on 2025-09-17 09:09: PCO is currently in review with QTS / Andrew Melis on 2025-10-07 11:10: This is in review with QTS / allucent_notes_20251021_145627: Andrew Melis on 2025-08-12 15:08: Pricing is not ready and will be due 8/15. Updated pricing needed by subcontractors. / Andrew Melis on 2025-08-18 11:08: IFC pricing is being updated and resubmitted to QTS due to revisions by the Steel contractor. / Andrew Melis on 2025-08-26 15:08: This change order is in review w/ QTS and Layton to verify and validate the final pricing. / Andrew Melis on 2025-09-17 09:09: PCO is currently in review with QTS / Andrew Melis on 2025-10-07 11:10: This is in review with QTS / Andrew Melis on 2025-10-21 12:10: IFC Package is in review with QTS / allucent_notes_20251027_224008: Andrew Melis on 2025-08-12 15:08: Pricing is not ready and will be due 8/15. Updated pricing needed by subcontractors. / Andrew Melis on 2025-08-18 11:08: IFC pricing is being updated and resubmitted to QTS due to revisions by the Steel contractor. / Andrew Melis on 2025-08-26 15:08: This change order is in review w/ QTS and Layton to verify and validate the final pricing. / Andrew Melis on 2025-09-17 09:09: PCO is currently in review with QTS / Andrew Melis on 2025-10-07 11:10: This is in review with QTS / Andrew Melis on 2025-10-21 12:10: IFC Package is in review with QTS / allucent_notes_20251028_163138: Andrew Melis on 2025-08-12 15:08: Pricing is not ready and will be due 8/15. Updated pricing needed by subcontractors. / Andrew Melis on 2025-08-18 11:08: IFC pricing is being updated and resubmitted to QTS due to revisions by the Steel contractor. / Andrew Melis on 2025-08-26 15:08: This change order is in review w/ QTS and Layton to verify and validate the final pricing. / Andrew Melis on 2025-09-17 09:09: PCO is currently in review with QTS / Andrew Melis on 2025-10-07 11:10: This is in review with QTS / Andrew Melis on 2025-10-21 12:10: IFC Package is in review with QTS / allucent_notes_20251104_160200: Andrew Melis on 2025-08-12 15:08: Pricing is not ready and will be due 8/15. Updated pricing needed by subcontractors. / Andrew Melis on 2025-08-18 11:08: IFC pricing is being updated and resubmitted to QTS due to revisions by the Steel contractor. / Andrew Melis on 2025-08-26 15:08: This change order is in review w/ QTS and Layton to verify and validate the final pricing. / Andrew Melis on 2025-09-17 09:09: PCO is currently in review with QTS / Andrew Melis on 2025-10-07 11:10: This is in review with QTS / Andrew Melis on 2025-10-21 12:10: IFC Package is in review with QTS / Andrew Melis on 2025-11-04 09:11: This package is in review wtih QTS still for full approval / allucent_notes_20251111_182405: Andrew Melis on 2025-08-12 15:08: Pricing is not ready and will be due 8/15. Updated pricing needed by subcontractors. / Andrew Melis on 2025-08-18 11:08: IFC pricing is being updated and resubmitted to QTS due to revisions by the Steel contractor. / Andrew Melis on 2025-08-26 15:08: This change order is in review w/ QTS and Layton to verify and validate the final pricing. / Andrew Melis on 2025-09-17 09:09: PCO is currently in review with QTS / Andrew Melis on 2025-10-07 11:10: This is in review with QTS / Andrew Melis on 2025-10-21 12:10: IFC Package is in review with QTS / Andrew Melis on 2025-11-04 09:11: This package is in review wtih QTS still for full approval / allucent_notes_20251118_192630: Andrew Melis on 2025-08-12 15:08: Pricing is not ready and will be due 8/15. Updated pricing needed by subcontractors. / Andrew Melis on 2025-08-18 11:08: IFC pricing is being updated and resubmitted to QTS due to revisions by the Steel contractor. / Andrew Melis on 2025-08-26 15:08: This change order is in review w/ QTS and Layton to verify and validate the final pricing. / Andrew Melis on 2025-09-17 09:09: PCO is currently in review with QTS / Andrew Melis on 2025-10-07 11:10: This is in review with QTS / Andrew Melis on 2025-10-21 12:10: IFC Package is in review with QTS / Andrew Melis on 2025-11-04 09:11: This package is in review wtih QTS still for full approval / allucent_notes_20251202_153722: Andrew Melis on 2025-08-12 15:08: Pricing is not ready and will be due 8/15. Updated pricing needed by subcontractors. / Andrew Melis on 2025-08-18 11:08: IFC pricing is being updated and resubmitted to QTS due to revisions by the Steel contractor. / Andrew Melis on 2025-08-26 15:08: This change order is in review w/ QTS and Layton to verify and validate the final pricing. / Andrew Melis on 2025-09-17 09:09: PCO is currently in review with QTS / Andrew Melis on 2025-10-07 11:10: This is in review with QTS / Andrew Melis on 2025-10-21 12:10: IFC Package is in review with QTS / Andrew Melis on 2025-11-04 09:11: This package is in review wtih QTS still for full approval / Jason Johnston on 2025-12-01 14:21: Final pricing received. / allucent_notes: 2025-08-12 15:08 - User: Andrew Melis - Date Added: 2025-08-12 15:08 - Note: Pricing is not ready and will be due 8/15. Updated pricing needed by subcontractors. / 2025-08-18 11:08 - User: Andrew Melis - Date Added: 2025-08-18 11:08 - Note: IFC pricin
- QTS-18931: allucent_notes_20251230_164549: Andrew Melis on 2025-12-09 15:40: Pending approved OCO from QTS. It is approved but not signed by QTS / Jason Johnston on 2025-12-16 15:49: not yet / allucent_notes_20251209_203830: Andrew Melis on 2025-12-09 15:40: Pending approved OCO from QTS. It is approved but not signed by QTS / allucent_notes_20251216_165335: Andrew Melis on 2025-12-09 15:40: Pending approved OCO from QTS. It is approved but not signed by QTS / Jason Johnston on 2025-12-16 15:49: not yet / allucent_notes: 2025-12-09 15:40 - User: Andrew Melis - Date Added: 2025-12-09 15:40 - Note: Pending approved OCO from QTS. It is approved but not signed by QTS / 2025-12-16 15:49 - User: Jason Johnston - Date Added: 2025-12-16 15:49 - Note: not yet

| ID | WBS | Activity | Type | Duration | Start | Finish | Predecessors | Complete | Planned start | Planned finish | Precon Phase | Project Section-1 | Baseline |
| --- | --- | --- | --- | --- | --- | --- | --- | --- | --- | --- | --- | --- | --- |
|  | 4 | **Permitting** |  |  | 2025-01-24 | 2025-04-07 |  |  |  |  |  |  |  |
| QTS-3271 |  | Design Team Prepare & Submit City Submittal for Early Foundation Package |  | 5d | 2025-01-24 A | 2025-01-27 A | QTS-1381 | 100% | 2025-01-31 | 2025-02-06 | Permitting | Preconstruction | IGMP |
| QTS-3281 |  | Design Team Prepare & Submit City Submittal for Site Utilities (Wet/Dry), & Underslab Utilities |  | 9d | 2025-01-24 A | 2025-01-27 A | QTS-1381 | 100% | 2025-02-07 | 2025-02-19 | Permitting | Preconstruction | IGMP |
| QTS-3291 |  | Design Team Prepare & Submit City Submittal for Construction Documents Package |  | 9d | 2025-01-24 A | 2025-01-24 A | QTS-1381 | 100% | 2025-02-07 | 2025-02-19 | Permitting | Preconstruction | IGMP |
| QTS-9721 |  | City 1st Review of Construction Documents Package |  | 43d | 2025-01-24 A | 2025-03-18 A | QTS-3291 SS, QTS-1381 SS | 100% | 2025-02-19 | 2025-04-18 | Permitting | Preconstruction | IGMP |
| QTS-9731 |  | City Review of Site Utilities (Wet/Dry), Underslab Utilities Package |  | 8d | 2025-01-24 A | 2025-03-26 A | QTS-3281 SS, QTS-1381 SS | 100% | 2025-03-07 | 2025-03-18 | Permitting | Preconstruction | IGMP |
| QTS-9751 |  | City Review of At Risk Grading Package |  | 1d | 2025-01-24 A | 2025-01-24 A | QTS-9721 SS | 100% |  |  | Permitting | Preconstruction | IGMP |
| QTS-6081 |  | City Review of Deep Foundation Package |  | 9d | 2025-01-27 A | 2025-02-06 A | QTS-6091 SS, QTS-1381 | 100% |  |  | Permitting | Preconstruction | IGMP |
| QTS-6101 |  | Municipality Issue Plan Review Fee |  | 5d | 2025-02-04 A | 2025-02-04 A | QTS-3291, QTS-3281, QTS-3271 | 100% | 2025-02-05 | 2025-02-11 | Permitting | Preconstruction | IGMP |
| QTS-12761 |  | Issue Foundation Permit | milestone | 0d | 2025-02-06 A | 2025-02-06 A | QTS-9721 FF, QTS-6081 FF, QTS-6101 FF, QTS-9751 FF | 100% |  |  | Permitting | Preconstruction | IGMP |
| QTS-14381 |  | Issue Site Utilities (Wet/Dry), Underslab Utilities, Permit | milestone | 0d | 2025-03-26 A | 2025-03-26 A | QTS-9731 FF | 100% | 2025-03-25 | 2025-03-25 | Permitting | Preconstruction | IGMP |
| QTS-19141 |  | Issue IFP Building Permit | milestone | 0d | 2025-04-07 A | 2025-04-07 A | QTS-9721 FF, QTS-15371 FF | 100% |  |  | Permitting | Preconstruction | IGMP |
|  | 7 | **Critical Early Onboarding** |  |  | 2024-11-13 | 2025-02-11 |  |  |  |  |  |  |  |
|  | 3 | **Site Civil** |  |  | 2024-11-18 | 2025-01-15 |  |  |  |  |  |  |  |
| QTS-1011 |  | Site Civil // Issue NTP |  | 10d | 2024-11-18 A | 2024-12-10 A | QTS-1001 SS | 100% | 2024-11-25 | 2024-12-10 | Critical Early Onboarding | Preconstruction | GMP |
| QTS-1061 |  | Site Civil // Owner Approval of NTP |  | 3d | 2024-12-11 A | 2025-01-14 A | QTS-1011 | 100% | 2024-12-12 | 2024-12-16 | Critical Early Onboarding | Preconstruction | GMP |
| QTS-1431 |  | Site Civil // Trade Partner Award |  | 1d | 2025-01-15 A | 2025-01-15 A | QTS-1061 FF, QTS-1061 SS | 100% | 2025-01-31 | 2025-01-31 | Critical Early Onboarding | Preconstruction | GMP |
|  | 2 | **Deep Foundation** |  |  | 2024-11-18 | 2025-02-11 |  |  |  |  |  |  |  |
| QTS-1001 |  | Deep Foundation // Issue NTP |  | 16d | 2024-11-18 A | 2024-12-16 A | QTS-10312 SS | 100% | 2024-10-22 | 2024-11-12 | Critical Early Onboarding | Preconstruction | GMP |
| QTS-1081 |  | Deep Foundation // Owner Approval of NTP |  | 3d | 2024-12-16 A | 2024-12-23 A | QTS-1001 | 100% | 2024-12-16 | 2024-12-18 | Critical Early Onboarding | Preconstruction | GMP |
| QTS-10912 |  | Deep Foundation // Trade Partner Award |  | 3d | 2024-12-23 A | 2024-12-30 A | QTS-1081 | 100% | 2025-01-13 | 2025-01-15 | Critical Early Onboarding | Preconstruction | GMP |
| QTS-10922 |  | Deep Foundation // Design & Approval |  | 5d | 2024-12-30 A | 2025-02-11 A | QTS-10912 | 100% | 2025-01-31 | 2025-02-06 | Critical Early Onboarding | Preconstruction | GMP |
|  | 1 | **Concrete/Foundations/Tilt-Up Wall Panels** |  |  | 2024-11-18 | 2025-01-02 |  |  |  |  |  |  |  |
| QTS-10312 |  | Concrete/Foundations/Tilt-Up Wall Panels // Issue NTP |  | 18d | 2024-11-18 A | 2024-12-20 A | QTS-1051 SS | 100% | 2024-11-25 | 2024-12-20 | Critical Early Onboarding | Preconstruction | GMP |
| QTS-1111 |  | Concrete/Foundations/Tilt-Up Wall Panels // Owner Approval of NTP |  | 5d | 2024-12-20 A | 2024-12-27 A | QTS-10312 FF | 100% | 2024-12-16 | 2024-12-20 | Critical Early Onboarding | Preconstruction | GMP |
| QTS-1131 |  | Concrete/Foundations/Tilt-Up Wall Panels // Trade Partner Award |  | 3d | 2024-12-27 A | 2025-01-02 A | QTS-1111 | 100% | 2025-01-13 | 2025-01-15 | Critical Early Onboarding | Preconstruction | GMP |

| ID | WBS | Activity | Duration | Start | Finish | Predecessors | Complete | Planned start | Planned finish | Precon Phase | Project Section-1 | Baseline | Layton Responsible Party | Project Section | Allucent CSI Group |
| --- | --- | --- | --- | --- | --- | --- | --- | --- | --- | --- | --- | --- | --- | --- | --- |
|  | 5 | **Steel** |  | 2024-11-13 | 2024-11-27 |  |  |  |  |  |  |  |  |  |  |
| QTS-1051 |  | Steel // Issue NTP | 19d | 2024-11-13 A | 2024-11-18 A | QTS-1371 SS | 100% | 2025-01-13 | 2025-02-07 | Critical Early Onboarding | Preconstruction | IGMP |  |  |  |
| QTS-11012 |  | Steel // Owner Approval of NTP | 5d | 2024-11-18 A | 2024-11-27 A | QTS-1051 | 100% | 2024-12-16 | 2024-12-20 | Critical Early Onboarding | Preconstruction | IGMP |  |  |  |
| QTS-1121 |  | Steel // Trade Partner Award | 3d | 2024-11-27 A | 2024-11-27 A | QTS-11012 | 100% | 2025-01-13 | 2025-01-15 | Critical Early Onboarding | Preconstruction | IGMP |  |  |  |
|  | 1 | **Contracting** |  |  |  |  |  |  |  |  |  |  |  |  |  |
|  | 5 | **Bid & Buyout** |  | 2025-01-06 | 2025-07-11 |  |  |  |  |  |  |  |  |  |  |
| QTS-1161 |  | Bid / Level / Buyout // Deep Foundation - Issue Letter of Intent | 5d | 2025-01-06 A | 2025-01-10 A | QTS-1001 | 100% | 2025-01-15 | 2025-01-22 | Bid & Buyout | Preconstruction | IGMP |  |  |  |
| QTS-1171 |  | Bid / Level / Buyout // Earthwork - Issue Letter of Intent | 5d | 2025-01-10 A | 2025-01-15 A | QTS-1431 | 100% | 2025-01-15 | 2025-01-22 | Bid & Buyout | Preconstruction | IGMP |  |  |  |
| QTS-3241 |  | Bid / Level / Buyout // Structural Concrete | 30d | 2025-01-20 A | 2025-02-28 A | QTS-1381 SS | 100% | 2025-01-31 | 2025-03-13 | Bid & Buyout | Preconstruction | GMP |  |  |  |
| QTS-1151 |  | Bid / Level / Buyout // Deep Foundation | 15d | 2025-01-22 A | 2025-02-12 A | QTS-1381 SS | 100% | 2025-01-23 | 2025-02-12 | Bid & Buyout | Preconstruction | IGMP |  |  |  |
| QTS-3251 |  | Bid / Level / Buyout // Earthwork | 15d | 2025-01-27 A | 2025-02-14 A | QTS-1381 | 100% |  |  | Bid & Buyout | Preconstruction | IGMP |  |  |  |
| QTS-1411 |  | Bid / Level / Buyout // Elevator | 8d | 2025-02-19 A | 2025-03-19 A | QTS-1381 | 100% | 2025-02-19 | 2025-02-28 | Bid & Buyout | Preconstruction | IGMP |  |  |  |
| QTS-1421 |  | Bid / Level / Buyout // Electrical | 8d | 2025-02-19 A | 2025-04-08 A | QTS-1381 | 100% | 2025-02-19 | 2025-02-28 | Bid & Buyout | Preconstruction | IGMP |  |  |  |
| QTS-9851 |  | Bid / Level / Buyout // Mechanical & Plumbing | 8d | 2025-02-19 A | 2025-04-08 A | QTS-9711 | 100% | 2025-02-19 | 2025-02-28 | Bid & Buyout | Preconstruction | IGMP |  |  |  |
| QTS-5691 |  | Bid / Level / Buyout // Structural Steel (Letter of Intent) | 7d | 2025-02-26 A | 2025-03-06 A | QTS-1361 | 100% |  |  | Bid & Buyout | Preconstruction | IGMP |  |  |  |
| QTS-16171 |  | Bid / Level / Buyout // Glazing - Issue Letter of Intent | 1d | 2025-03-12 A | 2025-03-12 A | QTS-9711, QTS-1351 SS+59d | 100% |  |  | Bid & Buyout | Preconstruction | IGMP |  |  |  |
| QTS-16021 |  | Bid / Level / Buyout // Roofing - Issue Letter of Intent | 1d | 2025-03-13 A | 2025-03-13 A | QTS-1351 SS+58d, QTS-9711 | 100% |  |  | Bid & Buyout | Preconstruction | IGMP |  |  |  |
| QTS-9891 |  | Bid / Level / Buyout // OH Doors & Loading Dock Equipment - Issue Letter of Intent | 1d | 2025-03-14 A | 2025-03-14 A | QTS-9711 | 100% |  |  | Bid & Buyout | Preconstruction | IGMP |  |  |  |
| QTS-3261 |  | Bid / Level / Buyout // Site Utilities | 30d | 2025-04-08 A | 2025-07-03 A | QTS-1381 | 100% | 2025-04-08 | 2025-05-19 | Bid & Buyout | Preconstruction | IGMP | Chris Perales | Preconstruction | 01ADMIN |
| QTS-3321 |  | Bid / Level / Buyout // Fire Protection | 5d | 2025-04-08 A | 2025-07-11 A | QTS-1151 | 100% | 2025-04-08 | 2025-04-14 | Bid & Buyout | Preconstruction | IGMP | Chris Perales | Preconstruction | 01ADMIN |
| QTS-9871 |  | Bid / Level / Buyout // Controls | 5d | 2025-04-08 A | 2025-06-26 A | QTS-9711, QTS-1421, QTS-9851 | 100% | 2025-04-08 | 2025-04-14 | Bid & Buyout | Preconstruction | IGMP | Chris Perales | Preconstruction | 01ADMIN |
| QTS-9881 |  | Bid / Level / Buyout // Metal Panels Issue Letter of Intent | 1d | 2025-04-08 A | 2025-04-08 A | QTS-9711 | 100% |  |  | Bid & Buyout | Preconstruction | IGMP |  |  |  |
|  | 6 | **Submittals & Procurement** |  | 2024-11-27 | 2026-03-27 |  |  |  |  |  |  |  |  |  |  |
|  | 16 | **Rammed Aggregate Piers** |  | 2025-01-06 | 2025-02-11 |  |  |  |  |  |  |  |  |  |  |
| QTS-1391 |  | Prepare Rammed Aggregate Pier Design | 10d | 2025-01-06 A | 2025-01-25 A | QTS-1161 | 100% | 2025-01-31 | 2025-02-13 | CFCI Procurement | Preconstruction | GMP |  |  |  |
| QTS-6091 |  | Design Team Review & Approve Rammed Aggregate Pier Design | 5d | 2025-01-25 A | 2025-02-11 A | QTS-1391 | 100% | 2025-02-05 | 2025-02-11 | CFCI Procurement | Preconstruction | GMP |  |  |  |

| ID | WBS | Activity | Duration | Start | Finish | Predecessors | Complete | Planned start | Planned finish | Precon Phase | Project Section-1 | Baseline |
| --- | --- | --- | --- | --- | --- | --- | --- | --- | --- | --- | --- | --- |
|  | 22 | **Concrete** |  | 2025-02-17 | 2025-05-12 |  |  |  |  |  |  |  |
|  | 2 | **Concrete Mix Designs** |  | 2025-02-28 | 2025-03-10 |  |  |  |  |  |  |  |
| QTS-6261 |  | Prepare Concrete Mix Designs | 5d | 2025-02-28 A | 2025-03-03 A | QTS-3241 SS+10d | 100% | 2025-02-28 | 2025-03-06 | CFCI Procurement | Preconstruction | GMP |
| QTS-7681 |  | Layton Review Concrete Mix Designs | 1d | 2025-03-04 A | 2025-03-04 A | QTS-6261 | 100% |  |  | CFCI Procurement | Preconstruction | GMP |
| QTS-7871 |  | Design Team Review & Approve Concrete Mix Designs | 10d | 2025-03-05 A | 2025-03-10 A | QTS-7681 | 100% | 2025-03-05 | 2025-03-18 | CFCI Procurement | Preconstruction | GMP |
|  | 1 | **Foundation Rebar** |  | 2025-02-28 | 2025-04-08 |  |  |  |  |  |  |  |
| QTS-6271 |  | Prepare Foundation Rebar Shop Drawings | 5d | 2025-02-28 A | 2025-03-06 A | QTS-3241 SS+10d | 100% |  |  | CFCI Procurement | Preconstruction | GMP |
| QTS-7701 |  | Layton Review Foundation Rebar Shop Drawings | 1d | 2025-03-07 A | 2025-03-07 A | QTS-6271 | 100% |  |  | CFCI Procurement | Preconstruction | GMP |
| QTS-7881 |  | Design Team Review & Approve Foundation Rebar Shop Drawings | 10d | 2025-03-10 A | 2025-03-21 A | QTS-7701 | 100% |  |  | CFCI Procurement | Preconstruction | GMP |
| QTS-11401 |  | Foundation Rebar Procurement | 10d | 2025-03-24 A | 2025-04-08 A | QTS-7881 | 100% | 2025-03-24 | 2025-04-04 | CFCI Procurement | Preconstruction | GMP |
|  | 6 | **Tilt Panel Architectural & Engineered Drawings** |  | 2025-02-28 | 2025-04-01 |  |  |  |  |  |  |  |
| QTS-6251 |  | Prepare Tilt Panel Book | 10d | 2025-02-28 A | 2025-03-13 A | QTS-3241 SS+10d | 100% |  |  | CFCI Procurement | Preconstruction | GMP |
| QTS-12341 |  | Layton Review Tilt Panel Book | 1d | 2025-03-14 A | 2025-03-14 A | QTS-6251 SS+21d, QTS-6251 FF | 100% |  |  | CFCI Procurement | Preconstruction | GMP |
| QTS-12491 |  | Design Team Review & Approve Tilt Panel Book | 15d | 2025-03-17 A | 2025-04-01 A | QTS-12341 | 100% | 2025-03-17 | 2025-04-04 | CFCI Procurement | Preconstruction | GMP |
|  | 14 | **Tilt Panel Rebar Pour** |  | 2025-02-17 | 2025-05-12 |  |  |  |  |  |  |  |
| QTS-7691 |  | Prepare Tilt Panel Pour #1 Rebar Shop Drawings | 5d | 2025-02-17 A | 2025-02-21 A | QTS-9711 | 100% | 2025-02-10 | 2025-02-14 | CFCI Procurement | Preconstruction | GMP |
| QTS-11471 |  | Layton Review Tilt Panel Pour #1 Rebar Shop Drawings | 1d | 2025-02-24 A | 2025-02-24 A | QTS-7691 | 100% |  |  | CFCI Procurement | Preconstruction | GMP |
| QTS-11741 |  | Design Team Review & Approve Tilt Panel Pour #1 Rebar Shop Drawings | 15d | 2025-02-25 A | 2025-04-28 A | QTS-11471 | 100% | 2025-02-25 | 2025-03-17 | CFCI Procurement | Preconstruction | GMP |
| QTS-14071 |  | Tilt Panel P01-P40 Rebar Procurement | 10d | 2025-04-29 A | 2025-05-12 A | QTS-11741 | 100% |  |  | CFCI Procurement | Preconstruction | GMP |
|  | 3 | **Structural Steel** |  | 2024-11-27 | 2025-06-11 |  |  |  |  |  |  |  |
|  | 6 | **Package 1** |  | 2024-11-27 | 2025-04-21 |  |  |  |  |  |  |  |
| QTS-42971 |  | Prepare Structural Steel Shop Drawings (Package 1) | 20d | 2024-11-27 A | 2025-01-31 A | QTS-5711 | 100% | 2025-02-19 | 2025-03-18 | CFCI Procurement | Preconstruction | GMP |
| QTS-42981 |  | Layton Review Structural Steel Shop Drawings (Package 1) | 1d | 2025-02-03 A | 2025-02-03 A | QTS-42971 | 100% | 2025-02-14 | 2025-02-14 | CFCI Procurement | Preconstruction | GMP |
| QTS-42991 |  | Design Team Review & Approve Structural Steel Shop Drawings (Package 1) | 8d | 2025-02-04 A | 2025-02-13 A | QTS-42981 | 100% |  |  | CFCI Procurement | Preconstruction | GMP |
| QTS-43001 |  | Structural Steel Procurement (Package 1) | 47d | 2025-02-14 A | 2025-04-21 A | QTS-42991 | 100% |  |  | CFCI Procurement | Preconstruction | GMP |

Notes:
- QTS-7881: Schedulers Notes: 07/15/24 - GL1-12 foundation rebar shop drawings approved as noted. Corgan / has requested that Suntec provide a "record submittal".

| ID | WBS | Activity | Duration | Start | Finish | Predecessors | Complete | Planned start | Planned finish | Precon Phase | Project Section-1 | Baseline | Project Section | Layton Responsible Party |
| --- | --- | --- | --- | --- | --- | --- | --- | --- | --- | --- | --- | --- | --- | --- |
|  | 4 | **Package 2** |  | 2024-11-27 | 2025-05-07 |  |  |  |  |  |  |  |  |  |
| QTS-43391 |  | Prepare Structural Steel Shop Drawings (Package 2) | 20d | 2024-11-27 A | 2025-02-17 A | QTS-5711 | 100% | 2025-02-19 | 2025-03-18 | CFCI Procurement | Preconstruction | GMP |  |  |
| QTS-43401 |  | Layton Review Structural Steel Shop Drawings (Package 2) | 1d | 2025-02-18 A | 2025-02-18 A | QTS-43391 | 100% | 2025-03-12 | 2025-03-12 | CFCI Procurement | Preconstruction | GMP |  |  |
| QTS-43411 |  | Design Team Review & Approve Structural Steel Shop Drawings (Package 2) | 5d | 2025-02-19 A | 2025-03-03 A | QTS-43401 | 100% | 2025-03-13 | 2025-03-19 | CFCI Procurement | Preconstruction | GMP |  |  |
| QTS-43421 |  | Structural Steel Procurement (Package 2) | 30d | 2025-03-04 A | 2025-05-07 A | QTS-43411 | 100% | 2025-03-20 | 2025-04-30 | CFCI Procurement | Preconstruction | GMP |  |  |
|  | 2 | **Package 3** |  | 2024-11-27 | 2025-05-22 |  |  |  |  |  |  |  |  |  |
| QTS-5671 |  | Prepare Structural Steel Shop Drawings (Package 3) | 20d | 2024-11-27 A | 2025-03-27 A | QTS-1361, QTS-5711, QTS-5711 FF | 100% | 2025-02-19 | 2025-03-18 | CFCI Procurement |  | GMP | Preconstruction |  |
| QTS-11871 |  | Design Team Review & Approve Structural Steel Shop Drawings (Package 3) | 9d | 2025-03-11 A | 2025-03-19 A | QTS-11711 | 100% | 2025-03-31 | 2025-04-10 | CFCI Procurement |  | GMP | Preconstruction |  |
| QTS-13471 |  | Structural Steel Procurement (Package 3) | 30d | 2025-03-20 A | 2025-05-22 A | QTS-11871, QTS-5691 | 100% | 2025-04-11 | 2025-05-22 | CFCI Procurement |  | GMP | Preconstruction | Andrew Melis |
| QTS-11711 |  | Layton Review Structural Steel Shop Drawings (Package 3) | 1d | 2025-03-28 A | 2025-03-28 A | QTS-5671 | 100% |  |  | CFCI Procurement |  | GMP | Preconstruction |  |
|  | 3 | **Package 4** |  | 2025-04-15 | 2025-06-11 |  |  |  |  |  |  |  |  |  |
| QTS-11721 |  | Prepare Structural Steel Shop Drawings (Package 4) | 16d | 2025-04-15 A | 2025-04-22 A | QTS-5671, QTS-5711 | 100% | 2025-04-15 | 2025-05-06 | CFCI Procurement |  | GMP | Preconstruction |  |
| QTS-14021 |  | Layton Review Structural Steel Shop Drawings (Package 4) | 1d | 2025-04-23 A | 2025-04-23 A | QTS-11721 | 100% |  |  | CFCI Procurement |  | GMP | Preconstruction |  |
| QTS-14061 |  | Design Team Review & Approve Structural Steel Shop Drawings (Package 4) | 4d | 2025-04-24 A | 2025-04-29 A | QTS-14021 | 100% |  |  | CFCI Procurement |  | GMP | Preconstruction |  |
| QTS-14861 |  | Structural Steel Procurement (Package 4) | 30d | 2025-04-30 A | 2025-06-11 A | QTS-14061 | 100% |  |  | CFCI Procurement |  | GMP | Preconstruction | Andrew Melis |
|  | 1 | **Anchor Rods & Embeds** |  | 2025-01-23 | 2025-03-14 |  |  |  |  |  |  |  |  |  |
| QTS-1251 |  | Prepare Anchor Rods & Embed Shop Drawings | 5d | 2025-01-23 A | 2025-01-29 A | QTS-9711 | 100% |  |  | CFCI Procurement |  | GMP | Preconstruction |  |
| QTS-3231 |  | Layton Review Anchor Rods & Embed Shop Drawings | 5d | 2025-01-30 A | 2025-02-05 A | QTS-1251 | 100% |  |  | CFCI Procurement |  | GMP | Preconstruction |  |
| QTS-4451 |  | Design Team Review & Approve Anchor Rods & Embed Shop Drawings | 2d | 2025-02-06 A | 2025-02-11 A | QTS-3231 | 100% | 2025-02-06 | 2025-02-07 | CFCI Procurement |  | GMP | Preconstruction |  |
| QTS-6241 |  | Anchor Rods & Embeds Procurement | 15d | 2025-02-12 A | 2025-03-14 A | QTS-4451 FF+3d, QTS-4451 SS+5d | 100% | 2025-02-10 | 2025-02-28 | CFCI Procurement |  | GMP | Preconstruction |  |
|  | 14 | **Miscellaneous Steel** |  | 2025-02-20 | 2025-07-30 |  |  |  |  |  |  |  |  |  |
|  | 1 | **Package 1** |  | 2025-02-20 | 2025-05-07 |  |  |  |  |  |  |  |  |  |
| QTS-43141 |  | Prepare Grating Steel Shop Drawings (Package 1) | 14d | 2025-02-20 A | 2025-03-06 A | QTS-5711 | 100% | 2025-02-20 | 2025-03-11 | CFCI Procurement | Preconstruction | GMP |  |  |
| QTS-43151 |  | Layton Review Grating Steel Shop Drawings (Package 1) | 1d | 2025-03-07 A | 2025-03-07 A | QTS-43141 | 100% | 2025-03-12 | 2025-03-12 | CFCI Procurement | Preconstruction | GMP |  |  |
| QTS-43161 |  | Design Team Review & Approve Grating Steel Shop Drawings (Package 1) | 9d | 2025-03-10 A | 2025-03-21 A | QTS-43151 | 100% | 2025-03-13 | 2025-03-25 | CFCI Procurement | Preconstruction | GMP |  |  |
| QTS-43171 |  | Grating Steel Procurement (Package 1) | 30d | 2025-03-24 A | 2025-05-07 A | QTS-43161 | 100% | 2025-03-24 | 2025-05-02 | CFCI Procurement | Preconstruction | GMP |  |  |

Notes:
- QTS-6241: allucent_notes: Owen Porter on 2024-10-21 14:10: Anchor rods delivered 10.16.24.

| ID | WBS | Activity | Duration | Start | Finish | Predecessors | Complete | Planned start | Planned finish | Precon Phase | Project Section-1 | Baseline | Layton Responsible Party | Project Section | Allucent CSI Group |
| --- | --- | --- | --- | --- | --- | --- | --- | --- | --- | --- | --- | --- | --- | --- | --- |
|  | 2 | **Package 2** |  | 2025-03-07 | 2025-05-14 |  |  |  |  |  |  |  |  |  |  |
| QTS-43181 |  | Prepare Grating Steel Shop Drawings (Package 2) | 14d | 2025-03-07 A | 2025-03-24 A | QTS-5711 | 100% | 2025-03-07 | 2025-03-26 | CFCI Procurement | Preconstruction | GMP |  |  |  |
| QTS-43191 |  | Layton Review Grating Steel Shop Drawings (Package 2) | 1d | 2025-03-25 A | 2025-03-25 A | QTS-43181 | 100% |  |  | CFCI Procurement | Preconstruction | GMP |  |  |  |
| QTS-43201 |  | Design Team Review & Approve Grating Steel Shop Drawings (Package 2) | 9d | 2025-03-26 A | 2025-04-02 A | QTS-43191 | 100% | 2025-03-26 | 2025-04-07 | CFCI Procurement | Preconstruction | GMP |  |  |  |
| QTS-43211 |  | Grating Steel Procurement (Package 2) | 30d | 2025-04-03 A | 2025-05-14 A | QTS-43201 | 100% |  |  | CFCI Procurement | Preconstruction | GMP | Andrew Melis |  |  |
|  | 3 | **Package 3** |  | 2025-03-07 | 2025-06-10 |  |  |  |  |  |  |  |  |  |  |
| QTS-43101 |  | Prepare Grating Steel Shop Drawings (Package 3) | 27d | 2025-03-07 A | 2025-04-11 A | QTS-5711 | 100% | 2025-03-07 | 2025-04-14 | CFCI Procurement | Preconstruction | GMP |  |  |  |
| QTS-43111 |  | Layton Review Grating Steel Shop Drawings (Package 3) | 1d | 2025-04-14 A | 2025-04-14 A | QTS-43101 | 100% |  |  | CFCI Procurement | Preconstruction | GMP |  |  |  |
| QTS-43121 |  | Design Team Review & Approve Grating Steel Shop Drawings (Package 3) | 6d | 2025-04-15 A | 2025-04-28 A | QTS-43111 | 100% | 2025-04-15 | 2025-04-22 | CFCI Procurement | Preconstruction | GMP |  |  |  |
| QTS-43131 |  | Grating Steel Procurement (Package 3) | 30d | 2025-04-29 A | 2025-06-10 A | QTS-43121 | 100% |  |  | CFCI Procurement | Preconstruction | GMP | Andrew Melis |  |  |
|  | 4 | **Package 4** |  | 2025-04-11 | 2025-07-30 |  |  |  |  |  |  |  |  |  |  |
| QTS-43221 |  | Prepare Grating Steel Shop Drawings (Package 4) | 47d | 2025-04-11 A | 2025-05-12 A | QTS-5711 | 100% | 2025-03-07 | 2025-05-12 | CFCI Procurement | Preconstruction | GMP |  |  |  |
| QTS-43231 |  | Layton Review Grating Steel Shop Drawings (Package 4) | 1d | 2025-05-13 A | 2025-05-13 A | QTS-43221 | 100% |  |  | CFCI Procurement | Preconstruction | GMP |  |  |  |
| QTS-43241 |  | Design Team Review & Approve Grating Steel Shop Drawings (Package 4) | 6d | 2025-05-14 A | 2025-06-17 A | QTS-43231 | 100% | 2025-05-14 | 2025-05-21 | CFCI Procurement | Preconstruction | GMP | Andrew Melis |  |  |
| QTS-43251 |  | Grating Steel Procurement (Package 4) | 30d | 2025-06-18 A | 2025-07-30 A | QTS-43241 | 100% |  |  | CFCI Procurement | Preconstruction | GMP | Andrew Melis | Preconstruction | 01ADMIN |
|  | 18 | **Stairs** |  | 2025-02-25 | 2025-09-10 |  |  |  |  |  |  |  |  |  |  |
|  | 1 | **Package 01** |  | 2025-02-25 | 2025-05-13 |  |  |  |  |  |  |  |  |  |  |
| QTS-43261 |  | Prepare Stair Steel Shop Drawings (Package 1) | 14d | 2025-02-25 A | 2025-03-14 A | QTS-5711 | 100% |  |  | CFCI Procurement | Preconstruction | GMP |  |  |  |
| QTS-43271 |  | Layton Review Stair Steel Shop Drawings (Package 1) | 1d | 2025-03-17 A | 2025-03-17 A | QTS-43261 | 100% |  |  | CFCI Procurement | Preconstruction | GMP |  |  |  |
| QTS-43281 |  | Design Team Review & Approve Stair Steel Shop Drawings (Package 1) | 9d | 2025-03-18 A | 2025-04-01 A | QTS-43271 | 100% | 2025-03-18 | 2025-03-28 | CFCI Procurement | Preconstruction | GMP |  |  |  |
| QTS-43291 |  | Stair Steel Procurement (Package 1) | 30d | 2025-04-02 A | 2025-05-13 A | QTS-43281 | 100% |  |  | CFCI Procurement | Preconstruction | GMP |  |  |  |
|  | 12 | **Sequence 701** |  | 2025-05-14 | 2025-06-25 |  |  |  |  |  |  |  |  |  |  |
| QTS-49361 |  | Prepare Stair Steel Shop Drawings (Sequence 701) | 9d | 2025-05-14 A | 2025-05-27 A | QTS-5711 | 100% |  |  | CFCI Procurement | Preconstruction | GMP |  |  |  |
| QTS-49371 |  | Layton Review Stair Steel Shop Drawings (Sequence 701) | 1d | 2025-05-28 A | 2025-05-28 A | QTS-49361 | 100% |  |  | CFCI Procurement | Preconstruction | GMP |  |  |  |
| QTS-49381 |  | Design Team Review & Approve Stair Steel Shop Drawings (Sequence 701) | 6d | 2025-05-29 A | 2025-06-05 A | QTS-49371 | 100% |  |  | CFCI Procurement | Preconstruction | GMP |  |  |  |
| QTS-49391 |  | Stair Steel Procurement (Sequence 701) | 8d | 2025-06-09 A | 2025-06-25 A | QTS-49381 | 100% | 2025-06-09 | 2025-06-18 | CFCI Procurement | Preconstruction | GMP | Andrew Melis | Preconstruction | 01ADMIN |

| ID | WBS | Activity | Duration | Start | Finish | Predecessors | Complete | Planned start | Planned finish | Precon Phase | Project Section-1 | Baseline | Layton Responsible Party | Project Section | Allucent CSI Group |
| --- | --- | --- | --- | --- | --- | --- | --- | --- | --- | --- | --- | --- | --- | --- | --- |
|  | 2 | **Sequence 702** |  | 2025-03-07 | 2025-06-13 |  |  |  |  |  |  |  |  |  |  |
| QTS-43341 |  | Prepare Stair Steel Shop Drawings (Package 2) | 9d | 2025-03-07 A | 2025-03-18 A | QTS-5711 | 100% | 2025-03-07 | 2025-03-19 | CFCI Procurement | Preconstruction | GMP |  |  |  |
| QTS-43351 |  | Layton Review Stair Steel Shop Drawings (Package 2) | 1d | 2025-03-19 A | 2025-03-19 A | QTS-43341 | 100% |  |  | CFCI Procurement | Preconstruction | GMP |  |  |  |
| QTS-43361 |  | Design Team Review & Approve Stair Steel Shop Drawings (Package 2) | 6d | 2025-03-20 A | 2025-04-08 A | QTS-43351 | 100% | 2025-03-20 | 2025-03-27 | CFCI Procurement | Preconstruction | GMP |  |  |  |
| QTS-43371 |  | Stair Steel Procurement (Sequence 702) | 30d | 2025-04-09 A | 2025-06-13 A | QTS-43361 | 100% | 2025-04-09 | 2025-05-20 | CFCI Procurement | Preconstruction | GMP | Andrew Melis |  |  |
|  | 3 | **Sequence 703** |  | 2025-03-07 | 2025-06-17 |  |  |  |  |  |  |  |  |  |  |
| QTS-43301 |  | Prepare Stair Steel Shop Drawings (Package 3) | 17d | 2025-03-07 A | 2025-03-31 A | QTS-5711 | 100% |  |  | CFCI Procurement | Preconstruction | GMP |  |  |  |
| QTS-43311 |  | Layton Review Stair Steel Shop Drawings (Package 3) | 1d | 2025-04-01 A | 2025-04-01 A | QTS-43301 | 100% |  |  | CFCI Procurement | Preconstruction | GMP |  |  |  |
| QTS-43321 |  | Design Team Review & Approve Stair Steel Shop Drawings (Package 3) | 6d | 2025-04-01 A | 2025-05-12 A | QTS-43311 | 100% | 2025-04-02 | 2025-04-09 | CFCI Procurement | Preconstruction | GMP |  |  |  |
| QTS-43331 |  | Stair Steel Procurement (Sequence 703) | 30d | 2025-05-13 A | 2025-06-17 A | QTS-43321 | 100% | 2025-05-13 | 2025-06-24 | CFCI Procurement | Preconstruction | GMP | Andrew Melis |  |  |
|  | 4 | **Sequence 704** |  | 2025-06-09 | 2025-08-29 |  |  |  |  |  |  |  |  |  |  |
| QTS-49061 |  | Stair Steel Procurement (Sequence 704) | 59d | 2025-06-09 A | 2025-08-29 A | QTS-49381 | 100% |  |  | CFCI Procurement | Preconstruction | GMP | Andrew Melis | Preconstruction | 01ADMIN |
|  | 5 | **Sequence 705** |  | 2025-04-28 | 2025-06-11 |  |  |  |  |  |  |  |  |  |  |
| QTS-49221 |  | Stair Steel Procurement (Sequence 705) | 32d | 2025-04-28 A | 2025-06-11 A | QTS-49381 | 100% |  |  | CFCI Procurement | Preconstruction | GMP | Andrew Melis |  |  |
|  | 6 | **Sequence 706** |  | 2025-06-09 | 2025-07-31 |  |  |  |  |  |  |  |  |  |  |
| QTS-49181 |  | Stair Steel Procurement (Sequence 706) | 38d | 2025-06-09 A | 2025-07-31 A | QTS-49381 | 100% |  |  | CFCI Procurement | Preconstruction | GMP | Andrew Melis | Preconstruction | 01ADMIN |
|  | 7 | **Sequence 707** |  | 2025-06-09 | 2025-09-10 |  |  |  |  |  |  |  |  |  |  |
| QTS-49141 |  | Stair Steel Procurement (Sequence 707) | 66d | 2025-06-09 A | 2025-09-10 A | QTS-49381 | 100% |  |  | CFCI Procurement | Preconstruction | GMP | Andrew Melis | Preconstruction | 01ADMIN |
|  | 8 | **Sequence 708** |  | 2025-06-25 | 2025-08-13 |  |  |  |  |  |  |  |  |  |  |
| QTS-49101 |  | Stair Steel Procurement (Sequence 708) | 30d | 2025-06-25 A | 2025-08-13 A | QTS-49381 | 100% | 2025-06-25 | 2025-08-06 | CFCI Procurement | Preconstruction | GMP | Andrew Melis | Preconstruction | 01ADMIN |
|  | 10 | **Sequence 709** |  | 2025-06-09 | 2025-08-15 |  |  |  |  |  |  |  |  |  |  |
| QTS-49301 |  | Stair Steel Procurement (Sequence 709) | 49d | 2025-06-09 A | 2025-08-15 A | QTS-49381 | 100% |  |  | CFCI Procurement | Preconstruction | GMP | Andrew Melis | Preconstruction | 01ADMIN |
|  | 11 | **Sequence 710** |  | 2025-06-09 | 2025-07-30 |  |  |  |  |  |  |  |  |  |  |
| QTS-49341 |  | Stair Steel Procurement (Sequence 710) | 33d | 2025-06-09 A | 2025-07-30 A | QTS-49381 | 100% | 2025-06-09 | 2025-07-24 | CFCI Procurement | Preconstruction | GMP | Andrew Melis | Preconstruction | 01ADMIN |

| ID | WBS | Activity | Duration | Start | Finish | Predecessors | Complete | Remaining | Planned start | Planned finish | Total float | Free float | Expected finish | Precon Phase | Project Section-1 | Baseline | Layton Responsible Party | Project Section | Allucent CSI Group |
| --- | --- | --- | --- | --- | --- | --- | --- | --- | --- | --- | --- | --- | --- | --- | --- | --- | --- | --- | --- |
|  | 9 | **Sequence 711** |  | 2025-06-25 | 2025-08-13 |  |  |  |  |  |  |  |  |  |  |  |  |  |  |
| QTS-49261 |  | Stair Steel Procurement (Sequence 711) | 30d | 2025-06-25 A | 2025-08-13 A | QTS-49381 | 100% |  | 2025-06-25 | 2025-08-06 |  |  |  | CFCI Procurement | Preconstruction | GMP | Andrew Melis | Preconstruction | 01ADMIN |
|  | 34 | **Supplemental Steel** |  | 2025-06-19 | 2025-08-01 |  |  |  |  |  |  |  |  |  |  |  |  |  |  |
| QTS-50801 |  | Supplemental Steel Zone 1 Procurement | 31d | 2025-06-19 A | 2025-08-01 A | QTS-1371 SS | 100% |  | 2025-06-25 | 2025-08-07 |  |  |  | CFCI Procurement | Preconstruction | GMP | Andrew Melis | Preconstruction | 01ADMIN |
|  | 28 | **RTU Curbs** |  | 2025-04-09 | 2025-07-21 |  |  |  |  |  |  |  |  |  |  |  |  |  |  |
| QTS-17891 |  | Prepare RTU Curb Submittals | 10d | 2025-04-09 A | 2025-05-20 A | QTS-9851 | 100% |  | 2025-04-09 | 2025-04-22 |  |  |  | CFCI Procurement | Preconstruction | GMP | Chris Perales |  |  |
| QTS-18741 |  | Layton Review RTU Curb Submittals | 1d | 2025-05-21 A | 2025-05-21 A | QTS-17891 | 100% |  |  |  |  |  |  | CFCI Procurement | Preconstruction | GMP | Chris Perales |  |  |
| QTS-18821 |  | Design Team Review & Approve RTU Curb Submittals | 8d | 2025-05-22 A | 2025-06-03 A | QTS-18741 | 100% |  |  |  |  |  |  | CFCI Procurement | Preconstruction | GMP | Chris Perales |  |  |
| QTS-19121 |  | RTU Curbs Procurement | 40d | 2025-06-04 A | 2025-07-21 A | QTS-18821 | 100% |  | 2025-06-04 | 2025-07-30 |  |  |  | CFCI Procurement | Preconstruction | GMP | Chris Perales | Preconstruction | 01ADMIN |
|  | 5 | **Interior Frames/ Doors** |  | 2025-04-08 | 2026-01-16 |  |  |  |  |  |  |  |  |  |  |  |  |  |  |
| QTS-9791 |  | Prepare Frame/ Door Submittals | 22d | 2025-04-08 A | 2025-04-16 A | QTS-9711 | 100% |  | 2025-04-08 | 2025-05-07 |  |  |  | CFCI Procurement | Preconstruction | GMP |  |  |  |
| QTS-12101 |  | Layton Review Frame/ Door Submittals | 3d | 2025-04-17 A | 2025-06-23 A | QTS-9791 | 100% |  | 2025-04-17 | 2025-04-21 |  |  |  | CFCI Procurement | Preconstruction | GMP | Hunter Wright |  |  |
| QTS-12641 |  | Design Team Review & Approve Frame/Door Submittals | 6d | 2025-06-24 A | 2025-07-01 A | QTS-12101 | 100% |  |  |  |  |  |  | CFCI Procurement | Preconstruction | GMP | Hunter Wright | Preconstruction | 01ADMIN |
| QTS-44761 |  | Layton Review Frame/ Door Shop Drawings | 25d | 2025-07-02 A | 2025-08-13 A | QTS-12641 | 100% |  | 2025-07-02 | 2025-08-06 |  |  |  | CFCI Procurement | Preconstruction | GMP | Hunter Wright | Preconstruction | 01ADMIN |
| QTS-44771 |  | Design Team Review & Approve Frame/Door Shop Drawings | 2d | 2025-08-14 A | 2025-08-29 A | QTS-44761 | 100% |  | 2025-08-14 | 2025-08-15 |  |  |  | CFCI Procurement | Preconstruction | GMP | Hunter Wright | Preconstruction | 01ADMIN |
| QTS-15231 |  | FOH / Zone 1 Frame Procurement | 50d | 2025-09-02 A | 2025-11-03 A | QTS-12641, QTS-44771 | 100% |  | 2025-09-02 | 2025-11-10 |  |  |  | CFCI Procurement | Preconstruction | GMP | Hunter Wright | Preconstruction | 01ADMIN |
| QTS-99620 |  | HM Door Frame Procurement | 62d | 2025-09-23 A | 2025-12-09 A | QTS-44771 | 100% |  | 2025-09-02 | 2025-11-26 |  |  |  | CFCI Procurement | Preconstruction | GMP | Hunter Wright | Preconstruction | 01ADMIN |
| QTS-99630 |  | HM Door Procurement | 62d | 2025-09-23 A | 2026-01-16 | QTS-44771 | 95% | 3d | 2025-09-02 | 2025-11-26 | 58d | 0d | 2026-01-19 | CFCI Procurement | Preconstruction | GMP | Hunter Wright | Preconstruction | 01ADMIN |
| QTS-99640 |  | Wood Door Procurement | 75d | 2025-09-23 A | 2026-01-14 | QTS-44771 | 100% | 0d | 2025-09-02 | 2025-12-17 | 61d | 0d | 2026-01-09 | CFCI Procurement | Preconstruction | GMP | Hunter Wright | Preconstruction | 01ADMIN |
| QTS-99650 |  | Door Hardware Procurement | 52d | 2025-09-23 A | 2025-12-10 A | QTS-44771 | 100% |  | 2025-09-02 | 2025-11-12 |  |  |  | CFCI Procurement | Preconstruction | GMP | Hunter Wright | Preconstruction | 01ADMIN |
|  | 29 | **Exterior Door Frames** |  | 2025-04-08 | 2025-06-10 |  |  |  |  |  |  |  |  |  |  |  |  |  |  |
| QTS-9861 |  | Prepare Exterior Door Frames Submittals | 10d | 2025-04-08 A | 2025-04-16 A | QTS-9711 | 100% |  | 2025-04-08 | 2025-04-21 |  |  |  | CFCI Procurement | Preconstruction | GMP |  |  |  |
| QTS-11751 |  | Layton Review Exterior Door Frames Submittals | 2d | 2025-04-15 A | 2025-04-16 A | QTS-9861 SS+5d, QTS-9861 FF | 100% |  |  |  |  |  |  | CFCI Procurement | Preconstruction | GMP |  |  |  |
| QTS-12111 |  | Design Team Review & Approve Exterior Door Frames Submittals | 10d | 2025-04-17 A | 2025-05-07 A | QTS-11751 | 100% |  | 2025-04-17 | 2025-04-30 |  |  |  | CFCI Procurement | Preconstruction | GMP |  |  |  |
| QTS-13611 |  | Exterior Frames Procurement | 12d | 2025-05-08 A | 2025-06-10 A | QTS-12111 | 100% |  | 2025-05-08 | 2025-05-23 |  |  |  | CFCI Procurement | Preconstruction | GMP | Andrew Melis |  |  |

Notes:
- QTS-44771: allucent_notes: Jack Garrett on 2025-08-19 09:08: This is the final due date for the revised submittal after receiving the Approved as Noted Submittal. / allucent_notes: 2025-08-19 09:08 - User: Jack Garrett - Date Added: 2025-08-19 09:08 - Note: This is the final due date for the revised submittal after receiving the Approved as Noted Submittal.
- QTS-15231: allucent_notes_20251027_224008: Jack Garrett on 2025-10-27 10:10: Pushed back to 10/30. / allucent_notes_20251028_163138: Jack Garrett on 2025-10-27 10:10: Pushed back to 10/30. / allucent_notes_20251104_160200: Jack Garrett on 2025-10-27 10:10: Pushed back to 10/30. / Jack Garrett on 2025-11-04 08:11: anchor issues from supplier frame delivery delayed till 11/3/2025 / allucent_notes: 2025-10-27 10:10 - User: Jack Garrett - Date Added: 2025-10-27 10:10 - Note: Pushed back to 10/30. / 2025-11-04 08:11 - User: Jack Garrett - Date Added: 2025-11-04 08:11 - Note: anchor issues from supplier frame delivery delayed till 11/3/2025
- QTS-99630: allucent_notes_20251230_164549: Jack Garrett on 2025-12-30 09:44: Delayed till mid January. RFI 682. / allucent_notes: 2025-12-30 09:44 - User: Jack Garrett - Date Added: 2025-12-30 09:44 - Note: Delayed till mid January. RFI 682.
- QTS-99650: allucent_notes_20251209_203830: Hunter Wright on 2025-12-09 15:23: arriving 12/10 / allucent_notes_20251216_165335: Hunter Wright on 2025-12-09 15:23: arriving 12/10 / allucent_notes: 2025-12-09 15:23 - User: Hunter Wright - Date Added: 2025-12-09 15:23 - Note: arriving 12/10
- QTS-9861: Schedulers Notes: 10/08/24 - New exterior door frame submittal section created to coordinate / door frame installation during the tilt panel framing process.

| ID | WBS | Activity | Duration | Start | Finish | Predecessors | Complete | Planned start | Planned finish | Calendar | Precon Phase | Project Section-1 | Baseline | Layton Responsible Party | Project Section | Allucent CSI Group |
| --- | --- | --- | --- | --- | --- | --- | --- | --- | --- | --- | --- | --- | --- | --- | --- | --- |
|  | 19 | **Curtain Wall/ Glazing** |  | 2025-03-14 | 2025-10-17 |  |  |  |  |  |  |  |  |  |  |  |
| QTS-16461 |  | Prepare Curtain Wall/ Glazing Submittals | 35d | 2025-03-14 A | 2025-05-23 A | QTS-16171 | 100% | 2025-03-14 | 2025-05-01 |  | CFCI Procurement | Preconstruction | GMP | Andrew Melis |  |  |
| QTS-16471 |  | Layton Review Curtain Wall/ Glazing Submittals | 3d | 2025-05-27 A | 2025-05-27 A | QTS-16461 | 100% | 2025-05-27 | 2025-05-29 |  | CFCI Procurement | Preconstruction | GMP | Andrew Melis |  |  |
| QTS-16801 |  | Design Team Review & Approve Curtain Wall/ Glazing Submittals | 15d | 2025-05-28 A | 2025-07-02 A | QTS-16471 | 100% | 2025-05-28 | 2025-06-17 |  | CFCI Procurement | Preconstruction | GMP | Andrew Melis | Preconstruction | 01ADMIN |
| QTS-18561 |  | Curtain Wall/ Glazing Procurement | 90d | 2025-07-08 A | 2025-10-17 A | QTS-11901, QTS-16801 | 100% | 2025-07-03 | 2025-11-07 |  | CFCI Procurement | Preconstruction | GMP | Andrew Melis | Preconstruction | 01ADMIN |
|  | 17 | **Waterproofing** |  | 2025-04-11 | 2025-05-07 |  |  |  |  |  |  |  |  |  |  |  |
| QTS-8691 |  | Prepare Waterproofing Submittals | 3d | 2025-04-11 A | 2025-04-11 A | QTS-7001 | 100% | 2025-04-11 | 2025-04-15 |  | CFCI Procurement | Preconstruction | GMP |  |  |  |
| QTS-9781 |  | Layton Review Waterproofing Submittals | 1d | 2025-04-14 A | 2025-04-14 A | QTS-8691 SS+2d, QTS-8691 FF | 100% |  |  |  | CFCI Procurement | Preconstruction | GMP |  |  |  |
| QTS-10071 |  | Design Team Review & Approve Waterproofing Submittals | 5d | 2025-04-15 A | 2025-04-22 A | QTS-9781 | 100% | 2025-04-15 | 2025-04-21 |  | CFCI Procurement | Preconstruction | GMP |  |  |  |
| QTS-10081 |  | Waterproofing Procurement | 6d | 2025-04-23 A | 2025-05-07 A | QTS-10071 | 100% | 2025-04-23 | 2025-04-30 |  | CFCI Procurement | Preconstruction | GMP |  |  |  |
|  | 13 | **Roofing** |  | 2025-04-08 | 2025-09-02 |  |  |  |  |  |  |  |  |  |  |  |
| QTS-16141 |  | Prepare Roofing Submittals | 10d | 2025-04-08 A | 2025-04-11 A | QTS-16021 | 100% | 2025-04-08 | 2025-04-21 |  | CFCI Procurement | Preconstruction | GMP |  |  |  |
| QTS-17641 |  | Layton Review Roofing Submittals | 1d | 2025-04-14 A | 2025-05-19 A | QTS-16141 | 100% | 2025-04-14 | 2025-04-14 |  | CFCI Procurement | Preconstruction | GMP | Andrew Melis |  |  |
| QTS-17871 |  | Design Team Review & Approve Roofing Submittals | 1d | 2025-05-20 A | 2025-05-20 A | QTS-17641 | 100% |  |  |  | CFCI Procurement | Preconstruction | GMP | Andrew Melis |  |  |
| QTS-18881 |  | Roofing Procurement | 38d | 2025-07-02 A | 2025-09-02 A | QTS-17871 | 100% | 2025-06-25 | 2025-08-18 |  | CFCI Procurement | Preconstruction | GMP | Andrew Melis | Preconstruction | 01ADMIN |
|  | 9 | **Overhead Doors** |  | 2025-03-17 | 2025-12-12 |  |  |  |  |  |  |  |  |  |  |  |
| QTS-10091 |  | Prepare OH Doors Submittals | 15d | 2025-03-17 A | 2025-03-31 A | QTS-9891 | 100% | 2025-03-17 | 2025-04-04 |  | CFCI Procurement | Preconstruction | GMP |  |  |  |
| QTS-13121 |  | Layton Review OH Doors Submittals | 1d | 2025-04-01 A | 2025-04-01 A | QTS-10091 | 100% |  |  |  | CFCI Procurement | Preconstruction | GMP |  |  |  |
| QTS-13491 |  | Design Team Review & Approve OH Doors Submittals | 12d | 2025-04-02 A | 2025-04-17 A | QTS-13121 | 100% |  |  |  | CFCI Procurement | Preconstruction | GMP |  |  |  |
| QTS-16151 |  | OH Doors Procurement | 100d | 2025-04-18 A | 2025-12-12 A | QTS-13491 | 100% | 2025-04-18 | 2025-09-09 |  | CFCI Procurement | Preconstruction | GMP | Andrew Melis | Preconstruction | 01ADMIN |
|  | 7 | **Freight Elevators** |  | 2025-03-26 | 2026-01-09 |  |  |  |  |  |  |  |  |  |  |  |
| QTS-14611 |  | Prepare Freight Elevator E2 Shop Drawings | 11d | 2025-03-26 A | 2025-04-23 A | QTS-9761 FF | 100% | 2025-03-26 | 2025-04-09 |  | CFCI Procurement | Preconstruction | GMP |  |  |  |
| QTS-9761 |  | Prepare Freight Elevator E4 Shop Drawings | 10d | 2025-03-26 A | 2025-04-23 A | QTS-9711, QTS-1351 SS, QTS-1411 SS+10d | 100% | 2025-03-26 | 2025-04-08 |  | CFCI Procurement | Preconstruction | GMP |  |  |  |
| QTS-15561 |  | Layton Review Freight Elevator E2 Shop Drawings | 5d | 2025-04-24 A | 2025-05-07 A | QTS-14611 | 100% | 2025-04-24 | 2025-04-30 |  | CFCI Procurement | Preconstruction | GMP |  |  |  |
| QTS-18571 |  | Layton Review Freight Elevator E4 Shop Drawings | 5d | 2025-04-24 A | 2025-05-07 A | QTS-9761 | 100% | 2025-04-24 | 2025-04-30 |  | CFCI Procurement | Preconstruction | GMP |  |  |  |
| QTS-15811 |  | Design Team Review & Approve Freight Elevator E2 Shop Drawings | 5d | 2025-05-08 A | 2025-05-13 A | QTS-15561 | 100% | 2025-05-08 | 2025-05-14 |  | CFCI Procurement | Preconstruction | GMP |  |  |  |
| QTS-18601 |  | Design Team Review & Approve Freight Elevator E4 Shop Drawings | 5d | 2025-05-08 A | 2025-05-13 A | QTS-18571 | 100% | 2025-05-08 | 2025-05-14 |  | CFCI Procurement | Preconstruction | GMP |  |  |  |
| QTS-17311 |  | FOH Freight Elevator E2 Procurement | 140d | 2025-05-14 A | 2026-01-09 A | QTS-15571, QTS-1411, QTS-15811 | 100% | 2025-05-14 | 2025-10-27 | QTS-PHX3 DC1 - 6 day w/ Holidays | CFCI Procurement | Preconstruction | GMP | Andrew Melis | Preconstruction | 01ADMIN |
| QTS-18861 |  | BOH Freight Elevator E4 Procurement | 140d | 2025-05-14 A | 2025-12-29 A | QTS-18601, QTS-15571, QTS-1411 | 100% | 2025-05-14 | 2025-12-02 |  | CFCI Procurement | Preconstruction | GMP | Andrew Melis | Preconstruction | 01ADMIN |

Notes:
- QTS-8691: Schedulers Notes: 08/07/24 - To mitigate schedule delay, Layton requested waterproofing / submittals prior to execution of the GMP and execution of the subcontract.
- QTS-16151: allucent_notes_20251014_152335: Andrew Melis on 2025-09-17 09:09: The OH Doors are ordered based on field measurements. They are planning to start field measuring doors next week for FOH / allucent_notes_20251021_145627: Andrew Melis on 2025-09-17 09:09: The OH Doors are ordered based on field measurements. They are planning to start field measuring doors next week for FOH / allucent_notes_20251027_224008: Andrew Melis on 2025-09-17 09:09: The OH Doors are ordered based on field measurements. They are planning to start field measuring doors next week for FOH / allucent_notes_20251028_163138: Andrew Melis on 2025-09-17 09:09: The OH Doors are ordered based on field measurements. They are planning to start field measuring doors next week for FOH / allucent_notes_20251104_160200: Andrew Melis on 2025-09-17 09:09: The OH Doors are ordered based on field measurements. They are planning to start field measuring doors next week for FOH / allucent_notes_20251111_182405: Andrew Melis on 2025-09-17 09:09: The OH Doors are ordered based on field measurements. They are planning to start field measuring doors next week for FOH / allucent_notes_20251118_192630: Andrew Melis on 2025-09-17 09:09: The OH Doors are ordered based on field measurements. They are planning to start field measuring doors next week for FOH / allucent_notes_20251202_153722: Andrew Melis on 2025-09-17 09:09: The OH Doors are ordered based on field measurements. They are planning to start field measuring doors next week for FOH / allucent_notes_20251209_203830: Andrew Melis on 2025-09-17 09:09: The OH Doors are ordered based on field measurements. They are planning to start field measuring doors next week for FOH / allucent_notes_20251216_165335: Andrew Melis on 2025-09-17 09:09: The OH Doors are ordered based on field measurements. They are planning to start field measuring doors next week for FOH / allucent_notes: 2025-09-17 09:09 - User: Andrew Melis - Date Added: 2025-09-17 09:09 - Note: The OH Doors are ordered based on field measurements. They are planning to start field measuring doors next week for FOH
- QTS-17311: allucent_notes_20251230_164549: Andrew Melis on 2025-12-02 13:46: 12/10 ETA / Andrew Melis on 2025-12-16 12:23: elevator not yet delivered onsite / Andrew Melis on 2025-12-30 13:04: pending arrival / allucent_notes_20251202_153722: Andrew Melis on 2025-12-02 13:46: 12/10 ETA / allucent_notes_20251209_203830: Andrew Melis on 2025-12-02 13:46: 12/10 ETA / allucent_notes_20251216_165335: Andrew Melis on 2025-12-02 13:46: 12/10 ETA / Andrew Melis on 2025-12-16 12:23: elevator not yet delivered onsite / allucent_notes: 2025-12-02 13:46 - User: Andrew Melis - Date Added: 2025-12-02 13:46 - Note: 12/10 ETA / 2025-12-16 12:23 - User: Andrew Melis - Date Added: 2025-12-16 12:23 - Note: elevator not yet delivered onsite / 2025-12-30 13:04 - User: Andrew Melis - Date Add
- QTS-18861: allucent_notes_20251230_164549: Andrew Melis on 2025-12-02 13:46: 12/10 ETA / Andrew Melis on 2025-12-16 12:24: Material is not yet delivered to site / allucent_notes_20251202_153722: Andrew Melis on 2025-12-02 13:46: 12/10 ETA / allucent_notes_20251209_203830: Andrew Melis on 2025-12-02 13:46: 12/10 ETA / allucent_notes_20251216_165335: Andrew Melis on 2025-12-02 13:46: 12/10 ETA / Andrew Melis on 2025-12-16 12:24: Material is not yet delivered to site / allucent_notes: 2025-12-02 13:46 - User: Andrew Melis - Date Added: 2025-12-02 13:46 - Note: 12/10 ETA / 2025-12-16 12:24 - User: Andrew Melis - Date Added: 2025-12-16 12:24 - Note: Material is not yet delivered to site

| ID | WBS | Activity | Duration | Start | Finish | Predecessors | Complete | Planned start | Planned finish | Precon Phase | Project Section-1 | Baseline | Layton Responsible Party | Project Section | Allucent CSI Group |
| --- | --- | --- | --- | --- | --- | --- | --- | --- | --- | --- | --- | --- | --- | --- | --- |
|  | 31 | **Freight Elevator Doors** |  | 2025-03-26 | 2025-05-07 |  |  |  |  |  |  |  |  |  |  |
| QTS-14621 |  | Prepare Freight Elevator Shop Drawings | 5d | 2025-03-26 A | 2025-04-23 A | QTS-9761 FF | 100% | 2025-03-26 | 2025-04-01 | CFCI Procurement | Preconstruction | GMP |  |  |  |
| QTS-15571 |  | Layton Review Freight Elevator Shop Drawings | 5d | 2025-04-24 A | 2025-05-07 A | QTS-14621 | 100% | 2025-04-24 | 2025-04-30 | CFCI Procurement | Preconstruction | GMP |  |  |  |
|  | 23 | **Passenger Elevator** |  | 2025-03-26 | 2025-12-01 |  |  |  |  |  |  |  |  |  |  |
| QTS-17041 |  | Prepare Passenger Elevator E1 Shop Drawings | 11d | 2025-03-26 A | 2025-04-23 A | QTS-9771 SS | 100% | 2025-03-26 | 2025-04-09 | CFCI Procurement | Preconstruction | GMP |  |  |  |
| QTS-9771 |  | Prepare Passenger Elevator E3 Shop Drawings | 11d | 2025-03-26 A | 2025-04-23 A | QTS-9711, QTS-1351 SS, QTS-1411 | 100% | 2025-03-26 | 2025-04-09 | CFCI Procurement | Preconstruction | GMP |  |  |  |
| QTS-17031 |  | Layton Review Passenger Elevator E3 Shop Drawings | 5d | 2025-04-24 A | 2025-05-07 A | QTS-9771 | 100% | 2025-04-24 | 2025-04-30 | CFCI Procurement | Preconstruction | GMP |  |  |  |
| QTS-21751 |  | Layton Review Passenger Elevator E1 Shop Drawings | 5d | 2025-04-24 A | 2025-05-07 A | QTS-17041 | 100% | 2025-04-24 | 2025-04-30 | CFCI Procurement | Preconstruction | GMP |  |  |  |
| QTS-17501 |  | Design Team Review & Approve Passenger Elevator E3 Shop Drawings | 5d | 2025-05-08 A | 2025-05-13 A | QTS-17031 | 100% | 2025-05-08 | 2025-05-14 | CFCI Procurement | Preconstruction | GMP |  |  |  |
| QTS-21851 |  | Design Team Review & Approve Passenger Elevator E1 Shop Drawings | 5d | 2025-05-08 A | 2025-05-13 A | QTS-21751 | 100% | 2025-05-08 | 2025-05-14 | CFCI Procurement | Preconstruction | GMP |  |  |  |
| QTS-22571 |  | Passenger Elevator E1 Procurement | 140d | 2025-05-14 A | 2025-11-24 A | QTS-21851, QTS-1411 | 100% | 2025-05-14 | 2025-12-02 | CFCI Procurement | Preconstruction | GMP | Andrew Melis | Preconstruction | 01ADMIN |
| QTS-44081 |  | Passenger Elevator E3 Procurement | 140d | 2025-05-14 A | 2025-12-01 A | QTS-17501 | 100% | 2025-05-14 | 2025-12-02 | CFCI Procurement | Preconstruction | GMP | Andrew Melis | Preconstruction | 01ADMIN |
|  | 2 | **Site Water** |  | 2025-04-28 | 2025-08-15 |  |  |  |  |  |  |  |  |  |  |
| QTS-10971 |  | Prepare Site Water Submittals | 10d | 2025-04-28 A | 2025-05-06 A | QTS-3261 SS+25d | 100% | 2025-04-28 | 2025-05-09 | CFCI Procurement | Preconstruction | GMP | Chris Perales |  |  |
| QTS-12911 |  | Layton Review Site Water Submittals | 1d | 2025-05-07 A | 2025-05-09 A | QTS-10971 | 100% | 2025-05-07 | 2025-05-07 | CFCI Procurement | Preconstruction | GMP | Chris Perales |  |  |
| QTS-13151 |  | Design Team Review & Approve Site Water Submittals | 15d | 2025-05-12 A | 2025-07-02 A | QTS-12911 | 100% | 2025-05-12 | 2025-06-02 | CFCI Procurement | Preconstruction | GMP | Chris Perales | Preconstruction | 01ADMIN |
| QTS-15701 |  | Water Line Piping Procurement | 10d | 2025-07-03 A | 2025-08-15 A | QTS-13151, QTS-13111 | 100% | 2025-06-26 | 2025-07-10 | CFCI Procurement | Preconstruction | GMP | Chris Perales | Preconstruction | 01ADMIN |
|  | 15 | **Site Sewer** |  | 2025-07-02 | 2025-08-19 |  |  |  |  |  |  |  |  |  |  |
| QTS-10981 |  | Prepare Site Sewer Submittals | 10d | 2025-07-02 A | 2025-07-16 A | QTS-3261 SS+25d | 100% | 2025-06-25 | 2025-07-09 | CFCI Procurement | Preconstruction | GMP | Chris Perales | Preconstruction | 01ADMIN |
| QTS-12921 |  | Layton Review Site Sewer Submittals | 1d | 2025-07-17 A | 2025-07-17 A | QTS-10981 | 100% |  |  | CFCI Procurement | Preconstruction | GMP | Chris Perales | Preconstruction | 01ADMIN |
| QTS-13161 |  | Design Team Review & Approve Site Sewer Submittals | 15d | 2025-07-18 A | 2025-07-18 A | QTS-12921 | 100% | 2025-07-18 | 2025-08-07 | CFCI Procurement | Preconstruction | GMP | Chris Perales | Preconstruction | 01ADMIN |
| QTS-18031 |  | Sanitary Line Piping Procurement | 10d | 2025-08-13 A | 2025-08-19 A | QTS-13161 | 100% | 2025-08-15 | 2025-08-28 | CFCI Procurement | Preconstruction | GMP | Chris Perales | Preconstruction | 01ADMIN |
|  | 24 | **Site Storm (Reinforced Concrete Piping)** |  | 2025-03-17 | 2025-07-16 |  |  |  |  |  |  |  |  |  |  |
| QTS-10961 |  | Prepare Site Storm Submittals | 10d | 2025-03-17 A | 2025-05-23 A | QTS-3261 SS+25d | 100% | 2025-03-17 | 2025-03-28 | CFCI Procurement | Preconstruction | GMP | Chris Perales |  |  |
| QTS-12891 |  | Layton Review Site Storm Submittals | 1d | 2025-05-27 A | 2025-05-27 A | QTS-10961 | 100% |  |  | CFCI Procurement | Preconstruction | GMP | Chris Perales |  |  |
| QTS-13111 |  | Design Team Review & Approve Site Storm Submittals | 10d | 2025-05-28 A | 2025-06-06 A | QTS-12891 | 100% | 2025-05-28 | 2025-06-10 | CFCI Procurement | Preconstruction | GMP | Chris Perales | Preconstruction | 01ADMIN |
| QTS-14891 |  | Storm Line Piping Procurement | 15d | 2025-06-25 A | 2025-07-16 A | QTS-13111 | 100% | 2025-06-26 | 2025-07-17 | CFCI Procurement | Preconstruction | GMP | Chris Perales | Preconstruction | 01ADMIN |

Notes:
- QTS-22571: allucent_notes_20251202_153722: Andrew Melis on 2025-12-02 13:46: Delivered / allucent_notes: 2025-12-02 13:46 - User: Andrew Melis - Date Added: 2025-12-02 13:46 - Note: Delivered
- QTS-44081: allucent_notes_20251202_153722: Andrew Melis on 2025-12-02 13:46: early delivery / allucent_notes: 2025-12-02 13:46 - User: Andrew Melis - Date Added: 2025-12-02 13:46 - Note: early delivery
- QTS-13161: allucent_notes: John Capriotti on 2025-08-19 15:08: Site sewer sent in 4/2 and approved 4/15 / John Capriotti on 2025-08-19 15:08: Site sewer sent in 4/2 and approved 4/15 / allucent_notes: 2025-08-19 15:08 - User: John Capriotti - Date Added: 2025-08-19 15:08 - Note: Site sewer sent in 4/2 and approved 4/15 / 2025-08-19 15:08 - User: John Capriotti - Date Added: 2025-08-19 15:08 - Note: Site sewer sent in 4/2 and approved 4/15
- QTS-18031: allucent_notes: John Capriotti on 2025-08-19 15:08: Confirmed with C&S Team / allucent_notes: 2025-08-19 15:08 - User: John Capriotti - Date Added: 2025-08-19 15:08 - Note: Confirmed with C&S Team

| ID | WBS | Activity | Duration | Start | Finish | Predecessors | Complete | Remaining | Planned start | Planned finish | Total float | Free float | Expected finish | Precon Phase | Project Section-1 | Baseline | Layton Responsible Party | Project Section | Allucent CSI Group |
| --- | --- | --- | --- | --- | --- | --- | --- | --- | --- | --- | --- | --- | --- | --- | --- | --- | --- | --- | --- |
|  | 4 | **Water Meter Vault** |  | 2025-07-07 | 2025-07-18 |  |  |  |  |  |  |  |  |  |  |  |  |  |  |
| QTS-12091 |  | Prepare Water Meter Vault Submittals | 10d | 2025-07-07 A | 2025-07-18 A | QTS-3261 | 100% |  | 2025-06-26 | 2025-07-10 |  |  |  | CFCI Procurement | Preconstruction | GMP | Chris Perales | Preconstruction | 01ADMIN |
| QTS-13481 |  | Layton Review Water Meter Vault Submittals | 1d | 2025-07-18 A | 2025-07-18 A | QTS-12091 FF, QTS-12091 SS | 100% |  |  |  |  |  |  | CFCI Procurement | Preconstruction | GMP | Chris Perales | Preconstruction | 01ADMIN |
|  | 30 | **Storm/Trench Drain** |  | 2025-07-14 | 2025-10-15 |  |  |  |  |  |  |  |  |  |  |  |  |  |  |
| QTS-17271 |  | Prepare Trench Drain Submittals | 5d | 2025-07-14 A | 2025-07-18 A | QTS-9711, QTS-3261 | 100% |  |  |  |  |  |  | CFCI Procurement | Preconstruction | GMP | Chris Perales | Preconstruction | 01ADMIN |
| QTS-17901 |  | Layton Review Trench Drain Submittals | 1d | 2025-07-18 A | 2025-07-18 A | QTS-17271 FF, QTS-17271 SS | 100% |  |  |  |  |  |  | CFCI Procurement | Preconstruction | GMP | Chris Perales | Preconstruction | 01ADMIN |
| QTS-18041 |  | Design Team Review & Approve Trench Drain Submittals | 10d | 2025-07-21 A | 2025-07-21 A | QTS-17901 | 100% |  | 2025-07-21 | 2025-08-01 |  |  |  | CFCI Procurement | Preconstruction | GMP | Chris Perales | Preconstruction | 01ADMIN |
| QTS-18781 |  | Trench Drains Procurement | 15d | 2025-08-13 A | 2025-10-15 A | QTS-18041 | 100% |  | 2025-08-14 | 2025-09-04 |  |  |  | CFCI Procurement | Preconstruction | GMP | Chris Perales | Preconstruction | 01ADMIN |
|  | 6 | **Metal Panels** |  | 2025-04-09 | 2026-01-12 |  |  |  |  |  |  |  |  |  |  |  |  |  |  |
| QTS-10101 |  | Prepare Metal Panels Submittals | 15d | 2025-04-09 A | 2025-04-29 A | QTS-9881 | 100% |  |  |  |  |  |  | CFCI Procurement | Preconstruction | GMP |  |  |  |
| QTS-13131 |  | Layton Review Metal Panels Submittals | 3d | 2025-04-30 A | 2025-06-26 A | QTS-10101 | 100% |  | 2025-04-30 | 2025-05-02 |  |  |  | CFCI Procurement | Preconstruction | GMP | Andrew Melis | Preconstruction | 01ADMIN |
| QTS-13501 |  | Design Team Review & Approve Metal Panels Submittals | 10d | 2025-06-27 A | 2025-08-28 A | QTS-13131 | 100% |  | 2025-06-30 | 2025-07-14 |  |  |  | CFCI Procurement | Preconstruction | GMP | Andrew Melis | Preconstruction | 01ADMIN |
| QTS-16161 |  | Metal Panels Material Procurement | 40d | 2025-07-14 A | 2025-11-14 A | QTS-13501 SS | 100% |  | 2025-07-14 | 2025-09-08 |  |  |  | CFCI Procurement | Preconstruction | GMP | Andrew Melis | Preconstruction | 01ADMIN |
| QTS-15801 |  | Zone 3 / Fabricate & Deliver Metal Panels | 20d | 2025-11-17 A | 2026-01-12 A | QTS-16161 | 100% |  | 2025-11-17 | 2025-12-16 |  |  |  | CFCI Procurement |  | GMP | Andrew Melis | Preconstruction |  |
| QTS-25411 |  | Zone 1 / Fabricate & Deliver Metal Panels | 20d | 2025-11-17 A | 2025-12-16 A | QTS-24861, QTS-16161 | 100% |  |  |  |  |  |  | CFCI Procurement |  | GMP | Andrew Melis | Preconstruction | 01ADMIN |
| QTS-25821 |  | Zone 2 / Fabricate & Deliver Metal Panels | 20d | 2025-11-17 A | 2026-01-12 A | QTS-16161 | 100% |  | 2025-11-17 | 2025-12-16 |  |  |  | CFCI Procurement |  | GMP | Andrew Melis | Preconstruction | 01ADMIN |
|  | 8 | **Fire Suppression** |  | 2025-03-24 | 2026-03-27 |  |  |  |  |  |  |  |  |  |  |  |  |  |  |
| QTS-13511 |  | Prepare Fire Suppression Design Submittal | 40d | 2025-03-24 A | 2025-05-12 A | QTS-11901 SS | 100% |  | 2025-03-24 | 2025-05-16 |  |  |  | CFCI Procurement | Preconstruction | GMP | Chris Perales |  |  |
| QTS-18841 |  | Design Team Review & Approve Fire Suppression Design Submittal | 15d | 2025-05-13 A | 2025-08-13 A | QTS-13511 | 100% |  | 2025-05-13 | 2025-06-03 |  |  |  | CFCI Procurement | Preconstruction | GMP | Chris Perales | Preconstruction | 01ADMIN |
| QTS-12901 |  | Electric Fire Pump Procurement | 70d | 2025-07-16 A | 2026-01-21 | QTS-9811, QTS-18851 FF | 93% | 5d | 2025-08-20 | 2025-11-26 | 48d | 0d | 2026-01-21 | CFCI Procurement | Preconstruction | GMP | Chris Perales | Preconstruction | 01ADMIN |
| QTS-4461 |  | Prepare Electric Fire Pump Submittal | 1d | 2025-07-21 A | 2025-07-21 A | QTS-3321 | 100% |  |  |  |  |  |  | CFCI Procurement | Preconstruction | GMP | Chris Perales | Preconstruction | 01ADMIN |
| QTS-7731 |  | Layton Review Electric Fire Pump Submittal | 1d | 2025-07-21 A | 2025-07-21 A | QTS-4461 | 100% |  | 2025-08-04 | 2025-08-04 |  |  |  | CFCI Procurement | Preconstruction | GMP | Chris Perales | Preconstruction | 01ADMIN |
| QTS-9811 |  | Design Team Review & Approve Electric Fire Pump Submittal | 15d | 2025-07-30 A | 2025-08-13 A | QTS-7731 | 100% |  | 2025-07-30 | 2025-08-19 |  |  |  | CFCI Procurement | Preconstruction | GMP | Chris Perales | Preconstruction | 01ADMIN |
| QTS-18851 |  | City Review & Approve Fire Suppression Design Submittal | 15d | 2025-08-08 A | 2026-01-21 | QTS-13511 | 67% | 5d | 2025-08-07 | 2025-08-27 | -12d | 0d | 2026-01-21 | CFCI Procurement | Preconstruction | GMP | Chris Perales | Preconstruction | 01ADMIN |

Notes:
- QTS-18041: allucent_notes: Jason Johnston on 2025-08-12 18:08: Need response from team / allucent_notes: 2025-08-12 18:08 - User: Jason Johnston - Date Added: 2025-08-12 18:08 - Note: Need response from team / 2025-08-19 15:08 - User: John Capriotti - Date Added: 2025-08-19 15:08 - Note: Updated this to the correct submittal date. This was when it was sent
- QTS-18781: allucent_notes_20251014_152335: Jason Johnston on 2025-09-30 15:09: Waiting for update. / Jason Johnston on 2025-10-14 15:10: Drelan getting me info 10/15 / allucent_notes_20251021_145627: Jason Johnston on 2025-09-30 15:09: Waiting for update. / Jason Johnston on 2025-10-14 15:10: Drelan getting me info 10/15 / allucent_notes: 2025-09-30 15:09 - User: Jason Johnston - Date Added: 2025-09-30 15:09 - Note: Waiting for update. / 2025-10-14 15:10 - User: Jason Johnston - Date Added: 2025-10-14 15:10 - Note: Drelan getting me info 10/15
- QTS-13501: allucent_notes: Andrew Melis on 2025-08-12 15:08: Subcontractor is requiring a revise and resubmit of the ACM shop drawings. / Material has been ordered while the shop drawings are being resubmitted for review. / allucent_notes: 2025-08-12 15:08 - User: Andrew Melis - Date Added: 2025-08-12 15:08 - Note: Subcontractor is requiring a revise and resubmit of the ACM shop drawings. Material has been ordered while the shop drawings are being resubmitted for review. / 2025-08-18 11:
- QTS-16161: allucent_notes_20251014_152335: Andrew Melis on 2025-09-17 09:09: 10/6 is current plan arrival date for the ACM metal panels / Andrew Melis on 2025-10-14 08:10: Balance of metal panel material is arriving 10/23 / allucent_notes_20251021_145627: Andrew Melis on 2025-09-17 09:09: 10/6 is current plan arrival date for the ACM metal panels / Andrew Melis on 2025-10-14 08:10: Balance of metal panel material is arriving 10/23 / allucent_notes_20251027_224008: Andrew Melis on 2025-09-17 09:09: 10/6 is current plan arrival date for the ACM metal panels / Andrew Melis on 2025-10-14 08:10: Balance of metal panel material is arriving 10/23 / Jason Johnston on 2025-10-27 16:10: Andrew's update didn't stick / allucent_notes_20251028_163138: Andrew Melis on 2025-09-17 09:09: 10/6 is current plan arrival date for the ACM metal panels / Andrew Melis on 2025-10-14 08:10: Balance of metal panel material is arriving 10/23 / Jason Johnston on 2025-10-27 16:10: Andrew's update didn't stick / allucent_notes_20251104_160200: Andrew Melis on 2025-09-17 09:09: 10/6 is current plan arrival date for the ACM metal panels / Andrew Melis on 2025-10-14 08:10: Balance of metal panel material is arriving 10/23 / Jason Johnston on 2025-10-27 16:10: Andrew's update didn't stick / Andrew Melis on 2025-11-04 09:11: This material is ready to go but not delivered to site. They are forecasting a 11/24 start date / allucent_notes_20251111_182405: Andrew Melis on 2025-09-17 09:09: 10/6 is current plan arrival date for the ACM metal panels / Andrew Melis on 2025-10-14 08:10: Balance of metal panel material is arriving 10/23 / Jason Johnston on 2025-10-27 16:10: Andrew's update didn't stick / Andrew Melis on 2025-11-04 09:11: This material is ready to go but not delivered to site. They are forecasting a 11/24 start date / allucent_notes_20251118_192630: Andrew Melis on 2025-09-17 09:09: 10/6 is current plan arrival date for the ACM metal panels / Andrew Melis on 2025-10-14 08:10: Balance of metal panel material is arriving 10/23 / Jason Johnston on 2025-10-27 16:10: Andrew's update didn't stick / Andrew Melis on 2025-11-04 09:11: This material is ready to go but not delivered to site. They are forecasting a 11/24 start date / allucent_notes: 2025-09-17 09:09 - User: Andrew Melis - Date Added: 2025-09-17 09:09 - Note: 10/6 is current plan arrival date for the ACM metal panels / 2025-10-14 08:10 - User: Andrew Melis - Date Added: 2025-10-14 08:10 - Note: Balance of metal panel material is ar
- QTS-25821: allucent_notes_20251230_164549: Andrew Melis on 2025-12-16 12:23: material not delivered to site yet. it is being coordinated with the space and availaibility on the roof / Andrew Melis on 2025-12-30 13:21: Pending arrival / Andrew Melis on 2025-12-30 13:21: pending arrvial / allucent_notes_20251216_165335: Andrew Melis on 2025-12-16 12:23: material not delivered to site yet. it is being coordinated with the space and availaibility on the roof / allucent_notes: 2025-12-16 12:23 - User: Andrew Melis - Date Added: 2025-12-16 12:23 - Note: material not delivered to site yet. it is being coordinated with the space and availaibility on the roof / 2025-12-30 13:21 - User: Andrew Melis - Date Added: 2025-12-30 13:21
- QTS-18841: allucent_notes: Jason Johnston on 2025-08-12 18:08: Need response from team / allucent_notes: 2025-08-12 18:08 - User: Jason Johnston - Date Added: 2025-08-12 18:08 - Note: Need response from team
- QTS-12901: allucent_notes_20251230_164549: John Capriotti on 2025-08-19 14:08: Confirmed with Olympic West that their order confirmation/procurement date was 7/16/2025 with 10-11 week lead time. / John Capriotti on 2025-08-19 14:08: Confirmed with Olympic West that their order confirmation/procurement date was 7/16/2025 with 10-11 week lead time. 11 week lead time puts delivery estimate at 10/1/2025. / Andrew Melis on 2025-10-27 13:10: Half is already onsite. Balance it due on site withing the next 5-10 days / allucent_notes: John Capriotti on 2025-08-19 14:08: Confirmed with Olympic West that their order confirmation/procurement date was 7/16/2025 with 10-11 week lead time. / John Capriotti on 2025-08-19 14:08: Confirmed with Olympic West that their order confirmation/procurement date was 7/16/2025 with 10-11 week lead time. 11 week lead time puts delivery estimate at 10/1/2025. / allucent_notes_20251014_152335: John Capriotti on 2025-08-19 14:08: Confirmed with Olympic West that their order confirmation/procurement date was 7/16/2025 with 10-11 week lead time. / John Capriotti on 2025-08-19 14:08: Confirmed with Olympic West that their order confirmation/procurement date was 7/16/2025 with 10-11 week lead time. 11 week lead time puts delivery estimate at 10/1/2025. / allucent_notes_20251021_145627: John Capriotti on 2025-08-19 14:08: Confirmed with Olympic West that their order confirmation/procurement date was 7/16/2025 with 10-11 week lead time. / John Capriotti on 2025-08-19 14:08: Confirmed with Olympic West that their order confirmation/procurement date was 7/16/2025 with 10-11 week lead time. 11 week lead time puts delivery estimate at 10/1/2025. / allucent_notes_20251027_224008: John Capriotti on 2025-08-19 14:08: Confirmed with Olympic West that their order confirmation/procurement date was 7/16/2025 with 10-11 week lead time. / John Capriotti on 2025-08-19 14:08: Confirmed with Olympic West that their order confirmation/procurement date was 7/16/2025 with 10-11 week lead time. 11 week lead time puts delivery estimate at 10/1/2025. / Andrew Melis on 2025-10-27 13:10: Half is already onsite. Balance it due on site withing the next 5-10 days / allucent_notes_20251028_163138: John Capriotti on 2025-08-19 14:08: Confirmed with Olympic West that their order confirmation/procurement date was 7/16/2025 with 10-11 week lead time. / John Capriotti on 2025-08-19 14:08: Confirmed with Olympic West that their order confirmation/procurement date was 7/16/2025 with 10-11 week lead time. 11 week lead time puts delivery estimate at 10/1/2025. / Andrew Melis on 2025-10-27 13:10: Half is already onsite. Balance it due on site withing the next 5-10 days / allucent_notes_20251104_160200: John Capriotti on 2025-08-19 14:08: Confirmed with Olympic West that their order confirmation/procurement date was 7/16/2025 with 10-11 week lead time. / John Capriotti on 2025-08-19 14:08: Confirmed with Olympic West that their order confirmation/procurement date was 7/16/2025 with 10-11 week lead time. 11 week lead time puts delivery estimate at 10/1/2025. / Andrew Melis on 2025-10-27 13:10: Half is already onsite. Balance it due on site withing the next 5-10 days / allucent_notes_20251111_182405: John Capriotti on 2025-08-19 14:08: Confirmed with Olympic West that their order confirmation/procurement date was 7/16/2025 with 10-11 week lead time. / John Capriotti on 2025-08-19 14:08: Confirmed with Olympic West that their order confirmation/procurement date was 7/16/2025 with 10-11 week lead time. 11 week lead time puts delivery estimate at 10/1/2025. / Andrew Melis on 2025-10-27 13:10: Half is already onsite. Balance it due on site withing the next 5-10 days / allucent_notes_20251118_192630: John Capriotti on 2025-08-19 14:08: Confirmed with Olympic West that their order confirmation/procurement date was 7/16/2025 with 10-11 week lead time. / John Capriotti on 2025-08-19 14:08: Confirmed with Olympic West that their order confirmation/procurement date was 7/16/2025 with 10-11 week lead time. 11 week lead time puts delivery estimate at 10/1/2025. / Andrew Melis on 2025-10-27 13:10: Half is already onsite. Balance it due on site withing the next 5-10 days / allucent_notes_20251202_153722: John Capriotti on 2025-08-19 14:08: Confirmed with Olympic West that their order confirmation/procurement date was 7/16/2025 with 10-11 week lead time. / John Capriotti on 2025-08-19 14:08: Confirmed with Olympic West that their order confirmation/procurement date was 7/16/2025 with 10-11 week lead time. 11 week lead time puts delivery estimate at 10/1/2025. / Andrew Melis on 2025-10-27 13:10: Half is already onsite. Balance it due on site withing the next 5-10 days / allucent_notes_20251209_203830: John Capriotti on 2025-08-19 14:08: Confirmed with Olympic West that their order confirmation/procurement date was 7/16/2025 with 10-11 week lead time. / John Capriotti on 2025-08-19 14:08: Confirmed with Olympic West that their order confirmation/procurement date was 7/16/2025 with 10-11 week lead time. 11 week lead time puts delivery estimate at 10/1/2025. / Andrew Melis on 2025-10-27 13:10: Half is already onsite. Balance it due on site withing the next 5-10 days / allucent_notes_20251216_165335: John Capriotti on 2025-08-19 14:08: Confirmed with Olympic West that their order confirmation/procurement date was 7/16/2025 with 10-11 week lead time. / John Capriotti on 2025-08-19 14:08: Confirmed with Olympic West that their order confirmation/procurement date was 7/16/2025 with 10-11 week lead time. 11 week lead time puts delivery estimate at 10/1/2025. / Andrew Melis on 2025-10-27 13:10: Half is already onsite. Balance it due on site withing the next 5-10 days / allucent_notes: 2025-08-19 14:08 - User: John Capriotti - Date Added: 2025-08-19 14:08 - Note: Confirmed with Olympic West that their order confirmation/procurement date was 7/16/2025 with 10-11 week lead time. / 2025-08-19 14:08 - User: John Capriotti - Date Added: 202
- QTS-9811: allucent_notes: John Capriotti on 2025-08-19 14:08: Actual Date is 8/13. / allucent_notes: 2025-08-19 14:08 - User: John Capriotti - Date Added: 2025-08-19 14:08 - Note: Actual Date is 8/13.
- QTS-18851: allucent_notes_20251230_164549: John Capriotti on 2025-08-05 15:08: Olympic West to submit the design to the city on 8/6, City review to 8/7. / John Capriotti on 2025-08-12 14:08: Fire Suppression contractor submitted the design to the city for review/approval on 8/8. / Chris Perales on 2025-09-02 12:09: Delay in getting fire pump approved by the city. City is requesting more documentation from tenant / Jason Johnston on 2025-10-21 14:10: Awaiting response / Jason Johnston on 2025-10-27 16:10: Waiting for feedback from city. / Jason Johnston on 2025-10-28 16:10: Need an answer from CP / Jason Johnston on 2025-12-02 14:16: Waiting for design submittal approval / Jason Johnston on 2025-12-16 15:49: no update / allucent_notes: John Capriotti on 2025-08-05 15:08: Olympic West to submit the design to the city on 8/6, City review to 8/7. / allucent_notes_20251014_152335: John Capriotti on 2025-08-05 15:08: Olympic West to submit the design to the city on 8/6, City review to 8/7. / John Capriotti on 2025-08-12 14:08: Fire Suppression contractor submitted the design to the city for review/approval on 8/8. / Chris Perales on 2025-09-02 12:09: Delay in getting fire pump approved by the city. City is requesting more documentation from tenant / allucent_notes_20251021_145627: John Capriotti on 2025-08-05 15:08: Olympic West to submit the design to the city on 8/6, City review to 8/7. / John Capriotti on 2025-08-12 14:08: Fire Suppression contractor submitted the design to the city for review/approval on 8/8. / Chris Perales on 2025-09-02 12:09: Delay in getting fire pump approved by the city. City is requesting more documentation from tenant / Jason Johnston on 2025-10-21 14:10: Awaiting response / allucent_notes_20251027_224008: John Capriotti on 2025-08-05 15:08: Olympic West to submit the design to the city on 8/6, City review to 8/7. / John Capriotti on 2025-08-12 14:08: Fire Suppression contractor submitted the design to the city for review/approval on 8/8. / Chris Perales on 2025-09-02 12:09: Delay in getting fire pump approved by the city. City is requesting more documentation from tenant / Jason Johnston on 2025-10-21 14:10: Awaiting response / Jason Johnston on 2025-10-27 16:10: Waiting for feedback from city. / allucent_notes_20251028_163138: John Capriotti on 2025-08-05 15:08: Olympic West to submit the design to the city on 8/6, City review to 8/7. / John Capriotti on 2025-08-12 14:08: Fire Suppression contractor submitted the design to the city for review/approval on 8/8. / Chris Perales on 2025-09-02 12:09: Delay in getting fire pump approved by the city. City is requesting more documentation from tenant / Jason Johnston on 2025-10-21 14:10: Awaiting response / Jason Johnston on 2025-10-27 16:10: Waiting for feedback from city. / Jason Johnston on 2025-10-28 16:10: Need an answer from CP / allucent_notes_20251104_160200: John Capriotti on 2025-08-05 15:08: Olympic West to submit the design to the city on 8/6, City review to 8/7. / John Capriotti on 2025-08-12 14:08: Fire Suppression contractor submitted the design to the city for review/approval on 8/8. / Chris Perales on 2025-09-02 12:09: Delay in getting fire pump approved by the city. City is requesting more documentation from tenant / Jason Johnston on 2025-10-21 14:10: Awaiting response / Jason Johnston on 2025-10-27 16:10: Waiting for feedback from city. / Jason Johnston on 2025-10-28 16:10: Need an answer from CP / allucent_notes_20251111_182405: John Capriotti on 2025-08-05 15:08: Olympic West to submit the design to the city on 8/6, City review to 8/7. / John Capriotti on 2025-08-12 14:08: Fire Suppression contractor submitted the design to the city for review/approval on 8/8. / Chris Perales on 2025-09-02 12:09: Delay in getting fire pump approved by the city. City is requesting more documentation from tenant / Jason Johnston on 2025-10-21 14:10: Awaiting response / Jason Johnston on 2025-10-27 16:10: Waiting for feedback from city. / Jason Johnston on 2025-10-28 16:10: Need an answer from CP / allucent_notes_20251118_192630: John Capriotti on 2025-08-05 15:08: Olympic West to submit the design to the city on 8/6, City review to 8/7. / John Capriotti on 2025-08-12 14:08: Fire Suppression contractor submitted the design to the city for review/approval on 8/8. / Chris Perales on 2025-09-02 12:09: Delay in getting fire pump approved by the city. City is requesting more documentation from tenant / Jason Johnston on 2025-10-21 14:10: Awaiting response / Jason Johnston on 2025-10-27 16:10: Waiting for feedback from city. / Jason Johnston on 2025-10-28 16:10: Need an answer from CP / allucent_notes_20251202_153722: John Capriotti on 2025-08-05 15:08: Olympic West to submit the design to the city on 8/6, City review to 8/7. / John Capriotti on 2025-08-12 14:08: Fire Suppression contractor submitted the design to the city for review/approval on 8/8. / Chris Perales on 2025-09-02 12:09: Delay in getting fire pump approved by the city. City is requesting more documentation from tenant / Jason Johnston on 2025-10-21 14:10: Awaiting response / Jason Johnston on 2025-10-27 16:10: Waiting for feedback from city. / Jason Johnston on 2025-10-28 16:10: Need an answer from CP / Jason Johnston on 2025-12-02 14:16: Waiting for design submittal approval / allucent_notes_20251209_203830: John Capriotti on 2025-08-05 15:08: Olympic West to submit the design to the city on 8/6, City review to 8/7. / John Capriotti on 2025-08-12 14:08: Fire Suppression contractor submitted the design to the city for review/approval on 8/8. / Chris Perales on 2025-09-02 12:09: Delay in getting fire pump approved by the city. City is requesting more documentation from tenant / Jason Johnston on 2025-10-21 14:10: Awaiting response / Jason Johnston on 2025-10-27 16:10: Waiting for feedback from city. / Jason Johnston on 2025-10-28 16:10: Need an answer from CP / Jason Johnston on 2025-12-02 14:16: Waiting for design submittal approval / allucent_notes_20251216_165335: John Capriotti on 2025-08-05 15:08: Olympic West to submit the design to the city on 8/6, City review to 8/7. / John Capriotti on 2025-08-12 14:08: Fire Suppression contractor submitted the design to the city for review/approval on 8/8. / Chris Perales on 2025-09-02 12:09: Delay in getting fire pump approved by the city. City is requesting more documentation from tenant / Jason Johnston on 2025-10-21 14:10: Awaiting response / Jason Johnston on 2025-10-27 16:10: Waiting for feedback from city. / Jason Johnston on 2025-10-28 16:10: Need an answer from CP / Jason Johnston on 2025-12-02 14:16: Waiting for design submittal approval / Jason Johnston on 2025-12-16 15:49: no update / allucent_notes: 2025-08-05 15:08 - User: John Capriotti - Date Added: 2025-08-05 15:08 - Note: Olympic West to submit the design to the city on 8/6, City review to 8/7. / 2025-08-12 14:08 - User: John Capriotti - Date Added: 2025-08-12 14:08 - Note: Fire Suppression con

| ID | WBS | Activity | Duration | Start | Finish | Predecessors | Complete | Remaining | Planned start | Planned finish | Total float | Free float | Expected finish | Level | Location | Baseline | Layton Responsible Party | Phase-1 | Project Section | Allucent CSI Group | Precon Phase | Project Section-1 |
| --- | --- | --- | --- | --- | --- | --- | --- | --- | --- | --- | --- | --- | --- | --- | --- | --- | --- | --- | --- | --- | --- | --- |
|  | 1 | **Fragnet / Trystar Docking Station** |  | 2025-08-14 | 2026-03-27 |  |  |  |  |  |  |  |  |  |  |  |  |  |  |  |  |  |
| QTS-120210 |  | Fragnet / Submittal Rejected for Trystar Docking Station | 1d | 2025-08-14 A | 2025-08-14 A | QTS-1030 SS | 100% |  |  |  |  |  |  | Level 1 | FOH | IGMP | Sean Waisner | Phase 1 | Construction |  |  |  |
| QTS-120220 |  | Fragnet / Design Response from AHJ for Trystar Docking Station | 69d | 2025-08-15 A | 2025-11-20 A | QTS-120210 | 100% |  |  |  |  |  |  | Level 1 | FOH | IGMP | Sean Waisner | Phase 1 | Construction |  |  |  |
| QTS-120230 |  | Fragnet / Resubmit Submittal for Trystar Docking Station | 7d | 2025-11-21 A | 2025-12-19 A | QTS-120220 | 100% |  | 2025-11-21 | 2025-12-03 |  |  |  | Level 1 | FOH | IGMP | Sean Waisner | Phase 1 | Construction | 01ADMIN |  |  |
| QTS-120250 |  | Fragnet / Procurement for Trystar Docking Station | 80d | 2025-11-26 A | 2026-03-27 | QTS-120240 | 35% | 52d |  |  | 106d | 0d | 2026-03-27 | Level 1 | FOH | IGMP | Dave Wiltberger | Phase 1 | Construction | 01ADMIN |  |  |
| QTS-120240 |  | Fragnet / Approved Submittal for Trystar Docking Station | 15d | 2025-12-22 A | 2025-12-22 A | QTS-120230 | 100% |  | 2025-12-18 | 2026-01-14 |  |  |  | Level 1 | FOH | IGMP | Sean Waisner | Phase 1 | Construction | 01ADMIN |  |  |
|  | 10 | **Mechanical Doghouses** |  | 2025-05-07 | 2025-07-22 |  |  |  |  |  |  |  |  |  |  |  |  |  |  |  |  |  |
| QTS-18721 |  | Prepare Mechanical Doghouse Submittals | 5d | 2025-05-07 A | 2025-05-13 A | QTS-17881, QTS-9851 | 100% |  |  |  |  |  |  |  |  | GMP | Chris Perales |  |  |  | CFCI Procurement | Preconstruction |
| QTS-18891 |  | Layton Review Mechanical Doghouse Submittals | 5d | 2025-05-13 A | 2025-05-13 A | QTS-18721 FF | 100% |  | 2025-05-13 | 2025-05-19 |  |  |  |  |  | GMP | Chris Perales |  |  |  | CFCI Procurement | Preconstruction |
| QTS-19001 |  | Design Team Review & Approve Doghouse Submittals | 15d | 2025-05-14 A | 2025-05-27 A | QTS-18891 | 100% |  | 2025-05-14 | 2025-06-04 |  |  |  |  |  | GMP | Chris Perales |  |  |  | CFCI Procurement | Preconstruction |
| QTS-19911 |  | Mechanical Doghouse Procurement | 70d | 2025-05-28 A | 2025-07-22 A | QTS-19001 | 100% |  | 2025-05-28 | 2025-09-04 |  |  |  |  |  | GMP | Chris Perales |  | Preconstruction | 01ADMIN | CFCI Procurement | Preconstruction |
|  | 32 | **Electrical Doghouses** |  | 2025-04-15 | 2025-09-19 |  |  |  |  |  |  |  |  |  |  |  |  |  |  |  |  |  |
| QTS-18751 |  | Prepare Electrical Doghouse Submittals | 5d | 2025-04-15 A | 2025-04-21 A | QTS-1421 | 100% |  |  |  |  |  |  |  |  | GMP |  |  |  |  | CFCI Procurement | Preconstruction |
| QTS-18901 |  | Layton Review Electrical Doghouse Submittals | 5d | 2025-04-22 A | 2025-06-12 A | QTS-18751 | 100% |  | 2025-04-22 | 2025-04-28 |  |  |  |  |  | GMP | Chris Perales |  | Preconstruction | 01ADMIN | CFCI Procurement | Preconstruction |
| QTS-19011 |  | Design Team Review & Approve Electrical Doghouse Submittals | 10d | 2025-06-12 A | 2025-06-25 A | QTS-18901 | 100% |  | 2025-06-26 | 2025-07-10 |  |  |  |  |  | GMP | Chris Perales |  | Preconstruction | 01ADMIN | CFCI Procurement | Preconstruction |
| QTS-19561 |  | Electrical Doghouse Procurement | 70d | 2025-06-25 A | 2025-09-19 A | QTS-19011 | 100% |  | 2025-07-11 | 2025-10-17 |  |  |  |  |  | GMP | Chris Perales |  | Preconstruction | 01ADMIN | CFCI Procurement | Preconstruction |
|  | 11 | **Humidifiers** |  | 2025-04-15 | 2025-09-26 |  |  |  |  |  |  |  |  |  |  |  |  |  |  |  |  |  |
| QTS-17881 |  | Prepare Humidifier Submittals | 10d | 2025-04-15 A | 2025-05-14 A | QTS-9851 | 100% |  | 2025-04-15 | 2025-04-28 |  |  |  |  |  | GMP | Chris Perales |  |  |  | CFCI Procurement | Preconstruction |
| QTS-18731 |  | Layton Review Humidifier Submittals | 3d | 2025-05-14 A | 2025-05-14 A | QTS-17881 FF | 100% |  | 2025-05-15 | 2025-05-19 |  |  |  |  |  | GMP | Chris Perales |  |  |  | CFCI Procurement | Preconstruction |
| QTS-18811 |  | Design Team Review & Approve Humidifier Submittals | 15d | 2025-05-15 A | 2025-05-29 A | QTS-18731 | 100% |  | 2025-05-15 | 2025-06-05 |  |  |  |  |  | GMP | Chris Perales |  |  |  | CFCI Procurement | Preconstruction |
| QTS-19481 |  | DH 2100 Humidifiers Procurement | 60d | 2025-05-30 A | 2025-09-26 A | QTS-18811 | 100% |  | 2025-05-30 | 2025-08-22 |  |  |  |  |  | GMP | Chris Perales |  | Preconstruction | 01ADMIN | CFCI Procurement | Preconstruction |
| QTS-19491 |  | DH 1100 Humidifiers Procurement | 60d | 2025-05-30 A | 2025-09-26 A | QTS-18811 | 100% |  | 2025-05-30 | 2025-08-22 |  |  |  |  |  | GMP | Chris Perales |  | Preconstruction | 01ADMIN | CFCI Procurement | Preconstruction |
| QTS-19501 |  | DH 2200 Humidifiers Procurement | 60d | 2025-05-30 A | 2025-09-26 A | QTS-18811 | 100% |  | 2025-05-30 | 2025-08-22 |  |  |  |  |  | GMP | Chris Perales |  | Preconstruction | 01ADMIN | CFCI Procurement | Preconstruction |
| QTS-19511 |  | DH 1200 Humidifiers Procurement | 60d | 2025-05-30 A | 2025-09-26 A | QTS-18811 | 100% |  | 2025-05-30 | 2025-08-22 |  |  |  |  |  | GMP | Chris Perales |  | Preconstruction | 01ADMIN | CFCI Procurement | Preconstruction |
| QTS-36051 |  | DH 2300 Humidifiers Procurement | 60d | 2025-05-30 A | 2025-09-26 A | QTS-18811 | 100% |  | 2025-05-30 | 2025-08-22 |  |  |  |  |  | GMP | Chris Perales |  | Preconstruction | 01ADMIN | CFCI Procurement | Preconstruction |
| QTS-36061 |  | DH 1300 Humidifiers Procurement | 60d | 2025-05-30 A | 2025-09-26 A | QTS-18811 | 100% |  | 2025-05-30 | 2025-08-22 |  |  |  |  |  | GMP | Chris Perales |  | Preconstruction | 01ADMIN | CFCI Procurement | Preconstruction |

Notes:
- QTS-120230: allucent_notes_20251230_164549: John Capriotti on 2025-12-09 13:03: Confirming with EOR that we can just resubmit same information/submittal. / Jason Johnston on 2025-12-16 15:49: no update / John Capriotti on 2025-12-30 10:54: Resubmitted on 12/19 / allucent_notes_20251209_203830: John Capriotti on 2025-12-09 13:03: Confirming with EOR that we can just resubmit same information/submittal. / allucent_notes_20251216_165335: John Capriotti on 2025-12-09 13:03: Confirming with EOR that we can just resubmit same information/submittal. / Jason Johnston on 2025-12-16 15:49: no update / allucent_notes: 2025-12-09 13:03 - User: John Capriotti - Date Added: 2025-12-09 13:03 - Note: Confirming with EOR that we can just resubmit same information/submittal. / 2025-12-16 15:49 - User: Jason Johnston - Date Added: 2025-12-16 15:49 - Note: no update / 2025-12
- QTS-120240: allucent_notes_20251230_164549: John Capriotti on 2025-12-30 10:54: Approved as Noted by EOR on 12/22 / allucent_notes: 2025-12-30 10:54 - User: John Capriotti - Date Added: 2025-12-30 10:54 - Note: Approved as Noted by EOR on 12/22
- QTS-19481: allucent_notes: John Capriotti on 2025-08-26 15:08: Current delivery date is 9/3. Confirming with Belaire once more that this is still on track. / John Capriotti on 2025-08-26 15:08: Just received an update that these are targeted for 9/19 delivery per Belaire. / allucent_notes: 2025-08-26 15:08 - User: John Capriotti - Date Added: 2025-08-26 15:08 - Note: Current delivery date is 9/3. Confirming with Belaire once more that this is still on track. / 2025-08-26 15:08 - User: John Capriotti - Date Added: 2025-08-26 15:08 - Note: J
- QTS-19491: allucent_notes: John Capriotti on 2025-08-26 15:08: Current delivery date is 9/3. Confirming with Belaire once more that this is still on track. / John Capriotti on 2025-08-26 15:08: Just received an update that these are targeted for 9/19 delivery per Belaire. / allucent_notes: 2025-08-26 15:08 - User: John Capriotti - Date Added: 2025-08-26 15:08 - Note: Current delivery date is 9/3. Confirming with Belaire once more that this is still on track. / 2025-08-26 15:08 - User: John Capriotti - Date Added: 2025-08-26 15:08 - Note: J
- QTS-19501: allucent_notes: John Capriotti on 2025-08-26 15:08: Current delivery date is 9/3. Confirming with Belaire once more that this is still on track. / John Capriotti on 2025-08-26 15:08: Just received an update that these are targeted for 9/19 delivery per Belaire. / allucent_notes: 2025-08-26 15:08 - User: John Capriotti - Date Added: 2025-08-26 15:08 - Note: Current delivery date is 9/3. Confirming with Belaire once more that this is still on track. / 2025-08-26 15:08 - User: John Capriotti - Date Added: 2025-08-26 15:08 - Note: J
- QTS-19511: allucent_notes: John Capriotti on 2025-08-26 15:08: Current delivery date is 9/3. Confirming with Belaire once more that this is still on track. / John Capriotti on 2025-08-26 15:08: Just received an update that these are targeted for 9/19 delivery per Belaire. / allucent_notes: 2025-08-26 15:08 - User: John Capriotti - Date Added: 2025-08-26 15:08 - Note: Current delivery date is 9/3. Confirming with Belaire once more that this is still on track. / 2025-08-26 15:08 - User: John Capriotti - Date Added: 2025-08-26 15:08 - Note: J
- QTS-36051: allucent_notes: John Capriotti on 2025-08-26 15:08: Current delivery date is 9/3. Confirming with Belaire once more that this is still on track. / John Capriotti on 2025-08-26 15:08: Just received an update that these are targeted for 9/19 delivery per Belaire. / allucent_notes: 2025-08-26 15:08 - User: John Capriotti - Date Added: 2025-08-26 15:08 - Note: Current delivery date is 9/3. Confirming with Belaire once more that this is still on track. / 2025-08-26 15:08 - User: John Capriotti - Date Added: 2025-08-26 15:08 - Note: J
- QTS-36061: allucent_notes: John Capriotti on 2025-08-26 15:08: Current delivery date is 9/3. Confirming with Belaire once more that this is still on track. / John Capriotti on 2025-08-26 15:08: Just received an update that these are targeted for 9/19 delivery per Belaire. / allucent_notes: 2025-08-26 15:08 - User: John Capriotti - Date Added: 2025-08-26 15:08 - Note: Current delivery date is 9/3. Confirming with Belaire once more that this is still on track. / 2025-08-26 15:08 - User: John Capriotti - Date Added: 2025-08-26 15:08 - Note: J

| ID | WBS | Activity | Duration | Start | Finish | Predecessors | Complete | Remaining | Planned start | Planned finish | Total float | Free float | Expected finish | Precon Phase | Project Section-1 | Baseline | Layton Responsible Party | Project Section | Allucent CSI Group |
| --- | --- | --- | --- | --- | --- | --- | --- | --- | --- | --- | --- | --- | --- | --- | --- | --- | --- | --- | --- |
|  | 12 | **FRP Mechanical Yard Platforms** |  | 2025-11-13 | 2026-02-02 |  |  |  |  |  |  |  |  |  |  |  |  |  |  |
| QTS-1321 |  | DH 1100 Mechanical Yard FRP Platforms Procurement | 30d | 2025-11-13 A | 2025-12-05 A | QTS-15861 | 100% |  | 2025-11-18 | 2026-01-07 |  |  |  | CFCI Procurement | Preconstruction | GMP | Chris Perales | Preconstruction | 01ADMIN |
| QTS-24981 |  | DH 2100 Mechanical Yard FRP Platforms Procurement | 30d | 2025-11-13 A | 2025-12-05 A | QTS-24931 | 100% |  | 2025-11-13 | 2025-12-31 |  |  |  | CFCI Procurement | Preconstruction | GMP | Chris Perales | Preconstruction | 01ADMIN |
| QTS-1331 |  | DH 2200 Mechanical Yard FRP Platforms Procurement | 30d | 2025-12-10 A | 2026-02-02 | QTS-24981 | 57% | 13d | 2025-12-10 | 2026-01-28 | 51d | 0d | 2026-02-02 | CFCI Procurement | Preconstruction | GMP | Chris Perales | Preconstruction | 01ADMIN |
| QTS-1341 |  | DH 1200 Mechanical Yard FRP Platforms Procurement | 30d | 2025-12-10 A | 2026-02-02 | QTS-24981 | 57% | 13d | 2025-12-10 | 2026-01-28 | 51d | 0d | 2026-02-02 | CFCI Procurement | Preconstruction | GMP | Chris Perales | Preconstruction | 01ADMIN |
| QTS-36071 |  | DH 1300 Mechanical Yard FRP Platforms Procurement | 30d | 2025-12-10 A | 2026-02-02 | QTS-24981 | 57% | 13d | 2025-12-10 | 2026-01-28 | 92d | 0d | 2026-02-02 | CFCI Procurement | Preconstruction | GMP | Chris Perales | Preconstruction | 01ADMIN |
| QTS-36081 |  | DH 2300 Mechanical Yard FRP Platforms Procurement | 30d | 2025-12-10 A | 2026-02-02 | QTS-24981 | 57% | 13d | 2025-12-10 | 2026-01-28 | 92d | 0d | 2026-02-02 | CFCI Procurement | Preconstruction | GMP | Chris Perales | Preconstruction | 01ADMIN |
|  | 25 | **Loading Dock Equipment** |  | 2025-03-17 | 2025-09-25 |  |  |  |  |  |  |  |  |  |  |  |  |  |  |
| QTS-10121 |  | Prepare Loading Dock Equipment Submittals | 10d | 2025-03-17 A | 2025-04-14 A | QTS-9891 | 100% |  | 2025-03-17 | 2025-03-28 |  |  |  | CFCI Procurement | Preconstruction | GMP |  |  |  |
| QTS-12371 |  | Layton Review Loading Dock Equipment Submittals | 3d | 2025-04-15 A | 2025-04-21 A | QTS-10121 | 100% |  | 2025-04-15 | 2025-04-17 |  |  |  | CFCI Procurement | Preconstruction | GMP |  |  |  |
| QTS-12791 |  | Design Team Review & Approve Loading Dock Equipment Submittals | 15d | 2025-04-22 A | 2025-05-07 A | QTS-12371 | 100% |  | 2025-04-18 | 2025-05-08 |  |  |  | CFCI Procurement | Preconstruction | GMP |  |  |  |
| QTS-15391 |  | Loading Dock Equipment Procurement | 60d | 2025-05-08 A | 2025-09-25 A | QTS-12791 | 100% |  | 2025-05-07 | 2025-07-31 |  |  |  | CFCI Procurement | Preconstruction | GMP | Andrew Melis | Preconstruction | 01ADMIN |
|  | 26 | **Raised Access Flooring** |  |  |  |  |  |  |  |  |  |  |  |  |  |  |  |  |  |
|  | 27 | **Terrazzo Tile** |  | 2025-07-07 | 2026-01-14 |  |  |  |  |  |  |  |  |  |  |  |  |  |  |
| QTS-1401 |  | Prepare Terrazzo Tile Samples | 10d | 2025-07-07 A | 2025-07-23 A | QTS-1371, QTS-11901 | 100% |  | 2025-06-26 | 2025-07-10 |  |  |  | CFCI Procurement | Preconstruction | GMP | Hunter Wright | Preconstruction | 01ADMIN |
| QTS-13521 |  | Prepare Terrazzo Tile Submittals | 10d | 2025-07-14 A | 2025-08-19 A | QTS-1401 FF, QTS-1401 SS+5d, QTS-11901 | 100% |  | 2025-07-14 | 2025-07-25 |  |  |  | CFCI Procurement | Preconstruction | GMP | Hunter Wright | Preconstruction | 01ADMIN |
| QTS-4471 |  | Layton Review Terrazzo Tile Samples | 3d | 2025-07-30 A | 2025-08-01 A | QTS-1401 | 100% |  |  |  |  |  |  | CFCI Procurement | Preconstruction | GMP | Hunter Wright | Preconstruction | 01ADMIN |
| QTS-15401 |  | Layton Review Terrazzo Tile Submittals | 3d | 2025-08-04 A | 2025-08-04 A | QTS-13521 SS+1d | 100% |  | 2025-08-04 | 2025-08-06 |  |  |  | CFCI Procurement | Preconstruction | GMP | Hunter Wright | Preconstruction | 01ADMIN |
| QTS-5701 |  | Design Team Review & Approve Terrazzo Tile Samples | 15d | 2025-08-04 A | 2025-08-04 A | QTS-4471 | 100% |  | 2025-08-04 | 2025-08-22 |  |  |  | CFCI Procurement | Preconstruction | GMP | Hunter Wright | Preconstruction | 01ADMIN |
| QTS-15821 |  | Design Team Review & Approve Terrazzo Tile Submittals | 9d | 2025-08-20 A | 2025-09-03 A | QTS-15401, QTS-13521 | 100% |  | 2025-08-20 | 2025-09-02 |  |  |  | CFCI Procurement | Preconstruction | GMP | Hunter Wright | Preconstruction | 01ADMIN |
| QTS-18241 |  | Terrazzo Tile Procurement | 60d | 2025-09-04 A | 2026-01-14 | QTS-5701, QTS-15821 | 100% | 0d | 2025-09-04 | 2025-11-26 | 42d | 0d | 2026-01-07 | CFCI Procurement | Preconstruction | GMP | Hunter Wright | Preconstruction | 01ADMIN |
|  | 20 | **Reserve Busway** |  | 2025-02-28 | 2025-10-15 |  |  |  |  |  |  |  |  |  |  |  |  |  |  |
| QTS-49581 |  | Prepare Reserve Busway Submittals | 5d | 2025-02-28 A | 2025-03-06 A | QTS-9851 | 100% |  |  |  |  |  |  | CFCI Procurement | Preconstruction | GMP |  |  |  |
| QTS-49591 |  | Layton Review Reserve Busway Submittals | 1d | 2025-03-07 A | 2025-03-07 A | QTS-49581 | 100% |  |  |  |  |  |  | CFCI Procurement | Preconstruction | GMP | Chris Perales |  |  |
| QTS-49601 |  | Design Team Review & Approve Reserve Busway Submittals | 10d | 2025-03-10 A | 2025-03-12 A | QTS-49591 | 100% |  | 2025-03-10 | 2025-03-21 |  |  |  | CFCI Procurement | Preconstruction | GMP | Chris Perales |  |  |
| QTS-49611 |  | Gallery 2102 / Reserve Busway Procurement | 100d | 2025-04-03 A | 2025-10-15 A | QTS-49601 | 100% |  | 2025-04-03 | 2025-08-22 |  |  |  | CFCI Procurement | Preconstruction | GMP | Chris Perales | Preconstruction | 01ADMIN |
| QTS-50021 |  | Gallery 1102 / Reserve Busway Procurement | 100d | 2025-04-03 A | 2025-10-15 A | QTS-49601 | 100% |  | 2025-04-03 | 2025-08-22 |  |  |  | CFCI Procurement | Preconstruction | GMP | Chris Perales | Preconstruction | 01ADMIN |
| QTS-50031 |  | Gallery 2202 / Reserve Busway Procurement | 100d | 2025-04-03 A | 2025-10-07 A | QTS-49601 | 100% |  | 2025-04-03 | 2025-08-22 |  |  |  | CFCI Procurement | Preconstruction | GMP | Chris Perales | Preconstruction | 01ADMIN |
| QTS-50041 |  | Gallery 1202 / Reserve Busway Procurement | 100d | 2025-04-03 A | 2025-10-07 A | QTS-49601 | 100% |  | 2025-04-03 | 2025-08-22 |  |  |  | CFCI Procurement | Preconstruction | GMP | Chris Perales | Preconstruction | 01ADMIN |
| QTS-50051 |  | Gallery 2302 / Reserve Busway Procurement | 100d | 2025-04-03 A | 2025-10-09 A | QTS-49601 | 100% |  | 2025-04-03 | 2025-08-22 |  |  |  | CFCI Procurement | Preconstruction | GMP | Chris Perales | Preconstruction | 01ADMIN |
| QTS-50061 |  | Gallery 1302 / Reserve Busway Procurement | 100d | 2025-04-03 A | 2025-10-09 A | QTS-49601 | 100% |  | 2025-04-03 | 2025-08-22 |  |  |  | CFCI Procurement | Preconstruction | GMP | Chris Perales | Preconstruction | 01ADMIN |

Notes:
- QTS-1321: allucent_notes_20251209_203830: Jason Johnston on 2025-12-09 15:41: Arrived early / allucent_notes: 2025-12-09 15:41 - User: Jason Johnston - Date Added: 2025-12-09 15:41 - Note: Arrived early
- QTS-15391: allucent_notes: Andrew Melis on 2025-08-12 15:08: Need to validate Loading Dock Equipment arrival. Install date is not affected by this update. / allucent_notes: 2025-08-12 15:08 - User: Andrew Melis - Date Added: 2025-08-12 15:08 - Note: Need to validate Loading Dock Equipment arrival. Install date is not affected by this update. / 2025-08-26 15:08 - User: Andrew Melis - Date Added: 2025-08-26 15:08 - Note: T
- QTS-13521: allucent_notes: Jack Garrett on 2025-08-12 14:08: Need confirmation from Suntec that updated layout is sufficient / Jack Garrett on 2025-08-12 14:08: Need to make sure updated layout on shop drawings aligns with Suntecs sawcuts / allucent_notes: 2025-08-12 14:08 - User: Jack Garrett - Date Added: 2025-08-12 14:08 - Note: Need confirmation from Suntec that updated layout is sufficient / 2025-08-12 14:08 - User: Jack Garrett - Date Added: 2025-08-12 14:08 - Note: Need to make sure updated layout o
- QTS-15821: allucent_notes: Jack Garrett on 2025-08-06 07:08: Receiving Updated Shop Drawing from Stone Finish 8/8 / allucent_notes: 2025-08-06 07:08 - User: Jack Garrett - Date Added: 2025-08-06 07:08 - Note: Receiving Updated Shop Drawing from Stone Finish 8/8 / 2025-08-12 14:08 - User: Jack Garrett - Date Added: 2025-08-12 14:08 - Note: Need confirmation that Submittals are suffici
- QTS-18241: allucent_notes_20251230_164549: Jack Garrett on 2025-09-09 13:09: Terrazzo is scheduled farther out / Jack Garrett on 2025-09-19 11:09: Terrazzo Flooring Install at Lobby and Stairs begins on 22-December and has 4 week lead time / Jack Garrett on 2025-09-19 11:09: All Terrazzo Materials have a 4 week lead time / Jack Garrett on 2025-12-02 12:01: Terrazzo Pushed Back. / allucent_notes_20251014_152335: Jack Garrett on 2025-09-09 13:09: Terrazzo is scheduled farther out / Jack Garrett on 2025-09-19 11:09: Terrazzo Flooring Install at Lobby and Stairs begins on 22-December and has 4 week lead time / Jack Garrett on 2025-09-19 11:09: All Terrazzo Materials have a 4 week lead time / allucent_notes_20251021_145627: Jack Garrett on 2025-09-09 13:09: Terrazzo is scheduled farther out / Jack Garrett on 2025-09-19 11:09: Terrazzo Flooring Install at Lobby and Stairs begins on 22-December and has 4 week lead time / Jack Garrett on 2025-09-19 11:09: All Terrazzo Materials have a 4 week lead time / allucent_notes_20251027_224008: Jack Garrett on 2025-09-09 13:09: Terrazzo is scheduled farther out / Jack Garrett on 2025-09-19 11:09: Terrazzo Flooring Install at Lobby and Stairs begins on 22-December and has 4 week lead time / Jack Garrett on 2025-09-19 11:09: All Terrazzo Materials have a 4 week lead time / allucent_notes_20251028_163138: Jack Garrett on 2025-09-09 13:09: Terrazzo is scheduled farther out / Jack Garrett on 2025-09-19 11:09: Terrazzo Flooring Install at Lobby and Stairs begins on 22-December and has 4 week lead time / Jack Garrett on 2025-09-19 11:09: All Terrazzo Materials have a 4 week lead time / allucent_notes_20251104_160200: Jack Garrett on 2025-09-09 13:09: Terrazzo is scheduled farther out / Jack Garrett on 2025-09-19 11:09: Terrazzo Flooring Install at Lobby and Stairs begins on 22-December and has 4 week lead time / Jack Garrett on 2025-09-19 11:09: All Terrazzo Materials have a 4 week lead time / allucent_notes_20251111_182405: Jack Garrett on 2025-09-09 13:09: Terrazzo is scheduled farther out / Jack Garrett on 2025-09-19 11:09: Terrazzo Flooring Install at Lobby and Stairs begins on 22-December and has 4 week lead time / Jack Garrett on 2025-09-19 11:09: All Terrazzo Materials have a 4 week lead time / allucent_notes_20251118_192630: Jack Garrett on 2025-09-09 13:09: Terrazzo is scheduled farther out / Jack Garrett on 2025-09-19 11:09: Terrazzo Flooring Install at Lobby and Stairs begins on 22-December and has 4 week lead time / Jack Garrett on 2025-09-19 11:09: All Terrazzo Materials have a 4 week lead time / allucent_notes_20251202_153722: Jack Garrett on 2025-09-09 13:09: Terrazzo is scheduled farther out / Jack Garrett on 2025-09-19 11:09: Terrazzo Flooring Install at Lobby and Stairs begins on 22-December and has 4 week lead time / Jack Garrett on 2025-09-19 11:09: All Terrazzo Materials have a 4 week lead time / Jack Garrett on 2025-12-02 12:01: Terrazzo Pushed Back. / allucent_notes_20251209_203830: Jack Garrett on 2025-09-09 13:09: Terrazzo is scheduled farther out / Jack Garrett on 2025-09-19 11:09: Terrazzo Flooring Install at Lobby and Stairs begins on 22-December and has 4 week lead time / Jack Garrett on 2025-09-19 11:09: All Terrazzo Materials have a 4 week lead time / Jack Garrett on 2025-12-02 12:01: Terrazzo Pushed Back. / allucent_notes_20251216_165335: Jack Garrett on 2025-09-09 13:09: Terrazzo is scheduled farther out / Jack Garrett on 2025-09-19 11:09: Terrazzo Flooring Install at Lobby and Stairs begins on 22-December and has 4 week lead time / Jack Garrett on 2025-09-19 11:09: All Terrazzo Materials have a 4 week lead time / Jack Garrett on 2025-12-02 12:01: Terrazzo Pushed Back. / allucent_notes: 2025-09-09 13:09 - User: Jack Garrett - Date Added: 2025-09-09 13:09 - Note: Terrazzo is scheduled farther out / 2025-09-19 11:09 - User: Jack Garrett - Date Added: 2025-09-19 11:09 - Note: Terrazzo Flooring Install at Lobby and Stairs begins on 22-Decem
- QTS-49611: allucent_notes_20251014_152335: John Capriotti on 2025-09-30 10:09: Confirmed with Belaire that all humidifiers were delivered on Friday, 9/26/2025. / John Capriotti on 2025-09-30 10:09: Error/Accidental Adjustment , Resetting to 9/30. / John Capriotti on 2025-09-30 11:09: Per Update on 9/26 and 9/30 from Rosendin, expecting Reserve Busway to be delivered to their warehouse 10/15/second week of October. These busways will come in multiple shipments for each hall so will update them all individually as they come in. / allucent_notes_20251021_145627: John Capriotti on 2025-09-30 10:09: Confirmed with Belaire that all humidifiers were delivered on Friday, 9/26/2025. / John Capriotti on 2025-09-30 10:09: Error/Accidental Adjustment , Resetting to 9/30. / John Capriotti on 2025-09-30 11:09: Per Update on 9/26 and 9/30 from Rosendin, expecting Reserve Busway to be delivered to their warehouse 10/15/second week of October. These busways will come in multiple shipments for each hall so will update them all individually as they come in. / allucent_notes: 2025-09-30 10:09 - User: John Capriotti - Date Added: 2025-09-30 10:09 - Note: Confirmed with Belaire that all humidifiers were delivered on Friday, 9/26/2025. / 2025-09-30 10:09 - User: John Capriotti - Date Added: 2025-09-30 10:09 - Note: Error/Acciden
- QTS-50021: allucent_notes_20251014_152335: John Capriotti on 2025-09-30 10:09: Confirmed with Belaire that all humidifiers were delivered on Friday, 9/26/2025. / John Capriotti on 2025-09-30 10:09: Error/Accidental Adjustment , Resetting to 9/30. / John Capriotti on 2025-09-30 11:09: Per Update on 9/26 and 9/30 from Rosendin, expecting Reserve Busway to be delivered to their warehouse 10/15/second week of October. These busways will come in multiple shipments for each hall so will update them all individually as they come in. / allucent_notes_20251021_145627: John Capriotti on 2025-09-30 10:09: Confirmed with Belaire that all humidifiers were delivered on Friday, 9/26/2025. / John Capriotti on 2025-09-30 10:09: Error/Accidental Adjustment , Resetting to 9/30. / John Capriotti on 2025-09-30 11:09: Per Update on 9/26 and 9/30 from Rosendin, expecting Reserve Busway to be delivered to their warehouse 10/15/second week of October. These busways will come in multiple shipments for each hall so will update them all individually as they come in. / allucent_notes: 2025-09-30 10:09 - User: John Capriotti - Date Added: 2025-09-30 10:09 - Note: Confirmed with Belaire that all humidifiers were delivered on Friday, 9/26/2025. / 2025-09-30 10:09 - User: John Capriotti - Date Added: 2025-09-30 10:09 - Note: Error/Acciden
- QTS-50031: allucent_notes: John Capriotti on 2025-08-26 16:08: Pending updated delivery date from REI. Should have update by end of week, 8/29. / Jason Johnston on 2025-08-27 07:08: No comment / allucent_notes_20251014_152335: John Capriotti on 2025-08-26 16:08: Pending updated delivery date from REI. Should have update by end of week, 8/29. / Jason Johnston on 2025-08-27 07:08: No comment / John Capriotti on 2025-09-02 15:09: Estimated delivery date per REI is 9/30 to have Maintenance and Catcher Bus. / John Capriotti on 2025-09-30 10:09: Confirmed with Belaire that all humidifiers were delivered on Friday, 9/26/2025. / John Capriotti on 2025-09-30 10:09: Error/Accidental Adjustment , Resetting to 9/30. / John Capriotti on 2025-09-30 11:09: Per Update on 9/26 and 9/30 from Rosendin, expecting Reserve Busway to be delivered to their warehouse 10/15/second week of October. These busways will come in multiple shipments for each hall so will update them all individually as they come in. / allucent_notes_20251021_145627: John Capriotti on 2025-08-26 16:08: Pending updated delivery date from REI. Should have update by end of week, 8/29. / Jason Johnston on 2025-08-27 07:08: No comment / John Capriotti on 2025-09-02 15:09: Estimated delivery date per REI is 9/30 to have Maintenance and Catcher Bus. / John Capriotti on 2025-09-30 10:09: Confirmed with Belaire that all humidifiers were delivered on Friday, 9/26/2025. / John Capriotti on 2025-09-30 10:09: Error/Accidental Adjustment , Resetting to 9/30. / John Capriotti on 2025-09-30 11:09: Per Update on 9/26 and 9/30 from Rosendin, expecting Reserve Busway to be delivered to their warehouse 10/15/second week of October. These busways will come in multiple shipments for each hall so will update them all individually as they come in. / John Capriotti on 2025-10-21 14:10: Pending confirmation that all maint/catcher has been received. Shipments have been coming consistently need to confirm total quantities per hall. / allucent_notes_20251027_224008: John Capriotti on 2025-08-26 16:08: Pending updated delivery date from REI. Should have update by end of week, 8/29. / Jason Johnston on 2025-08-27 07:08: No comment / John Capriotti on 2025-09-02 15:09: Estimated delivery date per REI is 9/30 to have Maintenance and Catcher Bus. / John Capriotti on 2025-09-30 10:09: Confirmed with Belaire that all humidifiers were delivered on Friday, 9/26/2025. / John Capriotti on 2025-09-30 10:09: Error/Accidental Adjustment , Resetting to 9/30. / John Capriotti on 2025-09-30 11:09: Per Update on 9/26 and 9/30 from Rosendin, expecting Reserve Busway to be delivered to their warehouse 10/15/second week of October. These busways will come in multiple shipments for each hall so will update them all individually as they come in. / John Capriotti on 2025-10-21 14:10: Pending confirmation that all maint/catcher has been received. Shipments have been coming consistently need to confirm total quantities per hall. / John Capriotti on 2025-10-27 18:10: Pending bus plugs / allucent_notes_20251028_163138: John Capriotti on 2025-08-26 16:08: Pending updated delivery date from REI. Should have update by end of week, 8/29. / Jason Johnston on 2025-08-27 07:08: No comment / John Capriotti on 2025-09-02 15:09: Estimated delivery date per REI is 9/30 to have Maintenance and Catcher Bus. / John Capriotti on 2025-09-30 10:09: Confirmed with Belaire that all humidifiers were delivered on Friday, 9/26/2025. / John Capriotti on 2025-09-30 10:09: Error/Accidental Adjustment , Resetting to 9/30. / John Capriotti on 2025-09-30 11:09: Per Update on 9/26 and 9/30 from Rosendin, expecting Reserve Busway to be delivered to their warehouse 10/15/second week of October. These busways will come in multiple shipments for each hall so will update them all individually as they come in. / John Capriotti on 2025-10-21 14:10: Pending confirmation that all maint/catcher has been received. Shipments have been coming consistently need to confirm total quantities per hall. / John Capriotti on 2025-10-27 18:10: Pending bus plugs / allucent_notes_20251104_160200: John Capriotti on 2025-08-26 16:08: Pending updated delivery date from REI. Should have update by end of week, 8/29. / Jason Johnston on 2025-08-27 07:08: No comment / John Capriotti on 2025-09-02 15:09: Estimated delivery date per REI is 9/30 to have Maintenance and Catcher Bus. / John Capriotti on 2025-09-30 10:09: Confirmed with Belaire that all humidifiers were delivered on Friday, 9/26/2025. / John Capriotti on 2025-09-30 10:09: Error/Accidental Adjustment , Resetting to 9/30. / John Capriotti on 2025-09-30 11:09: Per Update on 9/26 and 9/30 from Rosendin, expecting Reserve Busway to be delivered to their warehouse 10/15/second week of October. These busways will come in multiple shipments for each hall so will update them all individually as they come in. / John Capriotti on 2025-10-21 14:10: Pending confirmation that all maint/catcher has been received. Shipments have been coming consistently need to confirm total quantities per hall. / John Capriotti on 2025-10-27 18:10: Pending bus plugs / allucent_notes_20251111_182405: John Capriotti on 2025-08-26 16:08: Pending updated delivery date from REI. Should have update by end of week, 8/29. / Jason Johnston on 2025-08-27 07:08: No comment / John Capriotti on 2025-09-02 15:09: Estimated delivery date per REI is 9/30 to have Maintenance and Catcher Bus. / John Capriotti on 2025-09-30 10:09: Confirmed with Belaire that all humidifiers were delivered on Friday, 9/26/2025. / John Capriotti on 2025-09-30 10:09: Error/Accidental Adjustment , Resetting to 9/30. / John Capriotti on 2025-09-30 11:09: Per Update on 9/26 and 9/30 from Rosendin, expecting Reserve Busway to be delivered to their warehouse 10/15/second week of October. These busways will come in multiple shipments for each hall so will update them all individually as they come in. / John Capriotti on 2025-10-21 14:10: Pending confirmation that all maint/catcher has been received. Shipments have been coming consistently need to confirm total quantities per hall. / John Capriotti on 2025-10-27 18:10: Pending bus plugs / Jason Johnston on 2025-11-11 17:11: John owes me 11/11 update / allucent_notes_20251118_192630: John Capriotti on 2025-08-26 16:08: Pending updated delivery date from REI. Should have update by end of week, 8/29. / Jason Johnston on 2025-08-27 07:08: No comment / John Capriotti on 2025-09-02 15:09: Estimated delivery date per REI is 9/30 to have Maintenance and Catcher Bus. / John Capriotti on 2025-09-30 10:09: Confirmed with Belaire that all humidifiers were delivered on Friday, 9/26/2025. / John Capriotti on 2025-09-30 10:09: Error/Accidental Adjustment , Resetting to 9/30. / John Capriotti on 2025-09-30 11:09: Per Update on 9/26 and 9/30 from Rosendin, expecting Reserve Busway to be delivered to their warehouse 10/15/second week of October. These busways will come in multiple shipments for each hall so will update them all individually as they come in. / John Capriotti on 2025-10-21 14:10: Pending confirmation that all maint/catcher has been received. Shipments have been coming consistently need to confirm total quantities per hall. / John Capriotti on 2025-10-27 18:10: Pending bus plugs / Jason Johnston on 2025-11-11 17:11: John owes me 11/11 update / allucent_notes: 2025-08-26 16:08 - User: John Capriotti - Date Added: 2025-08-26 16:08 - Note: Pending updated delivery date from REI. Should have update by end of week, 8/29. / 2025-08-27 07:08 - User: Jason Johnston - Date Added: 2025-08-27 07:08 - Note: No comment
- QTS-50041: allucent_notes: John Capriotti on 2025-08-26 16:08: Pending updated delivery date from REI. Should have update by end of week, 8/29. / Jason Johnston on 2025-08-27 07:08: No comment / allucent_notes_20251014_152335: John Capriotti on 2025-08-26 16:08: Pending updated delivery date from REI. Should have update by end of week, 8/29. / Jason Johnston on 2025-08-27 07:08: No comment / John Capriotti on 2025-09-02 15:09: Estimated delivery date per REI is 9/30 to have Maintenance and Catcher Bus. / John Capriotti on 2025-09-30 10:09: Confirmed with Belaire that all humidifiers were delivered on Friday, 9/26/2025. / John Capriotti on 2025-09-30 10:09: Error/Accidental Adjustment , Resetting to 9/30. / John Capriotti on 2025-09-30 11:09: Per Update on 9/26 and 9/30 from Rosendin, expecting Reserve Busway to be delivered to their warehouse 10/15/second week of October. These busways will come in multiple shipments for each hall so will update them all individually as they come in. / allucent_notes_20251021_145627: John Capriotti on 2025-08-26 16:08: Pending updated delivery date from REI. Should have update by end of week, 8/29. / Jason Johnston on 2025-08-27 07:08: No comment / John Capriotti on 2025-09-02 15:09: Estimated delivery date per REI is 9/30 to have Maintenance and Catcher Bus. / John Capriotti on 2025-09-30 10:09: Confirmed with Belaire that all humidifiers were delivered on Friday, 9/26/2025. / John Capriotti on 2025-09-30 10:09: Error/Accidental Adjustment , Resetting to 9/30. / John Capriotti on 2025-09-30 11:09: Per Update on 9/26 and 9/30 from Rosendin, expecting Reserve Busway to be delivered to their warehouse 10/15/second week of October. These busways will come in multiple shipments for each hall so will update them all individually as they come in. / John Capriotti on 2025-10-21 14:10: Pending confirmation that all maint/catcher has been received. Shipments have been coming consistently need to confirm total quantities per hall. / allucent_notes_20251027_224008: John Capriotti on 2025-08-26 16:08: Pending updated delivery date from REI. Should have update by end of week, 8/29. / Jason Johnston on 2025-08-27 07:08: No comment / John Capriotti on 2025-09-02 15:09: Estimated delivery date per REI is 9/30 to have Maintenance and Catcher Bus. / John Capriotti on 2025-09-30 10:09: Confirmed with Belaire that all humidifiers were delivered on Friday, 9/26/2025. / John Capriotti on 2025-09-30 10:09: Error/Accidental Adjustment , Resetting to 9/30. / John Capriotti on 2025-09-30 11:09: Per Update on 9/26 and 9/30 from Rosendin, expecting Reserve Busway to be delivered to their warehouse 10/15/second week of October. These busways will come in multiple shipments for each hall so will update them all individually as they come in. / John Capriotti on 2025-10-21 14:10: Pending confirmation that all maint/catcher has been received. Shipments have been coming consistently need to confirm total quantities per hall. / John Capriotti on 2025-10-27 19:10: . / allucent_notes_20251028_163138: John Capriotti on 2025-08-26 16:08: Pending updated delivery date from REI. Should have update by end of week, 8/29. / Jason Johnston on 2025-08-27 07:08: No comment / John Capriotti on 2025-09-02 15:09: Estimated delivery date per REI is 9/30 to have Maintenance and Catcher Bus. / John Capriotti on 2025-09-30 10:09: Confirmed with Belaire that all humidifiers were delivered on Friday, 9/26/2025. / John Capriotti on 2025-09-30 10:09: Error/Accidental Adjustment , Resetting to 9/30. / John Capriotti on 2025-09-30 11:09: Per Update on 9/26 and 9/30 from Rosendin, expecting Reserve Busway to be delivered to their warehouse 10/15/second week of October. These busways will come in multiple shipments for each hall so will update them all individually as they come in. / John Capriotti on 2025-10-21 14:10: Pending confirmation that all maint/catcher has been received. Shipments have been coming consistently need to confirm total quantities per hall. / John Capriotti on 2025-10-27 19:10: . / allucent_notes_20251104_160200: John Capriotti on 2025-08-26 16:08: Pending updated delivery date from REI. Should have update by end of week, 8/29. / Jason Johnston on 2025-08-27 07:08: No comment / John Capriotti on 2025-09-02 15:09: Estimated delivery date per REI is 9/30 to have Maintenance and Catcher Bus. / John Capriotti on 2025-09-30 10:09: Confirmed with Belaire that all humidifiers were delivered on Friday, 9/26/2025. / John Capriotti on 2025-09-30 10:09: Error/Accidental Adjustment , Resetting to 9/30. / John Capriotti on 2025-09-30 11:09: Per Update on 9/26 and 9/30 from Rosendin, expecting Reserve Busway to be delivered to their warehouse 10/15/second week of October. These busways will come in multiple shipments for each hall so will update them all individually as they come in. / John Capriotti on 2025-10-21 14:10: Pending confirmation that all maint/catcher has been received. Shipments have been coming consistently need to confirm total quantities per hall. / John Capriotti on 2025-10-27 19:10: . / John Capriotti on 2025-11-04 15:11: Need to get an update on all the components to determine if this can be closed / allucent_notes_20251111_182405: John Capriotti on 2025-08-26 16:08: Pending updated delivery date from REI. Should have update by end of week, 8/29. / Jason Johnston on 2025-08-27 07:08: No comment / John Capriotti on 2025-09-02 15:09: Estimated delivery date per REI is 9/30 to have Maintenance and Catcher Bus. / John Capriotti on 2025-09-30 10:09: Confirmed with Belaire that all humidifiers were delivered on Friday, 9/26/2025. / John Capriotti on 2025-09-30 10:09: Error/Accidental Adjustment , Resetting to 9/30. / John Capriotti on 2025-09-30 11:09: Per Update on 9/26 and 9/30 from Rosendin, expecting Reserve Busway to be delivered to their warehouse 10/15/second week of October. These busways will come in multiple shipments for each hall so will update them all individually as they come in. / John Capriotti on 2025-10-21 14:10: Pending confirmation that all maint/catcher has been received. Shipments have been coming consistently need to confirm total quantities per hall. / John Capriotti on 2025-10-27 19:10: . / John Capriotti on 2025-11-04 15:11: Need to get an update on all the components to determine if this can be closed / Jason Johnston on 2025-11-11 17:11: John owes me 11/11 update / allucent_notes_20251118_192630: John Capriotti on 2025-08-26 16:08: Pending updated delivery date from REI. Should have update by end of week, 8/29. / Jason Johnston on 2025-08-27 07:08: No comment / John Capriotti on 2025-09-02 15:09: Estimated delivery date per REI is 9/30 to have Maintenance and Catcher Bus. / John Capriotti on 2025-09-30 10:09: Confirmed with Belaire that all humidifiers were delivered on Friday, 9/26/2025. / John Capriotti on 2025-09-30 10:09: Error/Accidental Adjustment , Resetting to 9/30. / John Capriotti on 2025-09-30 11:09: Per Update on 9/26 and 9/30 from Rosendin, expecting Reserve Busway to be delivered to their warehouse 10/15/second week of October. These busways will come in multiple shipments for each hall so will update them all individually as they come in. / John Capriotti on 2025-10-21 14:10: Pending confirmation that all maint/catcher has been received. Shipments have been coming consistently need to confirm total quantities per hall. / John Capriotti on 2025-10-27 19:10: . / John Capriotti on 2025-11-04 15:11: Need to get an update on all the components to determine if this can be closed / Jason Johnston on 2025-11-11 17:11: John owes me 11/11 update / allucent_notes: 2025-08-26 16:08 - User: John Capriotti - Date Added: 2025-08-26 16:08 - Note: Pending updated delivery date from REI. Should have update by end of week, 8/29. / 2025-08-27 07:08 - User: Jason Johnston - Date Added: 2025-08-27 07:08 - Note: No comment
- QTS-50051: allucent_notes: John Capriotti on 2025-08-26 16:08: Pending updated delivery date from REI. Should have update by end of week, 8/29. / Jason Johnston on 2025-08-27 07:08: No comment / allucent_notes_20251014_152335: John Capriotti on 2025-08-26 16:08: Pending updated delivery date from REI. Should have update by end of week, 8/29. / Jason Johnston on 2025-08-27 07:08: No comment / John Capriotti on 2025-09-02 15:09: Estimated delivery date per REI is 9/30 to have Maintenance and Catcher Bus. / John Capriotti on 2025-09-30 11:09: Per Update on 9/26 and 9/30 from Rosendin, expecting Reserve Busway to be delivered to their warehouse 10/15/second week of October. These busways will come in multiple shipments for each hall so will update them all individually as they come in. / allucent_notes_20251021_145627: John Capriotti on 2025-08-26 16:08: Pending updated delivery date from REI. Should have update by end of week, 8/29. / Jason Johnston on 2025-08-27 07:08: No comment / John Capriotti on 2025-09-02 15:09: Estimated delivery date per REI is 9/30 to have Maintenance and Catcher Bus. / John Capriotti on 2025-09-30 11:09: Per Update on 9/26 and 9/30 from Rosendin, expecting Reserve Busway to be delivered to their warehouse 10/15/second week of October. These busways will come in multiple shipments for each hall so will update them all individually as they come in. / John Capriotti on 2025-10-21 14:10: Pending confirmation that all maint/catcher has been received. Shipments have been coming consistently need to confirm total quantities per hall. / allucent_notes_20251027_224008: John Capriotti on 2025-08-26 16:08: Pending updated delivery date from REI. Should have update by end of week, 8/29. / Jason Johnston on 2025-08-27 07:08: No comment / John Capriotti on 2025-09-02 15:09: Estimated delivery date per REI is 9/30 to have Maintenance and Catcher Bus. / John Capriotti on 2025-09-30 11:09: Per Update on 9/26 and 9/30 from Rosendin, expecting Reserve Busway to be delivered to their warehouse 10/15/second week of October. These busways will come in multiple shipments for each hall so will update them all individually as they come in. / John Capriotti on 2025-10-21 14:10: Pending confirmation that all maint/catcher has been received. Shipments have been coming consistently need to confirm total quantities per hall. / John Capriotti on 2025-10-27 19:10: . / allucent_notes_20251028_163138: John Capriotti on 2025-08-26 16:08: Pending updated delivery date from REI. Should have update by end of week, 8/29. / Jason Johnston on 2025-08-27 07:08: No comment / John Capriotti on 2025-09-02 15:09: Estimated delivery date per REI is 9/30 to have Maintenance and Catcher Bus. / John Capriotti on 2025-09-30 11:09: Per Update on 9/26 and 9/30 from Rosendin, expecting Reserve Busway to be delivered to their warehouse 10/15/second week of October. These busways will come in multiple shipments for each hall so will update them all individually as they come in. / John Capriotti on 2025-10-21 14:10: Pending confirmation that all maint/catcher has been received. Shipments have been coming consistently need to confirm total quantities per hall. / John Capriotti on 2025-10-27 19:10: . / allucent_notes_20251104_160200: John Capriotti on 2025-08-26 16:08: Pending updated delivery date from REI. Should have update by end of week, 8/29. / Jason Johnston on 2025-08-27 07:08: No comment / John Capriotti on 2025-09-02 15:09: Estimated delivery date per REI is 9/30 to have Maintenance and Catcher Bus. / John Capriotti on 2025-09-30 11:09: Per Update on 9/26 and 9/30 from Rosendin, expecting Reserve Busway to be delivered to their warehouse 10/15/second week of October. These busways will come in multiple shipments for each hall so will update them all individually as they come in. / John Capriotti on 2025-10-21 14:10: Pending confirmation that all maint/catcher has been received. Shipments have been coming consistently need to confirm total quantities per hall. / John Capriotti on 2025-10-27 19:10: . / John Capriotti on 2025-11-04 15:11: Need to get an update on all the components to determine if this can be closed / allucent_notes_20251111_182405: John Capriotti on 2025-08-26 16:08: Pending updated delivery date from REI. Should have update by end of week, 8/29. / Jason Johnston on 2025-08-27 07:08: No comment / John Capriotti on 2025-09-02 15:09: Estimated delivery date per REI is 9/30 to have Maintenance and Catcher Bus. / John Capriotti on 2025-09-30 11:09: Per Update on 9/26 and 9/30 from Rosendin, expecting Reserve Busway to be delivered to their warehouse 10/15/second week of October. These busways will come in multiple shipments for each hall so will update them all individually as they come in. / John Capriotti on 2025-10-21 14:10: Pending confirmation that all maint/catcher has been received. Shipments have been coming consistently need to confirm total quantities per hall. / John Capriotti on 2025-10-27 19:10: . / John Capriotti on 2025-11-04 15:11: Need to get an update on all the components to determine if this can be closed / Jason Johnston on 2025-11-11 17:11: John owes me 11/11 update / allucent_notes_20251118_192630: John Capriotti on 2025-08-26 16:08: Pending updated delivery date from REI. Should have update by end of week, 8/29. / Jason Johnston on 2025-08-27 07:08: No comment / John Capriotti on 2025-09-02 15:09: Estimated delivery date per REI is 9/30 to have Maintenance and Catcher Bus. / John Capriotti on 2025-09-30 11:09: Per Update on 9/26 and 9/30 from Rosendin, expecting Reserve Busway to be delivered to their warehouse 10/15/second week of October. These busways will come in multiple shipments for each hall so will update them all individually as they come in. / John Capriotti on 2025-10-21 14:10: Pending confirmation that all maint/catcher has been received. Shipments have been coming consistently need to confirm total quantities per hall. / John Capriotti on 2025-10-27 19:10: . / John Capriotti on 2025-11-04 15:11: Need to get an update on all the components to determine if this can be closed / Jason Johnston on 2025-11-11 17:11: John owes me 11/11 update / allucent_notes: 2025-08-26 16:08 - User: John Capriotti - Date Added: 2025-08-26 16:08 - Note: Pending updated delivery date from REI. Should have update by end of week, 8/29. / 2025-08-27 07:08 - User: Jason Johnston - Date Added: 2025-08-27 07:08 - Note: No comment
- QTS-50061: allucent_notes: John Capriotti on 2025-08-26 16:08: Pending updated delivery date from REI. Should have update by end of week, 8/29. / John Capriotti on 2025-08-26 16:08: Pending updated delivery date from REI. Should have update by end of week, 8/29. / Jason Johnston on 2025-08-27 07:08: No comment / allucent_notes_20251014_152335: John Capriotti on 2025-08-26 16:08: Pending updated delivery date from REI. Should have update by end of week, 8/29. / John Capriotti on 2025-08-26 16:08: Pending updated delivery date from REI. Should have update by end of week, 8/29. / Jason Johnston on 2025-08-27 07:08: No comment / John Capriotti on 2025-09-02 15:09: Estimated delivery date per REI is 9/30 to have Maintenance and Catcher Bus. / John Capriotti on 2025-09-30 11:09: Per Update on 9/26 and 9/30 from Rosendin, expecting Reserve Busway to be delivered to their warehouse 10/15/second week of October. These busways will come in multiple shipments for each hall so will update them all individually as they come in. / allucent_notes_20251021_145627: John Capriotti on 2025-08-26 16:08: Pending updated delivery date from REI. Should have update by end of week, 8/29. / John Capriotti on 2025-08-26 16:08: Pending updated delivery date from REI. Should have update by end of week, 8/29. / Jason Johnston on 2025-08-27 07:08: No comment / John Capriotti on 2025-09-02 15:09: Estimated delivery date per REI is 9/30 to have Maintenance and Catcher Bus. / John Capriotti on 2025-09-30 11:09: Per Update on 9/26 and 9/30 from Rosendin, expecting Reserve Busway to be delivered to their warehouse 10/15/second week of October. These busways will come in multiple shipments for each hall so will update them all individually as they come in. / John Capriotti on 2025-10-21 14:10: Pending confirmation that all maint/catcher has been received. Shipments have been coming consistently need to confirm total quantities per hall. / allucent_notes_20251027_224008: John Capriotti on 2025-08-26 16:08: Pending updated delivery date from REI. Should have update by end of week, 8/29. / John Capriotti on 2025-08-26 16:08: Pending updated delivery date from REI. Should have update by end of week, 8/29. / Jason Johnston on 2025-08-27 07:08: No comment / John Capriotti on 2025-09-02 15:09: Estimated delivery date per REI is 9/30 to have Maintenance and Catcher Bus. / John Capriotti on 2025-09-30 11:09: Per Update on 9/26 and 9/30 from Rosendin, expecting Reserve Busway to be delivered to their warehouse 10/15/second week of October. These busways will come in multiple shipments for each hall so will update them all individually as they come in. / John Capriotti on 2025-10-21 14:10: Pending confirmation that all maint/catcher has been received. Shipments have been coming consistently need to confirm total quantities per hall. / John Capriotti on 2025-10-27 19:10: . / allucent_notes_20251028_163138: John Capriotti on 2025-08-26 16:08: Pending updated delivery date from REI. Should have update by end of week, 8/29. / John Capriotti on 2025-08-26 16:08: Pending updated delivery date from REI. Should have update by end of week, 8/29. / Jason Johnston on 2025-08-27 07:08: No comment / John Capriotti on 2025-09-02 15:09: Estimated delivery date per REI is 9/30 to have Maintenance and Catcher Bus. / John Capriotti on 2025-09-30 11:09: Per Update on 9/26 and 9/30 from Rosendin, expecting Reserve Busway to be delivered to their warehouse 10/15/second week of October. These busways will come in multiple shipments for each hall so will update them all individually as they come in. / John Capriotti on 2025-10-21 14:10: Pending confirmation that all maint/catcher has been received. Shipments have been coming consistently need to confirm total quantities per hall. / John Capriotti on 2025-10-27 19:10: . / allucent_notes_20251104_160200: John Capriotti on 2025-08-26 16:08: Pending updated delivery date from REI. Should have update by end of week, 8/29. / John Capriotti on 2025-08-26 16:08: Pending updated delivery date from REI. Should have update by end of week, 8/29. / Jason Johnston on 2025-08-27 07:08: No comment / John Capriotti on 2025-09-02 15:09: Estimated delivery date per REI is 9/30 to have Maintenance and Catcher Bus. / John Capriotti on 2025-09-30 11:09: Per Update on 9/26 and 9/30 from Rosendin, expecting Reserve Busway to be delivered to their warehouse 10/15/second week of October. These busways will come in multiple shipments for each hall so will update them all individually as they come in. / John Capriotti on 2025-10-21 14:10: Pending confirmation that all maint/catcher has been received. Shipments have been coming consistently need to confirm total quantities per hall. / John Capriotti on 2025-10-27 19:10: . / John Capriotti on 2025-11-04 15:11: Need to get an update on all the components to determine if this can be closed / allucent_notes_20251111_182405: John Capriotti on 2025-08-26 16:08: Pending updated delivery date from REI. Should have update by end of week, 8/29. / John Capriotti on 2025-08-26 16:08: Pending updated delivery date from REI. Should have update by end of week, 8/29. / Jason Johnston on 2025-08-27 07:08: No comment / John Capriotti on 2025-09-02 15:09: Estimated delivery date per REI is 9/30 to have Maintenance and Catcher Bus. / John Capriotti on 2025-09-30 11:09: Per Update on 9/26 and 9/30 from Rosendin, expecting Reserve Busway to be delivered to their warehouse 10/15/second week of October. These busways will come in multiple shipments for each hall so will update them all individually as they come in. / John Capriotti on 2025-10-21 14:10: Pending confirmation that all maint/catcher has been received. Shipments have been coming consistently need to confirm total quantities per hall. / John Capriotti on 2025-10-27 19:10: . / John Capriotti on 2025-11-04 15:11: Need to get an update on all the components to determine if this can be closed / Jason Johnston on 2025-11-11 17:11: John owes me 11/11 update / allucent_notes_20251118_192630: John Capriotti on 2025-08-26 16:08: Pending updated delivery date from REI. Should have update by end of week, 8/29. / John Capriotti on 2025-08-26 16:08: Pending updated delivery date from REI. Should have update by end of week, 8/29. / Jason Johnston on 2025-08-27 07:08: No comment / John Capriotti on 2025-09-02 15:09: Estimated delivery date per REI is 9/30 to have Maintenance and Catcher Bus. / John Capriotti on 2025-09-30 11:09: Per Update on 9/26 and 9/30 from Rosendin, expecting Reserve Busway to be delivered to their warehouse 10/15/second week of October. These busways will come in multiple shipments for each hall so will update them all individually as they come in. / John Capriotti on 2025-10-21 14:10: Pending confirmation that all maint/catcher has been received. Shipments have been coming consistently need to confirm total quantities per hall. / John Capriotti on 2025-10-27 19:10: . / John Capriotti on 2025-11-04 15:11: Need to get an update on all the components to determine if this can be closed / Jason Johnston on 2025-11-11 17:11: John owes me 11/11 update / allucent_notes: 2025-08-26 16:08 - User: John Capriotti - Date Added: 2025-08-26 16:08 - Note: Pending updated delivery date from REI. Should have update by end of week, 8/29. / 2025-08-26 16:08 - User: John Capriotti - Date Added: 2025-08-26 16:08 - Note: Pending updat

| ID | WBS | Activity | Duration | Start | Finish | Predecessors | Complete | Remaining | Planned start | Planned finish | Total float | Free float | Expected finish | Precon Phase | Project Section-1 | Baseline | Layton Responsible Party | Project Section | Allucent CSI Group | Phase-1-1 |
| --- | --- | --- | --- | --- | --- | --- | --- | --- | --- | --- | --- | --- | --- | --- | --- | --- | --- | --- | --- | --- |
|  | 21 | **Cable Busway** |  | 2025-02-28 | 2025-11-20 |  |  |  |  |  |  |  |  |  |  |  |  |  |  |  |
| QTS-49621 |  | Prepare Cable Busway Submittals | 5d | 2025-02-28 A | 2025-03-06 A | QTS-9851 SS | 100% |  |  |  |  |  |  | CFCI Procurement | Preconstruction | GMP |  |  |  |  |
| QTS-49631 |  | Layton Review Cable Busway Submittals | 1d | 2025-03-07 A | 2025-03-07 A | QTS-49621 | 100% |  |  |  |  |  |  | CFCI Procurement | Preconstruction | GMP | Chris Perales |  |  |  |
| QTS-49641 |  | Design Team Review & Approve Cable Busway Submittals | 10d | 2025-03-10 A | 2025-03-12 A | QTS-49631 | 100% |  | 2025-03-10 | 2025-03-21 |  |  |  | CFCI Procurement | Preconstruction | GMP | Chris Perales |  |  |  |
| QTS-49651 |  | DH 2100 / Mechanical Yard // Cable Bus Procurement | 84d | 2025-06-05 A | 2025-08-20 A | QTS-49641 | 100% |  | 2025-06-05 | 2025-10-02 |  |  |  | CFCI Procurement | Preconstruction | GMP | Chris Perales | Preconstruction | 01ADMIN |  |
| QTS-49691 |  | DH 1100 / Mechanical Yard // Cable Bus Procurement | 119d | 2025-06-05 A | 2025-10-03 A | QTS-49641 | 100% |  | 2025-06-05 | 2025-11-20 |  |  |  | CFCI Procurement | Preconstruction | GMP | Chris Perales | Preconstruction | 01ADMIN |  |
| QTS-49701 |  | DH 2200 / Mechanical Yard // Cable Bus Procurement | 151d | 2025-06-05 A | 2025-10-31 A | QTS-49641 | 100% |  | 2025-06-05 | 2026-01-09 |  |  |  | CFCI Procurement | Preconstruction | GMP | Chris Perales | Preconstruction | 01ADMIN |  |
| QTS-49711 |  | DH 1200 / Mechanical Yard // Cable Bus Procurement | 138d | 2025-06-05 A | 2025-10-31 A | QTS-49641 | 100% |  | 2025-06-05 | 2025-12-19 |  |  |  | CFCI Procurement | Preconstruction | GMP | Chris Perales | Preconstruction | 01ADMIN |  |
| QTS-49721 |  | DH 2300 / Mechanical Yard // Cable Bus Procurement | 164d | 2025-06-05 A | 2025-11-05 A | QTS-49641 | 100% |  | 2025-06-05 | 2026-02-03 |  |  |  | CFCI Procurement | Preconstruction | GMP | Chris Perales | Preconstruction | 01ADMIN |  |
| QTS-49731 |  | DH 1300 / Mechanical Yard // Cable Bus Procurement | 178d | 2025-06-05 A | 2025-11-20 A | QTS-49641 | 100% |  | 2025-06-05 | 2026-02-23 |  |  |  | CFCI Procurement | Preconstruction | GMP | Chris Perales | Preconstruction | 01ADMIN |  |
|  | 33 | **Exterior OH Doors** |  | 2025-10-28 | 2026-01-09 |  |  |  |  |  |  |  |  |  |  |  |  |  |  |  |
| QTS-50731 |  | FOH / North // Procure OH Doors | 30d | 2025-10-28 A | 2026-01-09 A | QTS-50721 | 100% |  | 2025-10-28 | 2025-12-10 |  |  |  |  | Construction | IGMP | Andrew Melis | Preconstruction | 01ADMIN | Phase 2 |
| QTS-50771 |  | Zone 3 Gridlines 30-41 / North // Procure OH Doors | 30d | 2025-11-20 A | 2026-01-09 A | QTS-50761 | 100% |  | 2025-11-21 | 2026-01-12 |  |  |  |  | Construction | IGMP | Andrew Melis | Preconstruction | 01ADMIN | Phase 2 |
| QTS-50751 |  | East Elevation // Procure OH Doors | 25d | 2026-01-08 A | 2026-01-09 A | QTS-50741 | 100% |  | 2026-01-08 | 2026-02-12 |  |  |  |  | Construction | IGMP | Andrew Melis | Preconstruction | 01ADMIN | Phase 2 |
|  | 35 | **Casework** |  | 2025-09-18 | 2026-01-20 |  |  |  |  |  |  |  |  |  |  |  |  |  |  |  |
| QTS-99660 |  | FOH / Level 1 // Procure PLAM Casework | 30d | 2025-09-18 A | 2025-12-15 A | QTS-1371 SS | 100% |  | 2025-10-15 | 2025-11-25 |  |  |  |  | Construction | IGMP | Hunter Wright | Preconstruction | 01ADMIN | Phase 2 |
| QTS-99670 |  | FOH / Level 1 // Procure WD-1 Casework | 30d | 2025-09-18 A | 2026-01-20 | QTS-1371 SS | 87% | 3.88d | 2025-10-15 | 2025-11-25 | 49.12d | 0d | 2026-01-20 |  | Construction | IGMP | Hunter Wright | Preconstruction | 01ADMIN | Phase 2 |
|  | 36 | **Security Screen Wall** |  | 2025-10-06 | 2025-12-01 |  |  |  |  |  |  |  |  |  |  |  |  |  |  |  |
| QTS-99690 |  | RFI #608 for Security Screen Manufacturer Change | 7d | 2025-10-06 A | 2025-10-14 A | QTS-1371 SS | 100% |  |  |  |  |  |  |  |  |  |  |  |  |  |
| QTS-99680 |  | Procure Security Screen | 30d | 2025-10-15 A | 2025-12-01 A | QTS-99690 | 100% |  | 2025-10-15 | 2025-11-25 |  |  |  |  | Construction | IGMP | Hunter Wright | Preconstruction | 01ADMIN | Phase 2 |
|  | 37 | **Steel Grating for TES Tanks** |  | 2025-10-20 | 2025-11-24 |  |  |  |  |  |  |  |  |  |  |  |  |  |  |  |
| QTS-100330 |  | Zone 1 / Procure Grating for TES Tank Platforms | 20d | 2025-10-20 A | 2025-11-14 A | QTS-43221 | 100% |  |  |  |  |  |  |  | Construction | IGMP | Andrew Melis | Preconstruction | 01ADMIN | Phase 2 |
| QTS-100340 |  | Zone 2 / Procure Grating for TES Tank Platforms | 20d | 2025-10-22 A | 2025-11-17 A | QTS-43221 | 100% |  | 2025-10-22 | 2025-11-18 |  |  |  |  | Construction | IGMP | Andrew Melis | Preconstruction | 01ADMIN | Phase 2 |
| QTS-100350 |  | Zone 3 / Procure Grating for TES Tank Platforms | 20d | 2025-10-22 A | 2025-11-24 A | QTS-43221 | 100% |  | 2025-10-22 | 2025-11-18 |  |  |  |  | Construction | IGMP | Andrew Melis | Preconstruction | 01ADMIN | Phase 2 |

Notes:
- QTS-49651: allucent_notes: John Capriotti on 2025-08-26 14:08: First shipment of cable bus for 2100 was received 8/20. Confirmed with REI. / allucent_notes: 2025-08-26 14:08 - User: John Capriotti - Date Added: 2025-08-26 14:08 - Note: First shipment of cable bus for 2100 was received 8/20. Confirmed with REI.
- QTS-49691: allucent_notes: John Capriotti on 2025-09-02 15:09: Per REI update: Cable bus estimated delivery is 10/3/2025. / allucent_notes: 2025-09-02 15:09 - User: John Capriotti - Date Added: 2025-09-02 15:09 - Note: Per REI update: Cable bus estimated delivery is 10/3/2025.
- QTS-49701: allucent_notes: John Capriotti on 2025-09-02 15:09: Per REI update: Cable bus estimated delivery is 10/10/2025. / allucent_notes_20251014_152335: John Capriotti on 2025-09-02 15:09: Per REI update: Cable bus estimated delivery is 10/10/2025. / John Capriotti on 2025-10-14 14:10: Expected Delivery by end of week, will update when REI confirms they received the cable bus for DH2200 / allucent_notes_20251021_145627: John Capriotti on 2025-09-02 15:09: Per REI update: Cable bus estimated delivery is 10/10/2025. / John Capriotti on 2025-10-14 14:10: Expected Delivery by end of week, will update when REI confirms they received the cable bus for DH2200 / John Capriotti on 2025-10-21 14:10: Pending confirmation that all bus has been received. Shipments have been coming consistently need to confirm total quantities per hall. / allucent_notes_20251027_224008: John Capriotti on 2025-09-02 15:09: Per REI update: Cable bus estimated delivery is 10/10/2025. / John Capriotti on 2025-10-14 14:10: Expected Delivery by end of week, will update when REI confirms they received the cable bus for DH2200 / John Capriotti on 2025-10-21 14:10: Pending confirmation that all bus has been received. Shipments have been coming consistently need to confirm total quantities per hall. / John Capriotti on 2025-10-27 18:10: Coming in multiple shipments, pending confirmation that we have entire data amount. / allucent_notes_20251028_163138: John Capriotti on 2025-09-02 15:09: Per REI update: Cable bus estimated delivery is 10/10/2025. / John Capriotti on 2025-10-14 14:10: Expected Delivery by end of week, will update when REI confirms they received the cable bus for DH2200 / John Capriotti on 2025-10-21 14:10: Pending confirmation that all bus has been received. Shipments have been coming consistently need to confirm total quantities per hall. / John Capriotti on 2025-10-27 18:10: Coming in multiple shipments, pending confirmation that we have entire data amount. / allucent_notes_20251104_160200: John Capriotti on 2025-09-02 15:09: Per REI update: Cable bus estimated delivery is 10/10/2025. / John Capriotti on 2025-10-14 14:10: Expected Delivery by end of week, will update when REI confirms they received the cable bus for DH2200 / John Capriotti on 2025-10-21 14:10: Pending confirmation that all bus has been received. Shipments have been coming consistently need to confirm total quantities per hall. / John Capriotti on 2025-10-27 18:10: Coming in multiple shipments, pending confirmation that we have entire data amount. / allucent_notes: 2025-09-02 15:09 - User: John Capriotti - Date Added: 2025-09-02 15:09 - Note: Per REI update: Cable bus estimated delivery is 10/10/2025. / 2025-10-14 14:10 - User: John Capriotti - Date Added: 2025-10-14 14:10 - Note: Expected Delivery by end of week,
- QTS-49711: allucent_notes: John Capriotti on 2025-09-02 15:09: Per REI update: Cable bus estimated delivery is 10/17/2025. / allucent_notes_20251014_152335: John Capriotti on 2025-09-02 15:09: Per REI update: Cable bus estimated delivery is 10/17/2025. / allucent_notes_20251021_145627: John Capriotti on 2025-09-02 15:09: Per REI update: Cable bus estimated delivery is 10/17/2025. / John Capriotti on 2025-10-21 14:10: Pending confirmation that all bus has been received. Shipments have been coming consistently need to confirm total quantities per hall. / allucent_notes_20251027_224008: John Capriotti on 2025-09-02 15:09: Per REI update: Cable bus estimated delivery is 10/17/2025. / John Capriotti on 2025-10-21 14:10: Pending confirmation that all bus has been received. Shipments have been coming consistently need to confirm total quantities per hall. / Jason Johnston on 2025-10-27 22:10: No update from John Capriotti / allucent_notes_20251028_163138: John Capriotti on 2025-09-02 15:09: Per REI update: Cable bus estimated delivery is 10/17/2025. / John Capriotti on 2025-10-21 14:10: Pending confirmation that all bus has been received. Shipments have been coming consistently need to confirm total quantities per hall. / Jason Johnston on 2025-10-27 22:10: No update from John Capriotti / Jason Johnston on 2025-10-28 16:10: John reaching out to supplier to get an update. / allucent_notes_20251104_160200: John Capriotti on 2025-09-02 15:09: Per REI update: Cable bus estimated delivery is 10/17/2025. / John Capriotti on 2025-10-21 14:10: Pending confirmation that all bus has been received. Shipments have been coming consistently need to confirm total quantities per hall. / Jason Johnston on 2025-10-27 22:10: No update from John Capriotti / Jason Johnston on 2025-10-28 16:10: John reaching out to supplier to get an update. / allucent_notes: 2025-09-02 15:09 - User: John Capriotti - Date Added: 2025-09-02 15:09 - Note: Per REI update: Cable bus estimated delivery is 10/17/2025. / 2025-10-21 14:10 - User: John Capriotti - Date Added: 2025-10-21 14:10 - Note: Pending confirmation that all bus
- QTS-49721: allucent_notes: John Capriotti on 2025-09-02 15:09: Per REI update: Cable bus estimated delivery is 10/31/2025. / allucent_notes_20251014_152335: John Capriotti on 2025-09-02 15:09: Per REI update: Cable bus estimated delivery is 10/31/2025. / allucent_notes_20251021_145627: John Capriotti on 2025-09-02 15:09: Per REI update: Cable bus estimated delivery is 10/31/2025. / allucent_notes_20251027_224008: John Capriotti on 2025-09-02 15:09: Per REI update: Cable bus estimated delivery is 10/31/2025. / allucent_notes_20251028_163138: John Capriotti on 2025-09-02 15:09: Per REI update: Cable bus estimated delivery is 10/31/2025. / allucent_notes_20251104_160200: John Capriotti on 2025-09-02 15:09: Per REI update: Cable bus estimated delivery is 10/31/2025. / John Capriotti on 2025-11-04 14:11: Pending a status on the cable bus for all line-ups. / allucent_notes_20251111_182405: John Capriotti on 2025-09-02 15:09: Per REI update: Cable bus estimated delivery is 10/31/2025. / John Capriotti on 2025-11-04 14:11: Pending a status on the cable bus for all line-ups. / Jason Johnston on 2025-11-11 17:11: John owes me 11/11 update / allucent_notes_20251118_192630: John Capriotti on 2025-09-02 15:09: Per REI update: Cable bus estimated delivery is 10/31/2025. / John Capriotti on 2025-11-04 14:11: Pending a status on the cable bus for all line-ups. / Jason Johnston on 2025-11-11 17:11: John owes me 11/11 update / John Capriotti on 2025-11-18T18:01:48.607Z: Cable Bus comes in multiple shipments, confirming what percentage we have, but ship date was 10/10 with estimated lead time of 12 weeks, looking at 12/9 to have all components for entire hall by 12/9. Will confirm if this is projected to be fully in ahead of time. / allucent_notes_20251202_153722: John Capriotti on 2025-09-02 15:09: Per REI update: Cable bus estimated delivery is 10/31/2025. / John Capriotti on 2025-11-04 14:11: Pending a status on the cable bus for all line-ups. / Jason Johnston on 2025-11-11 17:11: John owes me 11/11 update / John Capriotti on 2025-11-18T18:01:48.607Z: Cable Bus comes in multiple shipments, confirming what percentage we have, but ship date was 10/10 with estimated lead time of 12 weeks, looking at 12/9 to have all components for entire hall by 12/9. Will confirm if this is projected to be fully in ahead of time. / allucent_notes_20251209_203830: John Capriotti on 2025-09-02 15:09: Per REI update: Cable bus estimated delivery is 10/31/2025. / John Capriotti on 2025-11-04 14:11: Pending a status on the cable bus for all line-ups. / Jason Johnston on 2025-11-11 17:11: John owes me 11/11 update / John Capriotti on 2025-11-18T18:01:48.607Z: Cable Bus comes in multiple shipments, confirming what percentage we have, but ship date was 10/10 with estimated lead time of 12 weeks, looking at 12/9 to have all components for entire hall by 12/9. Will confirm if this is projected to be fully in ahead of time. / John Capriotti on 2025-12-09 15:31: Confirmed all components came in 11/5 from REI. / allucent_notes: 2025-09-02 15:09 - User: John Capriotti - Date Added: 2025-09-02 15:09 - Note: Per REI update: Cable bus estimated delivery is 10/31/2025. / 2025-11-04 14:11 - User: John Capriotti - Date Added: 2025-11-04 14:11 - Note: Pending a status on the cable bus
- QTS-49731: allucent_notes: John Capriotti on 2025-09-02 15:09: Per REI update: Cable bus estimated delivery is 11/14/2025. / allucent_notes_20251014_152335: John Capriotti on 2025-09-02 15:09: Per REI update: Cable bus estimated delivery is 11/14/2025. / allucent_notes_20251021_145627: John Capriotti on 2025-09-02 15:09: Per REI update: Cable bus estimated delivery is 11/14/2025. / allucent_notes_20251027_224008: John Capriotti on 2025-09-02 15:09: Per REI update: Cable bus estimated delivery is 11/14/2025. / allucent_notes_20251028_163138: John Capriotti on 2025-09-02 15:09: Per REI update: Cable bus estimated delivery is 11/14/2025. / allucent_notes_20251104_160200: John Capriotti on 2025-09-02 15:09: Per REI update: Cable bus estimated delivery is 11/14/2025. / allucent_notes_20251111_182405: John Capriotti on 2025-09-02 15:09: Per REI update: Cable bus estimated delivery is 11/14/2025. / allucent_notes_20251118_192630: John Capriotti on 2025-09-02 15:09: Per REI update: Cable bus estimated delivery is 11/14/2025. / John Capriotti on 2025-11-18T18:01:27.615Z: Cable Bus comes in multiple shipments, confirming what percentage we have, but ship date was 10/10 with estimated lead time of 12 weeks, looking at 12/9 to have all components for entire hall by 12/9. Will confirm if this is projected to be fully in ahead of time. / allucent_notes_20251202_153722: John Capriotti on 2025-09-02 15:09: Per REI update: Cable bus estimated delivery is 11/14/2025. / John Capriotti on 2025-11-18T18:01:27.615Z: Cable Bus comes in multiple shipments, confirming what percentage we have, but ship date was 10/10 with estimated lead time of 12 weeks, looking at 12/9 to have all components for entire hall by 12/9. Will confirm if this is projected to be fully in ahead of time. / allucent_notes_20251209_203830: John Capriotti on 2025-09-02 15:09: Per REI update: Cable bus estimated delivery is 11/14/2025. / John Capriotti on 2025-11-18T18:01:27.615Z: Cable Bus comes in multiple shipments, confirming what percentage we have, but ship date was 10/10 with estimated lead time of 12 weeks, looking at 12/9 to have all components for entire hall by 12/9. Will confirm if this is projected to be fully in ahead of time. / John Capriotti on 2025-12-09 15:32: Confirmed all components came in 11/20 from REI. / John Capriotti on 2025-12-09 15:34: Confirmed all components came in 11/520 from REI. / allucent_notes: 2025-09-02 15:09 - User: John Capriotti - Date Added: 2025-09-02 15:09 - Note: Per REI update: Cable bus estimated delivery is 11/14/2025. / 2025-11-18T18:01:27.615Z - User: John Capriotti - Date Added: 2025-11-18T18:01:27.615Z - Note: Cable Bus comes in
- QTS-50731: allucent_notes_20251230_164549: Andrew Melis on 2025-09-17 09:09: Field measurement of these doors are not scheduled until next week. / Andrew Melis on 2025-12-16 12:27: OH Exterior Doors are not due onsite until Janunary / allucent_notes_20251014_152335: Andrew Melis on 2025-09-17 09:09: Field measurement of these doors are not scheduled until next week. / allucent_notes_20251021_145627: Andrew Melis on 2025-09-17 09:09: Field measurement of these doors are not scheduled until next week. / allucent_notes_20251027_224008: Andrew Melis on 2025-09-17 09:09: Field measurement of these doors are not scheduled until next week. / allucent_notes_20251028_163138: Andrew Melis on 2025-09-17 09:09: Field measurement of these doors are not scheduled until next week. / allucent_notes_20251104_160200: Andrew Melis on 2025-09-17 09:09: Field measurement of these doors are not scheduled until next week. / allucent_notes_20251111_182405: Andrew Melis on 2025-09-17 09:09: Field measurement of these doors are not scheduled until next week. / allucent_notes_20251118_192630: Andrew Melis on 2025-09-17 09:09: Field measurement of these doors are not scheduled until next week. / allucent_notes_20251202_153722: Andrew Melis on 2025-09-17 09:09: Field measurement of these doors are not scheduled until next week. / allucent_notes_20251209_203830: Andrew Melis on 2025-09-17 09:09: Field measurement of these doors are not scheduled until next week. / allucent_notes_20251216_165335: Andrew Melis on 2025-09-17 09:09: Field measurement of these doors are not scheduled until next week. / Andrew Melis on 2025-12-16 12:27: OH Exterior Doors are not due onsite until Janunary / allucent_notes: 2025-09-17 09:09 - User: Andrew Melis - Date Added: 2025-09-17 09:09 - Note: Field measurement of these doors are not scheduled until next week. / 2025-12-16 12:27 - User: Andrew Melis - Date Added: 2025-12-16 12:27 - Note: OH Exterior Doors are not d
- QTS-50771: allucent_notes_20251230_164549: Andrew Melis on 2025-10-21 12:10: OH Doors are being ordered as one package. Layton is working to breakout the Exterior from the Interior doors but all exterior have not been field verified at this time / Andrew Melis on 2025-11-04 09:11: Final field verification is taking place this week for the exterior OH Doors. All OH doors are being ordered at that point / Andrew Melis on 2025-11-11 08:11: Doors have not been ordered yet as we are looking at options to seperate the interior from the exterior doors for procurement / Jason Johnston on 2025-12-01 14:23: Released vendor. / allucent_notes_20251021_145627: Andrew Melis on 2025-10-21 12:10: OH Doors are being ordered as one package. Layton is working to breakout the Exterior from the Interior doors but all exterior have not been field verified at this time / allucent_notes_20251027_224008: Andrew Melis on 2025-10-21 12:10: OH Doors are being ordered as one package. Layton is working to breakout the Exterior from the Interior doors but all exterior have not been field verified at this time / allucent_notes_20251028_163138: Andrew Melis on 2025-10-21 12:10: OH Doors are being ordered as one package. Layton is working to breakout the Exterior from the Interior doors but all exterior have not been field verified at this time / allucent_notes_20251104_160200: Andrew Melis on 2025-10-21 12:10: OH Doors are being ordered as one package. Layton is working to breakout the Exterior from the Interior doors but all exterior have not been field verified at this time / Andrew Melis on 2025-11-04 09:11: Final field verification is taking place this week for the exterior OH Doors. All OH doors are being ordered at that point / allucent_notes_20251111_182405: Andrew Melis on 2025-10-21 12:10: OH Doors are being ordered as one package. Layton is working to breakout the Exterior from the Interior doors but all exterior have not been field verified at this time / Andrew Melis on 2025-11-04 09:11: Final field verification is taking place this week for the exterior OH Doors. All OH doors are being ordered at that point / Andrew Melis on 2025-11-11 08:11: Doors have not been ordered yet as we are looking at options to seperate the interior from the exterior doors for procurement / allucent_notes_20251118_192630: Andrew Melis on 2025-10-21 12:10: OH Doors are being ordered as one package. Layton is working to breakout the Exterior from the Interior doors but all exterior have not been field verified at this time / Andrew Melis on 2025-11-04 09:11: Final field verification is taking place this week for the exterior OH Doors. All OH doors are being ordered at that point / Andrew Melis on 2025-11-11 08:11: Doors have not been ordered yet as we are looking at options to seperate the interior from the exterior doors for procurement / allucent_notes_20251202_153722: Andrew Melis on 2025-10-21 12:10: OH Doors are being ordered as one package. Layton is working to breakout the Exterior from the Interior doors but all exterior have not been field verified at this time / Andrew Melis on 2025-11-04 09:11: Final field verification is taking place this week for the exterior OH Doors. All OH doors are being ordered at that point / Andrew Melis on 2025-11-11 08:11: Doors have not been ordered yet as we are looking at options to seperate the interior from the exterior doors for procurement / Jason Johnston on 2025-12-01 14:23: Released vendor. / allucent_notes_20251209_203830: Andrew Melis on 2025-10-21 12:10: OH Doors are being ordered as one package. Layton is working to breakout the Exterior from the Interior doors but all exterior have not been field verified at this time / Andrew Melis on 2025-11-04 09:11: Final field verification is taking place this week for the exterior OH Doors. All OH doors are being ordered at that point / Andrew Melis on 2025-11-11 08:11: Doors have not been ordered yet as we are looking at options to seperate the interior from the exterior doors for procurement / Jason Johnston on 2025-12-01 14:23: Released vendor. / allucent_notes_20251216_165335: Andrew Melis on 2025-10-21 12:10: OH Doors are being ordered as one package. Layton is working to breakout the Exterior from the Interior doors but all exterior have not been field verified at this time / Andrew Melis on 2025-11-04 09:11: Final field verification is taking place this week for the exterior OH Doors. All OH doors are being ordered at that point / Andrew Melis on 2025-11-11 08:11: Doors have not been ordered yet as we are looking at options to seperate the interior from the exterior doors for procurement / Jason Johnston on 2025-12-01 14:23: Released vendor. / allucent_notes: 2025-10-21 12:10 - User: Andrew Melis - Date Added: 2025-10-21 12:10 - Note: OH Doors are being ordered as one package. Layton is working to breakout the Exterior from the Interior doors but all exterior have not been field verified at this time / 2025-
- QTS-99660: allucent_notes_20251021_145627: Jack Garrett on 2025-10-21 08:10: This is the projected delivery date / Jack Garrett on 2025-10-21 08:10: This is the correct date they began procurement. / allucent_notes_20251027_224008: Jack Garrett on 2025-10-21 08:10: This is the projected delivery date / Jack Garrett on 2025-10-21 08:10: This is the correct date they began procurement. / allucent_notes_20251028_163138: Jack Garrett on 2025-10-21 08:10: This is the projected delivery date / Jack Garrett on 2025-10-21 08:10: This is the correct date they began procurement. / allucent_notes_20251104_160200: Jack Garrett on 2025-10-21 08:10: This is the projected delivery date / Jack Garrett on 2025-10-21 08:10: This is the correct date they began procurement. / allucent_notes_20251111_182405: Jack Garrett on 2025-10-21 08:10: This is the projected delivery date / Jack Garrett on 2025-10-21 08:10: This is the correct date they began procurement. / allucent_notes_20251118_192630: Jack Garrett on 2025-10-21 08:10: This is the projected delivery date / Jack Garrett on 2025-10-21 08:10: This is the correct date they began procurement. / allucent_notes_20251202_153722: Jack Garrett on 2025-10-21 08:10: This is the projected delivery date / Jack Garrett on 2025-10-21 08:10: This is the correct date they began procurement. / allucent_notes_20251209_203830: Jack Garrett on 2025-10-21 08:10: This is the projected delivery date / Jack Garrett on 2025-10-21 08:10: This is the correct date they began procurement. / allucent_notes_20251216_165335: Jack Garrett on 2025-10-21 08:10: This is the projected delivery date / Jack Garrett on 2025-10-21 08:10: This is the correct date they began procurement. / Jason Johnston on 2025-12-16 15:52: no update / allucent_notes: 2025-10-21 08:10 - User: Jack Garrett - Date Added: 2025-10-21 08:10 - Note: This is the projected delivery date / 2025-10-21 08:10 - User: Jack Garrett - Date Added: 2025-10-21 08:10 - Note: This is the correct date they began procurement. / 2025-12-16
- QTS-99670: allucent_notes_20251230_164549: Jack Garrett on 2025-10-21 08:10: correct start date / Jack Garrett on 2025-10-21 08:10: correct projected delivery date. / Jack Garrett on 2025-12-02 12:01: Case work pushed back and being stored off site. / allucent_notes_20251021_145627: Jack Garrett on 2025-10-21 08:10: correct start date / Jack Garrett on 2025-10-21 08:10: correct projected delivery date. / allucent_notes_20251027_224008: Jack Garrett on 2025-10-21 08:10: correct start date / Jack Garrett on 2025-10-21 08:10: correct projected delivery date. / allucent_notes_20251028_163138: Jack Garrett on 2025-10-21 08:10: correct start date / Jack Garrett on 2025-10-21 08:10: correct projected delivery date. / allucent_notes_20251104_160200: Jack Garrett on 2025-10-21 08:10: correct start date / Jack Garrett on 2025-10-21 08:10: correct projected delivery date. / allucent_notes_20251111_182405: Jack Garrett on 2025-10-21 08:10: correct start date / Jack Garrett on 2025-10-21 08:10: correct projected delivery date. / allucent_notes_20251118_192630: Jack Garrett on 2025-10-21 08:10: correct start date / Jack Garrett on 2025-10-21 08:10: correct projected delivery date. / allucent_notes_20251202_153722: Jack Garrett on 2025-10-21 08:10: correct start date / Jack Garrett on 2025-10-21 08:10: correct projected delivery date. / Jack Garrett on 2025-12-02 12:01: Case work pushed back and being stored off site. / allucent_notes_20251209_203830: Jack Garrett on 2025-10-21 08:10: correct start date / Jack Garrett on 2025-10-21 08:10: correct projected delivery date. / Jack Garrett on 2025-12-02 12:01: Case work pushed back and being stored off site. / allucent_notes_20251216_165335: Jack Garrett on 2025-10-21 08:10: correct start date / Jack Garrett on 2025-10-21 08:10: correct projected delivery date. / Jack Garrett on 2025-12-02 12:01: Case work pushed back and being stored off site. / allucent_notes: 2025-10-21 08:10 - User: Jack Garrett - Date Added: 2025-10-21 08:10 - Note: correct start date / 2025-10-21 08:10 - User: Jack Garrett - Date Added: 2025-10-21 08:10 - Note: correct projected delivery date. / 2025-12-02 12:01 - User: Jack Garrett - Dat
- QTS-99680: allucent_notes_20251202_153722: Jack Garrett on 2025-11-25 12:11: delayed / allucent_notes: 2025-11-25 12:11 - User: Jack Garrett - Date Added: 2025-11-25 12:11 - Note: delayed

| ID | WBS | Activity | Duration | Start | Finish | Predecessors | Complete | Remaining | Planned start | Planned finish | Total float | Free float | Expected finish | Project Section-1 | Phase-1-1 | Baseline | Layton Responsible Party | Project Section | Allucent CSI Group | Precon Phase |
| --- | --- | --- | --- | --- | --- | --- | --- | --- | --- | --- | --- | --- | --- | --- | --- | --- | --- | --- | --- | --- |
|  | 38 | **Fragnet / Fire Extinguisher Cabinets** |  | 2025-12-05 | 2026-02-20 |  |  |  |  |  |  |  |  |  |  |  |  |  |  |  |
| QTS-1004500 |  | Fragnet / RFI #739 Submission Fire Extinguisher Cabinets | 1d | 2025-12-05 A | 2025-12-05 A | QTS-1371 SS | 100% |  | 2025-10-15 | 2025-10-15 |  |  |  | Construction | Phase 2 | IGMP | Hunter Wright | Preconstruction | 01ADMIN |  |
| QTS-1004510 |  | Fragnet / RFI #739 Design Response Fire Extinguisher Cabinets | 10d | 2025-12-08 A | 2025-12-19 A | QTS-1004500 | 100% |  | 2025-10-15 | 2025-10-28 |  |  |  | Construction | Phase 2 | IGMP | Hunter Wright | Preconstruction | 01ADMIN |  |
| QTS-1004520 |  | Fragnet / Procure Fire Extinguisher Cabinets | 70d | 2025-12-22 A | 2026-02-20 | QTS-1004510 | 61% | 27d | 2025-10-15 | 2026-01-30 | 32d | 0d | 2026-02-20 | Construction | Phase 2 | IGMP | Hunter Wright | Preconstruction | 01ADMIN |  |
|  | 1 | **OFCI Equipment** |  | 2025-02-10 | 2026-03-26 |  |  |  |  |  |  |  |  |  |  |  |  |  |  |  |
|  | 5 | **FOH/ BOH Roof Top Units** |  | 2025-07-18 | 2025-12-22 |  |  |  |  |  |  |  |  |  |  |  |  |  |  |  |
| QTS-25371 |  | FOH / RTU-RT05-01 | 20d | 2025-07-18 A | 2025-10-28 A | QTS-1371 | 100% |  | 2025-07-18 | 2025-08-14 |  |  |  | Preconstruction |  | GMP | Chris Perales | Preconstruction | 01ADMIN | OFCI Procurement |
| QTS-36091 |  | FOH / RTU-RT05-02 | 20d | 2025-07-30 A | 2025-10-27 A | QTS-1371 | 100% |  | 2025-07-30 | 2025-08-26 |  |  |  | Preconstruction |  | GMP | Chris Perales | Preconstruction | 01ADMIN | OFCI Procurement |
| QTS-23461 |  | BOH / RTU-RT05-03 | 20d | 2025-09-12 A | 2025-12-22 A | QTS-1371 | 100% |  | 2025-09-12 | 2025-10-09 |  |  |  | Preconstruction |  | GMP | Chris Perales | Preconstruction | 01ADMIN | OFCI Procurement |
|  | 6 | **FOH/ BOH Electrical** |  | 2025-08-28 | 2026-01-09 |  |  |  |  |  |  |  |  |  |  |  |  |  |  |  |
| QTS-27181 |  | FOH / 100kVA House UPS #01 | 20d | 2025-08-28 A | 2025-11-07 A | QTS-1371 | 100% |  | 2025-08-28 | 2025-09-25 |  |  |  | Preconstruction |  | GMP | Chris Perales | Preconstruction | 01ADMIN | OFCI Procurement |
| QTS-36131 |  | BOH / 2500kW House Generator 02 | 20d | 2025-09-03 A | 2025-11-24 A | QTS-1371 | 100% |  | 2025-09-03 | 2025-09-30 |  |  |  | Preconstruction |  | GMP | Chris Perales | Preconstruction | 01ADMIN | OFCI Procurement |
| QTS-36121 |  | FOH / 2500kVA House Transformer 01 | 20d | 2025-09-04 A | 2025-10-20 A | QTS-1371 | 100% |  | 2025-09-04 | 2025-10-01 |  |  |  | Preconstruction |  | GMP | Chris Perales | Preconstruction | 01ADMIN | OFCI Procurement |
| QTS-39701 |  | FOH / FOH Yard // Assembly - Tank #Gen-FOH | 20d | 2025-09-09 A | 2025-11-10 A | QTS-1371 | 100% |  | 2025-09-09 | 2025-10-06 |  |  |  | Preconstruction |  |  | Chris Perales | Preconstruction | 01ADMIN | OFCI Procurement |
| QTS-39711 |  | FOH / FOH Yard // Assembly - Engine #Gen-FOH | 20d | 2025-09-09 A | 2025-11-10 A | QTS-1371 | 100% |  | 2025-09-09 | 2025-10-06 |  |  |  | Preconstruction |  |  | Chris Perales | Preconstruction | 01ADMIN | OFCI Procurement |
| QTS-39721 |  | FOH / FOH Yard // Assembly - SER #Gen-FOH | 20d | 2025-09-09 A | 2025-11-10 A | QTS-1371 | 100% |  | 2025-09-09 | 2025-10-06 |  |  |  | Preconstruction |  |  | Chris Perales | Preconstruction | 01ADMIN | OFCI Procurement |
| QTS-39731 |  | FOH / FOH Yard // Assembly - Housing #Gen-FOH | 20d | 2025-09-09 A | 2025-11-10 A | QTS-1371 | 100% |  | 2025-09-09 | 2025-10-06 |  |  |  | Preconstruction |  |  | Chris Perales | Preconstruction | 01ADMIN | OFCI Procurement |
| QTS-27171 |  | FOH / 600A Prim/ House STS #02 | 20d | 2025-10-01 A | 2025-10-28 A | QTS-1371 | 100% |  |  |  |  |  |  | Preconstruction |  | GMP | Chris Perales | Preconstruction | 01ADMIN | OFCI Procurement |
| QTS-27191 |  | FOH / 100kVA House UPS #02 | 20d | 2025-10-01 A | 2025-11-07 A | QTS-1371 | 100% |  | 2025-10-01 | 2025-10-28 |  |  |  | Preconstruction |  | GMP | Chris Perales | Preconstruction | 01ADMIN | OFCI Procurement |
| QTS-36141 |  | BOH / 2500kVA House Transformer 02 | 20d | 2025-10-01 A | 2025-11-04 A | QTS-1371 | 100% |  | 2025-10-01 | 2025-10-28 |  |  |  | Preconstruction |  | GMP | Chris Perales | Preconstruction | 01ADMIN | OFCI Procurement |
| QTS-27161 |  | FOH / 600A Prim/ House STS #01 | 20d | 2025-10-15 A | 2025-11-05 A | QTS-1371 | 100% |  | 2025-10-15 | 2025-11-11 |  |  |  | Preconstruction |  | GMP | Chris Perales | Preconstruction | 01ADMIN | OFCI Procurement |
| QTS-27201 |  | FOH / 3000A House Switchboard 01 | 20d | 2025-10-15 A | 2025-11-11 A | QTS-1371 | 100% |  |  |  |  |  |  | Preconstruction |  | GMP | Chris Perales | Preconstruction | 01ADMIN | OFCI Procurement |
| QTS-39741 |  | BOH / BOH Yard // Assembly - Tank #Gen-BOH | 20d | 2025-10-27 A | 2025-11-24 A | QTS-36131 SS | 100% |  | 2025-10-27 | 2025-11-21 |  |  |  | Preconstruction |  |  | Chris Perales | Preconstruction | 01ADMIN | OFCI Procurement |
| QTS-39751 |  | BOH / BOH Yard // Assembly - Engine #Gen-BOH | 20d | 2025-10-27 A | 2025-11-24 A | QTS-36131 SS | 100% |  | 2025-10-27 | 2025-11-21 |  |  |  | Preconstruction |  |  | Chris Perales | Preconstruction | 01ADMIN | OFCI Procurement |
| QTS-39761 |  | BOH / BOH Yard // Assembly - SER #Gen-BOH | 20d | 2025-10-27 A | 2025-11-24 A | QTS-36131 SS | 100% |  | 2025-10-27 | 2025-11-21 |  |  |  | Preconstruction |  |  | Chris Perales | Preconstruction | 01ADMIN | OFCI Procurement |
| QTS-39771 |  | BOH / BOH Yard // Assembly - Housing #Gen-BOH | 20d | 2025-10-27 A | 2025-11-24 A | QTS-36131 SS | 100% |  | 2025-10-27 | 2025-11-21 |  |  |  | Preconstruction |  |  | Chris Perales | Preconstruction | 01ADMIN | OFCI Procurement |
| QTS-27821 |  | BOH / 600A Prim/ House STS #03 | 20d | 2025-12-03 A | 2025-12-22 A | QTS-1371 | 100% |  | 2025-12-03 | 2026-01-06 |  |  |  | Preconstruction |  | GMP | Chris Perales | Preconstruction | 01ADMIN | OFCI Procurement |
| QTS-27831 |  | BOH / 100kVA House UPS #03 | 20d | 2025-12-03 A | 2025-12-22 A | QTS-1371 | 100% |  | 2025-12-03 | 2026-01-06 |  |  |  | Preconstruction |  | GMP | Chris Perales | Preconstruction | 01ADMIN | OFCI Procurement |
| QTS-28471 |  | BOH / 600A Prim/ House STS #04 | 20d | 2025-12-03 A | 2026-01-09 A | QTS-1371 | 100% |  | 2025-12-03 | 2026-01-06 |  |  |  | Preconstruction |  | GMP | Chris Perales | Preconstruction | 01ADMIN | OFCI Procurement |
| QTS-28481 |  | BOH / 100kVA House UPS #04 | 20d | 2025-12-03 A | 2025-12-22 A | QTS-1371 | 100% |  | 2025-12-03 | 2026-01-06 |  |  |  | Preconstruction |  | GMP | Chris Perales | Preconstruction | 01ADMIN | OFCI Procurement |
| QTS-36151 |  | BOH / 3000A House Switchboard 02 | 20d | 2025-12-03 A | 2025-12-22 A | QTS-1371 | 100% |  | 2025-12-03 | 2026-01-06 |  |  |  | Preconstruction |  | GMP | Chris Perales | Preconstruction | 01ADMIN | OFCI Procurement |

Notes:
- QTS-1004500: allucent_notes_20251230_164549: Jack Garrett on 2025-10-21 08:10: correct start date / Jack Garrett on 2025-10-21 08:10: correct projected delivery date. / Jack Garrett on 2025-12-02 12:01: Case work pushed back and being stored off site. / allucent_notes_20251021_145627: Jack Garrett on 2025-10-21 08:10: correct start date / Jack Garrett on 2025-10-21 08:10: correct projected delivery date. / allucent_notes_20251027_224008: Jack Garrett on 2025-10-21 08:10: correct start date / Jack Garrett on 2025-10-21 08:10: correct projected delivery date. / allucent_notes_20251028_163138: Jack Garrett on 2025-10-21 08:10: correct start date / Jack Garrett on 2025-10-21 08:10: correct projected delivery date. / allucent_notes_20251104_160200: Jack Garrett on 2025-10-21 08:10: correct start date / Jack Garrett on 2025-10-21 08:10: correct projected delivery date. / allucent_notes_20251111_182405: Jack Garrett on 2025-10-21 08:10: correct start date / Jack Garrett on 2025-10-21 08:10: correct projected delivery date. / allucent_notes_20251118_192630: Jack Garrett on 2025-10-21 08:10: correct start date / Jack Garrett on 2025-10-21 08:10: correct projected delivery date. / allucent_notes_20251202_153722: Jack Garrett on 2025-10-21 08:10: correct start date / Jack Garrett on 2025-10-21 08:10: correct projected delivery date. / Jack Garrett on 2025-12-02 12:01: Case work pushed back and being stored off site. / allucent_notes_20251209_203830: Jack Garrett on 2025-10-21 08:10: correct start date / Jack Garrett on 2025-10-21 08:10: correct projected delivery date. / Jack Garrett on 2025-12-02 12:01: Case work pushed back and being stored off site. / allucent_notes_20251216_165335: Jack Garrett on 2025-10-21 08:10: correct start date / Jack Garrett on 2025-10-21 08:10: correct projected delivery date. / Jack Garrett on 2025-12-02 12:01: Case work pushed back and being stored off site. / allucent_notes: 2025-10-21 08:10 - User: Jack Garrett - Date Added: 2025-10-21 08:10 - Note: correct start date / 2025-10-21 08:10 - User: Jack Garrett - Date Added: 2025-10-21 08:10 - Note: correct projected delivery date. / 2025-12-02 12:01 - User: Jack Garrett - Dat
- QTS-1004510: allucent_notes_20251230_164549: Jack Garrett on 2025-10-21 08:10: correct start date / Jack Garrett on 2025-10-21 08:10: correct projected delivery date. / Jack Garrett on 2025-12-02 12:01: Case work pushed back and being stored off site. / allucent_notes_20251021_145627: Jack Garrett on 2025-10-21 08:10: correct start date / Jack Garrett on 2025-10-21 08:10: correct projected delivery date. / allucent_notes_20251027_224008: Jack Garrett on 2025-10-21 08:10: correct start date / Jack Garrett on 2025-10-21 08:10: correct projected delivery date. / allucent_notes_20251028_163138: Jack Garrett on 2025-10-21 08:10: correct start date / Jack Garrett on 2025-10-21 08:10: correct projected delivery date. / allucent_notes_20251104_160200: Jack Garrett on 2025-10-21 08:10: correct start date / Jack Garrett on 2025-10-21 08:10: correct projected delivery date. / allucent_notes_20251111_182405: Jack Garrett on 2025-10-21 08:10: correct start date / Jack Garrett on 2025-10-21 08:10: correct projected delivery date. / allucent_notes_20251118_192630: Jack Garrett on 2025-10-21 08:10: correct start date / Jack Garrett on 2025-10-21 08:10: correct projected delivery date. / allucent_notes_20251202_153722: Jack Garrett on 2025-10-21 08:10: correct start date / Jack Garrett on 2025-10-21 08:10: correct projected delivery date. / Jack Garrett on 2025-12-02 12:01: Case work pushed back and being stored off site. / allucent_notes_20251209_203830: Jack Garrett on 2025-10-21 08:10: correct start date / Jack Garrett on 2025-10-21 08:10: correct projected delivery date. / Jack Garrett on 2025-12-02 12:01: Case work pushed back and being stored off site. / allucent_notes_20251216_165335: Jack Garrett on 2025-10-21 08:10: correct start date / Jack Garrett on 2025-10-21 08:10: correct projected delivery date. / Jack Garrett on 2025-12-02 12:01: Case work pushed back and being stored off site. / allucent_notes: 2025-10-21 08:10 - User: Jack Garrett - Date Added: 2025-10-21 08:10 - Note: correct start date / 2025-10-21 08:10 - User: Jack Garrett - Date Added: 2025-10-21 08:10 - Note: correct projected delivery date. / 2025-12-02 12:01 - User: Jack Garrett - Dat
- QTS-1004520: allucent_notes_20251230_164549: Jack Garrett on 2025-10-21 08:10: correct start date / Jack Garrett on 2025-10-21 08:10: correct projected delivery date. / Jack Garrett on 2025-12-02 12:01: Case work pushed back and being stored off site. / allucent_notes_20251021_145627: Jack Garrett on 2025-10-21 08:10: correct start date / Jack Garrett on 2025-10-21 08:10: correct projected delivery date. / allucent_notes_20251027_224008: Jack Garrett on 2025-10-21 08:10: correct start date / Jack Garrett on 2025-10-21 08:10: correct projected delivery date. / allucent_notes_20251028_163138: Jack Garrett on 2025-10-21 08:10: correct start date / Jack Garrett on 2025-10-21 08:10: correct projected delivery date. / allucent_notes_20251104_160200: Jack Garrett on 2025-10-21 08:10: correct start date / Jack Garrett on 2025-10-21 08:10: correct projected delivery date. / allucent_notes_20251111_182405: Jack Garrett on 2025-10-21 08:10: correct start date / Jack Garrett on 2025-10-21 08:10: correct projected delivery date. / allucent_notes_20251118_192630: Jack Garrett on 2025-10-21 08:10: correct start date / Jack Garrett on 2025-10-21 08:10: correct projected delivery date. / allucent_notes_20251202_153722: Jack Garrett on 2025-10-21 08:10: correct start date / Jack Garrett on 2025-10-21 08:10: correct projected delivery date. / Jack Garrett on 2025-12-02 12:01: Case work pushed back and being stored off site. / allucent_notes_20251209_203830: Jack Garrett on 2025-10-21 08:10: correct start date / Jack Garrett on 2025-10-21 08:10: correct projected delivery date. / Jack Garrett on 2025-12-02 12:01: Case work pushed back and being stored off site. / allucent_notes_20251216_165335: Jack Garrett on 2025-10-21 08:10: correct start date / Jack Garrett on 2025-10-21 08:10: correct projected delivery date. / Jack Garrett on 2025-12-02 12:01: Case work pushed back and being stored off site. / allucent_notes: 2025-10-21 08:10 - User: Jack Garrett - Date Added: 2025-10-21 08:10 - Note: correct start date / 2025-10-21 08:10 - User: Jack Garrett - Date Added: 2025-10-21 08:10 - Note: correct projected delivery date. / 2025-12-02 12:01 - User: Jack Garrett - Dat
- QTS-25371: Scheduler's Notes: 07/31/2025 / Per Ali via John Capriotti RTU delivery has been delayed until / September / allucent_notes: John Capriotti on 2025-09-02 10:09: Confirmed with QTS that all RTUs (FOH/BOH) as well as all DOAS units will not be available until 9/30. QTS estimated delivery date from the vendor is 9/30. / allucent_notes_20251014_152335: John Capriotti on 2025-09-02 10:09: Confirmed with QTS that all RTUs (FOH/BOH) as well as all DOAS units will not be available until 9/30. QTS estimated delivery date from the vendor is 9/30. / John Capriotti on 2025-09-30 11:09: Pushing until end of next week 10/10 until update is received from QTS/Vendor. / NOTE: / - Follow-up mail was sent by QTS/Ali Bodur to vendor on 9/25 asking for an update on ETA and estimated delivery date for site. Pending a response as of today 9/30. / - J.Capriotti/Layton sent follow-up email today 9/30 to both QTS/vendor to see if we can get a response/update. / John Capriotti on 2025-10-07 12:10: RTUs were delivered to the yard with DOAS units on 10/2/2025, Working on coordinating date to set. Pushing to get these set next week 10/16, so adjusting ROJ. / allucent_notes_20251021_145627: John Capriotti on 2025-09-02 10:09: Confirmed with QTS that all RTUs (FOH/BOH) as well as all DOAS units will not be available until 9/30. QTS estimated delivery date from the vendor is 9/30. / John Capriotti on 2025-09-30 11:09: Pushing until end of next week 10/10 until update is received from QTS/Vendor. / NOTE: / - Follow-up mail was sent by QTS/Ali Bodur to vendor on 9/25 asking for an update on ETA and estimated delivery date for site. Pending a response as of today 9/30. / - J.Capriotti/Layton sent follow-up email today 9/30 to both QTS/vendor to see if we can get a response/update. / John Capriotti on 2025-10-07 12:10: RTUs were delivered to the yard with DOAS units on 10/2/2025, Working on coordinating date to set. Pushing to get these set next week 10/16, so adjusting ROJ. / John Capriotti on 2025-10-21 13:10: Plan is to set these on 10/27, coordinated and scheduled with QTS QAE Yard and Belaire. / allucent_notes_20251027_224008: John Capriotti on 2025-09-02 10:09: Confirmed with QTS that all RTUs (FOH/BOH) as well as all DOAS units will not be available until 9/30. QTS estimated delivery date from the vendor is 9/30. / John Capriotti on 2025-09-30 11:09: Pushing until end of next week 10/10 until update is received from QTS/Vendor. / NOTE: / - Follow-up mail was sent by QTS/Ali Bodur to vendor on 9/25 asking for an update on ETA and estimated delivery date for site. Pending a response as of today 9/30. / - J.Capriotti/Layton sent follow-up email today 9/30 to both QTS/vendor to see if we can get a response/update. / John Capriotti on 2025-10-07 12:10: RTUs were delivered to the yard with DOAS units on 10/2/2025, Working on coordinating date to set. Pushing to get these set next week 10/16, so adjusting ROJ. / John Capriotti on 2025-10-21 13:10: Plan is to set these on 10/27, coordinated and scheduled with QTS QAE Yard and Belaire. / Jason Johnston on 2025-10-27 22:10: No update from John Capriotti / allucent_notes_20251028_163138: John Capriotti on 2025-09-02 10:09: Confirmed with QTS that all RTUs (FOH/BOH) as well as all DOAS units will not be available until 9/30. QTS estimated delivery date from the vendor is 9/30. / John Capriotti on 2025-09-30 11:09: Pushing until end of next week 10/10 until update is received from QTS/Vendor. / NOTE: / - Follow-up mail was sent by QTS/Ali Bodur to vendor on 9/25 asking for an update on ETA and estimated delivery date for site. Pending a response as of today 9/30. / - J.Capriotti/Layton sent follow-up email today 9/30 to both QTS/vendor to see if we can get a response/update. / John Capriotti on 2025-10-07 12:10: RTUs were delivered to the yard with DOAS units on 10/2/2025, Working on coordinating date to set. Pushing to get these set next week 10/16, so adjusting ROJ. / John Capriotti on 2025-10-21 13:10: Plan is to set these on 10/27, coordinated and scheduled with QTS QAE Yard and Belaire. / Jason Johnston on 2025-10-27 22:10: No update from John Capriotti / allucent_notes: 2025-09-02 10:09 - User: John Capriotti - Date Added: 2025-09-02 10:09 - Note: Confirmed with QTS that all RTUs (FOH/BOH) as well as all DOAS units will not be available until 9/30. QTS estimated delivery date from the vendor is 9/30. / 2025-09-30 11:09
- QTS-36091: Scheduler's Notes: 07/31/2025 / Per Ali via John Capriotti RTU delivery has been delayed until / September / allucent_notes: John Capriotti on 2025-09-02 10:09: Confirmed with QTS that all RTUs (FOH/BOH) as well as all DOAS units will not be available until 9/30. QTS estimated delivery date from the vendor is 9/30. / allucent_notes_20251014_152335: John Capriotti on 2025-09-02 10:09: Confirmed with QTS that all RTUs (FOH/BOH) as well as all DOAS units will not be available until 9/30. QTS estimated delivery date from the vendor is 9/30. / John Capriotti on 2025-09-30 11:09: Pushing until end of next week 10/10 until update is received from QTS/Vendor. / NOTE: / - Follow-up mail was sent by QTS/Ali Bodur to vendor on 9/25 asking for an update on ETA and estimated delivery date for site. Pending a response as of today 9/30. / - J.Capriotti/Layton sent follow-up email today 9/30 to both QTS/vendor to see if we can get a response/update. / John Capriotti on 2025-10-07 12:10: RTUs were delivered to the yard with DOAS units on 10/2/2025, Working on coordinating date to set. Pushing to get these set next week 10/16, so adjusting ROJ. / allucent_notes_20251021_145627: John Capriotti on 2025-09-02 10:09: Confirmed with QTS that all RTUs (FOH/BOH) as well as all DOAS units will not be available until 9/30. QTS estimated delivery date from the vendor is 9/30. / John Capriotti on 2025-09-30 11:09: Pushing until end of next week 10/10 until update is received from QTS/Vendor. / NOTE: / - Follow-up mail was sent by QTS/Ali Bodur to vendor on 9/25 asking for an update on ETA and estimated delivery date for site. Pending a response as of today 9/30. / - J.Capriotti/Layton sent follow-up email today 9/30 to both QTS/vendor to see if we can get a response/update. / John Capriotti on 2025-10-07 12:10: RTUs were delivered to the yard with DOAS units on 10/2/2025, Working on coordinating date to set. Pushing to get these set next week 10/16, so adjusting ROJ. / John Capriotti on 2025-10-21 13:10: Plan is to set these on 10/27, coordinated and scheduled with QTS QAE Yard and Belaire. / allucent_notes_20251027_224008: John Capriotti on 2025-09-02 10:09: Confirmed with QTS that all RTUs (FOH/BOH) as well as all DOAS units will not be available until 9/30. QTS estimated delivery date from the vendor is 9/30. / John Capriotti on 2025-09-30 11:09: Pushing until end of next week 10/10 until update is received from QTS/Vendor. / NOTE: / - Follow-up mail was sent by QTS/Ali Bodur to vendor on 9/25 asking for an update on ETA and estimated delivery date for site. Pending a response as of today 9/30. / - J.Capriotti/Layton sent follow-up email today 9/30 to both QTS/vendor to see if we can get a response/update. / John Capriotti on 2025-10-07 12:10: RTUs were delivered to the yard with DOAS units on 10/2/2025, Working on coordinating date to set. Pushing to get these set next week 10/16, so adjusting ROJ. / John Capriotti on 2025-10-21 13:10: Plan is to set these on 10/27, coordinated and scheduled with QTS QAE Yard and Belaire. / allucent_notes: 2025-09-02 10:09 - User: John Capriotti - Date Added: 2025-09-02 10:09 - Note: Confirmed with QTS that all RTUs (FOH/BOH) as well as all DOAS units will not be available until 9/30. QTS estimated delivery date from the vendor is 9/30. / 2025-09-30 11:09
- QTS-23461: allucent_notes_20251230_164549: John Capriotti on 2025-10-07 12:10: RTU delivered to QAE yard on 10/2, working on confirming when we can get this set. Pushing the ROJ out until next week until I can confirm status on curbs and roof to schedule set and when we will pull this RTU from the QAE yard. / John Capriotti on 2025-10-21 14:10: Need confirmation on when we can mobilize crane and curb readiness for BOH RTU. Setting FOH on 10/27, will update once confirmed date for set with MC. / John Capriotti on 2025-11-04 15:11: Need to determine when we are setting this, it is sitting in the QAE Yard / Zack Goertz on 2025-11-11T18:18:19.990Z: This has been postponed via dave. Dave was resequencing the RTU sets so they all get set at once. Curb wrap has been done for about 2 weeks now / Jason Johnston on 2025-11-11 17:11: John owes me 11/11 update / Zack Goertz on 2025-11-17 13:11: Dave W scope. Resequenced BAM to set all RTU's at once. I had Progressive wrap the RTU curb in the mean time / Jason Johnston on 2025-12-02 11:35: Waiting for TPO Roofs / Jason Johnston on 2025-12-16 15:02: Not available yet / John Capriotti on 2025-12-30T15:15:24.235Z: Actualizing ROJ: RTU delivered to QAE yard on 10/2 - technically have it just not delivered to the site from QAE yard until I can confirm set date / allucent_notes_20251014_152335: John Capriotti on 2025-10-07 12:10: RTU delivered to QAE yard on 10/2, working on confirming when we can get this set. Pushing the ROJ out until next week until I can confirm status on curbs and roof to schedule set and when we will pull this RTU from the QAE yard. / allucent_notes_20251021_145627: John Capriotti on 2025-10-07 12:10: RTU delivered to QAE yard on 10/2, working on confirming when we can get this set. Pushing the ROJ out until next week until I can confirm status on curbs and roof to schedule set and when we will pull this RTU from the QAE yard. / John Capriotti on 2025-10-21 14:10: Need confirmation on when we can mobilize crane and curb readiness for BOH RTU. Setting FOH on 10/27, will update once confirmed date for set with MC. / allucent_notes_20251027_224008: John Capriotti on 2025-10-07 12:10: RTU delivered to QAE yard on 10/2, working on confirming when we can get this set. Pushing the ROJ out until next week until I can confirm status on curbs and roof to schedule set and when we will pull this RTU from the QAE yard. / John Capriotti on 2025-10-21 14:10: Need confirmation on when we can mobilize crane and curb readiness for BOH RTU. Setting FOH on 10/27, will update once confirmed date for set with MC. / allucent_notes_20251028_163138: John Capriotti on 2025-10-07 12:10: RTU delivered to QAE yard on 10/2, working on confirming when we can get this set. Pushing the ROJ out until next week until I can confirm status on curbs and roof to schedule set and when we will pull this RTU from the QAE yard. / John Capriotti on 2025-10-21 14:10: Need confirmation on when we can mobilize crane and curb readiness for BOH RTU. Setting FOH on 10/27, will update once confirmed date for set with MC. / allucent_notes_20251104_160200: John Capriotti on 2025-10-07 12:10: RTU delivered to QAE yard on 10/2, working on confirming when we can get this set. Pushing the ROJ out until next week until I can confirm status on curbs and roof to schedule set and when we will pull this RTU from the QAE yard. / John Capriotti on 2025-10-21 14:10: Need confirmation on when we can mobilize crane and curb readiness for BOH RTU. Setting FOH on 10/27, will update once confirmed date for set with MC. / John Capriotti on 2025-11-04 15:11: Need to determine when we are setting this, it is sitting in the QAE Yard / allucent_notes_20251111_182405: John Capriotti on 2025-10-07 12:10: RTU delivered to QAE yard on 10/2, working on confirming when we can get this set. Pushing the ROJ out until next week until I can confirm status on curbs and roof to schedule set and when we will pull this RTU from the QAE yard. / John Capriotti on 2025-10-21 14:10: Need confirmation on when we can mobilize crane and curb readiness for BOH RTU. Setting FOH on 10/27, will update once confirmed date for set with MC. / John Capriotti on 2025-11-04 15:11: Need to determine when we are setting this, it is sitting in the QAE Yard / Zack Goertz on 2025-11-11T18:18:19.990Z: This has been postponed via dave. Dave was resequencing the RTU sets so they all get set at once. Curb wrap has been done for about 2 weeks now / Jason Johnston on 2025-11-11 17:11: John owes me 11/11 update / allucent_notes_20251118_192630: John Capriotti on 2025-10-07 12:10: RTU delivered to QAE yard on 10/2, working on confirming when we can get this set. Pushing the ROJ out until next week until I can confirm status on curbs and roof to schedule set and when we will pull this RTU from the QAE yard. / John Capriotti on 2025-10-21 14:10: Need confirmation on when we can mobilize crane and curb readiness for BOH RTU. Setting FOH on 10/27, will update once confirmed date for set with MC. / John Capriotti on 2025-11-04 15:11: Need to determine when we are setting this, it is sitting in the QAE Yard / Zack Goertz on 2025-11-11T18:18:19.990Z: This has been postponed via dave. Dave was resequencing the RTU sets so they all get set at once. Curb wrap has been done for about 2 weeks now / Jason Johnston on 2025-11-11 17:11: John owes me 11/11 update / Zack Goertz on 2025-11-17 13:11: Dave W scope. Resequenced BAM to set all RTU's at once. I had Progressive wrap the RTU curb in the mean time / allucent_notes_20251202_153722: John Capriotti on 2025-10-07 12:10: RTU delivered to QAE yard on 10/2, working on confirming when we can get this set. Pushing the ROJ out until next week until I can confirm status on curbs and roof to schedule set and when we will pull this RTU from the QAE yard. / John Capriotti on 2025-10-21 14:10: Need confirmation on when we can mobilize crane and curb readiness for BOH RTU. Setting FOH on 10/27, will update once confirmed date for set with MC. / John Capriotti on 2025-11-04 15:11: Need to determine when we are setting this, it is sitting in the QAE Yard / Zack Goertz on 2025-11-11T18:18:19.990Z: This has been postponed via dave. Dave was resequencing the RTU sets so they all get set at once. Curb wrap has been done for about 2 weeks now / Jason Johnston on 2025-11-11 17:11: John owes me 11/11 update / Zack Goertz on 2025-11-17 13:11: Dave W scope. Resequenced BAM to set all RTU's at once. I had Progressive wrap the RTU curb in the mean time / Jason Johnston on 2025-12-02 11:35: Waiting for TPO Roofs / allucent_notes_20251209_203830: John Capriotti on 2025-10-07 12:10: RTU delivered to QAE yard on 10/2, working on confirming when we can get this set. Pushing the ROJ out until next week until I can confirm status on curbs and roof to schedule set and when we will pull this RTU from the QAE yard. / John Capriotti on 2025-10-21 14:10: Need confirmation on when we can mobilize crane and curb readiness for BOH RTU. Setting FOH on 10/27, will update once confirmed date for set with MC. / John Capriotti on 2025-11-04 15:11: Need to determine when we are setting this, it is sitting in the QAE Yard / Zack Goertz on 2025-11-11T18:18:19.990Z: This has been postponed via dave. Dave was resequencing the RTU sets so they all get set at once. Curb wrap has been done for about 2 weeks now / Jason Johnston on 2025-11-11 17:11: John owes me 11/11 update / Zack Goertz on 2025-11-17 13:11: Dave W scope. Resequenced BAM to set all RTU's at once. I had Progressive wrap the RTU curb in the mean time / Jason Johnston on 2025-12-02 11:35: Waiting for TPO Roofs / allucent_notes_20251216_165335: John Capriotti on 2025-10-07 12:10: RTU delivered to QAE yard on 10/2, working on confirming when we can get this set. Pushing the ROJ out until next week until I can confirm status on curbs and roof to schedule set and when we will pull this RTU from the QAE yard. / John Capriotti on 2025-10-21 14:10: Need confirmation on when we can mobilize crane and curb readiness for BOH RTU. Setting FOH on 10/27, will update once confirmed date for set with MC. / John Capriotti on 2025-11-04 15:11: Need to determine when we are setting this, it is sitting in the QAE Yard / Zack Goertz on 2025-11-11T18:18:19.990Z: This has been postponed via dave. Dave was resequencing the RTU sets so they all get set at once. Curb wrap has been done for about 2 weeks now / Jason Johnston on 2025-11-11 17:11: John owes me 11/11 update / Zack Goertz on 2025-11-17 13:11: Dave W scope. Resequenced BAM to set all RTU's at once. I had Progressive wrap the RTU curb in the mean time / Jason Johnston on 2025-12-02 11:35: Waiting for TPO Roofs / Jason Johnston on 2025-12-16 15:02: Not available yet / allucent_notes: 2025-10-07 12:10 - User: John Capriotti - Date Added: 2025-10-07 12:10 - Note: RTU delivered to QAE yard on 10/2, working on confirming when we can get this set. Pushing the ROJ out until next week until I can confirm status on curbs and roof to schedule
- QTS-27181: allucent_notes_20251104_160200: John Capriotti on 2025-11-04 14:11: Delivering to REI warehouse on 11/7 / allucent_notes_20251111_182405: John Capriotti on 2025-11-04 14:11: Delivering to REI warehouse on 11/7 / Jason Johnston on 2025-11-11 17:11: John owes me 11/11 update / allucent_notes_20251118_192630: John Capriotti on 2025-11-04 14:11: Delivering to REI warehouse on 11/7 / Jason Johnston on 2025-11-11 17:11: John owes me 11/11 update / allucent_notes: 2025-11-04 14:11 - User: John Capriotti - Date Added: 2025-11-04 14:11 - Note: Delivering to REI warehouse on 11/7 / 2025-11-11 17:11 - User: Jason Johnston - Date Added: 2025-11-11 17:11 - Note: John owes me 11/11 update
- QTS-36131: allucent_notes_20251014_152335: John Capriotti on 2025-09-30 11:09: Pushing ROJ date/date to received for BOH Gen to 10/17, pending status and updates to confirm set dates. Currently BOH Gen pad not set to be complete until roughly 10/15 per latest update from field. / John Capriotti on 2025-10-07 13:10: Editing Note: BOH GEN and XFMR pad to be fully poured and complete 10/15, working on scheduling set, possibly following week. Working on confirming if we will set these ahead of time or set when all zone 3 GENs will be set to avoid remobilizing crane. / allucent_notes_20251021_145627: John Capriotti on 2025-09-30 11:09: Pushing ROJ date/date to received for BOH Gen to 10/17, pending status and updates to confirm set dates. Currently BOH Gen pad not set to be complete until roughly 10/15 per latest update from field. / John Capriotti on 2025-10-07 13:10: Editing Note: BOH GEN and XFMR pad to be fully poured and complete 10/15, working on scheduling set, possibly following week. Working on confirming if we will set these ahead of time or set when all zone 3 GENs will be set to avoid remobilizing crane. / John Capriotti on 2025-10-21 13:10: Pending confirmation on pad readiness before setting. / allucent_notes_20251027_224008: John Capriotti on 2025-09-30 11:09: Pushing ROJ date/date to received for BOH Gen to 10/17, pending status and updates to confirm set dates. Currently BOH Gen pad not set to be complete until roughly 10/15 per latest update from field. / John Capriotti on 2025-10-07 13:10: Editing Note: BOH GEN and XFMR pad to be fully poured and complete 10/15, working on scheduling set, possibly following week. Working on confirming if we will set these ahead of time or set when all zone 3 GENs will be set to avoid remobilizing crane. / John Capriotti on 2025-10-21 13:10: Pending confirmation on pad readiness before setting. / John Capriotti on 2025-10-27 18:10: Currently setting PODS, will follow with gens starting 11/10. / allucent_notes_20251028_163138: John Capriotti on 2025-09-30 11:09: Pushing ROJ date/date to received for BOH Gen to 10/17, pending status and updates to confirm set dates. Currently BOH Gen pad not set to be complete until roughly 10/15 per latest update from field. / John Capriotti on 2025-10-07 13:10: Editing Note: BOH GEN and XFMR pad to be fully poured and complete 10/15, working on scheduling set, possibly following week. Working on confirming if we will set these ahead of time or set when all zone 3 GENs will be set to avoid remobilizing crane. / John Capriotti on 2025-10-21 13:10: Pending confirmation on pad readiness before setting. / John Capriotti on 2025-10-27 18:10: Currently setting PODS, will follow with gens starting 11/10. / allucent_notes_20251104_160200: John Capriotti on 2025-09-30 11:09: Pushing ROJ date/date to received for BOH Gen to 10/17, pending status and updates to confirm set dates. Currently BOH Gen pad not set to be complete until roughly 10/15 per latest update from field. / John Capriotti on 2025-10-07 13:10: Editing Note: BOH GEN and XFMR pad to be fully poured and complete 10/15, working on scheduling set, possibly following week. Working on confirming if we will set these ahead of time or set when all zone 3 GENs will be set to avoid remobilizing crane. / John Capriotti on 2025-10-21 13:10: Pending confirmation on pad readiness before setting. / John Capriotti on 2025-10-27 18:10: Currently setting PODS, will follow with gens starting 11/10. / allucent_notes_20251111_182405: John Capriotti on 2025-09-30 11:09: Pushing ROJ date/date to received for BOH Gen to 10/17, pending status and updates to confirm set dates. Currently BOH Gen pad not set to be complete until roughly 10/15 per latest update from field. / John Capriotti on 2025-10-07 13:10: Editing Note: BOH GEN and XFMR pad to be fully poured and complete 10/15, working on scheduling set, possibly following week. Working on confirming if we will set these ahead of time or set when all zone 3 GENs will be set to avoid remobilizing crane. / John Capriotti on 2025-10-21 13:10: Pending confirmation on pad readiness before setting. / John Capriotti on 2025-10-27 18:10: Currently setting PODS, will follow with gens starting 11/10. / John Capriotti on 2025-11-11 12:11: Plan is to receive 11/24 and set the GEN. SCR will be set seperately, need to confirm the specific date. / allucent_notes_20251118_192630: John Capriotti on 2025-09-30 11:09: Pushing ROJ date/date to received for BOH Gen to 10/17, pending status and updates to confirm set dates. Currently BOH Gen pad not set to be complete until roughly 10/15 per latest update from field. / John Capriotti on 2025-10-07 13:10: Editing Note: BOH GEN and XFMR pad to be fully poured and complete 10/15, working on scheduling set, possibly following week. Working on confirming if we will set these ahead of time or set when all zone 3 GENs will be set to avoid remobilizing crane. / John Capriotti on 2025-10-21 13:10: Pending confirmation on pad readiness before setting. / John Capriotti on 2025-10-27 18:10: Currently setting PODS, will follow with gens starting 11/10. / John Capriotti on 2025-11-11 12:11: Plan is to receive 11/24 and set the GEN. SCR will be set seperately, need to confirm the specific date. / allucent_notes_20251202_153722: John Capriotti on 2025-09-30 11:09: Pushing ROJ date/date to received for BOH Gen to 10/17, pending status and updates to confirm set dates. Currently BOH Gen pad not set to be complete until roughly 10/15 per latest update from field. / John Capriotti on 2025-10-07 13:10: Editing Note: BOH GEN and XFMR pad to be fully poured and complete 10/15, working on scheduling set, possibly following week. Working on confirming if we will set these ahead of time or set when all zone 3 GENs will be set to avoid remobilizing crane. / John Capriotti on 2025-10-21 13:10: Pending confirmation on pad readiness before setting. / John Capriotti on 2025-10-27 18:10: Currently setting PODS, will follow with gens starting 11/10. / John Capriotti on 2025-11-11 12:11: Plan is to receive 11/24 and set the GEN. SCR will be set seperately, need to confirm the specific date. / allucent_notes: 2025-09-30 11:09 - User: John Capriotti - Date Added: 2025-09-30 11:09 - Note: Pushing ROJ date/date to received for BOH Gen to 10/17, pending status and updates to confirm set dates. Currently BOH Gen pad not set to be complete until roughly 10/15 per la
- QTS-36121: allucent_notes_20251014_152335: John Capriotti on 2025-10-07 13:10: FOH GEN Pad and XFMR pad to be fully poured and cured, 10/10, planning to have XFMR delivered to site on 10/16 to set. / allucent_notes_20251021_145627: John Capriotti on 2025-10-07 13:10: FOH GEN Pad and XFMR pad to be fully poured and cured, 10/10, planning to have XFMR delivered to site on 10/16 to set. / John Capriotti on 2025-10-21 13:10: Received and set in place on 10/20. / allucent_notes: 2025-10-07 13:10 - User: John Capriotti - Date Added: 2025-10-07 13:10 - Note: FOH GEN Pad and XFMR pad to be fully poured and cured, 10/10, planning to have XFMR delivered to site on 10/16 to set. / 2025-10-21 13:10 - User: John Capriotti - Date Added:
- QTS-39701: allucent_notes_20251014_152335: John Capriotti on 2025-10-07 13:10: FOH GEN and XFMR pad to be fully poured and cured 10/10, working on planning delivery and set now. Will update with correct date after pads confirmed complete. / allucent_notes_20251021_145627: John Capriotti on 2025-10-07 13:10: FOH GEN and XFMR pad to be fully poured and cured 10/10, working on planning delivery and set now. Will update with correct date after pads confirmed complete. / John Capriotti on 2025-10-21 14:10: Pending confirmation on pad readiness before setting. / allucent_notes_20251027_224008: John Capriotti on 2025-10-07 13:10: FOH GEN and XFMR pad to be fully poured and cured 10/10, working on planning delivery and set now. Will update with correct date after pads confirmed complete. / John Capriotti on 2025-10-21 14:10: Pending confirmation on pad readiness before setting. / John Capriotti on 2025-10-27 18:10: Currently setting PODS, will follow with gens starting 11/10. / allucent_notes_20251028_163138: John Capriotti on 2025-10-07 13:10: FOH GEN and XFMR pad to be fully poured and cured 10/10, working on planning delivery and set now. Will update with correct date after pads confirmed complete. / John Capriotti on 2025-10-21 14:10: Pending confirmation on pad readiness before setting. / John Capriotti on 2025-10-27 18:10: Currently setting PODS, will follow with gens starting 11/10. / allucent_notes_20251104_160200: John Capriotti on 2025-10-07 13:10: FOH GEN and XFMR pad to be fully poured and cured 10/10, working on planning delivery and set now. Will update with correct date after pads confirmed complete. / John Capriotti on 2025-10-21 14:10: Pending confirmation on pad readiness before setting. / John Capriotti on 2025-10-27 18:10: Currently setting PODS, will follow with gens starting 11/10. / allucent_notes_20251111_182405: John Capriotti on 2025-10-07 13:10: FOH GEN and XFMR pad to be fully poured and cured 10/10, working on planning delivery and set now. Will update with correct date after pads confirmed complete. / John Capriotti on 2025-10-21 14:10: Pending confirmation on pad readiness before setting. / John Capriotti on 2025-10-27 18:10: Currently setting PODS, will follow with gens starting 11/10. / allucent_notes_20251118_192630: John Capriotti on 2025-10-07 13:10: FOH GEN and XFMR pad to be fully poured and cured 10/10, working on planning delivery and set now. Will update with correct date after pads confirmed complete. / John Capriotti on 2025-10-21 14:10: Pending confirmation on pad readiness before setting. / John Capriotti on 2025-10-27 18:10: Currently setting PODS, will follow with gens starting 11/10. / allucent_notes: 2025-10-07 13:10 - User: John Capriotti - Date Added: 2025-10-07 13:10 - Note: FOH GEN and XFMR pad to be fully poured and cured 10/10, working on planning delivery and set now. Will update with correct date after pads confirmed complete. / 2025-10-21 14
- QTS-39711: allucent_notes_20251014_152335: John Capriotti on 2025-10-07 13:10: FOH GEN Pad and XFMR pad to be fully poured and cured, 10/10, confirming set dates and delivery dates, will update once confirmed. / allucent_notes_20251021_145627: John Capriotti on 2025-10-07 13:10: FOH GEN Pad and XFMR pad to be fully poured and cured, 10/10, confirming set dates and delivery dates, will update once confirmed. / John Capriotti on 2025-10-21 14:10: Pending confirmation on pad readiness before setting. / allucent_notes_20251027_224008: John Capriotti on 2025-10-07 13:10: FOH GEN Pad and XFMR pad to be fully poured and cured, 10/10, confirming set dates and delivery dates, will update once confirmed. / John Capriotti on 2025-10-21 14:10: Pending confirmation on pad readiness before setting. / John Capriotti on 2025-10-27 18:10: Currently setting PODS, will follow with gens starting 11/10. / allucent_notes_20251028_163138: John Capriotti on 2025-10-07 13:10: FOH GEN Pad and XFMR pad to be fully poured and cured, 10/10, confirming set dates and delivery dates, will update once confirmed. / John Capriotti on 2025-10-21 14:10: Pending confirmation on pad readiness before setting. / John Capriotti on 2025-10-27 18:10: Currently setting PODS, will follow with gens starting 11/10. / allucent_notes_20251104_160200: John Capriotti on 2025-10-07 13:10: FOH GEN Pad and XFMR pad to be fully poured and cured, 10/10, confirming set dates and delivery dates, will update once confirmed. / John Capriotti on 2025-10-21 14:10: Pending confirmation on pad readiness before setting. / John Capriotti on 2025-10-27 18:10: Currently setting PODS, will follow with gens starting 11/10. / allucent_notes_20251111_182405: John Capriotti on 2025-10-07 13:10: FOH GEN Pad and XFMR pad to be fully poured and cured, 10/10, confirming set dates and delivery dates, will update once confirmed. / John Capriotti on 2025-10-21 14:10: Pending confirmation on pad readiness before setting. / John Capriotti on 2025-10-27 18:10: Currently setting PODS, will follow with gens starting 11/10. / allucent_notes_20251118_192630: John Capriotti on 2025-10-07 13:10: FOH GEN Pad and XFMR pad to be fully poured and cured, 10/10, confirming set dates and delivery dates, will update once confirmed. / John Capriotti on 2025-10-21 14:10: Pending confirmation on pad readiness before setting. / John Capriotti on 2025-10-27 18:10: Currently setting PODS, will follow with gens starting 11/10. / allucent_notes: 2025-10-07 13:10 - User: John Capriotti - Date Added: 2025-10-07 13:10 - Note: FOH GEN Pad and XFMR pad to be fully poured and cured, 10/10, confirming set dates and delivery dates, will update once confirmed. / 2025-10-21 14:10 - User: John Capriotti -
- QTS-39721: allucent_notes_20251014_152335: John Capriotti on 2025-10-07 13:10: FOH GEN Pad and XFMR pad to be fully poured and cured, 10/10, confirming set dates and delivery dates, will update once confirmed. / allucent_notes_20251021_145627: John Capriotti on 2025-10-07 13:10: FOH GEN Pad and XFMR pad to be fully poured and cured, 10/10, confirming set dates and delivery dates, will update once confirmed. / John Capriotti on 2025-10-21 14:10: Pending confirmation on pad readiness before setting. / allucent_notes_20251027_224008: John Capriotti on 2025-10-07 13:10: FOH GEN Pad and XFMR pad to be fully poured and cured, 10/10, confirming set dates and delivery dates, will update once confirmed. / John Capriotti on 2025-10-21 14:10: Pending confirmation on pad readiness before setting. / John Capriotti on 2025-10-27 18:10: Setting PODs, will follow with GENs starting 11/10 / allucent_notes_20251028_163138: John Capriotti on 2025-10-07 13:10: FOH GEN Pad and XFMR pad to be fully poured and cured, 10/10, confirming set dates and delivery dates, will update once confirmed. / John Capriotti on 2025-10-21 14:10: Pending confirmation on pad readiness before setting. / John Capriotti on 2025-10-27 18:10: Setting PODs, will follow with GENs starting 11/10 / allucent_notes_20251104_160200: John Capriotti on 2025-10-07 13:10: FOH GEN Pad and XFMR pad to be fully poured and cured, 10/10, confirming set dates and delivery dates, will update once confirmed. / John Capriotti on 2025-10-21 14:10: Pending confirmation on pad readiness before setting. / John Capriotti on 2025-10-27 18:10: Setting PODs, will follow with GENs starting 11/10 / allucent_notes_20251111_182405: John Capriotti on 2025-10-07 13:10: FOH GEN Pad and XFMR pad to be fully poured and cured, 10/10, confirming set dates and delivery dates, will update once confirmed. / John Capriotti on 2025-10-21 14:10: Pending confirmation on pad readiness before setting. / John Capriotti on 2025-10-27 18:10: Setting PODs, will follow with GENs starting 11/10 / allucent_notes_20251118_192630: John Capriotti on 2025-10-07 13:10: FOH GEN Pad and XFMR pad to be fully poured and cured, 10/10, confirming set dates and delivery dates, will update once confirmed. / John Capriotti on 2025-10-21 14:10: Pending confirmation on pad readiness before setting. / John Capriotti on 2025-10-27 18:10: Setting PODs, will follow with GENs starting 11/10 / allucent_notes: 2025-10-07 13:10 - User: John Capriotti - Date Added: 2025-10-07 13:10 - Note: FOH GEN Pad and XFMR pad to be fully poured and cured, 10/10, confirming set dates and delivery dates, will update once confirmed. / 2025-10-21 14:10 - User: John Capriotti -
- QTS-39731: allucent_notes_20251014_152335: John Capriotti on 2025-10-07 13:10: FOH GEN Pad and XFMR pad to be fully poured and cured, 10/10, confirming set dates and delivery dates, will update once confirmed. / allucent_notes_20251021_145627: John Capriotti on 2025-10-07 13:10: FOH GEN Pad and XFMR pad to be fully poured and cured, 10/10, confirming set dates and delivery dates, will update once confirmed. / John Capriotti on 2025-10-21 14:10: Pending confirmation on pad readiness before setting. / allucent_notes_20251027_224008: John Capriotti on 2025-10-07 13:10: FOH GEN Pad and XFMR pad to be fully poured and cured, 10/10, confirming set dates and delivery dates, will update once confirmed. / John Capriotti on 2025-10-21 14:10: Pending confirmation on pad readiness before setting. / John Capriotti on 2025-10-27 18:10: Setting PODs, will follow with GENs starting 11/10 / allucent_notes_20251028_163138: John Capriotti on 2025-10-07 13:10: FOH GEN Pad and XFMR pad to be fully poured and cured, 10/10, confirming set dates and delivery dates, will update once confirmed. / John Capriotti on 2025-10-21 14:10: Pending confirmation on pad readiness before setting. / John Capriotti on 2025-10-27 18:10: Setting PODs, will follow with GENs starting 11/10 / allucent_notes_20251104_160200: John Capriotti on 2025-10-07 13:10: FOH GEN Pad and XFMR pad to be fully poured and cured, 10/10, confirming set dates and delivery dates, will update once confirmed. / John Capriotti on 2025-10-21 14:10: Pending confirmation on pad readiness before setting. / John Capriotti on 2025-10-27 18:10: Setting PODs, will follow with GENs starting 11/10 / allucent_notes_20251111_182405: John Capriotti on 2025-10-07 13:10: FOH GEN Pad and XFMR pad to be fully poured and cured, 10/10, confirming set dates and delivery dates, will update once confirmed. / John Capriotti on 2025-10-21 14:10: Pending confirmation on pad readiness before setting. / John Capriotti on 2025-10-27 18:10: Setting PODs, will follow with GENs starting 11/10 / allucent_notes_20251118_192630: John Capriotti on 2025-10-07 13:10: FOH GEN Pad and XFMR pad to be fully poured and cured, 10/10, confirming set dates and delivery dates, will update once confirmed. / John Capriotti on 2025-10-21 14:10: Pending confirmation on pad readiness before setting. / John Capriotti on 2025-10-27 18:10: Setting PODs, will follow with GENs starting 11/10 / allucent_notes: 2025-10-07 13:10 - User: John Capriotti - Date Added: 2025-10-07 13:10 - Note: FOH GEN Pad and XFMR pad to be fully poured and cured, 10/10, confirming set dates and delivery dates, will update once confirmed. / 2025-10-21 14:10 - User: John Capriotti -
- QTS-27191: allucent_notes_20251028_163138: Jason Johnston on 2025-10-28 16:10: John requesting equipment brought to site. / allucent_notes_20251104_160200: Jason Johnston on 2025-10-28 16:10: John requesting equipment brought to site. / John Capriotti on 2025-11-04 14:11: Delivering to REI warehouse on 11/7 / allucent_notes_20251111_182405: Jason Johnston on 2025-10-28 16:10: John requesting equipment brought to site. / John Capriotti on 2025-11-04 14:11: Delivering to REI warehouse on 11/7 / Jason Johnston on 2025-11-11 17:11: John owes me 11/11 update / allucent_notes_20251118_192630: Jason Johnston on 2025-10-28 16:10: John requesting equipment brought to site. / John Capriotti on 2025-11-04 14:11: Delivering to REI warehouse on 11/7 / Jason Johnston on 2025-11-11 17:11: John owes me 11/11 update / allucent_notes: 2025-10-28 16:10 - User: Jason Johnston - Date Added: 2025-10-28 16:10 - Note: John requesting equipment brought to site. / 2025-11-04 14:11 - User: John Capriotti - Date Added: 2025-11-04 14:11 - Note: Delivering to REI warehouse on 11/7 / 2025-11-11 1
- QTS-36141: allucent_notes_20251028_163138: John Capriotti on 2025-10-28 15:10: Plan to receive and set BOH XFMR on 11/4, coordinated with QTS for delivery and OEG for the set. / allucent_notes_20251104_160200: John Capriotti on 2025-10-28 15:10: Plan to receive and set BOH XFMR on 11/4, coordinated with QTS for delivery and OEG for the set. / allucent_notes: 2025-10-28 15:10 - User: John Capriotti - Date Added: 2025-10-28 15:10 - Note: Plan to receive and set BOH XFMR on 11/4, coordinated with QTS for delivery and OEG for the set.
- QTS-27161: allucent_notes_20251111_182405: John Capriotti on 2025-11-11 12:11: Received all the STS on 7/29 at REIs warehouse. / John Capriotti on 2025-11-11 12:11: Received all STSs on 7/29 at REIs warehouse / allucent_notes_20251118_192630: John Capriotti on 2025-11-11 12:11: Received all the STS on 7/29 at REIs warehouse. / John Capriotti on 2025-11-11 12:11: Received all STSs on 7/29 at REIs warehouse / allucent_notes: 2025-11-11 12:11 - User: John Capriotti - Date Added: 2025-11-11 12:11 - Note: Received all the STS on 7/29 at REIs warehouse. / 2025-11-11 12:11 - User: John Capriotti - Date Added: 2025-11-11 12:11 - Note: Received all STSs on 7/29 at REIs warehouse

| ID | WBS | Activity | Duration | Start | Finish | Predecessors | Complete | Planned start | Planned finish | Precon Phase | Project Section-1 | Baseline | Layton Responsible Party | Project Section | Allucent CSI Group |
| --- | --- | --- | --- | --- | --- | --- | --- | --- | --- | --- | --- | --- | --- | --- | --- |
|  | 1 | **Data Hall 2100 (Need By Dates)** |  | 2025-07-07 | 2026-01-29 |  |  |  |  |  |  |  |  |  |  |
| QTS-34171 |  | DH 2100 / CRAH #29 (Electrical Gallery) | 20d | 2025-09-15 A | 2025-12-01 A | QTS-1371 | 100% | 2025-09-15 | 2025-10-10 | OFCI Procurement | Preconstruction | GMP | Chris Perales | Preconstruction | 01ADMIN |
| QTS-34181 |  | DH 2100 / CRAH #30 (Electrical Gallery) | 20d | 2025-09-15 A | 2025-12-01 A | QTS-1371 | 100% | 2025-09-15 | 2025-10-10 | OFCI Procurement | Preconstruction | GMP | Chris Perales | Preconstruction | 01ADMIN |
| QTS-34191 |  | DH 2100 / CRAH #31 (Electrical Gallery) | 20d | 2025-09-15 A | 2025-12-01 A | QTS-1371 | 100% | 2025-09-15 | 2025-10-10 | OFCI Procurement | Preconstruction | GMP | Chris Perales | Preconstruction | 01ADMIN |
| QTS-34201 |  | DH 2100 / CRAH #32 (Electrical Gallery) | 20d | 2025-09-15 A | 2025-12-01 A | QTS-1371 | 100% | 2025-09-15 | 2025-10-10 | OFCI Procurement | Preconstruction | GMP | Chris Perales | Preconstruction | 01ADMIN |
| QTS-33891 |  | DH 2100 / CRAH #01 | 20d | 2025-09-23 A | 2025-12-01 A | QTS-1371 | 100% | 2025-09-23 | 2025-10-20 | OFCI Procurement | Preconstruction | GMP | Chris Perales | Preconstruction | 01ADMIN |
| QTS-33901 |  | DH 2100 / CRAH #02 | 20d | 2025-09-23 A | 2025-12-01 A | QTS-1371 | 100% | 2025-09-23 | 2025-10-20 | OFCI Procurement | Preconstruction | GMP | Chris Perales | Preconstruction | 01ADMIN |
| QTS-33911 |  | DH 2100 / CRAH #03 | 20d | 2025-09-23 A | 2025-12-01 A | QTS-1371 | 100% | 2025-09-23 | 2025-10-20 | OFCI Procurement | Preconstruction | GMP | Chris Perales | Preconstruction | 01ADMIN |
| QTS-33921 |  | DH 2100 / CRAH #04 | 20d | 2025-09-23 A | 2025-12-01 A | QTS-1371 | 100% | 2025-09-23 | 2025-10-20 | OFCI Procurement | Preconstruction | GMP | Chris Perales | Preconstruction | 01ADMIN |
| QTS-33931 |  | DH 2100 / CRAH #05 | 20d | 2025-09-23 A | 2025-12-02 A | QTS-1371 | 100% | 2025-09-23 | 2025-10-20 | OFCI Procurement | Preconstruction | GMP | Chris Perales | Preconstruction | 01ADMIN |
| QTS-33941 |  | DH 2100 / CRAH #06 | 20d | 2025-09-23 A | 2025-12-02 A | QTS-1371 | 100% | 2025-09-23 | 2025-10-20 | OFCI Procurement | Preconstruction | GMP | Chris Perales | Preconstruction | 01ADMIN |
| QTS-33951 |  | DH 2100 / CRAH #07 | 20d | 2025-09-23 A | 2025-12-02 A | QTS-1371 | 100% | 2025-09-23 | 2025-10-20 | OFCI Procurement | Preconstruction | GMP | Chris Perales | Preconstruction | 01ADMIN |
| QTS-33961 |  | DH 2100 / CRAH #08 | 20d | 2025-09-23 A | 2025-12-02 A | QTS-1371 | 100% | 2025-09-23 | 2025-10-20 | OFCI Procurement | Preconstruction | GMP | Chris Perales | Preconstruction | 01ADMIN |
| QTS-33971 |  | DH 2100 / CRAH #09 | 20d | 2025-09-23 A | 2025-12-02 A | QTS-1371 | 100% | 2025-09-23 | 2025-10-20 | OFCI Procurement | Preconstruction | GMP | Chris Perales | Preconstruction | 01ADMIN |
| QTS-33981 |  | DH 2100 / CRAH #10 | 20d | 2025-09-23 A | 2025-12-02 A | QTS-1371 | 100% | 2025-09-23 | 2025-10-20 | OFCI Procurement | Preconstruction | GMP | Chris Perales | Preconstruction | 01ADMIN |
| QTS-33991 |  | DH 2100 / CRAH #11 | 20d | 2025-09-23 A | 2025-12-03 A | QTS-1371 | 100% | 2025-09-23 | 2025-10-20 | OFCI Procurement | Preconstruction | GMP | Chris Perales | Preconstruction | 01ADMIN |
| QTS-34001 |  | DH 2100 / CRAH #12 | 20d | 2025-09-23 A | 2025-12-03 A | QTS-1371 | 100% | 2025-09-23 | 2025-10-20 | OFCI Procurement | Preconstruction | GMP | Chris Perales | Preconstruction | 01ADMIN |
| QTS-34011 |  | DH 2100 / CRAH #13 | 20d | 2025-09-23 A | 2025-12-03 A | QTS-1371 | 100% | 2025-09-23 | 2025-10-20 | OFCI Procurement | Preconstruction | GMP | Chris Perales | Preconstruction | 01ADMIN |
| QTS-34021 |  | DH 2100 / CRAH #14 | 20d | 2025-09-23 A | 2025-12-03 A | QTS-1371 | 100% | 2025-09-23 | 2025-10-20 | OFCI Procurement | Preconstruction | GMP | Chris Perales | Preconstruction | 01ADMIN |
| QTS-22241 |  | DH 2100 / DOAS #01 | 20d | 2025-10-01 A | 2025-12-23 A | QTS-1371 | 100% | 2025-10-01 | 2025-10-28 | OFCI Procurement | Preconstruction | GMP | Chris Perales | Preconstruction | 01ADMIN |
| QTS-22251 |  | DH 2100 / DOAS #02 | 20d | 2025-10-01 A | 2025-12-23 A | QTS-1371 | 100% | 2025-10-01 | 2025-10-28 | OFCI Procurement | Preconstruction | GMP | Chris Perales | Preconstruction | 01ADMIN |
| QTS-34031 |  | DH 2100 / CRAH #15 | 20d | 2025-10-10 A | 2025-12-03 A | QTS-1371 | 100% | 2025-10-10 | 2025-11-06 | OFCI Procurement | Preconstruction | GMP | Chris Perales | Preconstruction | 01ADMIN |
| QTS-34041 |  | DH 2100 / CRAH #16 | 20d | 2025-10-10 A | 2025-12-03 A | QTS-1371 | 100% | 2025-10-10 | 2025-11-06 | OFCI Procurement | Preconstruction | GMP | Chris Perales | Preconstruction | 01ADMIN |
| QTS-34051 |  | DH 2100 / CRAH #17 | 20d | 2025-10-10 A | 2025-12-04 A | QTS-1371 | 100% | 2025-10-10 | 2025-11-06 | OFCI Procurement | Preconstruction | GMP | Chris Perales | Preconstruction | 01ADMIN |
| QTS-34061 |  | DH 2100 / CRAH #18 | 20d | 2025-10-10 A | 2025-12-04 A | QTS-1371 | 100% | 2025-10-10 | 2025-11-06 | OFCI Procurement | Preconstruction | GMP | Chris Perales | Preconstruction | 01ADMIN |
| QTS-34071 |  | DH 2100 / CRAH #19 | 20d | 2025-10-10 A | 2025-12-04 A | QTS-1371 | 100% | 2025-10-10 | 2025-11-06 | OFCI Procurement | Preconstruction | GMP | Chris Perales | Preconstruction | 01ADMIN |
| QTS-34081 |  | DH 2100 / CRAH #20 | 20d | 2025-10-10 A | 2025-12-04 A | QTS-1371 | 100% | 2025-10-10 | 2025-11-06 | OFCI Procurement | Preconstruction | GMP | Chris Perales | Preconstruction | 01ADMIN |
| QTS-34091 |  | DH 2100 / CRAH #21 | 20d | 2025-10-10 A | 2025-12-04 A | QTS-1371 | 100% | 2025-10-10 | 2025-11-06 | OFCI Procurement | Preconstruction | GMP | Chris Perales | Preconstruction | 01ADMIN |
| QTS-34101 |  | DH 2100 / CRAH #22 | 20d | 2025-10-10 A | 2025-12-04 A | QTS-1371 | 100% | 2025-10-10 | 2025-11-06 | OFCI Procurement | Preconstruction | GMP | Chris Perales | Preconstruction | 01ADMIN |
| QTS-34111 |  | DH 2100 / CRAH #23 | 20d | 2025-10-10 A | 2025-12-05 A | QTS-1371 | 100% | 2025-10-10 | 2025-11-06 | OFCI Procurement | Preconstruction | GMP | Chris Perales | Preconstruction | 01ADMIN |
| QTS-34121 |  | DH 2100 / CRAH #24 | 20d | 2025-10-10 A | 2025-12-05 A | QTS-1371 | 100% | 2025-10-10 | 2025-11-06 | OFCI Procurement | Preconstruction | GMP | Chris Perales | Preconstruction | 01ADMIN |
| QTS-34131 |  | DH 2100 / CRAH #25 | 20d | 2025-10-10 A | 2025-12-05 A | QTS-1371 | 100% | 2025-10-10 | 2025-11-06 | OFCI Procurement | Preconstruction | GMP | Chris Perales | Preconstruction | 01ADMIN |
| QTS-34141 |  | DH 2100 / CRAH #26 | 20d | 2025-10-10 A | 2025-12-05 A | QTS-1371 | 100% | 2025-10-10 | 2025-11-06 | OFCI Procurement | Preconstruction | GMP | Chris Perales | Preconstruction | 01ADMIN |
| QTS-34151 |  | DH 2100 / CRAH #27 | 20d | 2025-10-10 A | 2025-12-05 A | QTS-1371 | 100% | 2025-10-10 | 2025-11-06 | OFCI Procurement | Preconstruction | GMP | Chris Perales | Preconstruction | 01ADMIN |
| QTS-34161 |  | DH 2100 / CRAH #28 | 20d | 2025-10-10 A | 2025-12-05 A | QTS-1371 | 100% | 2025-10-10 | 2025-11-06 | OFCI Procurement | Preconstruction | GMP | Chris Perales | Preconstruction | 01ADMIN |

Notes:
- QTS-34171: allucent_notes_20251014_152335: John Capriotti on 2025-10-14 12:10: From mu understanding the building is not ready to receive these CRAHS and/or store them inside. Need to confirm the area readiness and the dry-in over areas where these CRAHs will be stored. Going to reach out to QTS on coordinating these for the week of 10/27 from discussions with Layton Supers on estimated timing to receive. / allucent_notes_20251021_145627: John Capriotti on 2025-10-14 12:10: From mu understanding the building is not ready to receive these CRAHS and/or store them inside. Need to confirm the area readiness and the dry-in over areas where these CRAHs will be stored. Going to reach out to QTS on coordinating these for the week of 10/27 from discussions with Layton Supers on estimated timing to receive. / allucent_notes_20251027_224008: John Capriotti on 2025-10-14 12:10: From mu understanding the building is not ready to receive these CRAHS and/or store them inside. Need to confirm the area readiness and the dry-in over areas where these CRAHs will be stored. Going to reach out to QTS on coordinating these for the week of 10/27 from discussions with Layton Supers on estimated timing to receive. / John Capriotti on 2025-10-27 18:10: Starting to coordinate deliveries, pushing for the next two weeks. / allucent_notes_20251028_163138: John Capriotti on 2025-10-14 12:10: From mu understanding the building is not ready to receive these CRAHS and/or store them inside. Need to confirm the area readiness and the dry-in over areas where these CRAHs will be stored. Going to reach out to QTS on coordinating these for the week of 10/27 from discussions with Layton Supers on estimated timing to receive. / John Capriotti on 2025-10-27 18:10: Starting to coordinate deliveries, pushing for the next two weeks. / allucent_notes_20251104_160200: John Capriotti on 2025-10-14 12:10: From mu understanding the building is not ready to receive these CRAHS and/or store them inside. Need to confirm the area readiness and the dry-in over areas where these CRAHs will be stored. Going to reach out to QTS on coordinating these for the week of 10/27 from discussions with Layton Supers on estimated timing to receive. / John Capriotti on 2025-10-27 18:10: Starting to coordinate deliveries, pushing for the next two weeks. / allucent_notes_20251111_182405: John Capriotti on 2025-10-14 12:10: From mu understanding the building is not ready to receive these CRAHS and/or store them inside. Need to confirm the area readiness and the dry-in over areas where these CRAHs will be stored. Going to reach out to QTS on coordinating these for the week of 10/27 from discussions with Layton Supers on estimated timing to receive. / John Capriotti on 2025-10-27 18:10: Starting to coordinate deliveries, pushing for the next two weeks. / Jason Johnston on 2025-11-11 17:11: John owes me 11/11 update / allucent_notes_20251118_192630: John Capriotti on 2025-10-14 12:10: From mu understanding the building is not ready to receive these CRAHS and/or store them inside. Need to confirm the area readiness and the dry-in over areas where these CRAHs will be stored. Going to reach out to QTS on coordinating these for the week of 10/27 from discussions with Layton Supers on estimated timing to receive. / John Capriotti on 2025-10-27 18:10: Starting to coordinate deliveries, pushing for the next two weeks. / Jason Johnston on 2025-11-11 17:11: John owes me 11/11 update / allucent_notes_20251202_153722: John Capriotti on 2025-10-14 12:10: From mu understanding the building is not ready to receive these CRAHS and/or store them inside. Need to confirm the area readiness and the dry-in over areas where these CRAHs will be stored. Going to reach out to QTS on coordinating these for the week of 10/27 from discussions with Layton Supers on estimated timing to receive. / John Capriotti on 2025-10-27 18:10: Starting to coordinate deliveries, pushing for the next two weeks. / Jason Johnston on 2025-11-11 17:11: John owes me 11/11 update / allucent_notes_20251209_203830: John Capriotti on 2025-10-14 12:10: From mu understanding the building is not ready to receive these CRAHS and/or store them inside. Need to confirm the area readiness and the dry-in over areas where these CRAHs will be stored. Going to reach out to QTS on coordinating these for the week of 10/27 from discussions with Layton Supers on estimated timing to receive. / John Capriotti on 2025-10-27 18:10: Starting to coordinate deliveries, pushing for the next two weeks. / Jason Johnston on 2025-11-11 17:11: John owes me 11/11 update / John Capriotti on 2025-12-09 12:29: Delivery scheduled for 12/15 / allucent_notes_20251216_165335: John Capriotti on 2025-10-14 12:10: From mu understanding the building is not ready to receive these CRAHS and/or store them inside. Need to confirm the area readiness and the dry-in over areas where these CRAHs will be stored. Going to reach out to QTS on coordinating these for the week of 10/27 from discussions with Layton Supers on estimated timing to receive. / John Capriotti on 2025-10-27 18:10: Starting to coordinate deliveries, pushing for the next two weeks. / Jason Johnston on 2025-11-11 17:11: John owes me 11/11 update / John Capriotti on 2025-12-09 12:29: Delivery scheduled for 12/15 / allucent_notes: 2025-10-14 12:10 - User: John Capriotti - Date Added: 2025-10-14 12:10 - Note: From mu understanding the building is not ready to receive these CRAHS and/or store them inside. Need to confirm the area readiness and the dry-in over areas where these CRAHs
- QTS-34181: allucent_notes_20251014_152335: John Capriotti on 2025-10-14 12:10: From mu understanding the building is not ready to receive these CRAHS and/or store them inside. Need to confirm the area readiness and the dry-in over areas where these CRAHs will be stored. Going to reach out to QTS on coordinating these for the week of 10/27 from discussions with Layton Supers on estimated timing to receive. / allucent_notes_20251021_145627: John Capriotti on 2025-10-14 12:10: From mu understanding the building is not ready to receive these CRAHS and/or store them inside. Need to confirm the area readiness and the dry-in over areas where these CRAHs will be stored. Going to reach out to QTS on coordinating these for the week of 10/27 from discussions with Layton Supers on estimated timing to receive. / allucent_notes_20251027_224008: John Capriotti on 2025-10-14 12:10: From mu understanding the building is not ready to receive these CRAHS and/or store them inside. Need to confirm the area readiness and the dry-in over areas where these CRAHs will be stored. Going to reach out to QTS on coordinating these for the week of 10/27 from discussions with Layton Supers on estimated timing to receive. / John Capriotti on 2025-10-27 18:10: Starting to coordinate deliveries, pushing for the next two weeks. / allucent_notes_20251028_163138: John Capriotti on 2025-10-14 12:10: From mu understanding the building is not ready to receive these CRAHS and/or store them inside. Need to confirm the area readiness and the dry-in over areas where these CRAHs will be stored. Going to reach out to QTS on coordinating these for the week of 10/27 from discussions with Layton Supers on estimated timing to receive. / John Capriotti on 2025-10-27 18:10: Starting to coordinate deliveries, pushing for the next two weeks. / allucent_notes_20251104_160200: John Capriotti on 2025-10-14 12:10: From mu understanding the building is not ready to receive these CRAHS and/or store them inside. Need to confirm the area readiness and the dry-in over areas where these CRAHs will be stored. Going to reach out to QTS on coordinating these for the week of 10/27 from discussions with Layton Supers on estimated timing to receive. / John Capriotti on 2025-10-27 18:10: Starting to coordinate deliveries, pushing for the next two weeks. / allucent_notes_20251111_182405: John Capriotti on 2025-10-14 12:10: From mu understanding the building is not ready to receive these CRAHS and/or store them inside. Need to confirm the area readiness and the dry-in over areas where these CRAHs will be stored. Going to reach out to QTS on coordinating these for the week of 10/27 from discussions with Layton Supers on estimated timing to receive. / John Capriotti on 2025-10-27 18:10: Starting to coordinate deliveries, pushing for the next two weeks. / Jason Johnston on 2025-11-11 17:11: John owes me 11/11 update / allucent_notes_20251118_192630: John Capriotti on 2025-10-14 12:10: From mu understanding the building is not ready to receive these CRAHS and/or store them inside. Need to confirm the area readiness and the dry-in over areas where these CRAHs will be stored. Going to reach out to QTS on coordinating these for the week of 10/27 from discussions with Layton Supers on estimated timing to receive. / John Capriotti on 2025-10-27 18:10: Starting to coordinate deliveries, pushing for the next two weeks. / Jason Johnston on 2025-11-11 17:11: John owes me 11/11 update / allucent_notes_20251202_153722: John Capriotti on 2025-10-14 12:10: From mu understanding the building is not ready to receive these CRAHS and/or store them inside. Need to confirm the area readiness and the dry-in over areas where these CRAHs will be stored. Going to reach out to QTS on coordinating these for the week of 10/27 from discussions with Layton Supers on estimated timing to receive. / John Capriotti on 2025-10-27 18:10: Starting to coordinate deliveries, pushing for the next two weeks. / Jason Johnston on 2025-11-11 17:11: John owes me 11/11 update / allucent_notes_20251209_203830: John Capriotti on 2025-10-14 12:10: From mu understanding the building is not ready to receive these CRAHS and/or store them inside. Need to confirm the area readiness and the dry-in over areas where these CRAHs will be stored. Going to reach out to QTS on coordinating these for the week of 10/27 from discussions with Layton Supers on estimated timing to receive. / John Capriotti on 2025-10-27 18:10: Starting to coordinate deliveries, pushing for the next two weeks. / Jason Johnston on 2025-11-11 17:11: John owes me 11/11 update / John Capriotti on 2025-12-09 12:29: Delivery scheduled for 12/15 / allucent_notes_20251216_165335: John Capriotti on 2025-10-14 12:10: From mu understanding the building is not ready to receive these CRAHS and/or store them inside. Need to confirm the area readiness and the dry-in over areas where these CRAHs will be stored. Going to reach out to QTS on coordinating these for the week of 10/27 from discussions with Layton Supers on estimated timing to receive. / John Capriotti on 2025-10-27 18:10: Starting to coordinate deliveries, pushing for the next two weeks. / Jason Johnston on 2025-11-11 17:11: John owes me 11/11 update / John Capriotti on 2025-12-09 12:29: Delivery scheduled for 12/15 / allucent_notes: 2025-10-14 12:10 - User: John Capriotti - Date Added: 2025-10-14 12:10 - Note: From mu understanding the building is not ready to receive these CRAHS and/or store them inside. Need to confirm the area readiness and the dry-in over areas where these CRAHs
- QTS-34191: allucent_notes_20251014_152335: John Capriotti on 2025-10-14 12:10: From mu understanding the building is not ready to receive these CRAHS and/or store them inside. Need to confirm the area readiness and the dry-in over areas where these CRAHs will be stored. Going to reach out to QTS on coordinating these for the week of 10/27 from discussions with Layton Supers on estimated timing to receive. / allucent_notes_20251021_145627: John Capriotti on 2025-10-14 12:10: From mu understanding the building is not ready to receive these CRAHS and/or store them inside. Need to confirm the area readiness and the dry-in over areas where these CRAHs will be stored. Going to reach out to QTS on coordinating these for the week of 10/27 from discussions with Layton Supers on estimated timing to receive. / allucent_notes_20251027_224008: John Capriotti on 2025-10-14 12:10: From mu understanding the building is not ready to receive these CRAHS and/or store them inside. Need to confirm the area readiness and the dry-in over areas where these CRAHs will be stored. Going to reach out to QTS on coordinating these for the week of 10/27 from discussions with Layton Supers on estimated timing to receive. / John Capriotti on 2025-10-27 18:10: Starting to coordinate deliveries, pushing for the next two weeks. / allucent_notes_20251028_163138: John Capriotti on 2025-10-14 12:10: From mu understanding the building is not ready to receive these CRAHS and/or store them inside. Need to confirm the area readiness and the dry-in over areas where these CRAHs will be stored. Going to reach out to QTS on coordinating these for the week of 10/27 from discussions with Layton Supers on estimated timing to receive. / John Capriotti on 2025-10-27 18:10: Starting to coordinate deliveries, pushing for the next two weeks. / allucent_notes_20251104_160200: John Capriotti on 2025-10-14 12:10: From mu understanding the building is not ready to receive these CRAHS and/or store them inside. Need to confirm the area readiness and the dry-in over areas where these CRAHs will be stored. Going to reach out to QTS on coordinating these for the week of 10/27 from discussions with Layton Supers on estimated timing to receive. / John Capriotti on 2025-10-27 18:10: Starting to coordinate deliveries, pushing for the next two weeks. / allucent_notes_20251111_182405: John Capriotti on 2025-10-14 12:10: From mu understanding the building is not ready to receive these CRAHS and/or store them inside. Need to confirm the area readiness and the dry-in over areas where these CRAHs will be stored. Going to reach out to QTS on coordinating these for the week of 10/27 from discussions with Layton Supers on estimated timing to receive. / John Capriotti on 2025-10-27 18:10: Starting to coordinate deliveries, pushing for the next two weeks. / Jason Johnston on 2025-11-11 17:11: John owes me 11/11 update / allucent_notes_20251118_192630: John Capriotti on 2025-10-14 12:10: From mu understanding the building is not ready to receive these CRAHS and/or store them inside. Need to confirm the area readiness and the dry-in over areas where these CRAHs will be stored. Going to reach out to QTS on coordinating these for the week of 10/27 from discussions with Layton Supers on estimated timing to receive. / John Capriotti on 2025-10-27 18:10: Starting to coordinate deliveries, pushing for the next two weeks. / Jason Johnston on 2025-11-11 17:11: John owes me 11/11 update / allucent_notes_20251202_153722: John Capriotti on 2025-10-14 12:10: From mu understanding the building is not ready to receive these CRAHS and/or store them inside. Need to confirm the area readiness and the dry-in over areas where these CRAHs will be stored. Going to reach out to QTS on coordinating these for the week of 10/27 from discussions with Layton Supers on estimated timing to receive. / John Capriotti on 2025-10-27 18:10: Starting to coordinate deliveries, pushing for the next two weeks. / Jason Johnston on 2025-11-11 17:11: John owes me 11/11 update / allucent_notes_20251209_203830: John Capriotti on 2025-10-14 12:10: From mu understanding the building is not ready to receive these CRAHS and/or store them inside. Need to confirm the area readiness and the dry-in over areas where these CRAHs will be stored. Going to reach out to QTS on coordinating these for the week of 10/27 from discussions with Layton Supers on estimated timing to receive. / John Capriotti on 2025-10-27 18:10: Starting to coordinate deliveries, pushing for the next two weeks. / Jason Johnston on 2025-11-11 17:11: John owes me 11/11 update / John Capriotti on 2025-12-09 12:29: Delivery scheduled for 12/15 / allucent_notes_20251216_165335: John Capriotti on 2025-10-14 12:10: From mu understanding the building is not ready to receive these CRAHS and/or store them inside. Need to confirm the area readiness and the dry-in over areas where these CRAHs will be stored. Going to reach out to QTS on coordinating these for the week of 10/27 from discussions with Layton Supers on estimated timing to receive. / John Capriotti on 2025-10-27 18:10: Starting to coordinate deliveries, pushing for the next two weeks. / Jason Johnston on 2025-11-11 17:11: John owes me 11/11 update / John Capriotti on 2025-12-09 12:29: Delivery scheduled for 12/15 / allucent_notes: 2025-10-14 12:10 - User: John Capriotti - Date Added: 2025-10-14 12:10 - Note: From mu understanding the building is not ready to receive these CRAHS and/or store them inside. Need to confirm the area readiness and the dry-in over areas where these CRAHs
- QTS-34201: allucent_notes_20251014_152335: John Capriotti on 2025-10-14 12:10: From mu understanding the building is not ready to receive these CRAHS and/or store them inside. Need to confirm the area readiness and the dry-in over areas where these CRAHs will be stored. Going to reach out to QTS on coordinating these for the week of 10/27 from discussions with Layton Supers on estimated timing to receive. / allucent_notes_20251021_145627: John Capriotti on 2025-10-14 12:10: From mu understanding the building is not ready to receive these CRAHS and/or store them inside. Need to confirm the area readiness and the dry-in over areas where these CRAHs will be stored. Going to reach out to QTS on coordinating these for the week of 10/27 from discussions with Layton Supers on estimated timing to receive. / allucent_notes_20251027_224008: John Capriotti on 2025-10-14 12:10: From mu understanding the building is not ready to receive these CRAHS and/or store them inside. Need to confirm the area readiness and the dry-in over areas where these CRAHs will be stored. Going to reach out to QTS on coordinating these for the week of 10/27 from discussions with Layton Supers on estimated timing to receive. / John Capriotti on 2025-10-27 18:10: Starting to coordinate deliveries, pushing for the next two weeks. / allucent_notes_20251028_163138: John Capriotti on 2025-10-14 12:10: From mu understanding the building is not ready to receive these CRAHS and/or store them inside. Need to confirm the area readiness and the dry-in over areas where these CRAHs will be stored. Going to reach out to QTS on coordinating these for the week of 10/27 from discussions with Layton Supers on estimated timing to receive. / John Capriotti on 2025-10-27 18:10: Starting to coordinate deliveries, pushing for the next two weeks. / allucent_notes_20251104_160200: John Capriotti on 2025-10-14 12:10: From mu understanding the building is not ready to receive these CRAHS and/or store them inside. Need to confirm the area readiness and the dry-in over areas where these CRAHs will be stored. Going to reach out to QTS on coordinating these for the week of 10/27 from discussions with Layton Supers on estimated timing to receive. / John Capriotti on 2025-10-27 18:10: Starting to coordinate deliveries, pushing for the next two weeks. / allucent_notes_20251111_182405: John Capriotti on 2025-10-14 12:10: From mu understanding the building is not ready to receive these CRAHS and/or store them inside. Need to confirm the area readiness and the dry-in over areas where these CRAHs will be stored. Going to reach out to QTS on coordinating these for the week of 10/27 from discussions with Layton Supers on estimated timing to receive. / John Capriotti on 2025-10-27 18:10: Starting to coordinate deliveries, pushing for the next two weeks. / Jason Johnston on 2025-11-11 17:11: John owes me 11/11 update / allucent_notes_20251118_192630: John Capriotti on 2025-10-14 12:10: From mu understanding the building is not ready to receive these CRAHS and/or store them inside. Need to confirm the area readiness and the dry-in over areas where these CRAHs will be stored. Going to reach out to QTS on coordinating these for the week of 10/27 from discussions with Layton Supers on estimated timing to receive. / John Capriotti on 2025-10-27 18:10: Starting to coordinate deliveries, pushing for the next two weeks. / Jason Johnston on 2025-11-11 17:11: John owes me 11/11 update / allucent_notes_20251202_153722: John Capriotti on 2025-10-14 12:10: From mu understanding the building is not ready to receive these CRAHS and/or store them inside. Need to confirm the area readiness and the dry-in over areas where these CRAHs will be stored. Going to reach out to QTS on coordinating these for the week of 10/27 from discussions with Layton Supers on estimated timing to receive. / John Capriotti on 2025-10-27 18:10: Starting to coordinate deliveries, pushing for the next two weeks. / Jason Johnston on 2025-11-11 17:11: John owes me 11/11 update / allucent_notes_20251209_203830: John Capriotti on 2025-10-14 12:10: From mu understanding the building is not ready to receive these CRAHS and/or store them inside. Need to confirm the area readiness and the dry-in over areas where these CRAHs will be stored. Going to reach out to QTS on coordinating these for the week of 10/27 from discussions with Layton Supers on estimated timing to receive. / John Capriotti on 2025-10-27 18:10: Starting to coordinate deliveries, pushing for the next two weeks. / Jason Johnston on 2025-11-11 17:11: John owes me 11/11 update / John Capriotti on 2025-12-09 12:29: Delivery scheduled for 12/15 / allucent_notes_20251216_165335: John Capriotti on 2025-10-14 12:10: From mu understanding the building is not ready to receive these CRAHS and/or store them inside. Need to confirm the area readiness and the dry-in over areas where these CRAHs will be stored. Going to reach out to QTS on coordinating these for the week of 10/27 from discussions with Layton Supers on estimated timing to receive. / John Capriotti on 2025-10-27 18:10: Starting to coordinate deliveries, pushing for the next two weeks. / Jason Johnston on 2025-11-11 17:11: John owes me 11/11 update / John Capriotti on 2025-12-09 12:29: Delivery scheduled for 12/15 / allucent_notes: 2025-10-14 12:10 - User: John Capriotti - Date Added: 2025-10-14 12:10 - Note: From mu understanding the building is not ready to receive these CRAHS and/or store them inside. Need to confirm the area readiness and the dry-in over areas where these CRAHs
- QTS-33891: allucent_notes_20251014_152335: John Capriotti on 2025-10-14 12:10: From mu understanding the building is not ready to receive these CRAHS and/or store them inside. Need to confirm the area readiness and the dry-in over areas where these CRAHs will be stored. Going to reach out to QTS on coordinating these for the week of 10/27 from discussions with Layton Supers on estimated timing to receive. / allucent_notes_20251021_145627: John Capriotti on 2025-10-14 12:10: From mu understanding the building is not ready to receive these CRAHS and/or store them inside. Need to confirm the area readiness and the dry-in over areas where these CRAHs will be stored. Going to reach out to QTS on coordinating these for the week of 10/27 from discussions with Layton Supers on estimated timing to receive. / allucent_notes_20251027_224008: John Capriotti on 2025-10-14 12:10: From mu understanding the building is not ready to receive these CRAHS and/or store them inside. Need to confirm the area readiness and the dry-in over areas where these CRAHs will be stored. Going to reach out to QTS on coordinating these for the week of 10/27 from discussions with Layton Supers on estimated timing to receive. / John Capriotti on 2025-10-27 18:10: Starting to coordinate deliveries, pushing for the next two weeks. / allucent_notes_20251028_163138: John Capriotti on 2025-10-14 12:10: From mu understanding the building is not ready to receive these CRAHS and/or store them inside. Need to confirm the area readiness and the dry-in over areas where these CRAHs will be stored. Going to reach out to QTS on coordinating these for the week of 10/27 from discussions with Layton Supers on estimated timing to receive. / John Capriotti on 2025-10-27 18:10: Starting to coordinate deliveries, pushing for the next two weeks. / allucent_notes_20251104_160200: John Capriotti on 2025-10-14 12:10: From mu understanding the building is not ready to receive these CRAHS and/or store them inside. Need to confirm the area readiness and the dry-in over areas where these CRAHs will be stored. Going to reach out to QTS on coordinating these for the week of 10/27 from discussions with Layton Supers on estimated timing to receive. / John Capriotti on 2025-10-27 18:10: Starting to coordinate deliveries, pushing for the next two weeks. / allucent_notes_20251111_182405: John Capriotti on 2025-10-14 12:10: From mu understanding the building is not ready to receive these CRAHS and/or store them inside. Need to confirm the area readiness and the dry-in over areas where these CRAHs will be stored. Going to reach out to QTS on coordinating these for the week of 10/27 from discussions with Layton Supers on estimated timing to receive. / John Capriotti on 2025-10-27 18:10: Starting to coordinate deliveries, pushing for the next two weeks. / Jason Johnston on 2025-11-11 17:11: John owes me 11/11 update / allucent_notes_20251118_192630: John Capriotti on 2025-10-14 12:10: From mu understanding the building is not ready to receive these CRAHS and/or store them inside. Need to confirm the area readiness and the dry-in over areas where these CRAHs will be stored. Going to reach out to QTS on coordinating these for the week of 10/27 from discussions with Layton Supers on estimated timing to receive. / John Capriotti on 2025-10-27 18:10: Starting to coordinate deliveries, pushing for the next two weeks. / Jason Johnston on 2025-11-11 17:11: John owes me 11/11 update / allucent_notes_20251202_153722: John Capriotti on 2025-10-14 12:10: From mu understanding the building is not ready to receive these CRAHS and/or store them inside. Need to confirm the area readiness and the dry-in over areas where these CRAHs will be stored. Going to reach out to QTS on coordinating these for the week of 10/27 from discussions with Layton Supers on estimated timing to receive. / John Capriotti on 2025-10-27 18:10: Starting to coordinate deliveries, pushing for the next two weeks. / Jason Johnston on 2025-11-11 17:11: John owes me 11/11 update / Jason Johnston on 2025-12-02 11:39: First delivery day / John Capriotti on 2025-12-02 12:11: Received on 12/1 / allucent_notes: 2025-10-14 12:10 - User: John Capriotti - Date Added: 2025-10-14 12:10 - Note: From mu understanding the building is not ready to receive these CRAHS and/or store them inside. Need to confirm the area readiness and the dry-in over areas where these CRAHs
- QTS-33901: allucent_notes_20251014_152335: John Capriotti on 2025-10-14 12:10: From mu understanding the building is not ready to receive these CRAHS and/or store them inside. Need to confirm the area readiness and the dry-in over areas where these CRAHs will be stored. Going to reach out to QTS on coordinating these for the week of 10/27 from discussions with Layton Supers on estimated timing to receive. / allucent_notes_20251021_145627: John Capriotti on 2025-10-14 12:10: From mu understanding the building is not ready to receive these CRAHS and/or store them inside. Need to confirm the area readiness and the dry-in over areas where these CRAHs will be stored. Going to reach out to QTS on coordinating these for the week of 10/27 from discussions with Layton Supers on estimated timing to receive. / allucent_notes_20251027_224008: John Capriotti on 2025-10-14 12:10: From mu understanding the building is not ready to receive these CRAHS and/or store them inside. Need to confirm the area readiness and the dry-in over areas where these CRAHs will be stored. Going to reach out to QTS on coordinating these for the week of 10/27 from discussions with Layton Supers on estimated timing to receive. / John Capriotti on 2025-10-27 18:10: Starting to coordinate deliveries, pushing for the next two weeks. / allucent_notes_20251028_163138: John Capriotti on 2025-10-14 12:10: From mu understanding the building is not ready to receive these CRAHS and/or store them inside. Need to confirm the area readiness and the dry-in over areas where these CRAHs will be stored. Going to reach out to QTS on coordinating these for the week of 10/27 from discussions with Layton Supers on estimated timing to receive. / John Capriotti on 2025-10-27 18:10: Starting to coordinate deliveries, pushing for the next two weeks. / allucent_notes_20251104_160200: John Capriotti on 2025-10-14 12:10: From mu understanding the building is not ready to receive these CRAHS and/or store them inside. Need to confirm the area readiness and the dry-in over areas where these CRAHs will be stored. Going to reach out to QTS on coordinating these for the week of 10/27 from discussions with Layton Supers on estimated timing to receive. / John Capriotti on 2025-10-27 18:10: Starting to coordinate deliveries, pushing for the next two weeks. / allucent_notes_20251111_182405: John Capriotti on 2025-10-14 12:10: From mu understanding the building is not ready to receive these CRAHS and/or store them inside. Need to confirm the area readiness and the dry-in over areas where these CRAHs will be stored. Going to reach out to QTS on coordinating these for the week of 10/27 from discussions with Layton Supers on estimated timing to receive. / John Capriotti on 2025-10-27 18:10: Starting to coordinate deliveries, pushing for the next two weeks. / Jason Johnston on 2025-11-11 17:11: John owes me 11/11 update / allucent_notes_20251118_192630: John Capriotti on 2025-10-14 12:10: From mu understanding the building is not ready to receive these CRAHS and/or store them inside. Need to confirm the area readiness and the dry-in over areas where these CRAHs will be stored. Going to reach out to QTS on coordinating these for the week of 10/27 from discussions with Layton Supers on estimated timing to receive. / John Capriotti on 2025-10-27 18:10: Starting to coordinate deliveries, pushing for the next two weeks. / Jason Johnston on 2025-11-11 17:11: John owes me 11/11 update / allucent_notes_20251202_153722: John Capriotti on 2025-10-14 12:10: From mu understanding the building is not ready to receive these CRAHS and/or store them inside. Need to confirm the area readiness and the dry-in over areas where these CRAHs will be stored. Going to reach out to QTS on coordinating these for the week of 10/27 from discussions with Layton Supers on estimated timing to receive. / John Capriotti on 2025-10-27 18:10: Starting to coordinate deliveries, pushing for the next two weeks. / Jason Johnston on 2025-11-11 17:11: John owes me 11/11 update / Jason Johnston on 2025-12-02 11:40: First delivery day / John Capriotti on 2025-12-02 12:11: Received on 12/1 / allucent_notes: 2025-10-14 12:10 - User: John Capriotti - Date Added: 2025-10-14 12:10 - Note: From mu understanding the building is not ready to receive these CRAHS and/or store them inside. Need to confirm the area readiness and the dry-in over areas where these CRAHs
- QTS-33911: allucent_notes_20251014_152335: John Capriotti on 2025-10-14 12:10: From mu understanding the building is not ready to receive these CRAHS and/or store them inside. Need to confirm the area readiness and the dry-in over areas where these CRAHs will be stored. Going to reach out to QTS on coordinating these for the week of 10/27 from discussions with Layton Supers on estimated timing to receive. / allucent_notes_20251021_145627: John Capriotti on 2025-10-14 12:10: From mu understanding the building is not ready to receive these CRAHS and/or store them inside. Need to confirm the area readiness and the dry-in over areas where these CRAHs will be stored. Going to reach out to QTS on coordinating these for the week of 10/27 from discussions with Layton Supers on estimated timing to receive. / allucent_notes_20251027_224008: John Capriotti on 2025-10-14 12:10: From mu understanding the building is not ready to receive these CRAHS and/or store them inside. Need to confirm the area readiness and the dry-in over areas where these CRAHs will be stored. Going to reach out to QTS on coordinating these for the week of 10/27 from discussions with Layton Supers on estimated timing to receive. / John Capriotti on 2025-10-27 18:10: Starting to coordinate deliveries, pushing for the next two weeks. / allucent_notes_20251028_163138: John Capriotti on 2025-10-14 12:10: From mu understanding the building is not ready to receive these CRAHS and/or store them inside. Need to confirm the area readiness and the dry-in over areas where these CRAHs will be stored. Going to reach out to QTS on coordinating these for the week of 10/27 from discussions with Layton Supers on estimated timing to receive. / John Capriotti on 2025-10-27 18:10: Starting to coordinate deliveries, pushing for the next two weeks. / allucent_notes_20251104_160200: John Capriotti on 2025-10-14 12:10: From mu understanding the building is not ready to receive these CRAHS and/or store them inside. Need to confirm the area readiness and the dry-in over areas where these CRAHs will be stored. Going to reach out to QTS on coordinating these for the week of 10/27 from discussions with Layton Supers on estimated timing to receive. / John Capriotti on 2025-10-27 18:10: Starting to coordinate deliveries, pushing for the next two weeks. / allucent_notes_20251111_182405: John Capriotti on 2025-10-14 12:10: From mu understanding the building is not ready to receive these CRAHS and/or store them inside. Need to confirm the area readiness and the dry-in over areas where these CRAHs will be stored. Going to reach out to QTS on coordinating these for the week of 10/27 from discussions with Layton Supers on estimated timing to receive. / John Capriotti on 2025-10-27 18:10: Starting to coordinate deliveries, pushing for the next two weeks. / Jason Johnston on 2025-11-11 17:11: John owes me 11/11 update / allucent_notes_20251118_192630: John Capriotti on 2025-10-14 12:10: From mu understanding the building is not ready to receive these CRAHS and/or store them inside. Need to confirm the area readiness and the dry-in over areas where these CRAHs will be stored. Going to reach out to QTS on coordinating these for the week of 10/27 from discussions with Layton Supers on estimated timing to receive. / John Capriotti on 2025-10-27 18:10: Starting to coordinate deliveries, pushing for the next two weeks. / Jason Johnston on 2025-11-11 17:11: John owes me 11/11 update / allucent_notes_20251202_153722: John Capriotti on 2025-10-14 12:10: From mu understanding the building is not ready to receive these CRAHS and/or store them inside. Need to confirm the area readiness and the dry-in over areas where these CRAHs will be stored. Going to reach out to QTS on coordinating these for the week of 10/27 from discussions with Layton Supers on estimated timing to receive. / John Capriotti on 2025-10-27 18:10: Starting to coordinate deliveries, pushing for the next two weeks. / Jason Johnston on 2025-11-11 17:11: John owes me 11/11 update / John Capriotti on 2025-12-02 12:11: Received on 12/1 / allucent_notes: 2025-10-14 12:10 - User: John Capriotti - Date Added: 2025-10-14 12:10 - Note: From mu understanding the building is not ready to receive these CRAHS and/or store them inside. Need to confirm the area readiness and the dry-in over areas where these CRAHs
- QTS-33921: allucent_notes_20251014_152335: John Capriotti on 2025-10-14 12:10: From mu understanding the building is not ready to receive these CRAHS and/or store them inside. Need to confirm the area readiness and the dry-in over areas where these CRAHs will be stored. Going to reach out to QTS on coordinating these for the week of 10/27 from discussions with Layton Supers on estimated timing to receive. / allucent_notes_20251021_145627: John Capriotti on 2025-10-14 12:10: From mu understanding the building is not ready to receive these CRAHS and/or store them inside. Need to confirm the area readiness and the dry-in over areas where these CRAHs will be stored. Going to reach out to QTS on coordinating these for the week of 10/27 from discussions with Layton Supers on estimated timing to receive. / allucent_notes_20251027_224008: John Capriotti on 2025-10-14 12:10: From mu understanding the building is not ready to receive these CRAHS and/or store them inside. Need to confirm the area readiness and the dry-in over areas where these CRAHs will be stored. Going to reach out to QTS on coordinating these for the week of 10/27 from discussions with Layton Supers on estimated timing to receive. / John Capriotti on 2025-10-27 18:10: Starting to coordinate deliveries, pushing for the next two weeks. / allucent_notes_20251028_163138: John Capriotti on 2025-10-14 12:10: From mu understanding the building is not ready to receive these CRAHS and/or store them inside. Need to confirm the area readiness and the dry-in over areas where these CRAHs will be stored. Going to reach out to QTS on coordinating these for the week of 10/27 from discussions with Layton Supers on estimated timing to receive. / John Capriotti on 2025-10-27 18:10: Starting to coordinate deliveries, pushing for the next two weeks. / allucent_notes_20251104_160200: John Capriotti on 2025-10-14 12:10: From mu understanding the building is not ready to receive these CRAHS and/or store them inside. Need to confirm the area readiness and the dry-in over areas where these CRAHs will be stored. Going to reach out to QTS on coordinating these for the week of 10/27 from discussions with Layton Supers on estimated timing to receive. / John Capriotti on 2025-10-27 18:10: Starting to coordinate deliveries, pushing for the next two weeks. / allucent_notes_20251111_182405: John Capriotti on 2025-10-14 12:10: From mu understanding the building is not ready to receive these CRAHS and/or store them inside. Need to confirm the area readiness and the dry-in over areas where these CRAHs will be stored. Going to reach out to QTS on coordinating these for the week of 10/27 from discussions with Layton Supers on estimated timing to receive. / John Capriotti on 2025-10-27 18:10: Starting to coordinate deliveries, pushing for the next two weeks. / Jason Johnston on 2025-11-11 17:11: John owes me 11/11 update / allucent_notes_20251118_192630: John Capriotti on 2025-10-14 12:10: From mu understanding the building is not ready to receive these CRAHS and/or store them inside. Need to confirm the area readiness and the dry-in over areas where these CRAHs will be stored. Going to reach out to QTS on coordinating these for the week of 10/27 from discussions with Layton Supers on estimated timing to receive. / John Capriotti on 2025-10-27 18:10: Starting to coordinate deliveries, pushing for the next two weeks. / Jason Johnston on 2025-11-11 17:11: John owes me 11/11 update / allucent_notes_20251202_153722: John Capriotti on 2025-10-14 12:10: From mu understanding the building is not ready to receive these CRAHS and/or store them inside. Need to confirm the area readiness and the dry-in over areas where these CRAHs will be stored. Going to reach out to QTS on coordinating these for the week of 10/27 from discussions with Layton Supers on estimated timing to receive. / John Capriotti on 2025-10-27 18:10: Starting to coordinate deliveries, pushing for the next two weeks. / Jason Johnston on 2025-11-11 17:11: John owes me 11/11 update / John Capriotti on 2025-12-02 12:12: Received on 12/1 / allucent_notes: 2025-10-14 12:10 - User: John Capriotti - Date Added: 2025-10-14 12:10 - Note: From mu understanding the building is not ready to receive these CRAHS and/or store them inside. Need to confirm the area readiness and the dry-in over areas where these CRAHs
- QTS-33931: allucent_notes_20251014_152335: John Capriotti on 2025-10-14 13:10: From mu understanding the building is not ready to receive these CRAHS and/or store them inside. Need to confirm the area readiness and the dry-in over areas where these CRAHs will be stored. Going to reach out to QTS on coordinating these for the week of 10/27 from discussions with Layton Supers on estimated timing to receive. / allucent_notes_20251021_145627: John Capriotti on 2025-10-14 13:10: From mu understanding the building is not ready to receive these CRAHS and/or store them inside. Need to confirm the area readiness and the dry-in over areas where these CRAHs will be stored. Going to reach out to QTS on coordinating these for the week of 10/27 from discussions with Layton Supers on estimated timing to receive. / allucent_notes_20251027_224008: John Capriotti on 2025-10-14 13:10: From mu understanding the building is not ready to receive these CRAHS and/or store them inside. Need to confirm the area readiness and the dry-in over areas where these CRAHs will be stored. Going to reach out to QTS on coordinating these for the week of 10/27 from discussions with Layton Supers on estimated timing to receive. / John Capriotti on 2025-10-27 18:10: Starting to coordinate deliveries, pushing for the next two weeks. / allucent_notes_20251028_163138: John Capriotti on 2025-10-14 13:10: From mu understanding the building is not ready to receive these CRAHS and/or store them inside. Need to confirm the area readiness and the dry-in over areas where these CRAHs will be stored. Going to reach out to QTS on coordinating these for the week of 10/27 from discussions with Layton Supers on estimated timing to receive. / John Capriotti on 2025-10-27 18:10: Starting to coordinate deliveries, pushing for the next two weeks. / allucent_notes_20251104_160200: John Capriotti on 2025-10-14 13:10: From mu understanding the building is not ready to receive these CRAHS and/or store them inside. Need to confirm the area readiness and the dry-in over areas where these CRAHs will be stored. Going to reach out to QTS on coordinating these for the week of 10/27 from discussions with Layton Supers on estimated timing to receive. / John Capriotti on 2025-10-27 18:10: Starting to coordinate deliveries, pushing for the next two weeks. / allucent_notes_20251111_182405: John Capriotti on 2025-10-14 13:10: From mu understanding the building is not ready to receive these CRAHS and/or store them inside. Need to confirm the area readiness and the dry-in over areas where these CRAHs will be stored. Going to reach out to QTS on coordinating these for the week of 10/27 from discussions with Layton Supers on estimated timing to receive. / John Capriotti on 2025-10-27 18:10: Starting to coordinate deliveries, pushing for the next two weeks. / Jason Johnston on 2025-11-11 17:11: John owes me 11/11 update / allucent_notes_20251118_192630: John Capriotti on 2025-10-14 13:10: From mu understanding the building is not ready to receive these CRAHS and/or store them inside. Need to confirm the area readiness and the dry-in over areas where these CRAHs will be stored. Going to reach out to QTS on coordinating these for the week of 10/27 from discussions with Layton Supers on estimated timing to receive. / John Capriotti on 2025-10-27 18:10: Starting to coordinate deliveries, pushing for the next two weeks. / Jason Johnston on 2025-11-11 17:11: John owes me 11/11 update / allucent_notes_20251202_153722: John Capriotti on 2025-10-14 13:10: From mu understanding the building is not ready to receive these CRAHS and/or store them inside. Need to confirm the area readiness and the dry-in over areas where these CRAHs will be stored. Going to reach out to QTS on coordinating these for the week of 10/27 from discussions with Layton Supers on estimated timing to receive. / John Capriotti on 2025-10-27 18:10: Starting to coordinate deliveries, pushing for the next two weeks. / Jason Johnston on 2025-11-11 17:11: John owes me 11/11 update / John Capriotti on 2025-12-02 12:12: Received on 12/2 / allucent_notes: 2025-10-14 13:10 - User: John Capriotti - Date Added: 2025-10-14 13:10 - Note: From mu understanding the building is not ready to receive these CRAHS and/or store them inside. Need to confirm the area readiness and the dry-in over areas where these CRAHs
- QTS-33941: allucent_notes_20251014_152335: John Capriotti on 2025-10-14 13:10: From mu understanding the building is not ready to receive these CRAHS and/or store them inside. Need to confirm the area readiness and the dry-in over areas where these CRAHs will be stored. Going to reach out to QTS on coordinating these for the week of 10/27 from discussions with Layton Supers on estimated timing to receive. / allucent_notes_20251021_145627: John Capriotti on 2025-10-14 13:10: From mu understanding the building is not ready to receive these CRAHS and/or store them inside. Need to confirm the area readiness and the dry-in over areas where these CRAHs will be stored. Going to reach out to QTS on coordinating these for the week of 10/27 from discussions with Layton Supers on estimated timing to receive. / allucent_notes_20251027_224008: John Capriotti on 2025-10-14 13:10: From mu understanding the building is not ready to receive these CRAHS and/or store them inside. Need to confirm the area readiness and the dry-in over areas where these CRAHs will be stored. Going to reach out to QTS on coordinating these for the week of 10/27 from discussions with Layton Supers on estimated timing to receive. / John Capriotti on 2025-10-27 18:10: Starting to coordinate deliveries, pushing for the next two weeks. / allucent_notes_20251028_163138: John Capriotti on 2025-10-14 13:10: From mu understanding the building is not ready to receive these CRAHS and/or store them inside. Need to confirm the area readiness and the dry-in over areas where these CRAHs will be stored. Going to reach out to QTS on coordinating these for the week of 10/27 from discussions with Layton Supers on estimated timing to receive. / John Capriotti on 2025-10-27 18:10: Starting to coordinate deliveries, pushing for the next two weeks. / allucent_notes_20251104_160200: John Capriotti on 2025-10-14 13:10: From mu understanding the building is not ready to receive these CRAHS and/or store them inside. Need to confirm the area readiness and the dry-in over areas where these CRAHs will be stored. Going to reach out to QTS on coordinating these for the week of 10/27 from discussions with Layton Supers on estimated timing to receive. / John Capriotti on 2025-10-27 18:10: Starting to coordinate deliveries, pushing for the next two weeks. / allucent_notes_20251111_182405: John Capriotti on 2025-10-14 13:10: From mu understanding the building is not ready to receive these CRAHS and/or store them inside. Need to confirm the area readiness and the dry-in over areas where these CRAHs will be stored. Going to reach out to QTS on coordinating these for the week of 10/27 from discussions with Layton Supers on estimated timing to receive. / John Capriotti on 2025-10-27 18:10: Starting to coordinate deliveries, pushing for the next two weeks. / Jason Johnston on 2025-11-11 17:11: John owes me 11/11 update / allucent_notes_20251118_192630: John Capriotti on 2025-10-14 13:10: From mu understanding the building is not ready to receive these CRAHS and/or store them inside. Need to confirm the area readiness and the dry-in over areas where these CRAHs will be stored. Going to reach out to QTS on coordinating these for the week of 10/27 from discussions with Layton Supers on estimated timing to receive. / John Capriotti on 2025-10-27 18:10: Starting to coordinate deliveries, pushing for the next two weeks. / Jason Johnston on 2025-11-11 17:11: John owes me 11/11 update / allucent_notes_20251202_153722: John Capriotti on 2025-10-14 13:10: From mu understanding the building is not ready to receive these CRAHS and/or store them inside. Need to confirm the area readiness and the dry-in over areas where these CRAHs will be stored. Going to reach out to QTS on coordinating these for the week of 10/27 from discussions with Layton Supers on estimated timing to receive. / John Capriotti on 2025-10-27 18:10: Starting to coordinate deliveries, pushing for the next two weeks. / Jason Johnston on 2025-11-11 17:11: John owes me 11/11 update / John Capriotti on 2025-12-02 12:13: Received on 12/2 / allucent_notes: 2025-10-14 13:10 - User: John Capriotti - Date Added: 2025-10-14 13:10 - Note: From mu understanding the building is not ready to receive these CRAHS and/or store them inside. Need to confirm the area readiness and the dry-in over areas where these CRAHs
- QTS-33951: allucent_notes_20251014_152335: John Capriotti on 2025-10-14 13:10: From mu understanding the building is not ready to receive these CRAHS and/or store them inside. Need to confirm the area readiness and the dry-in over areas where these CRAHs will be stored. Going to reach out to QTS on coordinating these for the week of 10/27 from discussions with Layton Supers on estimated timing to receive. / allucent_notes_20251021_145627: John Capriotti on 2025-10-14 13:10: From mu understanding the building is not ready to receive these CRAHS and/or store them inside. Need to confirm the area readiness and the dry-in over areas where these CRAHs will be stored. Going to reach out to QTS on coordinating these for the week of 10/27 from discussions with Layton Supers on estimated timing to receive. / allucent_notes_20251027_224008: John Capriotti on 2025-10-14 13:10: From mu understanding the building is not ready to receive these CRAHS and/or store them inside. Need to confirm the area readiness and the dry-in over areas where these CRAHs will be stored. Going to reach out to QTS on coordinating these for the week of 10/27 from discussions with Layton Supers on estimated timing to receive. / John Capriotti on 2025-10-27 18:10: Starting to coordinate deliveries, pushing for the next two weeks. / allucent_notes_20251028_163138: John Capriotti on 2025-10-14 13:10: From mu understanding the building is not ready to receive these CRAHS and/or store them inside. Need to confirm the area readiness and the dry-in over areas where these CRAHs will be stored. Going to reach out to QTS on coordinating these for the week of 10/27 from discussions with Layton Supers on estimated timing to receive. / John Capriotti on 2025-10-27 18:10: Starting to coordinate deliveries, pushing for the next two weeks. / allucent_notes_20251104_160200: John Capriotti on 2025-10-14 13:10: From mu understanding the building is not ready to receive these CRAHS and/or store them inside. Need to confirm the area readiness and the dry-in over areas where these CRAHs will be stored. Going to reach out to QTS on coordinating these for the week of 10/27 from discussions with Layton Supers on estimated timing to receive. / John Capriotti on 2025-10-27 18:10: Starting to coordinate deliveries, pushing for the next two weeks. / allucent_notes_20251111_182405: John Capriotti on 2025-10-14 13:10: From mu understanding the building is not ready to receive these CRAHS and/or store them inside. Need to confirm the area readiness and the dry-in over areas where these CRAHs will be stored. Going to reach out to QTS on coordinating these for the week of 10/27 from discussions with Layton Supers on estimated timing to receive. / John Capriotti on 2025-10-27 18:10: Starting to coordinate deliveries, pushing for the next two weeks. / Jason Johnston on 2025-11-11 17:11: John owes me 11/11 update / allucent_notes_20251118_192630: John Capriotti on 2025-10-14 13:10: From mu understanding the building is not ready to receive these CRAHS and/or store them inside. Need to confirm the area readiness and the dry-in over areas where these CRAHs will be stored. Going to reach out to QTS on coordinating these for the week of 10/27 from discussions with Layton Supers on estimated timing to receive. / John Capriotti on 2025-10-27 18:10: Starting to coordinate deliveries, pushing for the next two weeks. / Jason Johnston on 2025-11-11 17:11: John owes me 11/11 update / allucent_notes_20251202_153722: John Capriotti on 2025-10-14 13:10: From mu understanding the building is not ready to receive these CRAHS and/or store them inside. Need to confirm the area readiness and the dry-in over areas where these CRAHs will be stored. Going to reach out to QTS on coordinating these for the week of 10/27 from discussions with Layton Supers on estimated timing to receive. / John Capriotti on 2025-10-27 18:10: Starting to coordinate deliveries, pushing for the next two weeks. / Jason Johnston on 2025-11-11 17:11: John owes me 11/11 update / John Capriotti on 2025-12-02 12:13: Received on 12/2 / allucent_notes: 2025-10-14 13:10 - User: John Capriotti - Date Added: 2025-10-14 13:10 - Note: From mu understanding the building is not ready to receive these CRAHS and/or store them inside. Need to confirm the area readiness and the dry-in over areas where these CRAHs
- QTS-33961: allucent_notes_20251014_152335: John Capriotti on 2025-10-14 13:10: From mu understanding the building is not ready to receive these CRAHS and/or store them inside. Need to confirm the area readiness and the dry-in over areas where these CRAHs will be stored. Going to reach out to QTS on coordinating these for the week of 10/27 from discussions with Layton Supers on estimated timing to receive. / allucent_notes_20251021_145627: John Capriotti on 2025-10-14 13:10: From mu understanding the building is not ready to receive these CRAHS and/or store them inside. Need to confirm the area readiness and the dry-in over areas where these CRAHs will be stored. Going to reach out to QTS on coordinating these for the week of 10/27 from discussions with Layton Supers on estimated timing to receive. / allucent_notes_20251027_224008: John Capriotti on 2025-10-14 13:10: From mu understanding the building is not ready to receive these CRAHS and/or store them inside. Need to confirm the area readiness and the dry-in over areas where these CRAHs will be stored. Going to reach out to QTS on coordinating these for the week of 10/27 from discussions with Layton Supers on estimated timing to receive. / John Capriotti on 2025-10-27 18:10: Starting to coordinate deliveries, pushing for the next two weeks. / allucent_notes_20251028_163138: John Capriotti on 2025-10-14 13:10: From mu understanding the building is not ready to receive these CRAHS and/or store them inside. Need to confirm the area readiness and the dry-in over areas where these CRAHs will be stored. Going to reach out to QTS on coordinating these for the week of 10/27 from discussions with Layton Supers on estimated timing to receive. / John Capriotti on 2025-10-27 18:10: Starting to coordinate deliveries, pushing for the next two weeks. / allucent_notes_20251104_160200: John Capriotti on 2025-10-14 13:10: From mu understanding the building is not ready to receive these CRAHS and/or store them inside. Need to confirm the area readiness and the dry-in over areas where these CRAHs will be stored. Going to reach out to QTS on coordinating these for the week of 10/27 from discussions with Layton Supers on estimated timing to receive. / John Capriotti on 2025-10-27 18:10: Starting to coordinate deliveries, pushing for the next two weeks. / allucent_notes_20251111_182405: John Capriotti on 2025-10-14 13:10: From mu understanding the building is not ready to receive these CRAHS and/or store them inside. Need to confirm the area readiness and the dry-in over areas where these CRAHs will be stored. Going to reach out to QTS on coordinating these for the week of 10/27 from discussions with Layton Supers on estimated timing to receive. / John Capriotti on 2025-10-27 18:10: Starting to coordinate deliveries, pushing for the next two weeks. / Jason Johnston on 2025-11-11 17:11: John owes me 11/11 update / allucent_notes_20251118_192630: John Capriotti on 2025-10-14 13:10: From mu understanding the building is not ready to receive these CRAHS and/or store them inside. Need to confirm the area readiness and the dry-in over areas where these CRAHs will be stored. Going to reach out to QTS on coordinating these for the week of 10/27 from discussions with Layton Supers on estimated timing to receive. / John Capriotti on 2025-10-27 18:10: Starting to coordinate deliveries, pushing for the next two weeks. / Jason Johnston on 2025-11-11 17:11: John owes me 11/11 update / allucent_notes_20251202_153722: John Capriotti on 2025-10-14 13:10: From mu understanding the building is not ready to receive these CRAHS and/or store them inside. Need to confirm the area readiness and the dry-in over areas where these CRAHs will be stored. Going to reach out to QTS on coordinating these for the week of 10/27 from discussions with Layton Supers on estimated timing to receive. / John Capriotti on 2025-10-27 18:10: Starting to coordinate deliveries, pushing for the next two weeks. / Jason Johnston on 2025-11-11 17:11: John owes me 11/11 update / John Capriotti on 2025-12-02 12:13: Received on 12/2 / allucent_notes: 2025-10-14 13:10 - User: John Capriotti - Date Added: 2025-10-14 13:10 - Note: From mu understanding the building is not ready to receive these CRAHS and/or store them inside. Need to confirm the area readiness and the dry-in over areas where these CRAHs
- QTS-33971: allucent_notes_20251014_152335: John Capriotti on 2025-10-14 13:10: From mu understanding the building is not ready to receive these CRAHS and/or store them inside. Need to confirm the area readiness and the dry-in over areas where these CRAHs will be stored. Going to reach out to QTS on coordinating these for the week of 10/27 from discussions with Layton Supers on estimated timing to receive. / allucent_notes_20251021_145627: John Capriotti on 2025-10-14 13:10: From mu understanding the building is not ready to receive these CRAHS and/or store them inside. Need to confirm the area readiness and the dry-in over areas where these CRAHs will be stored. Going to reach out to QTS on coordinating these for the week of 10/27 from discussions with Layton Supers on estimated timing to receive. / allucent_notes_20251027_224008: John Capriotti on 2025-10-14 13:10: From mu understanding the building is not ready to receive these CRAHS and/or store them inside. Need to confirm the area readiness and the dry-in over areas where these CRAHs will be stored. Going to reach out to QTS on coordinating these for the week of 10/27 from discussions with Layton Supers on estimated timing to receive. / John Capriotti on 2025-10-27 18:10: Starting to coordinate deliveries, pushing for the next two weeks. / allucent_notes_20251028_163138: John Capriotti on 2025-10-14 13:10: From mu understanding the building is not ready to receive these CRAHS and/or store them inside. Need to confirm the area readiness and the dry-in over areas where these CRAHs will be stored. Going to reach out to QTS on coordinating these for the week of 10/27 from discussions with Layton Supers on estimated timing to receive. / John Capriotti on 2025-10-27 18:10: Starting to coordinate deliveries, pushing for the next two weeks. / allucent_notes_20251104_160200: John Capriotti on 2025-10-14 13:10: From mu understanding the building is not ready to receive these CRAHS and/or store them inside. Need to confirm the area readiness and the dry-in over areas where these CRAHs will be stored. Going to reach out to QTS on coordinating these for the week of 10/27 from discussions with Layton Supers on estimated timing to receive. / John Capriotti on 2025-10-27 18:10: Starting to coordinate deliveries, pushing for the next two weeks. / allucent_notes_20251111_182405: John Capriotti on 2025-10-14 13:10: From mu understanding the building is not ready to receive these CRAHS and/or store them inside. Need to confirm the area readiness and the dry-in over areas where these CRAHs will be stored. Going to reach out to QTS on coordinating these for the week of 10/27 from discussions with Layton Supers on estimated timing to receive. / John Capriotti on 2025-10-27 18:10: Starting to coordinate deliveries, pushing for the next two weeks. / Jason Johnston on 2025-11-11 17:11: John owes me 11/11 update / allucent_notes_20251118_192630: John Capriotti on 2025-10-14 13:10: From mu understanding the building is not ready to receive these CRAHS and/or store them inside. Need to confirm the area readiness and the dry-in over areas where these CRAHs will be stored. Going to reach out to QTS on coordinating these for the week of 10/27 from discussions with Layton Supers on estimated timing to receive. / John Capriotti on 2025-10-27 18:10: Starting to coordinate deliveries, pushing for the next two weeks. / Jason Johnston on 2025-11-11 17:11: John owes me 11/11 update / allucent_notes_20251202_153722: John Capriotti on 2025-10-14 13:10: From mu understanding the building is not ready to receive these CRAHS and/or store them inside. Need to confirm the area readiness and the dry-in over areas where these CRAHs will be stored. Going to reach out to QTS on coordinating these for the week of 10/27 from discussions with Layton Supers on estimated timing to receive. / John Capriotti on 2025-10-27 18:10: Starting to coordinate deliveries, pushing for the next two weeks. / Jason Johnston on 2025-11-11 17:11: John owes me 11/11 update / John Capriotti on 2025-12-02 12:13: Received on 12/2 / allucent_notes: 2025-10-14 13:10 - User: John Capriotti - Date Added: 2025-10-14 13:10 - Note: From mu understanding the building is not ready to receive these CRAHS and/or store them inside. Need to confirm the area readiness and the dry-in over areas where these CRAHs
- QTS-33981: allucent_notes_20251014_152335: John Capriotti on 2025-10-14 13:10: From mu understanding the building is not ready to receive these CRAHS and/or store them inside. Need to confirm the area readiness and the dry-in over areas where these CRAHs will be stored. Going to reach out to QTS on coordinating these for the week of 10/27 from discussions with Layton Supers on estimated timing to receive. / allucent_notes_20251021_145627: John Capriotti on 2025-10-14 13:10: From mu understanding the building is not ready to receive these CRAHS and/or store them inside. Need to confirm the area readiness and the dry-in over areas where these CRAHs will be stored. Going to reach out to QTS on coordinating these for the week of 10/27 from discussions with Layton Supers on estimated timing to receive. / allucent_notes_20251027_224008: John Capriotti on 2025-10-14 13:10: From mu understanding the building is not ready to receive these CRAHS and/or store them inside. Need to confirm the area readiness and the dry-in over areas where these CRAHs will be stored. Going to reach out to QTS on coordinating these for the week of 10/27 from discussions with Layton Supers on estimated timing to receive. / John Capriotti on 2025-10-27 18:10: Starting to coordinate deliveries, pushing for the next two weeks. / allucent_notes_20251028_163138: John Capriotti on 2025-10-14 13:10: From mu understanding the building is not ready to receive these CRAHS and/or store them inside. Need to confirm the area readiness and the dry-in over areas where these CRAHs will be stored. Going to reach out to QTS on coordinating these for the week of 10/27 from discussions with Layton Supers on estimated timing to receive. / John Capriotti on 2025-10-27 18:10: Starting to coordinate deliveries, pushing for the next two weeks. / allucent_notes_20251104_160200: John Capriotti on 2025-10-14 13:10: From mu understanding the building is not ready to receive these CRAHS and/or store them inside. Need to confirm the area readiness and the dry-in over areas where these CRAHs will be stored. Going to reach out to QTS on coordinating these for the week of 10/27 from discussions with Layton Supers on estimated timing to receive. / John Capriotti on 2025-10-27 18:10: Starting to coordinate deliveries, pushing for the next two weeks. / allucent_notes_20251111_182405: John Capriotti on 2025-10-14 13:10: From mu understanding the building is not ready to receive these CRAHS and/or store them inside. Need to confirm the area readiness and the dry-in over areas where these CRAHs will be stored. Going to reach out to QTS on coordinating these for the week of 10/27 from discussions with Layton Supers on estimated timing to receive. / John Capriotti on 2025-10-27 18:10: Starting to coordinate deliveries, pushing for the next two weeks. / Jason Johnston on 2025-11-11 17:11: John owes me 11/11 update / allucent_notes_20251118_192630: John Capriotti on 2025-10-14 13:10: From mu understanding the building is not ready to receive these CRAHS and/or store them inside. Need to confirm the area readiness and the dry-in over areas where these CRAHs will be stored. Going to reach out to QTS on coordinating these for the week of 10/27 from discussions with Layton Supers on estimated timing to receive. / John Capriotti on 2025-10-27 18:10: Starting to coordinate deliveries, pushing for the next two weeks. / Jason Johnston on 2025-11-11 17:11: John owes me 11/11 update / allucent_notes_20251202_153722: John Capriotti on 2025-10-14 13:10: From mu understanding the building is not ready to receive these CRAHS and/or store them inside. Need to confirm the area readiness and the dry-in over areas where these CRAHs will be stored. Going to reach out to QTS on coordinating these for the week of 10/27 from discussions with Layton Supers on estimated timing to receive. / John Capriotti on 2025-10-27 18:10: Starting to coordinate deliveries, pushing for the next two weeks. / Jason Johnston on 2025-11-11 17:11: John owes me 11/11 update / John Capriotti on 2025-12-02 12:13: Received on 12/2 / allucent_notes: 2025-10-14 13:10 - User: John Capriotti - Date Added: 2025-10-14 13:10 - Note: From mu understanding the building is not ready to receive these CRAHS and/or store them inside. Need to confirm the area readiness and the dry-in over areas where these CRAHs
- QTS-33991: allucent_notes_20251014_152335: John Capriotti on 2025-10-14 13:10: From mu understanding the building is not ready to receive these CRAHS and/or store them inside. Need to confirm the area readiness and the dry-in over areas where these CRAHs will be stored. Going to reach out to QTS on coordinating these for the week of 10/27 from discussions with Layton Supers on estimated timing to receive. / allucent_notes_20251021_145627: John Capriotti on 2025-10-14 13:10: From mu understanding the building is not ready to receive these CRAHS and/or store them inside. Need to confirm the area readiness and the dry-in over areas where these CRAHs will be stored. Going to reach out to QTS on coordinating these for the week of 10/27 from discussions with Layton Supers on estimated timing to receive. / allucent_notes_20251027_224008: John Capriotti on 2025-10-14 13:10: From mu understanding the building is not ready to receive these CRAHS and/or store them inside. Need to confirm the area readiness and the dry-in over areas where these CRAHs will be stored. Going to reach out to QTS on coordinating these for the week of 10/27 from discussions with Layton Supers on estimated timing to receive. / John Capriotti on 2025-10-27 18:10: Starting to coordinate deliveries, pushing for the next two weeks. / allucent_notes_20251028_163138: John Capriotti on 2025-10-14 13:10: From mu understanding the building is not ready to receive these CRAHS and/or store them inside. Need to confirm the area readiness and the dry-in over areas where these CRAHs will be stored. Going to reach out to QTS on coordinating these for the week of 10/27 from discussions with Layton Supers on estimated timing to receive. / John Capriotti on 2025-10-27 18:10: Starting to coordinate deliveries, pushing for the next two weeks. / allucent_notes_20251104_160200: John Capriotti on 2025-10-14 13:10: From mu understanding the building is not ready to receive these CRAHS and/or store them inside. Need to confirm the area readiness and the dry-in over areas where these CRAHs will be stored. Going to reach out to QTS on coordinating these for the week of 10/27 from discussions with Layton Supers on estimated timing to receive. / John Capriotti on 2025-10-27 18:10: Starting to coordinate deliveries, pushing for the next two weeks. / allucent_notes_20251111_182405: John Capriotti on 2025-10-14 13:10: From mu understanding the building is not ready to receive these CRAHS and/or store them inside. Need to confirm the area readiness and the dry-in over areas where these CRAHs will be stored. Going to reach out to QTS on coordinating these for the week of 10/27 from discussions with Layton Supers on estimated timing to receive. / John Capriotti on 2025-10-27 18:10: Starting to coordinate deliveries, pushing for the next two weeks. / Jason Johnston on 2025-11-11 17:11: John owes me 11/11 update / allucent_notes_20251118_192630: John Capriotti on 2025-10-14 13:10: From mu understanding the building is not ready to receive these CRAHS and/or store them inside. Need to confirm the area readiness and the dry-in over areas where these CRAHs will be stored. Going to reach out to QTS on coordinating these for the week of 10/27 from discussions with Layton Supers on estimated timing to receive. / John Capriotti on 2025-10-27 18:10: Starting to coordinate deliveries, pushing for the next two weeks. / Jason Johnston on 2025-11-11 17:11: John owes me 11/11 update / allucent_notes_20251202_153722: John Capriotti on 2025-10-14 13:10: From mu understanding the building is not ready to receive these CRAHS and/or store them inside. Need to confirm the area readiness and the dry-in over areas where these CRAHs will be stored. Going to reach out to QTS on coordinating these for the week of 10/27 from discussions with Layton Supers on estimated timing to receive. / John Capriotti on 2025-10-27 18:10: Starting to coordinate deliveries, pushing for the next two weeks. / Jason Johnston on 2025-11-11 17:11: John owes me 11/11 update / John Capriotti on 2025-12-02 12:15: To be delivered 12/3 / allucent_notes_20251209_203830: John Capriotti on 2025-10-14 13:10: From mu understanding the building is not ready to receive these CRAHS and/or store them inside. Need to confirm the area readiness and the dry-in over areas where these CRAHs will be stored. Going to reach out to QTS on coordinating these for the week of 10/27 from discussions with Layton Supers on estimated timing to receive. / John Capriotti on 2025-10-27 18:10: Starting to coordinate deliveries, pushing for the next two weeks. / Jason Johnston on 2025-11-11 17:11: John owes me 11/11 update / John Capriotti on 2025-12-02 12:15: To be delivered 12/3 / allucent_notes: 2025-10-14 13:10 - User: John Capriotti - Date Added: 2025-10-14 13:10 - Note: From mu understanding the building is not ready to receive these CRAHS and/or store them inside. Need to confirm the area readiness and the dry-in over areas where these CRAHs
- QTS-34001: allucent_notes_20251014_152335: John Capriotti on 2025-10-14 13:10: From mu understanding the building is not ready to receive these CRAHS and/or store them inside. Need to confirm the area readiness and the dry-in over areas where these CRAHs will be stored. Going to reach out to QTS on coordinating these for the week of 10/27 from discussions with Layton Supers on estimated timing to receive. / allucent_notes_20251021_145627: John Capriotti on 2025-10-14 13:10: From mu understanding the building is not ready to receive these CRAHS and/or store them inside. Need to confirm the area readiness and the dry-in over areas where these CRAHs will be stored. Going to reach out to QTS on coordinating these for the week of 10/27 from discussions with Layton Supers on estimated timing to receive. / allucent_notes_20251027_224008: John Capriotti on 2025-10-14 13:10: From mu understanding the building is not ready to receive these CRAHS and/or store them inside. Need to confirm the area readiness and the dry-in over areas where these CRAHs will be stored. Going to reach out to QTS on coordinating these for the week of 10/27 from discussions with Layton Supers on estimated timing to receive. / John Capriotti on 2025-10-27 18:10: Starting to coordinate deliveries, pushing for the next two weeks. / allucent_notes_20251028_163138: John Capriotti on 2025-10-14 13:10: From mu understanding the building is not ready to receive these CRAHS and/or store them inside. Need to confirm the area readiness and the dry-in over areas where these CRAHs will be stored. Going to reach out to QTS on coordinating these for the week of 10/27 from discussions with Layton Supers on estimated timing to receive. / John Capriotti on 2025-10-27 18:10: Starting to coordinate deliveries, pushing for the next two weeks. / allucent_notes_20251104_160200: John Capriotti on 2025-10-14 13:10: From mu understanding the building is not ready to receive these CRAHS and/or store them inside. Need to confirm the area readiness and the dry-in over areas where these CRAHs will be stored. Going to reach out to QTS on coordinating these for the week of 10/27 from discussions with Layton Supers on estimated timing to receive. / John Capriotti on 2025-10-27 18:10: Starting to coordinate deliveries, pushing for the next two weeks. / allucent_notes_20251111_182405: John Capriotti on 2025-10-14 13:10: From mu understanding the building is not ready to receive these CRAHS and/or store them inside. Need to confirm the area readiness and the dry-in over areas where these CRAHs will be stored. Going to reach out to QTS on coordinating these for the week of 10/27 from discussions with Layton Supers on estimated timing to receive. / John Capriotti on 2025-10-27 18:10: Starting to coordinate deliveries, pushing for the next two weeks. / Jason Johnston on 2025-11-11 17:11: John owes me 11/11 update / allucent_notes_20251118_192630: John Capriotti on 2025-10-14 13:10: From mu understanding the building is not ready to receive these CRAHS and/or store them inside. Need to confirm the area readiness and the dry-in over areas where these CRAHs will be stored. Going to reach out to QTS on coordinating these for the week of 10/27 from discussions with Layton Supers on estimated timing to receive. / John Capriotti on 2025-10-27 18:10: Starting to coordinate deliveries, pushing for the next two weeks. / Jason Johnston on 2025-11-11 17:11: John owes me 11/11 update / allucent_notes_20251202_153722: John Capriotti on 2025-10-14 13:10: From mu understanding the building is not ready to receive these CRAHS and/or store them inside. Need to confirm the area readiness and the dry-in over areas where these CRAHs will be stored. Going to reach out to QTS on coordinating these for the week of 10/27 from discussions with Layton Supers on estimated timing to receive. / John Capriotti on 2025-10-27 18:10: Starting to coordinate deliveries, pushing for the next two weeks. / Jason Johnston on 2025-11-11 17:11: John owes me 11/11 update / John Capriotti on 2025-12-02 12:15: To be delivered 12/3 / allucent_notes_20251209_203830: John Capriotti on 2025-10-14 13:10: From mu understanding the building is not ready to receive these CRAHS and/or store them inside. Need to confirm the area readiness and the dry-in over areas where these CRAHs will be stored. Going to reach out to QTS on coordinating these for the week of 10/27 from discussions with Layton Supers on estimated timing to receive. / John Capriotti on 2025-10-27 18:10: Starting to coordinate deliveries, pushing for the next two weeks. / Jason Johnston on 2025-11-11 17:11: John owes me 11/11 update / John Capriotti on 2025-12-02 12:15: To be delivered 12/3 / allucent_notes: 2025-10-14 13:10 - User: John Capriotti - Date Added: 2025-10-14 13:10 - Note: From mu understanding the building is not ready to receive these CRAHS and/or store them inside. Need to confirm the area readiness and the dry-in over areas where these CRAHs
- QTS-34011: allucent_notes_20251014_152335: John Capriotti on 2025-10-14 13:10: From mu understanding the building is not ready to receive these CRAHS and/or store them inside. Need to confirm the area readiness and the dry-in over areas where these CRAHs will be stored. Going to reach out to QTS on coordinating these for the week of 10/27 from discussions with Layton Supers on estimated timing to receive. / allucent_notes_20251021_145627: John Capriotti on 2025-10-14 13:10: From mu understanding the building is not ready to receive these CRAHS and/or store them inside. Need to confirm the area readiness and the dry-in over areas where these CRAHs will be stored. Going to reach out to QTS on coordinating these for the week of 10/27 from discussions with Layton Supers on estimated timing to receive. / allucent_notes_20251027_224008: John Capriotti on 2025-10-14 13:10: From mu understanding the building is not ready to receive these CRAHS and/or store them inside. Need to confirm the area readiness and the dry-in over areas where these CRAHs will be stored. Going to reach out to QTS on coordinating these for the week of 10/27 from discussions with Layton Supers on estimated timing to receive. / John Capriotti on 2025-10-27 18:10: Starting to coordinate deliveries, pushing for the next two weeks. / allucent_notes_20251028_163138: John Capriotti on 2025-10-14 13:10: From mu understanding the building is not ready to receive these CRAHS and/or store them inside. Need to confirm the area readiness and the dry-in over areas where these CRAHs will be stored. Going to reach out to QTS on coordinating these for the week of 10/27 from discussions with Layton Supers on estimated timing to receive. / John Capriotti on 2025-10-27 18:10: Starting to coordinate deliveries, pushing for the next two weeks. / allucent_notes_20251104_160200: John Capriotti on 2025-10-14 13:10: From mu understanding the building is not ready to receive these CRAHS and/or store them inside. Need to confirm the area readiness and the dry-in over areas where these CRAHs will be stored. Going to reach out to QTS on coordinating these for the week of 10/27 from discussions with Layton Supers on estimated timing to receive. / John Capriotti on 2025-10-27 18:10: Starting to coordinate deliveries, pushing for the next two weeks. / allucent_notes_20251111_182405: John Capriotti on 2025-10-14 13:10: From mu understanding the building is not ready to receive these CRAHS and/or store them inside. Need to confirm the area readiness and the dry-in over areas where these CRAHs will be stored. Going to reach out to QTS on coordinating these for the week of 10/27 from discussions with Layton Supers on estimated timing to receive. / John Capriotti on 2025-10-27 18:10: Starting to coordinate deliveries, pushing for the next two weeks. / Jason Johnston on 2025-11-11 17:11: John owes me 11/11 update / allucent_notes_20251118_192630: John Capriotti on 2025-10-14 13:10: From mu understanding the building is not ready to receive these CRAHS and/or store them inside. Need to confirm the area readiness and the dry-in over areas where these CRAHs will be stored. Going to reach out to QTS on coordinating these for the week of 10/27 from discussions with Layton Supers on estimated timing to receive. / John Capriotti on 2025-10-27 18:10: Starting to coordinate deliveries, pushing for the next two weeks. / Jason Johnston on 2025-11-11 17:11: John owes me 11/11 update / allucent_notes_20251202_153722: John Capriotti on 2025-10-14 13:10: From mu understanding the building is not ready to receive these CRAHS and/or store them inside. Need to confirm the area readiness and the dry-in over areas where these CRAHs will be stored. Going to reach out to QTS on coordinating these for the week of 10/27 from discussions with Layton Supers on estimated timing to receive. / John Capriotti on 2025-10-27 18:10: Starting to coordinate deliveries, pushing for the next two weeks. / Jason Johnston on 2025-11-11 17:11: John owes me 11/11 update / John Capriotti on 2025-12-02 12:15: To be delivered 12/3 / allucent_notes_20251209_203830: John Capriotti on 2025-10-14 13:10: From mu understanding the building is not ready to receive these CRAHS and/or store them inside. Need to confirm the area readiness and the dry-in over areas where these CRAHs will be stored. Going to reach out to QTS on coordinating these for the week of 10/27 from discussions with Layton Supers on estimated timing to receive. / John Capriotti on 2025-10-27 18:10: Starting to coordinate deliveries, pushing for the next two weeks. / Jason Johnston on 2025-11-11 17:11: John owes me 11/11 update / John Capriotti on 2025-12-02 12:15: To be delivered 12/3 / allucent_notes: 2025-10-14 13:10 - User: John Capriotti - Date Added: 2025-10-14 13:10 - Note: From mu understanding the building is not ready to receive these CRAHS and/or store them inside. Need to confirm the area readiness and the dry-in over areas where these CRAHs
- QTS-34021: allucent_notes_20251014_152335: John Capriotti on 2025-10-14 13:10: From mu understanding the building is not ready to receive these CRAHS and/or store them inside. Need to confirm the area readiness and the dry-in over areas where these CRAHs will be stored. Going to reach out to QTS on coordinating these for the week of 10/27 from discussions with Layton Supers on estimated timing to receive. / allucent_notes_20251021_145627: John Capriotti on 2025-10-14 13:10: From mu understanding the building is not ready to receive these CRAHS and/or store them inside. Need to confirm the area readiness and the dry-in over areas where these CRAHs will be stored. Going to reach out to QTS on coordinating these for the week of 10/27 from discussions with Layton Supers on estimated timing to receive. / allucent_notes_20251027_224008: John Capriotti on 2025-10-14 13:10: From mu understanding the building is not ready to receive these CRAHS and/or store them inside. Need to confirm the area readiness and the dry-in over areas where these CRAHs will be stored. Going to reach out to QTS on coordinating these for the week of 10/27 from discussions with Layton Supers on estimated timing to receive. / John Capriotti on 2025-10-27 18:10: Starting to coordinate deliveries, pushing for the next two weeks. / allucent_notes_20251028_163138: John Capriotti on 2025-10-14 13:10: From mu understanding the building is not ready to receive these CRAHS and/or store them inside. Need to confirm the area readiness and the dry-in over areas where these CRAHs will be stored. Going to reach out to QTS on coordinating these for the week of 10/27 from discussions with Layton Supers on estimated timing to receive. / John Capriotti on 2025-10-27 18:10: Starting to coordinate deliveries, pushing for the next two weeks. / allucent_notes_20251104_160200: John Capriotti on 2025-10-14 13:10: From mu understanding the building is not ready to receive these CRAHS and/or store them inside. Need to confirm the area readiness and the dry-in over areas where these CRAHs will be stored. Going to reach out to QTS on coordinating these for the week of 10/27 from discussions with Layton Supers on estimated timing to receive. / John Capriotti on 2025-10-27 18:10: Starting to coordinate deliveries, pushing for the next two weeks. / allucent_notes_20251111_182405: John Capriotti on 2025-10-14 13:10: From mu understanding the building is not ready to receive these CRAHS and/or store them inside. Need to confirm the area readiness and the dry-in over areas where these CRAHs will be stored. Going to reach out to QTS on coordinating these for the week of 10/27 from discussions with Layton Supers on estimated timing to receive. / John Capriotti on 2025-10-27 18:10: Starting to coordinate deliveries, pushing for the next two weeks. / Jason Johnston on 2025-11-11 17:11: John owes me 11/11 update / allucent_notes_20251118_192630: John Capriotti on 2025-10-14 13:10: From mu understanding the building is not ready to receive these CRAHS and/or store them inside. Need to confirm the area readiness and the dry-in over areas where these CRAHs will be stored. Going to reach out to QTS on coordinating these for the week of 10/27 from discussions with Layton Supers on estimated timing to receive. / John Capriotti on 2025-10-27 18:10: Starting to coordinate deliveries, pushing for the next two weeks. / Jason Johnston on 2025-11-11 17:11: John owes me 11/11 update / allucent_notes_20251202_153722: John Capriotti on 2025-10-14 13:10: From mu understanding the building is not ready to receive these CRAHS and/or store them inside. Need to confirm the area readiness and the dry-in over areas where these CRAHs will be stored. Going to reach out to QTS on coordinating these for the week of 10/27 from discussions with Layton Supers on estimated timing to receive. / John Capriotti on 2025-10-27 18:10: Starting to coordinate deliveries, pushing for the next two weeks. / Jason Johnston on 2025-11-11 17:11: John owes me 11/11 update / John Capriotti on 2025-12-02 12:15: To be delivered 12/3 / allucent_notes_20251209_203830: John Capriotti on 2025-10-14 13:10: From mu understanding the building is not ready to receive these CRAHS and/or store them inside. Need to confirm the area readiness and the dry-in over areas where these CRAHs will be stored. Going to reach out to QTS on coordinating these for the week of 10/27 from discussions with Layton Supers on estimated timing to receive. / John Capriotti on 2025-10-27 18:10: Starting to coordinate deliveries, pushing for the next two weeks. / Jason Johnston on 2025-11-11 17:11: John owes me 11/11 update / John Capriotti on 2025-12-02 12:15: To be delivered 12/3 / allucent_notes: 2025-10-14 13:10 - User: John Capriotti - Date Added: 2025-10-14 13:10 - Note: From mu understanding the building is not ready to receive these CRAHS and/or store them inside. Need to confirm the area readiness and the dry-in over areas where these CRAHs
- QTS-22241: allucent_notes_20251230_164549: Jason Johnston on 2025-10-28 16:10: Working on crane sequencing for equipment. / John Capriotti on 2025-11-04 15:11: From my understanding we are waiting on a few walls to be finished, meeting tomorrow with Belaire to discuss when and how many to bring in each day. / Jason Johnston on 2025-12-16 15:16: not yet / John Capriotti on 2025-12-30T15:15:54.475Z: Actualizing ROJ: DOAS delivered to QAE yard on 10/2 - technically have it just not delivered to the site from QAE yard until I can confirm set date / allucent_notes_20251028_163138: Jason Johnston on 2025-10-28 16:10: Working on crane sequencing for equipment. / allucent_notes_20251104_160200: Jason Johnston on 2025-10-28 16:10: Working on crane sequencing for equipment. / John Capriotti on 2025-11-04 15:11: From my understanding we are waiting on a few walls to be finished, meeting tomorrow with Belaire to discuss when and how many to bring in each day. / allucent_notes_20251111_182405: Jason Johnston on 2025-10-28 16:10: Working on crane sequencing for equipment. / John Capriotti on 2025-11-04 15:11: From my understanding we are waiting on a few walls to be finished, meeting tomorrow with Belaire to discuss when and how many to bring in each day. / allucent_notes_20251118_192630: Jason Johnston on 2025-10-28 16:10: Working on crane sequencing for equipment. / John Capriotti on 2025-11-04 15:11: From my understanding we are waiting on a few walls to be finished, meeting tomorrow with Belaire to discuss when and how many to bring in each day. / allucent_notes_20251202_153722: Jason Johnston on 2025-10-28 16:10: Working on crane sequencing for equipment. / John Capriotti on 2025-11-04 15:11: From my understanding we are waiting on a few walls to be finished, meeting tomorrow with Belaire to discuss when and how many to bring in each day. / allucent_notes_20251209_203830: Jason Johnston on 2025-10-28 16:10: Working on crane sequencing for equipment. / John Capriotti on 2025-11-04 15:11: From my understanding we are waiting on a few walls to be finished, meeting tomorrow with Belaire to discuss when and how many to bring in each day. / allucent_notes_20251216_165335: Jason Johnston on 2025-10-28 16:10: Working on crane sequencing for equipment. / John Capriotti on 2025-11-04 15:11: From my understanding we are waiting on a few walls to be finished, meeting tomorrow with Belaire to discuss when and how many to bring in each day. / Jason Johnston on 2025-12-16 15:16: not yet / allucent_notes: 2025-10-28 16:10 - User: Jason Johnston - Date Added: 2025-10-28 16:10 - Note: Working on crane sequencing for equipment. / 2025-11-04 15:11 - User: John Capriotti - Date Added: 2025-11-04 15:11 - Note: From my understanding we are waiting on a few walls
- QTS-22251: allucent_notes_20251230_164549: Jason Johnston on 2025-10-28 16:10: Working on crane sequencing for equipment. / John Capriotti on 2025-11-04 15:11: Need to determine when we are setting this, it is sitting in the QAE Yard / Jason Johnston on 2025-11-11 17:11: John owes me 11/11 update / Jason Johnston on 2025-12-16 15:16: not yet / John Capriotti on 2025-12-30T15:16:01.787Z: Actualizing ROJ: DOAS delivered to QAE yard on 10/2 - technically have it just not delivered to the site from QAE yard until I can confirm set date / allucent_notes_20251028_163138: Jason Johnston on 2025-10-28 16:10: Working on crane sequencing for equipment. / allucent_notes_20251104_160200: Jason Johnston on 2025-10-28 16:10: Working on crane sequencing for equipment. / John Capriotti on 2025-11-04 15:11: Need to determine when we are setting this, it is sitting in the QAE Yard / allucent_notes_20251111_182405: Jason Johnston on 2025-10-28 16:10: Working on crane sequencing for equipment. / John Capriotti on 2025-11-04 15:11: Need to determine when we are setting this, it is sitting in the QAE Yard / Jason Johnston on 2025-11-11 17:11: John owes me 11/11 update / allucent_notes_20251118_192630: Jason Johnston on 2025-10-28 16:10: Working on crane sequencing for equipment. / John Capriotti on 2025-11-04 15:11: Need to determine when we are setting this, it is sitting in the QAE Yard / Jason Johnston on 2025-11-11 17:11: John owes me 11/11 update / allucent_notes_20251202_153722: Jason Johnston on 2025-10-28 16:10: Working on crane sequencing for equipment. / John Capriotti on 2025-11-04 15:11: Need to determine when we are setting this, it is sitting in the QAE Yard / Jason Johnston on 2025-11-11 17:11: John owes me 11/11 update / allucent_notes_20251209_203830: Jason Johnston on 2025-10-28 16:10: Working on crane sequencing for equipment. / John Capriotti on 2025-11-04 15:11: Need to determine when we are setting this, it is sitting in the QAE Yard / Jason Johnston on 2025-11-11 17:11: John owes me 11/11 update / allucent_notes_20251216_165335: Jason Johnston on 2025-10-28 16:10: Working on crane sequencing for equipment. / John Capriotti on 2025-11-04 15:11: Need to determine when we are setting this, it is sitting in the QAE Yard / Jason Johnston on 2025-11-11 17:11: John owes me 11/11 update / Jason Johnston on 2025-12-16 15:16: not yet / allucent_notes: 2025-10-28 16:10 - User: Jason Johnston - Date Added: 2025-10-28 16:10 - Note: Working on crane sequencing for equipment. / 2025-11-04 15:11 - User: John Capriotti - Date Added: 2025-11-04 15:11 - Note: Need to determine when we are setting this, it is s
- QTS-34031: allucent_notes_20251111_182405: Jason Johnston on 2025-11-11 17:11: John owes me 11/11 / update / allucent_notes_20251118_192630: Jason Johnston on 2025-11-11 17:11: John owes me 11/11 update / allucent_notes_20251202_153722: Jason Johnston on 2025-11-11 17:11: John owes me 11/11 update / John Capriotti on 2025-12-02 12:15: To be delivered 12/3 / allucent_notes_20251209_203830: Jason Johnston on 2025-11-11 17:11: John owes me 11/11 update / John Capriotti on 2025-12-02 12:15: To be delivered 12/3 / allucent_notes: 2025-11-11 17:11 - User: Jason Johnston - Date Added: 2025-11-11 17:11 - Note: John owes me 11/11 update / 2025-12-02 12:15 - User: John Capriotti - Date Added: 2025-12-02 12:15 - Note: To be delivered 12/3
- QTS-34041: allucent_notes_20251111_182405: Jason Johnston on 2025-11-11 17:11: John owes 11/11 update / allucent_notes_20251118_192630: Jason Johnston on 2025-11-11 17:11: John owes 11/11 update / allucent_notes_20251202_153722: Jason Johnston on 2025-11-11 17:11: John owes 11/11 update / John Capriotti on 2025-12-02 12:15: To be delivered 12/3 / allucent_notes_20251209_203830: Jason Johnston on 2025-11-11 17:11: John owes 11/11 update / John Capriotti on 2025-12-02 12:15: To be delivered 12/3 / allucent_notes: 2025-11-11 17:11 - User: Jason Johnston - Date Added: 2025-11-11 17:11 - Note: John owes 11/11 update / 2025-12-02 12:15 - User: John Capriotti - Date Added: 2025-12-02 12:15 - Note: To be delivered 12/3
- QTS-34051: allucent_notes_20251111_182405: Jason Johnston on 2025-11-11 17:11: John owes 11/11 update / allucent_notes_20251118_192630: Jason Johnston on 2025-11-11 17:11: John owes 11/11 update / allucent_notes_20251202_153722: Jason Johnston on 2025-11-11 17:11: John owes 11/11 update / John Capriotti on 2025-12-02 12:16: To be delivered 12/4 / allucent_notes_20251209_203830: Jason Johnston on 2025-11-11 17:11: John owes 11/11 update / John Capriotti on 2025-12-02 12:16: To be delivered 12/4 / allucent_notes: 2025-11-11 17:11 - User: Jason Johnston - Date Added: 2025-11-11 17:11 - Note: John owes 11/11 update / 2025-12-02 12:16 - User: John Capriotti - Date Added: 2025-12-02 12:16 - Note: To be delivered 12/4
- QTS-34061: allucent_notes_20251111_182405: Jason Johnston on 2025-11-11 17:11: John owes 11/11 update / allucent_notes_20251118_192630: Jason Johnston on 2025-11-11 17:11: John owes 11/11 update / allucent_notes_20251202_153722: Jason Johnston on 2025-11-11 17:11: John owes 11/11 update / John Capriotti on 2025-12-02 12:16: To be delivered 12/4 / allucent_notes_20251209_203830: Jason Johnston on 2025-11-11 17:11: John owes 11/11 update / John Capriotti on 2025-12-02 12:16: To be delivered 12/4 / allucent_notes: 2025-11-11 17:11 - User: Jason Johnston - Date Added: 2025-11-11 17:11 - Note: John owes 11/11 update / 2025-12-02 12:16 - User: John Capriotti - Date Added: 2025-12-02 12:16 - Note: To be delivered 12/4
- QTS-34071: allucent_notes_20251111_182405: Jason Johnston on 2025-11-11 17:11: John owes 11/11 update / allucent_notes_20251118_192630: Jason Johnston on 2025-11-11 17:11: John owes 11/11 update / allucent_notes_20251202_153722: Jason Johnston on 2025-11-11 17:11: John owes 11/11 update / John Capriotti on 2025-12-02 12:16: To be delivered 12/4 / allucent_notes_20251209_203830: Jason Johnston on 2025-11-11 17:11: John owes 11/11 update / John Capriotti on 2025-12-02 12:16: To be delivered 12/4 / allucent_notes: 2025-11-11 17:11 - User: Jason Johnston - Date Added: 2025-11-11 17:11 - Note: John owes 11/11 update / 2025-12-02 12:16 - User: John Capriotti - Date Added: 2025-12-02 12:16 - Note: To be delivered 12/4
- QTS-34081: allucent_notes_20251111_182405: Jason Johnston on 2025-11-11 17:11: John owes 11/11 update / allucent_notes_20251118_192630: Jason Johnston on 2025-11-11 17:11: John owes 11/11 update / allucent_notes_20251202_153722: Jason Johnston on 2025-11-11 17:11: John owes 11/11 update / John Capriotti on 2025-12-02 12:16: To be delivered 12/4 / allucent_notes_20251209_203830: Jason Johnston on 2025-11-11 17:11: John owes 11/11 update / John Capriotti on 2025-12-02 12:16: To be delivered 12/4 / allucent_notes: 2025-11-11 17:11 - User: Jason Johnston - Date Added: 2025-11-11 17:11 - Note: John owes 11/11 update / 2025-12-02 12:16 - User: John Capriotti - Date Added: 2025-12-02 12:16 - Note: To be delivered 12/4
- QTS-34091: allucent_notes_20251111_182405: Jason Johnston on 2025-11-11 17:11: John owes 11/11 update / allucent_notes_20251118_192630: Jason Johnston on 2025-11-11 17:11: John owes 11/11 update / allucent_notes_20251202_153722: Jason Johnston on 2025-11-11 17:11: John owes 11/11 update / John Capriotti on 2025-12-02 12:16: To be delivered 12/4 / allucent_notes_20251209_203830: Jason Johnston on 2025-11-11 17:11: John owes 11/11 update / John Capriotti on 2025-12-02 12:16: To be delivered 12/4 / allucent_notes: 2025-11-11 17:11 - User: Jason Johnston - Date Added: 2025-11-11 17:11 - Note: John owes 11/11 update / 2025-12-02 12:16 - User: John Capriotti - Date Added: 2025-12-02 12:16 - Note: To be delivered 12/4
- QTS-34101: allucent_notes_20251111_182405: Jason Johnston on 2025-11-11 17:11: John owes 11/11 update / allucent_notes_20251118_192630: Jason Johnston on 2025-11-11 17:11: John owes 11/11 update / allucent_notes_20251202_153722: Jason Johnston on 2025-11-11 17:11: John owes 11/11 update / John Capriotti on 2025-12-02 12:17: To be delivered 12/4 / allucent_notes_20251209_203830: Jason Johnston on 2025-11-11 17:11: John owes 11/11 update / John Capriotti on 2025-12-02 12:17: To be delivered 12/4 / allucent_notes: 2025-11-11 17:11 - User: Jason Johnston - Date Added: 2025-11-11 17:11 - Note: John owes 11/11 update / 2025-12-02 12:17 - User: John Capriotti - Date Added: 2025-12-02 12:17 - Note: To be delivered 12/4
- QTS-34111: allucent_notes_20251111_182405: Jason Johnston on 2025-11-11 17:11: John owes 11/11 update / allucent_notes_20251118_192630: Jason Johnston on 2025-11-11 17:11: John owes 11/11 update / allucent_notes_20251202_153722: Jason Johnston on 2025-11-11 17:11: John owes 11/11 update / John Capriotti on 2025-12-02 12:17: To be delivered 12/5 / allucent_notes_20251209_203830: Jason Johnston on 2025-11-11 17:11: John owes 11/11 update / John Capriotti on 2025-12-02 12:17: To be delivered 12/5 / allucent_notes: 2025-11-11 17:11 - User: Jason Johnston - Date Added: 2025-11-11 17:11 - Note: John owes 11/11 update / 2025-12-02 12:17 - User: John Capriotti - Date Added: 2025-12-02 12:17 - Note: To be delivered 12/5
- QTS-34121: allucent_notes_20251111_182405: Jason Johnston on 2025-11-11 17:11: John owes 11/11 update / allucent_notes_20251118_192630: Jason Johnston on 2025-11-11 17:11: John owes 11/11 update / allucent_notes_20251202_153722: Jason Johnston on 2025-11-11 17:11: John owes 11/11 update / John Capriotti on 2025-12-02 12:17: To be delivered 12/5 / allucent_notes_20251209_203830: Jason Johnston on 2025-11-11 17:11: John owes 11/11 update / John Capriotti on 2025-12-02 12:17: To be delivered 12/5 / allucent_notes: 2025-11-11 17:11 - User: Jason Johnston - Date Added: 2025-11-11 17:11 - Note: John owes 11/11 update / 2025-12-02 12:17 - User: John Capriotti - Date Added: 2025-12-02 12:17 - Note: To be delivered 12/5
- QTS-34131: allucent_notes_20251111_182405: Jason Johnston on 2025-11-11 17:11: John owes 11/11 update / allucent_notes_20251118_192630: Jason Johnston on 2025-11-11 17:11: John owes 11/11 update / allucent_notes_20251202_153722: Jason Johnston on 2025-11-11 17:11: John owes 11/11 update / John Capriotti on 2025-12-02 12:17: To be delivered 12/5 / allucent_notes_20251209_203830: Jason Johnston on 2025-11-11 17:11: John owes 11/11 update / John Capriotti on 2025-12-02 12:17: To be delivered 12/5 / allucent_notes: 2025-11-11 17:11 - User: Jason Johnston - Date Added: 2025-11-11 17:11 - Note: John owes 11/11 update / 2025-12-02 12:17 - User: John Capriotti - Date Added: 2025-12-02 12:17 - Note: To be delivered 12/5
- QTS-34141: allucent_notes_20251111_182405: Jason Johnston on 2025-11-11 17:11: John owes 11/11 update / allucent_notes_20251118_192630: Jason Johnston on 2025-11-11 17:11: John owes 11/11 update / allucent_notes_20251202_153722: Jason Johnston on 2025-11-11 17:11: John owes 11/11 update / John Capriotti on 2025-12-02 12:17: To be delivered 12/5 / allucent_notes_20251209_203830: Jason Johnston on 2025-11-11 17:11: John owes 11/11 update / John Capriotti on 2025-12-02 12:17: To be delivered 12/5 / allucent_notes: 2025-11-11 17:11 - User: Jason Johnston - Date Added: 2025-11-11 17:11 - Note: John owes 11/11 update / 2025-12-02 12:17 - User: John Capriotti - Date Added: 2025-12-02 12:17 - Note: To be delivered 12/5
- QTS-34151: allucent_notes_20251111_182405: Jason Johnston on 2025-11-11 17:11: John owes 11/11 update / allucent_notes_20251118_192630: Jason Johnston on 2025-11-11 17:11: John owes 11/11 update / allucent_notes_20251202_153722: Jason Johnston on 2025-11-11 17:11: John owes 11/11 update / John Capriotti on 2025-12-02 12:17: To be delivered 12/5 / allucent_notes_20251209_203830: Jason Johnston on 2025-11-11 17:11: John owes 11/11 update / John Capriotti on 2025-12-02 12:17: To be delivered 12/5 / allucent_notes: 2025-11-11 17:11 - User: Jason Johnston - Date Added: 2025-11-11 17:11 - Note: John owes 11/11 update / 2025-12-02 12:17 - User: John Capriotti - Date Added: 2025-12-02 12:17 - Note: To be delivered 12/5
- QTS-34161: allucent_notes_20251111_182405: Jason Johnston on 2025-11-11 17:11: John owes 11/11 update / allucent_notes_20251118_192630: Jason Johnston on 2025-11-11 17:11: John owes 11/11 update / allucent_notes_20251202_153722: Jason Johnston on 2025-11-11 17:11: John owes 11/11 update / John Capriotti on 2025-12-02 12:17: To be delivered 12/5 / allucent_notes_20251209_203830: Jason Johnston on 2025-11-11 17:11: John owes 11/11 update / John Capriotti on 2025-12-02 12:17: To be delivered 12/5 / allucent_notes: 2025-11-11 17:11 - User: Jason Johnston - Date Added: 2025-11-11 17:11 - Note: John owes 11/11 update / 2025-12-02 12:17 - User: John Capriotti - Date Added: 2025-12-02 12:17 - Note: To be delivered 12/5

| ID | WBS | Activity | Duration | Start | Finish | Predecessors | Complete | Remaining | Planned start | Planned finish | Total float | Free float | Expected finish | Precon Phase | Project Section-1 | Baseline | Layton Responsible Party | Project Section | Allucent CSI Group |
| --- | --- | --- | --- | --- | --- | --- | --- | --- | --- | --- | --- | --- | --- | --- | --- | --- | --- | --- | --- |
|  | 1 | **A21 Lineup** |  | 2025-07-07 | 2026-01-29 |  |  |  |  |  |  |  |  |  |  |  |  |  |  |
| QTS-20691 |  | DH 2100 / A21 Lineup // Chiller #1RT40-A21 | 20d | 2025-07-07 A | 2025-08-07 A | QTS-1371 | 100% |  | 2025-07-07 | 2025-08-01 |  |  |  | OFCI Procurement | Preconstruction | GMP | Chris Perales | Preconstruction | 01ADMIN |
| QTS-31441 |  | DH 2100 / A21 Lineup // 600A MOD #A21-03 (CRAH Support) | 7d | 2025-07-21 A | 2025-07-29 A | QTS-1371 | 100% |  |  |  |  |  |  | OFCI Procurement | Preconstruction | GMP | Chris Perales | Preconstruction | 01ADMIN |
| QTS-25011 |  | DH 2100 / A21 Lineup // 225A MOD #A21-02 (Liquid to Chip Support) | 20d | 2025-09-15 A | 2025-09-16 A | QTS-1371 | 100% |  | 2025-09-15 | 2025-10-10 |  |  |  | OFCI Procurement | Preconstruction | GMP | Chris Perales | Preconstruction | 01ADMIN |
| QTS-23841 |  | DH 2100 / A21 Lineup // UPS Container #A21 | 20d | 2025-09-19 A | 2025-10-27 A | QTS-1371 | 100% |  | 2025-09-19 | 2025-10-16 |  |  |  | OFCI Procurement | Preconstruction | GMP | Chris Perales | Preconstruction | 01ADMIN |
| QTS-24201 |  | DH 2100 / A21 Lineup // 2500KVA Padmount XFMR #A21 | 20d | 2025-10-01 A | 2025-10-20 A | QTS-1371 | 100% |  | 2025-10-01 | 2025-10-28 |  |  |  | OFCI Procurement | Preconstruction | GMP | Chris Perales | Preconstruction | 01ADMIN |
| QTS-24431 |  | DH 2100 / A21 Lineup // Assembly - Tank #GEN-A21 | 20d | 2025-10-06 A | 2025-11-10 A | QTS-1371 | 100% |  | 2025-10-06 | 2025-10-31 |  |  |  | OFCI Procurement | Preconstruction |  | Chris Perales | Preconstruction | 01ADMIN |
| QTS-24441 |  | DH 2100 / A21 Lineup // Assembly - Engine #GEN-A21 | 20d | 2025-10-06 A | 2025-11-10 A | QTS-1371 | 100% |  | 2025-10-06 | 2025-10-31 |  |  |  | OFCI Procurement | Preconstruction |  | Chris Perales | Preconstruction | 01ADMIN |
| QTS-24451 |  | DH 2100 / A21 Lineup // Assembly - SCR #GEN-A21 | 20d | 2025-10-06 A | 2026-01-29 | QTS-1371 | 45% | 11d | 2025-10-06 | 2025-10-31 | 15d | 0d | 2026-01-29 | OFCI Procurement | Preconstruction |  | Chris Perales | Preconstruction | 01ADMIN |
| QTS-24461 |  | DH 2100 / A21 Lineup // Assembly - Housing #GEN-A21 | 20d | 2025-10-06 A | 2025-11-10 A | QTS-1371 | 100% |  | 2025-10-06 | 2025-10-31 |  |  |  | OFCI Procurement | Preconstruction |  | Chris Perales | Preconstruction | 01ADMIN |
| QTS-32751 |  | DH 2100 / A21 Lineup // Skid #A21 | 20d | 2025-10-16 A | 2025-11-26 A | QTS-1371 | 100% |  | 2025-10-16 | 2025-11-12 |  |  |  | OFCI Procurement | Preconstruction | GMP | Chris Perales | Preconstruction | 01ADMIN |
|  | 2 | **B21 Lineup** |  | 2025-07-07 | 2026-01-29 |  |  |  |  |  |  |  |  |  |  |  |  |  |  |
| QTS-36161 |  | DH 2100 / B21 Lineup // Chiller #1RT40-B21 | 20d | 2025-07-07 A | 2025-08-07 A | QTS-1371 | 100% |  | 2025-07-07 | 2025-08-01 |  |  |  | OFCI Procurement | Preconstruction | GMP | Chris Perales | Preconstruction | 01ADMIN |
| QTS-36211 |  | DH 2100 / B21 Lineup // 600A MOD #B21-03 (CRAH Support) | 20d | 2025-07-21 A | 2025-07-29 A | QTS-1371 | 100% |  | 2025-09-15 | 2025-10-10 |  |  |  | OFCI Procurement | Preconstruction | GMP | Chris Perales | Preconstruction | 01ADMIN |
| QTS-36201 |  | DH 2100 / B21 Lineup // 225A MOD #B21-02 (Liquid to Chip Support) | 20d | 2025-09-15 A | 2025-09-16 A | QTS-1371 | 100% |  | 2025-09-15 | 2025-10-10 |  |  |  | OFCI Procurement | Preconstruction | GMP | Chris Perales | Preconstruction | 01ADMIN |
| QTS-36171 |  | DH 2100 / B21 Lineup // UPS Container #B21 | 20d | 2025-09-19 A | 2025-10-28 A | QTS-1371 | 100% |  | 2025-09-19 | 2025-10-16 |  |  |  | OFCI Procurement | Preconstruction | GMP | Chris Perales | Preconstruction | 01ADMIN |
| QTS-36181 |  | DH 2100 / B21 Lineup // 2500KVA Padmount XFMR #B21 | 20d | 2025-10-01 A | 2025-10-20 A | QTS-1371 | 100% |  | 2025-10-01 | 2025-10-28 |  |  |  | OFCI Procurement | Preconstruction | GMP | Chris Perales | Preconstruction | 01ADMIN |
| QTS-39411 |  | DH 2100 / B21 Lineup // Assembly - Tank #GEN-B21 | 20d | 2025-10-07 A | 2025-11-11 A | QTS-1371 | 100% |  | 2025-10-07 | 2025-11-03 |  |  |  | OFCI Procurement | Preconstruction |  | Chris Perales | Preconstruction | 01ADMIN |
| QTS-39421 |  | DH 2100 / B21 Lineup // Assembly - Engine #GEN-B21 | 20d | 2025-10-07 A | 2025-11-11 A | QTS-1371 | 100% |  | 2025-10-07 | 2025-11-03 |  |  |  | OFCI Procurement | Preconstruction |  | Chris Perales | Preconstruction | 01ADMIN |
| QTS-39431 |  | DH 2100 / B21 Lineup // Assembly - SCR #GEN-B21 | 20d | 2025-10-07 A | 2026-01-29 | QTS-1371 | 45% | 11d | 2025-10-07 | 2025-11-03 | 15d | 0d | 2026-01-29 | OFCI Procurement | Preconstruction |  | Chris Perales | Preconstruction | 01ADMIN |
| QTS-39441 |  | DH 2100 / B21 Lineup // Assembly - Housing #GEN-B21 | 20d | 2025-10-07 A | 2025-11-11 A | QTS-1371 | 100% |  | 2025-10-07 | 2025-11-03 |  |  |  | OFCI Procurement | Preconstruction |  | Chris Perales | Preconstruction | 01ADMIN |
| QTS-36221 |  | DH 2100 / B21 Lineup // Skid #B21 | 20d | 2025-10-22 A | 2025-11-26 A | QTS-1371 | 100% |  | 2025-10-22 | 2025-11-18 |  |  |  | OFCI Procurement | Preconstruction | GMP | Chris Perales | Preconstruction | 01ADMIN |
|  | 3 | **C21 Lineup** |  | 2025-07-07 | 2025-11-26 |  |  |  |  |  |  |  |  |  |  |  |  |  |  |
| QTS-36231 |  | DH 2100 / C21 Lineup // Chiller #1RT40-C21 | 20d | 2025-07-07 A | 2025-08-07 A | QTS-1371 | 100% |  | 2025-07-07 | 2025-08-01 |  |  |  | OFCI Procurement | Preconstruction | GMP | Chris Perales | Preconstruction | 01ADMIN |
| QTS-36281 |  | DH 2100 / C21 Lineup // 600A MOD #C21-03 (CRAH Support) | 20d | 2025-07-21 A | 2025-07-29 A | QTS-1371 | 100% |  | 2025-09-15 | 2025-10-10 |  |  |  | OFCI Procurement | Preconstruction | GMP | Chris Perales | Preconstruction | 01ADMIN |
| QTS-36271 |  | DH 2100 / C21 Lineup // 225A MOD #C21-02 (Liquid to Chip Support) | 20d | 2025-09-15 A | 2025-09-16 A | QTS-1371 | 100% |  | 2025-09-15 | 2025-10-10 |  |  |  | OFCI Procurement | Preconstruction | GMP | Chris Perales | Preconstruction | 01ADMIN |
| QTS-36241 |  | DH 2100 / C21 Lineup // UPS Container #C21 | 20d | 2025-09-19 A | 2025-10-28 A | QTS-1371 | 100% |  | 2025-09-19 | 2025-10-16 |  |  |  | OFCI Procurement | Preconstruction | GMP | Chris Perales | Preconstruction | 01ADMIN |
| QTS-36251 |  | DH 2100 / C21 Lineup // 2500KVA Padmount XFMR #C21 | 20d | 2025-10-01 A | 2025-10-20 A | QTS-1371 | 100% |  | 2025-10-01 | 2025-10-28 |  |  |  | OFCI Procurement | Preconstruction | GMP | Chris Perales | Preconstruction | 01ADMIN |
| QTS-39501 |  | DH 2100 / C21 Lineup // Assembly - Tank #GEN-C21 | 20d | 2025-10-08 A | 2025-11-11 A | QTS-1371 | 100% |  | 2025-10-08 | 2025-11-04 |  |  |  | OFCI Procurement | Preconstruction |  | Chris Perales | Preconstruction | 01ADMIN |
| QTS-39511 |  | DH 2100 / C21 Lineup // Assembly - Engine #GEN-C21 | 20d | 2025-10-08 A | 2025-11-13 A | QTS-1371 | 100% |  | 2025-10-08 | 2025-11-04 |  |  |  | OFCI Procurement | Preconstruction |  | Chris Perales | Preconstruction | 01ADMIN |
| QTS-39521 |  | DH 2100 / C21 Lineup // Assembly - SER #GEN-C21 | 20d | 2025-10-08 A | 2025-11-11 A | QTS-1371 | 100% |  | 2025-10-08 | 2025-11-04 |  |  |  | OFCI Procurement | Preconstruction |  | Chris Perales | Preconstruction | 01ADMIN |
| QTS-39531 |  | DH 2100 / C21 Lineup // Assembly - Housing #GEN-C21 | 20d | 2025-10-08 A | 2025-11-11 A | QTS-1371 | 100% |  | 2025-10-08 | 2025-11-04 |  |  |  | OFCI Procurement | Preconstruction |  | Chris Perales | Preconstruction | 01ADMIN |
| QTS-36291 |  | DH 2100 / C21 Lineup // Skid #C21 | 20d | 2025-10-28 A | 2025-11-26 A | QTS-1371 | 100% |  | 2025-10-28 | 2025-11-24 |  |  |  | OFCI Procurement | Preconstruction | GMP | Chris Perales | Preconstruction | 01ADMIN |

Notes:
- QTS-20691: allucent_notes: John Capriotti on 2025-08-12 15:08: Chiller received by Belaire/taken out of QAE Yard on 8/7 to set. / allucent_notes: 2025-08-12 15:08 - User: John Capriotti - Date Added: 2025-08-12 15:08 - Note: Chiller received by Belaire/taken out of QAE Yard on 8/7 to set.
- QTS-23841: allucent_notes_20251027_224008: John Capriotti on 2025-10-27 18:10: Set today 10/27 / allucent_notes: 2025-10-27 18:10 - User: John Capriotti - Date Added: 2025-10-27 18:10 - Note: Set today 10/27
- QTS-24201: allucent_notes_20251028_163138: John Capriotti on 2025-10-28 15:10: Received and set XFMR A21 on 10/21. / allucent_notes: 2025-10-28 15:10 - User: John Capriotti - Date Added: 2025-10-28 15:10 - Note: Received and set XFMR A21 on 10/21.
- QTS-24431: allucent_notes_20251104_160200: John Capriotti on 2025-11-04 14:11: Plan is to receive and set this on 11/10 / allucent_notes_20251111_182405: John Capriotti on 2025-11-04 14:11: Plan is to receive and set this on 11/10 / allucent_notes_20251118_192630: John Capriotti on 2025-11-04 14:11: Plan is to receive and set this on 11/10 / allucent_notes: 2025-11-04 14:11 - User: John Capriotti - Date Added: 2025-11-04 14:11 - Note: Plan is to receive and set this on 11/10
- QTS-24441: allucent_notes_20251104_160200: John Capriotti on 2025-11-04 14:11: Plan is to receive and set this on 11/10 / allucent_notes_20251111_182405: John Capriotti on 2025-11-04 14:11: Plan is to receive and set this on 11/10 / allucent_notes_20251118_192630: John Capriotti on 2025-11-04 14:11: Plan is to receive and set this on 11/10 / allucent_notes: 2025-11-04 14:11 - User: John Capriotti - Date Added: 2025-11-04 14:11 - Note: Plan is to receive and set this on 11/10
- QTS-24451: allucent_notes_20251230_164549: John Capriotti on 2025-11-04 14:11: Plan is to receive and set this on 11/10 / Jason Johnston on 2025-11-11 17:11: John owes 11/11 update / John Capriotti on 2025-12-09 12:39: Pending confirmation on timing from Belaire on this. Followed up on 12/9. / Jason Johnston on 2025-12-16 15:16: not yet / John Capriotti on 2025-12-30 10:37: SCRs will be delivered when we are ready to set. The Mfg/Vendor has these located in their yard in Texas, but we are not going to ship all of these to site to store and then mobilize a separate crane and additional trucks to bring to the building. That would be a decent cost and significantly more coordination, with no added benefit. / Ultimately, I, John Capriotti (OFCI), need an update from the Subs/Supers as to when we intend to set them so I can schedule the delivery to support those set dates. / **I will press for updated dates on these, moving out as I work on getting estimated set dates. / allucent_notes_20251104_160200: John Capriotti on 2025-11-04 14:11: Plan is to receive and set this on 11/10 / allucent_notes_20251111_182405: John Capriotti on 2025-11-04 14:11: Plan is to receive and set this on 11/10 / Jason Johnston on 2025-11-11 17:11: John owes 11/11 update / allucent_notes_20251118_192630: John Capriotti on 2025-11-04 14:11: Plan is to receive and set this on 11/10 / Jason Johnston on 2025-11-11 17:11: John owes 11/11 update / allucent_notes_20251202_153722: John Capriotti on 2025-11-04 14:11: Plan is to receive and set this on 11/10 / Jason Johnston on 2025-11-11 17:11: John owes 11/11 update / allucent_notes_20251209_203830: John Capriotti on 2025-11-04 14:11: Plan is to receive and set this on 11/10 / Jason Johnston on 2025-11-11 17:11: John owes 11/11 update / John Capriotti on 2025-12-09 12:39: Pending confirmation on timing from Belaire on this. Followed up on 12/9. / allucent_notes_20251216_165335: John Capriotti on 2025-11-04 14:11: Plan is to receive and set this on 11/10 / Jason Johnston on 2025-11-11 17:11: John owes 11/11 update / John Capriotti on 2025-12-09 12:39: Pending confirmation on timing from Belaire on this. Followed up on 12/9. / Jason Johnston on 2025-12-16 15:16: not yet / allucent_notes: 2025-11-04 14:11 - User: John Capriotti - Date Added: 2025-11-04 14:11 - Note: Plan is to receive and set this on 11/10 / 2025-11-11 17:11 - User: Jason Johnston - Date Added: 2025-11-11 17:11 - Note: John owes 11/11 update / 2025-12-09 12:39 - User: Jo
- QTS-24461: allucent_notes_20251104_160200: John Capriotti on 2025-11-04 14:11: Plan is to receive and set this on 11/10 / allucent_notes_20251111_182405: John Capriotti on 2025-11-04 14:11: Plan is to receive and set this on 11/10 / allucent_notes_20251118_192630: John Capriotti on 2025-11-04 14:11: Plan is to receive and set this on 11/10 / allucent_notes: 2025-11-04 14:11 - User: John Capriotti - Date Added: 2025-11-04 14:11 - Note: Plan is to receive and set this on 11/10
- QTS-36161: allucent_notes: John Capriotti on 2025-08-12 15:08: Chiller received by Belaire/taken out of QAE Yard on 8/7 to set. / allucent_notes: 2025-08-12 15:08 - User: John Capriotti - Date Added: 2025-08-12 15:08 - Note: Chiller received by Belaire/taken out of QAE Yard on 8/7 to set.
- QTS-36171: allucent_notes_20251027_224008: John Capriotti on 2025-10-27 18:10: Received on-site 10/27, planning to set 10/28 / Jason Johnston on 2025-10-27 22:10: No update from John Capriotti / allucent_notes_20251028_163138: John Capriotti on 2025-10-27 18:10: Received on-site 10/27, planning to set 10/28 / Jason Johnston on 2025-10-27 22:10: No update from John Capriotti / allucent_notes: 2025-10-27 18:10 - User: John Capriotti - Date Added: 2025-10-27 18:10 - Note: Received on-site 10/27, planning to set 10/28 / 2025-10-27 22:10 - User: Jason Johnston - Date Added: 2025-10-27 22:10 - Note: No update from John Capriotti
- QTS-36181: allucent_notes_20251028_163138: John Capriotti on 2025-10-28 15:10: Received and set on 10/20. / allucent_notes: 2025-10-28 15:10 - User: John Capriotti - Date Added: 2025-10-28 15:10 - Note: Received and set on 10/20.
- QTS-39411: allucent_notes_20251104_160200: John Capriotti on 2025-11-04 14:11: Plan is to receive and set this on 11/11 / allucent_notes_20251111_182405: John Capriotti on 2025-11-04 14:11: Plan is to receive and set this on 11/11 / John Capriotti on 2025-11-11 12:11: Received on 11/11 / allucent_notes_20251118_192630: John Capriotti on 2025-11-04 14:11: Plan is to receive and set this on 11/11 / John Capriotti on 2025-11-11 12:11: Received on 11/11 / allucent_notes: 2025-11-04 14:11 - User: John Capriotti - Date Added: 2025-11-04 14:11 - Note: Plan is to receive and set this on 11/11 / 2025-11-11 12:11 - User: John Capriotti - Date Added: 2025-11-11 12:11 - Note: Received on 11/11
- QTS-39421: allucent_notes_20251104_160200: John Capriotti on 2025-11-04 14:11: Plan is to receive and set this on 11/11 / allucent_notes_20251111_182405: John Capriotti on 2025-11-04 14:11: Plan is to receive and set this on 11/11 / allucent_notes_20251118_192630: John Capriotti on 2025-11-04 14:11: Plan is to receive and set this on 11/11 / allucent_notes: 2025-11-04 14:11 - User: John Capriotti - Date Added: 2025-11-04 14:11 - Note: Plan is to receive and set this on 11/11
- QTS-39431: allucent_notes_20251230_164549: John Capriotti on 2025-11-04 14:11: Plan is to receive and set this on 11/11 / Jason Johnston on 2025-11-11 17:11: John owes 11/11 update / John Capriotti on 2025-12-09 12:39: Pending confirmation on timing from Belaire on this. Followed up on 12/9. / John Capriotti on 2025-12-09 12:40: Pending confirmation on timing from Belaire on this. Followed up on 12/9. / Jason Johnston on 2025-12-16 15:16: not yet / John Capriotti on 2025-12-30 10:37: SCRs will be delivered when we are ready to set. The Mfg/Vendor has these located in their yard in Texas, but we are not going to ship all of these to site to store and then mobilize a separate crane and additional trucks to bring to the building. That would be a decent cost and significantly more coordination, with no added benefit. / Ultimately, I, John Capriotti (OFCI), need an update from the Subs/Supers as to when we intend to set them so I can schedule the delivery to support those set dates. / **I will press for updated dates on these, moving out as I work on getting estimated set dates. / allucent_notes_20251104_160200: John Capriotti on 2025-11-04 14:11: Plan is to receive and set this on 11/11 / allucent_notes_20251111_182405: John Capriotti on 2025-11-04 14:11: Plan is to receive and set this on 11/11 / Jason Johnston on 2025-11-11 17:11: John owes 11/11 update / allucent_notes_20251118_192630: John Capriotti on 2025-11-04 14:11: Plan is to receive and set this on 11/11 / Jason Johnston on 2025-11-11 17:11: John owes 11/11 update / allucent_notes_20251202_153722: John Capriotti on 2025-11-04 14:11: Plan is to receive and set this on 11/11 / Jason Johnston on 2025-11-11 17:11: John owes 11/11 update / allucent_notes_20251209_203830: John Capriotti on 2025-11-04 14:11: Plan is to receive and set this on 11/11 / Jason Johnston on 2025-11-11 17:11: John owes 11/11 update / John Capriotti on 2025-12-09 12:39: Pending confirmation on timing from Belaire on this. Followed up on 12/9. / John Capriotti on 2025-12-09 12:40: Pending confirmation on timing from Belaire on this. Followed up on 12/9. / allucent_notes_20251216_165335: John Capriotti on 2025-11-04 14:11: Plan is to receive and set this on 11/11 / Jason Johnston on 2025-11-11 17:11: John owes 11/11 update / John Capriotti on 2025-12-09 12:39: Pending confirmation on timing from Belaire on this. Followed up on 12/9. / John Capriotti on 2025-12-09 12:40: Pending confirmation on timing from Belaire on this. Followed up on 12/9. / Jason Johnston on 2025-12-16 15:16: not yet / allucent_notes: 2025-11-04 14:11 - User: John Capriotti - Date Added: 2025-11-04 14:11 - Note: Plan is to receive and set this on 11/11 / 2025-11-11 17:11 - User: Jason Johnston - Date Added: 2025-11-11 17:11 - Note: John owes 11/11 update / 2025-12-09 12:39 - User: Jo
- QTS-39441: allucent_notes_20251104_160200: John Capriotti on 2025-11-04 14:11: Plan is to receive and set this on 11/11 / allucent_notes_20251111_182405: John Capriotti on 2025-11-04 14:11: Plan is to receive and set this on 11/11 / allucent_notes_20251118_192630: John Capriotti on 2025-11-04 14:11: Plan is to receive and set this on 11/11 / allucent_notes: 2025-11-04 14:11 - User: John Capriotti - Date Added: 2025-11-04 14:11 - Note: Plan is to receive and set this on 11/11
- QTS-36231: allucent_notes: John Capriotti on 2025-08-12 15:08: Chiller received by Belaire/taken out of QAE Yard on 8/7 to set. / allucent_notes: 2025-08-12 15:08 - User: John Capriotti - Date Added: 2025-08-12 15:08 - Note: Chiller received by Belaire/taken out of QAE Yard on 8/7 to set.
- QTS-36241: allucent_notes_20251027_224008: Jason Johnston on 2025-10-27 22:10: No update from John Capriotti / allucent_notes_20251028_163138: Jason Johnston on 2025-10-27 22:10: No update from John Capriotti / allucent_notes: 2025-10-27 22:10 - User: Jason Johnston - Date Added: 2025-10-27 22:10 - Note: No update from John Capriotti
- QTS-36251: allucent_notes_20251028_163138: John Capriotti on 2025-10-28 15:10: Received and set on 10/20. / allucent_notes: 2025-10-28 15:10 - User: John Capriotti - Date Added: 2025-10-28 15:10 - Note: Received and set on 10/20.
- QTS-39501: allucent_notes_20251104_160200: John Capriotti on 2025-11-04 14:11: Plan is to receive and set this on 11/11 / allucent_notes_20251111_182405: John Capriotti on 2025-11-04 14:11: Plan is to receive and set this on 11/11 / allucent_notes_20251118_192630: John Capriotti on 2025-11-04 14:11: Plan is to receive and set this on 11/11 / allucent_notes: 2025-11-04 14:11 - User: John Capriotti - Date Added: 2025-11-04 14:11 - Note: Plan is to receive and set this on 11/11
- QTS-39511: allucent_notes_20251104_160200: John Capriotti on 2025-11-04 14:11: Plan is to receive and set this on 11/11 / allucent_notes_20251111_182405: John Capriotti on 2025-11-04 14:11: Plan is to receive and set this on 11/11 / Jason Johnston on 2025-11-11 17:11: John owes 11/11 update / allucent_notes_20251118_192630: John Capriotti on 2025-11-04 14:11: Plan is to receive and set this on 11/11 / Jason Johnston on 2025-11-11 17:11: John owes 11/11 update / allucent_notes: 2025-11-04 14:11 - User: John Capriotti - Date Added: 2025-11-04 14:11 - Note: Plan is to receive and set this on 11/11 / 2025-11-11 17:11 - User: Jason Johnston - Date Added: 2025-11-11 17:11 - Note: John owes 11/11 update
- QTS-39521: allucent_notes_20251104_160200: John Capriotti on 2025-11-04 14:11: Plan is to receive and set this on 11/11 / allucent_notes_20251111_182405: John Capriotti on 2025-11-04 14:11: Plan is to receive and set this on 11/11 / allucent_notes_20251118_192630: John Capriotti on 2025-11-04 14:11: Plan is to receive and set this on 11/11 / allucent_notes: 2025-11-04 14:11 - User: John Capriotti - Date Added: 2025-11-04 14:11 - Note: Plan is to receive and set this on 11/11
- QTS-39531: allucent_notes_20251104_160200: John Capriotti on 2025-11-04 14:11: Plan is to receive and set this on 11/11 / allucent_notes_20251111_182405: John Capriotti on 2025-11-04 14:11: Plan is to receive and set this on 11/11 / allucent_notes_20251118_192630: John Capriotti on 2025-11-04 14:11: Plan is to receive and set this on 11/11 / allucent_notes: 2025-11-04 14:11 - User: John Capriotti - Date Added: 2025-11-04 14:11 - Note: Plan is to receive and set this on 11/11

| ID | WBS | Activity | Duration | Start | Finish | Predecessors | Complete | Remaining | Planned start | Planned finish | Total float | Free float | Expected finish | Precon Phase | Project Section-1 | Baseline | Layton Responsible Party | Project Section | Allucent CSI Group |
| --- | --- | --- | --- | --- | --- | --- | --- | --- | --- | --- | --- | --- | --- | --- | --- | --- | --- | --- | --- |
|  | 4 | **D21 Lineup** |  | 2025-07-07 | 2026-01-29 |  |  |  |  |  |  |  |  |  |  |  |  |  |  |
| QTS-36301 |  | DH 2100 / D21 Lineup // Chiller #1RT40-D21 | 20d | 2025-07-07 A | 2025-08-11 A | QTS-1371 | 100% |  | 2025-07-07 | 2025-08-01 |  |  |  | OFCI Procurement | Preconstruction | GMP | Chris Perales | Preconstruction | 01ADMIN |
| QTS-36351 |  | DH 2100 / D21 Lineup // 600A MOD #D21-03 (CRAH Support) | 20d | 2025-07-21 A | 2025-07-29 A | QTS-1371 | 100% |  | 2025-09-15 | 2025-10-10 |  |  |  | OFCI Procurement | Preconstruction | GMP | Chris Perales | Preconstruction | 01ADMIN |
| QTS-36341 |  | DH 2100 / D21 Lineup // 225A MOD #D21-02 (Liquid to Chip Support) | 20d | 2025-09-15 A | 2025-09-16 A | QTS-1371 | 100% |  | 2025-09-15 | 2025-10-10 |  |  |  | OFCI Procurement | Preconstruction | GMP | Chris Perales | Preconstruction | 01ADMIN |
| QTS-36311 |  | DH 2100 / D21 Lineup // UPS Container #D21 | 20d | 2025-09-19 A | 2025-10-29 A | QTS-1371 | 100% |  | 2025-09-19 | 2025-10-16 |  |  |  | OFCI Procurement | Preconstruction | GMP | Chris Perales | Preconstruction | 01ADMIN |
| QTS-36321 |  | DH 2100 / D21 Lineup // 2500KVA Padmount XFMR #D21 | 20d | 2025-10-01 A | 2025-10-21 A | QTS-1371 | 100% |  | 2025-10-01 | 2025-10-28 |  |  |  | OFCI Procurement | Preconstruction | GMP | Chris Perales | Preconstruction | 01ADMIN |
| QTS-39541 |  | DH 2100 / D21 Lineup // Assembly - Tank #GEN-D21 | 20d | 2025-10-09 A | 2025-11-17 A | QTS-1371 | 100% |  | 2025-10-09 | 2025-11-05 |  |  |  | OFCI Procurement | Preconstruction |  | Chris Perales | Preconstruction | 01ADMIN |
| QTS-39551 |  | DH 2100 / D21 Lineup // Assembly - Engine #GEN-D21 | 20d | 2025-10-09 A | 2025-11-17 A | QTS-1371 | 100% |  | 2025-10-09 | 2025-11-05 |  |  |  | OFCI Procurement | Preconstruction |  | Chris Perales | Preconstruction | 01ADMIN |
| QTS-39561 |  | DH 2100 / D21 Lineup // Assembly - SCR #GEN-D21 | 20d | 2025-10-09 A | 2026-01-29 | QTS-1371 | 45% | 11d | 2025-10-09 | 2025-11-05 | 15d | 0d | 2026-01-29 | OFCI Procurement | Preconstruction |  | Chris Perales | Preconstruction | 01ADMIN |
| QTS-39571 |  | DH 2100 / D21 Lineup // Assembly - Housing #GEN-D21 | 20d | 2025-10-09 A | 2025-11-17 A | QTS-1371 | 100% |  | 2025-10-09 | 2025-11-05 |  |  |  | OFCI Procurement | Preconstruction |  | Chris Perales | Preconstruction | 01ADMIN |
| QTS-36361 |  | DH 2100 / D21 Lineup // Skid #D21 | 20d | 2025-10-30 A | 2025-11-26 A | QTS-1371 | 100% |  |  |  |  |  |  | OFCI Procurement | Preconstruction | GMP | Chris Perales | Preconstruction | 01ADMIN |
|  | 5 | **E21 Lineup** |  | 2025-07-07 | 2026-01-29 |  |  |  |  |  |  |  |  |  |  |  |  |  |  |
| QTS-36371 |  | DH 2100 / E21 Lineup // Chiller #1RT40-E21 | 20d | 2025-07-07 A | 2025-08-11 A | QTS-1371 | 100% |  | 2025-07-07 | 2025-08-01 |  |  |  | OFCI Procurement | Preconstruction | GMP | Chris Perales | Preconstruction | 01ADMIN |
| QTS-36421 |  | DH 2100 / E21 Lineup // 600A MOD #E21-03 (CRAH Support) | 20d | 2025-07-21 A | 2025-07-29 A | QTS-1371 | 100% |  | 2025-09-15 | 2025-10-10 |  |  |  | OFCI Procurement | Preconstruction | GMP | Chris Perales | Preconstruction | 01ADMIN |
| QTS-36411 |  | DH 2100 / E21 Lineup // 225A MOD #E21-02 (Liquid to Chip Support) | 20d | 2025-09-15 A | 2025-09-16 A | QTS-1371 | 100% |  | 2025-09-15 | 2025-10-10 |  |  |  | OFCI Procurement | Preconstruction | GMP | Chris Perales | Preconstruction | 01ADMIN |
| QTS-36381 |  | DH 2100 / E21 Lineup // UPS Container #E21 | 20d | 2025-09-19 A | 2025-11-05 A | QTS-1371 | 100% |  | 2025-09-19 | 2025-10-16 |  |  |  | OFCI Procurement | Preconstruction | GMP | Chris Perales | Preconstruction | 01ADMIN |
| QTS-36391 |  | DH 2100 / E21 Lineup // 2500KVA Padmount XFMR #E21 | 20d | 2025-10-01 A | 2025-10-21 A | QTS-1371 | 100% |  | 2025-10-01 | 2025-10-28 |  |  |  | OFCI Procurement | Preconstruction | GMP | Chris Perales | Preconstruction | 01ADMIN |
| QTS-39581 |  | DH 2100 / E21 Lineup // Assembly - Tank #GEN-E21 | 20d | 2025-10-10 A | 2025-11-17 A | QTS-1371 | 100% |  | 2025-10-10 | 2025-11-06 |  |  |  | OFCI Procurement | Preconstruction |  | Chris Perales | Preconstruction | 01ADMIN |
| QTS-39591 |  | DH 2100 / E21 Lineup // Assembly - Engine #GEN-E21 | 20d | 2025-10-10 A | 2025-11-17 A | QTS-1371 | 100% |  | 2025-10-10 | 2025-11-06 |  |  |  | OFCI Procurement | Preconstruction |  | Chris Perales | Preconstruction | 01ADMIN |
| QTS-39601 |  | DH 2100 / E21 Lineup // Assembly - SCR #GEN-E21 | 20d | 2025-10-10 A | 2026-01-29 | QTS-1371 | 45% | 11d | 2025-10-10 | 2025-11-06 | 15d | 0d | 2026-01-29 | OFCI Procurement | Preconstruction |  | Chris Perales | Preconstruction | 01ADMIN |
| QTS-39611 |  | DH 2100 / E21 Lineup // Assembly - Housing #GEN-E21 | 20d | 2025-10-10 A | 2025-11-17 A | QTS-1371 | 100% |  | 2025-10-10 | 2025-11-06 |  |  |  | OFCI Procurement | Preconstruction |  | Chris Perales | Preconstruction | 01ADMIN |
| QTS-36431 |  | DH 2100 / E21 Lineup // Skid #E21 | 20d | 2025-11-03 A | 2025-11-26 A | QTS-1371 | 100% |  | 2025-11-03 | 2025-12-02 |  |  |  | OFCI Procurement | Preconstruction | GMP | Chris Perales | Preconstruction | 01ADMIN |
|  | 6 | **F21 Lineup** |  | 2025-07-07 | 2026-01-29 |  |  |  |  |  |  |  |  |  |  |  |  |  |  |
| QTS-36441 |  | DH 2100 / F21 Lineup // Chiller #1RT40-F21 | 20d | 2025-07-07 A | 2025-08-11 A | QTS-1371 | 100% |  | 2025-07-07 | 2025-08-01 |  |  |  | OFCI Procurement | Preconstruction | GMP | Chris Perales | Preconstruction | 01ADMIN |
| QTS-36491 |  | DH 2100 / F21 Lineup // 600A MOD #F21-03 (CRAH Support) | 20d | 2025-07-21 A | 2025-07-29 A | QTS-1371 | 100% |  | 2025-09-15 | 2025-10-10 |  |  |  | OFCI Procurement | Preconstruction | GMP | Chris Perales | Preconstruction | 01ADMIN |
| QTS-36481 |  | DH 2100 / F21 Lineup // 225A MOD #F21-02 (Liquid to Chip Support) | 20d | 2025-09-15 A | 2025-09-16 A | QTS-1371 | 100% |  | 2025-09-15 | 2025-10-10 |  |  |  | OFCI Procurement | Preconstruction | GMP | Chris Perales | Preconstruction | 01ADMIN |
| QTS-36451 |  | DH 2100 / F21 Lineup // UPS Container #F21 | 20d | 2025-09-19 A | 2025-11-05 A | QTS-1371 | 100% |  | 2025-09-19 | 2025-10-16 |  |  |  | OFCI Procurement | Preconstruction | GMP | Chris Perales | Preconstruction | 01ADMIN |
| QTS-36461 |  | DH 2100 / F21 Lineup // 2500KVA Padmount XFMR #F21 | 20d | 2025-10-01 A | 2025-10-21 A | QTS-1371 | 100% |  | 2025-10-01 | 2025-10-28 |  |  |  | OFCI Procurement | Preconstruction | GMP | Chris Perales | Preconstruction | 01ADMIN |
| QTS-39621 |  | DH 2100 / F21 Lineup // Assembly - Tank #GEN-F21 | 20d | 2025-10-13 A | 2025-11-20 A | QTS-1371 | 100% |  | 2025-10-13 | 2025-11-07 |  |  |  | OFCI Procurement | Preconstruction |  | Chris Perales | Preconstruction | 01ADMIN |
| QTS-39631 |  | DH 2100 / F21 Lineup // Assembly - Engine #GEN-F21 | 20d | 2025-10-13 A | 2025-11-20 A | QTS-1371 | 100% |  | 2025-10-13 | 2025-11-07 |  |  |  | OFCI Procurement | Preconstruction |  | Chris Perales | Preconstruction | 01ADMIN |
| QTS-39641 |  | DH 2100 / F21 Lineup // Assembly - SCR #GEN-F21 | 20d | 2025-10-13 A | 2026-01-29 | QTS-1371 | 45% | 11d | 2025-10-13 | 2025-11-07 | 15d | 0d | 2026-01-29 | OFCI Procurement | Preconstruction |  | Chris Perales | Preconstruction | 01ADMIN |
| QTS-39651 |  | DH 2100 / F21 Lineup // Assembly - Housing #GEN-F21 | 20d | 2025-10-13 A | 2025-11-20 A | QTS-1371 | 100% |  | 2025-10-13 | 2025-11-07 |  |  |  | OFCI Procurement | Preconstruction |  | Chris Perales | Preconstruction | 01ADMIN |
| QTS-36501 |  | DH 2100 / F21 Lineup // Skid #F21 | 20d | 2025-10-15 A | 2025-11-26 A | QTS-1371 | 100% |  | 2025-10-15 | 2025-11-11 |  |  |  | OFCI Procurement | Preconstruction | GMP | Chris Perales | Preconstruction | 01ADMIN |

Notes:
- QTS-36301: allucent_notes: John Capriotti on 2025-08-12 15:08: Chiller received by Belaire/taken out of QAE Yard on 8/11 to set. / allucent_notes: 2025-08-12 15:08 - User: John Capriotti - Date Added: 2025-08-12 15:08 - Note: Chiller received by Belaire/taken out of QAE Yard on 8/11 to set.
- QTS-36311: allucent_notes_20251027_224008: Jason Johnston on 2025-10-27 22:10: No update from John Capriotti / allucent_notes_20251028_163138: Jason Johnston on 2025-10-27 22:10: No update from John Capriotti / John Capriotti on 2025-10-28 15:10: Set to receive and set this on 10/29. / allucent_notes_20251104_160200: Jason Johnston on 2025-10-27 22:10: No update from John Capriotti / John Capriotti on 2025-10-28 15:10: Set to receive and set this on 10/29. / allucent_notes: 2025-10-27 22:10 - User: Jason Johnston - Date Added: 2025-10-27 22:10 - Note: No update from John Capriotti / 2025-10-28 15:10 - User: John Capriotti - Date Added: 2025-10-28 15:10 - Note: Set to receive and set this on 10/29.
- QTS-36321: allucent_notes_20251028_163138: John Capriotti on 2025-10-28 15:10: Received and set on 10/21. / allucent_notes: 2025-10-28 15:10 - User: John Capriotti - Date Added: 2025-10-28 15:10 - Note: Received and set on 10/21.
- QTS-39541: allucent_notes_20251111_182405: John Capriotti on 2025-11-11 12:11: Set to receive on 11/13 / allucent_notes_20251118_192630: John Capriotti on 2025-11-11 12:11: Set to receive on 11/13 / allucent_notes: 2025-11-11 12:11 - User: John Capriotti - Date Added: 2025-11-11 12:11 - Note: Set to receive on 11/13
- QTS-39551: allucent_notes_20251111_182405: John Capriotti on 2025-11-11 12:11: Set to receive on 11/13 / allucent_notes_20251118_192630: John Capriotti on 2025-11-11 12:11: Set to receive on 11/13 / allucent_notes: 2025-11-11 12:11 - User: John Capriotti - Date Added: 2025-11-11 12:11 - Note: Set to receive on 11/13
- QTS-39561: allucent_notes_20251230_164549: Jason Johnston on 2025-11-11 17:11: John owes 11/11 update / John Capriotti on 2025-12-09 12:40: Pending confirmation on timing from Belaire on this. Followed up on 12/9. / Jason Johnston on 2025-12-16 15:16: not yet / John Capriotti on 2025-12-30 10:37: SCRs will be delivered when we are ready to set. The Mfg/Vendor has these located in their yard in Texas, but we are not going to ship all of these to site to store and then mobilize a separate crane and additional trucks to bring to the building. That would be a decent cost and significantly more coordination, with no added benefit. / Ultimately, I, John Capriotti (OFCI), need an update from the Subs/Supers as to when we intend to set them so I can schedule the delivery to support those set dates. / **I will press for updated dates on these, moving out as I work on getting estimated set dates. / allucent_notes_20251111_182405: Jason Johnston on 2025-11-11 17:11: John owes 11/11 update / allucent_notes_20251118_192630: Jason Johnston on 2025-11-11 17:11: John owes 11/11 update / allucent_notes_20251202_153722: Jason Johnston on 2025-11-11 17:11: John owes 11/11 update / allucent_notes_20251209_203830: Jason Johnston on 2025-11-11 17:11: John owes 11/11 update / John Capriotti on 2025-12-09 12:40: Pending confirmation on timing from Belaire on this. Followed up on 12/9. / allucent_notes_20251216_165335: Jason Johnston on 2025-11-11 17:11: John owes 11/11 update / John Capriotti on 2025-12-09 12:40: Pending confirmation on timing from Belaire on this. Followed up on 12/9. / Jason Johnston on 2025-12-16 15:16: not yet / allucent_notes: 2025-11-11 17:11 - User: Jason Johnston - Date Added: 2025-11-11 17:11 - Note: John owes 11/11 update / 2025-12-09 12:40 - User: John Capriotti - Date Added: 2025-12-09 12:40 - Note: Pending confirmation on timing from Belaire on this. Followed up on 12
- QTS-39571: allucent_notes_20251111_182405: John Capriotti on 2025-11-11 12:11: Set to receive on 11/13 / allucent_notes_20251118_192630: John Capriotti on 2025-11-11 12:11: Set to receive on 11/13 / allucent_notes: 2025-11-11 12:11 - User: John Capriotti - Date Added: 2025-11-11 12:11 - Note: Set to receive on 11/13
- QTS-36371: allucent_notes: John Capriotti on 2025-08-12 15:08: Chiller received by Belaire/taken out of QAE Yard on 8/11 to set. / allucent_notes: 2025-08-12 15:08 - User: John Capriotti - Date Added: 2025-08-12 15:08 - Note: Chiller received by Belaire/taken out of QAE Yard on 8/11 to set.
- QTS-36381: allucent_notes_20251027_224008: Jason Johnston on 2025-10-27 22:10: No update from John Capriotti / allucent_notes_20251028_163138: Jason Johnston on 2025-10-27 22:10: No update from John Capriotti / John Capriotti on 2025-10-28 15:10: Per Vendor/Fibrebond they confirmed delivery for 11/5. Unable to bring in early do to logistics, permitting, etc. Will set when it comes in. / allucent_notes_20251104_160200: Jason Johnston on 2025-10-27 22:10: No update from John Capriotti / John Capriotti on 2025-10-28 15:10: Per Vendor/Fibrebond they confirmed delivery for 11/5. Unable to bring in early do to logistics, permitting, etc. Will set when it comes in. / allucent_notes_20251111_182405: Jason Johnston on 2025-10-27 22:10: No update from John Capriotti / John Capriotti on 2025-10-28 15:10: Per Vendor/Fibrebond they confirmed delivery for 11/5. Unable to bring in early do to logistics, permitting, etc. Will set when it comes in. / allucent_notes_20251118_192630: Jason Johnston on 2025-10-27 22:10: No update from John Capriotti / John Capriotti on 2025-10-28 15:10: Per Vendor/Fibrebond they confirmed delivery for 11/5. Unable to bring in early do to logistics, permitting, etc. Will set when it comes in. / allucent_notes: 2025-10-27 22:10 - User: Jason Johnston - Date Added: 2025-10-27 22:10 - Note: No update from John Capriotti / 2025-10-28 15:10 - User: John Capriotti - Date Added: 2025-10-28 15:10 - Note: Per Vendor/Fibrebond they confirmed delivery for 11/5. Unable to
- QTS-36391: allucent_notes_20251028_163138: John Capriotti on 2025-10-28 15:10: Received and set on 10/21. / allucent_notes: 2025-10-28 15:10 - User: John Capriotti - Date Added: 2025-10-28 15:10 - Note: Received and set on 10/21.
- QTS-39581: allucent_notes_20251111_182405: John Capriotti on 2025-11-11 12:11: Set to receive on 11/14 / allucent_notes_20251118_192630: John Capriotti on 2025-11-11 12:11: Set to receive on 11/14 / allucent_notes: 2025-11-11 12:11 - User: John Capriotti - Date Added: 2025-11-11 12:11 - Note: Set to receive on 11/14
- QTS-39591: allucent_notes_20251111_182405: John Capriotti on 2025-11-11 12:11: Set to receive on 11/14 / allucent_notes_20251118_192630: John Capriotti on 2025-11-11 12:11: Set to receive on 11/14 / allucent_notes: 2025-11-11 12:11 - User: John Capriotti - Date Added: 2025-11-11 12:11 - Note: Set to receive on 11/14
- QTS-39601: allucent_notes_20251230_164549: Jason Johnston on 2025-11-11 17:11: John owes 11/11 update / John Capriotti on 2025-12-09 12:40: Pending confirmation on timing from Belaire on this. Followed up on 12/9. / Jason Johnston on 2025-12-16 15:16: not yet / John Capriotti on 2025-12-30 10:37: SCRs will be delivered when we are ready to set. The Mfg/Vendor has these located in their yard in Texas, but we are not going to ship all of these to site to store and then mobilize a separate crane and additional trucks to bring to the building. That would be a decent cost and significantly more coordination, with no added benefit. / Ultimately, I, John Capriotti (OFCI), need an update from the Subs/Supers as to when we intend to set them so I can schedule the delivery to support those set dates. / **I will press for updated dates on these, moving out as I work on getting estimated set dates. / allucent_notes_20251111_182405: Jason Johnston on 2025-11-11 17:11: John owes 11/11 update / allucent_notes_20251118_192630: Jason Johnston on 2025-11-11 17:11: John owes 11/11 update / allucent_notes_20251202_153722: Jason Johnston on 2025-11-11 17:11: John owes 11/11 update / allucent_notes_20251209_203830: Jason Johnston on 2025-11-11 17:11: John owes 11/11 update / John Capriotti on 2025-12-09 12:40: Pending confirmation on timing from Belaire on this. Followed up on 12/9. / allucent_notes_20251216_165335: Jason Johnston on 2025-11-11 17:11: John owes 11/11 update / John Capriotti on 2025-12-09 12:40: Pending confirmation on timing from Belaire on this. Followed up on 12/9. / Jason Johnston on 2025-12-16 15:16: not yet / allucent_notes: 2025-11-11 17:11 - User: Jason Johnston - Date Added: 2025-11-11 17:11 - Note: John owes 11/11 update / 2025-12-09 12:40 - User: John Capriotti - Date Added: 2025-12-09 12:40 - Note: Pending confirmation on timing from Belaire on this. Followed up on 12
- QTS-39611: allucent_notes_20251111_182405: John Capriotti on 2025-11-11 12:11: Set to receive on 11/14 / allucent_notes_20251118_192630: John Capriotti on 2025-11-11 12:11: Set to receive on 11/14 / allucent_notes: 2025-11-11 12:11 - User: John Capriotti - Date Added: 2025-11-11 12:11 - Note: Set to receive on 11/14
- QTS-36441: allucent_notes: John Capriotti on 2025-08-12 15:08: Chiller received by Belaire/taken out of QAE Yard on 8/11 to set. / allucent_notes: 2025-08-12 15:08 - User: John Capriotti - Date Added: 2025-08-12 15:08 - Note: Chiller received by Belaire/taken out of QAE Yard on 8/11 to set.
- QTS-36451: allucent_notes_20251027_224008: Jason Johnston on 2025-10-27 22:10: No update from John Capriotti / allucent_notes_20251028_163138: Jason Johnston on 2025-10-27 22:10: No update from John Capriotti / John Capriotti on 2025-10-28 15:10: Per Vendor/Fibrebond they confirmed delivery for 11/5. Unable to bring in early do to logistics, permitting, etc. Will set when it comes in. / allucent_notes_20251104_160200: Jason Johnston on 2025-10-27 22:10: No update from John Capriotti / John Capriotti on 2025-10-28 15:10: Per Vendor/Fibrebond they confirmed delivery for 11/5. Unable to bring in early do to logistics, permitting, etc. Will set when it comes in. / allucent_notes_20251111_182405: Jason Johnston on 2025-10-27 22:10: No update from John Capriotti / John Capriotti on 2025-10-28 15:10: Per Vendor/Fibrebond they confirmed delivery for 11/5. Unable to bring in early do to logistics, permitting, etc. Will set when it comes in. / allucent_notes_20251118_192630: Jason Johnston on 2025-10-27 22:10: No update from John Capriotti / John Capriotti on 2025-10-28 15:10: Per Vendor/Fibrebond they confirmed delivery for 11/5. Unable to bring in early do to logistics, permitting, etc. Will set when it comes in. / allucent_notes: 2025-10-27 22:10 - User: Jason Johnston - Date Added: 2025-10-27 22:10 - Note: No update from John Capriotti / 2025-10-28 15:10 - User: John Capriotti - Date Added: 2025-10-28 15:10 - Note: Per Vendor/Fibrebond they confirmed delivery for 11/5. Unable to
- QTS-36461: allucent_notes_20251028_163138: John Capriotti on 2025-10-28 15:10: Received and set on 10/21. / allucent_notes: 2025-10-28 15:10 - User: John Capriotti - Date Added: 2025-10-28 15:10 - Note: Received and set on 10/21.
- QTS-39621: allucent_notes_20251111_182405: John Capriotti on 2025-11-11 12:11: Set to receive on 11/14 / allucent_notes_20251118_192630: John Capriotti on 2025-11-11 12:11: Set to receive on 11/14 / John Capriotti on 2025-11-18T18:31:52.018Z: To be delivered and set 11/20, some logistics changes and timing, but will set on 11/20 / allucent_notes_20251202_153722: John Capriotti on 2025-11-11 12:11: Set to receive on 11/14 / John Capriotti on 2025-11-18T18:31:52.018Z: To be delivered and set 11/20, some logistics changes and timing, but will set on 11/20 / allucent_notes: 2025-11-11 12:11 - User: John Capriotti - Date Added: 2025-11-11 12:11 - Note: Set to receive on 11/14 / 2025-11-18T18:31:52.018Z - User: John Capriotti - Date Added: 2025-11-18T18:31:52.018Z - Note: To be delivered and set 11/20, some logistics changes
- QTS-39631: allucent_notes_20251111_182405: John Capriotti on 2025-11-11 12:11: Set to receive on 11/14 / allucent_notes_20251118_192630: John Capriotti on 2025-11-11 12:11: Set to receive on 11/14 / John Capriotti on 2025-11-18T18:31:59.056Z: To be delivered and set 11/20, some logistics changes and timing, but will set on 11/20 / allucent_notes_20251202_153722: John Capriotti on 2025-11-11 12:11: Set to receive on 11/14 / John Capriotti on 2025-11-18T18:31:59.056Z: To be delivered and set 11/20, some logistics changes and timing, but will set on 11/20 / allucent_notes: 2025-11-11 12:11 - User: John Capriotti - Date Added: 2025-11-11 12:11 - Note: Set to receive on 11/14 / 2025-11-18T18:31:59.056Z - User: John Capriotti - Date Added: 2025-11-18T18:31:59.056Z - Note: To be delivered and set 11/20, some logistics changes
- QTS-39641: allucent_notes_20251230_164549: Jason Johnston on 2025-11-11 17:11: John owes 11/11 update / John Capriotti on 2025-12-09 12:40: Pending confirmation on timing from Belaire on this. Followed up on 12/9. / Jason Johnston on 2025-12-16 15:16: not yet / John Capriotti on 2025-12-30 10:37: SCRs will be delivered when we are ready to set. The Mfg/Vendor has these located in their yard in Texas, but we are not going to ship all of these to site to store and then mobilize a separate crane and additional trucks to bring to the building. That would be a decent cost and significantly more coordination, with no added benefit. / Ultimately, I, John Capriotti (OFCI), need an update from the Subs/Supers as to when we intend to set them so I can schedule the delivery to support those set dates. / **I will press for updated dates on these, moving out as I work on getting estimated set dates. / allucent_notes_20251111_182405: Jason Johnston on 2025-11-11 17:11: John owes 11/11 update / allucent_notes_20251118_192630: Jason Johnston on 2025-11-11 17:11: John owes 11/11 update / allucent_notes_20251202_153722: Jason Johnston on 2025-11-11 17:11: John owes 11/11 update / allucent_notes_20251209_203830: Jason Johnston on 2025-11-11 17:11: John owes 11/11 update / John Capriotti on 2025-12-09 12:40: Pending confirmation on timing from Belaire on this. Followed up on 12/9. / allucent_notes_20251216_165335: Jason Johnston on 2025-11-11 17:11: John owes 11/11 update / John Capriotti on 2025-12-09 12:40: Pending confirmation on timing from Belaire on this. Followed up on 12/9. / Jason Johnston on 2025-12-16 15:16: not yet / allucent_notes: 2025-11-11 17:11 - User: Jason Johnston - Date Added: 2025-11-11 17:11 - Note: John owes 11/11 update / 2025-12-09 12:40 - User: John Capriotti - Date Added: 2025-12-09 12:40 - Note: Pending confirmation on timing from Belaire on this. Followed up on 12
- QTS-39651: allucent_notes_20251111_182405: John Capriotti on 2025-11-11 12:11: Set to receive on 11/14 / allucent_notes_20251118_192630: John Capriotti on 2025-11-11 12:11: Set to receive on 11/14 / John Capriotti on 2025-11-18T18:32:04.379Z: To be delivered and set 11/20, some logistics changes and timing, but will set on 11/20 / allucent_notes_20251202_153722: John Capriotti on 2025-11-11 12:11: Set to receive on 11/14 / John Capriotti on 2025-11-18T18:32:04.379Z: To be delivered and set 11/20, some logistics changes and timing, but will set on 11/20 / allucent_notes: 2025-11-11 12:11 - User: John Capriotti - Date Added: 2025-11-11 12:11 - Note: Set to receive on 11/14 / 2025-11-18T18:32:04.379Z - User: John Capriotti - Date Added: 2025-11-18T18:32:04.379Z - Note: To be delivered and set 11/20, some logistics changes
- QTS-36501: allucent_notes_20251027_224008: Jason Johnston on 2025-10-27 22:10: No update from John Capriotti / allucent_notes_20251028_163138: Jason Johnston on 2025-10-27 22:10: No update from John Capriotti / allucent_notes_20251202_153722: Jason Johnston on 2025-10-27 22:10: No update from John Capriotti / allucent_notes: 2025-10-27 22:10 - User: Jason Johnston - Date Added: 2025-10-27 22:10 - Note: No update from John Capriotti

| ID | WBS | Activity | Duration | Start | Finish | Predecessors | Complete | Remaining | Planned start | Planned finish | Total float | Free float | Expected finish | Precon Phase | Project Section-1 | Baseline | Layton Responsible Party | Project Section | Allucent CSI Group |
| --- | --- | --- | --- | --- | --- | --- | --- | --- | --- | --- | --- | --- | --- | --- | --- | --- | --- | --- | --- |
|  | 9 | **R21 Lineup** |  | 2025-07-07 | 2026-01-29 |  |  |  |  |  |  |  |  |  |  |  |  |  |  |
| QTS-20751 |  | DH 2100 / R21 Lineup // Chiller #1RT40-R21 | 20d | 2025-07-07 A | 2025-08-11 A | QTS-1371 | 100% |  | 2025-07-07 | 2025-08-01 |  |  |  | OFCI Procurement | Preconstruction | GMP | Chris Perales | Preconstruction | 01ADMIN |
| QTS-31681 |  | DH 2100 / R21 Lineup // 600A MOD #R21-03 (CRAH Support) | 20d | 2025-07-21 A | 2025-07-29 A | QTS-1371 | 100% |  | 2025-09-15 | 2025-10-10 |  |  |  | OFCI Procurement | Preconstruction | GMP | Chris Perales | Preconstruction | 01ADMIN |
| QTS-31781 |  | DH 2100 / R21 Lineup // 225A MOD #R21-02 | 20d | 2025-09-15 A | 2025-09-16 A | QTS-1371 | 100% |  | 2025-09-15 | 2025-10-10 |  |  |  | OFCI Procurement | Preconstruction | GMP | Chris Perales | Preconstruction | 01ADMIN |
| QTS-23901 |  | DH 2100 / R21 Lineup // UPS Container #R21 | 20d | 2025-09-19 A | 2025-11-06 A | QTS-1371 | 100% |  | 2025-09-19 | 2025-10-16 |  |  |  | OFCI Procurement | Preconstruction | GMP | Chris Perales | Preconstruction | 01ADMIN |
| QTS-24261 |  | DH 2100 / R21 Lineup // 2500KVA Padmount XFMR #R21 | 20d | 2025-10-01 A | 2025-10-21 A | QTS-1371 | 100% |  | 2025-10-01 | 2025-10-28 |  |  |  | OFCI Procurement | Preconstruction | GMP | Chris Perales | Preconstruction | 01ADMIN |
| QTS-39661 |  | DH 2100 / R21 Lineup // Assembly - Tank #GEN-R21 | 20d | 2025-10-14 A | 2025-11-11 A | QTS-1371 | 100% |  | 2025-10-14 | 2025-11-10 |  |  |  | OFCI Procurement | Preconstruction |  | Chris Perales | Preconstruction | 01ADMIN |
| QTS-39671 |  | DH 2100 / R21 Lineup // Assembly - Engine #GEN-R21 | 20d | 2025-10-14 A | 2025-11-11 A | QTS-1371 | 100% |  | 2025-10-14 | 2025-11-10 |  |  |  | OFCI Procurement | Preconstruction |  | Chris Perales | Preconstruction | 01ADMIN |
| QTS-39681 |  | DH 2100 / R21 Lineup // Assembly - SCR #GEN-R21 | 20d | 2025-10-14 A | 2026-01-29 | QTS-1371 | 45% | 11d | 2025-10-14 | 2025-11-10 | 15d | 0d | 2026-01-29 | OFCI Procurement | Preconstruction |  | Chris Perales | Preconstruction | 01ADMIN |
| QTS-39691 |  | DH 2100 / R21 Lineup // Assembly - Housing #GEN-R21 | 20d | 2025-10-14 A | 2025-11-11 A | QTS-1371 | 100% |  | 2025-10-14 | 2025-11-10 |  |  |  | OFCI Procurement | Preconstruction |  | Chris Perales | Preconstruction | 01ADMIN |
|  | 2 | **Data Hall 1100 (Need By Dates)** |  | 2025-07-14 | 2026-01-30 |  |  |  |  |  |  |  |  |  |  |  |  |  |  |
| QTS-34531 |  | DH 1100 / CRAH #29 (Electrical Gallery) | 20d | 2025-09-09 A | 2025-12-15 A | QTS-1371 | 100% |  | 2025-09-09 | 2025-10-06 |  |  |  | OFCI Procurement | Preconstruction | GMP | Chris Perales | Preconstruction | 01ADMIN |
| QTS-34541 |  | DH 1100 / CRAH #30 (Electrical Gallery) | 20d | 2025-09-09 A | 2025-12-15 A | QTS-1371 | 100% |  | 2025-09-09 | 2025-10-06 |  |  |  | OFCI Procurement | Preconstruction | GMP | Chris Perales | Preconstruction | 01ADMIN |
| QTS-34551 |  | DH 1100 / CRAH #31 (Electrical Gallery) | 20d | 2025-09-09 A | 2025-12-15 A | QTS-1371 | 100% |  | 2025-09-09 | 2025-10-06 |  |  |  | OFCI Procurement | Preconstruction | GMP | Chris Perales | Preconstruction | 01ADMIN |
| QTS-34561 |  | DH 1100 / CRAH #32 (Electrical Gallery) | 20d | 2025-09-09 A | 2025-12-15 A | QTS-1371 | 100% |  | 2025-09-09 | 2025-10-06 |  |  |  | OFCI Procurement | Preconstruction | GMP | Chris Perales | Preconstruction | 01ADMIN |
| QTS-34251 |  | DH 1100 / CRAH #01 | 20d | 2025-09-18 A | 2025-11-18 A | QTS-1371 | 100% |  | 2025-09-18 | 2025-10-15 |  |  |  | OFCI Procurement | Preconstruction | GMP | Chris Perales | Preconstruction | 01ADMIN |
| QTS-34261 |  | DH 1100 / CRAH #02 | 20d | 2025-09-18 A | 2025-11-18 A | QTS-1371 | 100% |  | 2025-09-18 | 2025-10-15 |  |  |  | OFCI Procurement | Preconstruction | GMP | Chris Perales | Preconstruction | 01ADMIN |
| QTS-34271 |  | DH 1100 / CRAH #03 | 20d | 2025-09-18 A | 2025-11-21 A | QTS-1371 | 100% |  | 2025-09-18 | 2025-10-15 |  |  |  | OFCI Procurement | Preconstruction | GMP | Chris Perales | Preconstruction | 01ADMIN |
| QTS-34281 |  | DH 1100 / CRAH #04 | 20d | 2025-09-18 A | 2025-11-21 A | QTS-1371 | 100% |  | 2025-09-18 | 2025-10-15 |  |  |  | OFCI Procurement | Preconstruction | GMP | Chris Perales | Preconstruction | 01ADMIN |
| QTS-34291 |  | DH 1100 / CRAH #05 | 20d | 2025-09-18 A | 2025-11-21 A | QTS-1371 | 100% |  | 2025-09-18 | 2025-10-15 |  |  |  | OFCI Procurement | Preconstruction | GMP | Chris Perales | Preconstruction | 01ADMIN |
| QTS-34301 |  | DH 1100 / CRAH #06 | 20d | 2025-09-18 A | 2025-11-21 A | QTS-1371 | 100% |  | 2025-09-18 | 2025-10-15 |  |  |  | OFCI Procurement | Preconstruction | GMP | Chris Perales | Preconstruction | 01ADMIN |
| QTS-34311 |  | DH 1100 / CRAH #07 | 20d | 2025-09-18 A | 2025-11-21 A | QTS-1371 | 100% |  | 2025-09-18 | 2025-10-15 |  |  |  | OFCI Procurement | Preconstruction | GMP | Chris Perales | Preconstruction | 01ADMIN |
| QTS-34321 |  | DH 1100 / CRAH #08 | 20d | 2025-09-18 A | 2025-11-21 A | QTS-1371 | 100% |  | 2025-09-18 | 2025-10-15 |  |  |  | OFCI Procurement | Preconstruction | GMP | Chris Perales | Preconstruction | 01ADMIN |
| QTS-34331 |  | DH 1100 / CRAH #09 | 20d | 2025-09-18 A | 2025-11-24 A | QTS-1371 | 100% |  | 2025-09-18 | 2025-10-15 |  |  |  | OFCI Procurement | Preconstruction | GMP | Chris Perales | Preconstruction | 01ADMIN |
| QTS-34341 |  | DH 1100 / CRAH #10 | 20d | 2025-09-18 A | 2025-11-24 A | QTS-1371 | 100% |  | 2025-09-18 | 2025-10-15 |  |  |  | OFCI Procurement | Preconstruction | GMP | Chris Perales | Preconstruction | 01ADMIN |
| QTS-34351 |  | DH 1100 / CRAH #11 | 20d | 2025-09-18 A | 2025-11-24 A | QTS-1371 | 100% |  | 2025-09-18 | 2025-10-15 |  |  |  | OFCI Procurement | Preconstruction | GMP | Chris Perales | Preconstruction | 01ADMIN |
| QTS-34361 |  | DH 1100 / CRAH #12 | 20d | 2025-09-18 A | 2025-11-24 A | QTS-1371 | 100% |  | 2025-09-18 | 2025-10-15 |  |  |  | OFCI Procurement | Preconstruction | GMP | Chris Perales | Preconstruction | 01ADMIN |
| QTS-34371 |  | DH 1100 / CRAH #13 | 20d | 2025-09-18 A | 2025-11-24 A | QTS-1371 | 100% |  | 2025-09-18 | 2025-10-15 |  |  |  | OFCI Procurement | Preconstruction | GMP | Chris Perales | Preconstruction | 01ADMIN |
| QTS-34381 |  | DH 1100 / CRAH #14 | 20d | 2025-09-18 A | 2025-11-24 A | QTS-1371 | 100% |  | 2025-09-18 | 2025-10-15 |  |  |  | OFCI Procurement | Preconstruction | GMP | Chris Perales | Preconstruction | 01ADMIN |
| QTS-22261 |  | DH 1100 / DOAS #01 | 20d | 2025-10-01 A | 2025-12-23 A | QTS-1371 | 100% |  | 2025-10-01 | 2025-10-28 |  |  |  | OFCI Procurement | Preconstruction | GMP | Chris Perales | Preconstruction | 01ADMIN |
| QTS-25381 |  | DH 1100 / DOAS #02 | 20d | 2025-10-01 A | 2025-12-23 A | QTS-1371 | 100% |  | 2025-10-01 | 2025-10-28 |  |  |  | OFCI Procurement | Preconstruction | GMP | Chris Perales | Preconstruction | 01ADMIN |
| QTS-34391 |  | DH 1100 / CRAH #15 | 20d | 2025-10-02 A | 2025-11-25 A | QTS-1371 | 100% |  | 2025-10-02 | 2025-10-29 |  |  |  | OFCI Procurement | Preconstruction | GMP | Chris Perales | Preconstruction | 01ADMIN |
| QTS-34401 |  | DH 1100 / CRAH #16 | 20d | 2025-10-02 A | 2025-11-25 A | QTS-1371 | 100% |  | 2025-10-02 | 2025-10-29 |  |  |  | OFCI Procurement | Preconstruction | GMP | Chris Perales | Preconstruction | 01ADMIN |
| QTS-34411 |  | DH 1100 / CRAH #17 | 20d | 2025-10-02 A | 2025-11-25 A | QTS-1371 | 100% |  | 2025-10-02 | 2025-10-29 |  |  |  | OFCI Procurement | Preconstruction | GMP | Chris Perales | Preconstruction | 01ADMIN |
| QTS-34421 |  | DH 1100 / CRAH #18 | 20d | 2025-10-02 A | 2025-11-25 A | QTS-1371 | 100% |  | 2025-10-02 | 2025-10-29 |  |  |  | OFCI Procurement | Preconstruction | GMP | Chris Perales | Preconstruction | 01ADMIN |
| QTS-34431 |  | DH 1100 / CRAH #19 | 20d | 2025-10-02 A | 2025-11-25 A | QTS-1371 | 100% |  | 2025-10-02 | 2025-10-29 |  |  |  | OFCI Procurement | Preconstruction | GMP | Chris Perales | Preconstruction | 01ADMIN |
| QTS-34441 |  | DH 1100 / CRAH #20 | 20d | 2025-10-02 A | 2025-11-25 A | QTS-1371 | 100% |  | 2025-10-02 | 2025-10-29 |  |  |  | OFCI Procurement | Preconstruction | GMP | Chris Perales | Preconstruction | 01ADMIN |
| QTS-34451 |  | DH 1100 / CRAH #21 | 20d | 2025-10-02 A | 2025-11-26 A | QTS-1371 | 100% |  | 2025-10-02 | 2025-10-29 |  |  |  | OFCI Procurement | Preconstruction | GMP | Chris Perales | Preconstruction | 01ADMIN |
| QTS-34461 |  | DH 1100 / CRAH #22 | 20d | 2025-10-02 A | 2025-11-26 A | QTS-1371 | 100% |  | 2025-10-02 | 2025-10-29 |  |  |  | OFCI Procurement | Preconstruction | GMP | Chris Perales | Preconstruction | 01ADMIN |
| QTS-34471 |  | DH 1100 / CRAH #23 | 20d | 2025-10-02 A | 2025-11-26 A | QTS-1371 | 100% |  | 2025-10-02 | 2025-10-29 |  |  |  | OFCI Procurement | Preconstruction | GMP | Chris Perales | Preconstruction | 01ADMIN |
| QTS-34481 |  | DH 1100 / CRAH #24 | 20d | 2025-10-02 A | 2025-11-26 A | QTS-1371 | 100% |  | 2025-10-02 | 2025-10-29 |  |  |  | OFCI Procurement | Preconstruction | GMP | Chris Perales | Preconstruction | 01ADMIN |
| QTS-34491 |  | DH 1100 / CRAH #25 | 20d | 2025-10-02 A | 2025-11-26 A | QTS-1371 | 100% |  | 2025-10-02 | 2025-10-29 |  |  |  | OFCI Procurement | Preconstruction | GMP | Chris Perales | Preconstruction | 01ADMIN |
| QTS-34501 |  | DH 1100 / CRAH #26 | 20d | 2025-10-02 A | 2025-11-26 A | QTS-1371 | 100% |  | 2025-10-02 | 2025-10-29 |  |  |  | OFCI Procurement | Preconstruction | GMP | Chris Perales | Preconstruction | 01ADMIN |
| QTS-34511 |  | DH 1100 / CRAH #27 | 20d | 2025-10-02 A | 2025-12-01 A | QTS-1371 | 100% |  | 2025-10-02 | 2025-10-29 |  |  |  | OFCI Procurement | Preconstruction | GMP | Chris Perales | Preconstruction | 01ADMIN |
| QTS-34521 |  | DH 1100 / CRAH #28 | 20d | 2025-10-02 A | 2025-12-01 A | QTS-1371 | 100% |  | 2025-10-02 | 2025-10-29 |  |  |  | OFCI Procurement | Preconstruction | GMP | Chris Perales | Preconstruction | 01ADMIN |

Notes:
- QTS-20751: allucent_notes: John Capriotti on 2025-08-12 15:08: Chiller received by Belaire/taken out of QAE Yard on 8/11 to set. / allucent_notes: 2025-08-12 15:08 - User: John Capriotti - Date Added: 2025-08-12 15:08 - Note: Chiller received by Belaire/taken out of QAE Yard on 8/11 to set.
- QTS-23901: allucent_notes_20251027_224008: John Capriotti on 2025-10-27 19:10: Currently setting PODs / allucent_notes_20251028_163138: John Capriotti on 2025-10-27 19:10: Currently setting PODs / allucent_notes_20251104_160200: John Capriotti on 2025-10-27 19:10: Currently setting PODs / John Capriotti on 2025-11-04 14:11: Receiving and setting on 11/6 / allucent_notes_20251111_182405: John Capriotti on 2025-10-27 19:10: Currently setting PODs / John Capriotti on 2025-11-04 14:11: Receiving and setting on 11/6 / allucent_notes_20251118_192630: John Capriotti on 2025-10-27 19:10: Currently setting PODs / John Capriotti on 2025-11-04 14:11: Receiving and setting on 11/6 / allucent_notes: 2025-10-27 19:10 - User: John Capriotti - Date Added: 2025-10-27 19:10 - Note: Currently setting PODs / 2025-11-04 14:11 - User: John Capriotti - Date Added: 2025-11-04 14:11 - Note: Receiving and setting on 11/6
- QTS-24261: allucent_notes_20251028_163138: John Capriotti on 2025-10-28 15:10: Received and set on 10/21. / allucent_notes: 2025-10-28 15:10 - User: John Capriotti - Date Added: 2025-10-28 15:10 - Note: Received and set on 10/21.
- QTS-39661: allucent_notes_20251111_182405: John Capriotti on 2025-11-11 12:11: Set to receive 11/17 / allucent_notes_20251118_192630: John Capriotti on 2025-11-11 12:11: Set to receive 11/17 / allucent_notes: 2025-11-11 12:11 - User: John Capriotti - Date Added: 2025-11-11 12:11 - Note: Set to receive 11/17
- QTS-39671: allucent_notes_20251111_182405: John Capriotti on 2025-11-11 12:11: Set to receive 11/17 / allucent_notes_20251118_192630: John Capriotti on 2025-11-11 12:11: Set to receive 11/17 / allucent_notes: 2025-11-11 12:11 - User: John Capriotti - Date Added: 2025-11-11 12:11 - Note: Set to receive 11/17
- QTS-39681: allucent_notes_20251230_164549: Jason Johnston on 2025-11-11 17:11: John owes 11/11 update / John Capriotti on 2025-12-09 12:40: Pending confirmation on timing from Belaire on this. Followed up on 12/9. / Jason Johnston on 2025-12-16 15:16: not yet / John Capriotti on 2025-12-30 10:37: SCRs will be delivered when we are ready to set. The Mfg/Vendor has these located in their yard in Texas, but we are not going to ship all of these to site to store and then mobilize a separate crane and additional trucks to bring to the building. That would be a decent cost and significantly more coordination, with no added benefit. / Ultimately, I, John Capriotti (OFCI), need an update from the Subs/Supers as to when we intend to set them so I can schedule the delivery to support those set dates. / **I will press for updated dates on these, moving out as I work on getting estimated set dates. / allucent_notes_20251111_182405: Jason Johnston on 2025-11-11 17:11: John owes 11/11 update / allucent_notes_20251118_192630: Jason Johnston on 2025-11-11 17:11: John owes 11/11 update / allucent_notes_20251202_153722: Jason Johnston on 2025-11-11 17:11: John owes 11/11 update / allucent_notes_20251209_203830: Jason Johnston on 2025-11-11 17:11: John owes 11/11 update / John Capriotti on 2025-12-09 12:40: Pending confirmation on timing from Belaire on this. Followed up on 12/9. / allucent_notes_20251216_165335: Jason Johnston on 2025-11-11 17:11: John owes 11/11 update / John Capriotti on 2025-12-09 12:40: Pending confirmation on timing from Belaire on this. Followed up on 12/9. / Jason Johnston on 2025-12-16 15:16: not yet / allucent_notes: 2025-11-11 17:11 - User: Jason Johnston - Date Added: 2025-11-11 17:11 - Note: John owes 11/11 update / 2025-12-09 12:40 - User: John Capriotti - Date Added: 2025-12-09 12:40 - Note: Pending confirmation on timing from Belaire on this. Followed up on 12
- QTS-39691: allucent_notes_20251111_182405: John Capriotti on 2025-11-11 12:11: Set to receive 11/17 / allucent_notes_20251118_192630: John Capriotti on 2025-11-11 12:11: Set to receive 11/17 / allucent_notes: 2025-11-11 12:11 - User: John Capriotti - Date Added: 2025-11-11 12:11 - Note: Set to receive 11/17
- QTS-34531: allucent_notes_20251014_152335: John Capriotti on 2025-10-07 13:10: Need to confirm dry-in status/completion date before bringing in these CRAH units, pushing a week until I can get confirmed status. / allucent_notes_20251021_145627: John Capriotti on 2025-10-07 13:10: Need to confirm dry-in status/completion date before bringing in these CRAH units, pushing a week until I can get confirmed status. / John Capriotti on 2025-10-21 14:10: Tentatively planning to received and bring in these CRAHs, 11/3. / allucent_notes_20251027_224008: John Capriotti on 2025-10-07 13:10: Need to confirm dry-in status/completion date before bringing in these CRAH units, pushing a week until I can get confirmed status. / John Capriotti on 2025-10-21 14:10: Tentatively planning to received and bring in these CRAHs, 11/3. / allucent_notes_20251028_163138: John Capriotti on 2025-10-07 13:10: Need to confirm dry-in status/completion date before bringing in these CRAH units, pushing a week until I can get confirmed status. / John Capriotti on 2025-10-21 14:10: Tentatively planning to received and bring in these CRAHs, 11/3. / allucent_notes_20251104_160200: John Capriotti on 2025-10-07 13:10: Need to confirm dry-in status/completion date before bringing in these CRAH units, pushing a week until I can get confirmed status. / John Capriotti on 2025-10-21 14:10: Tentatively planning to received and bring in these CRAHs, 11/3. / John Capriotti on 2025-11-04 14:11: From my understanding we are waiting on a few walls to be finished, meeting tomorrow with Belaire to discuss when and how many to bring in each day. / allucent_notes_20251111_182405: John Capriotti on 2025-10-07 13:10: Need to confirm dry-in status/completion date before bringing in these CRAH units, pushing a week until I can get confirmed status. / John Capriotti on 2025-10-21 14:10: Tentatively planning to received and bring in these CRAHs, 11/3. / John Capriotti on 2025-11-04 14:11: From my understanding we are waiting on a few walls to be finished, meeting tomorrow with Belaire to discuss when and how many to bring in each day. / allucent_notes_20251118_192630: John Capriotti on 2025-10-07 13:10: Need to confirm dry-in status/completion date before bringing in these CRAH units, pushing a week until I can get confirmed status. / John Capriotti on 2025-10-21 14:10: Tentatively planning to received and bring in these CRAHs, 11/3. / John Capriotti on 2025-11-04 14:11: From my understanding we are waiting on a few walls to be finished, meeting tomorrow with Belaire to discuss when and how many to bring in each day. / allucent_notes_20251202_153722: John Capriotti on 2025-10-07 13:10: Need to confirm dry-in status/completion date before bringing in these CRAH units, pushing a week until I can get confirmed status. / John Capriotti on 2025-10-21 14:10: Tentatively planning to received and bring in these CRAHs, 11/3. / John Capriotti on 2025-11-04 14:11: From my understanding we are waiting on a few walls to be finished, meeting tomorrow with Belaire to discuss when and how many to bring in each day. / Jason Johnston on 2025-12-02 11:50: Not delivered yet / allucent_notes_20251209_203830: John Capriotti on 2025-10-07 13:10: Need to confirm dry-in status/completion date before bringing in these CRAH units, pushing a week until I can get confirmed status. / John Capriotti on 2025-10-21 14:10: Tentatively planning to received and bring in these CRAHs, 11/3. / John Capriotti on 2025-11-04 14:11: From my understanding we are waiting on a few walls to be finished, meeting tomorrow with Belaire to discuss when and how many to bring in each day. / Jason Johnston on 2025-12-02 11:50: Not delivered yet / John Capriotti on 2025-12-09 12:29: Delivery scheduled for 12/15 / allucent_notes_20251216_165335: John Capriotti on 2025-10-07 13:10: Need to confirm dry-in status/completion date before bringing in these CRAH units, pushing a week until I can get confirmed status. / John Capriotti on 2025-10-21 14:10: Tentatively planning to received and bring in these CRAHs, 11/3. / John Capriotti on 2025-11-04 14:11: From my understanding we are waiting on a few walls to be finished, meeting tomorrow with Belaire to discuss when and how many to bring in each day. / Jason Johnston on 2025-12-02 11:50: Not delivered yet / John Capriotti on 2025-12-09 12:29: Delivery scheduled for 12/15 / allucent_notes: 2025-10-07 13:10 - User: John Capriotti - Date Added: 2025-10-07 13:10 - Note: Need to confirm dry-in status/completion date before bringing in these CRAH units, pushing a week until I can get confirmed status. / 2025-10-21 14:10 - User: John Capriotti -
- QTS-34541: allucent_notes_20251014_152335: John Capriotti on 2025-10-07 13:10: Need to confirm dry-in status/completion date before bringing in these CRAH units, pushing a week until I can get confirmed status. / allucent_notes_20251021_145627: John Capriotti on 2025-10-07 13:10: Need to confirm dry-in status/completion date before bringing in these CRAH units, pushing a week until I can get confirmed status. / John Capriotti on 2025-10-21 14:10: Tentatively planning to received and bring in these CRAHs, 11/3. / allucent_notes_20251027_224008: John Capriotti on 2025-10-07 13:10: Need to confirm dry-in status/completion date before bringing in these CRAH units, pushing a week until I can get confirmed status. / John Capriotti on 2025-10-21 14:10: Tentatively planning to received and bring in these CRAHs, 11/3. / allucent_notes_20251028_163138: John Capriotti on 2025-10-07 13:10: Need to confirm dry-in status/completion date before bringing in these CRAH units, pushing a week until I can get confirmed status. / John Capriotti on 2025-10-21 14:10: Tentatively planning to received and bring in these CRAHs, 11/3. / allucent_notes_20251104_160200: John Capriotti on 2025-10-07 13:10: Need to confirm dry-in status/completion date before bringing in these CRAH units, pushing a week until I can get confirmed status. / John Capriotti on 2025-10-21 14:10: Tentatively planning to received and bring in these CRAHs, 11/3. / John Capriotti on 2025-11-04 14:11: From my understanding we are waiting on a few walls to be finished, meeting tomorrow with Belaire to discuss when and how many to bring in each day. / allucent_notes_20251111_182405: John Capriotti on 2025-10-07 13:10: Need to confirm dry-in status/completion date before bringing in these CRAH units, pushing a week until I can get confirmed status. / John Capriotti on 2025-10-21 14:10: Tentatively planning to received and bring in these CRAHs, 11/3. / John Capriotti on 2025-11-04 14:11: From my understanding we are waiting on a few walls to be finished, meeting tomorrow with Belaire to discuss when and how many to bring in each day. / allucent_notes_20251118_192630: John Capriotti on 2025-10-07 13:10: Need to confirm dry-in status/completion date before bringing in these CRAH units, pushing a week until I can get confirmed status. / John Capriotti on 2025-10-21 14:10: Tentatively planning to received and bring in these CRAHs, 11/3. / John Capriotti on 2025-11-04 14:11: From my understanding we are waiting on a few walls to be finished, meeting tomorrow with Belaire to discuss when and how many to bring in each day. / allucent_notes_20251202_153722: John Capriotti on 2025-10-07 13:10: Need to confirm dry-in status/completion date before bringing in these CRAH units, pushing a week until I can get confirmed status. / John Capriotti on 2025-10-21 14:10: Tentatively planning to received and bring in these CRAHs, 11/3. / John Capriotti on 2025-11-04 14:11: From my understanding we are waiting on a few walls to be finished, meeting tomorrow with Belaire to discuss when and how many to bring in each day. / Jason Johnston on 2025-12-02 11:50: Not delivered yet / allucent_notes_20251209_203830: John Capriotti on 2025-10-07 13:10: Need to confirm dry-in status/completion date before bringing in these CRAH units, pushing a week until I can get confirmed status. / John Capriotti on 2025-10-21 14:10: Tentatively planning to received and bring in these CRAHs, 11/3. / John Capriotti on 2025-11-04 14:11: From my understanding we are waiting on a few walls to be finished, meeting tomorrow with Belaire to discuss when and how many to bring in each day. / Jason Johnston on 2025-12-02 11:50: Not delivered yet / John Capriotti on 2025-12-09 12:29: Delivery scheduled for 12/15 / allucent_notes_20251216_165335: John Capriotti on 2025-10-07 13:10: Need to confirm dry-in status/completion date before bringing in these CRAH units, pushing a week until I can get confirmed status. / John Capriotti on 2025-10-21 14:10: Tentatively planning to received and bring in these CRAHs, 11/3. / John Capriotti on 2025-11-04 14:11: From my understanding we are waiting on a few walls to be finished, meeting tomorrow with Belaire to discuss when and how many to bring in each day. / Jason Johnston on 2025-12-02 11:50: Not delivered yet / John Capriotti on 2025-12-09 12:29: Delivery scheduled for 12/15 / allucent_notes: 2025-10-07 13:10 - User: John Capriotti - Date Added: 2025-10-07 13:10 - Note: Need to confirm dry-in status/completion date before bringing in these CRAH units, pushing a week until I can get confirmed status. / 2025-10-21 14:10 - User: John Capriotti -
- QTS-34551: allucent_notes_20251014_152335: John Capriotti on 2025-10-07 13:10: Need to confirm dry-in status/completion date before bringing in these CRAH units, pushing a week until I can get confirmed status. / allucent_notes_20251021_145627: John Capriotti on 2025-10-07 13:10: Need to confirm dry-in status/completion date before bringing in these CRAH units, pushing a week until I can get confirmed status. / John Capriotti on 2025-10-21 14:10: Tentatively planning to received and bring in these CRAHs, 11/3. / allucent_notes_20251027_224008: John Capriotti on 2025-10-07 13:10: Need to confirm dry-in status/completion date before bringing in these CRAH units, pushing a week until I can get confirmed status. / John Capriotti on 2025-10-21 14:10: Tentatively planning to received and bring in these CRAHs, 11/3. / allucent_notes_20251028_163138: John Capriotti on 2025-10-07 13:10: Need to confirm dry-in status/completion date before bringing in these CRAH units, pushing a week until I can get confirmed status. / John Capriotti on 2025-10-21 14:10: Tentatively planning to received and bring in these CRAHs, 11/3. / allucent_notes_20251104_160200: John Capriotti on 2025-10-07 13:10: Need to confirm dry-in status/completion date before bringing in these CRAH units, pushing a week until I can get confirmed status. / John Capriotti on 2025-10-21 14:10: Tentatively planning to received and bring in these CRAHs, 11/3. / John Capriotti on 2025-11-04 14:11: From my understanding we are waiting on a few walls to be finished, meeting tomorrow with Belaire to discuss when and how many to bring in each day. / allucent_notes_20251111_182405: John Capriotti on 2025-10-07 13:10: Need to confirm dry-in status/completion date before bringing in these CRAH units, pushing a week until I can get confirmed status. / John Capriotti on 2025-10-21 14:10: Tentatively planning to received and bring in these CRAHs, 11/3. / John Capriotti on 2025-11-04 14:11: From my understanding we are waiting on a few walls to be finished, meeting tomorrow with Belaire to discuss when and how many to bring in each day. / allucent_notes_20251118_192630: John Capriotti on 2025-10-07 13:10: Need to confirm dry-in status/completion date before bringing in these CRAH units, pushing a week until I can get confirmed status. / John Capriotti on 2025-10-21 14:10: Tentatively planning to received and bring in these CRAHs, 11/3. / John Capriotti on 2025-11-04 14:11: From my understanding we are waiting on a few walls to be finished, meeting tomorrow with Belaire to discuss when and how many to bring in each day. / allucent_notes_20251202_153722: John Capriotti on 2025-10-07 13:10: Need to confirm dry-in status/completion date before bringing in these CRAH units, pushing a week until I can get confirmed status. / John Capriotti on 2025-10-21 14:10: Tentatively planning to received and bring in these CRAHs, 11/3. / John Capriotti on 2025-11-04 14:11: From my understanding we are waiting on a few walls to be finished, meeting tomorrow with Belaire to discuss when and how many to bring in each day. / Jason Johnston on 2025-12-02 11:50: Not delivered yet / allucent_notes_20251209_203830: John Capriotti on 2025-10-07 13:10: Need to confirm dry-in status/completion date before bringing in these CRAH units, pushing a week until I can get confirmed status. / John Capriotti on 2025-10-21 14:10: Tentatively planning to received and bring in these CRAHs, 11/3. / John Capriotti on 2025-11-04 14:11: From my understanding we are waiting on a few walls to be finished, meeting tomorrow with Belaire to discuss when and how many to bring in each day. / Jason Johnston on 2025-12-02 11:50: Not delivered yet / John Capriotti on 2025-12-09 12:30: Delivery scheduled for 12/15 / allucent_notes_20251216_165335: John Capriotti on 2025-10-07 13:10: Need to confirm dry-in status/completion date before bringing in these CRAH units, pushing a week until I can get confirmed status. / John Capriotti on 2025-10-21 14:10: Tentatively planning to received and bring in these CRAHs, 11/3. / John Capriotti on 2025-11-04 14:11: From my understanding we are waiting on a few walls to be finished, meeting tomorrow with Belaire to discuss when and how many to bring in each day. / Jason Johnston on 2025-12-02 11:50: Not delivered yet / John Capriotti on 2025-12-09 12:30: Delivery scheduled for 12/15 / allucent_notes: 2025-10-07 13:10 - User: John Capriotti - Date Added: 2025-10-07 13:10 - Note: Need to confirm dry-in status/completion date before bringing in these CRAH units, pushing a week until I can get confirmed status. / 2025-10-21 14:10 - User: John Capriotti -
- QTS-34561: allucent_notes_20251014_152335: John Capriotti on 2025-10-07 13:10: Need to confirm dry-in status/completion date before bringing in these CRAH units, pushing a week until I can get confirmed status. / allucent_notes_20251021_145627: John Capriotti on 2025-10-07 13:10: Need to confirm dry-in status/completion date before bringing in these CRAH units, pushing a week until I can get confirmed status. / John Capriotti on 2025-10-21 14:10: Tentatively planning to received and bring in these CRAHs, 11/3. / allucent_notes_20251027_224008: John Capriotti on 2025-10-07 13:10: Need to confirm dry-in status/completion date before bringing in these CRAH units, pushing a week until I can get confirmed status. / John Capriotti on 2025-10-21 14:10: Tentatively planning to received and bring in these CRAHs, 11/3. / allucent_notes_20251028_163138: John Capriotti on 2025-10-07 13:10: Need to confirm dry-in status/completion date before bringing in these CRAH units, pushing a week until I can get confirmed status. / John Capriotti on 2025-10-21 14:10: Tentatively planning to received and bring in these CRAHs, 11/3. / allucent_notes_20251104_160200: John Capriotti on 2025-10-07 13:10: Need to confirm dry-in status/completion date before bringing in these CRAH units, pushing a week until I can get confirmed status. / John Capriotti on 2025-10-21 14:10: Tentatively planning to received and bring in these CRAHs, 11/3. / John Capriotti on 2025-11-04 14:11: From my understanding we are waiting on a few walls to be finished, meeting tomorrow with Belaire to discuss when and how many to bring in each day. / allucent_notes_20251111_182405: John Capriotti on 2025-10-07 13:10: Need to confirm dry-in status/completion date before bringing in these CRAH units, pushing a week until I can get confirmed status. / John Capriotti on 2025-10-21 14:10: Tentatively planning to received and bring in these CRAHs, 11/3. / John Capriotti on 2025-11-04 14:11: From my understanding we are waiting on a few walls to be finished, meeting tomorrow with Belaire to discuss when and how many to bring in each day. / allucent_notes_20251118_192630: John Capriotti on 2025-10-07 13:10: Need to confirm dry-in status/completion date before bringing in these CRAH units, pushing a week until I can get confirmed status. / John Capriotti on 2025-10-21 14:10: Tentatively planning to received and bring in these CRAHs, 11/3. / John Capriotti on 2025-11-04 14:11: From my understanding we are waiting on a few walls to be finished, meeting tomorrow with Belaire to discuss when and how many to bring in each day. / allucent_notes_20251202_153722: John Capriotti on 2025-10-07 13:10: Need to confirm dry-in status/completion date before bringing in these CRAH units, pushing a week until I can get confirmed status. / John Capriotti on 2025-10-21 14:10: Tentatively planning to received and bring in these CRAHs, 11/3. / John Capriotti on 2025-11-04 14:11: From my understanding we are waiting on a few walls to be finished, meeting tomorrow with Belaire to discuss when and how many to bring in each day. / Jason Johnston on 2025-12-02 11:50: Not delivered yet / allucent_notes_20251209_203830: John Capriotti on 2025-10-07 13:10: Need to confirm dry-in status/completion date before bringing in these CRAH units, pushing a week until I can get confirmed status. / John Capriotti on 2025-10-21 14:10: Tentatively planning to received and bring in these CRAHs, 11/3. / John Capriotti on 2025-11-04 14:11: From my understanding we are waiting on a few walls to be finished, meeting tomorrow with Belaire to discuss when and how many to bring in each day. / Jason Johnston on 2025-12-02 11:50: Not delivered yet / John Capriotti on 2025-12-09 12:30: Delivery scheduled for 12/15 / allucent_notes_20251216_165335: John Capriotti on 2025-10-07 13:10: Need to confirm dry-in status/completion date before bringing in these CRAH units, pushing a week until I can get confirmed status. / John Capriotti on 2025-10-21 14:10: Tentatively planning to received and bring in these CRAHs, 11/3. / John Capriotti on 2025-11-04 14:11: From my understanding we are waiting on a few walls to be finished, meeting tomorrow with Belaire to discuss when and how many to bring in each day. / Jason Johnston on 2025-12-02 11:50: Not delivered yet / John Capriotti on 2025-12-09 12:30: Delivery scheduled for 12/15 / allucent_notes: 2025-10-07 13:10 - User: John Capriotti - Date Added: 2025-10-07 13:10 - Note: Need to confirm dry-in status/completion date before bringing in these CRAH units, pushing a week until I can get confirmed status. / 2025-10-21 14:10 - User: John Capriotti -
- QTS-34251: allucent_notes_20251014_152335: John Capriotti on 2025-10-07 13:10: Need to confirm dry-in status/completion date before bringing in these CRAH units, pushing a week until I can get confirmed status. / allucent_notes_20251021_145627: John Capriotti on 2025-10-07 13:10: Need to confirm dry-in status/completion date before bringing in these CRAH units, pushing a week until I can get confirmed status. / John Capriotti on 2025-10-21 14:10: Planning to set these in roughly two weeks working to get the deliveries set-up with QTS. / allucent_notes_20251027_224008: John Capriotti on 2025-10-07 13:10: Need to confirm dry-in status/completion date before bringing in these CRAH units, pushing a week until I can get confirmed status. / John Capriotti on 2025-10-21 14:10: Planning to set these in roughly two weeks working to get the deliveries set-up with QTS. / allucent_notes_20251028_163138: John Capriotti on 2025-10-07 13:10: Need to confirm dry-in status/completion date before bringing in these CRAH units, pushing a week until I can get confirmed status. / John Capriotti on 2025-10-21 14:10: Planning to set these in roughly two weeks working to get the deliveries set-up with QTS. / allucent_notes_20251104_160200: John Capriotti on 2025-10-07 13:10: Need to confirm dry-in status/completion date before bringing in these CRAH units, pushing a week until I can get confirmed status. / John Capriotti on 2025-10-21 14:10: Planning to set these in roughly two weeks working to get the deliveries set-up with QTS. / John Capriotti on 2025-11-04 14:11: From my understanding we are waiting on a few walls to be finished, meeting tomorrow with Belaire to discuss when and how many to bring in each day. / allucent_notes_20251111_182405: John Capriotti on 2025-10-07 13:10: Need to confirm dry-in status/completion date before bringing in these CRAH units, pushing a week until I can get confirmed status. / John Capriotti on 2025-10-21 14:10: Planning to set these in roughly two weeks working to get the deliveries set-up with QTS. / John Capriotti on 2025-11-04 14:11: From my understanding we are waiting on a few walls to be finished, meeting tomorrow with Belaire to discuss when and how many to bring in each day. / allucent_notes_20251118_192630: John Capriotti on 2025-10-07 13:10: Need to confirm dry-in status/completion date before bringing in these CRAH units, pushing a week until I can get confirmed status. / John Capriotti on 2025-10-21 14:10: Planning to set these in roughly two weeks working to get the deliveries set-up with QTS. / John Capriotti on 2025-11-04 14:11: From my understanding we are waiting on a few walls to be finished, meeting tomorrow with Belaire to discuss when and how many to bring in each day. / allucent_notes_20251202_153722: John Capriotti on 2025-10-07 13:10: Need to confirm dry-in status/completion date before bringing in these CRAH units, pushing a week until I can get confirmed status. / John Capriotti on 2025-10-21 14:10: Planning to set these in roughly two weeks working to get the deliveries set-up with QTS. / John Capriotti on 2025-11-04 14:11: From my understanding we are waiting on a few walls to be finished, meeting tomorrow with Belaire to discuss when and how many to bring in each day. / Jason Johnston on 2025-12-02 11:44: First delivery day / Jason Johnston on 2025-12-02 11:45: Delivery / allucent_notes: 2025-10-07 13:10 - User: John Capriotti - Date Added: 2025-10-07 13:10 - Note: Need to confirm dry-in status/completion date before bringing in these CRAH units, pushing a week until I can get confirmed status. / 2025-10-21 14:10 - User: John Capriotti -
- QTS-34261: allucent_notes_20251014_152335: John Capriotti on 2025-10-07 13:10: Need to confirm dry-in status/completion date before bringing in these CRAH units, pushing a week until I can get confirmed status. / allucent_notes_20251021_145627: John Capriotti on 2025-10-07 13:10: Need to confirm dry-in status/completion date before bringing in these CRAH units, pushing a week until I can get confirmed status. / John Capriotti on 2025-10-21 14:10: Planning to set these in roughly two weeks working to get the deliveries set-up with QTS. / allucent_notes_20251027_224008: John Capriotti on 2025-10-07 13:10: Need to confirm dry-in status/completion date before bringing in these CRAH units, pushing a week until I can get confirmed status. / John Capriotti on 2025-10-21 14:10: Planning to set these in roughly two weeks working to get the deliveries set-up with QTS. / allucent_notes_20251028_163138: John Capriotti on 2025-10-07 13:10: Need to confirm dry-in status/completion date before bringing in these CRAH units, pushing a week until I can get confirmed status. / John Capriotti on 2025-10-21 14:10: Planning to set these in roughly two weeks working to get the deliveries set-up with QTS. / allucent_notes_20251104_160200: John Capriotti on 2025-10-07 13:10: Need to confirm dry-in status/completion date before bringing in these CRAH units, pushing a week until I can get confirmed status. / John Capriotti on 2025-10-21 14:10: Planning to set these in roughly two weeks working to get the deliveries set-up with QTS. / John Capriotti on 2025-11-04 15:11: From my understanding we are waiting on a few walls to be finished, meeting tomorrow with Belaire to discuss when and how many to bring in each day. / allucent_notes_20251111_182405: John Capriotti on 2025-10-07 13:10: Need to confirm dry-in status/completion date before bringing in these CRAH units, pushing a week until I can get confirmed status. / John Capriotti on 2025-10-21 14:10: Planning to set these in roughly two weeks working to get the deliveries set-up with QTS. / John Capriotti on 2025-11-04 15:11: From my understanding we are waiting on a few walls to be finished, meeting tomorrow with Belaire to discuss when and how many to bring in each day. / allucent_notes_20251118_192630: John Capriotti on 2025-10-07 13:10: Need to confirm dry-in status/completion date before bringing in these CRAH units, pushing a week until I can get confirmed status. / John Capriotti on 2025-10-21 14:10: Planning to set these in roughly two weeks working to get the deliveries set-up with QTS. / John Capriotti on 2025-11-04 15:11: From my understanding we are waiting on a few walls to be finished, meeting tomorrow with Belaire to discuss when and how many to bring in each day. / allucent_notes_20251202_153722: John Capriotti on 2025-10-07 13:10: Need to confirm dry-in status/completion date before bringing in these CRAH units, pushing a week until I can get confirmed status. / John Capriotti on 2025-10-21 14:10: Planning to set these in roughly two weeks working to get the deliveries set-up with QTS. / John Capriotti on 2025-11-04 15:11: From my understanding we are waiting on a few walls to be finished, meeting tomorrow with Belaire to discuss when and how many to bring in each day. / Jason Johnston on 2025-12-02 11:44: First delivery day / Jason Johnston on 2025-12-02 11:45: Delivery / allucent_notes: 2025-10-07 13:10 - User: John Capriotti - Date Added: 2025-10-07 13:10 - Note: Need to confirm dry-in status/completion date before bringing in these CRAH units, pushing a week until I can get confirmed status. / 2025-10-21 14:10 - User: John Capriotti -
- QTS-34271: allucent_notes_20251014_152335: John Capriotti on 2025-10-07 13:10: Need to confirm dry-in status/completion date before bringing in these CRAH units, pushing a week until I can get confirmed status. / allucent_notes_20251021_145627: John Capriotti on 2025-10-07 13:10: Need to confirm dry-in status/completion date before bringing in these CRAH units, pushing a week until I can get confirmed status. / John Capriotti on 2025-10-21 14:10: Planning to set these in roughly two weeks working to get the deliveries set-up with QTS. / allucent_notes_20251027_224008: John Capriotti on 2025-10-07 13:10: Need to confirm dry-in status/completion date before bringing in these CRAH units, pushing a week until I can get confirmed status. / John Capriotti on 2025-10-21 14:10: Planning to set these in roughly two weeks working to get the deliveries set-up with QTS. / allucent_notes_20251028_163138: John Capriotti on 2025-10-07 13:10: Need to confirm dry-in status/completion date before bringing in these CRAH units, pushing a week until I can get confirmed status. / John Capriotti on 2025-10-21 14:10: Planning to set these in roughly two weeks working to get the deliveries set-up with QTS. / allucent_notes_20251104_160200: John Capriotti on 2025-10-07 13:10: Need to confirm dry-in status/completion date before bringing in these CRAH units, pushing a week until I can get confirmed status. / John Capriotti on 2025-10-21 14:10: Planning to set these in roughly two weeks working to get the deliveries set-up with QTS. / John Capriotti on 2025-11-04 15:11: From my understanding we are waiting on a few walls to be finished, meeting tomorrow with Belaire to discuss when and how many to bring in each day. / allucent_notes_20251111_182405: John Capriotti on 2025-10-07 13:10: Need to confirm dry-in status/completion date before bringing in these CRAH units, pushing a week until I can get confirmed status. / John Capriotti on 2025-10-21 14:10: Planning to set these in roughly two weeks working to get the deliveries set-up with QTS. / John Capriotti on 2025-11-04 15:11: From my understanding we are waiting on a few walls to be finished, meeting tomorrow with Belaire to discuss when and how many to bring in each day. / allucent_notes_20251118_192630: John Capriotti on 2025-10-07 13:10: Need to confirm dry-in status/completion date before bringing in these CRAH units, pushing a week until I can get confirmed status. / John Capriotti on 2025-10-21 14:10: Planning to set these in roughly two weeks working to get the deliveries set-up with QTS. / John Capriotti on 2025-11-04 15:11: From my understanding we are waiting on a few walls to be finished, meeting tomorrow with Belaire to discuss when and how many to bring in each day. / allucent_notes_20251202_153722: John Capriotti on 2025-10-07 13:10: Need to confirm dry-in status/completion date before bringing in these CRAH units, pushing a week until I can get confirmed status. / John Capriotti on 2025-10-21 14:10: Planning to set these in roughly two weeks working to get the deliveries set-up with QTS. / John Capriotti on 2025-11-04 15:11: From my understanding we are waiting on a few walls to be finished, meeting tomorrow with Belaire to discuss when and how many to bring in each day. / Jason Johnston on 2025-12-02 11:44: Delivery / Jason Johnston on 2025-12-02 11:45: Delivery / allucent_notes: 2025-10-07 13:10 - User: John Capriotti - Date Added: 2025-10-07 13:10 - Note: Need to confirm dry-in status/completion date before bringing in these CRAH units, pushing a week until I can get confirmed status. / 2025-10-21 14:10 - User: John Capriotti -
- QTS-34281: allucent_notes_20251014_152335: John Capriotti on 2025-10-07 13:10: Need to confirm dry-in status/completion date before bringing in these CRAH units, pushing a week until I can get confirmed status. / allucent_notes_20251021_145627: John Capriotti on 2025-10-07 13:10: Need to confirm dry-in status/completion date before bringing in these CRAH units, pushing a week until I can get confirmed status. / John Capriotti on 2025-10-21 14:10: Planning to set these in roughly two weeks working to get the deliveries set-up with QTS. / John Capriotti on 2025-10-21 14:10: Planning to set these in roughly two weeks working to get the deliveries set-up with QTS. / allucent_notes_20251027_224008: John Capriotti on 2025-10-07 13:10: Need to confirm dry-in status/completion date before bringing in these CRAH units, pushing a week until I can get confirmed status. / John Capriotti on 2025-10-21 14:10: Planning to set these in roughly two weeks working to get the deliveries set-up with QTS. / John Capriotti on 2025-10-21 14:10: Planning to set these in roughly two weeks working to get the deliveries set-up with QTS. / allucent_notes_20251028_163138: John Capriotti on 2025-10-07 13:10: Need to confirm dry-in status/completion date before bringing in these CRAH units, pushing a week until I can get confirmed status. / John Capriotti on 2025-10-21 14:10: Planning to set these in roughly two weeks working to get the deliveries set-up with QTS. / John Capriotti on 2025-10-21 14:10: Planning to set these in roughly two weeks working to get the deliveries set-up with QTS. / allucent_notes_20251104_160200: John Capriotti on 2025-10-07 13:10: Need to confirm dry-in status/completion date before bringing in these CRAH units, pushing a week until I can get confirmed status. / John Capriotti on 2025-10-21 14:10: Planning to set these in roughly two weeks working to get the deliveries set-up with QTS. / John Capriotti on 2025-10-21 14:10: Planning to set these in roughly two weeks working to get the deliveries set-up with QTS. / John Capriotti on 2025-11-04 15:11: From my understanding we are waiting on a few walls to be finished, meeting tomorrow with Belaire to discuss when and how many to bring in each day. / allucent_notes_20251111_182405: John Capriotti on 2025-10-07 13:10: Need to confirm dry-in status/completion date before bringing in these CRAH units, pushing a week until I can get confirmed status. / John Capriotti on 2025-10-21 14:10: Planning to set these in roughly two weeks working to get the deliveries set-up with QTS. / John Capriotti on 2025-10-21 14:10: Planning to set these in roughly two weeks working to get the deliveries set-up with QTS. / John Capriotti on 2025-11-04 15:11: From my understanding we are waiting on a few walls to be finished, meeting tomorrow with Belaire to discuss when and how many to bring in each day. / allucent_notes_20251118_192630: John Capriotti on 2025-10-07 13:10: Need to confirm dry-in status/completion date before bringing in these CRAH units, pushing a week until I can get confirmed status. / John Capriotti on 2025-10-21 14:10: Planning to set these in roughly two weeks working to get the deliveries set-up with QTS. / John Capriotti on 2025-10-21 14:10: Planning to set these in roughly two weeks working to get the deliveries set-up with QTS. / John Capriotti on 2025-11-04 15:11: From my understanding we are waiting on a few walls to be finished, meeting tomorrow with Belaire to discuss when and how many to bring in each day. / allucent_notes_20251202_153722: John Capriotti on 2025-10-07 13:10: Need to confirm dry-in status/completion date before bringing in these CRAH units, pushing a week until I can get confirmed status. / John Capriotti on 2025-10-21 14:10: Planning to set these in roughly two weeks working to get the deliveries set-up with QTS. / John Capriotti on 2025-10-21 14:10: Planning to set these in roughly two weeks working to get the deliveries set-up with QTS. / John Capriotti on 2025-11-04 15:11: From my understanding we are waiting on a few walls to be finished, meeting tomorrow with Belaire to discuss when and how many to bring in each day. / Jason Johnston on 2025-12-02 11:44: Delivery / Jason Johnston on 2025-12-02 11:46: Delivery / allucent_notes: 2025-10-07 13:10 - User: John Capriotti - Date Added: 2025-10-07 13:10 - Note: Need to confirm dry-in status/completion date before bringing in these CRAH units, pushing a week until I can get confirmed status. / 2025-10-21 14:10 - User: John Capriotti -
- QTS-34291: allucent_notes_20251014_152335: John Capriotti on 2025-10-07 13:10: Need to confirm dry-in status/completion date before bringing in these CRAH units, pushing a week until I can get confirmed status. / allucent_notes_20251021_145627: John Capriotti on 2025-10-07 13:10: Need to confirm dry-in status/completion date before bringing in these CRAH units, pushing a week until I can get confirmed status. / John Capriotti on 2025-10-21 14:10: Planning to set these in roughly two weeks working to get the deliveries set-up with QTS. / allucent_notes_20251027_224008: John Capriotti on 2025-10-07 13:10: Need to confirm dry-in status/completion date before bringing in these CRAH units, pushing a week until I can get confirmed status. / John Capriotti on 2025-10-21 14:10: Planning to set these in roughly two weeks working to get the deliveries set-up with QTS. / allucent_notes_20251028_163138: John Capriotti on 2025-10-07 13:10: Need to confirm dry-in status/completion date before bringing in these CRAH units, pushing a week until I can get confirmed status. / John Capriotti on 2025-10-21 14:10: Planning to set these in roughly two weeks working to get the deliveries set-up with QTS. / allucent_notes_20251104_160200: John Capriotti on 2025-10-07 13:10: Need to confirm dry-in status/completion date before bringing in these CRAH units, pushing a week until I can get confirmed status. / John Capriotti on 2025-10-21 14:10: Planning to set these in roughly two weeks working to get the deliveries set-up with QTS. / John Capriotti on 2025-11-04 15:11: From my understanding we are waiting on a few walls to be finished, meeting tomorrow with Belaire to discuss when and how many to bring in each day. / allucent_notes_20251111_182405: John Capriotti on 2025-10-07 13:10: Need to confirm dry-in status/completion date before bringing in these CRAH units, pushing a week until I can get confirmed status. / John Capriotti on 2025-10-21 14:10: Planning to set these in roughly two weeks working to get the deliveries set-up with QTS. / John Capriotti on 2025-11-04 15:11: From my understanding we are waiting on a few walls to be finished, meeting tomorrow with Belaire to discuss when and how many to bring in each day. / allucent_notes_20251118_192630: John Capriotti on 2025-10-07 13:10: Need to confirm dry-in status/completion date before bringing in these CRAH units, pushing a week until I can get confirmed status. / John Capriotti on 2025-10-21 14:10: Planning to set these in roughly two weeks working to get the deliveries set-up with QTS. / John Capriotti on 2025-11-04 15:11: From my understanding we are waiting on a few walls to be finished, meeting tomorrow with Belaire to discuss when and how many to bring in each day. / allucent_notes_20251202_153722: John Capriotti on 2025-10-07 13:10: Need to confirm dry-in status/completion date before bringing in these CRAH units, pushing a week until I can get confirmed status. / John Capriotti on 2025-10-21 14:10: Planning to set these in roughly two weeks working to get the deliveries set-up with QTS. / John Capriotti on 2025-11-04 15:11: From my understanding we are waiting on a few walls to be finished, meeting tomorrow with Belaire to discuss when and how many to bring in each day. / Jason Johnston on 2025-12-02 11:46: Delivery / allucent_notes: 2025-10-07 13:10 - User: John Capriotti - Date Added: 2025-10-07 13:10 - Note: Need to confirm dry-in status/completion date before bringing in these CRAH units, pushing a week until I can get confirmed status. / 2025-10-21 14:10 - User: John Capriotti -
- QTS-34301: allucent_notes_20251014_152335: John Capriotti on 2025-10-07 13:10: Need to confirm dry-in status/completion date before bringing in these CRAH units, pushing a week until I can get confirmed status. / allucent_notes_20251021_145627: John Capriotti on 2025-10-07 13:10: Need to confirm dry-in status/completion date before bringing in these CRAH units, pushing a week until I can get confirmed status. / John Capriotti on 2025-10-21 14:10: Planning to set these in roughly two weeks working to get the deliveries set-up with QTS. / allucent_notes_20251027_224008: John Capriotti on 2025-10-07 13:10: Need to confirm dry-in status/completion date before bringing in these CRAH units, pushing a week until I can get confirmed status. / John Capriotti on 2025-10-21 14:10: Planning to set these in roughly two weeks working to get the deliveries set-up with QTS. / allucent_notes_20251028_163138: John Capriotti on 2025-10-07 13:10: Need to confirm dry-in status/completion date before bringing in these CRAH units, pushing a week until I can get confirmed status. / John Capriotti on 2025-10-21 14:10: Planning to set these in roughly two weeks working to get the deliveries set-up with QTS. / allucent_notes_20251104_160200: John Capriotti on 2025-10-07 13:10: Need to confirm dry-in status/completion date before bringing in these CRAH units, pushing a week until I can get confirmed status. / John Capriotti on 2025-10-21 14:10: Planning to set these in roughly two weeks working to get the deliveries set-up with QTS. / John Capriotti on 2025-11-04 15:11: From my understanding we are waiting on a few walls to be finished, meeting tomorrow with Belaire to discuss when and how many to bring in each day. / allucent_notes_20251111_182405: John Capriotti on 2025-10-07 13:10: Need to confirm dry-in status/completion date before bringing in these CRAH units, pushing a week until I can get confirmed status. / John Capriotti on 2025-10-21 14:10: Planning to set these in roughly two weeks working to get the deliveries set-up with QTS. / John Capriotti on 2025-11-04 15:11: From my understanding we are waiting on a few walls to be finished, meeting tomorrow with Belaire to discuss when and how many to bring in each day. / allucent_notes_20251118_192630: John Capriotti on 2025-10-07 13:10: Need to confirm dry-in status/completion date before bringing in these CRAH units, pushing a week until I can get confirmed status. / John Capriotti on 2025-10-21 14:10: Planning to set these in roughly two weeks working to get the deliveries set-up with QTS. / John Capriotti on 2025-11-04 15:11: From my understanding we are waiting on a few walls to be finished, meeting tomorrow with Belaire to discuss when and how many to bring in each day. / allucent_notes_20251202_153722: John Capriotti on 2025-10-07 13:10: Need to confirm dry-in status/completion date before bringing in these CRAH units, pushing a week until I can get confirmed status. / John Capriotti on 2025-10-21 14:10: Planning to set these in roughly two weeks working to get the deliveries set-up with QTS. / John Capriotti on 2025-11-04 15:11: From my understanding we are waiting on a few walls to be finished, meeting tomorrow with Belaire to discuss when and how many to bring in each day. / Jason Johnston on 2025-12-02 11:46: Delivery / allucent_notes: 2025-10-07 13:10 - User: John Capriotti - Date Added: 2025-10-07 13:10 - Note: Need to confirm dry-in status/completion date before bringing in these CRAH units, pushing a week until I can get confirmed status. / 2025-10-21 14:10 - User: John Capriotti -
- QTS-34311: allucent_notes_20251014_152335: John Capriotti on 2025-10-07 13:10: Need to confirm dry-in status/completion date before bringing in these CRAH units, pushing a week until I can get confirmed status / allucent_notes_20251021_145627: John Capriotti on 2025-10-07 13:10: Need to confirm dry-in status/completion date before bringing in these CRAH units, pushing a week until I can get confirmed status / John Capriotti on 2025-10-21 14:10: Planning to set these in roughly two weeks working to get the deliveries set-up with QTS. / allucent_notes_20251027_224008: John Capriotti on 2025-10-07 13:10: Need to confirm dry-in status/completion date before bringing in these CRAH units, pushing a week until I can get confirmed status / John Capriotti on 2025-10-21 14:10: Planning to set these in roughly two weeks working to get the deliveries set-up with QTS. / allucent_notes_20251028_163138: John Capriotti on 2025-10-07 13:10: Need to confirm dry-in status/completion date before bringing in these CRAH units, pushing a week until I can get confirmed status / John Capriotti on 2025-10-21 14:10: Planning to set these in roughly two weeks working to get the deliveries set-up with QTS. / allucent_notes_20251104_160200: John Capriotti on 2025-10-07 13:10: Need to confirm dry-in status/completion date before bringing in these CRAH units, pushing a week until I can get confirmed status / John Capriotti on 2025-10-21 14:10: Planning to set these in roughly two weeks working to get the deliveries set-up with QTS. / John Capriotti on 2025-11-04 15:11: From my understanding we are waiting on a few walls to be finished, meeting tomorrow with Belaire to discuss when and how many to bring in each day. / allucent_notes_20251111_182405: John Capriotti on 2025-10-07 13:10: Need to confirm dry-in status/completion date before bringing in these CRAH units, pushing a week until I can get confirmed status / John Capriotti on 2025-10-21 14:10: Planning to set these in roughly two weeks working to get the deliveries set-up with QTS. / John Capriotti on 2025-11-04 15:11: From my understanding we are waiting on a few walls to be finished, meeting tomorrow with Belaire to discuss when and how many to bring in each day. / allucent_notes_20251118_192630: John Capriotti on 2025-10-07 13:10: Need to confirm dry-in status/completion date before bringing in these CRAH units, pushing a week until I can get confirmed status / John Capriotti on 2025-10-21 14:10: Planning to set these in roughly two weeks working to get the deliveries set-up with QTS. / John Capriotti on 2025-11-04 15:11: From my understanding we are waiting on a few walls to be finished, meeting tomorrow with Belaire to discuss when and how many to bring in each day. / allucent_notes_20251202_153722: John Capriotti on 2025-10-07 13:10: Need to confirm dry-in status/completion date before bringing in these CRAH units, pushing a week until I can get confirmed status / John Capriotti on 2025-10-21 14:10: Planning to set these in roughly two weeks working to get the deliveries set-up with QTS. / John Capriotti on 2025-11-04 15:11: From my understanding we are waiting on a few walls to be finished, meeting tomorrow with Belaire to discuss when and how many to bring in each day. / Jason Johnston on 2025-12-02 11:46: Delivery / allucent_notes: 2025-10-07 13:10 - User: John Capriotti - Date Added: 2025-10-07 13:10 - Note: Need to confirm dry-in status/completion date before bringing in these CRAH units, pushing a week until I can get confirmed status / 2025-10-21 14:10 - User: John Capriotti -
- QTS-34321: allucent_notes_20251014_152335: John Capriotti on 2025-10-07 13:10: Need to confirm dry-in status/completion date before bringing in these CRAH units, pushing a week until I can get confirmed status. / allucent_notes_20251021_145627: John Capriotti on 2025-10-07 13:10: Need to confirm dry-in status/completion date before bringing in these CRAH units, pushing a week until I can get confirmed status. / John Capriotti on 2025-10-21 14:10: Planning to set these in roughly two weeks working to get the deliveries set-up with QTS. / allucent_notes_20251027_224008: John Capriotti on 2025-10-07 13:10: Need to confirm dry-in status/completion date before bringing in these CRAH units, pushing a week until I can get confirmed status. / John Capriotti on 2025-10-21 14:10: Planning to set these in roughly two weeks working to get the deliveries set-up with QTS. / allucent_notes_20251028_163138: John Capriotti on 2025-10-07 13:10: Need to confirm dry-in status/completion date before bringing in these CRAH units, pushing a week until I can get confirmed status. / John Capriotti on 2025-10-21 14:10: Planning to set these in roughly two weeks working to get the deliveries set-up with QTS. / allucent_notes_20251104_160200: John Capriotti on 2025-10-07 13:10: Need to confirm dry-in status/completion date before bringing in these CRAH units, pushing a week until I can get confirmed status. / John Capriotti on 2025-10-21 14:10: Planning to set these in roughly two weeks working to get the deliveries set-up with QTS. / John Capriotti on 2025-11-04 15:11: From my understanding we are waiting on a few walls to be finished, meeting tomorrow with Belaire to discuss when and how many to bring in each day. / allucent_notes_20251111_182405: John Capriotti on 2025-10-07 13:10: Need to confirm dry-in status/completion date before bringing in these CRAH units, pushing a week until I can get confirmed status. / John Capriotti on 2025-10-21 14:10: Planning to set these in roughly two weeks working to get the deliveries set-up with QTS. / John Capriotti on 2025-11-04 15:11: From my understanding we are waiting on a few walls to be finished, meeting tomorrow with Belaire to discuss when and how many to bring in each day. / allucent_notes_20251118_192630: John Capriotti on 2025-10-07 13:10: Need to confirm dry-in status/completion date before bringing in these CRAH units, pushing a week until I can get confirmed status. / John Capriotti on 2025-10-21 14:10: Planning to set these in roughly two weeks working to get the deliveries set-up with QTS. / John Capriotti on 2025-11-04 15:11: From my understanding we are waiting on a few walls to be finished, meeting tomorrow with Belaire to discuss when and how many to bring in each day. / allucent_notes_20251202_153722: John Capriotti on 2025-10-07 13:10: Need to confirm dry-in status/completion date before bringing in these CRAH units, pushing a week until I can get confirmed status. / John Capriotti on 2025-10-21 14:10: Planning to set these in roughly two weeks working to get the deliveries set-up with QTS. / John Capriotti on 2025-11-04 15:11: From my understanding we are waiting on a few walls to be finished, meeting tomorrow with Belaire to discuss when and how many to bring in each day. / Jason Johnston on 2025-12-02 11:46: Delivery / allucent_notes: 2025-10-07 13:10 - User: John Capriotti - Date Added: 2025-10-07 13:10 - Note: Need to confirm dry-in status/completion date before bringing in these CRAH units, pushing a week until I can get confirmed status. / 2025-10-21 14:10 - User: John Capriotti -
- QTS-34331: allucent_notes_20251014_152335: John Capriotti on 2025-10-07 13:10: Need to confirm dry-in status/completion date before bringing in these CRAH units, pushing a week until I can get confirmed status / allucent_notes_20251021_145627: John Capriotti on 2025-10-07 13:10: Need to confirm dry-in status/completion date before bringing in these CRAH units, pushing a week until I can get confirmed status / John Capriotti on 2025-10-21 14:10: Planning to set these in roughly two weeks working to get the deliveries set-up with QTS. / allucent_notes_20251027_224008: John Capriotti on 2025-10-07 13:10: Need to confirm dry-in status/completion date before bringing in these CRAH units, pushing a week until I can get confirmed status / John Capriotti on 2025-10-21 14:10: Planning to set these in roughly two weeks working to get the deliveries set-up with QTS. / allucent_notes_20251028_163138: John Capriotti on 2025-10-07 13:10: Need to confirm dry-in status/completion date before bringing in these CRAH units, pushing a week until I can get confirmed status / John Capriotti on 2025-10-21 14:10: Planning to set these in roughly two weeks working to get the deliveries set-up with QTS. / allucent_notes_20251104_160200: John Capriotti on 2025-10-07 13:10: Need to confirm dry-in status/completion date before bringing in these CRAH units, pushing a week until I can get confirmed status / John Capriotti on 2025-10-21 14:10: Planning to set these in roughly two weeks working to get the deliveries set-up with QTS. / John Capriotti on 2025-11-04 15:11: From my understanding we are waiting on a few walls to be finished, meeting tomorrow with Belaire to discuss when and how many to bring in each day. / allucent_notes_20251111_182405: John Capriotti on 2025-10-07 13:10: Need to confirm dry-in status/completion date before bringing in these CRAH units, pushing a week until I can get confirmed status / John Capriotti on 2025-10-21 14:10: Planning to set these in roughly two weeks working to get the deliveries set-up with QTS. / John Capriotti on 2025-11-04 15:11: From my understanding we are waiting on a few walls to be finished, meeting tomorrow with Belaire to discuss when and how many to bring in each day. / allucent_notes_20251118_192630: John Capriotti on 2025-10-07 13:10: Need to confirm dry-in status/completion date before bringing in these CRAH units, pushing a week until I can get confirmed status / John Capriotti on 2025-10-21 14:10: Planning to set these in roughly two weeks working to get the deliveries set-up with QTS. / John Capriotti on 2025-11-04 15:11: From my understanding we are waiting on a few walls to be finished, meeting tomorrow with Belaire to discuss when and how many to bring in each day. / allucent_notes_20251202_153722: John Capriotti on 2025-10-07 13:10: Need to confirm dry-in status/completion date before bringing in these CRAH units, pushing a week until I can get confirmed status / John Capriotti on 2025-10-21 14:10: Planning to set these in roughly two weeks working to get the deliveries set-up with QTS. / John Capriotti on 2025-11-04 15:11: From my understanding we are waiting on a few walls to be finished, meeting tomorrow with Belaire to discuss when and how many to bring in each day. / Jason Johnston on 2025-12-02 11:46: Delivery / allucent_notes: 2025-10-07 13:10 - User: John Capriotti - Date Added: 2025-10-07 13:10 - Note: Need to confirm dry-in status/completion date before bringing in these CRAH units, pushing a week until I can get confirmed status / 2025-10-21 14:10 - User: John Capriotti -
- QTS-34341: allucent_notes_20251014_152335: John Capriotti on 2025-10-07 13:10: Need to confirm dry-in status/completion date before bringing in these CRAH units, pushing a week until I can get confirmed status. / allucent_notes_20251021_145627: John Capriotti on 2025-10-07 13:10: Need to confirm dry-in status/completion date before bringing in these CRAH units, pushing a week until I can get confirmed status. / John Capriotti on 2025-10-21 14:10: Planning to set these in roughly two weeks working to get the deliveries set-up with QTS. / allucent_notes_20251027_224008: John Capriotti on 2025-10-07 13:10: Need to confirm dry-in status/completion date before bringing in these CRAH units, pushing a week until I can get confirmed status. / John Capriotti on 2025-10-21 14:10: Planning to set these in roughly two weeks working to get the deliveries set-up with QTS. / allucent_notes_20251028_163138: John Capriotti on 2025-10-07 13:10: Need to confirm dry-in status/completion date before bringing in these CRAH units, pushing a week until I can get confirmed status. / John Capriotti on 2025-10-21 14:10: Planning to set these in roughly two weeks working to get the deliveries set-up with QTS. / allucent_notes_20251104_160200: John Capriotti on 2025-10-07 13:10: Need to confirm dry-in status/completion date before bringing in these CRAH units, pushing a week until I can get confirmed status. / John Capriotti on 2025-10-21 14:10: Planning to set these in roughly two weeks working to get the deliveries set-up with QTS. / John Capriotti on 2025-11-04 15:11: From my understanding we are waiting on a few walls to be finished, meeting tomorrow with Belaire to discuss when and how many to bring in each day. / allucent_notes_20251111_182405: John Capriotti on 2025-10-07 13:10: Need to confirm dry-in status/completion date before bringing in these CRAH units, pushing a week until I can get confirmed status. / John Capriotti on 2025-10-21 14:10: Planning to set these in roughly two weeks working to get the deliveries set-up with QTS. / John Capriotti on 2025-11-04 15:11: From my understanding we are waiting on a few walls to be finished, meeting tomorrow with Belaire to discuss when and how many to bring in each day. / allucent_notes_20251118_192630: John Capriotti on 2025-10-07 13:10: Need to confirm dry-in status/completion date before bringing in these CRAH units, pushing a week until I can get confirmed status. / John Capriotti on 2025-10-21 14:10: Planning to set these in roughly two weeks working to get the deliveries set-up with QTS. / John Capriotti on 2025-11-04 15:11: From my understanding we are waiting on a few walls to be finished, meeting tomorrow with Belaire to discuss when and how many to bring in each day. / allucent_notes_20251202_153722: John Capriotti on 2025-10-07 13:10: Need to confirm dry-in status/completion date before bringing in these CRAH units, pushing a week until I can get confirmed status. / John Capriotti on 2025-10-21 14:10: Planning to set these in roughly two weeks working to get the deliveries set-up with QTS. / John Capriotti on 2025-11-04 15:11: From my understanding we are waiting on a few walls to be finished, meeting tomorrow with Belaire to discuss when and how many to bring in each day. / Jason Johnston on 2025-12-02 11:46: Delivery / allucent_notes: 2025-10-07 13:10 - User: John Capriotti - Date Added: 2025-10-07 13:10 - Note: Need to confirm dry-in status/completion date before bringing in these CRAH units, pushing a week until I can get confirmed status. / 2025-10-21 14:10 - User: John Capriotti -
- QTS-34351: allucent_notes_20251014_152335: John Capriotti on 2025-10-07 13:10: Need to confirm dry-in status/completion date before bringing in these CRAH units, pushing a week until I can get confirmed status. / allucent_notes_20251021_145627: John Capriotti on 2025-10-07 13:10: Need to confirm dry-in status/completion date before bringing in these CRAH units, pushing a week until I can get confirmed status. / John Capriotti on 2025-10-21 14:10: Planning to set these in roughly two weeks working to get the deliveries set-up with QTS. / allucent_notes_20251027_224008: John Capriotti on 2025-10-07 13:10: Need to confirm dry-in status/completion date before bringing in these CRAH units, pushing a week until I can get confirmed status. / John Capriotti on 2025-10-21 14:10: Planning to set these in roughly two weeks working to get the deliveries set-up with QTS. / allucent_notes_20251028_163138: John Capriotti on 2025-10-07 13:10: Need to confirm dry-in status/completion date before bringing in these CRAH units, pushing a week until I can get confirmed status. / John Capriotti on 2025-10-21 14:10: Planning to set these in roughly two weeks working to get the deliveries set-up with QTS. / allucent_notes_20251104_160200: John Capriotti on 2025-10-07 13:10: Need to confirm dry-in status/completion date before bringing in these CRAH units, pushing a week until I can get confirmed status. / John Capriotti on 2025-10-21 14:10: Planning to set these in roughly two weeks working to get the deliveries set-up with QTS. / John Capriotti on 2025-11-04 15:11: From my understanding we are waiting on a few walls to be finished, meeting tomorrow with Belaire to discuss when and how many to bring in each day. / allucent_notes_20251111_182405: John Capriotti on 2025-10-07 13:10: Need to confirm dry-in status/completion date before bringing in these CRAH units, pushing a week until I can get confirmed status. / John Capriotti on 2025-10-21 14:10: Planning to set these in roughly two weeks working to get the deliveries set-up with QTS. / John Capriotti on 2025-11-04 15:11: From my understanding we are waiting on a few walls to be finished, meeting tomorrow with Belaire to discuss when and how many to bring in each day. / allucent_notes_20251118_192630: John Capriotti on 2025-10-07 13:10: Need to confirm dry-in status/completion date before bringing in these CRAH units, pushing a week until I can get confirmed status. / John Capriotti on 2025-10-21 14:10: Planning to set these in roughly two weeks working to get the deliveries set-up with QTS. / John Capriotti on 2025-11-04 15:11: From my understanding we are waiting on a few walls to be finished, meeting tomorrow with Belaire to discuss when and how many to bring in each day. / allucent_notes_20251202_153722: John Capriotti on 2025-10-07 13:10: Need to confirm dry-in status/completion date before bringing in these CRAH units, pushing a week until I can get confirmed status. / John Capriotti on 2025-10-21 14:10: Planning to set these in roughly two weeks working to get the deliveries set-up with QTS. / John Capriotti on 2025-11-04 15:11: From my understanding we are waiting on a few walls to be finished, meeting tomorrow with Belaire to discuss when and how many to bring in each day. / Jason Johnston on 2025-12-02 11:46: Delivery / allucent_notes: 2025-10-07 13:10 - User: John Capriotti - Date Added: 2025-10-07 13:10 - Note: Need to confirm dry-in status/completion date before bringing in these CRAH units, pushing a week until I can get confirmed status. / 2025-10-21 14:10 - User: John Capriotti -
- QTS-34361: allucent_notes_20251014_152335: John Capriotti on 2025-10-07 13:10: Need to confirm dry-in status/completion date before bringing in these CRAH units, pushing a week until I can get confirmed status. / allucent_notes_20251021_145627: John Capriotti on 2025-10-07 13:10: Need to confirm dry-in status/completion date before bringing in these CRAH units, pushing a week until I can get confirmed status. / John Capriotti on 2025-10-21 14:10: Planning to set these in roughly two weeks working to get the deliveries set-up with QTS. / allucent_notes_20251027_224008: John Capriotti on 2025-10-07 13:10: Need to confirm dry-in status/completion date before bringing in these CRAH units, pushing a week until I can get confirmed status. / John Capriotti on 2025-10-21 14:10: Planning to set these in roughly two weeks working to get the deliveries set-up with QTS. / allucent_notes_20251028_163138: John Capriotti on 2025-10-07 13:10: Need to confirm dry-in status/completion date before bringing in these CRAH units, pushing a week until I can get confirmed status. / John Capriotti on 2025-10-21 14:10: Planning to set these in roughly two weeks working to get the deliveries set-up with QTS. / allucent_notes_20251104_160200: John Capriotti on 2025-10-07 13:10: Need to confirm dry-in status/completion date before bringing in these CRAH units, pushing a week until I can get confirmed status. / John Capriotti on 2025-10-21 14:10: Planning to set these in roughly two weeks working to get the deliveries set-up with QTS. / John Capriotti on 2025-11-04 15:11: From my understanding we are waiting on a few walls to be finished, meeting tomorrow with Belaire to discuss when and how many to bring in each day. / allucent_notes_20251111_182405: John Capriotti on 2025-10-07 13:10: Need to confirm dry-in status/completion date before bringing in these CRAH units, pushing a week until I can get confirmed status. / John Capriotti on 2025-10-21 14:10: Planning to set these in roughly two weeks working to get the deliveries set-up with QTS. / John Capriotti on 2025-11-04 15:11: From my understanding we are waiting on a few walls to be finished, meeting tomorrow with Belaire to discuss when and how many to bring in each day. / allucent_notes_20251118_192630: John Capriotti on 2025-10-07 13:10: Need to confirm dry-in status/completion date before bringing in these CRAH units, pushing a week until I can get confirmed status. / John Capriotti on 2025-10-21 14:10: Planning to set these in roughly two weeks working to get the deliveries set-up with QTS. / John Capriotti on 2025-11-04 15:11: From my understanding we are waiting on a few walls to be finished, meeting tomorrow with Belaire to discuss when and how many to bring in each day. / allucent_notes_20251202_153722: John Capriotti on 2025-10-07 13:10: Need to confirm dry-in status/completion date before bringing in these CRAH units, pushing a week until I can get confirmed status. / John Capriotti on 2025-10-21 14:10: Planning to set these in roughly two weeks working to get the deliveries set-up with QTS. / John Capriotti on 2025-11-04 15:11: From my understanding we are waiting on a few walls to be finished, meeting tomorrow with Belaire to discuss when and how many to bring in each day. / Jason Johnston on 2025-12-02 11:46: Delivery / allucent_notes: 2025-10-07 13:10 - User: John Capriotti - Date Added: 2025-10-07 13:10 - Note: Need to confirm dry-in status/completion date before bringing in these CRAH units, pushing a week until I can get confirmed status. / 2025-10-21 14:10 - User: John Capriotti -
- QTS-34371: allucent_notes_20251014_152335: John Capriotti on 2025-10-07 13:10: Need to confirm dry-in status/completion date before bringing in these CRAH units, pushing a week until I can get confirmed status. / allucent_notes_20251021_145627: John Capriotti on 2025-10-07 13:10: Need to confirm dry-in status/completion date before bringing in these CRAH units, pushing a week until I can get confirmed status. / John Capriotti on 2025-10-21 14:10: Planning to set these in roughly two weeks working to get the deliveries set-up with QTS. / allucent_notes_20251027_224008: John Capriotti on 2025-10-07 13:10: Need to confirm dry-in status/completion date before bringing in these CRAH units, pushing a week until I can get confirmed status. / John Capriotti on 2025-10-21 14:10: Planning to set these in roughly two weeks working to get the deliveries set-up with QTS. / allucent_notes_20251028_163138: John Capriotti on 2025-10-07 13:10: Need to confirm dry-in status/completion date before bringing in these CRAH units, pushing a week until I can get confirmed status. / John Capriotti on 2025-10-21 14:10: Planning to set these in roughly two weeks working to get the deliveries set-up with QTS. / allucent_notes_20251104_160200: John Capriotti on 2025-10-07 13:10: Need to confirm dry-in status/completion date before bringing in these CRAH units, pushing a week until I can get confirmed status. / John Capriotti on 2025-10-21 14:10: Planning to set these in roughly two weeks working to get the deliveries set-up with QTS. / John Capriotti on 2025-11-04 15:11: From my understanding we are waiting on a few walls to be finished, meeting tomorrow with Belaire to discuss when and how many to bring in each day. / allucent_notes_20251111_182405: John Capriotti on 2025-10-07 13:10: Need to confirm dry-in status/completion date before bringing in these CRAH units, pushing a week until I can get confirmed status. / John Capriotti on 2025-10-21 14:10: Planning to set these in roughly two weeks working to get the deliveries set-up with QTS. / John Capriotti on 2025-11-04 15:11: From my understanding we are waiting on a few walls to be finished, meeting tomorrow with Belaire to discuss when and how many to bring in each day. / allucent_notes_20251118_192630: John Capriotti on 2025-10-07 13:10: Need to confirm dry-in status/completion date before bringing in these CRAH units, pushing a week until I can get confirmed status. / John Capriotti on 2025-10-21 14:10: Planning to set these in roughly two weeks working to get the deliveries set-up with QTS. / John Capriotti on 2025-11-04 15:11: From my understanding we are waiting on a few walls to be finished, meeting tomorrow with Belaire to discuss when and how many to bring in each day. / allucent_notes_20251202_153722: John Capriotti on 2025-10-07 13:10: Need to confirm dry-in status/completion date before bringing in these CRAH units, pushing a week until I can get confirmed status. / John Capriotti on 2025-10-21 14:10: Planning to set these in roughly two weeks working to get the deliveries set-up with QTS. / John Capriotti on 2025-11-04 15:11: From my understanding we are waiting on a few walls to be finished, meeting tomorrow with Belaire to discuss when and how many to bring in each day. / Jason Johnston on 2025-12-02 11:47: Delivery / allucent_notes: 2025-10-07 13:10 - User: John Capriotti - Date Added: 2025-10-07 13:10 - Note: Need to confirm dry-in status/completion date before bringing in these CRAH units, pushing a week until I can get confirmed status. / 2025-10-21 14:10 - User: John Capriotti -
- QTS-34381: allucent_notes_20251014_152335: John Capriotti on 2025-10-07 13:10: Need to confirm dry-in status/completion date before bringing in these CRAH units, pushing a week until I can get confirmed status. / allucent_notes_20251021_145627: John Capriotti on 2025-10-07 13:10: Need to confirm dry-in status/completion date before bringing in these CRAH units, pushing a week until I can get confirmed status. / John Capriotti on 2025-10-21 14:10: Planning to set these in roughly two weeks working to get the deliveries set-up with QTS. / allucent_notes_20251027_224008: John Capriotti on 2025-10-07 13:10: Need to confirm dry-in status/completion date before bringing in these CRAH units, pushing a week until I can get confirmed status. / John Capriotti on 2025-10-21 14:10: Planning to set these in roughly two weeks working to get the deliveries set-up with QTS. / allucent_notes_20251028_163138: John Capriotti on 2025-10-07 13:10: Need to confirm dry-in status/completion date before bringing in these CRAH units, pushing a week until I can get confirmed status. / John Capriotti on 2025-10-21 14:10: Planning to set these in roughly two weeks working to get the deliveries set-up with QTS. / allucent_notes_20251104_160200: John Capriotti on 2025-10-07 13:10: Need to confirm dry-in status/completion date before bringing in these CRAH units, pushing a week until I can get confirmed status. / John Capriotti on 2025-10-21 14:10: Planning to set these in roughly two weeks working to get the deliveries set-up with QTS. / John Capriotti on 2025-11-04 15:11: From my understanding we are waiting on a few walls to be finished, meeting tomorrow with Belaire to discuss when and how many to bring in each day. / allucent_notes_20251111_182405: John Capriotti on 2025-10-07 13:10: Need to confirm dry-in status/completion date before bringing in these CRAH units, pushing a week until I can get confirmed status. / John Capriotti on 2025-10-21 14:10: Planning to set these in roughly two weeks working to get the deliveries set-up with QTS. / John Capriotti on 2025-11-04 15:11: From my understanding we are waiting on a few walls to be finished, meeting tomorrow with Belaire to discuss when and how many to bring in each day. / allucent_notes_20251118_192630: John Capriotti on 2025-10-07 13:10: Need to confirm dry-in status/completion date before bringing in these CRAH units, pushing a week until I can get confirmed status. / John Capriotti on 2025-10-21 14:10: Planning to set these in roughly two weeks working to get the deliveries set-up with QTS. / John Capriotti on 2025-11-04 15:11: From my understanding we are waiting on a few walls to be finished, meeting tomorrow with Belaire to discuss when and how many to bring in each day. / allucent_notes_20251202_153722: John Capriotti on 2025-10-07 13:10: Need to confirm dry-in status/completion date before bringing in these CRAH units, pushing a week until I can get confirmed status. / John Capriotti on 2025-10-21 14:10: Planning to set these in roughly two weeks working to get the deliveries set-up with QTS. / John Capriotti on 2025-11-04 15:11: From my understanding we are waiting on a few walls to be finished, meeting tomorrow with Belaire to discuss when and how many to bring in each day. / Jason Johnston on 2025-12-02 11:47: Delivery / allucent_notes: 2025-10-07 13:10 - User: John Capriotti - Date Added: 2025-10-07 13:10 - Note: Need to confirm dry-in status/completion date before bringing in these CRAH units, pushing a week until I can get confirmed status. / 2025-10-21 14:10 - User: John Capriotti -
- QTS-22261: allucent_notes_20251230_164549: Jason Johnston on 2025-10-28 16:10: Working on crane sequencing for equipment. / John Capriotti on 2025-11-04 15:11: From my understanding we are waiting on a few walls to be finished, meeting tomorrow with Belaire to discuss when and how many to bring in each day. / Jason Johnston on 2025-12-16 15:17: not yet / John Capriotti on 2025-12-30T15:16:21.751Z: Actualizing ROJ: DOAS delivered to QAE yard on 10/2 - technically have it just not delivered to the site from QAE yard until I can confirm set date / allucent_notes_20251028_163138: Jason Johnston on 2025-10-28 16:10: Working on crane sequencing for equipment. / allucent_notes_20251104_160200: Jason Johnston on 2025-10-28 16:10: Working on crane sequencing for equipment. / John Capriotti on 2025-11-04 15:11: From my understanding we are waiting on a few walls to be finished, meeting tomorrow with Belaire to discuss when and how many to bring in each day. / allucent_notes_20251111_182405: Jason Johnston on 2025-10-28 16:10: Working on crane sequencing for equipment. / John Capriotti on 2025-11-04 15:11: From my understanding we are waiting on a few walls to be finished, meeting tomorrow with Belaire to discuss when and how many to bring in each day. / allucent_notes_20251118_192630: Jason Johnston on 2025-10-28 16:10: Working on crane sequencing for equipment. / John Capriotti on 2025-11-04 15:11: From my understanding we are waiting on a few walls to be finished, meeting tomorrow with Belaire to discuss when and how many to bring in each day. / allucent_notes_20251202_153722: Jason Johnston on 2025-10-28 16:10: Working on crane sequencing for equipment. / John Capriotti on 2025-11-04 15:11: From my understanding we are waiting on a few walls to be finished, meeting tomorrow with Belaire to discuss when and how many to bring in each day. / allucent_notes_20251209_203830: Jason Johnston on 2025-10-28 16:10: Working on crane sequencing for equipment. / John Capriotti on 2025-11-04 15:11: From my understanding we are waiting on a few walls to be finished, meeting tomorrow with Belaire to discuss when and how many to bring in each day. / allucent_notes_20251216_165335: Jason Johnston on 2025-10-28 16:10: Working on crane sequencing for equipment. / John Capriotti on 2025-11-04 15:11: From my understanding we are waiting on a few walls to be finished, meeting tomorrow with Belaire to discuss when and how many to bring in each day. / Jason Johnston on 2025-12-16 15:17: not yet / allucent_notes: 2025-10-28 16:10 - User: Jason Johnston - Date Added: 2025-10-28 16:10 - Note: Working on crane sequencing for equipment. / 2025-11-04 15:11 - User: John Capriotti - Date Added: 2025-11-04 15:11 - Note: From my understanding we are waiting on a few walls
- QTS-25381: allucent_notes_20251230_164549: Jason Johnston on 2025-10-28 16:10: Working on crane sequencing for equipment. / John Capriotti on 2025-11-04 15:11: From my understanding we are waiting on a few walls to be finished, meeting tomorrow with Belaire to discuss when and how many to bring in each day. / Jason Johnston on 2025-12-16 15:17: not yet / John Capriotti on 2025-12-30T15:16:27.512Z: Actualizing ROJ: DOAS delivered to QAE yard on 10/2 - technically have it just not delivered to the site from QAE yard until I can confirm set date / allucent_notes_20251028_163138: Jason Johnston on 2025-10-28 16:10: Working on crane sequencing for equipment. / allucent_notes_20251104_160200: Jason Johnston on 2025-10-28 16:10: Working on crane sequencing for equipment. / John Capriotti on 2025-11-04 15:11: From my understanding we are waiting on a few walls to be finished, meeting tomorrow with Belaire to discuss when and how many to bring in each day. / allucent_notes_20251111_182405: Jason Johnston on 2025-10-28 16:10: Working on crane sequencing for equipment. / John Capriotti on 2025-11-04 15:11: From my understanding we are waiting on a few walls to be finished, meeting tomorrow with Belaire to discuss when and how many to bring in each day. / allucent_notes_20251118_192630: Jason Johnston on 2025-10-28 16:10: Working on crane sequencing for equipment. / John Capriotti on 2025-11-04 15:11: From my understanding we are waiting on a few walls to be finished, meeting tomorrow with Belaire to discuss when and how many to bring in each day. / allucent_notes_20251202_153722: Jason Johnston on 2025-10-28 16:10: Working on crane sequencing for equipment. / John Capriotti on 2025-11-04 15:11: From my understanding we are waiting on a few walls to be finished, meeting tomorrow with Belaire to discuss when and how many to bring in each day. / allucent_notes_20251209_203830: Jason Johnston on 2025-10-28 16:10: Working on crane sequencing for equipment. / John Capriotti on 2025-11-04 15:11: From my understanding we are waiting on a few walls to be finished, meeting tomorrow with Belaire to discuss when and how many to bring in each day. / allucent_notes_20251216_165335: Jason Johnston on 2025-10-28 16:10: Working on crane sequencing for equipment. / John Capriotti on 2025-11-04 15:11: From my understanding we are waiting on a few walls to be finished, meeting tomorrow with Belaire to discuss when and how many to bring in each day. / Jason Johnston on 2025-12-16 15:17: not yet / allucent_notes: 2025-10-28 16:10 - User: Jason Johnston - Date Added: 2025-10-28 16:10 - Note: Working on crane sequencing for equipment. / 2025-11-04 15:11 - User: John Capriotti - Date Added: 2025-11-04 15:11 - Note: From my understanding we are waiting on a few walls
- QTS-34391: allucent_notes_20251104_160200: John Capriotti on 2025-11-04 15:11: From my understanding we are waiting on a few walls to be finished, meeting tomorrow with Belaire to discuss when and how many to bring in each day. / allucent_notes_20251111_182405: John Capriotti on 2025-11-04 15:11: From my understanding we are waiting on a few walls to be finished, meeting tomorrow with Belaire to discuss when and how many to bring in each day. / allucent_notes_20251118_192630: John Capriotti on 2025-11-04 15:11: From my understanding we are waiting on a few walls to be finished, meeting tomorrow with Belaire to discuss when and how many to bring in each day. / allucent_notes_20251202_153722: John Capriotti on 2025-11-04 15:11: From my understanding we are waiting on a few walls to be finished, meeting tomorrow with Belaire to discuss when and how many to bring in each day. / Jason Johnston on 2025-12-02 11:47: Delivery / allucent_notes: 2025-11-04 15:11 - User: John Capriotti - Date Added: 2025-11-04 15:11 - Note: From my understanding we are waiting on a few walls to be finished, meeting tomorrow with Belaire to discuss when and how many to bring in each day. / 2025-12-02 11:47 - User:
- QTS-34401: allucent_notes_20251104_160200: John Capriotti on 2025-11-04 15:11: From my understanding we are waiting on a few walls to be finished, meeting tomorrow with Belaire to discuss when and how many to bring in each day. / allucent_notes_20251111_182405: John Capriotti on 2025-11-04 15:11: From my understanding we are waiting on a few walls to be finished, meeting tomorrow with Belaire to discuss when and how many to bring in each day. / allucent_notes_20251118_192630: John Capriotti on 2025-11-04 15:11: From my understanding we are waiting on a few walls to be finished, meeting tomorrow with Belaire to discuss when and how many to bring in each day. / allucent_notes_20251202_153722: John Capriotti on 2025-11-04 15:11: From my understanding we are waiting on a few walls to be finished, meeting tomorrow with Belaire to discuss when and how many to bring in each day. / Jason Johnston on 2025-12-02 11:47: Delivery / allucent_notes: 2025-11-04 15:11 - User: John Capriotti - Date Added: 2025-11-04 15:11 - Note: From my understanding we are waiting on a few walls to be finished, meeting tomorrow with Belaire to discuss when and how many to bring in each day. / 2025-12-02 11:47 - User:
- QTS-34411: allucent_notes_20251104_160200: John Capriotti on 2025-11-04 15:11: From my understanding we are waiting on a few walls to be finished, meeting tomorrow with Belaire to discuss when and how many to bring in each day. / allucent_notes_20251111_182405: John Capriotti on 2025-11-04 15:11: From my understanding we are waiting on a few walls to be finished, meeting tomorrow with Belaire to discuss when and how many to bring in each day. / allucent_notes_20251118_192630: John Capriotti on 2025-11-04 15:11: From my understanding we are waiting on a few walls to be finished, meeting tomorrow with Belaire to discuss when and how many to bring in each day. / allucent_notes_20251202_153722: John Capriotti on 2025-11-04 15:11: From my understanding we are waiting on a few walls to be finished, meeting tomorrow with Belaire to discuss when and how many to bring in each day. / Jason Johnston on 2025-12-02 11:47: Delivery / allucent_notes: 2025-11-04 15:11 - User: John Capriotti - Date Added: 2025-11-04 15:11 - Note: From my understanding we are waiting on a few walls to be finished, meeting tomorrow with Belaire to discuss when and how many to bring in each day. / 2025-12-02 11:47 - User:
- QTS-34421: allucent_notes_20251104_160200: John Capriotti on 2025-11-04 15:11: From my understanding we are waiting on a few walls to be finished, meeting tomorrow with Belaire to discuss when and how many to bring in each day. / allucent_notes_20251111_182405: John Capriotti on 2025-11-04 15:11: From my understanding we are waiting on a few walls to be finished, meeting tomorrow with Belaire to discuss when and how many to bring in each day. / allucent_notes_20251118_192630: John Capriotti on 2025-11-04 15:11: From my understanding we are waiting on a few walls to be finished, meeting tomorrow with Belaire to discuss when and how many to bring in each day. / allucent_notes_20251202_153722: John Capriotti on 2025-11-04 15:11: From my understanding we are waiting on a few walls to be finished, meeting tomorrow with Belaire to discuss when and how many to bring in each day. / Jason Johnston on 2025-12-02 11:47: Delivery / allucent_notes: 2025-11-04 15:11 - User: John Capriotti - Date Added: 2025-11-04 15:11 - Note: From my understanding we are waiting on a few walls to be finished, meeting tomorrow with Belaire to discuss when and how many to bring in each day. / 2025-12-02 11:47 - User:
- QTS-34431: allucent_notes_20251104_160200: Jason Johnston on 2025-11-04 15:11: Checking if in warehouse / allucent_notes_20251111_182405: Jason Johnston on 2025-11-04 15:11: Checking if in warehouse / allucent_notes_20251118_192630: Jason Johnston on 2025-11-04 15:11: Checking if in warehouse / allucent_notes_20251202_153722: Jason Johnston on 2025-11-04 15:11: Checking if in warehouse / Jason Johnston on 2025-12-02 11:47: Delivery / allucent_notes: 2025-11-04 15:11 - User: Jason Johnston - Date Added: 2025-11-04 15:11 - Note: Checking if in warehouse / 2025-12-02 11:47 - User: Jason Johnston - Date Added: 2025-12-02 11:47 - Note: Delivery
- QTS-34441: allucent_notes_20251104_160200: Jason Johnston on 2025-11-04 15:11: Checking if in warehouse / allucent_notes_20251111_182405: Jason Johnston on 2025-11-04 15:11: Checking if in warehouse / allucent_notes_20251118_192630: Jason Johnston on 2025-11-04 15:11: Checking if in warehouse / allucent_notes_20251202_153722: Jason Johnston on 2025-11-04 15:11: Checking if in warehouse / Jason Johnston on 2025-12-02 11:47: Delivery / allucent_notes: 2025-11-04 15:11 - User: Jason Johnston - Date Added: 2025-11-04 15:11 - Note: Checking if in warehouse / 2025-12-02 11:47 - User: Jason Johnston - Date Added: 2025-12-02 11:47 - Note: Delivery
- QTS-34451: allucent_notes_20251104_160200: Jason Johnston on 2025-11-04 15:11: Checking if in warehouse / allucent_notes_20251111_182405: Jason Johnston on 2025-11-04 15:11: Checking if in warehouse / allucent_notes_20251118_192630: Jason Johnston on 2025-11-04 15:11: Checking if in warehouse / allucent_notes_20251202_153722: Jason Johnston on 2025-11-04 15:11: Checking if in warehouse / Jason Johnston on 2025-12-02 11:48: Delivery / allucent_notes: 2025-11-04 15:11 - User: Jason Johnston - Date Added: 2025-11-04 15:11 - Note: Checking if in warehouse / 2025-12-02 11:48 - User: Jason Johnston - Date Added: 2025-12-02 11:48 - Note: Delivery
- QTS-34461: allucent_notes_20251104_160200: Jason Johnston on 2025-11-04T22:46:06.328Z: remove actual / allucent_notes_20251111_182405: Jason Johnston on 2025-11-04T22:46:06.328Z: remove actual / allucent_notes_20251118_192630: Jason Johnston on 2025-11-04T22:46:06.328Z: remove actual / allucent_notes_20251202_153722: Jason Johnston on 2025-11-04T22:46:06.328Z: remove actual / Jason Johnston on 2025-12-02 11:48: Delivery / allucent_notes: 2025-11-04T22:46:06.328Z - User: Jason Johnston - Date Added: 2025-11-04T22:46:06.328Z - Note: remove actual / 2025-12-02 11:48 - User: Jason Johnston - Date Added: 2025-12-02 11:48 - Note: Delivery
- QTS-34471: allucent_notes_20251104_160200: Jason Johnston on 2025-11-04T22:46:11.324Z: remove actual / allucent_notes_20251111_182405: Jason Johnston on 2025-11-04T22:46:11.324Z: remove actual / allucent_notes_20251118_192630: Jason Johnston on 2025-11-04T22:46:11.324Z: remove actual / allucent_notes_20251202_153722: Jason Johnston on 2025-11-04T22:46:11.324Z: remove actual / Jason Johnston on 2025-12-02 11:48: Delivery / allucent_notes: 2025-11-04T22:46:11.324Z - User: Jason Johnston - Date Added: 2025-11-04T22:46:11.324Z - Note: remove actual / 2025-12-02 11:48 - User: Jason Johnston - Date Added: 2025-12-02 11:48 - Note: Delivery
- QTS-34481: allucent_notes_20251104_160200: Jason Johnston on 2025-11-04T22:46:15.553Z: remove actual / allucent_notes_20251111_182405: Jason Johnston on 2025-11-04T22:46:15.553Z: remove actual / allucent_notes_20251118_192630: Jason Johnston on 2025-11-04T22:46:15.553Z: remove actual / allucent_notes_20251202_153722: Jason Johnston on 2025-11-04T22:46:15.553Z: remove actual / Jason Johnston on 2025-12-02 11:48: Delivery / allucent_notes: 2025-11-04T22:46:15.553Z - User: Jason Johnston - Date Added: 2025-11-04T22:46:15.553Z - Note: remove actual / 2025-12-02 11:48 - User: Jason Johnston - Date Added: 2025-12-02 11:48 - Note: Delivery
- QTS-34491: allucent_notes_20251104_160200: Jason Johnston on 2025-11-04T22:46:19.566Z: remove actual / allucent_notes_20251111_182405: Jason Johnston on 2025-11-04T22:46:19.566Z: remove actual / allucent_notes_20251118_192630: Jason Johnston on 2025-11-04T22:46:19.566Z: remove actual / allucent_notes_20251202_153722: Jason Johnston on 2025-11-04T22:46:19.566Z: remove actual / Jason Johnston on 2025-12-02 11:48: Delivery / allucent_notes: 2025-11-04T22:46:19.566Z - User: Jason Johnston - Date Added: 2025-11-04T22:46:19.566Z - Note: remove actual / 2025-12-02 11:48 - User: Jason Johnston - Date Added: 2025-12-02 11:48 - Note: Delivery
- QTS-34501: allucent_notes_20251104_160200: Jason Johnston on 2025-11-04T22:46:23.773Z: remove actual / allucent_notes_20251111_182405: Jason Johnston on 2025-11-04T22:46:23.773Z: remove actual / allucent_notes_20251118_192630: Jason Johnston on 2025-11-04T22:46:23.773Z: remove actual / allucent_notes_20251202_153722: Jason Johnston on 2025-11-04T22:46:23.773Z: remove actual / Jason Johnston on 2025-12-02 11:48: Delivery / allucent_notes: 2025-11-04T22:46:23.773Z - User: Jason Johnston - Date Added: 2025-11-04T22:46:23.773Z - Note: remove actual / 2025-12-02 11:48 - User: Jason Johnston - Date Added: 2025-12-02 11:48 - Note: Delivery
- QTS-34511: allucent_notes_20251104_160200: Jason Johnston on 2025-11-04 15:11: Checking if in warehouse / allucent_notes_20251111_182405: Jason Johnston on 2025-11-04 15:11: Checking if in warehouse / allucent_notes_20251118_192630: Jason Johnston on 2025-11-04 15:11: Checking if in warehouse / allucent_notes_20251202_153722: Jason Johnston on 2025-11-04 15:11: Checking if in warehouse / Jason Johnston on 2025-12-02 11:49: Not delivered yet / John Capriotti on 2025-12-02 12:18: Delivered 12/1 / allucent_notes: 2025-11-04 15:11 - User: Jason Johnston - Date Added: 2025-11-04 15:11 - Note: Checking if in warehouse / 2025-12-02 11:49 - User: Jason Johnston - Date Added: 2025-12-02 11:49 - Note: Not delivered yet / 2025-12-02 12:18 - User: John Capriotti - Date A
- QTS-34521: allucent_notes_20251104_160200: Jason Johnston on 2025-11-04 15:11: Checking if in warehouse / allucent_notes_20251111_182405: Jason Johnston on 2025-11-04 15:11: Checking if in warehouse / allucent_notes_20251118_192630: Jason Johnston on 2025-11-04 15:11: Checking if in warehouse / allucent_notes_20251202_153722: Jason Johnston on 2025-11-04 15:11: Checking if in warehouse / Jason Johnston on 2025-12-02 11:49: Not delivered yet / John Capriotti on 2025-12-02 12:19: Delivered 12/1 / allucent_notes: 2025-11-04 15:11 - User: Jason Johnston - Date Added: 2025-11-04 15:11 - Note: Checking if in warehouse / 2025-12-02 11:49 - User: Jason Johnston - Date Added: 2025-12-02 11:49 - Note: Not delivered yet / 2025-12-02 12:19 - User: John Capriotti - Date A

| ID | WBS | Activity | Duration | Start | Finish | Predecessors | Complete | Remaining | Planned start | Planned finish | Total float | Free float | Expected finish | Precon Phase | Project Section-1 | Baseline | Layton Responsible Party | Project Section | Allucent CSI Group |
| --- | --- | --- | --- | --- | --- | --- | --- | --- | --- | --- | --- | --- | --- | --- | --- | --- | --- | --- | --- |
|  | 1 | **A11 Lineup** |  | 2025-07-14 | 2026-01-30 |  |  |  |  |  |  |  |  |  |  |  |  |  |  |
| QTS-35331 |  | DH 1100 / A11 Lineup // Chiller #1RT40-A11 | 20d | 2025-07-14 A | 2025-08-11 A | QTS-1371 | 100% |  | 2025-07-14 | 2025-08-08 |  |  |  | OFCI Procurement | Preconstruction | GMP | Chris Perales | Preconstruction | 01ADMIN |
| QTS-31501 |  | DH 1100 / A11 Lineup // 600A MOD #A11-03 (CRAH Support) | 7d | 2025-07-21 A | 2025-07-29 A | QTS-1371 | 100% |  |  |  |  |  |  | OFCI Procurement | Preconstruction | GMP | Chris Perales | Preconstruction |  |
| QTS-31261 |  | DH 1100 / A11 Lineup // 225A MOD #A11-02 (Liquid to Chip Support) | 2d | 2025-09-15 A | 2025-09-16 A | QTS-1371 | 100% |  |  |  |  |  |  | OFCI Procurement | Preconstruction | GMP | Chris Perales | Preconstruction |  |
| QTS-33681 |  | DH 1100 / A11 Lineup // UPS Container #A11 | 20d | 2025-09-19 A | 2025-10-28 A | QTS-1371 | 100% |  | 2025-09-19 | 2025-10-16 |  |  |  | OFCI Procurement | Preconstruction | GMP | Chris Perales | Preconstruction | 01ADMIN |
| QTS-35781 |  | DH 1100 / A11 Lineup // 2500KVA Padmount XFMR #A11 | 20d | 2025-10-06 A | 2025-10-21 A | QTS-1371 | 100% |  | 2025-10-06 | 2025-10-31 |  |  |  | OFCI Procurement | Preconstruction | GMP | Chris Perales | Preconstruction | 01ADMIN |
| QTS-32991 |  | DH 1100 / A11 Lineup // Skid #A11 | 20d | 2025-10-07 A | 2025-11-03 A | QTS-1371 | 100% |  |  |  |  |  |  | OFCI Procurement | Preconstruction | GMP | Chris Perales | Preconstruction | 01ADMIN |
| QTS-39781 |  | DH 1100 / A11 Lineup // Assembly - Tank #GEN-A11 | 20d | 2025-10-09 A | 2025-11-10 A | QTS-1371 | 100% |  | 2025-10-09 | 2025-11-05 |  |  |  | OFCI Procurement | Preconstruction |  | Chris Perales | Preconstruction | 01ADMIN |
| QTS-39791 |  | DH 1100 / A11 Lineup // Assembly - Engine #GEN-A11 | 20d | 2025-10-09 A | 2025-11-10 A | QTS-1371 | 100% |  | 2025-10-09 | 2025-11-05 |  |  |  | OFCI Procurement | Preconstruction |  | Chris Perales | Preconstruction | 01ADMIN |
| QTS-39801 |  | DH 1100 / A11 Lineup // Assembly - SCR #GEN-A11 | 20d | 2025-10-09 A | 2026-01-30 | QTS-1371 | 40% | 12d | 2025-10-09 | 2025-11-05 | 28d | 0d | 2026-01-30 | OFCI Procurement | Preconstruction |  | Chris Perales | Preconstruction | 01ADMIN |
| QTS-39811 |  | DH 1100 / A11 Lineup // Assembly - Housing #GEN-A11 | 20d | 2025-10-09 A | 2025-11-10 A | QTS-1371 | 100% |  | 2025-10-09 | 2025-11-05 |  |  |  | OFCI Procurement | Preconstruction |  | Chris Perales | Preconstruction | 01ADMIN |
|  | 2 | **B11 Lineup** |  | 2025-07-14 | 2026-01-30 |  |  |  |  |  |  |  |  |  |  |  |  |  |  |
| QTS-35341 |  | DH 1100 / B11 Lineup // Chiller #1RT40-B11 | 20d | 2025-07-14 A | 2025-08-11 A | QTS-1371 | 100% |  | 2025-07-14 | 2025-08-08 |  |  |  | OFCI Procurement | Preconstruction | GMP | Chris Perales | Preconstruction | 01ADMIN |
| QTS-31511 |  | DH 1100 / B11 Lineup // 600A MOD #B11-01 (CRAH Suport) | 7d | 2025-07-21 A | 2025-07-29 A | QTS-1371 | 100% |  |  |  |  |  |  | OFCI Procurement | Preconstruction | GMP | Chris Perales | Preconstruction |  |
| QTS-31271 |  | DH 1100 / B11 Lineup // 225A MOD #B11-02 (Liquid to Chip Support) | 2d | 2025-09-15 A | 2025-09-16 A | QTS-1371 | 100% |  |  |  |  |  |  | OFCI Procurement | Preconstruction | GMP | Chris Perales | Preconstruction |  |
| QTS-33691 |  | DH 1100 / B11 Lineup // UPS Container #B11 | 20d | 2025-09-19 A | 2025-10-28 A | QTS-1371 | 100% |  | 2025-09-19 | 2025-10-16 |  |  |  | OFCI Procurement | Preconstruction | GMP | Chris Perales | Preconstruction | 01ADMIN |
| QTS-35791 |  | DH 1100 / B11 Lineup // 2500KVA Padmount XFMR #B11 | 20d | 2025-10-06 A | 2025-10-20 A | QTS-1371 | 100% |  | 2025-10-06 | 2025-10-31 |  |  |  | OFCI Procurement | Preconstruction | GMP | Chris Perales | Preconstruction | 01ADMIN |
| QTS-39821 |  | DH 1100 / B11 Lineup // Assembly - Tank #GEN-B11 | 20d | 2025-10-10 A | 2025-11-11 A | QTS-1371 | 100% |  | 2025-10-10 | 2025-11-06 |  |  |  | OFCI Procurement | Preconstruction |  | Chris Perales | Preconstruction | 01ADMIN |
| QTS-39831 |  | DH 1100 / B11 Lineup // Assembly - Engine #GEN-B11 | 20d | 2025-10-10 A | 2025-11-11 A | QTS-1371 | 100% |  | 2025-10-10 | 2025-11-06 |  |  |  | OFCI Procurement | Preconstruction |  | Chris Perales | Preconstruction | 01ADMIN |
| QTS-39841 |  | DH 1100 / B11 Lineup // Assembly - SCR #GEN-B11 | 20d | 2025-10-10 A | 2026-01-30 | QTS-1371 | 40% | 12d | 2025-10-10 | 2025-11-06 | 28d | 0d | 2026-01-30 | OFCI Procurement | Preconstruction |  | Chris Perales | Preconstruction | 01ADMIN |
| QTS-39851 |  | DH 1100 / B11 Lineup // Assembly - Housing #GEN-B11 | 20d | 2025-10-10 A | 2025-11-11 A | QTS-1371 | 100% |  | 2025-10-10 | 2025-11-06 |  |  |  | OFCI Procurement | Preconstruction |  | Chris Perales | Preconstruction | 01ADMIN |
| QTS-33031 |  | DH 1100 / B11 Lineup // Skid #B11 | 20d | 2025-10-22 A | 2025-11-18 A | QTS-1371 | 100% |  |  |  |  |  |  | OFCI Procurement | Preconstruction | GMP | Chris Perales | Preconstruction | 01ADMIN |
|  | 3 | **C11 Lineup** |  | 2025-07-14 | 2026-01-30 |  |  |  |  |  |  |  |  |  |  |  |  |  |  |
| QTS-35351 |  | DH 1100 / C11 Lineup // Chiller #1RT40-C11 | 20d | 2025-07-14 A | 2025-08-11 A | QTS-1371 | 100% |  | 2025-07-14 | 2025-08-08 |  |  |  | OFCI Procurement | Preconstruction | GMP | Chris Perales | Preconstruction | 01ADMIN |
| QTS-31521 |  | DH 1100 / C11 Lineup // 600A MOD #C11-03 (CRAH Support) | 7d | 2025-07-21 A | 2025-07-29 A | QTS-1371 | 100% |  |  |  |  |  |  | OFCI Procurement | Preconstruction | GMP | Chris Perales | Preconstruction |  |
| QTS-31281 |  | DH 1100 / C11 Lineup // 225A MOD #C11-02 (Liquid to Chip Support) | 2d | 2025-09-15 A | 2025-09-16 A | QTS-1371 | 100% |  |  |  |  |  |  | OFCI Procurement | Preconstruction | GMP | Chris Perales | Preconstruction |  |
| QTS-33701 |  | DH 1100 / C11 Lineup // UPS Container #C11 | 20d | 2025-09-19 A | 2025-10-29 A | QTS-1371 | 100% |  | 2025-09-19 | 2025-10-16 |  |  |  | OFCI Procurement | Preconstruction | GMP | Chris Perales | Preconstruction | 01ADMIN |
| QTS-35801 |  | DH 1100 / C11 Lineup // 2500KVA Padmount XFMR #C11 | 20d | 2025-10-06 A | 2025-10-20 A | QTS-1371 | 100% |  | 2025-10-06 | 2025-10-31 |  |  |  | OFCI Procurement | Preconstruction | GMP | Chris Perales | Preconstruction | 01ADMIN |
| QTS-39861 |  | DH 1100 / C11 Lineup // Assembly - Tank #GEN-C11 | 20d | 2025-10-13 A | 2025-11-13 A | QTS-1371 | 100% |  | 2025-10-13 | 2025-11-07 |  |  |  | OFCI Procurement | Preconstruction |  | Chris Perales | Preconstruction | 01ADMIN |
| QTS-39871 |  | DH 1100 / C11 Lineup // Assembly - Engine #GEN-C11 | 20d | 2025-10-13 A | 2025-11-13 A | QTS-1371 | 100% |  | 2025-10-13 | 2025-11-07 |  |  |  | OFCI Procurement | Preconstruction |  | Chris Perales | Preconstruction | 01ADMIN |
| QTS-39881 |  | DH 1100 / C11 Lineup // Assembly - SCR #GEN-C11 | 20d | 2025-10-13 A | 2026-01-30 | QTS-1371 | 40% | 12d | 2025-10-13 | 2025-11-07 | 28d | 0d | 2026-01-30 | OFCI Procurement | Preconstruction |  | Chris Perales | Preconstruction | 01ADMIN |
| QTS-39891 |  | DH 1100 / C11 Lineup // Assembly - Housing #GEN-C11 | 20d | 2025-10-13 A | 2025-11-13 A | QTS-1371 | 100% |  | 2025-10-13 | 2025-11-07 |  |  |  | OFCI Procurement | Preconstruction |  | Chris Perales | Preconstruction | 01ADMIN |
| QTS-33071 |  | DH 1100 / C11 Lineup // Skid #C11 | 20d | 2025-10-28 A | 2025-11-26 A | QTS-1371 | 100% |  | 2025-10-28 | 2025-11-24 |  |  |  | OFCI Procurement | Preconstruction | GMP | Chris Perales | Preconstruction | 01ADMIN |

Notes:
- QTS-35331: allucent_notes: John Capriotti on 2025-08-12 15:08: Chiller received by Belaire/taken out of QAE Yard on 8/11 to set. / allucent_notes: 2025-08-12 15:08 - User: John Capriotti - Date Added: 2025-08-12 15:08 - Note: Chiller received by Belaire/taken out of QAE Yard on 8/11 to set.
- QTS-33681: allucent_notes_20251027_224008: John Capriotti on 2025-10-27 18:10: Received on-site 10/27, planning to set 10/28 / Jason Johnston on 2025-10-27 22:10: No update from John Capriotti / allucent_notes_20251028_163138: John Capriotti on 2025-10-27 18:10: Received on-site 10/27, planning to set 10/28 / Jason Johnston on 2025-10-27 22:10: No update from John Capriotti / allucent_notes: 2025-10-27 18:10 - User: John Capriotti - Date Added: 2025-10-27 18:10 - Note: Received on-site 10/27, planning to set 10/28 / 2025-10-27 22:10 - User: Jason Johnston - Date Added: 2025-10-27 22:10 - Note: No update from John Capriotti
- QTS-35781: allucent_notes_20251028_163138: John Capriotti on 2025-10-28 15:10: Received and set on 10/20. / allucent_notes: 2025-10-28 15:10 - User: John Capriotti - Date Added: 2025-10-28 15:10 - Note: Received and set on 10/20.
- QTS-39781: allucent_notes_20251111_182405: John Capriotti on 2025-11-11 12:11: Received on 11/10 / allucent_notes_20251118_192630: John Capriotti on 2025-11-11 12:11: Received on 11/10 / allucent_notes: 2025-11-11 12:11 - User: John Capriotti - Date Added: 2025-11-11 12:11 - Note: Received on 11/10
- QTS-39791: allucent_notes_20251111_182405: John Capriotti on 2025-11-11 12:11: Received on 11/10 / John Capriotti on 2025-11-11 12:11: Received on 11/10 / allucent_notes_20251118_192630: John Capriotti on 2025-11-11 12:11: Received on 11/10 / John Capriotti on 2025-11-11 12:11: Received on 11/10 / allucent_notes: 2025-11-11 12:11 - User: John Capriotti - Date Added: 2025-11-11 12:11 - Note: Received on 11/10 / 2025-11-11 12:11 - User: John Capriotti - Date Added: 2025-11-11 12:11 - Note: Received on 11/10
- QTS-39801: allucent_notes_20251230_164549: Jason Johnston on 2025-11-11 18:11: John owes 11/11 update / John Capriotti on 2025-12-09 12:40: Pending confirmation on timing from Belaire on this. Followed up on 12/9. / Jason Johnston on 2025-12-16 15:17: not yet / John Capriotti on 2025-12-30 10:38: SCRs will be delivered when we are ready to set. The Mfg/Vendor has these located in their yard in Texas, but we are not going to ship all of these to site to store and then mobilize a separate crane and additional trucks to bring to the building. That would be a decent cost and significantly more coordination, with no added benefit. / Ultimately, I, John Capriotti (OFCI), need an update from the Subs/Supers as to when we intend to set them so I can schedule the delivery to support those set dates. / **I will press for updated dates on these, moving out as I work on getting estimated set dates. / allucent_notes_20251111_182405: Jason Johnston on 2025-11-11 18:11: John owes 11/11 update / allucent_notes_20251118_192630: Jason Johnston on 2025-11-11 18:11: John owes 11/11 update / allucent_notes_20251202_153722: Jason Johnston on 2025-11-11 18:11: John owes 11/11 update / allucent_notes_20251209_203830: Jason Johnston on 2025-11-11 18:11: John owes 11/11 update / John Capriotti on 2025-12-09 12:40: Pending confirmation on timing from Belaire on this. Followed up on 12/9. / allucent_notes_20251216_165335: Jason Johnston on 2025-11-11 18:11: John owes 11/11 update / John Capriotti on 2025-12-09 12:40: Pending confirmation on timing from Belaire on this. Followed up on 12/9. / Jason Johnston on 2025-12-16 15:17: not yet / allucent_notes: 2025-11-11 18:11 - User: Jason Johnston - Date Added: 2025-11-11 18:11 - Note: John owes 11/11 update / 2025-12-09 12:40 - User: John Capriotti - Date Added: 2025-12-09 12:40 - Note: Pending confirmation on timing from Belaire on this. Followed up on 12
- QTS-39811: allucent_notes_20251111_182405: John Capriotti on 2025-11-11 12:11: Received on 11/10 / John Capriotti on 2025-11-11 12:11: Received on 11/10 / allucent_notes_20251118_192630: John Capriotti on 2025-11-11 12:11: Received on 11/10 / John Capriotti on 2025-11-11 12:11: Received on 11/10 / allucent_notes: 2025-11-11 12:11 - User: John Capriotti - Date Added: 2025-11-11 12:11 - Note: Received on 11/10 / 2025-11-11 12:11 - User: John Capriotti - Date Added: 2025-11-11 12:11 - Note: Received on 11/10
- QTS-35341: allucent_notes: John Capriotti on 2025-08-12 15:08: Chiller received by Belaire/taken out of QAE Yard on 8/11 to set. / allucent_notes: 2025-08-12 15:08 - User: John Capriotti - Date Added: 2025-08-12 15:08 - Note: Chiller received by Belaire/taken out of QAE Yard on 8/11 to set.
- QTS-33691: allucent_notes_20251027_224008: John Capriotti on 2025-10-27 18:10: Received on-site 10/27, planning to set 10/28 / John Capriotti on 2025-10-27 19:10: Currently setting PODs / allucent_notes_20251028_163138: John Capriotti on 2025-10-27 18:10: Received on-site 10/27, planning to set 10/28 / John Capriotti on 2025-10-27 19:10: Currently setting PODs / John Capriotti on 2025-10-28 15:10: Received and set on 10/28 / allucent_notes: 2025-10-27 18:10 - User: John Capriotti - Date Added: 2025-10-27 18:10 - Note: Received on-site 10/27, planning to set 10/28 / 2025-10-27 19:10 - User: John Capriotti - Date Added: 2025-10-27 19:10 - Note: Currently setting PODs / 2025-10-28 15:10 - Use
- QTS-35791: allucent_notes_20251028_163138: John Capriotti on 2025-10-28 15:10: Received and set on 10/20. / allucent_notes: 2025-10-28 15:10 - User: John Capriotti - Date Added: 2025-10-28 15:10 - Note: Received and set on 10/20.
- QTS-39821: allucent_notes_20251111_182405: John Capriotti on 2025-11-11 12:11: Received 11/11 / allucent_notes_20251118_192630: John Capriotti on 2025-11-11 12:11: Received 11/11 / allucent_notes: 2025-11-11 12:11 - User: John Capriotti - Date Added: 2025-11-11 12:11 - Note: Received 11/11
- QTS-39831: allucent_notes_20251111_182405: John Capriotti on 2025-11-11 12:11: Received 11/11 / allucent_notes_20251118_192630: John Capriotti on 2025-11-11 12:11: Received 11/11 / allucent_notes: 2025-11-11 12:11 - User: John Capriotti - Date Added: 2025-11-11 12:11 - Note: Received 11/11
- QTS-39841: allucent_notes_20251230_164549: Jason Johnston on 2025-11-11 18:11: John owes 11/11 update / John Capriotti on 2025-12-09 12:40: Pending confirmation on timing from Belaire on this. Followed up on 12/9. / Jason Johnston on 2025-12-16 15:17: not yet / John Capriotti on 2025-12-30 10:38: SCRs will be delivered when we are ready to set. The Mfg/Vendor has these located in their yard in Texas, but we are not going to ship all of these to site to store and then mobilize a separate crane and additional trucks to bring to the building. That would be a decent cost and significantly more coordination, with no added benefit. / Ultimately, I, John Capriotti (OFCI), need an update from the Subs/Supers as to when we intend to set them so I can schedule the delivery to support those set dates. / **I will press for updated dates on these, moving out as I work on getting estimated set dates. / allucent_notes_20251111_182405: Jason Johnston on 2025-11-11 18:11: John owes 11/11 update / allucent_notes_20251118_192630: Jason Johnston on 2025-11-11 18:11: John owes 11/11 update / allucent_notes_20251202_153722: Jason Johnston on 2025-11-11 18:11: John owes 11/11 update / allucent_notes_20251209_203830: Jason Johnston on 2025-11-11 18:11: John owes 11/11 update / John Capriotti on 2025-12-09 12:40: Pending confirmation on timing from Belaire on this. Followed up on 12/9. / allucent_notes_20251216_165335: Jason Johnston on 2025-11-11 18:11: John owes 11/11 update / John Capriotti on 2025-12-09 12:40: Pending confirmation on timing from Belaire on this. Followed up on 12/9. / Jason Johnston on 2025-12-16 15:17: not yet / allucent_notes: 2025-11-11 18:11 - User: Jason Johnston - Date Added: 2025-11-11 18:11 - Note: John owes 11/11 update / 2025-12-09 12:40 - User: John Capriotti - Date Added: 2025-12-09 12:40 - Note: Pending confirmation on timing from Belaire on this. Followed up on 12
- QTS-39851: allucent_notes_20251111_182405: John Capriotti on 2025-11-11 12:11: Received 11/11 / allucent_notes_20251118_192630: John Capriotti on 2025-11-11 12:11: Received 11/11 / allucent_notes: 2025-11-11 12:11 - User: John Capriotti - Date Added: 2025-11-11 12:11 - Note: Received 11/11
- QTS-35351: allucent_notes: John Capriotti on 2025-08-12 15:08: Chiller received by Belaire/taken out of QAE Yard on 8/11 to set. / allucent_notes: 2025-08-12 15:08 - User: John Capriotti - Date Added: 2025-08-12 15:08 - Note: Chiller received by Belaire/taken out of QAE Yard on 8/11 to set.
- QTS-33701: allucent_notes_20251027_224008: John Capriotti on 2025-10-27 19:10: Currently setting PODs / allucent_notes_20251028_163138: John Capriotti on 2025-10-27 19:10: Currently setting PODs / John Capriotti on 2025-10-28 15:10: Delivery set for 10/29. / allucent_notes_20251104_160200: John Capriotti on 2025-10-27 19:10: Currently setting PODs / John Capriotti on 2025-10-28 15:10: Delivery set for 10/29. / allucent_notes: 2025-10-27 19:10 - User: John Capriotti - Date Added: 2025-10-27 19:10 - Note: Currently setting PODs / 2025-10-28 15:10 - User: John Capriotti - Date Added: 2025-10-28 15:10 - Note: Delivery set for 10/29.
- QTS-35801: allucent_notes_20251028_163138: John Capriotti on 2025-10-28 15:10: Received and set on 10/20. / allucent_notes: 2025-10-28 15:10 - User: John Capriotti - Date Added: 2025-10-28 15:10 - Note: Received and set on 10/20.
- QTS-39861: allucent_notes_20251111_182405: John Capriotti on 2025-11-11 12:11: Set to receive 11/13 / allucent_notes_20251118_192630: John Capriotti on 2025-11-11 12:11: Set to receive 11/13 / allucent_notes: 2025-11-11 12:11 - User: John Capriotti - Date Added: 2025-11-11 12:11 - Note: Set to receive 11/13
- QTS-39871: allucent_notes_20251111_182405: John Capriotti on 2025-11-11 12:11: Set to receive 11/13 / allucent_notes_20251118_192630: John Capriotti on 2025-11-11 12:11: Set to receive 11/13 / allucent_notes: 2025-11-11 12:11 - User: John Capriotti - Date Added: 2025-11-11 12:11 - Note: Set to receive 11/13
- QTS-39881: allucent_notes_20251230_164549: Jason Johnston on 2025-11-11 18:11: John owes 11/11 update / John Capriotti on 2025-12-09 12:41: Pending confirmation on timing from Belaire on this. Followed up on 12/9. / Jason Johnston on 2025-12-16 15:17: not yet / John Capriotti on 2025-12-30 10:38: SCRs will be delivered when we are ready to set. The Mfg/Vendor has these located in their yard in Texas, but we are not going to ship all of these to site to store and then mobilize a separate crane and additional trucks to bring to the building. That would be a decent cost and significantly more coordination, with no added benefit. / Ultimately, I, John Capriotti (OFCI), need an update from the Subs/Supers as to when we intend to set them so I can schedule the delivery to support those set dates. / **I will press for updated dates on these, moving out as I work on getting estimated set dates. / allucent_notes_20251111_182405: Jason Johnston on 2025-11-11 18:11: John owes 11/11 update / allucent_notes_20251118_192630: Jason Johnston on 2025-11-11 18:11: John owes 11/11 update / allucent_notes_20251202_153722: Jason Johnston on 2025-11-11 18:11: John owes 11/11 update / allucent_notes_20251209_203830: Jason Johnston on 2025-11-11 18:11: John owes 11/11 update / John Capriotti on 2025-12-09 12:41: Pending confirmation on timing from Belaire on this. Followed up on 12/9. / allucent_notes_20251216_165335: Jason Johnston on 2025-11-11 18:11: John owes 11/11 update / John Capriotti on 2025-12-09 12:41: Pending confirmation on timing from Belaire on this. Followed up on 12/9. / Jason Johnston on 2025-12-16 15:17: not yet / allucent_notes: 2025-11-11 18:11 - User: Jason Johnston - Date Added: 2025-11-11 18:11 - Note: John owes 11/11 update / 2025-12-09 12:41 - User: John Capriotti - Date Added: 2025-12-09 12:41 - Note: Pending confirmation on timing from Belaire on this. Followed up on 12
- QTS-39891: allucent_notes_20251111_182405: John Capriotti on 2025-11-11 12:11: Set to receive 11/13 / allucent_notes_20251118_192630: John Capriotti on 2025-11-11 12:11: Set to receive 11/13 / allucent_notes: 2025-11-11 12:11 - User: John Capriotti - Date Added: 2025-11-11 12:11 - Note: Set to receive 11/13

| ID | WBS | Activity | Duration | Start | Finish | Predecessors | Complete | Remaining | Planned start | Planned finish | Total float | Free float | Expected finish | Precon Phase | Project Section-1 | Baseline | Layton Responsible Party | Project Section | Allucent CSI Group |
| --- | --- | --- | --- | --- | --- | --- | --- | --- | --- | --- | --- | --- | --- | --- | --- | --- | --- | --- | --- |
|  | 4 | **D11 Lineup** |  | 2025-07-14 | 2026-01-30 |  |  |  |  |  |  |  |  |  |  |  |  |  |  |
| QTS-35361 |  | DH 1100 / D11 Lineup // Chiller #1RT40-D11 | 20d | 2025-07-14 A | 2025-08-11 A | QTS-1371 | 100% |  | 2025-07-14 | 2025-08-08 |  |  |  | OFCI Procurement | Preconstruction | GMP | Chris Perales | Preconstruction | 01ADMIN |
| QTS-31531 |  | DH 1100 / D11 Lineup // 600A MOD #D11-03 (CRAH Support) | 7d | 2025-07-21 A | 2025-07-29 A | QTS-1371 | 100% |  |  |  |  |  |  | OFCI Procurement | Preconstruction | GMP | Chris Perales | Preconstruction |  |
| QTS-31291 |  | DH 1100 / D11 Lineup // 225A MOD #D11-02 (Liquid to Chip Support) | 2d | 2025-09-15 A | 2025-09-16 A | QTS-1371 | 100% |  |  |  |  |  |  | OFCI Procurement | Preconstruction | GMP | Chris Perales | Preconstruction |  |
| QTS-33711 |  | DH 1100 / D11 Lineup // UPS Container #D11 | 20d | 2025-09-19 A | 2025-10-30 A | QTS-1371 | 100% |  | 2025-09-19 | 2025-10-16 |  |  |  | OFCI Procurement | Preconstruction | GMP | Chris Perales | Preconstruction | 01ADMIN |
| QTS-35811 |  | DH 1100 / D11 Lineup // 2500KVA Padmount XFMR #D11 | 20d | 2025-10-06 A | 2025-10-21 A | QTS-1371 | 100% |  | 2025-10-06 | 2025-10-31 |  |  |  | OFCI Procurement | Preconstruction | GMP | Chris Perales | Preconstruction | 01ADMIN |
| QTS-40381 |  | DH 1100 / D11 Lineup // Assembly - Tank #GEN-D11 | 20d | 2025-10-14 A | 2025-11-17 A | QTS-1371 | 100% |  | 2025-10-14 | 2025-11-10 |  |  |  | OFCI Procurement | Preconstruction |  | Chris Perales | Preconstruction | 01ADMIN |
| QTS-40391 |  | DH 1100 / D11 Lineup // Assembly - Engine #GEN-D11 | 20d | 2025-10-14 A | 2025-11-17 A | QTS-1371 | 100% |  | 2025-10-14 | 2025-11-10 |  |  |  | OFCI Procurement | Preconstruction |  | Chris Perales | Preconstruction | 01ADMIN |
| QTS-40401 |  | DH 1100 / D11 Lineup // Assembly - SCR #GEN-D11 | 20d | 2025-10-14 A | 2026-01-30 | QTS-1371 | 40% | 12d | 2025-10-14 | 2025-11-10 | 28d | 0d | 2026-01-30 | OFCI Procurement | Preconstruction |  | Chris Perales | Preconstruction | 01ADMIN |
| QTS-40411 |  | DH 1100 / D11 Lineup // Assembly - Housing #GEN-D11 | 20d | 2025-10-14 A | 2025-11-17 A | QTS-1371 | 100% |  | 2025-10-14 | 2025-11-10 |  |  |  | OFCI Procurement | Preconstruction |  | Chris Perales | Preconstruction | 01ADMIN |
| QTS-33111 |  | DH 1100 / D11 Lineup // Skid #D11 | 20d | 2025-10-30 A | 2025-11-26 A | QTS-1371 | 100% |  |  |  |  |  |  | OFCI Procurement | Preconstruction | GMP | Chris Perales | Preconstruction | 01ADMIN |
|  | 5 | **E11 Lineup** |  | 2025-07-14 | 2026-01-30 |  |  |  |  |  |  |  |  |  |  |  |  |  |  |
| QTS-35371 |  | DH 1100 / E11 Lineup // Chiller #1RT40-E11 | 20d | 2025-07-14 A | 2025-08-11 A | QTS-1371 | 100% |  | 2025-07-14 | 2025-08-08 |  |  |  | OFCI Procurement | Preconstruction | GMP | Chris Perales | Preconstruction | 01ADMIN |
| QTS-31541 |  | DH 1100 / E11 Lineup // 600A MOD #E11-03 (CRAH Support) | 7d | 2025-07-21 A | 2025-07-29 A | QTS-1371 | 100% |  |  |  |  |  |  | OFCI Procurement | Preconstruction | GMP | Chris Perales | Preconstruction |  |
| QTS-31301 |  | DH 1100 / E11 Lineup // 225A MOD #E11-02 (Liquid to Chip Support) | 2d | 2025-09-15 A | 2025-09-16 A | QTS-1371 | 100% |  |  |  |  |  |  | OFCI Procurement | Preconstruction | GMP | Chris Perales | Preconstruction |  |
| QTS-33721 |  | DH 1100 / E11 Lineup // UPS Container #E11 | 20d | 2025-09-19 A | 2025-11-05 A | QTS-1371 | 100% |  | 2025-09-19 | 2025-10-16 |  |  |  | OFCI Procurement | Preconstruction | GMP | Chris Perales | Preconstruction | 01ADMIN |
| QTS-35821 |  | DH 1100 / E11 Lineup // 2500KVA Padmount XFMR #E11 | 20d | 2025-10-06 A | 2025-10-21 A | QTS-1371 | 100% |  | 2025-10-06 | 2025-10-31 |  |  |  | OFCI Procurement | Preconstruction | GMP | Chris Perales | Preconstruction | 01ADMIN |
| QTS-33151 |  | DH 1100 / E11 Lineup // Skid #E11 | 20d | 2025-10-15 A | 2025-11-03 A | QTS-1371 | 100% |  | 2025-10-15 | 2025-11-11 |  |  |  | OFCI Procurement | Preconstruction | GMP | Chris Perales | Preconstruction | 01ADMIN |
| QTS-40581 |  | DH 1100 / E11 Lineup // Assembly - Tank #GEN-E11 | 20d | 2025-10-15 A | 2025-11-20 A | QTS-1371 | 100% |  | 2025-10-15 | 2025-11-11 |  |  |  | OFCI Procurement | Preconstruction |  | Chris Perales | Preconstruction | 01ADMIN |
| QTS-40591 |  | DH 1100 / E11 Lineup // Assembly - Engine #GEN-E11 | 20d | 2025-10-15 A | 2025-11-20 A | QTS-1371 | 100% |  | 2025-10-15 | 2025-11-11 |  |  |  | OFCI Procurement | Preconstruction |  | Chris Perales | Preconstruction | 01ADMIN |
| QTS-40601 |  | DH 1100 / E11 Lineup // Assembly - SCR #GEN-E11 | 20d | 2025-10-15 A | 2026-01-30 | QTS-1371 | 40% | 12d | 2025-10-15 | 2025-11-11 | 28d | 0d | 2026-01-30 | OFCI Procurement | Preconstruction |  | Chris Perales | Preconstruction | 01ADMIN |
| QTS-40611 |  | DH 1100 / E11 Lineup // Assembly - Housing #GEN-E11 | 20d | 2025-10-15 A | 2025-11-20 A | QTS-1371 | 100% |  | 2025-10-15 | 2025-11-11 |  |  |  | OFCI Procurement | Preconstruction |  | Chris Perales | Preconstruction | 01ADMIN |
|  | 6 | **F11 Lineup** |  | 2025-07-14 | 2026-01-30 |  |  |  |  |  |  |  |  |  |  |  |  |  |  |
| QTS-35381 |  | DH 1100 / F11 Lineup // Chiller #1RT40-F11 | 20d | 2025-07-14 A | 2025-08-11 A | QTS-1371 | 100% |  | 2025-07-14 | 2025-08-08 |  |  |  | OFCI Procurement | Preconstruction | GMP | Chris Perales | Preconstruction | 01ADMIN |
| QTS-31551 |  | DH 1100 / F11 Lineup // 600A MOD #F11-03 (CRAH Support) | 7d | 2025-07-21 A | 2025-07-29 A | QTS-1371 | 100% |  |  |  |  |  |  | OFCI Procurement | Preconstruction | GMP | Chris Perales | Preconstruction |  |
| QTS-31311 |  | DH 1100 / F11 Lineup // 225A MOD #F11-02 (Liquid to Chip Support) | 2d | 2025-09-15 A | 2025-09-16 A | QTS-1371 | 100% |  |  |  |  |  |  | OFCI Procurement | Preconstruction | GMP | Chris Perales | Preconstruction |  |
| QTS-33731 |  | DH 1100 / F11 Lineup // UPS Container #F11 | 20d | 2025-09-19 A | 2025-11-06 A | QTS-1371 | 100% |  | 2025-09-19 | 2025-10-16 |  |  |  | OFCI Procurement | Preconstruction | GMP | Chris Perales | Preconstruction | 01ADMIN |
| QTS-35831 |  | DH 1100 / F11 Lineup // 2500KVA Padmount XFMR #F11 | 20d | 2025-10-06 A | 2025-10-21 A | QTS-1371 | 100% |  | 2025-10-06 | 2025-10-31 |  |  |  | OFCI Procurement | Preconstruction | GMP | Chris Perales | Preconstruction | 01ADMIN |
| QTS-33191 |  | DH 1100 / F11 Lineup // Skid #F11 | 20d | 2025-10-15 A | 2025-11-03 A | QTS-1371 | 100% |  | 2025-10-15 | 2025-11-11 |  |  |  | OFCI Procurement | Preconstruction | GMP | Chris Perales | Preconstruction | 01ADMIN |
| QTS-40781 |  | DH 1100 / F11 Lineup // Assembly - Tank #GEN-F11 | 20d | 2025-10-16 A | 2025-11-17 A | QTS-1371 | 100% |  | 2025-10-16 | 2025-11-12 |  |  |  | OFCI Procurement | Preconstruction |  | Chris Perales | Preconstruction | 01ADMIN |
| QTS-40791 |  | DH 1100 / F11 Lineup // Assembly - Engine #GEN-F11 | 20d | 2025-10-16 A | 2025-11-17 A | QTS-1371 | 100% |  | 2025-10-16 | 2025-11-12 |  |  |  | OFCI Procurement | Preconstruction |  | Chris Perales | Preconstruction | 01ADMIN |
| QTS-40801 |  | DH 1100 / F11 Lineup // Assembly - SCR #GEN-F11 | 20d | 2025-10-16 A | 2026-01-30 | QTS-1371 | 40% | 12d | 2025-10-16 | 2025-11-12 | 28d | 0d | 2026-01-30 | OFCI Procurement | Preconstruction |  | Chris Perales | Preconstruction | 01ADMIN |
| QTS-40811 |  | DH 1100 / F11 Lineup // Assembly - Housing #GEN-F11 | 20d | 2025-10-16 A | 2025-11-17 A | QTS-1371 | 100% |  | 2025-10-16 | 2025-11-12 |  |  |  | OFCI Procurement | Preconstruction |  | Chris Perales | Preconstruction | 01ADMIN |

Notes:
- QTS-35361: allucent_notes: John Capriotti on 2025-08-12 15:08: Chiller received by Belaire/taken out of QAE Yard on 8/11 to set. / allucent_notes: 2025-08-12 15:08 - User: John Capriotti - Date Added: 2025-08-12 15:08 - Note: Chiller received by Belaire/taken out of QAE Yard on 8/11 to set.
- QTS-33711: allucent_notes_20251027_224008: Jason Johnston on 2025-10-27 22:10: No update from John Capriotti / allucent_notes_20251028_163138: Jason Johnston on 2025-10-27 22:10: No update from John Capriotti / John Capriotti on 2025-10-28 15:10: Delivery set for 10/30. / allucent_notes_20251104_160200: Jason Johnston on 2025-10-27 22:10: No update from John Capriotti / John Capriotti on 2025-10-28 15:10: Delivery set for 10/30. / allucent_notes: 2025-10-27 22:10 - User: Jason Johnston - Date Added: 2025-10-27 22:10 - Note: No update from John Capriotti / 2025-10-28 15:10 - User: John Capriotti - Date Added: 2025-10-28 15:10 - Note: Delivery set for 10/30.
- QTS-35811: allucent_notes_20251028_163138: John Capriotti on 2025-10-28 15:10: Received and set on 10/21.. / allucent_notes: 2025-10-28 15:10 - User: John Capriotti - Date Added: 2025-10-28 15:10 - Note: Received and set on 10/21..
- QTS-40381: allucent_notes_20251111_182405: John Capriotti on 2025-11-11 13:11: Set to receive 11/13 / allucent_notes_20251118_192630: John Capriotti on 2025-11-11 13:11: Set to receive 11/13 / allucent_notes: 2025-11-11 13:11 - User: John Capriotti - Date Added: 2025-11-11 13:11 - Note: Set to receive 11/13
- QTS-40391: allucent_notes_20251111_182405: John Capriotti on 2025-11-11 13:11: Set to receive 11/13 / allucent_notes_20251118_192630: John Capriotti on 2025-11-11 13:11: Set to receive 11/13 / allucent_notes: 2025-11-11 13:11 - User: John Capriotti - Date Added: 2025-11-11 13:11 - Note: Set to receive 11/13
- QTS-40401: allucent_notes_20251230_164549: Jason Johnston on 2025-11-11 18:11: John owes 11/11 update / John Capriotti on 2025-12-09 12:41: Pending confirmation on timing from Belaire on this. Followed up on 12/9. / Jason Johnston on 2025-12-16 15:17: not yet / John Capriotti on 2025-12-30 10:38: SCRs will be delivered when we are ready to set. The Mfg/Vendor has these located in their yard in Texas, but we are not going to ship all of these to site to store and then mobilize a separate crane and additional trucks to bring to the building. That would be a decent cost and significantly more coordination, with no added benefit. / Ultimately, I, John Capriotti (OFCI), need an update from the Subs/Supers as to when we intend to set them so I can schedule the delivery to support those set dates. / **I will press for updated dates on these, moving out as I work on getting estimated set dates. / allucent_notes_20251111_182405: Jason Johnston on 2025-11-11 18:11: John owes 11/11 update / allucent_notes_20251118_192630: Jason Johnston on 2025-11-11 18:11: John owes 11/11 update / allucent_notes_20251202_153722: Jason Johnston on 2025-11-11 18:11: John owes 11/11 update / allucent_notes_20251209_203830: Jason Johnston on 2025-11-11 18:11: John owes 11/11 update / John Capriotti on 2025-12-09 12:41: Pending confirmation on timing from Belaire on this. Followed up on 12/9. / allucent_notes_20251216_165335: Jason Johnston on 2025-11-11 18:11: John owes 11/11 update / John Capriotti on 2025-12-09 12:41: Pending confirmation on timing from Belaire on this. Followed up on 12/9. / Jason Johnston on 2025-12-16 15:17: not yet / allucent_notes: 2025-11-11 18:11 - User: Jason Johnston - Date Added: 2025-11-11 18:11 - Note: John owes 11/11 update / 2025-12-09 12:41 - User: John Capriotti - Date Added: 2025-12-09 12:41 - Note: Pending confirmation on timing from Belaire on this. Followed up on 12
- QTS-40411: allucent_notes_20251111_182405: John Capriotti on 2025-11-11 13:11: Set to receive 11/13 / allucent_notes_20251118_192630: John Capriotti on 2025-11-11 13:11: Set to receive 11/13 / allucent_notes: 2025-11-11 13:11 - User: John Capriotti - Date Added: 2025-11-11 13:11 - Note: Set to receive 11/13
- QTS-35371: allucent_notes: John Capriotti on 2025-08-12 15:08: Chiller received by Belaire/taken out of QAE Yard on 8/11 to set. / allucent_notes: 2025-08-12 15:08 - User: John Capriotti - Date Added: 2025-08-12 15:08 - Note: Chiller received by Belaire/taken out of QAE Yard on 8/11 to set.
- QTS-33721: allucent_notes_20251027_224008: Jason Johnston on 2025-10-27 22:10: No update from John Capriotti / allucent_notes_20251028_163138: Jason Johnston on 2025-10-27 22:10: No update from John Capriotti / John Capriotti on 2025-10-28 15:10: Per Vendor/Fibrebond they confirmed delivery for 11/5. Unable to bring in early do to logistics, permitting, etc. Will set when it comes in. / allucent_notes_20251104_160200: Jason Johnston on 2025-10-27 22:10: No update from John Capriotti / John Capriotti on 2025-10-28 15:10: Per Vendor/Fibrebond they confirmed delivery for 11/5. Unable to bring in early do to logistics, permitting, etc. Will set when it comes in. / allucent_notes_20251111_182405: Jason Johnston on 2025-10-27 22:10: No update from John Capriotti / John Capriotti on 2025-10-28 15:10: Per Vendor/Fibrebond they confirmed delivery for 11/5. Unable to bring in early do to logistics, permitting, etc. Will set when it comes in. / allucent_notes_20251118_192630: Jason Johnston on 2025-10-27 22:10: No update from John Capriotti / John Capriotti on 2025-10-28 15:10: Per Vendor/Fibrebond they confirmed delivery for 11/5. Unable to bring in early do to logistics, permitting, etc. Will set when it comes in. / allucent_notes: 2025-10-27 22:10 - User: Jason Johnston - Date Added: 2025-10-27 22:10 - Note: No update from John Capriotti / 2025-10-28 15:10 - User: John Capriotti - Date Added: 2025-10-28 15:10 - Note: Per Vendor/Fibrebond they confirmed delivery for 11/5. Unable to
- QTS-35821: allucent_notes_20251028_163138: John Capriotti on 2025-10-28 15:10: Received and set on 10/21. / allucent_notes: 2025-10-28 15:10 - User: John Capriotti - Date Added: 2025-10-28 15:10 - Note: Received and set on 10/21.
- QTS-40581: allucent_notes_20251111_182405: John Capriotti on 2025-11-11 13:11: Set to receive 11/14. / allucent_notes_20251118_192630: John Capriotti on 2025-11-11 13:11: Set to receive 11/14. / allucent_notes_20251202_153722: John Capriotti on 2025-11-11 13:11: Set to receive 11/14. / allucent_notes: 2025-11-11 13:11 - User: John Capriotti - Date Added: 2025-11-11 13:11 - Note: Set to receive 11/14.
- QTS-40591: allucent_notes_20251111_182405: John Capriotti on 2025-11-11 13:11: Set to receive 11/14. / allucent_notes_20251118_192630: John Capriotti on 2025-11-11 13:11: Set to receive 11/14. / allucent_notes_20251202_153722: John Capriotti on 2025-11-11 13:11: Set to receive 11/14. / allucent_notes: 2025-11-11 13:11 - User: John Capriotti - Date Added: 2025-11-11 13:11 - Note: Set to receive 11/14.
- QTS-40601: allucent_notes_20251230_164549: Jason Johnston on 2025-11-11 17:11: John owes 11/11 update / John Capriotti on 2025-12-09 12:41: Pending confirmation on timing from Belaire on this. Followed up on 12/9. / Jason Johnston on 2025-12-16 15:17: not yet / John Capriotti on 2025-12-30 10:38: SCRs will be delivered when we are ready to set. The Mfg/Vendor has these located in their yard in Texas, but we are not going to ship all of these to site to store and then mobilize a separate crane and additional trucks to bring to the building. That would be a decent cost and significantly more coordination, with no added benefit. / Ultimately, I, John Capriotti (OFCI), need an update from the Subs/Supers as to when we intend to set them so I can schedule the delivery to support those set dates. / **I will press for updated dates on these, moving out as I work on getting estimated set dates. / allucent_notes_20251111_182405: Jason Johnston on 2025-11-11 17:11: John owes 11/11 update / allucent_notes_20251118_192630: Jason Johnston on 2025-11-11 17:11: John owes 11/11 update / allucent_notes_20251202_153722: Jason Johnston on 2025-11-11 17:11: John owes 11/11 update / allucent_notes_20251209_203830: Jason Johnston on 2025-11-11 17:11: John owes 11/11 update / John Capriotti on 2025-12-09 12:41: Pending confirmation on timing from Belaire on this. Followed up on 12/9. / allucent_notes_20251216_165335: Jason Johnston on 2025-11-11 17:11: John owes 11/11 update / John Capriotti on 2025-12-09 12:41: Pending confirmation on timing from Belaire on this. Followed up on 12/9. / Jason Johnston on 2025-12-16 15:17: not yet / allucent_notes: 2025-11-11 17:11 - User: Jason Johnston - Date Added: 2025-11-11 17:11 - Note: John owes 11/11 update / 2025-12-09 12:41 - User: John Capriotti - Date Added: 2025-12-09 12:41 - Note: Pending confirmation on timing from Belaire on this. Followed up on 12
- QTS-40611: allucent_notes_20251111_182405: John Capriotti on 2025-11-11 13:11: Set to receive 11/14. / allucent_notes_20251118_192630: John Capriotti on 2025-11-11 13:11: Set to receive 11/14. / allucent_notes_20251202_153722: John Capriotti on 2025-11-11 13:11: Set to receive 11/14. / allucent_notes: 2025-11-11 13:11 - User: John Capriotti - Date Added: 2025-11-11 13:11 - Note: Set to receive 11/14.
- QTS-35381: allucent_notes: John Capriotti on 2025-08-12 15:08: Chiller received by Belaire/taken out of QAE Yard on 8/11 to set. / allucent_notes: 2025-08-12 15:08 - User: John Capriotti - Date Added: 2025-08-12 15:08 - Note: Chiller received by Belaire/taken out of QAE Yard on 8/11 to set.
- QTS-33731: allucent_notes_20251027_224008: Jason Johnston on 2025-10-27 22:10: No update from John Capriotti / allucent_notes_20251028_163138: Jason Johnston on 2025-10-27 22:10: No update from John Capriotti / John Capriotti on 2025-10-28 15:10: Per Vendor/Fibrebond they confirmed delivery for 11/6. Unable to bring in early do to logistics, permitting, etc. Will set when it comes in. / allucent_notes_20251104_160200: Jason Johnston on 2025-10-27 22:10: No update from John Capriotti / John Capriotti on 2025-10-28 15:10: Per Vendor/Fibrebond they confirmed delivery for 11/6. Unable to bring in early do to logistics, permitting, etc. Will set when it comes in. / allucent_notes_20251111_182405: Jason Johnston on 2025-10-27 22:10: No update from John Capriotti / John Capriotti on 2025-10-28 15:10: Per Vendor/Fibrebond they confirmed delivery for 11/6. Unable to bring in early do to logistics, permitting, etc. Will set when it comes in. / Jason Johnston on 2025-11-11 17:11: John owes 11/11 update / allucent_notes_20251118_192630: Jason Johnston on 2025-10-27 22:10: No update from John Capriotti / John Capriotti on 2025-10-28 15:10: Per Vendor/Fibrebond they confirmed delivery for 11/6. Unable to bring in early do to logistics, permitting, etc. Will set when it comes in. / Jason Johnston on 2025-11-11 17:11: John owes 11/11 update / allucent_notes: 2025-10-27 22:10 - User: Jason Johnston - Date Added: 2025-10-27 22:10 - Note: No update from John Capriotti / 2025-10-28 15:10 - User: John Capriotti - Date Added: 2025-10-28 15:10 - Note: Per Vendor/Fibrebond they confirmed delivery for 11/6. Unable to
- QTS-35831: allucent_notes_20251028_163138: John Capriotti on 2025-10-28 15:10: Received and set on 10/21. / allucent_notes: 2025-10-28 15:10 - User: John Capriotti - Date Added: 2025-10-28 15:10 - Note: Received and set on 10/21.
- QTS-40801: allucent_notes_20251230_164549: John Capriotti on 2025-12-09 12:41: Pending confirmation on timing from Belaire on this. Followed up on 12/9. / Jason Johnston on 2025-12-16 15:17: not yet / John Capriotti on 2025-12-30 10:38: SCRs will be delivered when we are ready to set. The Mfg/Vendor has these located in their yard in Texas, but we are not going to ship all of these to site to store and then mobilize a separate crane and additional trucks to bring to the building. That would be a decent cost and significantly more coordination, with no added benefit. / Ultimately, I, John Capriotti (OFCI), need an update from the Subs/Supers as to when we intend to set them so I can schedule the delivery to support those set dates. / **I will press for updated dates on these, moving out as I work on getting estimated set dates. / allucent_notes_20251209_203830: John Capriotti on 2025-12-09 12:41: Pending confirmation on timing from Belaire on this. Followed up on 12/9. / allucent_notes_20251216_165335: John Capriotti on 2025-12-09 12:41: Pending confirmation on timing from Belaire on this. Followed up on 12/9. / Jason Johnston on 2025-12-16 15:17: not yet / allucent_notes: 2025-12-09 12:41 - User: John Capriotti - Date Added: 2025-12-09 12:41 - Note: Pending confirmation on timing from Belaire on this. Followed up on 12/9. / 2025-12-16 15:17 - User: Jason Johnston - Date Added: 2025-12-16 15:17 - Note: not yet / 2025-12-3

| ID | WBS | Activity | Duration | Start | Finish | Predecessors | Complete | Remaining | Planned start | Planned finish | Total float | Free float | Expected finish | Precon Phase | Project Section-1 | Baseline | Layton Responsible Party | Project Section | Allucent CSI Group |
| --- | --- | --- | --- | --- | --- | --- | --- | --- | --- | --- | --- | --- | --- | --- | --- | --- | --- | --- | --- |
|  | 9 | **R11 Lineup** |  | 2025-07-14 | 2026-01-30 |  |  |  |  |  |  |  |  |  |  |  |  |  |  |
| QTS-35391 |  | DH 1100 / R11 Lineup // Chiller #1RT40-R11 | 20d | 2025-07-14 A | 2025-08-12 A | QTS-1371 | 100% |  | 2025-07-14 | 2025-08-08 |  |  |  | OFCI Procurement | Preconstruction | GMP | Chris Perales | Preconstruction | 01ADMIN |
| QTS-31691 |  | DH 1100 / R11 Lineup // 600A MOD #R11-03 (CRAH Support) | 7d | 2025-07-21 A | 2025-07-29 A | QTS-1371 | 100% |  |  |  |  |  |  | OFCI Procurement | Preconstruction | GMP | Chris Perales | Preconstruction |  |
| QTS-31761 |  | DH 1100 / R11 Lineup // 225A MOD #R11-02 | 2d | 2025-09-15 A | 2025-09-16 A | QTS-1371 | 100% |  |  |  |  |  |  | OFCI Procurement | Preconstruction | GMP | Chris Perales | Preconstruction |  |
| QTS-33741 |  | DH 1100 / R11 Lineup // UPS Container #R11 | 20d | 2025-09-19 A | 2025-10-27 A | QTS-1371 | 100% |  | 2025-09-19 | 2025-10-16 |  |  |  | OFCI Procurement | Preconstruction | GMP | Chris Perales | Preconstruction | 01ADMIN |
| QTS-35841 |  | DH 1100 / R11 Lineup // 2500KVA Padmount XFMR #R11 | 20d | 2025-10-06 A | 2025-10-21 A | QTS-1371 | 100% |  | 2025-10-06 | 2025-10-31 |  |  |  | OFCI Procurement | Preconstruction | GMP | Chris Perales | Preconstruction | 01ADMIN |
| QTS-40981 |  | DH 1100 / R11 Lineup // Assembly - Tank #GEN-R11 | 20d | 2025-10-17 A | 2025-11-10 A | QTS-1371 | 100% |  | 2025-10-17 | 2025-11-13 |  |  |  | OFCI Procurement | Preconstruction |  | Chris Perales | Preconstruction | 01ADMIN |
| QTS-40991 |  | DH 1100 / R11 Lineup // Assembly - Engine #GEN-R11 | 20d | 2025-10-17 A | 2025-11-10 A | QTS-1371 | 100% |  | 2025-10-17 | 2025-11-13 |  |  |  | OFCI Procurement | Preconstruction |  | Chris Perales | Preconstruction | 01ADMIN |
| QTS-41001 |  | DH 1100 / R11 Lineup // Assembly - SCR #GEN-R11 | 20d | 2025-10-17 A | 2026-01-30 | QTS-1371 | 40% | 12d | 2025-10-17 | 2025-11-13 | 28d | 0d | 2026-01-30 | OFCI Procurement | Preconstruction |  | Chris Perales | Preconstruction | 01ADMIN |
| QTS-41011 |  | DH 1100 / R11 Lineup // Assembly - Housing #GEN-R11 | 20d | 2025-10-17 A | 2025-11-10 A | QTS-1371 | 100% |  | 2025-10-17 | 2025-11-13 |  |  |  | OFCI Procurement | Preconstruction |  | Chris Perales | Preconstruction | 01ADMIN |
|  | 3 | **Data Hall 2200 (Need By Dates)** |  | 2025-08-07 | 2026-02-11 |  |  |  |  |  |  |  |  |  |  |  |  |  |  |
| QTS-34891 |  | DH 2200 / CRAH #29 (Electrical Gallery) | 20d | 2025-10-08 A | 2026-01-21 | QTS-1371 | 75% | 5d | 2025-10-08 | 2025-11-04 | 47d | 0d | 2026-01-21 | OFCI Procurement | Preconstruction | GMP | Chris Perales | Preconstruction | 01ADMIN |
| QTS-34901 |  | DH 2200 / CRAH #30 (Electrical Gallery) | 20d | 2025-10-08 A | 2026-01-21 | QTS-1371 | 75% | 5d | 2025-10-08 | 2025-11-04 | 47d | 0d | 2026-01-21 | OFCI Procurement | Preconstruction | GMP | Chris Perales | Preconstruction | 01ADMIN |
| QTS-34911 |  | DH 2200 / CRAH #31 (Electrical Gallery) | 20d | 2025-10-08 A | 2026-01-21 | QTS-1371 | 75% | 5d | 2025-10-08 | 2025-11-04 | 47d | 0d | 2026-01-21 | OFCI Procurement | Preconstruction | GMP | Chris Perales | Preconstruction | 01ADMIN |
| QTS-34921 |  | DH 2200 / CRAH #32 (Electrical Gallery) | 20d | 2025-10-08 A | 2026-01-21 | QTS-1371 | 75% | 5d | 2025-10-08 | 2025-11-04 | 47d | 0d | 2026-01-21 | OFCI Procurement | Preconstruction | GMP | Chris Perales | Preconstruction | 01ADMIN |
| QTS-34611 |  | DH 2200 / CRAH #01 | 20d | 2025-10-24 A | 2026-01-23 | QTS-1371 | 65% | 7d | 2025-10-24 | 2025-11-20 | 2d | 0d | 2026-01-23 | OFCI Procurement | Preconstruction | GMP | Chris Perales | Preconstruction | 01ADMIN |
| QTS-34621 |  | DH 2200 / CRAH #02 | 20d | 2025-10-24 A | 2026-01-23 | QTS-1371 | 65% | 7d | 2025-10-24 | 2025-11-20 | 2d | 0d | 2026-01-23 | OFCI Procurement | Preconstruction | GMP | Chris Perales | Preconstruction | 01ADMIN |
| QTS-34631 |  | DH 2200 / CRAH #03 | 20d | 2025-10-24 A | 2026-01-23 | QTS-1371 | 65% | 7d | 2025-10-24 | 2025-11-20 | 2d | 0d | 2026-01-23 | OFCI Procurement | Preconstruction | GMP | Chris Perales | Preconstruction | 01ADMIN |
| QTS-34641 |  | DH 2200 / CRAH #04 | 20d | 2025-10-24 A | 2026-01-23 | QTS-1371 | 65% | 7d | 2025-10-24 | 2025-11-20 | 2d | 0d | 2026-01-23 | OFCI Procurement | Preconstruction | GMP | Chris Perales | Preconstruction | 01ADMIN |
| QTS-34651 |  | DH 2200 / CRAH #05 | 20d | 2025-10-24 A | 2026-01-23 | QTS-1371 | 65% | 7d | 2025-10-24 | 2025-11-20 | 2d | 0d | 2026-01-23 | OFCI Procurement | Preconstruction | GMP | Chris Perales | Preconstruction | 01ADMIN |
| QTS-34661 |  | DH 2200 / CRAH #06 | 20d | 2025-10-24 A | 2026-01-23 | QTS-1371 | 65% | 7d | 2025-10-24 | 2025-11-20 | 2d | 0d | 2026-01-23 | OFCI Procurement | Preconstruction | GMP | Chris Perales | Preconstruction | 01ADMIN |
| QTS-34671 |  | DH 2200 / CRAH #07 | 20d | 2025-10-24 A | 2026-01-23 | QTS-1371 | 65% | 7d | 2025-10-24 | 2025-11-20 | 2d | 0d | 2026-01-23 | OFCI Procurement | Preconstruction | GMP | Chris Perales | Preconstruction | 01ADMIN |
| QTS-34681 |  | DH 2200 / CRAH #08 | 20d | 2025-10-24 A | 2026-01-23 | QTS-1371 | 65% | 7d | 2025-10-24 | 2025-11-20 | 2d | 0d | 2026-01-23 | OFCI Procurement | Preconstruction | GMP | Chris Perales | Preconstruction | 01ADMIN |
| QTS-34691 |  | DH 2200 / CRAH #09 | 20d | 2025-10-24 A | 2026-01-23 | QTS-1371 | 65% | 7d | 2025-10-24 | 2025-11-20 | 7d | 0d | 2026-01-23 | OFCI Procurement | Preconstruction | GMP | Chris Perales | Preconstruction | 01ADMIN |
| QTS-34701 |  | DH 2200 / CRAH #10 | 20d | 2025-10-24 A | 2026-01-23 | QTS-1371 | 65% | 7d | 2025-10-24 | 2025-11-20 | 7d | 0d | 2026-01-23 | OFCI Procurement | Preconstruction | GMP | Chris Perales | Preconstruction | 01ADMIN |
| QTS-34711 |  | DH 2200 / CRAH #11 | 20d | 2025-10-24 A | 2026-01-23 | QTS-1371 | 65% | 7d | 2025-10-24 | 2025-11-20 | 7d | 0d | 2026-01-23 | OFCI Procurement | Preconstruction | GMP | Chris Perales | Preconstruction | 01ADMIN |
| QTS-34721 |  | DH 2200 / CRAH #12 | 20d | 2025-10-24 A | 2026-01-23 | QTS-1371 | 65% | 7d | 2025-10-24 | 2025-11-20 | 7d | 0d | 2026-01-23 | OFCI Procurement | Preconstruction | GMP | Chris Perales | Preconstruction | 01ADMIN |
| QTS-34731 |  | DH 2200 / CRAH #13 | 20d | 2025-10-24 A | 2026-01-23 | QTS-1371 | 65% | 7d | 2025-10-24 | 2025-11-20 | 7d | 0d | 2026-01-23 | OFCI Procurement | Preconstruction | GMP | Chris Perales | Preconstruction | 01ADMIN |
| QTS-34741 |  | DH 2200 / CRAH #14 | 20d | 2025-10-24 A | 2026-01-23 | QTS-1371 | 65% | 7d | 2025-10-24 | 2025-11-20 | 7d | 0d | 2026-01-23 | OFCI Procurement | Preconstruction | GMP | Chris Perales | Preconstruction | 01ADMIN |
| QTS-23441 |  | DH 2200 / DOAS #01 | 20d | 2025-11-04 A | 2025-12-18 A | QTS-1371 | 100% |  | 2025-11-03 | 2025-12-02 |  |  |  | OFCI Procurement | Preconstruction | GMP | Chris Perales | Preconstruction | 01ADMIN |
| QTS-23451 |  | DH 2200 / DOAS #02 | 20d | 2025-11-04 A | 2025-12-18 A | QTS-1371 | 100% |  | 2025-11-03 | 2025-12-02 |  |  |  | OFCI Procurement | Preconstruction | GMP | Chris Perales | Preconstruction | 01ADMIN |
| QTS-34751 |  | DH 2200 / CRAH #15 | 20d | 2025-11-04 A | 2026-01-23 | QTS-1371 | 65% | 7d | 2025-11-04 | 2025-12-03 | 19d | 0d | 2026-01-23 | OFCI Procurement | Preconstruction | GMP | Chris Perales | Preconstruction | 01ADMIN |
| QTS-34761 |  | DH 2200 / CRAH #16 | 20d | 2025-11-04 A | 2026-01-23 | QTS-1371 | 65% | 7d | 2025-11-04 | 2025-12-03 | 19d | 0d | 2026-01-23 | OFCI Procurement | Preconstruction | GMP | Chris Perales | Preconstruction | 01ADMIN |
| QTS-34771 |  | DH 2200 / CRAH #17 | 20d | 2025-11-04 A | 2026-01-23 | QTS-1371 | 65% | 7d | 2025-11-04 | 2025-12-03 | 19d | 0d | 2026-01-23 | OFCI Procurement | Preconstruction | GMP | Chris Perales | Preconstruction | 01ADMIN |
| QTS-34781 |  | DH 2200 / CRAH #18 | 20d | 2025-11-04 A | 2026-01-23 | QTS-1371 | 65% | 7d | 2025-11-04 | 2025-12-03 | 19d | 0d | 2026-01-23 | OFCI Procurement | Preconstruction | GMP | Chris Perales | Preconstruction | 01ADMIN |
| QTS-34791 |  | DH 2200 / CRAH #19 | 20d | 2025-11-04 A | 2026-01-23 | QTS-1371 | 65% | 7d | 2025-11-04 | 2025-12-03 | 19d | 0d | 2026-01-23 | OFCI Procurement | Preconstruction | GMP | Chris Perales | Preconstruction | 01ADMIN |
| QTS-34801 |  | DH 2200 / CRAH #20 | 20d | 2025-11-04 A | 2026-01-23 | QTS-1371 | 65% | 7d | 2025-11-04 | 2025-12-03 | 19d | 0d | 2026-01-23 | OFCI Procurement | Preconstruction | GMP | Chris Perales | Preconstruction | 01ADMIN |
| QTS-34811 |  | DH 2200 / CRAH #21 | 20d | 2025-11-04 A | 2026-01-23 | QTS-1371 | 65% | 7d | 2025-11-04 | 2025-12-03 | 19d | 0d | 2026-01-23 | OFCI Procurement | Preconstruction | GMP | Chris Perales | Preconstruction | 01ADMIN |
| QTS-34821 |  | DH 2200 / CRAH #22 | 20d | 2025-11-04 A | 2026-01-23 | QTS-1371 | 65% | 7d | 2025-11-04 | 2025-12-03 | 19d | 0d | 2026-01-23 | OFCI Procurement | Preconstruction | GMP | Chris Perales | Preconstruction | 01ADMIN |
| QTS-34831 |  | DH 2200 / CRAH #23 | 20d | 2025-11-04 A | 2026-01-23 | QTS-1371 | 65% | 7d | 2025-11-04 | 2025-12-03 | 19d | 0d | 2026-01-23 | OFCI Procurement | Preconstruction | GMP | Chris Perales | Preconstruction | 01ADMIN |
| QTS-34841 |  | DH 2200 / CRAH #24 | 20d | 2025-11-04 A | 2026-01-23 | QTS-1371 | 65% | 7d | 2025-11-04 | 2025-12-03 | 19d | 0d | 2026-01-23 | OFCI Procurement | Preconstruction | GMP | Chris Perales | Preconstruction | 01ADMIN |
| QTS-34851 |  | DH 2200 / CRAH #25 | 20d | 2025-11-04 A | 2026-01-21 | QTS-1371 | 75% | 5d | 2025-11-04 | 2025-12-03 | 21d | 0d | 2026-01-21 | OFCI Procurement | Preconstruction | GMP | Chris Perales | Preconstruction | 01ADMIN |
| QTS-34861 |  | DH 2200 / CRAH #26 | 20d | 2025-11-04 A | 2026-01-21 | QTS-1371 | 75% | 5d | 2025-11-04 | 2025-12-03 | 21d | 0d | 2026-01-21 | OFCI Procurement | Preconstruction | GMP | Chris Perales | Preconstruction | 01ADMIN |
| QTS-34871 |  | DH 2200 / CRAH #27 | 20d | 2025-11-04 A | 2026-01-21 | QTS-1371 | 75% | 5d | 2025-11-04 | 2025-12-03 | 21d | 0d | 2026-01-21 | OFCI Procurement | Preconstruction | GMP | Chris Perales | Preconstruction | 01ADMIN |
| QTS-34881 |  | DH 2200 / CRAH #28 | 20d | 2025-11-04 A | 2026-01-21 | QTS-1371 | 75% | 5d | 2025-11-04 | 2025-12-03 | 21d | 0d | 2026-01-21 | OFCI Procurement | Preconstruction | GMP | Chris Perales | Preconstruction | 01ADMIN |

Notes:
- QTS-35391: allucent_notes: John Capriotti on 2025-08-12 15:08: Chiller received by Belaire/taken out of QAE Yard on 8/12 to set. / allucent_notes: 2025-08-12 15:08 - User: John Capriotti - Date Added: 2025-08-12 15:08 - Note: Chiller received by Belaire/taken out of QAE Yard on 8/12 to set.
- QTS-33741: allucent_notes_20251027_224008: John Capriotti on 2025-10-27 18:10: Set today 10/27 / allucent_notes: 2025-10-27 18:10 - User: John Capriotti - Date Added: 2025-10-27 18:10 - Note: Set today 10/27
- QTS-35841: allucent_notes_20251028_163138: John Capriotti on 2025-10-28 15:10: Received and set on 10/21. / allucent_notes: 2025-10-28 15:10 - User: John Capriotti - Date Added: 2025-10-28 15:10 - Note: Received and set on 10/21.
- QTS-40981: allucent_notes_20251111_182405: John Capriotti on 2025-11-11 12:11: Received on 11/10 / allucent_notes_20251118_192630: John Capriotti on 2025-11-11 12:11: Received on 11/10 / allucent_notes: 2025-11-11 12:11 - User: John Capriotti - Date Added: 2025-11-11 12:11 - Note: Received on 11/10
- QTS-40991: allucent_notes_20251111_182405: John Capriotti on 2025-11-11 12:11: Received on 11/10 / allucent_notes_20251118_192630: John Capriotti on 2025-11-11 12:11: Received on 11/10 / allucent_notes: 2025-11-11 12:11 - User: John Capriotti - Date Added: 2025-11-11 12:11 - Note: Received on 11/10
- QTS-41001: allucent_notes_20251230_164549: John Capriotti on 2025-12-09 12:41: Pending confirmation on timing from Belaire on this. Followed up on 12/9. / Jason Johnston on 2025-12-16 15:17: not yet / John Capriotti on 2025-12-30 10:38: SCRs will be delivered when we are ready to set. The Mfg/Vendor has these located in their yard in Texas, but we are not going to ship all of these to site to store and then mobilize a separate crane and additional trucks to bring to the building. That would be a decent cost and significantly more coordination, with no added benefit. / Ultimately, I, John Capriotti (OFCI), need an update from the Subs/Supers as to when we intend to set them so I can schedule the delivery to support those set dates. / **I will press for updated dates on these, moving out as I work on getting estimated set dates. / allucent_notes_20251209_203830: John Capriotti on 2025-12-09 12:41: Pending confirmation on timing from Belaire on this. Followed up on 12/9. / allucent_notes_20251216_165335: John Capriotti on 2025-12-09 12:41: Pending confirmation on timing from Belaire on this. Followed up on 12/9. / Jason Johnston on 2025-12-16 15:17: not yet / allucent_notes: 2025-12-09 12:41 - User: John Capriotti - Date Added: 2025-12-09 12:41 - Note: Pending confirmation on timing from Belaire on this. Followed up on 12/9. / 2025-12-16 15:17 - User: Jason Johnston - Date Added: 2025-12-16 15:17 - Note: not yet / 2025-12-3
- QTS-41011: allucent_notes_20251111_182405: John Capriotti on 2025-11-11 12:11: Received on 11/10 / allucent_notes_20251118_192630: John Capriotti on 2025-11-11 12:11: Received on 11/10 / allucent_notes: 2025-11-11 12:11 - User: John Capriotti - Date Added: 2025-11-11 12:11 - Note: Received on 11/10
- QTS-34891: allucent_notes_20251230_164549: Jason Johnston on 2025-11-04T22:46:33.898Z: remove actual / John Capriotti on 2025-12-30 10:46: CRAH Units are available in QTS warehouse, but will be delivered when we are going to set them. **I will press for updated dates on these, moving out as I work on getting estimated set dates. / Ultimately, I, John Capriotti (OFCI), need an update from the Subs/Supers as to when we intend to set them so I can schedule the delivery to support those set dates. / allucent_notes_20251104_160200: Jason Johnston on 2025-11-04T22:46:33.898Z: remove actual / allucent_notes_20251202_153722: Jason Johnston on 2025-11-04T22:46:33.898Z: remove actual / allucent_notes_20251209_203830: Jason Johnston on 2025-11-04T22:46:33.898Z: remove actual / allucent_notes_20251216_165335: Jason Johnston on 2025-11-04T22:46:33.898Z: remove actual / allucent_notes: 2025-11-04T22:46:33.898Z - User: Jason Johnston - Date Added: 2025-11-04T22:46:33.898Z - Note: remove actual / 2025-12-30 10:46 - User: John Capriotti - Date Added: 2025-12-30 10:46 - Note: CRAH Units are available in QTS warehouse, but will be delivered
- QTS-34901: allucent_notes_20251230_164549: Jason Johnston on 2025-11-04T22:46:38.773Z: remove actual / John Capriotti on 2025-12-30 10:46: CRAH Units are available in QTS warehouse, but will be delivered when we are going to set them. **I will press for updated dates on these, moving out as I work on getting estimated set dates. / Ultimately, I, John Capriotti (OFCI), need an update from the Subs/Supers as to when we intend to set them so I can schedule the delivery to support those set dates. / allucent_notes_20251104_160200: Jason Johnston on 2025-11-04T22:46:38.773Z: remove actual / allucent_notes_20251202_153722: Jason Johnston on 2025-11-04T22:46:38.773Z: remove actual / allucent_notes_20251209_203830: Jason Johnston on 2025-11-04T22:46:38.773Z: remove actual / allucent_notes_20251216_165335: Jason Johnston on 2025-11-04T22:46:38.773Z: remove actual / allucent_notes: 2025-11-04T22:46:38.773Z - User: Jason Johnston - Date Added: 2025-11-04T22:46:38.773Z - Note: remove actual / 2025-12-30 10:46 - User: John Capriotti - Date Added: 2025-12-30 10:46 - Note: CRAH Units are available in QTS warehouse, but will be delivered
- QTS-34911: allucent_notes_20251230_164549: Jason Johnston on 2025-11-04T22:46:43.813Z: remove actual / John Capriotti on 2025-12-30 10:46: CRAH Units are available in QTS warehouse, but will be delivered when we are going to set them. **I will press for updated dates on these, moving out as I work on getting estimated set dates. / Ultimately, I, John Capriotti (OFCI), need an update from the Subs/Supers as to when we intend to set them so I can schedule the delivery to support those set dates. / allucent_notes_20251104_160200: Jason Johnston on 2025-11-04T22:46:43.813Z: remove actual / allucent_notes_20251202_153722: Jason Johnston on 2025-11-04T22:46:43.813Z: remove actual / allucent_notes_20251209_203830: Jason Johnston on 2025-11-04T22:46:43.813Z: remove actual / allucent_notes_20251216_165335: Jason Johnston on 2025-11-04T22:46:43.813Z: remove actual / allucent_notes: 2025-11-04T22:46:43.813Z - User: Jason Johnston - Date Added: 2025-11-04T22:46:43.813Z - Note: remove actual / 2025-12-30 10:46 - User: John Capriotti - Date Added: 2025-12-30 10:46 - Note: CRAH Units are available in QTS warehouse, but will be delivered
- QTS-34921: allucent_notes_20251230_164549: Jason Johnston on 2025-11-04 15:11: Checking if in warehouse / John Capriotti on 2025-12-30 10:46: CRAH Units are available in QTS warehouse, but will be delivered when we are going to set them. **I will press for updated dates on these, moving out as I work on getting estimated set dates. / Ultimately, I, John Capriotti (OFCI), need an update from the Subs/Supers as to when we intend to set them so I can schedule the delivery to support those set dates. / allucent_notes_20251104_160200: Jason Johnston on 2025-11-04 15:11: Checking if in warehouse / allucent_notes_20251111_182405: Jason Johnston on 2025-11-04 15:11: Checking if in warehouse / allucent_notes_20251118_192630: Jason Johnston on 2025-11-04 15:11: Checking if in warehouse / allucent_notes_20251202_153722: Jason Johnston on 2025-11-04 15:11: Checking if in warehouse / allucent_notes_20251209_203830: Jason Johnston on 2025-11-04 15:11: Checking if in warehouse / allucent_notes_20251216_165335: Jason Johnston on 2025-11-04 15:11: Checking if in warehouse / allucent_notes: 2025-11-04 15:11 - User: Jason Johnston - Date Added: 2025-11-04 15:11 - Note: Checking if in warehouse / 2025-12-30 10:46 - User: John Capriotti - Date Added: 2025-12-30 10:46 - Note: CRAH Units are available in QTS warehouse, but will be delivered when
- QTS-34611: allucent_notes_20251230_164549: John Capriotti on 2025-12-30 10:47: CRAH Units are available in QTS warehouse, but will be delivered when we are going to set them. **I will press for updated dates on these, moving out as I work on getting estimated set dates. / Ultimately, I, John Capriotti (OFCI), need an update from the Subs/Supers as to when we intend to set them so I can schedule the delivery to support those set dates. / allucent_notes: 2025-12-30 10:47 - User: John Capriotti - Date Added: 2025-12-30 10:47 - Note: CRAH Units are available in QTS warehouse, but will be delivered when we are going to set them. **I will press for updated dates on these, moving out as I work on getting estim
- QTS-34621: allucent_notes_20251230_164549: John Capriotti on 2025-12-30 10:47: CRAH Units are available in QTS warehouse, but will be delivered when we are going to set them. **I will press for updated dates on these, moving out as I work on getting estimated set dates. / Ultimately, I, John Capriotti (OFCI), need an update from the Subs/Supers as to when we intend to set them so I can schedule the delivery to support those set dates. / allucent_notes: 2025-12-30 10:47 - User: John Capriotti - Date Added: 2025-12-30 10:47 - Note: CRAH Units are available in QTS warehouse, but will be delivered when we are going to set them. **I will press for updated dates on these, moving out as I work on getting estim
- QTS-34631: allucent_notes_20251230_164549: John Capriotti on 2025-12-30 10:47: CRAH Units are available in QTS warehouse, but will be delivered when we are going to set them. **I will press for updated dates on these, moving out as I work on getting estimated set dates. / Ultimately, I, John Capriotti (OFCI), need an update from the Subs/Supers as to when we intend to set them so I can schedule the delivery to support those set dates. / allucent_notes: 2025-12-30 10:47 - User: John Capriotti - Date Added: 2025-12-30 10:47 - Note: CRAH Units are available in QTS warehouse, but will be delivered when we are going to set them. **I will press for updated dates on these, moving out as I work on getting estim
- QTS-34641: allucent_notes_20251230_164549: John Capriotti on 2025-12-30 10:47: CRAH Units are available in QTS warehouse, but will be delivered when we are going to set them. **I will press for updated dates on these, moving out as I work on getting estimated set dates. / Ultimately, I, John Capriotti (OFCI), need an update from the Subs/Supers as to when we intend to set them so I can schedule the delivery to support those set dates. / allucent_notes: 2025-12-30 10:47 - User: John Capriotti - Date Added: 2025-12-30 10:47 - Note: CRAH Units are available in QTS warehouse, but will be delivered when we are going to set them. **I will press for updated dates on these, moving out as I work on getting estim
- QTS-34651: allucent_notes_20251230_164549: John Capriotti on 2025-12-30 10:47: CRAH Units are available in QTS warehouse, but will be delivered when we are going to set them. **I will press for updated dates on these, moving out as I work on getting estimated set dates. / Ultimately, I, John Capriotti (OFCI), need an update from the Subs/Supers as to when we intend to set them so I can schedule the delivery to support those set dates. / allucent_notes: 2025-12-30 10:47 - User: John Capriotti - Date Added: 2025-12-30 10:47 - Note: CRAH Units are available in QTS warehouse, but will be delivered when we are going to set them. **I will press for updated dates on these, moving out as I work on getting estim
- QTS-34661: allucent_notes_20251230_164549: John Capriotti on 2025-12-30 10:47: CRAH Units are available in QTS warehouse, but will be delivered when we are going to set them. **I will press for updated dates on these, moving out as I work on getting estimated set dates. / Ultimately, I, John Capriotti (OFCI), need an update from the Subs/Supers as to when we intend to set them so I can schedule the delivery to support those set dates. / allucent_notes: 2025-12-30 10:47 - User: John Capriotti - Date Added: 2025-12-30 10:47 - Note: CRAH Units are available in QTS warehouse, but will be delivered when we are going to set them. **I will press for updated dates on these, moving out as I work on getting estim
- QTS-34671: allucent_notes_20251230_164549: John Capriotti on 2025-12-30 10:47: CRAH Units are available in QTS warehouse, but will be delivered when we are going to set them. **I will press for updated dates on these, moving out as I work on getting estimated set dates. / Ultimately, I, John Capriotti (OFCI), need an update from the Subs/Supers as to when we intend to set them so I can schedule the delivery to support those set dates. / allucent_notes: 2025-12-30 10:47 - User: John Capriotti - Date Added: 2025-12-30 10:47 - Note: CRAH Units are available in QTS warehouse, but will be delivered when we are going to set them. **I will press for updated dates on these, moving out as I work on getting estim
- QTS-34681: allucent_notes_20251230_164549: John Capriotti on 2025-12-30 10:47: CRAH Units are available in QTS warehouse, but will be delivered when we are going to set them. **I will press for updated dates on these, moving out as I work on getting estimated set dates. / Ultimately, I, John Capriotti (OFCI), need an update from the Subs/Supers as to when we intend to set them so I can schedule the delivery to support those set dates. / allucent_notes: 2025-12-30 10:47 - User: John Capriotti - Date Added: 2025-12-30 10:47 - Note: CRAH Units are available in QTS warehouse, but will be delivered when we are going to set them. **I will press for updated dates on these, moving out as I work on getting estim
- QTS-34691: allucent_notes_20251230_164549: John Capriotti on 2025-12-30 10:47: CRAH Units are available in QTS warehouse, but will be delivered when we are going to set them. **I will press for updated dates on these, moving out as I work on getting estimated set dates. / Ultimately, I, John Capriotti (OFCI), need an update from the Subs/Supers as to when we intend to set them so I can schedule the delivery to support those set dates. / allucent_notes: 2025-12-30 10:47 - User: John Capriotti - Date Added: 2025-12-30 10:47 - Note: CRAH Units are available in QTS warehouse, but will be delivered when we are going to set them. **I will press for updated dates on these, moving out as I work on getting estim
- QTS-34701: allucent_notes_20251230_164549: John Capriotti on 2025-12-30 10:47: CRAH Units are available in QTS warehouse, but will be delivered when we are going to set them. **I will press for updated dates on these, moving out as I work on getting estimated set dates. / Ultimately, I, John Capriotti (OFCI), need an update from the Subs/Supers as to when we intend to set them so I can schedule the delivery to support those set dates. / allucent_notes: 2025-12-30 10:47 - User: John Capriotti - Date Added: 2025-12-30 10:47 - Note: CRAH Units are available in QTS warehouse, but will be delivered when we are going to set them. **I will press for updated dates on these, moving out as I work on getting estim
- QTS-34711: allucent_notes_20251230_164549: John Capriotti on 2025-12-30 10:47: CRAH Units are available in QTS warehouse, but will be delivered when we are going to set them. **I will press for updated dates on these, moving out as I work on getting estimated set dates. / Ultimately, I, John Capriotti (OFCI), need an update from the Subs/Supers as to when we intend to set them so I can schedule the delivery to support those set dates. / allucent_notes: 2025-12-30 10:47 - User: John Capriotti - Date Added: 2025-12-30 10:47 - Note: CRAH Units are available in QTS warehouse, but will be delivered when we are going to set them. **I will press for updated dates on these, moving out as I work on getting estim
- QTS-34721: allucent_notes_20251230_164549: John Capriotti on 2025-12-30 10:47: CRAH Units are available in QTS warehouse, but will be delivered when we are going to set them. **I will press for updated dates on these, moving out as I work on getting estimated set dates. / Ultimately, I, John Capriotti (OFCI), need an update from the Subs/Supers as to when we intend to set them so I can schedule the delivery to support those set dates. / allucent_notes: 2025-12-30 10:47 - User: John Capriotti - Date Added: 2025-12-30 10:47 - Note: CRAH Units are available in QTS warehouse, but will be delivered when we are going to set them. **I will press for updated dates on these, moving out as I work on getting estim
- QTS-34731: allucent_notes_20251230_164549: John Capriotti on 2025-12-30 10:47: CRAH Units are available in QTS warehouse, but will be delivered when we are going to set them. **I will press for updated dates on these, moving out as I work on getting estimated set dates. / Ultimately, I, John Capriotti (OFCI), need an update from the Subs/Supers as to when we intend to set them so I can schedule the delivery to support those set dates. / allucent_notes: 2025-12-30 10:47 - User: John Capriotti - Date Added: 2025-12-30 10:47 - Note: CRAH Units are available in QTS warehouse, but will be delivered when we are going to set them. **I will press for updated dates on these, moving out as I work on getting estim
- QTS-34741: allucent_notes_20251230_164549: John Capriotti on 2025-12-30 10:47: CRAH Units are available in QTS warehouse, but will be delivered when we are going to set them. **I will press for updated dates on these, moving out as I work on getting estimated set dates. / Ultimately, I, John Capriotti (OFCI), need an update from the Subs/Supers as to when we intend to set them so I can schedule the delivery to support those set dates. / allucent_notes: 2025-12-30 10:47 - User: John Capriotti - Date Added: 2025-12-30 10:47 - Note: CRAH Units are available in QTS warehouse, but will be delivered when we are going to set them. **I will press for updated dates on these, moving out as I work on getting estim
- QTS-23441: allucent_notes_20251230_164549: John Capriotti on 2025-12-30T15:31:11.818Z: Actualizing ROJ: DOAS delivered to QAE yard on 10/2 - technically have it just not delivered to the site from QAE yard until I can confirm set date / allucent_notes: 2025-12-30T15:31:11.818Z - User: John Capriotti - Date Added: 2025-12-30T15:31:11.818Z - Note: Actualizing ROJ: DOAS delivered to QAE yard on 10/2 - technically have it just not delivered to the site from QAE yard until I can confirm set date
- QTS-23451: allucent_notes_20251230_164549: John Capriotti on 2025-12-30T15:31:18.257Z: Actualizing ROJ: DOAS delivered to QAE yard on 10/2 - technically have it just not delivered to the site from QAE yard until I can confirm set date / allucent_notes: 2025-12-30T15:31:18.257Z - User: John Capriotti - Date Added: 2025-12-30T15:31:18.257Z - Note: Actualizing ROJ: DOAS delivered to QAE yard on 10/2 - technically have it just not delivered to the site from QAE yard until I can confirm set date
- QTS-34751: allucent_notes_20251230_164549: John Capriotti on 2025-12-30 10:48: CRAH Units are available in QTS warehouse, but will be delivered when we are going to set them. **I will press for updated dates on these, moving out as I work on getting estimated set dates. / Ultimately, I, John Capriotti (OFCI), need an update from the Subs/Supers as to when we intend to set them so I can schedule the delivery to support those set dates. / allucent_notes: 2025-12-30 10:48 - User: John Capriotti - Date Added: 2025-12-30 10:48 - Note: CRAH Units are available in QTS warehouse, but will be delivered when we are going to set them. **I will press for updated dates on these, moving out as I work on getting estim
- QTS-34761: allucent_notes_20251230_164549: John Capriotti on 2025-12-30 10:48: CRAH Units are available in QTS warehouse, but will be delivered when we are going to set them. **I will press for updated dates on these, moving out as I work on getting estimated set dates. / Ultimately, I, John Capriotti (OFCI), need an update from the Subs/Supers as to when we intend to set them so I can schedule the delivery to support those set dates. / allucent_notes: 2025-12-30 10:48 - User: John Capriotti - Date Added: 2025-12-30 10:48 - Note: CRAH Units are available in QTS warehouse, but will be delivered when we are going to set them. **I will press for updated dates on these, moving out as I work on getting estim
- QTS-34771: allucent_notes_20251230_164549: John Capriotti on 2025-12-30 10:48: CRAH Units are available in QTS warehouse, but will be delivered when we are going to set them. **I will press for updated dates on these, moving out as I work on getting estimated set dates. / Ultimately, I, John Capriotti (OFCI), need an update from the Subs/Supers as to when we intend to set them so I can schedule the delivery to support those set dates. / allucent_notes: 2025-12-30 10:48 - User: John Capriotti - Date Added: 2025-12-30 10:48 - Note: CRAH Units are available in QTS warehouse, but will be delivered when we are going to set them. **I will press for updated dates on these, moving out as I work on getting estim
- QTS-34781: allucent_notes_20251230_164549: John Capriotti on 2025-12-30 10:48: CRAH Units are available in QTS warehouse, but will be delivered when we are going to set them. **I will press for updated dates on these, moving out as I work on getting estimated set dates. / Ultimately, I, John Capriotti (OFCI), need an update from the Subs/Supers as to when we intend to set them so I can schedule the delivery to support those set dates. / allucent_notes: 2025-12-30 10:48 - User: John Capriotti - Date Added: 2025-12-30 10:48 - Note: CRAH Units are available in QTS warehouse, but will be delivered when we are going to set them. **I will press for updated dates on these, moving out as I work on getting estim
- QTS-34791: allucent_notes_20251230_164549: John Capriotti on 2025-12-30 10:48: CRAH Units are available in QTS warehouse, but will be delivered when we are going to set them. **I will press for updated dates on these, moving out as I work on getting estimated set dates. / Ultimately, I, John Capriotti (OFCI), need an update from the Subs/Supers as to when we intend to set them so I can schedule the delivery to support those set dates. / allucent_notes: 2025-12-30 10:48 - User: John Capriotti - Date Added: 2025-12-30 10:48 - Note: CRAH Units are available in QTS warehouse, but will be delivered when we are going to set them. **I will press for updated dates on these, moving out as I work on getting estim
- QTS-34801: allucent_notes_20251230_164549: John Capriotti on 2025-12-30 10:48: CRAH Units are available in QTS warehouse, but will be delivered when we are going to set them. **I will press for updated dates on these, moving out as I work on getting estimated set dates. / Ultimately, I, John Capriotti (OFCI), need an update from the Subs/Supers as to when we intend to set them so I can schedule the delivery to support those set dates. / allucent_notes: 2025-12-30 10:48 - User: John Capriotti - Date Added: 2025-12-30 10:48 - Note: CRAH Units are available in QTS warehouse, but will be delivered when we are going to set them. **I will press for updated dates on these, moving out as I work on getting estim
- QTS-34811: allucent_notes_20251230_164549: John Capriotti on 2025-12-30 10:48: CRAH Units are available in QTS warehouse, but will be delivered when we are going to set them. **I will press for updated dates on these, moving out as I work on getting estimated set dates. / Ultimately, I, John Capriotti (OFCI), need an update from the Subs/Supers as to when we intend to set them so I can schedule the delivery to support those set dates. / allucent_notes: 2025-12-30 10:48 - User: John Capriotti - Date Added: 2025-12-30 10:48 - Note: CRAH Units are available in QTS warehouse, but will be delivered when we are going to set them. **I will press for updated dates on these, moving out as I work on getting estim
- QTS-34821: allucent_notes_20251230_164549: John Capriotti on 2025-12-30 10:48: CRAH Units are available in QTS warehouse, but will be delivered when we are going to set them. **I will press for updated dates on these, moving out as I work on getting estimated set dates. / Ultimately, I, John Capriotti (OFCI), need an update from the Subs/Supers as to when we intend to set them so I can schedule the delivery to support those set dates. / allucent_notes: 2025-12-30 10:48 - User: John Capriotti - Date Added: 2025-12-30 10:48 - Note: CRAH Units are available in QTS warehouse, but will be delivered when we are going to set them. **I will press for updated dates on these, moving out as I work on getting estim
- QTS-34831: allucent_notes_20251230_164549: John Capriotti on 2025-12-30 10:48: CRAH Units are available in QTS warehouse, but will be delivered when we are going to set them. **I will press for updated dates on these, moving out as I work on getting estimated set dates. / Ultimately, I, John Capriotti (OFCI), need an update from the Subs/Supers as to when we intend to set them so I can schedule the delivery to support those set dates. / allucent_notes: 2025-12-30 10:48 - User: John Capriotti - Date Added: 2025-12-30 10:48 - Note: CRAH Units are available in QTS warehouse, but will be delivered when we are going to set them. **I will press for updated dates on these, moving out as I work on getting estim
- QTS-34841: allucent_notes_20251230_164549: John Capriotti on 2025-12-30 10:48: CRAH Units are available in QTS warehouse, but will be delivered when we are going to set them. **I will press for updated dates on these, moving out as I work on getting estimated set dates. / Ultimately, I, John Capriotti (OFCI), need an update from the Subs/Supers as to when we intend to set them so I can schedule the delivery to support those set dates. / allucent_notes: 2025-12-30 10:48 - User: John Capriotti - Date Added: 2025-12-30 10:48 - Note: CRAH Units are available in QTS warehouse, but will be delivered when we are going to set them. **I will press for updated dates on these, moving out as I work on getting estim
- QTS-34851: allucent_notes_20251230_164549: John Capriotti on 2025-12-30 10:48: CRAH Units are available in QTS warehouse, but will be delivered when we are going to set them. **I will press for updated dates on these, moving out as I work on getting estimated set dates. / Ultimately, I, John Capriotti (OFCI), need an update from the Subs/Supers as to when we intend to set them so I can schedule the delivery to support those set dates. / allucent_notes: 2025-12-30 10:48 - User: John Capriotti - Date Added: 2025-12-30 10:48 - Note: CRAH Units are available in QTS warehouse, but will be delivered when we are going to set them. **I will press for updated dates on these, moving out as I work on getting estim
- QTS-34861: allucent_notes_20251230_164549: John Capriotti on 2025-12-30 10:48: CRAH Units are available in QTS warehouse, but will be delivered when we are going to set them. **I will press for updated dates on these, moving out as I work on getting estimated set dates. / Ultimately, I, John Capriotti (OFCI), need an update from the Subs/Supers as to when we intend to set them so I can schedule the delivery to support those set dates. / allucent_notes: 2025-12-30 10:48 - User: John Capriotti - Date Added: 2025-12-30 10:48 - Note: CRAH Units are available in QTS warehouse, but will be delivered when we are going to set them. **I will press for updated dates on these, moving out as I work on getting estim
- QTS-34871: allucent_notes_20251230_164549: John Capriotti on 2025-12-30 10:48: CRAH Units are available in QTS warehouse, but will be delivered when we are going to set them. **I will press for updated dates on these, moving out as I work on getting estimated set dates. / Ultimately, I, John Capriotti (OFCI), need an update from the Subs/Supers as to when we intend to set them so I can schedule the delivery to support those set dates. / allucent_notes: 2025-12-30 10:48 - User: John Capriotti - Date Added: 2025-12-30 10:48 - Note: CRAH Units are available in QTS warehouse, but will be delivered when we are going to set them. **I will press for updated dates on these, moving out as I work on getting estim
- QTS-34881: allucent_notes_20251230_164549: John Capriotti on 2025-12-30 10:48: CRAH Units are available in QTS warehouse, but will be delivered when we are going to set them. **I will press for updated dates on these, moving out as I work on getting estimated set dates. / Ultimately, I, John Capriotti (OFCI), need an update from the Subs/Supers as to when we intend to set them so I can schedule the delivery to support those set dates. / allucent_notes: 2025-12-30 10:48 - User: John Capriotti - Date Added: 2025-12-30 10:48 - Note: CRAH Units are available in QTS warehouse, but will be delivered when we are going to set them. **I will press for updated dates on these, moving out as I work on getting estim

| ID | WBS | Activity | Duration | Start | Finish | Predecessors | Complete | Remaining | Planned start | Planned finish | Total float | Free float | Expected finish | Precon Phase | Project Section-1 | Baseline | Layton Responsible Party | Project Section | Allucent CSI Group |
| --- | --- | --- | --- | --- | --- | --- | --- | --- | --- | --- | --- | --- | --- | --- | --- | --- | --- | --- | --- |
|  | 1 | **A22 Lineup** |  | 2025-08-07 | 2026-02-11 |  |  |  |  |  |  |  |  |  |  |  |  |  |  |
| QTS-35401 |  | DH 2200 / A22 Lineup // Chiller #1RT40-A22 | 20d | 2025-08-07 A | 2025-08-08 A | QTS-1371 | 100% |  | 2025-08-07 | 2025-09-04 |  |  |  | OFCI Procurement | Preconstruction | GMP | Chris Perales | Preconstruction | 01ADMIN |
| QTS-33231 |  | DH 2200 / A22 Lineup // Skid #A22 | 20d | 2025-10-27 A | 2025-12-11 A | QTS-1371 | 100% |  | 2025-10-27 | 2025-11-21 |  |  |  | OFCI Procurement | Preconstruction | GMP | Chris Perales | Preconstruction | 01ADMIN |
| QTS-31321 |  | DH 2200 / A22 Lineup // 225A MOD #A22-02 (Liquid to Chip Support) | 20d | 2025-11-04 A | 2025-12-03 A | QTS-1371 | 100% |  |  |  |  |  |  | OFCI Procurement | Preconstruction | GMP | Chris Perales | Preconstruction | 01ADMIN |
| QTS-31561 |  | DH 2200 / A22 Lineup // 600A MOD #A22-03 (CRAH Support) | 20d | 2025-11-04 A | 2025-12-03 A | QTS-1371 | 100% |  |  |  |  |  |  | OFCI Procurement | Preconstruction | GMP | Chris Perales | Preconstruction | 01ADMIN |
| QTS-35921 |  | DH 2200 / A22 Lineup // 2500KVA Padmount XFMR #A22 | 20d | 2025-11-21 A | 2025-11-21 A | QTS-1371 | 100% |  | 2025-11-21 | 2025-12-22 |  |  |  | OFCI Procurement | Preconstruction | GMP | Chris Perales | Preconstruction | 01ADMIN |
| QTS-40221 |  | DH 2200 / A22 Lineup // Assembly - Tank #GEN-A22 | 12d | 2025-12-03 A | 2025-12-09 A | QTS-1371 | 100% |  | 2025-12-15 | 2026-01-06 |  |  |  | OFCI Procurement | Preconstruction |  | Chris Perales | Preconstruction | 01ADMIN |
| QTS-40231 |  | DH 2200 / A22 Lineup // Assembly - Engine #GEN-A22 | 20d | 2025-12-03 A | 2025-12-11 A | QTS-1371 | 100% |  | 2025-12-03 | 2026-01-06 |  |  |  | OFCI Procurement | Preconstruction |  | Chris Perales | Preconstruction | 01ADMIN |
| QTS-40241 |  | DH 2200 / A22 Lineup // Assembly - SCR #GEN-A22 | 20d | 2025-12-03 A | 2026-02-11 | QTS-1371 |  | 20d | 2025-12-03 | 2026-01-06 | 27d | 0d | 2026-02-11 | OFCI Procurement | Preconstruction |  | Chris Perales | Preconstruction | 01ADMIN |
| QTS-40251 |  | DH 2200 / A22 Lineup // Assembly - Housing #GEN-A22 | 20d | 2025-12-03 A | 2025-12-12 A | QTS-1371 | 100% |  | 2025-12-03 | 2026-01-06 |  |  |  | OFCI Procurement | Preconstruction |  | Chris Perales | Preconstruction | 01ADMIN |
|  | 2 | **B22 Lineup** |  | 2025-08-07 | 2026-02-11 |  |  |  |  |  |  |  |  |  |  |  |  |  |  |
| QTS-35411 |  | DH 2200 / B22 Lineup // Chiller #1RT40-B22 | 4d | 2025-08-07 A | 2025-08-08 A | QTS-1371 | 100% |  | 2025-08-07 | 2025-08-12 |  |  |  | OFCI Procurement | Preconstruction | GMP | Chris Perales | Preconstruction | 01ADMIN |
| QTS-33271 |  | DH 2200 / B22 Lineup // Skid #B22 | 20d | 2025-10-31 A | 2025-12-11 A | QTS-1371 | 100% |  | 2025-10-31 | 2025-12-01 |  |  |  | OFCI Procurement | Preconstruction | GMP | Chris Perales | Preconstruction | 01ADMIN |
| QTS-31331 |  | DH 2200 / B22 Lineup // 225A MOD #B22-02 (Liquid to Chip Support) | 20d | 2025-11-04 A | 2025-12-03 A | QTS-1371 | 100% |  |  |  |  |  |  | OFCI Procurement | Preconstruction | GMP | Chris Perales | Preconstruction | 01ADMIN |
| QTS-31571 |  | DH 2200 / B22 Lineup // 600A MOD #B22-03 (CRAH Support) | 20d | 2025-11-04 A | 2025-12-03 A | QTS-1371 | 100% |  |  |  |  |  |  | OFCI Procurement | Preconstruction | GMP | Chris Perales | Preconstruction | 01ADMIN |
| QTS-35931 |  | DH 2200 / B22 Lineup // 2500KVA Padmount XFMR #B22 | 20d | 2025-11-21 A | 2025-11-21 A | QTS-1371 | 100% |  | 2025-11-21 | 2025-12-22 |  |  |  | OFCI Procurement | Preconstruction | GMP | Chris Perales | Preconstruction | 01ADMIN |
| QTS-40081 |  | DH 2200 / B22 Lineup // Assembly - SCR #GEN-B22 | 20d | 2025-12-03 A | 2026-02-11 | QTS-1371 |  | 20d | 2025-12-03 | 2026-01-06 | 27d | 0d | 2026-02-11 | OFCI Procurement | Preconstruction |  | Chris Perales | Preconstruction | 01ADMIN |
| QTS-40061 |  | DH 2200 / B22 Lineup // Assembly - Tank #GEN-B22 | 20d | 2025-12-04 A | 2025-12-09 A | QTS-1371 | 100% |  | 2025-12-04 | 2026-01-07 |  |  |  | OFCI Procurement | Preconstruction |  | Chris Perales | Preconstruction | 01ADMIN |
| QTS-40071 |  | DH 2200 / B22 Lineup // Assembly - Engine #GEN-B22 | 20d | 2025-12-04 A | 2025-12-11 A | QTS-1371 | 100% |  | 2025-12-04 | 2026-01-07 |  |  |  | OFCI Procurement | Preconstruction |  | Chris Perales | Preconstruction | 01ADMIN |
| QTS-40091 |  | DH 2200 / B22 Lineup // Assembly - Housing #GEN-B22 | 20d | 2025-12-04 A | 2025-12-12 A | QTS-1371 | 100% |  | 2025-12-04 | 2026-01-07 |  |  |  | OFCI Procurement | Preconstruction |  | Chris Perales | Preconstruction | 01ADMIN |
|  | 3 | **C22 Lineup** |  | 2025-08-07 | 2026-02-11 |  |  |  |  |  |  |  |  |  |  |  |  |  |  |
| QTS-35421 |  | DH 2200 / C22 Lineup // Chiller #1RT40-C22 | 20d | 2025-08-07 A | 2025-08-08 A | QTS-1371 | 100% |  | 2025-08-07 | 2025-09-04 |  |  |  | OFCI Procurement | Preconstruction | GMP | Chris Perales | Preconstruction | 01ADMIN |
| QTS-31341 |  | DH 2200 / C22 Lineup // 225A MOD #C22-02 (Liquid to Chip Support) | 20d | 2025-11-04 A | 2025-12-03 A | QTS-1371 | 100% |  |  |  |  |  |  | OFCI Procurement | Preconstruction | GMP | Chris Perales | Preconstruction | 01ADMIN |
| QTS-31581 |  | DH 2200 / C22 Lineup // 600A MOD #C22-03 (CRAH Support) | 20d | 2025-11-04 A | 2025-12-03 A | QTS-1371 | 100% |  |  |  |  |  |  | OFCI Procurement | Preconstruction | GMP | Chris Perales | Preconstruction | 01ADMIN |
| QTS-33311 |  | DH 2200 / C22 Lineup // Skid #C22 | 20d | 2025-11-10 A | 2025-12-11 A | QTS-1371 | 100% |  | 2025-11-10 | 2025-12-09 |  |  |  | OFCI Procurement | Preconstruction | GMP | Chris Perales | Preconstruction | 01ADMIN |
| QTS-35941 |  | DH 2200 / C22 Lineup // 2500KVA Padmount XFMR #C22 | 20d | 2025-11-21 A | 2025-11-21 A | QTS-1371 | 100% |  | 2025-11-21 | 2025-12-22 |  |  |  | OFCI Procurement | Preconstruction | GMP | Chris Perales | Preconstruction | 01ADMIN |
| QTS-39901 |  | DH 2200 / C22 Lineup // Assembly - Tank #GEN-C22 | 20d | 2025-12-02 A | 2025-12-09 A | QTS-1371 | 100% |  | 2025-12-02 | 2026-01-05 |  |  |  | OFCI Procurement | Preconstruction |  | Chris Perales | Preconstruction | 01ADMIN |
| QTS-39911 |  | DH 2200 / C22 Lineup // Assembly - Engine #GEN-C22 | 20d | 2025-12-02 A | 2025-12-11 A | QTS-1371 | 100% |  | 2025-12-02 | 2026-01-05 |  |  |  | OFCI Procurement | Preconstruction |  | Chris Perales | Preconstruction | 01ADMIN |
| QTS-39921 |  | DH 2200 / C22 Lineup // Assembly - SCR #GEN-C22 | 20d | 2025-12-02 A | 2026-02-11 | QTS-1371 |  | 20d | 2025-12-02 | 2026-01-05 | 27d | 0d | 2026-02-11 | OFCI Procurement | Preconstruction |  | Chris Perales | Preconstruction | 01ADMIN |
| QTS-39931 |  | DH 2200 / C22 Lineup // Assembly - Housing #GEN-C22 | 20d | 2025-12-02 A | 2025-12-12 A | QTS-1371 | 100% |  | 2025-12-02 | 2026-01-05 |  |  |  | OFCI Procurement | Preconstruction |  | Chris Perales | Preconstruction | 01ADMIN |

Notes:
- QTS-35401: allucent_notes: John Capriotti on 2025-08-12 16:08: Chiller received from QAE yard and set on / 8/12/2025.
- QTS-35921: allucent_notes_20251202_153722: John Capriotti on 2025-12-02 12:24: Received and Set on 11/21 / allucent_notes: 2025-12-02 12:24 - User: John Capriotti - Date Added: 2025-12-02 12:24 - Note: Received and Set on 11/21
- QTS-40221: allucent_notes_20251202_153722: John Capriotti on 2025-12-02 12:41: Requesting delivery 12/8/ Moved in due to PODs deliveries being pushed out. Will essentially set GENs first. / allucent_notes_20251209_203830: John Capriotti on 2025-12-02 12:41: Requesting delivery 12/8/ Moved in due to PODs deliveries being pushed out. Will essentially set GENs first. / allucent_notes_20251216_165335: John Capriotti on 2025-12-02 12:41: Requesting delivery 12/8/ Moved in due to PODs deliveries being pushed out. Will essentially set GENs first. / allucent_notes: 2025-12-02 12:41 - User: John Capriotti - Date Added: 2025-12-02 12:41 - Note: Requesting delivery 12/8/ Moved in due to PODs deliveries being pushed out. Will essentially set GENs first.
- QTS-40241: allucent_notes_20251230_164549: John Capriotti on 2025-12-30 10:41: SCRs will be delivered when we are ready to set. The Mfg/Vendor has these located in their yard in Texas, but we are not going to ship all of these to site to store and then mobilize a separate crane and additional trucks to bring to the building. That would be a decent cost and significantly more coordination, with no added benefit. / Ultimately, I, John Capriotti (OFCI), need an update from the Subs/Supers as to when we intend to set them so I can schedule the delivery to support those set dates. / **I will press for updated dates on these, moving out as I work on getting estimated set dates. / allucent_notes: 2025-12-30 10:41 - User: John Capriotti - Date Added: 2025-12-30 10:41 - Note: SCRs will be delivered when we are ready to set. The Mfg/Vendor has these located in their yard in Texas, but we are not going to ship all of these to site to store and then mo
- QTS-35411: allucent_notes: John Capriotti on 2025-08-12 15:08: Chiller received by Belaire/taken out of QAE Yard on 8/12 to set. / allucent_notes: 2025-08-12 15:08 - User: John Capriotti - Date Added: 2025-08-12 15:08 - Note: Chiller received by Belaire/taken out of QAE Yard on 8/12 to set.
- QTS-35931: allucent_notes_20251202_153722: John Capriotti on 2025-12-02 12:25: Received and Set on 11/21 / allucent_notes: 2025-12-02 12:25 - User: John Capriotti - Date Added: 2025-12-02 12:25 - Note: Received and Set on 11/21
- QTS-40081: allucent_notes_20251230_164549: John Capriotti on 2025-12-30 10:41: SCRs will be delivered when we are ready to set. The Mfg/Vendor has these located in their yard in Texas, but we are not going to ship all of these to site to store and then mobilize a separate crane and additional trucks to bring to the building. That would be a decent cost and significantly more coordination, with no added benefit. / Ultimately, I, John Capriotti (OFCI), need an update from the Subs/Supers as to when we intend to set them so I can schedule the delivery to support those set dates. / **I will press for updated dates on these, moving out as I work on getting estimated set dates. / allucent_notes: 2025-12-30 10:41 - User: John Capriotti - Date Added: 2025-12-30 10:41 - Note: SCRs will be delivered when we are ready to set. The Mfg/Vendor has these located in their yard in Texas, but we are not going to ship all of these to site to store and then mo
- QTS-35941: allucent_notes_20251202_153722: John Capriotti on 2025-12-02 12:25: Received and Set on 11/21 / allucent_notes: 2025-12-02 12:25 - User: John Capriotti - Date Added: 2025-12-02 12:25 - Note: Received and Set on 11/21
- QTS-39921: allucent_notes_20251230_164549: John Capriotti on 2025-12-30 10:41: SCRs will be delivered when we are ready to set. The Mfg/Vendor has these located in their yard in Texas, but we are not going to ship all of these to site to store and then mobilize a separate crane and additional trucks to bring to the building. That would be a decent cost and significantly more coordination, with no added benefit. / Ultimately, I, John Capriotti (OFCI), need an update from the Subs/Supers as to when we intend to set them so I can schedule the delivery to support those set dates. / **I will press for updated dates on these, moving out as I work on getting estimated set dates. / allucent_notes: 2025-12-30 10:41 - User: John Capriotti - Date Added: 2025-12-30 10:41 - Note: SCRs will be delivered when we are ready to set. The Mfg/Vendor has these located in their yard in Texas, but we are not going to ship all of these to site to store and then mo

| ID | WBS | Activity | Duration | Start | Finish | Predecessors | Complete | Remaining | Planned start | Planned finish | Total float | Free float | Expected finish | Precon Phase | Project Section-1 | Baseline | Layton Responsible Party | Project Section | Allucent CSI Group |
| --- | --- | --- | --- | --- | --- | --- | --- | --- | --- | --- | --- | --- | --- | --- | --- | --- | --- | --- | --- |
|  | 4 | **D22 Lineup** |  | 2025-08-07 | 2026-02-11 |  |  |  |  |  |  |  |  |  |  |  |  |  |  |
| QTS-35431 |  | DH 2200 / D22 Lineup // Chiller #1RT40-D22 | 20d | 2025-08-07 A | 2025-08-08 A | QTS-1371 | 100% |  | 2025-08-07 | 2025-09-04 |  |  |  | OFCI Procurement | Preconstruction | GMP | Chris Perales | Preconstruction | 01ADMIN |
| QTS-31351 |  | DH 2200 / D22 Lineup // 225A MOD #D22-02 (Liquid to Chip Support) | 20d | 2025-11-04 A | 2025-12-03 A | QTS-1371 | 100% |  |  |  |  |  |  | OFCI Procurement | Preconstruction | GMP | Chris Perales | Preconstruction | 01ADMIN |
| QTS-31591 |  | DH 2200 / D22 Lineup // 600A MOD #D22-03 (CRAH Support) | 20d | 2025-11-04 A | 2025-12-03 A | QTS-1371 | 100% |  |  |  |  |  |  | OFCI Procurement | Preconstruction | GMP | Chris Perales | Preconstruction | 01ADMIN |
| QTS-33351 |  | DH 2200 / D22 Lineup // Skid #D22 | 20d | 2025-11-14 A | 2025-12-18 A | QTS-1371 | 100% |  | 2025-11-14 | 2025-12-15 |  |  |  | OFCI Procurement | Preconstruction | GMP | Chris Perales | Preconstruction | 01ADMIN |
| QTS-35951 |  | DH 2200 / D22 Lineup // 2500KVA Padmount XFMR #D22 | 20d | 2025-11-21 A | 2025-11-21 A | QTS-1371 | 100% |  | 2025-11-21 | 2025-12-22 |  |  |  | OFCI Procurement | Preconstruction | GMP | Chris Perales | Preconstruction | 01ADMIN |
| QTS-40441 |  | DH 2200 / D22 Lineup // Assembly - SCR #GEN-D22 | 20d | 2025-12-03 A | 2026-02-11 | QTS-1371 |  | 20d | 2025-12-03 | 2026-01-06 | 27d | 0d | 2026-02-11 | OFCI Procurement | Preconstruction |  | Chris Perales | Preconstruction | 01ADMIN |
| QTS-40421 |  | DH 2200 / D22 Lineup // Assembly - Tank #GEN-D22 | 20d | 2025-12-08 A | 2025-12-15 A | QTS-1371 | 100% |  | 2025-12-08 | 2026-01-09 |  |  |  | OFCI Procurement | Preconstruction |  | Chris Perales | Preconstruction | 01ADMIN |
| QTS-40431 |  | DH 2200 / D22 Lineup // Assembly - Engine #GEN-D22 | 20d | 2025-12-08 A | 2025-12-16 A | QTS-1371 | 100% |  | 2025-12-08 | 2026-01-09 |  |  |  | OFCI Procurement | Preconstruction |  | Chris Perales | Preconstruction | 01ADMIN |
| QTS-40451 |  | DH 2200 / D22 Lineup // Assembly - Housing #GEN-D22 | 20d | 2025-12-08 A | 2025-12-18 A | QTS-1371 | 100% |  | 2025-12-08 | 2026-01-09 |  |  |  | OFCI Procurement | Preconstruction |  | Chris Perales | Preconstruction | 01ADMIN |
|  | 5 | **E22 Lineup** |  | 2025-08-07 | 2026-02-11 |  |  |  |  |  |  |  |  |  |  |  |  |  |  |
| QTS-35441 |  | DH 2200 / E22 Lineup // Chiller #1RT40-E22 | 20d | 2025-08-07 A | 2025-08-08 A | QTS-1371 | 100% |  | 2025-08-07 | 2025-09-04 |  |  |  | OFCI Procurement | Preconstruction | GMP | Chris Perales | Preconstruction | 01ADMIN |
| QTS-31361 |  | DH 2200 / E22 Lineup // 225A MOD #E22-02 (Liquid to Chip Support) | 20d | 2025-11-04 A | 2025-12-03 A | QTS-1371 | 100% |  |  |  |  |  |  | OFCI Procurement | Preconstruction | GMP | Chris Perales | Preconstruction | 01ADMIN |
| QTS-31601 |  | DH 2200 / E22 Lineup // 600A MOD #E22-03 (CRAH Support) | 20d | 2025-11-04 A | 2025-12-03 A | QTS-1371 | 100% |  |  |  |  |  |  | OFCI Procurement | Preconstruction | GMP | Chris Perales | Preconstruction | 01ADMIN |
| QTS-35961 |  | DH 2200 / E22 Lineup // 2500KVA Padmount XFMR #E22 | 20d | 2025-11-21 A | 2025-11-21 A | QTS-1371 | 100% |  | 2025-11-21 | 2025-12-22 |  |  |  | OFCI Procurement | Preconstruction | GMP | Chris Perales | Preconstruction | 01ADMIN |
| QTS-40641 |  | DH 2200 / E22 Lineup // Assembly - SCR #GEN-E22 | 20d | 2025-12-03 A | 2026-02-11 | QTS-1371 |  | 20d | 2025-12-03 | 2026-01-06 | 27d | 0d | 2026-02-11 | OFCI Procurement | Preconstruction |  | Chris Perales | Preconstruction | 01ADMIN |
| QTS-40621 |  | DH 2200 / E22 Lineup // Assembly - Tank #GEN-E22 | 20d | 2025-12-09 A | 2025-12-15 A | QTS-1371 | 100% |  | 2025-12-09 | 2026-01-12 |  |  |  | OFCI Procurement | Preconstruction |  | Chris Perales | Preconstruction | 01ADMIN |
| QTS-40631 |  | DH 2200 / E22 Lineup // Assembly - Engine #GEN-E22 | 20d | 2025-12-09 A | 2025-12-16 A | QTS-1371 | 100% |  | 2025-12-09 | 2026-01-12 |  |  |  | OFCI Procurement | Preconstruction |  | Chris Perales | Preconstruction | 01ADMIN |
| QTS-40651 |  | DH 2200 / E22 Lineup // Assembly - Housing #GEN-E22 | 20d | 2025-12-09 A | 2025-12-18 A | QTS-1371 | 100% |  | 2025-12-09 | 2026-01-12 |  |  |  | OFCI Procurement | Preconstruction |  | Chris Perales | Preconstruction | 01ADMIN |
| QTS-33391 |  | DH 2200 / E22 Lineup // Skid #E22 | 20d | 2026-01-14 A | 2026-01-14 A | QTS-1371 | 100% |  | 2026-01-14 | 2026-02-11 |  |  |  | OFCI Procurement | Preconstruction | GMP | Chris Perales | Preconstruction | 01ADMIN |
|  | 6 | **F22 Lineup** |  | 2025-08-07 | 2026-02-11 |  |  |  |  |  |  |  |  |  |  |  |  |  |  |
| QTS-35451 |  | DH 2200 / F22 Lineup // Chiller #1RT40-F22 | 20d | 2025-08-07 A | 2025-08-08 A | QTS-1371 | 100% |  | 2025-08-07 | 2025-09-04 |  |  |  | OFCI Procurement | Preconstruction | GMP | Chris Perales | Preconstruction | 01ADMIN |
| QTS-31371 |  | DH 2200 / F22 Lineup // 225A MOD #F22-02 (Liquid to Chip Support) | 20d | 2025-11-04 A | 2025-12-03 A | QTS-1371 | 100% |  |  |  |  |  |  | OFCI Procurement | Preconstruction | GMP | Chris Perales | Preconstruction | 01ADMIN |
| QTS-31611 |  | DH 2200 / F22 Lineup // 600A MOD #F22-03 (CRAH Support) | 20d | 2025-11-04 A | 2025-12-03 A | QTS-1371 | 100% |  |  |  |  |  |  | OFCI Procurement | Preconstruction | GMP | Chris Perales | Preconstruction | 01ADMIN |
| QTS-35971 |  | DH 2200 / F22 Lineup // 2500KVA Padmount XFMR #F22 | 20d | 2025-11-21 A | 2025-11-21 A | QTS-1371 | 100% |  | 2025-11-21 | 2025-12-22 |  |  |  | OFCI Procurement | Preconstruction | GMP | Chris Perales | Preconstruction | 01ADMIN |
| QTS-40841 |  | DH 2200 / F22 Lineup // Assembly - SCR #GEN-F22 | 20d | 2025-12-03 A | 2026-02-11 | QTS-1371 |  | 20d | 2025-12-03 | 2026-01-06 | 27d | 0d | 2026-02-11 | OFCI Procurement | Preconstruction |  | Chris Perales | Preconstruction | 01ADMIN |
| QTS-40821 |  | DH 2200 / F22 Lineup // Assembly - Tank #GEN-F22 | 20d | 2025-12-10 A | 2025-12-15 A | QTS-1371 | 100% |  | 2025-12-10 | 2026-01-13 |  |  |  | OFCI Procurement | Preconstruction |  | Chris Perales | Preconstruction | 01ADMIN |
| QTS-40831 |  | DH 2200 / F22 Lineup // Assembly - Engine #GEN-F22 | 20d | 2025-12-10 A | 2025-12-16 A | QTS-1371 | 100% |  | 2025-12-10 | 2026-01-13 |  |  |  | OFCI Procurement | Preconstruction |  | Chris Perales | Preconstruction | 01ADMIN |
| QTS-40851 |  | DH 2200 / F22 Lineup // Assembly - Housing #GEN-F22 | 20d | 2025-12-10 A | 2025-12-18 A | QTS-1371 | 100% |  | 2025-12-10 | 2026-01-13 |  |  |  | OFCI Procurement | Preconstruction |  | Chris Perales | Preconstruction | 01ADMIN |
| QTS-33431 |  | DH 2200 / F22 Lineup // Skid #F22 | 20d | 2026-01-14 A | 2026-01-14 A | QTS-1371 | 100% |  | 2026-01-30 | 2026-02-26 |  |  |  | OFCI Procurement | Preconstruction | GMP | Chris Perales | Preconstruction | 01ADMIN |

Notes:
- QTS-35951: allucent_notes_20251202_153722: John Capriotti on 2025-12-02 12:25: Received and Set on 11/21 / allucent_notes: 2025-12-02 12:25 - User: John Capriotti - Date Added: 2025-12-02 12:25 - Note: Received and Set on 11/21
- QTS-40441: allucent_notes_20251230_164549: John Capriotti on 2025-12-30 10:41: SCRs will be delivered when we are ready to set. The Mfg/Vendor has these located in their yard in Texas, but we are not going to ship all of these to site to store and then mobilize a separate crane and additional trucks to bring to the building. That would be a decent cost and significantly more coordination, with no added benefit. / Ultimately, I, John Capriotti (OFCI), need an update from the Subs/Supers as to when we intend to set them so I can schedule the delivery to support those set dates. / **I will press for updated dates on these, moving out as I work on getting estimated set dates. / allucent_notes: 2025-12-30 10:41 - User: John Capriotti - Date Added: 2025-12-30 10:41 - Note: SCRs will be delivered when we are ready to set. The Mfg/Vendor has these located in their yard in Texas, but we are not going to ship all of these to site to store and then mo
- QTS-35961: allucent_notes_20251202_153722: John Capriotti on 2025-12-02 12:25: Received and Set on 11/21 / allucent_notes: 2025-12-02 12:25 - User: John Capriotti - Date Added: 2025-12-02 12:25 - Note: Received and Set on 11/21
- QTS-40641: allucent_notes_20251230_164549: John Capriotti on 2025-12-30 10:42: SCRs will be delivered when we are ready to set. The Mfg/Vendor has these located in their yard in Texas, but we are not going to ship all of these to site to store and then mobilize a separate crane and additional trucks to bring to the building. That would be a decent cost and significantly more coordination, with no added benefit. / Ultimately, I, John Capriotti (OFCI), need an update from the Subs/Supers as to when we intend to set them so I can schedule the delivery to support those set dates. / **I will press for updated dates on these, moving out as I work on getting estimated set dates. / allucent_notes: 2025-12-30 10:42 - User: John Capriotti - Date Added: 2025-12-30 10:42 - Note: SCRs will be delivered when we are ready to set. The Mfg/Vendor has these located in their yard in Texas, but we are not going to ship all of these to site to store and then mo
- QTS-35971: allucent_notes_20251202_153722: John Capriotti on 2025-12-02 12:26: Received and Set on 11/22 / allucent_notes: 2025-12-02 12:26 - User: John Capriotti - Date Added: 2025-12-02 12:26 - Note: Received and Set on 11/22
- QTS-40841: allucent_notes_20251230_164549: John Capriotti on 2025-12-30 10:42: SCRs will be delivered when we are ready to set. The Mfg/Vendor has these located in their yard in Texas, but we are not going to ship all of these to site to store and then mobilize a separate crane and additional trucks to bring to the building. That would be a decent cost and significantly more coordination, with no added benefit. / Ultimately, I, John Capriotti (OFCI), need an update from the Subs/Supers as to when we intend to set them so I can schedule the delivery to support those set dates. / **I will press for updated dates on these, moving out as I work on getting estimated set dates. / allucent_notes: 2025-12-30 10:42 - User: John Capriotti - Date Added: 2025-12-30 10:42 - Note: SCRs will be delivered when we are ready to set. The Mfg/Vendor has these located in their yard in Texas, but we are not going to ship all of these to site to store and then mo

| ID | WBS | Activity | Duration | Start | Finish | Predecessors | Complete | Remaining | Planned start | Planned finish | Total float | Free float | Expected finish | Precon Phase | Project Section-1 | Baseline | Layton Responsible Party | Project Section | Allucent CSI Group |
| --- | --- | --- | --- | --- | --- | --- | --- | --- | --- | --- | --- | --- | --- | --- | --- | --- | --- | --- | --- |
|  | 9 | **R22 Lineup** |  | 2025-08-07 | 2026-02-11 |  |  |  |  |  |  |  |  |  |  |  |  |  |  |
| QTS-35461 |  | DH 2200 / R22 Lineup // Chiller #1RT40-R22 | 20d | 2025-08-07 A | 2025-08-08 A | QTS-1371 | 100% |  | 2025-08-07 | 2025-09-04 |  |  |  | OFCI Procurement | Preconstruction | GMP | Chris Perales | Preconstruction | 01ADMIN |
| QTS-31701 |  | DH 2200 / R22 Lineup // 600A MOD #R22-03 (CRAH Support) | 20d | 2025-11-04 A | 2025-12-03 A | QTS-1371 | 100% |  |  |  |  |  |  | OFCI Procurement | Preconstruction | GMP | Chris Perales | Preconstruction | 01ADMIN |
| QTS-31791 |  | DH 2200 / R22 Lineup // 225A MOD #R22-02 | 20d | 2025-11-04 A | 2025-12-03 A | QTS-1371 | 100% |  |  |  |  |  |  | OFCI Procurement | Preconstruction | GMP | Chris Perales | Preconstruction | 01ADMIN |
| QTS-35981 |  | DH 2200 / R22 Lineup // 2500KVA Padmount XFMR #R22 | 20d | 2025-11-21 A | 2025-11-21 A | QTS-1371 | 100% |  | 2025-11-21 | 2025-12-22 |  |  |  | OFCI Procurement | Preconstruction | GMP | Chris Perales | Preconstruction | 01ADMIN |
| QTS-41041 |  | DH 2200 / R22 Lineup // Assembly - SCR #GEN-R22 | 20d | 2025-12-03 A | 2026-02-11 | QTS-1371 |  | 20d | 2025-12-03 | 2026-01-06 | 27d | 0d | 2026-02-11 | OFCI Procurement | Preconstruction |  | Chris Perales | Preconstruction | 01ADMIN |
| QTS-41021 |  | DH 2200 / R22 Lineup // Assembly - Tank #GEN-R22 | 20d | 2025-12-11 A | 2025-12-15 A | QTS-1371 | 100% |  | 2025-12-11 | 2026-01-14 |  |  |  | OFCI Procurement | Preconstruction |  | Chris Perales | Preconstruction | 01ADMIN |
| QTS-41031 |  | DH 2200 / R22 Lineup // Assembly - Engine #GEN-R22 | 20d | 2025-12-11 A | 2025-12-16 A | QTS-1371 | 100% |  | 2025-12-11 | 2026-01-14 |  |  |  | OFCI Procurement | Preconstruction |  | Chris Perales | Preconstruction | 01ADMIN |
| QTS-41051 |  | DH 2200 / R22 Lineup // Assembly - Housing #GEN-R22 | 20d | 2025-12-11 A | 2025-12-18 A | QTS-1371 | 100% |  | 2025-12-11 | 2026-01-14 |  |  |  | OFCI Procurement | Preconstruction |  | Chris Perales | Preconstruction | 01ADMIN |
|  | 4 | **Data Hall 1200 (Need By Dates)** |  | 2025-08-07 | 2026-02-12 |  |  |  |  |  |  |  |  |  |  |  |  |  |  |
| QTS-35251 |  | DH 1200 / CRAH #29 (Electrical Gallery) | 20d | 2025-10-20 A | 2025-11-14 A | QTS-1371 | 100% |  |  |  |  |  |  | OFCI Procurement | Preconstruction | GMP | Chris Perales | Preconstruction | 01ADMIN |
| QTS-35261 |  | DH 1200 / CRAH #30 (Electrical Gallery) | 20d | 2025-10-20 A | 2025-11-14 A | QTS-1371 | 100% |  |  |  |  |  |  | OFCI Procurement | Preconstruction | GMP | Chris Perales | Preconstruction | 01ADMIN |
| QTS-35271 |  | DH 1200 / CRAH #31 (Electrical Gallery) | 20d | 2025-10-20 A | 2025-11-14 A | QTS-1371 | 100% |  |  |  |  |  |  | OFCI Procurement | Preconstruction | GMP | Chris Perales | Preconstruction | 01ADMIN |
| QTS-35281 |  | DH 1200 / CRAH #32 (Electrical Gallery) | 20d | 2025-10-20 A | 2025-11-14 A | QTS-1371 | 100% |  |  |  |  |  |  | OFCI Procurement | Preconstruction | GMP | Chris Perales | Preconstruction | 01ADMIN |
| QTS-34971 |  | DH 1200 / CRAH #01 | 20d | 2025-11-04 A | 2026-01-14 A | QTS-1371 | 100% |  | 2025-11-04 | 2025-12-03 |  |  |  | OFCI Procurement | Preconstruction | GMP | Chris Perales | Preconstruction | 01ADMIN |
| QTS-34981 |  | DH 1200 / CRAH #02 | 20d | 2025-11-04 A | 2026-01-14 A | QTS-1371 | 100% |  | 2025-11-04 | 2025-12-03 |  |  |  | OFCI Procurement | Preconstruction | GMP | Chris Perales | Preconstruction | 01ADMIN |
| QTS-34991 |  | DH 1200 / CRAH #03 | 20d | 2025-11-04 A | 2026-01-14 A | QTS-1371 | 100% |  | 2025-11-04 | 2025-12-03 |  |  |  | OFCI Procurement | Preconstruction | GMP | Chris Perales | Preconstruction | 01ADMIN |
| QTS-35001 |  | DH 1200 / CRAH #04 | 20d | 2025-11-04 A | 2026-01-14 A | QTS-1371 | 100% |  | 2025-11-04 | 2025-12-03 |  |  |  | OFCI Procurement | Preconstruction | GMP | Chris Perales | Preconstruction | 01ADMIN |
| QTS-35011 |  | DH 1200 / CRAH #05 | 20d | 2025-11-04 A | 2026-01-14 A | QTS-1371 | 100% |  | 2025-11-04 | 2025-12-03 |  |  |  | OFCI Procurement | Preconstruction | GMP | Chris Perales | Preconstruction | 01ADMIN |
| QTS-35021 |  | DH 1200 / CRAH #06 | 20d | 2025-11-04 A | 2026-01-14 A | QTS-1371 | 100% |  | 2025-11-04 | 2025-12-03 |  |  |  | OFCI Procurement | Preconstruction | GMP | Chris Perales | Preconstruction | 01ADMIN |
| QTS-35031 |  | DH 1200 / CRAH #07 | 20d | 2025-11-04 A | 2026-01-14 A | QTS-1371 | 100% |  | 2025-11-04 | 2025-12-03 |  |  |  | OFCI Procurement | Preconstruction | GMP | Chris Perales | Preconstruction | 01ADMIN |
| QTS-35041 |  | DH 1200 / CRAH #08 | 20d | 2025-11-04 A | 2026-01-14 A | QTS-1371 | 100% |  | 2025-11-04 | 2025-12-03 |  |  |  | OFCI Procurement | Preconstruction | GMP | Chris Perales | Preconstruction | 01ADMIN |
| QTS-35051 |  | DH 1200 / CRAH #09 | 20d | 2025-11-04 A | 2026-01-14 A | QTS-1371 | 100% |  | 2025-11-04 | 2025-12-03 |  |  |  | OFCI Procurement | Preconstruction | GMP | Chris Perales | Preconstruction | 01ADMIN |
| QTS-35061 |  | DH 1200 / CRAH #10 | 20d | 2025-11-04 A | 2026-01-14 A | QTS-1371 | 100% |  | 2025-11-04 | 2025-12-03 |  |  |  | OFCI Procurement | Preconstruction | GMP | Chris Perales | Preconstruction | 01ADMIN |
| QTS-35071 |  | DH 1200 / CRAH #11 | 20d | 2025-11-04 A | 2026-01-14 A | QTS-1371 | 100% |  | 2025-11-04 | 2025-12-03 |  |  |  | OFCI Procurement | Preconstruction | GMP | Chris Perales | Preconstruction | 01ADMIN |
| QTS-35081 |  | DH 1200 / CRAH #12 | 20d | 2025-11-04 A | 2026-01-14 A | QTS-1371 | 100% |  | 2025-11-04 | 2025-12-03 |  |  |  | OFCI Procurement | Preconstruction | GMP | Chris Perales | Preconstruction | 01ADMIN |
| QTS-35091 |  | DH 1200 / CRAH #13 | 20d | 2025-11-04 A | 2026-01-14 A | QTS-1371 | 100% |  | 2025-11-04 | 2025-12-03 |  |  |  | OFCI Procurement | Preconstruction | GMP | Chris Perales | Preconstruction | 01ADMIN |
| QTS-35101 |  | DH 1200 / CRAH #14 | 20d | 2025-11-04 A | 2026-01-14 A | QTS-1371 | 100% |  | 2025-11-04 | 2025-12-03 |  |  |  | OFCI Procurement | Preconstruction | GMP | Chris Perales | Preconstruction | 01ADMIN |
| QTS-23421 |  | DH 1200 / DOAS #01 | 20d | 2025-11-05 A | 2025-12-18 A | QTS-1371 | 100% |  | 2025-11-05 | 2025-12-04 |  |  |  | OFCI Procurement | Preconstruction | GMP | Chris Perales | Preconstruction | 01ADMIN |
| QTS-23431 |  | DH 1200 / DOAS #02 | 20d | 2025-11-05 A | 2025-12-18 A | QTS-1371 | 100% |  | 2025-11-05 | 2025-12-04 |  |  |  | OFCI Procurement | Preconstruction | GMP | Chris Perales | Preconstruction | 01ADMIN |
| QTS-35111 |  | DH 1200 / CRAH #15 | 20d | 2025-12-29 A | 2026-01-23 | QTS-1371 | 65% | 7d | 2025-12-29 | 2026-01-28 | 19d | 0d | 2026-01-23 | OFCI Procurement | Preconstruction | GMP | Chris Perales | Preconstruction | 01ADMIN |
| QTS-35121 |  | DH 1200 / CRAH #16 | 20d | 2025-12-29 A | 2026-01-23 | QTS-1371 | 65% | 7d | 2025-12-29 | 2026-01-28 | 19d | 0d | 2026-01-23 | OFCI Procurement | Preconstruction | GMP | Chris Perales | Preconstruction | 01ADMIN |
| QTS-35131 |  | DH 1200 / CRAH #17 | 20d | 2025-12-29 A | 2026-01-26 | QTS-1371 | 60% | 8d | 2025-12-29 | 2026-01-28 | 18d | 0d | 2026-01-26 | OFCI Procurement | Preconstruction | GMP | Chris Perales | Preconstruction | 01ADMIN |
| QTS-35141 |  | DH 1200 / CRAH #18 | 20d | 2025-12-29 A | 2026-01-26 | QTS-1371 | 60% | 8d | 2025-12-29 | 2026-01-28 | 18d | 0d | 2026-01-26 | OFCI Procurement | Preconstruction | GMP | Chris Perales | Preconstruction | 01ADMIN |
| QTS-35151 |  | DH 1200 / CRAH #19 | 20d | 2025-12-29 A | 2026-01-26 | QTS-1371 | 60% | 8d | 2025-12-29 | 2026-01-28 | 18d | 0d | 2026-01-26 | OFCI Procurement | Preconstruction | GMP | Chris Perales | Preconstruction | 01ADMIN |
| QTS-35161 |  | DH 1200 / CRAH #20 | 20d | 2025-12-29 A | 2026-01-26 | QTS-1371 | 60% | 8d | 2025-12-29 | 2026-01-28 | 18d | 0d | 2026-01-26 | OFCI Procurement | Preconstruction | GMP | Chris Perales | Preconstruction | 01ADMIN |
| QTS-35171 |  | DH 1200 / CRAH #21 | 20d | 2025-12-29 A | 2026-01-26 | QTS-1371 | 60% | 8d | 2025-12-29 | 2026-01-28 | 18d | 0d | 2026-01-26 | OFCI Procurement | Preconstruction | GMP | Chris Perales | Preconstruction | 01ADMIN |
| QTS-35181 |  | DH 1200 / CRAH #22 | 20d | 2025-12-29 A | 2026-01-26 | QTS-1371 | 60% | 8d | 2025-12-29 | 2026-01-28 | 18d | 0d | 2026-01-26 | OFCI Procurement | Preconstruction | GMP | Chris Perales | Preconstruction | 01ADMIN |
| QTS-35191 |  | DH 1200 / CRAH #23 | 20d | 2025-12-29 A | 2026-01-26 | QTS-1371 | 60% | 8d | 2025-12-29 | 2026-01-28 | 18d | 0d | 2026-01-26 | OFCI Procurement | Preconstruction | GMP | Chris Perales | Preconstruction | 01ADMIN |
| QTS-35201 |  | DH 1200 / CRAH #24 | 20d | 2025-12-29 A | 2026-01-26 | QTS-1371 | 60% | 8d | 2025-12-29 | 2026-01-28 | 18d | 0d | 2026-01-26 | OFCI Procurement | Preconstruction | GMP | Chris Perales | Preconstruction | 01ADMIN |
| QTS-35211 |  | DH 1200 / CRAH #25 | 20d | 2025-12-29 A | 2026-01-27 | QTS-1371 | 55% | 9d | 2025-12-29 | 2026-01-28 | 17d | 0d | 2026-01-27 | OFCI Procurement | Preconstruction | GMP | Chris Perales | Preconstruction | 01ADMIN |
| QTS-35221 |  | DH 1200 / CRAH #26 | 20d | 2025-12-29 A | 2026-01-27 | QTS-1371 | 55% | 9d | 2025-12-29 | 2026-01-28 | 17d | 0d | 2026-01-27 | OFCI Procurement | Preconstruction | GMP | Chris Perales | Preconstruction | 01ADMIN |
| QTS-35231 |  | DH 1200 / CRAH #27 | 20d | 2025-12-29 A | 2026-01-27 | QTS-1371 | 55% | 9d | 2025-12-29 | 2026-01-28 | 17d | 0d | 2026-01-27 | OFCI Procurement | Preconstruction | GMP | Chris Perales | Preconstruction | 01ADMIN |
| QTS-35241 |  | DH 1200 / CRAH #28 | 20d | 2025-12-29 A | 2026-01-27 | QTS-1371 | 55% | 9d | 2025-12-29 | 2026-01-28 | 17d | 0d | 2026-01-27 | OFCI Procurement | Preconstruction | GMP | Chris Perales | Preconstruction | 01ADMIN |

Notes:
- QTS-35981: allucent_notes_20251202_153722: John Capriotti on 2025-12-02 12:26: Received and Set on 11/22 / allucent_notes: 2025-12-02 12:26 - User: John Capriotti - Date Added: 2025-12-02 12:26 - Note: Received and Set on 11/22
- QTS-41041: allucent_notes_20251230_164549: John Capriotti on 2025-12-30 10:42: SCRs will be delivered when we are ready to set. The Mfg/Vendor has these located in their yard in Texas, but we are not going to ship all of these to site to store and then mobilize a separate crane and additional trucks to bring to the building. That would be a decent cost and significantly more coordination, with no added benefit. / Ultimately, I, John Capriotti (OFCI), need an update from the Subs/Supers as to when we intend to set them so I can schedule the delivery to support those set dates. / **I will press for updated dates on these, moving out as I work on getting estimated set dates. / allucent_notes: 2025-12-30 10:42 - User: John Capriotti - Date Added: 2025-12-30 10:42 - Note: SCRs will be delivered when we are ready to set. The Mfg/Vendor has these located in their yard in Texas, but we are not going to ship all of these to site to store and then mo
- QTS-34971: allucent_notes_20251230_164549: John Capriotti on 2025-12-30 10:49: CRAH Units are available in QTS warehouse, but will be delivered when we are going to set them. **I will press for updated dates on these, moving out as I work on getting estimated set dates. / Ultimately, I, John Capriotti (OFCI), need an update from the Subs/Supers as to when we intend to set them so I can schedule the delivery to support those set dates. / allucent_notes: 2025-12-30 10:49 - User: John Capriotti - Date Added: 2025-12-30 10:49 - Note: CRAH Units are available in QTS warehouse, but will be delivered when we are going to set them. **I will press for updated dates on these, moving out as I work on getting estim
- QTS-34981: allucent_notes_20251230_164549: John Capriotti on 2025-12-30 10:49: CRAH Units are available in QTS warehouse, but will be delivered when we are going to set them. **I will press for updated dates on these, moving out as I work on getting estimated set dates. / Ultimately, I, John Capriotti (OFCI), need an update from the Subs/Supers as to when we intend to set them so I can schedule the delivery to support those set dates. / allucent_notes: 2025-12-30 10:49 - User: John Capriotti - Date Added: 2025-12-30 10:49 - Note: CRAH Units are available in QTS warehouse, but will be delivered when we are going to set them. **I will press for updated dates on these, moving out as I work on getting estim
- QTS-34991: allucent_notes_20251230_164549: John Capriotti on 2025-12-30 10:49: CRAH Units are available in QTS warehouse, but will be delivered when we are going to set them. **I will press for updated dates on these, moving out as I work on getting estimated set dates. / Ultimately, I, John Capriotti (OFCI), need an update from the Subs/Supers as to when we intend to set them so I can schedule the delivery to support those set dates. / allucent_notes: 2025-12-30 10:49 - User: John Capriotti - Date Added: 2025-12-30 10:49 - Note: CRAH Units are available in QTS warehouse, but will be delivered when we are going to set them. **I will press for updated dates on these, moving out as I work on getting estim
- QTS-35001: allucent_notes_20251230_164549: John Capriotti on 2025-12-30 10:49: CRAH Units are available in QTS warehouse, but will be delivered when we are going to set them. **I will press for updated dates on these, moving out as I work on getting estimated set dates. / Ultimately, I, John Capriotti (OFCI), need an update from the Subs/Supers as to when we intend to set them so I can schedule the delivery to support those set dates. / allucent_notes: 2025-12-30 10:49 - User: John Capriotti - Date Added: 2025-12-30 10:49 - Note: CRAH Units are available in QTS warehouse, but will be delivered when we are going to set them. **I will press for updated dates on these, moving out as I work on getting estim
- QTS-35011: allucent_notes_20251230_164549: John Capriotti on 2025-12-30 10:49: CRAH Units are available in QTS warehouse, but will be delivered when we are going to set them. **I will press for updated dates on these, moving out as I work on getting estimated set dates. / Ultimately, I, John Capriotti (OFCI), need an update from the Subs/Supers as to when we intend to set them so I can schedule the delivery to support those set dates. / allucent_notes: 2025-12-30 10:49 - User: John Capriotti - Date Added: 2025-12-30 10:49 - Note: CRAH Units are available in QTS warehouse, but will be delivered when we are going to set them. **I will press for updated dates on these, moving out as I work on getting estim
- QTS-35021: allucent_notes_20251230_164549: John Capriotti on 2025-12-30 10:49: CRAH Units are available in QTS warehouse, but will be delivered when we are going to set them. **I will press for updated dates on these, moving out as I work on getting estimated set dates. / Ultimately, I, John Capriotti (OFCI), need an update from the Subs/Supers as to when we intend to set them so I can schedule the delivery to support those set dates. / allucent_notes: 2025-12-30 10:49 - User: John Capriotti - Date Added: 2025-12-30 10:49 - Note: CRAH Units are available in QTS warehouse, but will be delivered when we are going to set them. **I will press for updated dates on these, moving out as I work on getting estim
- QTS-35031: allucent_notes_20251230_164549: John Capriotti on 2025-12-30 10:49: CRAH Units are available in QTS warehouse, but will be delivered when we are going to set them. **I will press for updated dates on these, moving out as I work on getting estimated set dates. / Ultimately, I, John Capriotti (OFCI), need an update from the Subs/Supers as to when we intend to set them so I can schedule the delivery to support those set dates. / allucent_notes: 2025-12-30 10:49 - User: John Capriotti - Date Added: 2025-12-30 10:49 - Note: CRAH Units are available in QTS warehouse, but will be delivered when we are going to set them. **I will press for updated dates on these, moving out as I work on getting estim
- QTS-35041: allucent_notes_20251230_164549: John Capriotti on 2025-12-30 10:49: CRAH Units are available in QTS warehouse, but will be delivered when we are going to set them. **I will press for updated dates on these, moving out as I work on getting estimated set dates. / Ultimately, I, John Capriotti (OFCI), need an update from the Subs/Supers as to when we intend to set them so I can schedule the delivery to support those set dates. / allucent_notes: 2025-12-30 10:49 - User: John Capriotti - Date Added: 2025-12-30 10:49 - Note: CRAH Units are available in QTS warehouse, but will be delivered when we are going to set them. **I will press for updated dates on these, moving out as I work on getting estim
- QTS-35051: allucent_notes_20251230_164549: John Capriotti on 2025-12-30 10:49: CRAH Units are available in QTS warehouse, but will be delivered when we are going to set them. **I will press for updated dates on these, moving out as I work on getting estimated set dates. / Ultimately, I, John Capriotti (OFCI), need an update from the Subs/Supers as to when we intend to set them so I can schedule the delivery to support those set dates. / allucent_notes: 2025-12-30 10:49 - User: John Capriotti - Date Added: 2025-12-30 10:49 - Note: CRAH Units are available in QTS warehouse, but will be delivered when we are going to set them. **I will press for updated dates on these, moving out as I work on getting estim
- QTS-35061: allucent_notes_20251230_164549: John Capriotti on 2025-12-30 10:49: CRAH Units are available in QTS warehouse, but will be delivered when we are going to set them. **I will press for updated dates on these, moving out as I work on getting estimated set dates. / Ultimately, I, John Capriotti (OFCI), need an update from the Subs/Supers as to when we intend to set them so I can schedule the delivery to support those set dates. / allucent_notes: 2025-12-30 10:49 - User: John Capriotti - Date Added: 2025-12-30 10:49 - Note: CRAH Units are available in QTS warehouse, but will be delivered when we are going to set them. **I will press for updated dates on these, moving out as I work on getting estim
- QTS-35071: allucent_notes_20251230_164549: John Capriotti on 2025-12-30 10:49: CRAH Units are available in QTS warehouse, but will be delivered when we are going to set them. **I will press for updated dates on these, moving out as I work on getting estimated set dates. / Ultimately, I, John Capriotti (OFCI), need an update from the Subs/Supers as to when we intend to set them so I can schedule the delivery to support those set dates. / allucent_notes: 2025-12-30 10:49 - User: John Capriotti - Date Added: 2025-12-30 10:49 - Note: CRAH Units are available in QTS warehouse, but will be delivered when we are going to set them. **I will press for updated dates on these, moving out as I work on getting estim
- QTS-35081: allucent_notes_20251230_164549: John Capriotti on 2025-12-30 10:49: CRAH Units are available in QTS warehouse, but will be delivered when we are going to set them. **I will press for updated dates on these, moving out as I work on getting estimated set dates. / Ultimately, I, John Capriotti (OFCI), need an update from the Subs/Supers as to when we intend to set them so I can schedule the delivery to support those set dates. / allucent_notes: 2025-12-30 10:49 - User: John Capriotti - Date Added: 2025-12-30 10:49 - Note: CRAH Units are available in QTS warehouse, but will be delivered when we are going to set them. **I will press for updated dates on these, moving out as I work on getting estim
- QTS-35091: allucent_notes_20251230_164549: John Capriotti on 2025-12-30 10:49: CRAH Units are available in QTS warehouse, but will be delivered when we are going to set them. **I will press for updated dates on these, moving out as I work on getting estimated set dates. / Ultimately, I, John Capriotti (OFCI), need an update from the Subs/Supers as to when we intend to set them so I can schedule the delivery to support those set dates. / allucent_notes: 2025-12-30 10:49 - User: John Capriotti - Date Added: 2025-12-30 10:49 - Note: CRAH Units are available in QTS warehouse, but will be delivered when we are going to set them. **I will press for updated dates on these, moving out as I work on getting estim
- QTS-35101: allucent_notes_20251230_164549: John Capriotti on 2025-12-30 10:50: CRAH Units are available in QTS warehouse, but will be delivered when we are going to set them. **I will press for updated dates on these, moving out as I work on getting estimated set dates. / Ultimately, I, John Capriotti (OFCI), need an update from the Subs/Supers as to when we intend to set them so I can schedule the delivery to support those set dates. / allucent_notes: 2025-12-30 10:50 - User: John Capriotti - Date Added: 2025-12-30 10:50 - Note: CRAH Units are available in QTS warehouse, but will be delivered when we are going to set them. **I will press for updated dates on these, moving out as I work on getting estim
- QTS-23421: allucent_notes_20251230_164549: John Capriotti on 2025-12-30T15:17:34.792Z: Actualizing ROJ: DOAS delivered to QAE yard on 10/2 - technically have it just not delivered to the site from QAE yard until I can confirm set date / allucent_notes: 2025-12-30T15:17:34.792Z - User: John Capriotti - Date Added: 2025-12-30T15:17:34.792Z - Note: Actualizing ROJ: DOAS delivered to QAE yard on 10/2 - technically have it just not delivered to the site from QAE yard until I can confirm set date
- QTS-23431: allucent_notes_20251230_164549: John Capriotti on 2025-12-30T15:17:40.594Z: Actualizing ROJ: DOAS delivered to QAE yard on 10/2 - technically have it just not delivered to the site from QAE yard until I can confirm set date / allucent_notes: 2025-12-30T15:17:40.594Z - User: John Capriotti - Date Added: 2025-12-30T15:17:40.594Z - Note: Actualizing ROJ: DOAS delivered to QAE yard on 10/2 - technically have it just not delivered to the site from QAE yard until I can confirm set date

| ID | WBS | Activity | Duration | Start | Finish | Predecessors | Complete | Remaining | Planned start | Planned finish | Total float | Free float | Expected finish | Precon Phase | Project Section-1 | Baseline | Layton Responsible Party | Project Section | Allucent CSI Group |
| --- | --- | --- | --- | --- | --- | --- | --- | --- | --- | --- | --- | --- | --- | --- | --- | --- | --- | --- | --- |
|  | 1 | **A12 Lineup** |  | 2025-08-07 | 2026-02-12 |  |  |  |  |  |  |  |  |  |  |  |  |  |  |
| QTS-35471 |  | DH 1200 / A12 Lineup // Chiller #1RT40-A12 | 20d | 2025-08-07 A | 2025-08-11 A | QTS-1371 | 100% |  | 2025-08-14 | 2025-09-11 |  |  |  | OFCI Procurement | Preconstruction | GMP | Chris Perales | Preconstruction | 01ADMIN |
| QTS-33471 |  | DH 1200 / A12 Lineup // Skid #A12 | 20d | 2025-10-29 A | 2025-12-11 A | QTS-1371 | 100% |  | 2025-10-29 | 2025-11-25 |  |  |  | OFCI Procurement | Preconstruction | GMP | Chris Perales | Preconstruction | 01ADMIN |
| QTS-35851 |  | DH 1200 / A12 Lineup // 2500KVA Padmount XFMR #A12 | 20d | 2025-11-05 A | 2025-11-21 A | QTS-1371 | 100% |  | 2025-11-05 | 2025-12-04 |  |  |  | OFCI Procurement | Preconstruction | GMP | Chris Perales | Preconstruction | 01ADMIN |
| QTS-40261 |  | DH 1200 / A12 Lineup // Assembly - Tank #GEN-A12 | 20d | 2025-11-21 A | 2025-12-09 A | QTS-1371 | 100% |  | 2025-11-21 | 2025-12-22 |  |  |  | OFCI Procurement | Preconstruction |  | Chris Perales | Preconstruction | 01ADMIN |
| QTS-40271 |  | DH 1200 / A12 Lineup // Assembly - Engine #GEN-A12 | 20d | 2025-11-21 A | 2025-12-11 A | QTS-1371 | 100% |  | 2025-11-21 | 2025-12-22 |  |  |  | OFCI Procurement | Preconstruction |  | Chris Perales | Preconstruction | 01ADMIN |
| QTS-40281 |  | DH 1200 / A12 Lineup // Assembly - SCR #GEN-A12 | 20d | 2025-11-21 A | 2026-02-12 | QTS-1371 |  | 21d | 2025-11-21 | 2025-12-22 | 26d | 0d | 2026-02-12 | OFCI Procurement | Preconstruction |  | Chris Perales | Preconstruction | 01ADMIN |
| QTS-40291 |  | DH 1200 / A12 Lineup // Assembly - Housing #GEN-A12 | 20d | 2025-11-21 A | 2025-12-12 A | QTS-1371 | 100% |  | 2025-11-21 | 2025-12-22 |  |  |  | OFCI Procurement | Preconstruction |  | Chris Perales | Preconstruction | 01ADMIN |
| QTS-31381 |  | DH 1200 / A12 Lineup // 225A MOD #A12-02 (Liquid to Chip Support) | 20d | 2025-12-29 A | 2026-01-12 A | QTS-1371 | 100% |  | 2025-12-29 | 2026-01-28 |  |  |  | OFCI Procurement | Preconstruction | GMP | Chris Perales | Preconstruction | 01ADMIN |
| QTS-31621 |  | DH 1200 / A12 Lineup // 600A MOD #A12-03 (CRAH Support) | 20d | 2025-12-29 A | 2026-01-12 A | QTS-1371 | 100% |  | 2025-12-29 | 2026-01-28 |  |  |  | OFCI Procurement | Preconstruction | GMP | Chris Perales | Preconstruction | 01ADMIN |
|  | 2 | **B12 Lineup** |  | 2025-08-07 | 2026-02-12 |  |  |  |  |  |  |  |  |  |  |  |  |  |  |
| QTS-35481 |  | DH 1200 / B12 Lineup // Chiller #1RT40-B12 | 20d | 2025-08-07 A | 2025-08-11 A | QTS-1371 | 100% |  | 2025-08-14 | 2025-09-11 |  |  |  | OFCI Procurement | Preconstruction | GMP | Chris Perales | Preconstruction | 01ADMIN |
| QTS-33511 |  | DH 1200 / B12 Lineup // Skid #B12 | 20d | 2025-11-04 A | 2025-12-11 A | QTS-1371 | 100% |  | 2025-11-04 | 2025-12-03 |  |  |  | OFCI Procurement | Preconstruction | GMP | Chris Perales | Preconstruction | 01ADMIN |
| QTS-35861 |  | DH 1200 / B12 Lineup // 2500KVA Padmount XFMR #B12 | 20d | 2025-11-05 A | 2025-11-21 A | QTS-1371 | 100% |  | 2025-11-05 | 2025-12-04 |  |  |  | OFCI Procurement | Preconstruction | GMP | Chris Perales | Preconstruction | 01ADMIN |
| QTS-40101 |  | DH 1200 / B12 Lineup // Assembly - Tank #GEN-B12 | 20d | 2025-11-26 A | 2025-12-09 A | QTS-1371 | 100% |  | 2025-11-26 | 2025-12-30 |  |  |  | OFCI Procurement | Preconstruction |  | Chris Perales | Preconstruction | 01ADMIN |
| QTS-40111 |  | DH 1200 / B12 Lineup // Assembly - Engine #GEN-B12 | 20d | 2025-11-26 A | 2025-12-11 A | QTS-1371 | 100% |  | 2025-11-26 | 2025-12-30 |  |  |  | OFCI Procurement | Preconstruction |  | Chris Perales | Preconstruction | 01ADMIN |
| QTS-40121 |  | DH 1200 / B12 Lineup // Assembly - SCR #GEN-B12 | 20d | 2025-11-26 A | 2026-02-12 | QTS-1371 |  | 21d | 2025-11-26 | 2025-12-30 | 26d | 0d | 2026-02-12 | OFCI Procurement | Preconstruction |  | Chris Perales | Preconstruction | 01ADMIN |
| QTS-40131 |  | DH 1200 / B12 Lineup // Assembly - Housing #GEN-B12 | 20d | 2025-11-26 A | 2025-12-12 A | QTS-1371 | 100% |  | 2025-11-26 | 2025-12-30 |  |  |  | OFCI Procurement | Preconstruction |  | Chris Perales | Preconstruction | 01ADMIN |
| QTS-31391 |  | DH 1200 / B12 Lineup // 225A MOD #B12-02 (Liquid to Chip Support) | 20d | 2025-12-29 A | 2026-01-12 A | QTS-1371 | 100% |  | 2025-12-29 | 2026-01-28 |  |  |  | OFCI Procurement | Preconstruction | GMP | Chris Perales | Preconstruction | 01ADMIN |
| QTS-31631 |  | DH 1200 / B12 Lineup // 600A MOD #B12-03 (CRAH Support) | 20d | 2025-12-29 A | 2026-01-12 A | QTS-1371 | 100% |  | 2025-12-29 | 2026-01-28 |  |  |  | OFCI Procurement | Preconstruction | GMP | Chris Perales | Preconstruction | 01ADMIN |
|  | 3 | **C12 Lineup** |  | 2025-08-07 | 2026-02-12 |  |  |  |  |  |  |  |  |  |  |  |  |  |  |
| QTS-35491 |  | DH 1200 / C12 Lineup // Chiller #1RT40-C12 | 20d | 2025-08-07 A | 2025-08-11 A | QTS-1371 | 100% |  | 2025-08-14 | 2025-09-11 |  |  |  | OFCI Procurement | Preconstruction | GMP | Chris Perales | Preconstruction | 01ADMIN |
| QTS-35871 |  | DH 1200 / C12 Lineup // 2500KVA Padmount XFMR #C12 | 20d | 2025-11-05 A | 2025-11-21 A | QTS-1371 | 100% |  | 2025-11-05 | 2025-12-04 |  |  |  | OFCI Procurement | Preconstruction | GMP | Chris Perales | Preconstruction | 01ADMIN |
| QTS-33551 |  | DH 1200 / C12 Lineup // Skid #C12 | 20d | 2025-11-10 A | 2025-12-11 A | QTS-1371 | 100% |  | 2025-11-10 | 2025-12-09 |  |  |  | OFCI Procurement | Preconstruction | GMP | Chris Perales | Preconstruction | 01ADMIN |
| QTS-39941 |  | DH 1200 / C12 Lineup // Assembly - Tank #GEN-C12 | 20d | 2025-11-26 A | 2025-12-09 A | QTS-1371 | 100% |  | 2025-11-26 | 2025-12-30 |  |  |  | OFCI Procurement | Preconstruction |  | Chris Perales | Preconstruction | 01ADMIN |
| QTS-39951 |  | DH 1200 / C12 Lineup // Assembly - Engine #GEN-C12 | 20d | 2025-11-26 A | 2025-12-11 A | QTS-1371 | 100% |  | 2025-11-26 | 2025-12-30 |  |  |  | OFCI Procurement | Preconstruction |  | Chris Perales | Preconstruction | 01ADMIN |
| QTS-39961 |  | DH 1200 / C12 Lineup // Assembly - SCR #GEN-C12 | 20d | 2025-11-26 A | 2026-02-12 | QTS-1371 |  | 21d | 2025-11-26 | 2025-12-30 | 26d | 0d | 2026-02-12 | OFCI Procurement | Preconstruction |  | Chris Perales | Preconstruction | 01ADMIN |
| QTS-39971 |  | DH 1200 / C12 Lineup // Assembly - Housing #GEN-C12 | 20d | 2025-11-26 A | 2025-12-12 A | QTS-1371 | 100% |  | 2025-11-26 | 2025-12-30 |  |  |  | OFCI Procurement | Preconstruction |  | Chris Perales | Preconstruction | 01ADMIN |
| QTS-31401 |  | DH 1200 / C12 Lineup // 225A MOD #C12-02 (Liquid to Chip Support) | 20d | 2025-12-29 A | 2026-01-12 A | QTS-1371 | 100% |  | 2025-12-29 | 2026-01-28 |  |  |  | OFCI Procurement | Preconstruction | GMP | Chris Perales | Preconstruction | 01ADMIN |
| QTS-31641 |  | DH 1200 / C12 Lineup // 600A MOD #C12-03 (CRAH Support) | 20d | 2025-12-29 A | 2026-01-12 A | QTS-1371 | 100% |  | 2025-12-29 | 2026-01-28 |  |  |  | OFCI Procurement | Preconstruction | GMP | Chris Perales | Preconstruction | 01ADMIN |

Notes:
- QTS-35851: allucent_notes_20251202_153722: John Capriotti on 2025-12-02 12:26: Received and Set on 11/21 / allucent_notes: 2025-12-02 12:26 - User: John Capriotti - Date Added: 2025-12-02 12:26 - Note: Received and Set on 11/21
- QTS-40281: allucent_notes_20251230_164549: John Capriotti on 2025-12-30 10:39: SCRs will be delivered when we are ready to set. The Mfg/Vendor has these located in their yard in Texas, but we are not going to ship all of these to site to store and then mobilize a separate crane and additional trucks to bring to the building. That would be a decent cost and significantly more coordination, with no added benefit. / Ultimately, I, John Capriotti (OFCI), need an update from the Subs/Supers as to when we intend to set them so I can schedule the delivery to support those set dates. / **I will press for updated dates on these, moving out as I work on getting estimated set dates. / allucent_notes: 2025-12-30 10:39 - User: John Capriotti - Date Added: 2025-12-30 10:39 - Note: SCRs will be delivered when we are ready to set. The Mfg/Vendor has these located in their yard in Texas, but we are not going to ship all of these to site to store and then mo
- QTS-35861: allucent_notes_20251202_153722: John Capriotti on 2025-12-02 12:26: Received and Set on 11/21 / allucent_notes: 2025-12-02 12:26 - User: John Capriotti - Date Added: 2025-12-02 12:26 - Note: Received and Set on 11/21
- QTS-40121: allucent_notes_20251230_164549: John Capriotti on 2025-12-30 10:39: SCRs will be delivered when we are ready to set. The Mfg/Vendor has these located in their yard in Texas, but we are not going to ship all of these to site to store and then mobilize a separate crane and additional trucks to bring to the building. That would be a decent cost and significantly more coordination, with no added benefit. / Ultimately, I, John Capriotti (OFCI), need an update from the Subs/Supers as to when we intend to set them so I can schedule the delivery to support those set dates. / **I will press for updated dates on these, moving out as I work on getting estimated set dates. / allucent_notes: 2025-12-30 10:39 - User: John Capriotti - Date Added: 2025-12-30 10:39 - Note: SCRs will be delivered when we are ready to set. The Mfg/Vendor has these located in their yard in Texas, but we are not going to ship all of these to site to store and then mo
- QTS-35871: allucent_notes_20251202_153722: John Capriotti on 2025-12-02 12:27: Received and Set on 11/21 / allucent_notes: 2025-12-02 12:27 - User: John Capriotti - Date Added: 2025-12-02 12:27 - Note: Received and Set on 11/21
- QTS-39961: allucent_notes_20251230_164549: John Capriotti on 2025-12-30 10:39: SCRs will be delivered when we are ready to set. The Mfg/Vendor has these located in their yard in Texas, but we are not going to ship all of these to site to store and then mobilize a separate crane and additional trucks to bring to the building. That would be a decent cost and significantly more coordination, with no added benefit. / Ultimately, I, John Capriotti (OFCI), need an update from the Subs/Supers as to when we intend to set them so I can schedule the delivery to support those set dates. / **I will press for updated dates on these, moving out as I work on getting estimated set dates. / allucent_notes: 2025-12-30 10:39 - User: John Capriotti - Date Added: 2025-12-30 10:39 - Note: SCRs will be delivered when we are ready to set. The Mfg/Vendor has these located in their yard in Texas, but we are not going to ship all of these to site to store and then mo

| ID | WBS | Activity | Duration | Start | Finish | Predecessors | Complete | Remaining | Planned start | Planned finish | Total float | Free float | Constraint | Expected finish | Precon Phase | Project Section-1 | Baseline | Layton Responsible Party | Project Section | Allucent CSI Group |
| --- | --- | --- | --- | --- | --- | --- | --- | --- | --- | --- | --- | --- | --- | --- | --- | --- | --- | --- | --- | --- |
|  | 4 | **D12 Lineup** |  | 2025-08-07 | 2026-02-12 |  |  |  |  |  |  |  |  |  |  |  |  |  |  |  |
| QTS-35501 |  | DH 1200 / D12 Lineup // Chiller #1RT40-D12 | 20d | 2025-08-07 A | 2025-08-11 A | QTS-1371 | 100% |  | 2025-08-14 | 2025-09-11 |  |  |  |  | OFCI Procurement | Preconstruction | GMP | Chris Perales | Preconstruction | 01ADMIN |
| QTS-35881 |  | DH 1200 / D12 Lineup // 2500KVA Padmount XFMR #D12 | 20d | 2025-11-05 A | 2025-11-21 A | QTS-1371 | 100% |  | 2025-11-05 | 2025-12-04 |  |  |  |  | OFCI Procurement | Preconstruction | GMP | Chris Perales | Preconstruction | 01ADMIN |
| QTS-33591 |  | DH 1200 / D12 Lineup // Skid #D12 | 20d | 2025-11-14 A | 2025-12-15 A | QTS-1371 | 100% |  |  |  |  |  |  |  | OFCI Procurement | Preconstruction | GMP | Chris Perales | Preconstruction | 01ADMIN |
| QTS-40461 |  | DH 1200 / D12 Lineup // Assembly - Tank #GEN-D12 | 20d | 2025-12-01 A | 2025-12-15 A | QTS-1371 | 100% |  | 2025-12-01 | 2025-12-31 |  |  |  |  | OFCI Procurement | Preconstruction |  | Chris Perales | Preconstruction | 01ADMIN |
| QTS-40471 |  | DH 1200 / D12 Lineup // Assembly - Engine #GEN-D12 | 20d | 2025-12-01 A | 2025-12-16 A | QTS-1371 | 100% |  | 2025-12-01 | 2025-12-31 |  |  |  |  | OFCI Procurement | Preconstruction |  | Chris Perales | Preconstruction | 01ADMIN |
| QTS-40481 |  | DH 1200 / D12 Lineup // Assembly - SCR #GEN-D12 | 20d | 2025-12-01 A | 2026-02-12 | QTS-1371 |  | 21d | 2025-12-01 | 2025-12-31 | 26d | 0d |  | 2026-02-12 | OFCI Procurement | Preconstruction |  | Chris Perales | Preconstruction | 01ADMIN |
| QTS-40491 |  | DH 1200 / D12 Lineup // Assembly - Housing #GEN-D12 | 20d | 2025-12-01 A | 2025-12-18 A | QTS-1371 | 100% |  | 2025-12-01 | 2025-12-31 |  |  |  |  | OFCI Procurement | Preconstruction |  | Chris Perales | Preconstruction | 01ADMIN |
| QTS-31411 |  | DH 1200 / D12 Lineup // 225A MOD #D12-02 (Liquid to Chip Support) | 20d | 2025-12-29 A | 2026-01-12 A | QTS-1371 | 100% |  | 2025-12-29 | 2026-01-28 |  |  |  |  | OFCI Procurement | Preconstruction | GMP | Chris Perales | Preconstruction | 01ADMIN |
| QTS-31651 |  | DH 1200 / D12 Lineup // 600A MOD #D12-03 (CRAH Support) | 20d | 2025-12-29 A | 2026-01-12 A | QTS-1371 | 100% |  | 2025-12-29 | 2026-01-28 |  |  |  |  | OFCI Procurement | Preconstruction | GMP | Chris Perales | Preconstruction | 01ADMIN |
|  | 5 | **E12 Lineup** |  | 2025-08-07 | 2026-02-12 |  |  |  |  |  |  |  |  |  |  |  |  |  |  |  |
| QTS-35511 |  | DH 1200 / E12 Lineup // Chiller #1RT40-E12 | 20d | 2025-08-07 A | 2025-08-11 A | QTS-1371 | 100% |  | 2025-08-14 | 2025-09-11 |  |  |  |  | OFCI Procurement | Preconstruction | GMP | Chris Perales | Preconstruction | 01ADMIN |
| QTS-35891 |  | DH 1200 / E12 Lineup // 2500KVA Padmount XFMR #E12 | 20d | 2025-11-05 A | 2025-11-22 A | QTS-1371 | 100% |  | 2025-11-05 | 2025-12-04 |  |  |  |  | OFCI Procurement | Preconstruction | GMP | Chris Perales | Preconstruction | 01ADMIN |
| QTS-33631 |  | DH 1200 / E12 Lineup // Skid #E12 | 20d | 2025-11-18 A | 2025-12-17 A | QTS-1371 | 100% |  |  |  |  |  |  |  | OFCI Procurement | Preconstruction | GMP | Chris Perales | Preconstruction | 01ADMIN |
| QTS-40661 |  | DH 1200 / E12 Lineup // Assembly - Tank #GEN-E12 | 20d | 2025-12-01 A | 2025-12-15 A | QTS-1371 | 100% |  | 2025-12-01 | 2025-12-31 |  |  |  |  | OFCI Procurement | Preconstruction |  | Chris Perales | Preconstruction | 01ADMIN |
| QTS-40671 |  | DH 1200 / E12 Lineup // Assembly - Engine #GEN-E12 | 20d | 2025-12-01 A | 2025-12-16 A | QTS-1371 | 100% |  | 2025-12-01 | 2025-12-31 |  |  |  |  | OFCI Procurement | Preconstruction |  | Chris Perales | Preconstruction | 01ADMIN |
| QTS-40681 |  | DH 1200 / E12 Lineup // Assembly - SCR #GEN-E12 | 20d | 2025-12-01 A | 2026-02-12 | QTS-1371 |  | 21d | 2025-12-01 | 2025-12-31 | 26d | 0d |  | 2026-02-12 | OFCI Procurement | Preconstruction |  | Chris Perales | Preconstruction | 01ADMIN |
| QTS-40691 |  | DH 1200 / E12 Lineup // Assembly - Housing #GEN-E12 | 20d | 2025-12-01 A | 2025-12-18 A | QTS-1371 | 100% |  | 2025-12-01 | 2025-12-31 |  |  |  |  | OFCI Procurement | Preconstruction |  | Chris Perales | Preconstruction | 01ADMIN |
| QTS-31421 |  | DH 1200 / E12 Lineup // 225A MOD #E12-02 (Liquid to Chip Support) | 20d | 2025-12-29 A | 2026-01-12 A | QTS-1371 | 100% |  | 2025-12-29 | 2026-01-28 |  |  |  |  | OFCI Procurement | Preconstruction | GMP | Chris Perales | Preconstruction | 01ADMIN |
| QTS-31661 |  | DH 1200 / E12 Lineup // 600A MOD #E12-03 (CRAH Support) | 20d | 2025-12-29 A | 2026-01-12 A | QTS-1371 | 100% |  | 2025-12-29 | 2026-01-28 |  |  |  |  | OFCI Procurement | Preconstruction | GMP | Chris Perales | Preconstruction | 01ADMIN |
|  | 6 | **F12 Lineup** |  | 2025-08-07 | 2026-02-12 |  |  |  |  |  |  |  |  |  |  |  |  |  |  |  |
| QTS-35521 |  | DH 1200 / F12 Lineup // Chiller #1RT40-F12 | 20d | 2025-08-07 A | 2025-08-11 A | QTS-1371 | 100% |  | 2025-08-14 | 2025-09-11 |  |  |  |  | OFCI Procurement | Preconstruction | GMP | Chris Perales | Preconstruction | 01ADMIN |
| QTS-35901 |  | DH 1200 / F12 Lineup // 2500KVA Padmount XFMR #F12 | 20d | 2025-11-05 A | 2025-11-22 A | QTS-1371 | 100% |  | 2025-11-05 | 2025-12-04 |  |  |  |  | OFCI Procurement | Preconstruction | GMP | Chris Perales | Preconstruction | 01ADMIN |
| QTS-40881 |  | DH 1200 / F12 Lineup // Assembly - SCR #GEN-F12 | 20d | 2025-12-03 A | 2026-02-12 | QTS-1371 |  | 21d | 2025-12-03 | 2026-01-06 | 26d | 0d |  | 2026-02-12 | OFCI Procurement | Preconstruction |  | Chris Perales | Preconstruction | 01ADMIN |
| QTS-40861 |  | DH 1200 / F12 Lineup // Assembly - Tank #GEN-F12 | 20d | 2025-12-05 A | 2025-12-15 A | QTS-1371 | 100% |  | 2025-12-05 | 2026-01-08 |  |  |  |  | OFCI Procurement | Preconstruction |  | Chris Perales | Preconstruction | 01ADMIN |
| QTS-40871 |  | DH 1200 / F12 Lineup // Assembly - Engine #GEN-F12 | 20d | 2025-12-05 A | 2025-12-16 A | QTS-1371 | 100% |  | 2025-12-05 | 2026-01-08 |  |  |  |  | OFCI Procurement | Preconstruction |  | Chris Perales | Preconstruction | 01ADMIN |
| QTS-40891 |  | DH 1200 / F12 Lineup // Assembly - Housing #GEN-F12 | 20d | 2025-12-05 A | 2025-12-18 A | QTS-1371 | 100% |  | 2025-12-05 | 2026-01-08 |  |  |  |  | OFCI Procurement | Preconstruction |  | Chris Perales | Preconstruction | 01ADMIN |
| QTS-31431 |  | DH 1200 / F12 Lineup // 225A MOD #F12-02 (Liquid to Chip Support) | 20d | 2025-12-29 A | 2026-01-12 A | QTS-1371 | 100% |  | 2025-12-29 | 2026-01-28 |  |  |  |  | OFCI Procurement | Preconstruction | GMP | Chris Perales | Preconstruction | 01ADMIN |
| QTS-31671 |  | DH 1200 / F12 Lineup // 600A MOD #F12-03 (CRAH Support) | 20d | 2025-12-29 A | 2026-01-12 A | QTS-1371 | 100% |  | 2025-12-29 | 2026-01-28 |  |  |  |  | OFCI Procurement | Preconstruction | GMP | Chris Perales | Preconstruction | 01ADMIN |
| QTS-33671 |  | DH 1200 / F12 Lineup // Skid #F12 | 20d | 2026-01-07 A | 2026-01-12 A | QTS-1371 | 100% |  | 2026-01-07 | 2026-02-04 |  |  | as late as possible; as late as possible |  | OFCI Procurement | Preconstruction | GMP | Chris Perales | Preconstruction | 01ADMIN |

Notes:
- QTS-35881: allucent_notes_20251202_153722: John Capriotti on 2025-12-02 12:27: Received and Set on 11/21 / allucent_notes: 2025-12-02 12:27 - User: John Capriotti - Date Added: 2025-12-02 12:27 - Note: Received and Set on 11/21
- QTS-40481: allucent_notes_20251230_164549: John Capriotti on 2025-12-30 10:39: SCRs will be delivered when we are ready to set. The Mfg/Vendor has these located in their yard in Texas, but we are not going to ship all of these to site to store and then mobilize a separate crane and additional trucks to bring to the building. That would be a decent cost and significantly more coordination, with no added benefit. / Ultimately, I, John Capriotti (OFCI), need an update from the Subs/Supers as to when we intend to set them so I can schedule the delivery to support those set dates. / **I will press for updated dates on these, moving out as I work on getting estimated set dates. / allucent_notes: 2025-12-30 10:39 - User: John Capriotti - Date Added: 2025-12-30 10:39 - Note: SCRs will be delivered when we are ready to set. The Mfg/Vendor has these located in their yard in Texas, but we are not going to ship all of these to site to store and then mo
- QTS-35891: allucent_notes_20251202_153722: John Capriotti on 2025-12-02 12:27: Received and Set on 11/22 / allucent_notes: 2025-12-02 12:27 - User: John Capriotti - Date Added: 2025-12-02 12:27 - Note: Received and Set on 11/22
- QTS-40681: allucent_notes_20251230_164549: John Capriotti on 2025-12-30 10:39: SCRs will be delivered when we are ready to set. The Mfg/Vendor has these located in their yard in Texas, but we are not going to ship all of these to site to store and then mobilize a separate crane and additional trucks to bring to the building. That would be a decent cost and significantly more coordination, with no added benefit. / Ultimately, I, John Capriotti (OFCI), need an update from the Subs/Supers as to when we intend to set them so I can schedule the delivery to support those set dates. / **I will press for updated dates on these, moving out as I work on getting estimated set dates. / allucent_notes: 2025-12-30 10:39 - User: John Capriotti - Date Added: 2025-12-30 10:39 - Note: SCRs will be delivered when we are ready to set. The Mfg/Vendor has these located in their yard in Texas, but we are not going to ship all of these to site to store and then mo
- QTS-35901: allucent_notes_20251202_153722: John Capriotti on 2025-12-02 12:27: Received and Set on 11/22 / allucent_notes: 2025-12-02 12:27 - User: John Capriotti - Date Added: 2025-12-02 12:27 - Note: Received and Set on 11/22
- QTS-40881: allucent_notes_20251230_164549: John Capriotti on 2025-12-30 10:40: SCRs will be delivered when we are ready to set. The Mfg/Vendor has these located in their yard in Texas, but we are not going to ship all of these to site to store and then mobilize a separate crane and additional trucks to bring to the building. That would be a decent cost and significantly more coordination, with no added benefit. / Ultimately, I, John Capriotti (OFCI), need an update from the Subs/Supers as to when we intend to set them so I can schedule the delivery to support those set dates. / **I will press for updated dates on these, moving out as I work on getting estimated set dates. / allucent_notes: 2025-12-30 10:40 - User: John Capriotti - Date Added: 2025-12-30 10:40 - Note: SCRs will be delivered when we are ready to set. The Mfg/Vendor has these located in their yard in Texas, but we are not going to ship all of these to site to store and then mo

| ID | WBS | Activity | Duration | Start | Finish | Predecessors | Complete | Remaining | Planned start | Planned finish | Total float | Free float | Expected finish | Precon Phase | Project Section-1 | Baseline | Layton Responsible Party | Project Section | Allucent CSI Group |
| --- | --- | --- | --- | --- | --- | --- | --- | --- | --- | --- | --- | --- | --- | --- | --- | --- | --- | --- | --- |
|  | 9 | **R12 Lineup** |  | 2025-08-07 | 2026-02-12 |  |  |  |  |  |  |  |  |  |  |  |  |  |  |
| QTS-35531 |  | DH 1200 / R12 Lineup // Chiller #1RT40-R12 | 20d | 2025-08-07 A | 2025-08-11 A | QTS-1371 | 100% |  | 2025-08-14 | 2025-09-11 |  |  |  | OFCI Procurement | Preconstruction | GMP | Chris Perales | Preconstruction | 01ADMIN |
| QTS-35911 |  | DH 1200 / R12 Lineup // 2500KVA Padmount XFMR #R12 | 20d | 2025-11-05 A | 2025-11-21 A | QTS-1371 | 100% |  | 2025-11-05 | 2025-12-04 |  |  |  | OFCI Procurement | Preconstruction | GMP | Chris Perales | Preconstruction | 01ADMIN |
| QTS-41081 |  | DH 1200 / R12 Lineup // Assembly - SCR #GEN-R12 | 20d | 2025-12-03 A | 2026-02-12 | QTS-1371 |  | 21d | 2025-12-03 | 2026-01-06 | 26d | 0d | 2026-02-12 | OFCI Procurement | Preconstruction |  | Chris Perales | Preconstruction | 01ADMIN |
| QTS-41061 |  | DH 1200 / R12 Lineup // Assembly - Tank #GEN-R12 | 20d | 2025-12-08 A | 2025-12-09 A | QTS-1371 | 100% |  | 2025-12-08 | 2026-01-09 |  |  |  | OFCI Procurement | Preconstruction |  | Chris Perales | Preconstruction | 01ADMIN |
| QTS-41071 |  | DH 1200 / R12 Lineup // Assembly - Engine #GEN-R12 | 20d | 2025-12-08 A | 2025-12-11 A | QTS-1371 | 100% |  | 2025-12-08 | 2026-01-09 |  |  |  | OFCI Procurement | Preconstruction |  | Chris Perales | Preconstruction | 01ADMIN |
| QTS-41091 |  | DH 1200 / R12 Lineup // Assembly - Housing #GEN-R12 | 20d | 2025-12-08 A | 2025-12-12 A | QTS-1371 | 100% |  | 2025-12-08 | 2026-01-09 |  |  |  | OFCI Procurement | Preconstruction |  | Chris Perales | Preconstruction | 01ADMIN |
| QTS-31711 |  | DH 1200 / R12 Lineup // 600A MOD #R12-03 (CRAH Support) | 20d | 2025-12-29 A | 2026-01-12 A | QTS-1371 | 100% |  | 2025-12-29 | 2026-01-28 |  |  |  | OFCI Procurement | Preconstruction | GMP | Chris Perales | Preconstruction | 01ADMIN |
| QTS-31771 |  | DH 1200 / R12 Lineup // 225A MOD #R12-02 | 20d | 2025-12-29 A | 2026-01-12 A | QTS-1371 | 100% |  | 2025-12-29 | 2026-01-28 |  |  |  | OFCI Procurement | Preconstruction | GMP | Chris Perales | Preconstruction | 01ADMIN |
|  | 10 | **Fragnet / Zone 2 // Pods** |  | 2025-10-16 | 2025-12-31 |  |  |  |  |  |  |  |  |  |  |  |  |  |  |
| QTS-120390 |  | Fragnet / QTS Requests Coordination Between Buildings 1,2,&9 for POD Delivery | 1d | 2025-10-16 A | 2025-10-16 A | QTS-1030 SS | 100% |  | 2025-11-06 | 2025-11-06 |  |  |  | OFCI Procurement | Preconstruction | GMP | Chris Perales | Preconstruction | 01ADMIN |
| QTS-120400 |  | Fragnet / First Meeting with Vendor to Discuss 1,2,&9 for POD Delivery | 1d | 2025-10-17 A | 2025-10-28 A | QTS-120390 | 100% |  | 2025-11-06 | 2025-11-06 |  |  |  | OFCI Procurement | Preconstruction | GMP | Chris Perales | Preconstruction | 01ADMIN |
| QTS-120410 |  | Fragnet / Received New Zone 2 POD Delivery Dates | 20d | 2025-10-29 A | 2025-11-05 A | QTS-120400 | 100% |  | 2025-11-06 | 2025-12-05 |  |  |  | OFCI Procurement | Preconstruction | GMP | Chris Perales | Preconstruction | 01ADMIN |
| QTS-120340 |  | Fragnet / Zone 2 POD Delivery Delay | 20d | 2025-11-06 A | 2025-12-29 A | QTS-120410 | 100% |  | 2025-11-06 | 2025-12-05 |  |  |  | OFCI Procurement | Preconstruction | GMP | Chris Perales | Preconstruction | 01ADMIN |
| QTS-33751 |  | Fragnet / DH 2200 / A22 Lineup // UPS Container #A22 | 20d | 2025-11-07 A | 2025-12-18 A | QTS-1371, QTS-120340 FF+1d | 100% |  | 2025-11-07 | 2025-12-08 |  |  |  | OFCI Procurement | Preconstruction | GMP | Chris Perales | Preconstruction | 01ADMIN |
| QTS-33761 |  | Fragnet / DH 2200 / B22 Lineup // UPS Container #B22 | 20d | 2025-11-07 A | 2025-12-19 A | QTS-1371, QTS-120340 FF+1d | 100% |  | 2025-11-07 | 2025-12-08 |  |  |  | OFCI Procurement | Preconstruction | GMP | Chris Perales | Preconstruction | 01ADMIN |
| QTS-33771 |  | Fragnet / DH 2200 / C22 Lineup // UPS Container #C22 | 20d | 2025-11-07 A | 2025-12-19 A | QTS-1371, QTS-120340 FF+1d | 100% |  | 2025-11-07 | 2025-12-08 |  |  |  | OFCI Procurement | Preconstruction | GMP | Chris Perales | Preconstruction | 01ADMIN |
| QTS-33781 |  | Fragnet / DH 2200 / D22 Lineup // UPS Container #D22 | 20d | 2025-11-07 A | 2025-12-19 A | QTS-1371, QTS-120340 FF+1d | 100% |  | 2025-11-07 | 2025-12-08 |  |  |  | OFCI Procurement | Preconstruction | GMP | Chris Perales | Preconstruction | 01ADMIN |
| QTS-33791 |  | Fragnet / DH 2200 / E22 Lineup // UPS Container #E22 | 20d | 2025-11-07 A | 2025-12-22 A | QTS-1371, QTS-120340 FF+2d | 100% |  | 2025-11-07 | 2025-12-08 |  |  |  | OFCI Procurement | Preconstruction | GMP | Chris Perales | Preconstruction | 01ADMIN |
| QTS-33801 |  | Fragnet / DH 2200 / F22 Lineup // UPS Container #F22 | 20d | 2025-11-07 A | 2025-12-23 A | QTS-1371, QTS-120340 FF+2d | 100% |  | 2025-11-07 | 2025-12-08 |  |  |  | OFCI Procurement | Preconstruction | GMP | Chris Perales | Preconstruction | 01ADMIN |
| QTS-33811 |  | Fragnet / DH 2200 / R22 Lineup // UPS Container #R22 | 20d | 2025-11-07 A | 2025-12-23 A | QTS-1371, QTS-120340 FF+2d | 100% |  | 2025-11-07 | 2025-12-08 |  |  |  | OFCI Procurement | Preconstruction | GMP | Chris Perales | Preconstruction | 01ADMIN |
| QTS-33821 |  | Fragnet / DH 1200 / A12 Lineup // UPS Container #A12 | 20d | 2025-11-07 A | 2025-12-19 A | QTS-1371, QTS-120340 FF+1d | 100% |  | 2025-10-29 | 2025-11-25 |  |  |  | OFCI Procurement | Preconstruction | GMP | Chris Perales | Preconstruction | 01ADMIN |
| QTS-33831 |  | Fragnet / DH 1200 / B12 Lineup // UPS Container #B12 | 20d | 2025-11-07 A | 2025-12-19 A | QTS-1371, QTS-120340 FF+1d | 100% |  | 2025-10-29 | 2025-11-25 |  |  |  | OFCI Procurement | Preconstruction | GMP | Chris Perales | Preconstruction | 01ADMIN |
| QTS-33841 |  | Fragnet / DH 1200 / C12 Lineup // UPS Container #C12 | 20d | 2025-11-07 A | 2025-12-19 A | QTS-1371, QTS-120340 FF+1d | 100% |  | 2025-10-29 | 2025-11-25 |  |  |  | OFCI Procurement | Preconstruction | GMP | Chris Perales | Preconstruction | 01ADMIN |
| QTS-33851 |  | Fragnet / DH 1200 / D12 Lineup // UPS Container #D12 | 20d | 2025-11-07 A | 2025-12-19 A | QTS-1371, QTS-120340 FF+1d | 100% |  | 2025-10-29 | 2025-11-25 |  |  |  | OFCI Procurement | Preconstruction | GMP | Chris Perales | Preconstruction | 01ADMIN |
| QTS-33861 |  | Fragnet / DH 1200 / E12 Lineup // UPS Container #E12 | 20d | 2025-11-07 A | 2025-12-22 A | QTS-1371, QTS-120340 FF+2d | 100% |  | 2025-10-29 | 2025-11-25 |  |  |  | OFCI Procurement | Preconstruction | GMP | Chris Perales | Preconstruction | 01ADMIN |
| QTS-33871 |  | Fragnet / DH 1200 / F12 Lineup // UPS Container #F12 | 20d | 2025-11-07 A | 2025-12-31 A | QTS-1371, QTS-120340 FF+2d | 100% |  | 2025-10-29 | 2025-11-25 |  |  |  | OFCI Procurement | Preconstruction | GMP | Chris Perales | Preconstruction | 01ADMIN |
| QTS-33881 |  | Fragnet / DH 1200 / R12 Lineup // UPS Container #R12 | 20d | 2025-11-07 A | 2025-12-17 A | QTS-1371, QTS-120340 FF | 100% |  | 2025-10-29 | 2025-11-25 |  |  |  | OFCI Procurement | Preconstruction | GMP | Chris Perales | Preconstruction | 01ADMIN |

Notes:
- QTS-35911: allucent_notes_20251202_153722: John Capriotti on 2025-12-02 12:28: Received and Set on 11/21 / allucent_notes: 2025-12-02 12:28 - User: John Capriotti - Date Added: 2025-12-02 12:28 - Note: Received and Set on 11/21
- QTS-41081: allucent_notes_20251230_164549: John Capriotti on 2025-12-30 10:41: SCRs will be delivered when we are ready to set. The Mfg/Vendor has these located in their yard in Texas, but we are not going to ship all of these to site to store and then mobilize a separate crane and additional trucks to bring to the building. That would be a decent cost and significantly more coordination, with no added benefit. / Ultimately, I, John Capriotti (OFCI), need an update from the Subs/Supers as to when we intend to set them so I can schedule the delivery to support those set dates. / **I will press for updated dates on these, moving out as I work on getting estimated set dates. / allucent_notes: 2025-12-30 10:41 - User: John Capriotti - Date Added: 2025-12-30 10:41 - Note: SCRs will be delivered when we are ready to set. The Mfg/Vendor has these located in their yard in Texas, but we are not going to ship all of these to site to store and then mo
- QTS-120390: allucent_notes_20251202_153722: John Capriotti on 2025-12-02 12:34: Fibrebond Delivery date is 12/18. Due to the coordination and/or the other building ROJ dates impacting DC1 ROJs, this has been pushed out. Fibrebond can only deliver so many a week and all building need by dates overlap. / John Capriotti on 2025-12-02 12:36: Fibrebond Delivery date is 12/19. Due to the coordination and/or the other building ROJ dates impacting DC1 ROJs, this has been pushed out. Fibrebond can only deliver so many a week and all building need by dates overlap. / allucent_notes: 2025-12-02 12:34 - User: John Capriotti - Date Added: 2025-12-02 12:34 - Note: Fibrebond Delivery date is 12/18. Due to the coordination and/or the other building ROJ dates impacting DC1 ROJs, this has been pushed out. Fibrebond can only deliver so many a
- QTS-120400: allucent_notes_20251202_153722: John Capriotti on 2025-12-02 12:34: Fibrebond Delivery date is 12/18. Due to the coordination and/or the other building ROJ dates impacting DC1 ROJs, this has been pushed out. Fibrebond can only deliver so many a week and all building need by dates overlap. / John Capriotti on 2025-12-02 12:36: Fibrebond Delivery date is 12/19. Due to the coordination and/or the other building ROJ dates impacting DC1 ROJs, this has been pushed out. Fibrebond can only deliver so many a week and all building need by dates overlap. / allucent_notes: 2025-12-02 12:34 - User: John Capriotti - Date Added: 2025-12-02 12:34 - Note: Fibrebond Delivery date is 12/18. Due to the coordination and/or the other building ROJ dates impacting DC1 ROJs, this has been pushed out. Fibrebond can only deliver so many a
- QTS-120410: allucent_notes_20251202_153722: John Capriotti on 2025-12-02 12:34: Fibrebond Delivery date is 12/18. Due to the coordination and/or the other building ROJ dates impacting DC1 ROJs, this has been pushed out. Fibrebond can only deliver so many a week and all building need by dates overlap. / John Capriotti on 2025-12-02 12:36: Fibrebond Delivery date is 12/19. Due to the coordination and/or the other building ROJ dates impacting DC1 ROJs, this has been pushed out. Fibrebond can only deliver so many a week and all building need by dates overlap. / allucent_notes: 2025-12-02 12:34 - User: John Capriotti - Date Added: 2025-12-02 12:34 - Note: Fibrebond Delivery date is 12/18. Due to the coordination and/or the other building ROJ dates impacting DC1 ROJs, this has been pushed out. Fibrebond can only deliver so many a
- QTS-120340: allucent_notes_20251230_164549: John Capriotti on 2025-12-30 08:30: Pending delivery of last zone 2 POD (UPS Container #F12): ETA now 1/2/2026 (details below) / Per Trucking/Delivery Company: This POD is now tentatively set to be delivered on 1/2/2026. / Updates/History: / 12/30: Truck broke down/in shop for repair. (details below) / Per Trucking/Delivery Company Our driver Perry is experiencing a D-Rating issue with the truck this am and does not have power. He is currently in a shop, but this will not allow us to meet our police this am to get on site this afternoon. I truly apologize for this! The goal is to get out of the shop today and we are working on police scheduling for tomorrow. I am curious what the sites schedule is the rest of the week as we try to get Perry on site as quickly as possible, / I will follow up the moment we are out of the shop along with the police scheduling." / 12/22: Per Trucking/Delivery Company, Pod 53075 is broke down in TX / allucent_notes_20251202_153722: John Capriotti on 2025-12-02 12:34: Fibrebond Delivery date is 12/18. Due to the coordination and/or the other building ROJ dates impacting DC1 ROJs, this has been pushed out. Fibrebond can only deliver so many a week and all building need by dates overlap. / John Capriotti on 2025-12-02 12:36: Fibrebond Delivery date is 12/19. Due to the coordination and/or the other building ROJ dates impacting DC1 ROJs, this has been pushed out. Fibrebond can only deliver so many a week and all building need by dates overlap. / allucent_notes: 2025-12-30 08:30 - User: John Capriotti - Date Added: 2025-12-30 08:30 - Note: Pending delivery of last zone 2 POD (UPS Container #F12): ETA now 1/2/2026 (details below)Per Trucking/Delivery Company: This POD is now tentatively set to be delivered on 1/2
- QTS-33801: allucent_notes_20251230_164549: John Capriotti on 2025-12-30 08:28: POD did not arrive until late 12/23, set on 12/23. / allucent_notes: 2025-12-30 08:28 - User: John Capriotti - Date Added: 2025-12-30 08:28 - Note: POD did not arrive until late 12/23, set on 12/23.
- QTS-33811: allucent_notes_20251230_164549: John Capriotti on 2025-12-30 08:28: POD did not arrive until late 12/23, set on 12/23. / allucent_notes: 2025-12-30 08:28 - User: John Capriotti - Date Added: 2025-12-30 08:28 - Note: POD did not arrive until late 12/23, set on 12/23.
- QTS-33821: allucent_notes_20251230_164549: John Capriotti on 2025-12-02 12:34: Fibrebond Delivery date is 12/18. Due to the coordination and/or the other building ROJ dates impacting DC1 ROJs, this has been pushed out. Fibrebond can only deliver so many a week and all building need by dates overlap. / John Capriotti on 2025-12-02 12:36: Fibrebond Delivery date is 12/19. Due to the coordination and/or the other building ROJ dates impacting DC1 ROJs, this has been pushed out. Fibrebond can only deliver so many a week and all building need by dates overlap. / allucent_notes_20251202_153722: John Capriotti on 2025-12-02 12:34: Fibrebond Delivery date is 12/18. Due to the coordination and/or the other building ROJ dates impacting DC1 ROJs, this has been pushed out. Fibrebond can only deliver so many a week and all building need by dates overlap. / John Capriotti on 2025-12-02 12:36: Fibrebond Delivery date is 12/19. Due to the coordination and/or the other building ROJ dates impacting DC1 ROJs, this has been pushed out. Fibrebond can only deliver so many a week and all building need by dates overlap. / allucent_notes_20251209_203830: John Capriotti on 2025-12-02 12:34: Fibrebond Delivery date is 12/18. Due to the coordination and/or the other building ROJ dates impacting DC1 ROJs, this has been pushed out. Fibrebond can only deliver so many a week and all building need by dates overlap. / John Capriotti on 2025-12-02 12:36: Fibrebond Delivery date is 12/19. Due to the coordination and/or the other building ROJ dates impacting DC1 ROJs, this has been pushed out. Fibrebond can only deliver so many a week and all building need by dates overlap. / allucent_notes_20251216_165335: John Capriotti on 2025-12-02 12:34: Fibrebond Delivery date is 12/18. Due to the coordination and/or the other building ROJ dates impacting DC1 ROJs, this has been pushed out. Fibrebond can only deliver so many a week and all building need by dates overlap. / John Capriotti on 2025-12-02 12:36: Fibrebond Delivery date is 12/19. Due to the coordination and/or the other building ROJ dates impacting DC1 ROJs, this has been pushed out. Fibrebond can only deliver so many a week and all building need by dates overlap. / allucent_notes: 2025-12-02 12:34 - User: John Capriotti - Date Added: 2025-12-02 12:34 - Note: Fibrebond Delivery date is 12/18. Due to the coordination and/or the other building ROJ dates impacting DC1 ROJs, this has been pushed out. Fibrebond can only deliver so many a
- QTS-33831: allucent_notes_20251230_164549: John Capriotti on 2025-12-02 12:36: Fibrebond Delivery date is 12/19. Due to the coordination and/or the other building ROJ dates impacting DC1 ROJs, this has been pushed out. Fibrebond can only deliver so many a week and all building need by dates overlap. / allucent_notes_20251202_153722: John Capriotti on 2025-12-02 12:36: Fibrebond Delivery date is 12/19. Due to the coordination and/or the other building ROJ dates impacting DC1 ROJs, this has been pushed out. Fibrebond can only deliver so many a week and all building need by dates overlap. / allucent_notes_20251209_203830: John Capriotti on 2025-12-02 12:36: Fibrebond Delivery date is 12/19. Due to the coordination and/or the other building ROJ dates impacting DC1 ROJs, this has been pushed out. Fibrebond can only deliver so many a week and all building need by dates overlap. / allucent_notes_20251216_165335: John Capriotti on 2025-12-02 12:36: Fibrebond Delivery date is 12/19. Due to the coordination and/or the other building ROJ dates impacting DC1 ROJs, this has been pushed out. Fibrebond can only deliver so many a week and all building need by dates overlap. / allucent_notes: 2025-12-02 12:36 - User: John Capriotti - Date Added: 2025-12-02 12:36 - Note: Fibrebond Delivery date is 12/19. Due to the coordination and/or the other building ROJ dates impacting DC1 ROJs, this has been pushed out. Fibrebond can only deliver so many a
- QTS-33841: allucent_notes_20251230_164549: John Capriotti on 2025-12-02 12:36: Fibrebond Delivery date is 12/19. Due to the coordination and/or the other building ROJ dates impacting DC1 ROJs, this has been pushed out. Fibrebond can only deliver so many a week and all building need by dates overlap. / allucent_notes_20251202_153722: John Capriotti on 2025-12-02 12:36: Fibrebond Delivery date is 12/19. Due to the coordination and/or the other building ROJ dates impacting DC1 ROJs, this has been pushed out. Fibrebond can only deliver so many a week and all building need by dates overlap. / allucent_notes_20251209_203830: John Capriotti on 2025-12-02 12:36: Fibrebond Delivery date is 12/19. Due to the coordination and/or the other building ROJ dates impacting DC1 ROJs, this has been pushed out. Fibrebond can only deliver so many a week and all building need by dates overlap. / allucent_notes_20251216_165335: John Capriotti on 2025-12-02 12:36: Fibrebond Delivery date is 12/19. Due to the coordination and/or the other building ROJ dates impacting DC1 ROJs, this has been pushed out. Fibrebond can only deliver so many a week and all building need by dates overlap. / allucent_notes: 2025-12-02 12:36 - User: John Capriotti - Date Added: 2025-12-02 12:36 - Note: Fibrebond Delivery date is 12/19. Due to the coordination and/or the other building ROJ dates impacting DC1 ROJs, this has been pushed out. Fibrebond can only deliver so many a
- QTS-33851: allucent_notes_20251230_164549: John Capriotti on 2025-12-02 12:36: Fibrebond Delivery date is 12/19. Due to the coordination and/or the other building ROJ dates impacting DC1 ROJs, this has been pushed out. Fibrebond can only deliver so many a week and all building need by dates overlap. / allucent_notes_20251202_153722: John Capriotti on 2025-12-02 12:36: Fibrebond Delivery date is 12/19. Due to the coordination and/or the other building ROJ dates impacting DC1 ROJs, this has been pushed out. Fibrebond can only deliver so many a week and all building need by dates overlap. / allucent_notes_20251209_203830: John Capriotti on 2025-12-02 12:36: Fibrebond Delivery date is 12/19. Due to the coordination and/or the other building ROJ dates impacting DC1 ROJs, this has been pushed out. Fibrebond can only deliver so many a week and all building need by dates overlap. / allucent_notes_20251216_165335: John Capriotti on 2025-12-02 12:36: Fibrebond Delivery date is 12/19. Due to the coordination and/or the other building ROJ dates impacting DC1 ROJs, this has been pushed out. Fibrebond can only deliver so many a week and all building need by dates overlap. / allucent_notes: 2025-12-02 12:36 - User: John Capriotti - Date Added: 2025-12-02 12:36 - Note: Fibrebond Delivery date is 12/19. Due to the coordination and/or the other building ROJ dates impacting DC1 ROJs, this has been pushed out. Fibrebond can only deliver so many a
- QTS-33861: allucent_notes_20251230_164549: John Capriotti on 2025-12-02 12:37: Fibrebond Delivery date is 12/22. Due to the coordination and/or the other building ROJ dates impacting DC1 ROJs, this has been pushed out. Fibrebond can only deliver so many a week and all building need by dates overlap. / allucent_notes_20251202_153722: John Capriotti on 2025-12-02 12:37: Fibrebond Delivery date is 12/22. Due to the coordination and/or the other building ROJ dates impacting DC1 ROJs, this has been pushed out. Fibrebond can only deliver so many a week and all building need by dates overlap. / allucent_notes_20251209_203830: John Capriotti on 2025-12-02 12:37: Fibrebond Delivery date is 12/22. Due to the coordination and/or the other building ROJ dates impacting DC1 ROJs, this has been pushed out. Fibrebond can only deliver so many a week and all building need by dates overlap. / allucent_notes_20251216_165335: John Capriotti on 2025-12-02 12:37: Fibrebond Delivery date is 12/22. Due to the coordination and/or the other building ROJ dates impacting DC1 ROJs, this has been pushed out. Fibrebond can only deliver so many a week and all building need by dates overlap. / allucent_notes: 2025-12-02 12:37 - User: John Capriotti - Date Added: 2025-12-02 12:37 - Note: Fibrebond Delivery date is 12/22. Due to the coordination and/or the other building ROJ dates impacting DC1 ROJs, this has been pushed out. Fibrebond can only deliver so many a
- QTS-33871: allucent_notes_20251230_164549: John Capriotti on 2025-12-02 12:37: Fibrebond Delivery date is 12/22. Due to the coordination and/or the other building ROJ dates impacting DC1 ROJs, this has been pushed out. Fibrebond can only deliver so many a week and all building need by dates overlap. / John Capriotti on 2025-12-30 08:24: Per Trucking/Delivery Company: This POD is now tentatively set to be delivered on 1/2/2026. / Updates/History: / 12/30: Truck broke down/in shop for repair. (details below) / Per Trucking/Delivery Company Our driver Perry is experiencing a D-Rating issue with the truck this am and does not have power. He is currently in a shop, but this will not allow us to meet our police this am to get on site this afternoon. I truly apologize for this! The goal is to get out of the shop today and we are working on police scheduling for tomorrow. I am curious what the sites schedule is the rest of the week as we try to get Perry on site as quickly as possible, / I will follow up the moment we are out of the shop along with the police scheduling." / 12/22: Per Trucking/Delivery Company, Pod 53075 is broke down in TX currently. We thought he would be fixed by now but is waiting on a part now. New Delivery Date to be 12/20/2025. / John Capriotti on 2025-12-30 08:25: Per Trucking/Delivery Company: This POD is now tentatively set to be delivered on 1/2/2026. / Updates/History: / 12/30: Truck broke down/in shop for repair. (details below) / Per Trucking/Delivery Company Our driver Perry is experiencing a D-Rating issue with the truck this am and does not have power. He is currently in a shop, but this will not allow us to meet our police this am to get on site this afternoon. I truly apologize for this! The goal is to get out of the shop today and we are working on police scheduling for tomorrow. I am curious what the sites schedule is the rest of the week as we try to get Perry on site as quickly as possible, / I will follow up the moment we are out of the shop along with the police scheduling." / 12/22: Per Trucking/Delivery Company, Pod 53075 is broke down in TX / allucent_notes_20251202_153722: John Capriotti on 2025-12-02 12:37: Fibrebond Delivery date is 12/22. Due to the coordination and/or the other building ROJ dates impacting DC1 ROJs, this has been pushed out. Fibrebond can only deliver so many a week and all building need by dates overlap. / allucent_notes_20251209_203830: John Capriotti on 2025-12-02 12:37: Fibrebond Delivery date is 12/22. Due to the coordination and/or the other building ROJ dates impacting DC1 ROJs, this has been pushed out. Fibrebond can only deliver so many a week and all building need by dates overlap. / allucent_notes_20251216_165335: John Capriotti on 2025-12-02 12:37: Fibrebond Delivery date is 12/22. Due to the coordination and/or the other building ROJ dates impacting DC1 ROJs, this has been pushed out. Fibrebond can only deliver so many a week and all building need by dates overlap. / allucent_notes: 2025-12-02 12:37 - User: John Capriotti - Date Added: 2025-12-02 12:37 - Note: Fibrebond Delivery date is 12/22. Due to the coordination and/or the other building ROJ dates impacting DC1 ROJs, this has been pushed out. Fibrebond can only deliver so many a
- QTS-33881: allucent_notes_20251230_164549: John Capriotti on 2025-12-02 12:37: Fibrebond Delivery date is 12/18. Due to the coordination and/or the other building ROJ dates impacting DC1 ROJs, this has been pushed out. Fibrebond can only deliver so many a week and all building need by dates overlap. / allucent_notes_20251202_153722: John Capriotti on 2025-12-02 12:37: Fibrebond Delivery date is 12/18. Due to the coordination and/or the other building ROJ dates impacting DC1 ROJs, this has been pushed out. Fibrebond can only deliver so many a week and all building need by dates overlap. / allucent_notes_20251209_203830: John Capriotti on 2025-12-02 12:37: Fibrebond Delivery date is 12/18. Due to the coordination and/or the other building ROJ dates impacting DC1 ROJs, this has been pushed out. Fibrebond can only deliver so many a week and all building need by dates overlap. / allucent_notes_20251216_165335: John Capriotti on 2025-12-02 12:37: Fibrebond Delivery date is 12/18. Due to the coordination and/or the other building ROJ dates impacting DC1 ROJs, this has been pushed out. Fibrebond can only deliver so many a week and all building need by dates overlap. / allucent_notes: 2025-12-02 12:37 - User: John Capriotti - Date Added: 2025-12-02 12:37 - Note: Fibrebond Delivery date is 12/18. Due to the coordination and/or the other building ROJ dates impacting DC1 ROJs, this has been pushed out. Fibrebond can only deliver so many a

| ID | WBS | Activity | Duration | Start | Finish | Predecessors | Complete | Remaining | Planned start | Planned finish | Total float | Free float | Constraint | Expected finish | Precon Phase | Project Section-1 | Baseline | Layton Responsible Party | Project Section | Allucent CSI Group |
| --- | --- | --- | --- | --- | --- | --- | --- | --- | --- | --- | --- | --- | --- | --- | --- | --- | --- | --- | --- | --- |
|  | 7 | **Data Hall 2300 (Need By Dates)** |  | 2025-02-10 | 2026-03-26 |  |  |  |  |  |  |  |  |  |  |  |  |  |  |  |
| QTS-37261 |  | DH 2300 / DOAS #01 | 20d | 2025-10-14 A | 2025-12-30 A | QTS-1371 | 100% |  | 2025-10-14 | 2025-11-10 |  |  |  |  | OFCI Procurement | Preconstruction | GMP | Chris Perales | Preconstruction | 01ADMIN |
| QTS-37271 |  | DH 2300 / DOAS #02 | 20d | 2025-10-14 A | 2025-12-30 A | QTS-1371 | 100% |  | 2025-10-14 | 2025-11-10 |  |  |  |  | OFCI Procurement | Preconstruction | GMP | Chris Perales | Preconstruction | 01ADMIN |
| QTS-37061 |  | DH 2300 / CRAH #29 (Electrical Gallery) | 20d | 2025-10-23 A | 2026-02-03 | QTS-1371 | 30% | 14d | 2025-10-23 | 2025-11-19 | 33d | 0d |  | 2026-02-03 | OFCI Procurement | Preconstruction | GMP | Chris Perales | Preconstruction | 01ADMIN |
| QTS-37071 |  | DH 2300 / CRAH #30 (Electrical Gallery) | 20d | 2025-10-23 A | 2026-02-03 | QTS-1371 | 30% | 14d | 2025-10-23 | 2025-11-19 | 33d | 0d |  | 2026-02-03 | OFCI Procurement | Preconstruction | GMP | Chris Perales | Preconstruction | 01ADMIN |
| QTS-37081 |  | DH 2300 / CRAH #31 (Electrical Gallery) | 20d | 2025-10-23 A | 2026-02-03 | QTS-1371 | 30% | 14d | 2025-10-23 | 2025-11-19 | 33d | 0d |  | 2026-02-03 | OFCI Procurement | Preconstruction | GMP | Chris Perales | Preconstruction | 01ADMIN |
| QTS-37091 |  | DH 2300 / CRAH #32 (Electrical Gallery) | 20d | 2025-10-23 A | 2026-02-03 | QTS-1371 | 30% | 14d | 2025-10-23 | 2025-11-19 | 33d | 0d |  | 2026-02-03 | OFCI Procurement | Preconstruction | GMP | Chris Perales | Preconstruction | 01ADMIN |
| QTS-36781 |  | DH 2300 / CRAH #01 | 20d | 2025-11-04 A | 2026-02-03 | QTS-1371 | 30% | 14d | 2025-11-04 | 2025-12-03 | 33d | 0d |  | 2026-02-03 | OFCI Procurement | Preconstruction | GMP | Chris Perales | Preconstruction | 01ADMIN |
| QTS-36791 |  | DH 2300 / CRAH #02 | 20d | 2025-11-04 A | 2026-02-03 | QTS-1371 | 30% | 14d | 2025-11-04 | 2025-12-03 | 33d | 0d |  | 2026-02-03 | OFCI Procurement | Preconstruction | GMP | Chris Perales | Preconstruction | 01ADMIN |
| QTS-36801 |  | DH 2300 / CRAH #03 | 20d | 2025-11-04 A | 2026-02-03 | QTS-1371 | 30% | 14d | 2025-11-04 | 2025-12-03 | 33d | 0d |  | 2026-02-03 | OFCI Procurement | Preconstruction | GMP | Chris Perales | Preconstruction | 01ADMIN |
| QTS-36811 |  | DH 2300 / CRAH #04 | 20d | 2025-11-04 A | 2026-02-03 | QTS-1371 | 30% | 14d | 2025-11-04 | 2025-12-03 | 33d | 0d |  | 2026-02-03 | OFCI Procurement | Preconstruction | GMP | Chris Perales | Preconstruction | 01ADMIN |
| QTS-36821 |  | DH 2300 / CRAH #05 | 20d | 2025-11-04 A | 2026-02-03 | QTS-1371 | 30% | 14d | 2025-11-04 | 2025-12-03 | 33d | 0d |  | 2026-02-03 | OFCI Procurement | Preconstruction | GMP | Chris Perales | Preconstruction | 01ADMIN |
| QTS-36831 |  | DH 2300 / CRAH #06 | 20d | 2025-11-04 A | 2026-02-03 | QTS-1371 | 30% | 14d | 2025-11-04 | 2025-12-03 | 33d | 0d |  | 2026-02-03 | OFCI Procurement | Preconstruction | GMP | Chris Perales | Preconstruction | 01ADMIN |
| QTS-36841 |  | DH 2300 / CRAH #07 | 20d | 2025-11-04 A | 2026-02-03 | QTS-1371 | 30% | 14d | 2025-11-04 | 2025-12-03 | 33d | 0d |  | 2026-02-03 | OFCI Procurement | Preconstruction | GMP | Chris Perales | Preconstruction | 01ADMIN |
| QTS-36851 |  | DH 2300 / CRAH #08 | 20d | 2025-11-04 A | 2026-02-03 | QTS-1371 | 30% | 14d | 2025-11-04 | 2025-12-03 | 33d | 0d |  | 2026-02-03 | OFCI Procurement | Preconstruction | GMP | Chris Perales | Preconstruction | 01ADMIN |
| QTS-36861 |  | DH 2300 / CRAH #09 | 20d | 2025-11-04 A | 2026-02-03 | QTS-1371 | 30% | 14d | 2025-11-04 | 2025-12-03 | 33d | 0d |  | 2026-02-03 | OFCI Procurement | Preconstruction | GMP | Chris Perales | Preconstruction | 01ADMIN |
| QTS-36871 |  | DH 2300 / CRAH #10 | 20d | 2025-11-04 A | 2026-02-03 | QTS-1371 | 30% | 14d | 2025-11-04 | 2025-12-03 | 33d | 0d |  | 2026-02-03 | OFCI Procurement | Preconstruction | GMP | Chris Perales | Preconstruction | 01ADMIN |
| QTS-36881 |  | DH 2300 / CRAH #11 | 20d | 2025-11-04 A | 2026-02-03 | QTS-1371 | 30% | 14d | 2025-11-04 | 2025-12-03 | 33d | 0d |  | 2026-02-03 | OFCI Procurement | Preconstruction | GMP | Chris Perales | Preconstruction | 01ADMIN |
| QTS-36891 |  | DH 2300 / CRAH #12 | 20d | 2025-11-04 A | 2026-02-03 | QTS-1371 | 30% | 14d | 2025-11-04 | 2025-12-03 | 33d | 0d |  | 2026-02-03 | OFCI Procurement | Preconstruction | GMP | Chris Perales | Preconstruction | 01ADMIN |
| QTS-36901 |  | DH 2300 / CRAH #13 | 20d | 2025-11-04 A | 2026-02-03 | QTS-1371 | 30% | 14d | 2025-11-04 | 2025-12-03 | 33d | 0d |  | 2026-02-03 | OFCI Procurement | Preconstruction | GMP | Chris Perales | Preconstruction | 01ADMIN |
| QTS-36911 |  | DH 2300 / CRAH #14 | 20d | 2025-11-04 A | 2026-02-03 | QTS-1371 | 30% | 14d | 2025-11-04 | 2025-12-03 | 33d | 0d |  | 2026-02-03 | OFCI Procurement | Preconstruction | GMP | Chris Perales | Preconstruction | 01ADMIN |
| QTS-36921 |  | DH 2300 / CRAH #15 | 20d | 2026-02-11 | 2026-03-10 | QTS-1371 |  |  |  |  | 16d | 0d | as late as possible; as late as possible |  | OFCI Procurement | Preconstruction | GMP | Chris Perales | Preconstruction | 01ADMIN |
| QTS-36931 |  | DH 2300 / CRAH #16 | 20d | 2026-02-11 | 2026-03-10 | QTS-1371 |  |  |  |  | 16d | 0d | as late as possible; as late as possible |  | OFCI Procurement | Preconstruction | GMP | Chris Perales | Preconstruction | 01ADMIN |
| QTS-36941 |  | DH 2300 / CRAH #17 | 20d | 2026-02-11 | 2026-03-10 | QTS-1371 |  |  |  |  | 16d | 0d | as late as possible; as late as possible |  | OFCI Procurement | Preconstruction | GMP | Chris Perales | Preconstruction | 01ADMIN |
| QTS-36951 |  | DH 2300 / CRAH #18 | 20d | 2026-02-11 | 2026-03-10 | QTS-1371 |  |  |  |  | 16d | 0d | as late as possible; as late as possible |  | OFCI Procurement | Preconstruction | GMP | Chris Perales | Preconstruction | 01ADMIN |
| QTS-36961 |  | DH 2300 / CRAH #19 | 20d | 2026-02-11 | 2026-03-10 | QTS-1371 |  |  |  |  | 16d | 0d | as late as possible; as late as possible |  | OFCI Procurement | Preconstruction | GMP | Chris Perales | Preconstruction | 01ADMIN |
| QTS-36971 |  | DH 2300 / CRAH #20 | 20d | 2026-02-11 | 2026-03-10 | QTS-1371 |  |  |  |  | 16d | 0d | as late as possible; as late as possible |  | OFCI Procurement | Preconstruction | GMP | Chris Perales | Preconstruction | 01ADMIN |
| QTS-36981 |  | DH 2300 / CRAH #21 | 20d | 2026-02-11 | 2026-03-10 | QTS-1371 |  |  |  |  | 16d | 0d | as late as possible; as late as possible |  | OFCI Procurement | Preconstruction | GMP | Chris Perales | Preconstruction | 01ADMIN |
| QTS-36991 |  | DH 2300 / CRAH #22 | 20d | 2026-02-11 | 2026-03-10 | QTS-1371 |  |  |  |  | 16d | 0d | as late as possible; as late as possible |  | OFCI Procurement | Preconstruction | GMP | Chris Perales | Preconstruction | 01ADMIN |
| QTS-37001 |  | DH 2300 / CRAH #23 | 20d | 2026-02-11 | 2026-03-10 | QTS-1371 |  |  |  |  | 16d | 0d | as late as possible; as late as possible |  | OFCI Procurement | Preconstruction | GMP | Chris Perales | Preconstruction | 01ADMIN |
| QTS-37011 |  | DH 2300 / CRAH #24 | 20d | 2026-02-11 | 2026-03-10 | QTS-1371 |  |  |  |  | 16d | 0d | as late as possible; as late as possible |  | OFCI Procurement | Preconstruction | GMP | Chris Perales | Preconstruction | 01ADMIN |
| QTS-37021 |  | DH 2300 / CRAH #25 | 20d | 2026-02-11 | 2026-03-10 | QTS-1371 |  |  |  |  | 16d | 0d | as late as possible; as late as possible |  | OFCI Procurement | Preconstruction | GMP | Chris Perales | Preconstruction | 01ADMIN |
| QTS-37031 |  | DH 2300 / CRAH #26 | 20d | 2026-02-11 | 2026-03-10 | QTS-1371 |  |  |  |  | 16d | 0d | as late as possible; as late as possible |  | OFCI Procurement | Preconstruction | GMP | Chris Perales | Preconstruction | 01ADMIN |
| QTS-37041 |  | DH 2300 / CRAH #27 | 20d | 2026-02-11 | 2026-03-10 | QTS-1371 |  |  |  |  | 16d | 0d | as late as possible; as late as possible |  | OFCI Procurement | Preconstruction | GMP | Chris Perales | Preconstruction | 01ADMIN |
| QTS-37051 |  | DH 2300 / CRAH #28 | 20d | 2026-02-11 | 2026-03-10 | QTS-1371 |  |  |  |  | 16d | 0d | as late as possible; as late as possible |  | OFCI Procurement | Preconstruction | GMP | Chris Perales | Preconstruction | 01ADMIN |

Notes:
- QTS-37261: allucent_notes_20251230_164549: Jason Johnston on 2025-11-11 17:11: John owes 11/11 update / John Capriotti on 2025-12-30T15:31:24.348Z: Actualizing ROJ: DOAS delivered to QAE yard on 10/2 - technically have it just not delivered to the site from QAE yard until I can confirm set date / allucent_notes_20251111_182405: Jason Johnston on 2025-11-11 17:11: John owes 11/11 update / allucent_notes_20251118_192630: Jason Johnston on 2025-11-11 17:11: John owes 11/11 update / allucent_notes_20251202_153722: Jason Johnston on 2025-11-11 17:11: John owes 11/11 update / allucent_notes_20251209_203830: Jason Johnston on 2025-11-11 17:11: John owes 11/11 update / allucent_notes_20251216_165335: Jason Johnston on 2025-11-11 17:11: John owes 11/11 update / allucent_notes: 2025-11-11 17:11 - User: Jason Johnston - Date Added: 2025-11-11 17:11 - Note: John owes 11/11 update / 2025-12-30T15:31:24.348Z - User: John Capriotti - Date Added: 2025-12-30T15:31:24.348Z - Note: Actualizing ROJ: DOAS delivered to QAE yard on 10/2 - t
- QTS-37271: allucent_notes_20251230_164549: Jason Johnston on 2025-11-11 17:11: John owes 11/11 update / John Capriotti on 2025-12-30T15:31:30.446Z: Actualizing ROJ: DOAS delivered to QAE yard on 10/2 - technically have it just not delivered to the site from QAE yard until I can confirm set date / allucent_notes_20251111_182405: Jason Johnston on 2025-11-11 17:11: John owes 11/11 update / allucent_notes_20251118_192630: Jason Johnston on 2025-11-11 17:11: John owes 11/11 update / allucent_notes_20251202_153722: Jason Johnston on 2025-11-11 17:11: John owes 11/11 update / allucent_notes_20251209_203830: Jason Johnston on 2025-11-11 17:11: John owes 11/11 update / allucent_notes_20251216_165335: Jason Johnston on 2025-11-11 17:11: John owes 11/11 update / allucent_notes: 2025-11-11 17:11 - User: Jason Johnston - Date Added: 2025-11-11 17:11 - Note: John owes 11/11 update / 2025-12-30T15:31:30.446Z - User: John Capriotti - Date Added: 2025-12-30T15:31:30.446Z - Note: Actualizing ROJ: DOAS delivered to QAE yard on 10/2 - t
- QTS-37061: allucent_notes_20251230_164549: John Capriotti on 2025-12-30 10:50: CRAH Units are available in QTS warehouse, but will be delivered when we are going to set them. **I will press for updated dates on these, moving out as I work on getting estimated set dates. / Ultimately, I, John Capriotti (OFCI), need an update from the Subs/Supers as to when we intend to set them so I can schedule the delivery to support those set dates. / allucent_notes: 2025-12-30 10:50 - User: John Capriotti - Date Added: 2025-12-30 10:50 - Note: CRAH Units are available in QTS warehouse, but will be delivered when we are going to set them. **I will press for updated dates on these, moving out as I work on getting estim
- QTS-37071: allucent_notes_20251230_164549: John Capriotti on 2025-12-30 10:50: CRAH Units are available in QTS warehouse, but will be delivered when we are going to set them. **I will press for updated dates on these, moving out as I work on getting estimated set dates. / Ultimately, I, John Capriotti (OFCI), need an update from the Subs/Supers as to when we intend to set them so I can schedule the delivery to support those set dates. / allucent_notes: 2025-12-30 10:50 - User: John Capriotti - Date Added: 2025-12-30 10:50 - Note: CRAH Units are available in QTS warehouse, but will be delivered when we are going to set them. **I will press for updated dates on these, moving out as I work on getting estim
- QTS-37081: allucent_notes_20251230_164549: John Capriotti on 2025-12-30 10:50: CRAH Units are available in QTS warehouse, but will be delivered when we are going to set them. **I will press for updated dates on these, moving out as I work on getting estimated set dates. / Ultimately, I, John Capriotti (OFCI), need an update from the Subs/Supers as to when we intend to set them so I can schedule the delivery to support those set dates. / allucent_notes: 2025-12-30 10:50 - User: John Capriotti - Date Added: 2025-12-30 10:50 - Note: CRAH Units are available in QTS warehouse, but will be delivered when we are going to set them. **I will press for updated dates on these, moving out as I work on getting estim
- QTS-37091: allucent_notes_20251230_164549: John Capriotti on 2025-12-30 10:50: CRAH Units are available in QTS warehouse, but will be delivered when we are going to set them. **I will press for updated dates on these, moving out as I work on getting estimated set dates. / Ultimately, I, John Capriotti (OFCI), need an update from the Subs/Supers as to when we intend to set them so I can schedule the delivery to support those set dates. / allucent_notes: 2025-12-30 10:50 - User: John Capriotti - Date Added: 2025-12-30 10:50 - Note: CRAH Units are available in QTS warehouse, but will be delivered when we are going to set them. **I will press for updated dates on these, moving out as I work on getting estim
- QTS-36781: allucent_notes_20251230_164549: John Capriotti on 2025-12-30 10:50: CRAH Units are available in QTS warehouse, but will be delivered when we are going to set them. **I will press for updated dates on these, moving out as I work on getting estimated set dates. / Ultimately, I, John Capriotti (OFCI), need an update from the Subs/Supers as to when we intend to set them so I can schedule the delivery to support those set dates. / allucent_notes: 2025-12-30 10:50 - User: John Capriotti - Date Added: 2025-12-30 10:50 - Note: CRAH Units are available in QTS warehouse, but will be delivered when we are going to set them. **I will press for updated dates on these, moving out as I work on getting estim
- QTS-36791: allucent_notes_20251230_164549: John Capriotti on 2025-12-30 10:50: CRAH Units are available in QTS warehouse, but will be delivered when we are going to set them. **I will press for updated dates on these, moving out as I work on getting estimated set dates. / Ultimately, I, John Capriotti (OFCI), need an update from the Subs/Supers as to when we intend to set them so I can schedule the delivery to support those set dates. / allucent_notes: 2025-12-30 10:50 - User: John Capriotti - Date Added: 2025-12-30 10:50 - Note: CRAH Units are available in QTS warehouse, but will be delivered when we are going to set them. **I will press for updated dates on these, moving out as I work on getting estim
- QTS-36801: allucent_notes_20251230_164549: John Capriotti on 2025-12-30 10:50: CRAH Units are available in QTS warehouse, but will be delivered when we are going to set them. **I will press for updated dates on these, moving out as I work on getting estimated set dates. / Ultimately, I, John Capriotti (OFCI), need an update from the Subs/Supers as to when we intend to set them so I can schedule the delivery to support those set dates. / allucent_notes: 2025-12-30 10:50 - User: John Capriotti - Date Added: 2025-12-30 10:50 - Note: CRAH Units are available in QTS warehouse, but will be delivered when we are going to set them. **I will press for updated dates on these, moving out as I work on getting estim
- QTS-36811: allucent_notes_20251230_164549: John Capriotti on 2025-12-30 10:50: CRAH Units are available in QTS warehouse, but will be delivered when we are going to set them. **I will press for updated dates on these, moving out as I work on getting estimated set dates. / Ultimately, I, John Capriotti (OFCI), need an update from the Subs/Supers as to when we intend to set them so I can schedule the delivery to support those set dates. / allucent_notes: 2025-12-30 10:50 - User: John Capriotti - Date Added: 2025-12-30 10:50 - Note: CRAH Units are available in QTS warehouse, but will be delivered when we are going to set them. **I will press for updated dates on these, moving out as I work on getting estim
- QTS-36821: allucent_notes_20251230_164549: John Capriotti on 2025-12-30 10:51: CRAH Units are available in QTS warehouse, but will be delivered when we are going to set them. **I will press for updated dates on these, moving out as I work on getting estimated set dates. / Ultimately, I, John Capriotti (OFCI), need an update from the Subs/Supers as to when we intend to set them so I can schedule the delivery to support those set dates. / allucent_notes: 2025-12-30 10:51 - User: John Capriotti - Date Added: 2025-12-30 10:51 - Note: CRAH Units are available in QTS warehouse, but will be delivered when we are going to set them. **I will press for updated dates on these, moving out as I work on getting estim
- QTS-36831: allucent_notes_20251230_164549: John Capriotti on 2025-12-30 10:51: CRAH Units are available in QTS warehouse, but will be delivered when we are going to set them. **I will press for updated dates on these, moving out as I work on getting estimated set dates. / Ultimately, I, John Capriotti (OFCI), need an update from the Subs/Supers as to when we intend to set them so I can schedule the delivery to support those set dates. / allucent_notes: 2025-12-30 10:51 - User: John Capriotti - Date Added: 2025-12-30 10:51 - Note: CRAH Units are available in QTS warehouse, but will be delivered when we are going to set them. **I will press for updated dates on these, moving out as I work on getting estim
- QTS-36841: allucent_notes_20251230_164549: John Capriotti on 2025-12-30 10:51: CRAH Units are available in QTS warehouse, but will be delivered when we are going to set them. **I will press for updated dates on these, moving out as I work on getting estimated set dates. / Ultimately, I, John Capriotti (OFCI), need an update from the Subs/Supers as to when we intend to set them so I can schedule the delivery to support those set dates. / allucent_notes: 2025-12-30 10:51 - User: John Capriotti - Date Added: 2025-12-30 10:51 - Note: CRAH Units are available in QTS warehouse, but will be delivered when we are going to set them. **I will press for updated dates on these, moving out as I work on getting estim
- QTS-36851: allucent_notes_20251230_164549: John Capriotti on 2025-12-30 10:51: CRAH Units are available in QTS warehouse, but will be delivered when we are going to set them. **I will press for updated dates on these, moving out as I work on getting estimated set dates. / Ultimately, I, John Capriotti (OFCI), need an update from the Subs/Supers as to when we intend to set them so I can schedule the delivery to support those set dates. / allucent_notes: 2025-12-30 10:51 - User: John Capriotti - Date Added: 2025-12-30 10:51 - Note: CRAH Units are available in QTS warehouse, but will be delivered when we are going to set them. **I will press for updated dates on these, moving out as I work on getting estim
- QTS-36861: allucent_notes_20251230_164549: John Capriotti on 2025-12-30 10:51: CRAH Units are available in QTS warehouse, but will be delivered when we are going to set them. **I will press for updated dates on these, moving out as I work on getting estimated set dates. / Ultimately, I, John Capriotti (OFCI), need an update from the Subs/Supers as to when we intend to set them so I can schedule the delivery to support those set dates. / allucent_notes: 2025-12-30 10:51 - User: John Capriotti - Date Added: 2025-12-30 10:51 - Note: CRAH Units are available in QTS warehouse, but will be delivered when we are going to set them. **I will press for updated dates on these, moving out as I work on getting estim
- QTS-36871: allucent_notes_20251230_164549: John Capriotti on 2025-12-30 10:51: CRAH Units are available in QTS warehouse, but will be delivered when we are going to set them. **I will press for updated dates on these, moving out as I work on getting estimated set dates. / Ultimately, I, John Capriotti (OFCI), need an update from the Subs/Supers as to when we intend to set them so I can schedule the delivery to support those set dates. / allucent_notes: 2025-12-30 10:51 - User: John Capriotti - Date Added: 2025-12-30 10:51 - Note: CRAH Units are available in QTS warehouse, but will be delivered when we are going to set them. **I will press for updated dates on these, moving out as I work on getting estim
- QTS-36881: allucent_notes_20251230_164549: John Capriotti on 2025-12-30 10:51: CRAH Units are available in QTS warehouse, but will be delivered when we are going to set them. **I will press for updated dates on these, moving out as I work on getting estimated set dates. / Ultimately, I, John Capriotti (OFCI), need an update from the Subs/Supers as to when we intend to set them so I can schedule the delivery to support those set dates. / allucent_notes: 2025-12-30 10:51 - User: John Capriotti - Date Added: 2025-12-30 10:51 - Note: CRAH Units are available in QTS warehouse, but will be delivered when we are going to set them. **I will press for updated dates on these, moving out as I work on getting estim
- QTS-36891: allucent_notes_20251230_164549: John Capriotti on 2025-12-30 10:51: CRAH Units are available in QTS warehouse, but will be delivered when we are going to set them. **I will press for updated dates on these, moving out as I work on getting estimated set dates. / Ultimately, I, John Capriotti (OFCI), need an update from the Subs/Supers as to when we intend to set them so I can schedule the delivery to support those set dates. / allucent_notes: 2025-12-30 10:51 - User: John Capriotti - Date Added: 2025-12-30 10:51 - Note: CRAH Units are available in QTS warehouse, but will be delivered when we are going to set them. **I will press for updated dates on these, moving out as I work on getting estim
- QTS-36901: allucent_notes_20251230_164549: John Capriotti on 2025-12-30 10:51: CRAH Units are available in QTS warehouse, but will be delivered when we are going to set them. **I will press for updated dates on these, moving out as I work on getting estimated set dates. / Ultimately, I, John Capriotti (OFCI), need an update from the Subs/Supers as to when we intend to set them so I can schedule the delivery to support those set dates. / allucent_notes: 2025-12-30 10:51 - User: John Capriotti - Date Added: 2025-12-30 10:51 - Note: CRAH Units are available in QTS warehouse, but will be delivered when we are going to set them. **I will press for updated dates on these, moving out as I work on getting estim
- QTS-36911: allucent_notes_20251230_164549: John Capriotti on 2025-12-30 10:51: CRAH Units are available in QTS warehouse, but will be delivered when we are going to set them. **I will press for updated dates on these, moving out as I work on getting estimated set dates. / Ultimately, I, John Capriotti (OFCI), need an update from the Subs/Supers as to when we intend to set them so I can schedule the delivery to support those set dates. / allucent_notes: 2025-12-30 10:51 - User: John Capriotti - Date Added: 2025-12-30 10:51 - Note: CRAH Units are available in QTS warehouse, but will be delivered when we are going to set them. **I will press for updated dates on these, moving out as I work on getting estim

| ID | WBS | Activity | Duration | Start | Finish | Predecessors | Complete | Remaining | Planned start | Planned finish | Total float | Free float | Constraint | Expected finish | Precon Phase | Project Section-1 | Baseline | Layton Responsible Party | Project Section | Allucent CSI Group |
| --- | --- | --- | --- | --- | --- | --- | --- | --- | --- | --- | --- | --- | --- | --- | --- | --- | --- | --- | --- | --- |
|  | 1 | **A23 Lineup** |  | 2025-02-10 | 2026-03-10 |  |  |  |  |  |  |  |  |  |  |  |  |  |  |  |
| QTS-37281 |  | DH 2300 / A23 Lineup // 2500KVA Padmount XFMR #A23 | 20d | 2025-02-10 A | 2025-10-28 A | QTS-1371 | 100% |  | 2025-12-15 | 2026-01-16 |  |  |  |  | OFCI Procurement | Preconstruction | GMP | Chris Perales | Preconstruction | 01ADMIN |
| QTS-37121 |  | DH 2300 / A23 Lineup // Chiller #1RT40-A23 | 20d | 2025-08-28 A | 2025-09-04 A | QTS-1371 | 100% |  | 2025-08-28 | 2025-09-25 |  |  |  |  | OFCI Procurement | Preconstruction | GMP | Chris Perales | Preconstruction | 01ADMIN |
| QTS-36651 |  | DH 2300 / A23 Lineup // Skid #A23 | 20d | 2025-10-29 A | 2025-12-18 A | QTS-1371 | 100% |  | 2025-10-29 | 2025-11-25 |  |  |  |  | OFCI Procurement | Preconstruction | GMP | Chris Perales | Preconstruction | 01ADMIN |
| QTS-40321 |  | DH 2300 / A23 Lineup // Assembly - SCR #GEN-A23 | 20d | 2025-12-03 A | 2026-03-06 | QTS-1371 |  | 37d | 2025-12-03 | 2026-01-06 | 51d | 0d |  | 2026-03-06 | OFCI Procurement | Preconstruction |  | Chris Perales | Preconstruction | 01ADMIN |
| QTS-40301 |  | DH 2300 / A23 Lineup // Assembly - Tank #GEN-A23 | 20d | 2025-12-15 A | 2026-02-25 | QTS-1371 |  | 30d | 2025-12-15 | 2026-01-16 | 11d | 0d |  | 2026-02-25 | OFCI Procurement | Preconstruction |  | Chris Perales | Preconstruction | 01ADMIN |
| QTS-40311 |  | DH 2300 / A23 Lineup // Assembly - Engine #GEN-A23 | 20d | 2025-12-15 A | 2026-02-26 | QTS-1371 |  | 31d | 2025-12-15 | 2026-01-16 | 10d | 0d |  | 2026-02-26 | OFCI Procurement | Preconstruction |  | Chris Perales | Preconstruction | 01ADMIN |
| QTS-40331 |  | DH 2300 / A23 Lineup // Assembly - Housing #GEN-A23 | 20d | 2025-12-15 A | 2026-02-27 | QTS-1371 |  | 32d | 2025-12-15 | 2026-01-16 | 9d | 0d |  | 2026-02-27 | OFCI Procurement | Preconstruction |  | Chris Perales | Preconstruction | 01ADMIN |
| QTS-36511 |  | DH 2300 / A23 Lineup // 225A MOD #A23-02 (Liquid to Chip Support) | 20d | 2026-02-11 | 2026-03-10 | QTS-1371 |  |  |  |  | 13d | 0d | as late as possible; as late as possible |  | OFCI Procurement | Preconstruction | GMP | Chris Perales | Preconstruction | 01ADMIN |
| QTS-36571 |  | DH 2300 / A23 Lineup // 600A MOD #A23-03 (CRAH Support) | 20d | 2026-02-11 | 2026-03-10 | QTS-1371 |  |  |  |  | 13d | 0d | as late as possible; as late as possible |  | OFCI Procurement | Preconstruction | GMP | Chris Perales | Preconstruction | 01ADMIN |
|  | 2 | **B23 Lineup** |  | 2025-08-28 | 2026-03-10 |  |  |  |  |  |  |  |  |  |  |  |  |  |  |  |
| QTS-37131 |  | DH 2300 / B23 Lineup // Chiller #1RT40-B23 | 20d | 2025-08-28 A | 2025-09-04 A | QTS-1371 | 100% |  | 2025-08-28 | 2025-09-25 |  |  |  |  | OFCI Procurement | Preconstruction | GMP | Chris Perales | Preconstruction | 01ADMIN |
| QTS-36661 |  | DH 2300 / B23 Lineup // Skid #B23 | 20d | 2025-11-04 A | 2025-12-18 A | QTS-1371 | 100% |  | 2025-11-04 | 2025-12-03 |  |  |  |  | OFCI Procurement | Preconstruction | GMP | Chris Perales | Preconstruction | 01ADMIN |
| QTS-40161 |  | DH 2300 / B23 Lineup // Assembly - SCR #GEN-B23 | 20d | 2025-12-03 A | 2026-03-06 | QTS-1371 |  | 37d | 2025-12-03 | 2026-01-06 | 51d | 0d |  | 2026-03-06 | OFCI Procurement | Preconstruction |  | Chris Perales | Preconstruction | 01ADMIN |
| QTS-37291 |  | DH 2300 / B23 Lineup // 2500KVA Padmount XFMR #B23 | 20d | 2025-12-10 A | 2025-12-29 A | QTS-1371 | 100% |  | 2025-12-10 | 2026-01-13 |  |  |  |  | OFCI Procurement | Preconstruction | GMP | Chris Perales | Preconstruction | 01ADMIN |
| QTS-40141 |  | DH 2300 / B23 Lineup // Assembly - Tank #GEN-B23 | 20d | 2025-12-16 A | 2026-02-25 | QTS-1371 |  | 30d | 2025-12-16 | 2026-01-20 | 12d | 0d |  | 2026-02-25 | OFCI Procurement | Preconstruction |  | Chris Perales | Preconstruction | 01ADMIN |
| QTS-40151 |  | DH 2300 / B23 Lineup // Assembly - Engine #GEN-B23 | 20d | 2025-12-16 A | 2026-02-26 | QTS-1371 |  | 31d | 2025-12-16 | 2026-01-20 | 11d | 0d |  | 2026-02-26 | OFCI Procurement | Preconstruction |  | Chris Perales | Preconstruction | 01ADMIN |
| QTS-40171 |  | DH 2300 / B23 Lineup // Assembly - Housing #GEN-B23 | 20d | 2025-12-16 A | 2026-02-27 | QTS-1371 |  | 32d | 2025-12-16 | 2026-01-20 | 10d | 0d |  | 2026-02-27 | OFCI Procurement | Preconstruction |  | Chris Perales | Preconstruction | 01ADMIN |
| QTS-36521 |  | DH 2300 / B23 Lineup // 225A MOD #B23-02 (Liquid to Chip Support) | 20d | 2026-02-11 | 2026-03-10 | QTS-1371 |  |  |  |  | 13d | 0d | as late as possible; as late as possible |  | OFCI Procurement | Preconstruction | GMP | Chris Perales | Preconstruction | 01ADMIN |
| QTS-36581 |  | DH 2300 / B23 Lineup // 600A MOD #B23-03 (CRAH Support) | 20d | 2026-02-11 | 2026-03-10 | QTS-1371 |  |  |  |  | 13d | 0d | as late as possible; as late as possible |  | OFCI Procurement | Preconstruction | GMP | Chris Perales | Preconstruction | 01ADMIN |
|  | 3 | **C23 Lineup** |  | 2025-08-28 | 2026-03-10 |  |  |  |  |  |  |  |  |  |  |  |  |  |  |  |
| QTS-37141 |  | DH 2300 / C23 Lineup // Chiller #1RT40-C23 | 20d | 2025-08-28 A | 2025-09-04 A | QTS-1371 | 100% |  | 2025-08-28 | 2025-09-25 |  |  |  |  | OFCI Procurement | Preconstruction | GMP | Chris Perales | Preconstruction | 01ADMIN |
| QTS-36671 |  | DH 2300 / C23 Lineup // Skid #C23 | 20d | 2025-11-12 A | 2025-12-18 A | QTS-1371 | 100% |  | 2025-11-10 | 2025-12-09 |  |  |  |  | OFCI Procurement | Preconstruction | GMP | Chris Perales | Preconstruction | 01ADMIN |
| QTS-40001 |  | DH 2300 / C23 Lineup // Assembly - SCR #GEN-C23 | 20d | 2025-12-03 A | 2026-03-06 | QTS-1371 |  | 37d | 2025-12-03 | 2026-01-06 | 51d | 0d |  | 2026-03-06 | OFCI Procurement | Preconstruction |  | Chris Perales | Preconstruction | 01ADMIN |
| QTS-37301 |  | DH 2300 / C23 Lineup // 2500KVA Padmount XFMR #C23 | 20d | 2025-12-10 A | 2026-01-05 A | QTS-1371 | 100% |  | 2025-12-10 | 2026-01-13 |  |  |  |  | OFCI Procurement | Preconstruction | GMP | Chris Perales | Preconstruction | 01ADMIN |
| QTS-39991 |  | DH 2300 / C23 Lineup // Assembly - Engine #GEN-C23 | 20d | 2025-12-17 A | 2026-03-03 | QTS-1371 |  | 34d | 2025-12-17 | 2026-01-21 | 8d | 0d |  | 2026-03-03 | OFCI Procurement | Preconstruction |  | Chris Perales | Preconstruction | 01ADMIN |
| QTS-40011 |  | DH 2300 / C23 Lineup // Assembly - Housing #GEN-C23 | 20d | 2025-12-17 A | 2026-03-03 | QTS-1371 |  | 34d | 2025-12-17 | 2026-01-21 | 8d | 0d |  | 2026-03-03 | OFCI Procurement | Preconstruction |  | Chris Perales | Preconstruction | 01ADMIN |
| QTS-39981 |  | DH 2300 / C23 Lineup // Assembly - Tank #GEN-C23 | 20d | 2025-12-23 A | 2026-03-03 | QTS-1371 |  | 34d | 2025-12-17 | 2026-01-21 | 8d | 0d |  | 2026-03-03 | OFCI Procurement | Preconstruction |  | Chris Perales | Preconstruction | 01ADMIN |
| QTS-36531 |  | DH 2300 / C23 Lineup // 225A MOD #C12-02 (Liquid to Chip Support) | 20d | 2026-02-11 | 2026-03-10 | QTS-1371 |  |  |  |  | 13d | 0d | as late as possible; as late as possible |  | OFCI Procurement | Preconstruction | GMP | Chris Perales | Preconstruction | 01ADMIN |
| QTS-36591 |  | DH 2300 / C23 Lineup // 600A MOD #C23-03 (CRAH Support) | 20d | 2026-02-11 | 2026-03-10 | QTS-1371 |  |  |  |  | 13d | 0d | as late as possible; as late as possible |  | OFCI Procurement | Preconstruction | GMP | Chris Perales | Preconstruction | 01ADMIN |

Notes:
- QTS-37281: allucent_notes_20251202_153722: John Capriotti on 2025-12-02 12:29: Received and set on 10/28 / John Capriotti on 2025-12-02 12:29: Received and set on 10/28 / allucent_notes: 2025-12-02 12:29 - User: John Capriotti - Date Added: 2025-12-02 12:29 - Note: Received and set on 10/28 / 2025-12-02 12:29 - User: John Capriotti - Date Added: 2025-12-02 12:29 - Note: Received and set on 10/28
- QTS-40321: allucent_notes_20251230_164549: John Capriotti on 2025-12-30 08:53: Due to coordination with DC2 and DC9 and constraints on how many deliveries the vendor can deliver each day/week, including Holiday gaps, these are the new dates. / Management is aware, meetings held between all buildings to coordinate and these are the dates I was informed we get for DC1 in order to satisfy the DC2 and DC9 dates. / allucent_notes: 2025-12-30 08:53 - User: John Capriotti - Date Added: 2025-12-30 08:53 - Note: Due to coordination with DC2 and DC9 and constraints on how many deliveries the vendor can deliver each day/week, including Holiday gaps, these are the new dates.Management is
- QTS-40301: allucent_notes_20251230_164549: John Capriotti on 2025-12-30 08:53: Due to coordination with DC2 and DC9 and constraints on how many deliveries the vendor can deliver each day/week, including Holiday gaps, these are the new dates. / Management is aware, meetings held between all buildings to coordinate and these are the dates I was informed we get for DC1 in order to satisfy the DC2 and DC9 dates. / allucent_notes: 2025-12-30 08:53 - User: John Capriotti - Date Added: 2025-12-30 08:53 - Note: Due to coordination with DC2 and DC9 and constraints on how many deliveries the vendor can deliver each day/week, including Holiday gaps, these are the new dates.Management is
- QTS-40311: allucent_notes_20251230_164549: John Capriotti on 2025-12-30 08:53: Due to coordination with DC2 and DC9 and constraints on how many deliveries the vendor can deliver each day/week, including Holiday gaps, these are the new dates. / Management is aware, meetings held between all buildings to coordinate and these are the dates I was informed we get for DC1 in order to satisfy the DC2 and DC9 dates. / allucent_notes: 2025-12-30 08:53 - User: John Capriotti - Date Added: 2025-12-30 08:53 - Note: Due to coordination with DC2 and DC9 and constraints on how many deliveries the vendor can deliver each day/week, including Holiday gaps, these are the new dates.Management is
- QTS-40331: allucent_notes_20251230_164549: John Capriotti on 2025-12-30 08:53: Due to coordination with DC2 and DC9 and constraints on how many deliveries the vendor can deliver each day/week, including Holiday gaps, these are the new dates. / Management is aware, meetings held between all buildings to coordinate and these are the dates I was informed we get for DC1 in order to satisfy the DC2 and DC9 dates. / allucent_notes: 2025-12-30 08:53 - User: John Capriotti - Date Added: 2025-12-30 08:53 - Note: Due to coordination with DC2 and DC9 and constraints on how many deliveries the vendor can deliver each day/week, including Holiday gaps, these are the new dates.Management is
- QTS-40161: allucent_notes_20251230_164549: John Capriotti on 2025-12-30 08:55: Due to coordination with DC2 and DC9 and constraints on how many deliveries the vendor can deliver each day/week, including Holiday gaps, these are the new dates. / Management is aware, meetings held between all buildings to coordinate and these are the dates I was informed we get for DC1 in order to satisfy the DC2 and DC9 dates. / allucent_notes: 2025-12-30 08:55 - User: John Capriotti - Date Added: 2025-12-30 08:55 - Note: Due to coordination with DC2 and DC9 and constraints on how many deliveries the vendor can deliver each day/week, including Holiday gaps, these are the new dates.Management is
- QTS-40141: allucent_notes_20251230_164549: John Capriotti on 2025-12-30 08:55: Due to coordination with DC2 and DC9 and constraints on how many deliveries the vendor can deliver each day/week, including Holiday gaps, these are the new dates. / Management is aware, meetings held between all buildings to coordinate and these are the dates I was informed we get for DC1 in order to satisfy the DC2 and DC9 dates. / allucent_notes: 2025-12-30 08:55 - User: John Capriotti - Date Added: 2025-12-30 08:55 - Note: Due to coordination with DC2 and DC9 and constraints on how many deliveries the vendor can deliver each day/week, including Holiday gaps, these are the new dates.Management is
- QTS-40151: allucent_notes_20251230_164549: John Capriotti on 2025-12-30 08:55: Due to coordination with DC2 and DC9 and constraints on how many deliveries the vendor can deliver each day/week, including Holiday gaps, these are the new dates. / Management is aware, meetings held between all buildings to coordinate and these are the dates I was informed we get for DC1 in order to satisfy the DC2 and DC9 dates. / allucent_notes: 2025-12-30 08:55 - User: John Capriotti - Date Added: 2025-12-30 08:55 - Note: Due to coordination with DC2 and DC9 and constraints on how many deliveries the vendor can deliver each day/week, including Holiday gaps, these are the new dates.Management is
- QTS-40171: allucent_notes_20251230_164549: John Capriotti on 2025-12-30 08:55: Due to coordination with DC2 and DC9 and constraints on how many deliveries the vendor can deliver each day/week, including Holiday gaps, these are the new dates. / Management is aware, meetings held between all buildings to coordinate and these are the dates I was informed we get for DC1 in order to satisfy the DC2 and DC9 dates. / allucent_notes: 2025-12-30 08:55 - User: John Capriotti - Date Added: 2025-12-30 08:55 - Note: Due to coordination with DC2 and DC9 and constraints on how many deliveries the vendor can deliver each day/week, including Holiday gaps, these are the new dates.Management is
- QTS-36671: allucent_notes_20251230_164549: Jason Johnston on 2025-11-11 17:11: John owes 11/11 update / allucent_notes_20251111_182405: Jason Johnston on 2025-11-11 17:11: John owes 11/11 update / allucent_notes_20251118_192630: Jason Johnston on 2025-11-11 17:11: John owes 11/11 update / allucent_notes_20251202_153722: Jason Johnston on 2025-11-11 17:11: John owes 11/11 update / allucent_notes_20251209_203830: Jason Johnston on 2025-11-11 17:11: John owes 11/11 update / allucent_notes_20251216_165335: Jason Johnston on 2025-11-11 17:11: John owes 11/11 update / allucent_notes: 2025-11-11 17:11 - User: Jason Johnston - Date Added: 2025-11-11 17:11 - Note: John owes 11/11 update
- QTS-40001: allucent_notes_20251230_164549: John Capriotti on 2025-12-30 09:49: Due to coordination with DC2 and DC9 and constraints on how many deliveries the vendor can deliver each day/week, including Holiday gaps, these are the new dates. / Management is aware, meetings held between all buildings to coordinate and these are the dates I was informed we get for DC1 in order to satisfy the DC2 and DC9 dates. / allucent_notes: 2025-12-30 09:49 - User: John Capriotti - Date Added: 2025-12-30 09:49 - Note: Due to coordination with DC2 and DC9 and constraints on how many deliveries the vendor can deliver each day/week, including Holiday gaps, these are the new dates.Management is
- QTS-37301: allucent_notes_20251230_164549: John Capriotti on 2025-12-30 08:35: Scheduled for delivery on 1/7/2026 with QTS, confirmed with OEG/Sub that they are ready and have crane scheduled to set. / allucent_notes: 2025-12-30 08:35 - User: John Capriotti - Date Added: 2025-12-30 08:35 - Note: Scheduled for delivery on 1/7/2026 with QTS, confirmed with OEG/Sub that they are ready and have crane scheduled to set.
- QTS-39991: allucent_notes_20251230_164549: John Capriotti on 2025-12-30 09:48: Due to coordination with DC2 and DC9 and constraints on how many deliveries the vendor can deliver each day/week, including Holiday gaps, these are the new dates. / Management is aware, meetings held between all buildings to coordinate and these are the dates I was informed we get for DC1 in order to satisfy the DC2 and DC9 dates. / allucent_notes: 2025-12-30 09:48 - User: John Capriotti - Date Added: 2025-12-30 09:48 - Note: Due to coordination with DC2 and DC9 and constraints on how many deliveries the vendor can deliver each day/week, including Holiday gaps, these are the new dates.Management is
- QTS-40011: allucent_notes_20251230_164549: John Capriotti on 2025-12-30 09:48: Due to coordination with DC2 and DC9 and constraints on how many deliveries the vendor can deliver each day/week, including Holiday gaps, these are the new dates. / Management is aware, meetings held between all buildings to coordinate and these are the dates I was informed we get for DC1 in order to satisfy the DC2 and DC9 dates. / allucent_notes: 2025-12-30 09:48 - User: John Capriotti - Date Added: 2025-12-30 09:48 - Note: Due to coordination with DC2 and DC9 and constraints on how many deliveries the vendor can deliver each day/week, including Holiday gaps, these are the new dates.Management is
- QTS-39981: allucent_notes_20251230_164549: John Capriotti on 2025-12-30 09:47: Due to coordination with DC2 and DC9 and constraints on how many deliveries the vendor can deliver each day/week, including Holiday gaps, these are the new dates. / Management is aware, meetings held between all buildings to coordinate and these are the dates I was informed we get for DC1 in order to satisfy the DC2 and DC9 dates. / John Capriotti on 2025-12-30 09:48: Due to coordination with DC2 and DC9 and constraints on how many deliveries the vendor can deliver each day/week, including Holiday gaps, these are the new dates. / Management is aware, meetings held between all buildings to coordinate and these are the dates I was informed we get for DC1 in order to satisfy the DC2 and DC9 dates. / allucent_notes: 2025-12-30 09:47 - User: John Capriotti - Date Added: 2025-12-30 09:47 - Note: Due to coordination with DC2 and DC9 and constraints on how many deliveries the vendor can deliver each day/week, including Holiday gaps, these are the new dates.Management is

| ID | WBS | Activity | Duration | Start | Finish | Predecessors | Complete | Remaining | Planned start | Planned finish | Total float | Free float | Constraint | Expected finish | Precon Phase | Project Section-1 | Baseline | Layton Responsible Party | Project Section | Allucent CSI Group |
| --- | --- | --- | --- | --- | --- | --- | --- | --- | --- | --- | --- | --- | --- | --- | --- | --- | --- | --- | --- | --- |
|  | 4 | **D23 Lineup** |  | 2025-08-28 | 2026-03-12 |  |  |  |  |  |  |  |  |  |  |  |  |  |  |  |
| QTS-37151 |  | DH 2300 / D23 Lineup // Chiller #1RT40-D23 | 20d | 2025-08-28 A | 2025-09-05 A | QTS-1371 | 100% |  | 2025-08-28 | 2025-09-25 |  |  |  |  | OFCI Procurement | Preconstruction | GMP | Chris Perales | Preconstruction | 01ADMIN |
| QTS-36681 |  | DH 2300 / D23 Lineup // Skid #D23 | 20d | 2025-11-14 A | 2025-12-18 A | QTS-1371 | 100% |  | 2025-11-14 | 2025-12-15 |  |  |  |  | OFCI Procurement | Preconstruction | GMP | Chris Perales | Preconstruction | 01ADMIN |
| QTS-40521 |  | DH 2300 / D23 Lineup // Assembly - SCR #GEN-D23 | 20d | 2025-12-03 A | 2026-03-12 | QTS-1371 |  | 41d | 2025-12-03 | 2026-01-06 | 47d | 0d |  | 2026-03-12 | OFCI Procurement | Preconstruction |  | Chris Perales | Preconstruction | 01ADMIN |
| QTS-37311 |  | DH 2300 / D23 Lineup // 2500KVA Padmount XFMR #D23 | 20d | 2025-12-10 A | 2026-01-05 A | QTS-1371 | 100% |  | 2025-12-10 | 2026-01-13 |  |  |  |  | OFCI Procurement | Preconstruction | GMP | Chris Perales | Preconstruction | 01ADMIN |
| QTS-40501 |  | DH 2300 / D23 Lineup // Assembly - Tank #GEN-D23 | 20d | 2025-12-18 A | 2026-03-05 | QTS-1371 |  | 36d | 2025-12-18 | 2026-01-22 | 7d | 0d |  | 2026-03-05 | OFCI Procurement | Preconstruction |  | Chris Perales | Preconstruction | 01ADMIN |
| QTS-40511 |  | DH 2300 / D23 Lineup // Assembly - Engine #GEN-D23 | 20d | 2025-12-18 A | 2026-03-04 | QTS-1371 |  | 35d | 2025-12-18 | 2026-01-22 | 8d | 0d |  | 2026-03-04 | OFCI Procurement | Preconstruction |  | Chris Perales | Preconstruction | 01ADMIN |
| QTS-40531 |  | DH 2300 / D23 Lineup // Assembly - Housing #GEN-D23 | 20d | 2025-12-18 A | 2026-03-05 | QTS-1371 |  | 36d | 2025-12-18 | 2026-01-22 | 7d | 0d |  | 2026-03-05 | OFCI Procurement | Preconstruction |  | Chris Perales | Preconstruction | 01ADMIN |
| QTS-36541 |  | DH 2300 / D23 Lineup // 225A MOD #D23-02 (Liquid to Chip Support) | 20d | 2026-02-11 | 2026-03-10 | QTS-1371 |  |  |  |  | 13d | 0d | as late as possible; as late as possible |  | OFCI Procurement | Preconstruction | GMP | Chris Perales | Preconstruction | 01ADMIN |
| QTS-36601 |  | DH 2300 / D23 Lineup // 600A MOD #D23-03 (CRAH Support) | 20d | 2026-02-11 | 2026-03-10 | QTS-1371 |  |  |  |  | 13d | 0d | as late as possible; as late as possible |  | OFCI Procurement | Preconstruction | GMP | Chris Perales | Preconstruction | 01ADMIN |
|  | 5 | **E23 Lineup** |  | 2025-08-28 | 2026-03-20 |  |  |  |  |  |  |  |  |  |  |  |  |  |  |  |
| QTS-37161 |  | DH 2300 / E23 Lineup // Chiller #1RT40-E23 | 20d | 2025-08-28 A | 2025-09-05 A | QTS-1371 | 100% |  | 2025-08-28 | 2025-09-25 |  |  |  |  | OFCI Procurement | Preconstruction | GMP | Chris Perales | Preconstruction | 01ADMIN |
| QTS-40721 |  | DH 2300 / E23 Lineup // Assembly - SCR #GEN-E23 | 20d | 2025-12-03 A | 2026-03-12 | QTS-1371 |  | 41d | 2025-12-03 | 2026-01-06 | 47d | 0d |  | 2026-03-12 | OFCI Procurement | Preconstruction |  | Chris Perales | Preconstruction | 01ADMIN |
| QTS-37321 |  | DH 2300 / E23 Lineup // 2500KVA Padmount XFMR #E23 | 20d | 2025-12-10 A | 2026-01-05 A | QTS-1371 | 100% |  | 2025-12-10 | 2026-01-13 |  |  |  |  | OFCI Procurement | Preconstruction | GMP | Chris Perales | Preconstruction | 01ADMIN |
| QTS-40731 |  | DH 2300 / E23 Lineup // Assembly - Housing #GEN-E23 | 20d | 2025-12-18 A | 2026-03-06 | QTS-1371 |  | 37d | 2025-12-19 | 2026-01-23 | 7d | 0d |  | 2026-03-06 | OFCI Procurement | Preconstruction |  | Chris Perales | Preconstruction | 01ADMIN |
| QTS-40711 |  | DH 2300 / E23 Lineup // Assembly - Engine #GEN-E23 | 20d | 2025-12-19 A | 2026-03-06 | QTS-1371 |  | 37d | 2025-12-19 | 2026-01-23 | 7d | 0d |  | 2026-03-06 | OFCI Procurement | Preconstruction |  | Chris Perales | Preconstruction | 01ADMIN |
| QTS-40701 |  | DH 2300 / E23 Lineup // Assembly - Tank #GEN-E23 | 20d | 2025-12-22 A | 2026-03-06 | QTS-1371 |  | 37d | 2025-12-19 | 2026-01-23 | 7d | 0d |  | 2026-03-06 | OFCI Procurement | Preconstruction |  | Chris Perales | Preconstruction | 01ADMIN |
| QTS-36551 |  | DH 2300 / E23 Lineup // 225A MOD #E23-02 (Liquid to Chip Support) | 20d | 2026-02-11 | 2026-03-10 | QTS-1371 |  |  |  |  | 13d | 0d | as late as possible; as late as possible |  | OFCI Procurement | Preconstruction | GMP | Chris Perales | Preconstruction | 01ADMIN |
| QTS-36611 |  | DH 2300 / E23 Lineup // 600A MOD #E23-03 (CRAH Support) | 20d | 2026-02-11 | 2026-03-10 | QTS-1371 |  |  |  |  | 13d | 0d | as late as possible; as late as possible |  | OFCI Procurement | Preconstruction | GMP | Chris Perales | Preconstruction | 01ADMIN |
| QTS-36691 |  | DH 2300 / E23 Lineup // Skid #E23 | 20d | 2026-02-23 | 2026-03-20 | QTS-1371 |  |  |  |  | 10d | 0d | as late as possible; as late as possible |  | OFCI Procurement | Preconstruction | GMP | Chris Perales | Preconstruction | 01ADMIN |
|  | 6 | **F23 Lineup** |  | 2025-08-28 | 2026-03-26 |  |  |  |  |  |  |  |  |  |  |  |  |  |  |  |
| QTS-37171 |  | DH 2300 / F23 Lineup // Chiller #1RT40-F23 | 20d | 2025-08-28 A | 2025-09-05 A | QTS-1371 | 100% |  | 2025-08-28 | 2025-09-25 |  |  |  |  | OFCI Procurement | Preconstruction | GMP | Chris Perales | Preconstruction | 01ADMIN |
| QTS-40921 |  | DH 2300 / F23 Lineup // Assembly - SCR #GEN-F23 | 20d | 2025-12-03 A | 2026-03-12 | QTS-1371 |  | 41d | 2025-12-03 | 2026-01-06 | 47d | 0d |  | 2026-03-12 | OFCI Procurement | Preconstruction |  | Chris Perales | Preconstruction | 01ADMIN |
| QTS-37331 |  | DH 2300 / F23 Lineup // 2500KVA Padmount XFMR #F23 | 20d | 2025-12-10 A | 2025-12-29 A | QTS-1371 | 100% |  | 2025-12-10 | 2026-01-13 |  |  |  |  | OFCI Procurement | Preconstruction | GMP | Chris Perales | Preconstruction | 01ADMIN |
| QTS-40901 |  | DH 2300 / F23 Lineup // Assembly - Tank #GEN-F23 | 20d | 2025-12-17 A | 2026-03-03 | QTS-1371 |  | 34d | 2025-12-22 | 2026-01-26 | 11d | 0d |  | 2026-03-03 | OFCI Procurement | Preconstruction |  | Chris Perales | Preconstruction | 01ADMIN |
| QTS-40911 |  | DH 2300 / F23 Lineup // Assembly - Engine #GEN-F23 | 20d | 2025-12-17 A | 2026-03-04 | QTS-1371 |  | 35d | 2025-12-22 | 2026-01-26 | 10d | 0d |  | 2026-03-04 | OFCI Procurement | Preconstruction |  | Chris Perales | Preconstruction | 01ADMIN |
| QTS-40931 |  | DH 2300 / F23 Lineup // Assembly - Housing #GEN-F23 | 20d | 2025-12-17 A | 2026-03-05 | QTS-1371 |  | 36d | 2025-12-22 | 2026-01-26 | 9d | 0d |  | 2026-03-05 | OFCI Procurement | Preconstruction |  | Chris Perales | Preconstruction | 01ADMIN |
| QTS-36561 |  | DH 2300 / F23 Lineup // 225A MOD #F23-02 (Liquid to Chip Support) | 20d | 2026-02-11 | 2026-03-10 | QTS-1371 |  |  |  |  | 13d | 0d | as late as possible; as late as possible |  | OFCI Procurement | Preconstruction | GMP | Chris Perales | Preconstruction | 01ADMIN |
| QTS-36621 |  | DH 2300 / F23 Lineup // 600A MOD #F23-03 (CRAH Support) | 20d | 2026-02-11 | 2026-03-10 | QTS-1371 |  |  |  |  | 13d | 0d | as late as possible; as late as possible |  | OFCI Procurement | Preconstruction | GMP | Chris Perales | Preconstruction | 01ADMIN |
| QTS-36701 |  | DH 2300 / F23 Lineup // Skid #F23 | 20d | 2026-02-27 | 2026-03-26 | QTS-1371 |  |  |  |  | 10d | 0d | as late as possible; as late as possible |  | OFCI Procurement | Preconstruction | GMP | Chris Perales | Preconstruction | 01ADMIN |

Notes:
- QTS-40521: allucent_notes_20251230_164549: John Capriotti on 2025-12-30 09:51: Due to coordination with DC2 and DC9 and constraints on how many deliveries the vendor can deliver each day/week, including Holiday gaps, these are the new dates. / Management is aware, meetings held between all buildings to coordinate and these are the dates I was informed we get for DC1 in order to satisfy the DC2 and DC9 dates. / allucent_notes: 2025-12-30 09:51 - User: John Capriotti - Date Added: 2025-12-30 09:51 - Note: Due to coordination with DC2 and DC9 and constraints on how many deliveries the vendor can deliver each day/week, including Holiday gaps, these are the new dates.Management is
- QTS-37311: allucent_notes_20251230_164549: John Capriotti on 2025-12-30 08:36: Scheduled for delivery on 1/7/2026 with QTS, confirmed with OEG/Sub that they are ready and have crane scheduled to set. / allucent_notes: 2025-12-30 08:36 - User: John Capriotti - Date Added: 2025-12-30 08:36 - Note: Scheduled for delivery on 1/7/2026 with QTS, confirmed with OEG/Sub that they are ready and have crane scheduled to set.
- QTS-40501: allucent_notes_20251230_164549: John Capriotti on 2025-12-30 09:51: Due to coordination with DC2 and DC9 and constraints on how many deliveries the vendor can deliver each day/week, including Holiday gaps, these are the new dates. / Management is aware, meetings held between all buildings to coordinate and these are the dates I was informed we get for DC1 in order to satisfy the DC2 and DC9 dates. / allucent_notes: 2025-12-30 09:51 - User: John Capriotti - Date Added: 2025-12-30 09:51 - Note: Due to coordination with DC2 and DC9 and constraints on how many deliveries the vendor can deliver each day/week, including Holiday gaps, these are the new dates.Management is
- QTS-40511: allucent_notes_20251230_164549: John Capriotti on 2025-12-30 09:51: Due to coordination with DC2 and DC9 and constraints on how many deliveries the vendor can deliver each day/week, including Holiday gaps, these are the new dates. / Management is aware, meetings held between all buildings to coordinate and these are the dates I was informed we get for DC1 in order to satisfy the DC2 and DC9 dates. / allucent_notes: 2025-12-30 09:51 - User: John Capriotti - Date Added: 2025-12-30 09:51 - Note: Due to coordination with DC2 and DC9 and constraints on how many deliveries the vendor can deliver each day/week, including Holiday gaps, these are the new dates.Management is
- QTS-40531: allucent_notes_20251230_164549: John Capriotti on 2025-12-30 09:51: Due to coordination with DC2 and DC9 and constraints on how many deliveries the vendor can deliver each day/week, including Holiday gaps, these are the new dates. / Management is aware, meetings held between all buildings to coordinate and these are the dates I was informed we get for DC1 in order to satisfy the DC2 and DC9 dates. / allucent_notes: 2025-12-30 09:51 - User: John Capriotti - Date Added: 2025-12-30 09:51 - Note: Due to coordination with DC2 and DC9 and constraints on how many deliveries the vendor can deliver each day/week, including Holiday gaps, these are the new dates.Management is
- QTS-40721: allucent_notes_20251230_164549: John Capriotti on 2025-12-30 09:55: Due to coordination with DC2 and DC9 and constraints on how many deliveries the vendor can deliver each day/week, including Holiday gaps, these are the new dates. / Management is aware, meetings held between all buildings to coordinate and these are the dates I was informed we get for DC1 in order to satisfy the DC2 and DC9 dates. / allucent_notes: 2025-12-30 09:55 - User: John Capriotti - Date Added: 2025-12-30 09:55 - Note: Due to coordination with DC2 and DC9 and constraints on how many deliveries the vendor can deliver each day/week, including Holiday gaps, these are the new dates.Management is
- QTS-37321: allucent_notes_20251230_164549: John Capriotti on 2025-12-30 08:36: Scheduled for delivery on 1/7/2026 with QTS, confirmed with OEG/Sub that they are ready and have crane scheduled to set. / allucent_notes: 2025-12-30 08:36 - User: John Capriotti - Date Added: 2025-12-30 08:36 - Note: Scheduled for delivery on 1/7/2026 with QTS, confirmed with OEG/Sub that they are ready and have crane scheduled to set.
- QTS-40731: allucent_notes_20251230_164549: John Capriotti on 2025-12-30 09:55: Due to coordination with DC2 and DC9 and constraints on how many deliveries the vendor can deliver each day/week, including Holiday gaps, these are the new dates. / Management is aware, meetings held between all buildings to coordinate and these are the dates I was informed we get for DC1 in order to satisfy the DC2 and DC9 dates. / allucent_notes: 2025-12-30 09:55 - User: John Capriotti - Date Added: 2025-12-30 09:55 - Note: Due to coordination with DC2 and DC9 and constraints on how many deliveries the vendor can deliver each day/week, including Holiday gaps, these are the new dates.Management is
- QTS-40711: allucent_notes_20251230_164549: John Capriotti on 2025-12-30 09:54: Due to coordination with DC2 and DC9 and constraints on how many deliveries the vendor can deliver each day/week, including Holiday gaps, these are the new dates. / Management is aware, meetings held between all buildings to coordinate and these are the dates I was informed we get for DC1 in order to satisfy the DC2 and DC9 dates. / allucent_notes: 2025-12-30 09:54 - User: John Capriotti - Date Added: 2025-12-30 09:54 - Note: Due to coordination with DC2 and DC9 and constraints on how many deliveries the vendor can deliver each day/week, including Holiday gaps, these are the new dates.Management is
- QTS-40701: allucent_notes_20251230_164549: John Capriotti on 2025-12-30 09:54: Due to coordination with DC2 and DC9 and constraints on how many deliveries the vendor can deliver each day/week, including Holiday gaps, these are the new dates. / Management is aware, meetings held between all buildings to coordinate and these are the dates I was informed we get for DC1 in order to satisfy the DC2 and DC9 dates. / allucent_notes: 2025-12-30 09:54 - User: John Capriotti - Date Added: 2025-12-30 09:54 - Note: Due to coordination with DC2 and DC9 and constraints on how many deliveries the vendor can deliver each day/week, including Holiday gaps, these are the new dates.Management is
- QTS-40921: allucent_notes_20251230_164549: John Capriotti on 2025-12-30 09:56: Due to coordination with DC2 and DC9 and constraints on how many deliveries the vendor can deliver each day/week, including Holiday gaps, these are the new dates. / Management is aware, meetings held between all buildings to coordinate and these are the dates I was informed we get for DC1 in order to satisfy the DC2 and DC9 dates. / allucent_notes: 2025-12-30 09:56 - User: John Capriotti - Date Added: 2025-12-30 09:56 - Note: Due to coordination with DC2 and DC9 and constraints on how many deliveries the vendor can deliver each day/week, including Holiday gaps, these are the new dates.Management is
- QTS-40901: allucent_notes_20251230_164549: John Capriotti on 2025-12-30 09:56: Due to coordination with DC2 and DC9 and constraints on how many deliveries the vendor can deliver each day/week, including Holiday gaps, these are the new dates. / Management is aware, meetings held between all buildings to coordinate and these are the dates I was informed we get for DC1 in order to satisfy the DC2 and DC9 dates. / allucent_notes: 2025-12-30 09:56 - User: John Capriotti - Date Added: 2025-12-30 09:56 - Note: Due to coordination with DC2 and DC9 and constraints on how many deliveries the vendor can deliver each day/week, including Holiday gaps, these are the new dates.Management is
- QTS-40911: allucent_notes_20251230_164549: John Capriotti on 2025-12-30 09:56: Due to coordination with DC2 and DC9 and constraints on how many deliveries the vendor can deliver each day/week, including Holiday gaps, these are the new dates. / Management is aware, meetings held between all buildings to coordinate and these are the dates I was informed we get for DC1 in order to satisfy the DC2 and DC9 dates. / allucent_notes: 2025-12-30 09:56 - User: John Capriotti - Date Added: 2025-12-30 09:56 - Note: Due to coordination with DC2 and DC9 and constraints on how many deliveries the vendor can deliver each day/week, including Holiday gaps, these are the new dates.Management is
- QTS-40931: allucent_notes_20251230_164549: John Capriotti on 2025-12-30 09:56: Due to coordination with DC2 and DC9 and constraints on how many deliveries the vendor can deliver each day/week, including Holiday gaps, these are the new dates. / Management is aware, meetings held between all buildings to coordinate and these are the dates I was informed we get for DC1 in order to satisfy the DC2 and DC9 dates. / allucent_notes: 2025-12-30 09:56 - User: John Capriotti - Date Added: 2025-12-30 09:56 - Note: Due to coordination with DC2 and DC9 and constraints on how many deliveries the vendor can deliver each day/week, including Holiday gaps, these are the new dates.Management is

| ID | WBS | Activity | Duration | Start | Finish | Predecessors | Complete | Remaining | Planned start | Planned finish | Total float | Free float | Constraint | Expected finish | Precon Phase | Project Section-1 | Baseline | Layton Responsible Party | Project Section | Allucent CSI Group |
| --- | --- | --- | --- | --- | --- | --- | --- | --- | --- | --- | --- | --- | --- | --- | --- | --- | --- | --- | --- | --- |
|  | 9 | **R23 Lineup** |  | 2025-08-28 | 2026-03-12 |  |  |  |  |  |  |  |  |  |  |  |  |  |  |  |
| QTS-37181 |  | DH 2300 / R23 Lineup // Chiller #1RT40-R23 | 20d | 2025-08-28 A | 2025-09-05 A | QTS-1371 | 100% |  | 2025-08-28 | 2025-09-25 |  |  |  |  | OFCI Procurement | Preconstruction | GMP | Chris Perales | Preconstruction | 01ADMIN |
| QTS-37341 |  | DH 2300 / R23 Lineup // 2500KVA Padmount XFMR #R23 | 20d | 2025-11-03 A | 2025-11-03 A | QTS-1371 | 100% |  | 2025-12-10 | 2026-01-13 |  |  |  |  | OFCI Procurement | Preconstruction | GMP | Chris Perales | Preconstruction | 01ADMIN |
| QTS-41121 |  | DH 2300 / R23 Lineup // Assembly - SCR #GEN-R23 | 20d | 2025-12-03 A | 2026-03-12 | QTS-1371 |  | 41d | 2025-12-03 | 2026-01-06 | 47d | 0d |  | 2026-03-12 | OFCI Procurement | Preconstruction |  | Chris Perales | Preconstruction | 01ADMIN |
| QTS-41101 |  | DH 2300 / R23 Lineup // Assembly - Tank #GEN-R23 | 20d | 2025-12-17 A | 2026-03-03 | QTS-1371 |  | 34d | 2025-12-23 | 2026-01-27 | 12d | 0d |  | 2026-03-03 | OFCI Procurement | Preconstruction |  | Chris Perales | Preconstruction | 01ADMIN |
| QTS-41111 |  | DH 2300 / R23 Lineup // Assembly - Engine #GEN-R23 | 20d | 2025-12-17 A | 2026-03-04 | QTS-1371 |  | 35d | 2025-12-23 | 2026-01-27 | 11d | 0d |  | 2026-03-04 | OFCI Procurement | Preconstruction |  | Chris Perales | Preconstruction | 01ADMIN |
| QTS-41131 |  | DH 2300 / R23 Lineup // Assembly - Housing #GEN-R23 | 20d | 2025-12-17 A | 2026-03-05 | QTS-1371 |  | 36d | 2025-12-23 | 2026-01-27 | 10d | 0d |  | 2026-03-05 | OFCI Procurement | Preconstruction |  | Chris Perales | Preconstruction | 01ADMIN |
| QTS-36631 |  | DH 2300 / R23 Lineup // 600A MOD #R23-03 (CRAH Support) | 20d | 2026-02-11 | 2026-03-10 | QTS-1371 |  |  |  |  | 13d | 0d | as late as possible; as late as possible |  | OFCI Procurement | Preconstruction | GMP | Chris Perales | Preconstruction | 01ADMIN |
| QTS-36641 |  | DH 2300 / R23 Lineup // 225A MOD #R23-02 | 20d | 2026-02-11 | 2026-03-10 | QTS-1371 |  |  |  |  | 13d | 0d | as late as possible; as late as possible |  | OFCI Procurement | Preconstruction | GMP | Chris Perales | Preconstruction | 01ADMIN |
|  | 8 | **Data Hall 1300 (Need By Dates)** |  | 2025-09-08 | 2026-03-12 |  |  |  |  |  |  |  |  |  |  |  |  |  |  |  |
| QTS-38101 |  | DH 1300 / DOAS #01 | 20d | 2025-10-14 A | 2025-12-30 A | QTS-1371 | 100% |  | 2025-10-14 | 2025-11-10 |  |  |  |  | OFCI Procurement | Preconstruction | GMP | Chris Perales | Preconstruction | 01ADMIN |
| QTS-38111 |  | DH 1300 / DOAS #02 | 20d | 2025-10-14 A | 2025-12-30 A | QTS-1371 | 100% |  | 2025-10-14 | 2025-11-10 |  |  |  |  | OFCI Procurement | Preconstruction | GMP | Chris Perales | Preconstruction | 01ADMIN |
| QTS-37901 |  | DH 1300 / CRAH #29 (Electrical Gallery) | 20d | 2025-12-18 A | 2026-02-04 | QTS-1371 | 25% | 15d | 2025-12-18 | 2026-01-22 | 41d | 0d |  | 2026-02-04 | OFCI Procurement | Preconstruction | GMP | Chris Perales | Preconstruction | 01ADMIN |
| QTS-37911 |  | DH 1300 / CRAH #30 (Electrical Gallery) | 20d | 2025-12-18 A | 2026-02-04 | QTS-1371 | 25% | 15d | 2025-12-18 | 2026-01-22 | 41d | 0d |  | 2026-02-04 | OFCI Procurement | Preconstruction | GMP | Chris Perales | Preconstruction | 01ADMIN |
| QTS-37921 |  | DH 1300 / CRAH #31 (Electrical Gallery) | 20d | 2025-12-18 A | 2026-02-04 | QTS-1371 | 25% | 15d | 2025-12-18 | 2026-01-22 | 41d | 0d |  | 2026-02-04 | OFCI Procurement | Preconstruction | GMP | Chris Perales | Preconstruction | 01ADMIN |
| QTS-37931 |  | DH 1300 / CRAH #32 (Electrical Gallery) | 20d | 2025-12-18 A | 2026-02-04 | QTS-1371 | 25% | 15d | 2025-12-18 | 2026-01-22 | 41d | 0d |  | 2026-02-04 | OFCI Procurement | Preconstruction | GMP | Chris Perales | Preconstruction | 01ADMIN |
| QTS-37621 |  | DH 1300 / CRAH #01 | 20d | 2026-01-07 A | 2026-02-11 | QTS-1371 |  | 20d | 2026-01-07 | 2026-02-04 | 31d | 0d | as late as possible; as late as possible | 2026-02-04 | OFCI Procurement | Preconstruction | GMP | Chris Perales | Preconstruction | 01ADMIN |
| QTS-37631 |  | DH 1300 / CRAH #02 | 20d | 2026-01-07 A | 2026-02-11 | QTS-1371 |  | 20d | 2026-01-07 | 2026-02-04 | 31d | 0d | as late as possible; as late as possible | 2026-02-04 | OFCI Procurement | Preconstruction | GMP | Chris Perales | Preconstruction | 01ADMIN |
| QTS-37641 |  | DH 1300 / CRAH #03 | 20d | 2026-01-07 A | 2026-02-11 | QTS-1371 |  | 20d | 2026-01-07 | 2026-02-04 | 31d | 0d | as late as possible; as late as possible | 2026-02-04 | OFCI Procurement | Preconstruction | GMP | Chris Perales | Preconstruction | 01ADMIN |
| QTS-37651 |  | DH 1300 / CRAH #04 | 20d | 2026-01-07 A | 2026-02-11 | QTS-1371 |  | 20d | 2026-01-07 | 2026-02-04 | 31d | 0d | as late as possible; as late as possible | 2026-02-04 | OFCI Procurement | Preconstruction | GMP | Chris Perales | Preconstruction | 01ADMIN |
| QTS-37661 |  | DH 1300 / CRAH #05 | 20d | 2026-01-07 A | 2026-02-11 | QTS-1371 |  | 20d | 2026-01-07 | 2026-02-04 | 31d | 0d | as late as possible; as late as possible | 2026-02-04 | OFCI Procurement | Preconstruction | GMP | Chris Perales | Preconstruction | 01ADMIN |
| QTS-37671 |  | DH 1300 / CRAH #06 | 20d | 2026-01-07 A | 2026-02-11 | QTS-1371 |  | 20d | 2026-01-07 | 2026-02-04 | 31d | 0d | as late as possible; as late as possible | 2026-02-04 | OFCI Procurement | Preconstruction | GMP | Chris Perales | Preconstruction | 01ADMIN |
| QTS-37681 |  | DH 1300 / CRAH #07 | 20d | 2026-01-07 A | 2026-02-11 | QTS-1371 |  | 20d | 2026-01-07 | 2026-02-04 | 31d | 0d | as late as possible; as late as possible | 2026-02-04 | OFCI Procurement | Preconstruction | GMP | Chris Perales | Preconstruction | 01ADMIN |
| QTS-37691 |  | DH 1300 / CRAH #08 | 20d | 2026-01-07 A | 2026-02-11 | QTS-1371 |  | 20d | 2026-01-07 | 2026-02-04 | 31d | 0d | as late as possible; as late as possible | 2026-02-04 | OFCI Procurement | Preconstruction | GMP | Chris Perales | Preconstruction | 01ADMIN |
| QTS-37701 |  | DH 1300 / CRAH #09 | 20d | 2026-01-07 A | 2026-02-11 | QTS-1371 |  | 20d | 2026-01-07 | 2026-02-04 | 31d | 0d | as late as possible; as late as possible | 2026-02-04 | OFCI Procurement | Preconstruction | GMP | Chris Perales | Preconstruction | 01ADMIN |
| QTS-37711 |  | DH 1300 / CRAH #10 | 20d | 2026-01-07 A | 2026-02-11 | QTS-1371 |  | 20d | 2026-01-07 | 2026-02-04 | 31d | 0d | as late as possible; as late as possible | 2026-02-04 | OFCI Procurement | Preconstruction | GMP | Chris Perales | Preconstruction | 01ADMIN |
| QTS-37721 |  | DH 1300 / CRAH #11 | 20d | 2026-01-07 A | 2026-02-11 | QTS-1371 |  | 20d | 2026-01-07 | 2026-02-04 | 31d | 0d | as late as possible; as late as possible | 2026-02-04 | OFCI Procurement | Preconstruction | GMP | Chris Perales | Preconstruction | 01ADMIN |
| QTS-37731 |  | DH 1300 / CRAH #12 | 20d | 2026-01-07 A | 2026-02-11 | QTS-1371 |  | 20d | 2026-01-07 | 2026-02-04 | 31d | 0d | as late as possible; as late as possible | 2026-02-04 | OFCI Procurement | Preconstruction | GMP | Chris Perales | Preconstruction | 01ADMIN |
| QTS-37741 |  | DH 1300 / CRAH #13 | 20d | 2026-01-07 A | 2026-02-11 | QTS-1371 |  | 20d | 2026-01-07 | 2026-02-04 | 31d | 0d | as late as possible; as late as possible | 2026-02-04 | OFCI Procurement | Preconstruction | GMP | Chris Perales | Preconstruction | 01ADMIN |
| QTS-37751 |  | DH 1300 / CRAH #14 | 20d | 2026-01-07 A | 2026-02-11 | QTS-1371 |  | 20d | 2026-01-07 | 2026-02-04 | 31d | 0d | as late as possible; as late as possible | 2026-02-04 | OFCI Procurement | Preconstruction | GMP | Chris Perales | Preconstruction | 01ADMIN |
| QTS-37761 |  | DH 1300 / CRAH #15 | 20d | 2026-01-22 | 2026-02-18 | QTS-1371 |  |  |  |  | 31d | 0d | as late as possible |  | OFCI Procurement | Preconstruction | GMP | Chris Perales | Preconstruction |  |
| QTS-37771 |  | DH 1300 / CRAH #16 | 20d | 2026-01-22 | 2026-02-18 | QTS-1371 |  |  |  |  | 31d | 0d | as late as possible |  | OFCI Procurement | Preconstruction | GMP | Chris Perales | Preconstruction |  |
| QTS-37781 |  | DH 1300 / CRAH #17 | 20d | 2026-01-22 | 2026-02-18 | QTS-1371 |  |  |  |  | 31d | 0d | as late as possible |  | OFCI Procurement | Preconstruction | GMP | Chris Perales | Preconstruction |  |
| QTS-37791 |  | DH 1300 / CRAH #18 | 20d | 2026-01-22 | 2026-02-18 | QTS-1371 |  |  |  |  | 31d | 0d | as late as possible |  | OFCI Procurement | Preconstruction | GMP | Chris Perales | Preconstruction |  |
| QTS-37801 |  | DH 1300 / CRAH #19 | 20d | 2026-01-22 | 2026-02-18 | QTS-1371 |  |  |  |  | 31d | 0d | as late as possible |  | OFCI Procurement | Preconstruction | GMP | Chris Perales | Preconstruction |  |
| QTS-37811 |  | DH 1300 / CRAH #20 | 20d | 2026-01-22 | 2026-02-18 | QTS-1371 |  |  |  |  | 31d | 0d | as late as possible |  | OFCI Procurement | Preconstruction | GMP | Chris Perales | Preconstruction |  |
| QTS-37821 |  | DH 1300 / CRAH #21 | 20d | 2026-01-22 | 2026-02-18 | QTS-1371 |  |  |  |  | 31d | 0d | as late as possible |  | OFCI Procurement | Preconstruction | GMP | Chris Perales | Preconstruction |  |
| QTS-37831 |  | DH 1300 / CRAH #22 | 20d | 2026-01-22 | 2026-02-18 | QTS-1371 |  |  |  |  | 31d | 0d | as late as possible |  | OFCI Procurement | Preconstruction | GMP | Chris Perales | Preconstruction |  |
| QTS-37841 |  | DH 1300 / CRAH #23 | 20d | 2026-01-22 | 2026-02-18 | QTS-1371 |  |  |  |  | 31d | 0d | as late as possible |  | OFCI Procurement | Preconstruction | GMP | Chris Perales | Preconstruction |  |
| QTS-37851 |  | DH 1300 / CRAH #24 | 20d | 2026-01-22 | 2026-02-18 | QTS-1371 |  |  |  |  | 31d | 0d | as late as possible |  | OFCI Procurement | Preconstruction | GMP | Chris Perales | Preconstruction |  |
| QTS-37861 |  | DH 1300 / CRAH #25 | 20d | 2026-01-22 | 2026-02-18 | QTS-1371 |  |  |  |  | 31d | 0d | as late as possible |  | OFCI Procurement | Preconstruction | GMP | Chris Perales | Preconstruction |  |
| QTS-37871 |  | DH 1300 / CRAH #26 | 20d | 2026-01-22 | 2026-02-18 | QTS-1371 |  |  |  |  | 31d | 0d | as late as possible |  | OFCI Procurement | Preconstruction | GMP | Chris Perales | Preconstruction |  |
| QTS-37881 |  | DH 1300 / CRAH #27 | 20d | 2026-01-22 | 2026-02-18 | QTS-1371 |  |  |  |  | 31d | 0d | as late as possible |  | OFCI Procurement | Preconstruction | GMP | Chris Perales | Preconstruction |  |
| QTS-37891 |  | DH 1300 / CRAH #28 | 20d | 2026-01-22 | 2026-02-18 | QTS-1371 |  |  |  |  | 31d | 0d | as late as possible |  | OFCI Procurement | Preconstruction | GMP | Chris Perales | Preconstruction |  |

Notes:
- QTS-41121: allucent_notes_20251230_164549: John Capriotti on 2025-12-30 09:57: Due to coordination with DC2 and DC9 and constraints on how many deliveries the vendor can deliver each day/week, including Holiday gaps, these are the new dates. / Management is aware, meetings held between all buildings to coordinate and these are the dates I was informed we get for DC1 in order to satisfy the DC2 and DC9 dates. / allucent_notes: 2025-12-30 09:57 - User: John Capriotti - Date Added: 2025-12-30 09:57 - Note: Due to coordination with DC2 and DC9 and constraints on how many deliveries the vendor can deliver each day/week, including Holiday gaps, these are the new dates.Management is
- QTS-41101: allucent_notes_20251230_164549: John Capriotti on 2025-12-30 09:57: Due to coordination with DC2 and DC9 and constraints on how many deliveries the vendor can deliver each day/week, including Holiday gaps, these are the new dates. / Management is aware, meetings held between all buildings to coordinate and these are the dates I was informed we get for DC1 in order to satisfy the DC2 and DC9 dates. / allucent_notes: 2025-12-30 09:57 - User: John Capriotti - Date Added: 2025-12-30 09:57 - Note: Due to coordination with DC2 and DC9 and constraints on how many deliveries the vendor can deliver each day/week, including Holiday gaps, these are the new dates.Management is
- QTS-41111: allucent_notes_20251230_164549: John Capriotti on 2025-12-30 09:57: Due to coordination with DC2 and DC9 and constraints on how many deliveries the vendor can deliver each day/week, including Holiday gaps, these are the new dates. / Management is aware, meetings held between all buildings to coordinate and these are the dates I was informed we get for DC1 in order to satisfy the DC2 and DC9 dates. / allucent_notes: 2025-12-30 09:57 - User: John Capriotti - Date Added: 2025-12-30 09:57 - Note: Due to coordination with DC2 and DC9 and constraints on how many deliveries the vendor can deliver each day/week, including Holiday gaps, these are the new dates.Management is
- QTS-41131: allucent_notes_20251230_164549: John Capriotti on 2025-12-30 09:57: Due to coordination with DC2 and DC9 and constraints on how many deliveries the vendor can deliver each day/week, including Holiday gaps, these are the new dates. / Management is aware, meetings held between all buildings to coordinate and these are the dates I was informed we get for DC1 in order to satisfy the DC2 and DC9 dates. / allucent_notes: 2025-12-30 09:57 - User: John Capriotti - Date Added: 2025-12-30 09:57 - Note: Due to coordination with DC2 and DC9 and constraints on how many deliveries the vendor can deliver each day/week, including Holiday gaps, these are the new dates.Management is
- QTS-38101: allucent_notes_20251230_164549: Jason Johnston on 2025-11-11 17:11: John owes 11/11 update / John Capriotti on 2025-12-30T15:31:35.548Z: Actualizing ROJ: DOAS delivered to QAE yard on 10/2 - technically have it just not delivered to the site from QAE yard until I can confirm set date / allucent_notes_20251111_182405: Jason Johnston on 2025-11-11 17:11: John owes 11/11 update / allucent_notes_20251118_192630: Jason Johnston on 2025-11-11 17:11: John owes 11/11 update / allucent_notes_20251202_153722: Jason Johnston on 2025-11-11 17:11: John owes 11/11 update / allucent_notes_20251209_203830: Jason Johnston on 2025-11-11 17:11: John owes 11/11 update / allucent_notes_20251216_165335: Jason Johnston on 2025-11-11 17:11: John owes 11/11 update / allucent_notes: 2025-11-11 17:11 - User: Jason Johnston - Date Added: 2025-11-11 17:11 - Note: John owes 11/11 update / 2025-12-30T15:31:35.548Z - User: John Capriotti - Date Added: 2025-12-30T15:31:35.548Z - Note: Actualizing ROJ: DOAS delivered to QAE yard on 10/2 - t
- QTS-38111: allucent_notes_20251230_164549: Jason Johnston on 2025-11-11 17:11: John owes 11/11 update / John Capriotti on 2025-12-30T15:31:42.967Z: Actualizing ROJ: DOAS delivered to QAE yard on 10/2 - technically have it just not delivered to the site from QAE yard until I can confirm set date / allucent_notes_20251111_182405: Jason Johnston on 2025-11-11 17:11: John owes 11/11 update / allucent_notes_20251118_192630: Jason Johnston on 2025-11-11 17:11: John owes 11/11 update / allucent_notes_20251202_153722: Jason Johnston on 2025-11-11 17:11: John owes 11/11 update / allucent_notes_20251209_203830: Jason Johnston on 2025-11-11 17:11: John owes 11/11 update / allucent_notes_20251216_165335: Jason Johnston on 2025-11-11 17:11: John owes 11/11 update / allucent_notes: 2025-11-11 17:11 - User: Jason Johnston - Date Added: 2025-11-11 17:11 - Note: John owes 11/11 update / 2025-12-30T15:31:42.967Z - User: John Capriotti - Date Added: 2025-12-30T15:31:42.967Z - Note: Actualizing ROJ: DOAS delivered to QAE yard on 10/2 - t

| ID | WBS | Activity | Duration | Start | Finish | Predecessors | Complete | Remaining | Planned start | Planned finish | Total float | Free float | Constraint | Expected finish | Precon Phase | Project Section-1 | Baseline | Layton Responsible Party | Project Section | Allucent CSI Group |
| --- | --- | --- | --- | --- | --- | --- | --- | --- | --- | --- | --- | --- | --- | --- | --- | --- | --- | --- | --- | --- |
|  | 1 | **A13 Lineup** |  | 2025-09-08 | 2026-03-06 |  |  |  |  |  |  |  |  |  |  |  |  |  |  |  |
| QTS-37961 |  | DH 1300 / A13 Lineup // Chiller #1RT40-A13 | 20d | 2025-09-08 A | 2025-09-09 A | QTS-1371 | 100% |  | 2025-09-10 | 2025-10-07 |  |  |  |  | OFCI Procurement | Preconstruction | GMP | Chris Perales | Preconstruction | 01ADMIN |
| QTS-38121 |  | DH 1300 / A13 Lineup // 2500KVA Padmount XFMR #A13 | 20d | 2025-12-03 A | 2025-12-29 A | QTS-1371 | 100% |  | 2025-12-03 | 2026-01-06 |  |  |  |  | OFCI Procurement | Preconstruction | GMP | Chris Perales | Preconstruction | 01ADMIN |
| QTS-40361 |  | DH 1300 / A13 Lineup // Assembly - SCR #GEN-A13 | 20d | 2025-12-03 A | 2026-03-06 | QTS-1371 |  | 37d | 2025-12-03 | 2026-01-06 | 51d | 0d |  | 2026-03-06 | OFCI Procurement | Preconstruction |  | Chris Perales | Preconstruction | 01ADMIN |
| QTS-40351 |  | DH 1300 / A13 Lineup // Assembly - Engine #GEN-A13 | 20d | 2025-12-17 A | 2026-02-26 | QTS-1371 |  | 31d | 2025-12-22 | 2026-01-26 | 6d | 0d |  | 2026-02-26 | OFCI Procurement | Preconstruction |  | Chris Perales | Preconstruction | 01ADMIN |
| QTS-37491 |  | DH 1300 / A13 Lineup // Skid #A13 | 20d | 2025-12-18 A | 2026-02-27 | QTS-1371 |  | 32d | 2025-12-18 | 2026-01-22 | 20d | 0d |  | 2026-02-27 | OFCI Procurement | Preconstruction | GMP | Chris Perales | Preconstruction | 01ADMIN |
| QTS-40341 |  | DH 1300 / A13 Lineup // Assembly - Tank #GEN-A13 | 20d | 2025-12-22 A | 2026-02-26 | QTS-1371 |  | 31d | 2025-12-22 | 2026-01-26 | 6d | 0d |  | 2026-02-26 | OFCI Procurement | Preconstruction |  | Chris Perales | Preconstruction | 01ADMIN |
| QTS-40371 |  | DH 1300 / A13 Lineup // Assembly - Housing #GEN-A13 | 20d | 2025-12-22 A | 2026-02-26 | QTS-1371 |  | 31d | 2025-12-22 | 2026-01-26 | 6d | 0d |  | 2026-02-26 | OFCI Procurement | Preconstruction |  | Chris Perales | Preconstruction | 01ADMIN |
| QTS-37351 |  | DH 1300 / A13 Lineup // 1300A MOD #A13-02 (Liquid to Chip Support) | 20d | 2026-01-12 A | 2026-01-12 A | QTS-1371 | 100% |  | 2026-01-20 | 2026-02-16 |  |  | as late as possible; as late as possible |  | OFCI Procurement | Preconstruction | GMP | Chris Perales | Preconstruction | 01ADMIN |
| QTS-37411 |  | DH 1300 / A13 Lineup // 600A MOD #A13-03 (CRAH Support) | 20d | 2026-01-12 A | 2026-01-12 A | QTS-1371 | 100% |  | 2026-01-20 | 2026-02-16 |  |  | as late as possible; as late as possible |  | OFCI Procurement | Preconstruction | GMP | Chris Perales | Preconstruction | 01ADMIN |
|  | 2 | **B13 Lineup** |  | 2025-09-08 | 2026-03-06 |  |  |  |  |  |  |  |  |  |  |  |  |  |  |  |
| QTS-37971 |  | DH 1300 / B13 Lineup // Chiller #1RT40-B13 | 20d | 2025-09-08 A | 2025-09-09 A | QTS-1371 | 100% |  | 2025-09-10 | 2025-10-07 |  |  |  |  | OFCI Procurement | Preconstruction | GMP | Chris Perales | Preconstruction | 01ADMIN |
| QTS-40211 |  | DH 1300 / B13 Lineup // Assembly - Housing #GEN-B13 | 20d | 2025-11-17 A | 2026-03-06 | QTS-1371 |  | 37d | 2025-12-23 | 2026-01-27 | 1d | 0d |  | 2026-03-06 | OFCI Procurement | Preconstruction |  | Chris Perales | Preconstruction | 01ADMIN |
| QTS-40181 |  | DH 1300 / B13 Lineup // Assembly - Tank #GEN-B13 | 20d | 2025-11-19 A | 2026-02-27 | QTS-1371 |  | 32d | 2025-12-23 | 2026-01-27 | 6d | 0d |  | 2026-02-27 | OFCI Procurement | Preconstruction |  | Chris Perales | Preconstruction | 01ADMIN |
| QTS-38131 |  | DH 1300 / B13 Lineup // 2500KVA Padmount XFMR #B13 | 20d | 2025-12-03 A | 2026-01-14 | QTS-1371 | 95% | 1d | 2025-12-03 | 2026-01-06 | 47d | 0d |  | 2026-01-14 | OFCI Procurement | Preconstruction | GMP | Chris Perales | Preconstruction | 01ADMIN |
| QTS-40201 |  | DH 1300 / B13 Lineup // Assembly - SCR #GEN-B13 | 20d | 2025-12-03 A | 2026-03-06 | QTS-1371 |  | 37d | 2025-12-03 | 2026-01-06 | 51d | 0d |  | 2026-03-06 | OFCI Procurement | Preconstruction |  | Chris Perales | Preconstruction | 01ADMIN |
| QTS-40191 |  | DH 1300 / B13 Lineup // Assembly - Engine #GEN-B13 | 20d | 2025-12-17 A | 2026-02-26 | QTS-1371 |  | 31d | 2025-12-23 | 2026-01-27 | 7d | 0d |  | 2026-02-26 | OFCI Procurement | Preconstruction |  | Chris Perales | Preconstruction | 01ADMIN |
| QTS-37501 |  | DH 1300 / B13 Lineup // Skid #B13 | 20d | 2025-12-29 A | 2026-01-12 A | QTS-1371 | 100% |  | 2025-12-29 | 2026-01-28 |  |  |  |  | OFCI Procurement | Preconstruction | GMP | Chris Perales | Preconstruction | 01ADMIN |
| QTS-37361 |  | DH 1300 / B13 Lineup // 1300A MOD #B13-02 (Liquid to Chip Support) | 20d | 2026-01-12 A | 2026-01-12 A | QTS-1371 | 100% |  | 2026-01-20 | 2026-02-16 |  |  | as late as possible; as late as possible |  | OFCI Procurement | Preconstruction | GMP | Chris Perales | Preconstruction | 01ADMIN |
| QTS-37421 |  | DH 1300 / B13 Lineup // 600A MOD #B13-03 (CRAH Support) | 20d | 2026-01-12 A | 2026-01-12 A | QTS-1371 | 100% |  | 2026-01-20 | 2026-02-16 |  |  | as late as possible; as late as possible |  | OFCI Procurement | Preconstruction | GMP | Chris Perales | Preconstruction | 01ADMIN |
|  | 3 | **C13 Lineup** |  | 2025-09-08 | 2026-03-06 |  |  |  |  |  |  |  |  |  |  |  |  |  |  |  |
| QTS-37981 |  | DH 1300 / C13 Lineup // Chiller #1RT40-C13 | 20d | 2025-09-08 A | 2025-09-09 A | QTS-1371 | 100% |  | 2025-09-10 | 2025-10-07 |  |  |  |  | OFCI Procurement | Preconstruction | GMP | Chris Perales | Preconstruction | 01ADMIN |
| QTS-38141 |  | DH 1300 / C13 Lineup // 2500KVA Padmount XFMR #C13 | 20d | 2025-12-03 A | 2026-01-05 A | QTS-1371 | 100% |  | 2025-12-03 | 2026-01-06 |  |  |  |  | OFCI Procurement | Preconstruction | GMP | Chris Perales | Preconstruction | 01ADMIN |
| QTS-40041 |  | DH 1300 / C13 Lineup // Assembly - SCR #GEN-C13 | 20d | 2025-12-03 A | 2026-03-06 | QTS-1371 |  | 37d | 2025-12-03 | 2026-01-06 | 51d | 0d |  | 2026-03-06 | OFCI Procurement | Preconstruction |  | Chris Perales | Preconstruction | 01ADMIN |
| QTS-40021 |  | DH 1300 / C13 Lineup // Assembly - Tank #GEN-C13 | 20d | 2025-12-29 A | 2026-03-02 | QTS-1371 |  | 33d | 2025-12-29 | 2026-01-28 | 6d | 0d |  | 2026-03-02 | OFCI Procurement | Preconstruction |  | Chris Perales | Preconstruction | 01ADMIN |
| QTS-40031 |  | DH 1300 / C13 Lineup // Assembly - Engine #GEN-C13 | 20d | 2025-12-29 A | 2026-03-02 | QTS-1371 |  | 33d | 2025-12-29 | 2026-01-28 | 6d | 0d |  | 2026-03-02 | OFCI Procurement | Preconstruction |  | Chris Perales | Preconstruction | 01ADMIN |
| QTS-40051 |  | DH 1300 / C13 Lineup // Assembly - Housing #GEN-C13 | 20d | 2025-12-29 A | 2026-03-02 | QTS-1371 |  | 33d | 2025-12-29 | 2026-01-28 | 6d | 0d |  | 2026-03-02 | OFCI Procurement | Preconstruction |  | Chris Perales | Preconstruction | 01ADMIN |
| QTS-37371 |  | DH 1300 / C13 Lineup // 1300A MOD #C13-02 (Liquid to Chip Support) | 20d | 2026-01-12 A | 2026-01-12 A | QTS-1371 | 100% |  | 2026-01-20 | 2026-02-16 |  |  | as late as possible; as late as possible |  | OFCI Procurement | Preconstruction | GMP | Chris Perales | Preconstruction | 01ADMIN |
| QTS-37431 |  | DH 1300 / C13 Lineup // 600A MOD #C13-03 (CRAH Support) | 20d | 2026-01-12 A | 2026-01-12 A | QTS-1371 | 100% |  | 2026-01-20 | 2026-02-16 |  |  | as late as possible; as late as possible |  | OFCI Procurement | Preconstruction | GMP | Chris Perales | Preconstruction | 01ADMIN |
| QTS-37511 |  | DH 1300 / C13 Lineup // Skid #C13 | 20d | 2026-01-12 A | 2026-01-12 A | QTS-1371 | 100% |  | 2026-01-22 | 2026-02-18 |  |  | as late as possible; as late as possible |  | OFCI Procurement | Preconstruction | GMP | Chris Perales | Preconstruction | 01ADMIN |

Notes:
- QTS-40361: allucent_notes_20251230_164549: John Capriotti on 2025-12-30 08:50: Due to coordination with DC2 and DC9 and constraints on how many deliveries the vendor can deliver each day/week, including Holiday gaps, these are the new dates. / Management is aware, meetings held between all buildings to coordinate and these are the dates I was informed we get for DC1 in order to satisfy the DC2 and DC9 dates. / allucent_notes: 2025-12-30 08:50 - User: John Capriotti - Date Added: 2025-12-30 08:50 - Note: Due to coordination with DC2 and DC9 and constraints on how many deliveries the vendor can deliver each day/week, including Holiday gaps, these are the new dates.Management is
- QTS-40351: allucent_notes_20251230_164549: John Capriotti on 2025-12-30 08:48: Due to coordination with DC2 and DC9 and constraints on how many deliveries the vendor can deliver each day/week, including Holiday gaps, these are the new dates. / Management is aware, meetings held between all buildings to coordinate and these are the dates I was informed we get for DC1 in order to satisfy the DC2 and DC9 dates. / allucent_notes: 2025-12-30 08:48 - User: John Capriotti - Date Added: 2025-12-30 08:48 - Note: Due to coordination with DC2 and DC9 and constraints on how many deliveries the vendor can deliver each day/week, including Holiday gaps, these are the new dates.Management is
- QTS-40341: allucent_notes_20251230_164549: John Capriotti on 2025-12-30 08:48: Due to coordination with DC2 and DC9 and constraints on how many deliveries the vendor can deliver each day/week, including Holiday gaps, these are the new dates. / Management is aware, meetings held between all buildings to coordinate and these are the dates I was informed we get for DC1 in order to satisfy the DC2 and DC9 dates. / allucent_notes: 2025-12-30 08:48 - User: John Capriotti - Date Added: 2025-12-30 08:48 - Note: Due to coordination with DC2 and DC9 and constraints on how many deliveries the vendor can deliver each day/week, including Holiday gaps, these are the new dates.Management is
- QTS-40371: allucent_notes_20251230_164549: John Capriotti on 2025-12-30 08:49: Due to coordination with DC2 and DC9 and constraints on how many deliveries the vendor can deliver each day/week, including Holiday gaps, these are the new dates. / Management is aware, meetings held between all buildings to coordinate and these are the dates I was informed we get for DC1 in order to satisfy the DC2 and DC9 dates. / allucent_notes: 2025-12-30 08:49 - User: John Capriotti - Date Added: 2025-12-30 08:49 - Note: Due to coordination with DC2 and DC9 and constraints on how many deliveries the vendor can deliver each day/week, including Holiday gaps, these are the new dates.Management is
- QTS-40211: allucent_notes_20251230_164549: John Capriotti on 2025-12-30 09:43: Due to coordination with DC2 and DC9 and constraints on how many deliveries the vendor can deliver each day/week, including Holiday gaps, these are the new dates. / Management is aware, meetings held between all buildings to coordinate and these are the dates I was informed we get for DC1 in order to satisfy the DC2 and DC9 dates. / allucent_notes: 2025-12-30 09:43 - User: John Capriotti - Date Added: 2025-12-30 09:43 - Note: Due to coordination with DC2 and DC9 and constraints on how many deliveries the vendor can deliver each day/week, including Holiday gaps, these are the new dates.Management is
- QTS-40181: allucent_notes_20251230_164549: John Capriotti on 2025-12-30 09:43: Due to coordination with DC2 and DC9 and constraints on how many deliveries the vendor can deliver each day/week, including Holiday gaps, these are the new dates. / Management is aware, meetings held between all buildings to coordinate and these are the dates I was informed we get for DC1 in order to satisfy the DC2 and DC9 dates. / allucent_notes: 2025-12-30 09:43 - User: John Capriotti - Date Added: 2025-12-30 09:43 - Note: Due to coordination with DC2 and DC9 and constraints on how many deliveries the vendor can deliver each day/week, including Holiday gaps, these are the new dates.Management is
- QTS-38131: allucent_notes_20251230_164549: John Capriotti on 2025-12-30 08:36: Scheduled for delivery on 1/7/2026 with QTS, confirmed with OEG/Sub that they are ready and have crane scheduled to set. / allucent_notes: 2025-12-30 08:36 - User: John Capriotti - Date Added: 2025-12-30 08:36 - Note: Scheduled for delivery on 1/7/2026 with QTS, confirmed with OEG/Sub that they are ready and have crane scheduled to set.
- QTS-40201: allucent_notes_20251230_164549: John Capriotti on 2025-12-30 09:43: Due to coordination with DC2 and DC9 and constraints on how many deliveries the vendor can deliver each day/week, including Holiday gaps, these are the new dates. / Management is aware, meetings held between all buildings to coordinate and these are the dates I was informed we get for DC1 in order to satisfy the DC2 and DC9 dates. / allucent_notes: 2025-12-30 09:43 - User: John Capriotti - Date Added: 2025-12-30 09:43 - Note: Due to coordination with DC2 and DC9 and constraints on how many deliveries the vendor can deliver each day/week, including Holiday gaps, these are the new dates.Management is
- QTS-40191: allucent_notes_20251230_164549: John Capriotti on 2025-12-30 09:43: Due to coordination with DC2 and DC9 and constraints on how many deliveries the vendor can deliver each day/week, including Holiday gaps, these are the new dates. / Management is aware, meetings held between all buildings to coordinate and these are the dates I was informed we get for DC1 in order to satisfy the DC2 and DC9 dates. / allucent_notes: 2025-12-30 09:43 - User: John Capriotti - Date Added: 2025-12-30 09:43 - Note: Due to coordination with DC2 and DC9 and constraints on how many deliveries the vendor can deliver each day/week, including Holiday gaps, these are the new dates.Management is
- QTS-38141: allucent_notes_20251230_164549: John Capriotti on 2025-12-30 08:36: Scheduled for delivery on 1/7/2026 with QTS, confirmed with OEG/Sub that they are ready and have crane scheduled to set. / allucent_notes: 2025-12-30 08:36 - User: John Capriotti - Date Added: 2025-12-30 08:36 - Note: Scheduled for delivery on 1/7/2026 with QTS, confirmed with OEG/Sub that they are ready and have crane scheduled to set.
- QTS-40041: allucent_notes_20251230_164549: John Capriotti on 2025-12-30 09:46: Due to coordination with DC2 and DC9 and constraints on how many deliveries the vendor can deliver each day/week, including Holiday gaps, these are the new dates. / Management is aware, meetings held between all buildings to coordinate and these are the dates I was informed we get for DC1 in order to satisfy the DC2 and DC9 dates. / allucent_notes: 2025-12-30 09:46 - User: John Capriotti - Date Added: 2025-12-30 09:46 - Note: Due to coordination with DC2 and DC9 and constraints on how many deliveries the vendor can deliver each day/week, including Holiday gaps, these are the new dates.Management is
- QTS-40021: allucent_notes_20251230_164549: John Capriotti on 2025-12-30 09:44: Due to coordination with DC2 and DC9 and constraints on how many deliveries the vendor can deliver each day/week, including Holiday gaps, these are the new dates. / Management is aware, meetings held between all buildings to coordinate and these are the dates I was informed we get for DC1 in order to satisfy the DC2 and DC9 dates. / John Capriotti on 2025-12-30 09:44: Due to coordination with DC2 and DC9 and constraints on how many deliveries the vendor can deliver each day/week, including Holiday gaps, these are the new dates. / Management is aware, meetings held between all buildings to coordinate and these are the dates I was informed we get for DC1 in order to satisfy the DC2 and DC9 dates. / John Capriotti on 2025-12-30 09:45: Due to coordination with DC2 and DC9 and constraints on how many deliveries the vendor can deliver each day/week, including Holiday gaps, these are the new dates. / Management is aware, meetings held between all buildings to coordinate and these are the dates I was informed we get for DC1 in order to satisfy the DC2 and DC9 dates. / John Capriotti on 2025-12-30 09:46: Due to coordination with DC2 and DC9 and constraints on how many deliveries the vendor can deliver each day/week, including Holiday gaps, these are the new dates. / Management is aware, meetings held between all buildings to coordinate and these are the dates I was informed we get for DC1 in order to satisfy the DC2 and DC9 dates. / allucent_notes: 2025-12-30 09:44 - User: John Capriotti - Date Added: 2025-12-30 09:44 - Note: Due to coordination with DC2 and DC9 and constraints on how many deliveries the vendor can deliver each day/week, including Holiday gaps, these are the new dates.Management is
- QTS-40031: allucent_notes_20251230_164549: John Capriotti on 2025-12-30 09:45: Due to coordination with DC2 and DC9 and constraints on how many deliveries the vendor can deliver each day/week, including Holiday gaps, these are the new dates. / Management is aware, meetings held between all buildings to coordinate and these are the dates I was informed we get for DC1 in order to satisfy the DC2 and DC9 dates. / John Capriotti on 2025-12-30 09:46: Due to coordination with DC2 and DC9 and constraints on how many deliveries the vendor can deliver each day/week, including Holiday gaps, these are the new dates. / Management is aware, meetings held between all buildings to coordinate and these are the dates I was informed we get for DC1 in order to satisfy the DC2 and DC9 dates. / allucent_notes: 2025-12-30 09:45 - User: John Capriotti - Date Added: 2025-12-30 09:45 - Note: Due to coordination with DC2 and DC9 and constraints on how many deliveries the vendor can deliver each day/week, including Holiday gaps, these are the new dates.Management is
- QTS-40051: allucent_notes_20251230_164549: John Capriotti on 2025-12-30 09:46: Due to coordination with DC2 and DC9 and constraints on how many deliveries the vendor can deliver each day/week, including Holiday gaps, these are the new dates. / Management is aware, meetings held between all buildings to coordinate and these are the dates I was informed we get for DC1 in order to satisfy the DC2 and DC9 dates. / allucent_notes: 2025-12-30 09:46 - User: John Capriotti - Date Added: 2025-12-30 09:46 - Note: Due to coordination with DC2 and DC9 and constraints on how many deliveries the vendor can deliver each day/week, including Holiday gaps, these are the new dates.Management is

| ID | WBS | Activity | Duration | Start | Finish | Predecessors | Complete | Remaining | Planned start | Planned finish | Total float | Free float | Constraint | Expected finish | Precon Phase | Project Section-1 | Baseline | Layton Responsible Party | Project Section | Allucent CSI Group |
| --- | --- | --- | --- | --- | --- | --- | --- | --- | --- | --- | --- | --- | --- | --- | --- | --- | --- | --- | --- | --- |
|  | 4 | **D13 Lineup** |  | 2025-09-08 | 2026-03-12 |  |  |  |  |  |  |  |  |  |  |  |  |  |  |  |
| QTS-37991 |  | DH 1300 / D13 Lineup // Chiller #1RT40-D13 | 20d | 2025-09-08 A | 2025-09-10 A | QTS-1371 | 100% |  | 2025-09-10 | 2025-10-07 |  |  |  |  | OFCI Procurement | Preconstruction | GMP | Chris Perales | Preconstruction | 01ADMIN |
| QTS-38151 |  | DH 1300 / D13 Lineup // 2500KVA Padmount XFMR #D13 | 20d | 2025-12-03 A | 2026-01-05 A | QTS-1371 | 100% |  | 2025-12-03 | 2026-01-06 |  |  |  |  | OFCI Procurement | Preconstruction | GMP | Chris Perales | Preconstruction | 01ADMIN |
| QTS-40561 |  | DH 1300 / D13 Lineup // Assembly - SCR #GEN-D13 | 20d | 2025-12-03 A | 2026-03-12 | QTS-1371 |  | 41d | 2025-12-03 | 2026-01-06 | 47d | 0d |  | 2026-03-12 | OFCI Procurement | Preconstruction |  | Chris Perales | Preconstruction | 01ADMIN |
| QTS-40541 |  | DH 1300 / D13 Lineup // Assembly - Tank #GEN-D13 | 20d | 2025-12-30 A | 2026-03-03 | QTS-1371 |  | 34d | 2025-12-30 | 2026-01-29 | 6d | 0d |  | 2026-03-03 | OFCI Procurement | Preconstruction |  | Chris Perales | Preconstruction | 01ADMIN |
| QTS-40551 |  | DH 1300 / D13 Lineup // Assembly - Engine #GEN-D13 | 20d | 2025-12-30 A | 2026-03-04 | QTS-1371 |  | 35d | 2025-12-30 | 2026-01-29 | 5d | 0d |  | 2026-03-04 | OFCI Procurement | Preconstruction |  | Chris Perales | Preconstruction | 01ADMIN |
| QTS-40571 |  | DH 1300 / D13 Lineup // Assembly - Housing #GEN-D13 | 20d | 2025-12-30 A | 2026-03-05 | QTS-1371 |  | 36d | 2025-12-30 | 2026-01-29 | 4d | 0d |  | 2026-03-05 | OFCI Procurement | Preconstruction |  | Chris Perales | Preconstruction | 01ADMIN |
| QTS-37381 |  | DH 1300 / D13 Lineup // 1300A MOD #D13-02 (Liquid to Chip Support) | 20d | 2026-01-12 A | 2026-01-12 A | QTS-1371 | 100% |  | 2026-01-20 | 2026-02-16 |  |  | as late as possible; as late as possible |  | OFCI Procurement | Preconstruction | GMP | Chris Perales | Preconstruction | 01ADMIN |
| QTS-37441 |  | DH 1300 / D13 Lineup // 600A MOD #D13-03 (CRAH Support) | 20d | 2026-01-12 A | 2026-01-12 A | QTS-1371 | 100% |  | 2026-01-20 | 2026-02-16 |  |  | as late as possible; as late as possible |  | OFCI Procurement | Preconstruction | GMP | Chris Perales | Preconstruction | 01ADMIN |
| QTS-37521 |  | DH 1300 / D13 Lineup // Skid #D13 | 20d | 2026-01-12 A | 2026-01-12 A | QTS-1371 | 100% |  | 2026-01-27 | 2026-02-23 |  |  | as late as possible |  | OFCI Procurement | Preconstruction | GMP | Chris Perales | Preconstruction |  |
|  | 5 | **E13 Lineup** |  | 2025-09-08 | 2026-03-12 |  |  |  |  |  |  |  |  |  |  |  |  |  |  |  |
| QTS-38001 |  | DH 1300 / E13 Lineup // Chiller #1RT40-E13 | 20d | 2025-09-08 A | 2025-09-10 A | QTS-1371 | 100% |  | 2025-09-10 | 2025-10-07 |  |  |  |  | OFCI Procurement | Preconstruction | GMP | Chris Perales | Preconstruction | 01ADMIN |
| QTS-38161 |  | DH 1300 / E13 Lineup // 2500KVA Padmount XFMR #E13 | 20d | 2025-12-03 A | 2025-12-29 A | QTS-1371 | 100% |  | 2025-12-03 | 2026-01-06 |  |  |  |  | OFCI Procurement | Preconstruction | GMP | Chris Perales | Preconstruction | 01ADMIN |
| QTS-40761 |  | DH 1300 / E13 Lineup // Assembly - SCR #GEN-E13 | 20d | 2025-12-03 A | 2026-03-12 | QTS-1371 |  | 41d | 2025-12-03 | 2026-01-06 | 47d | 0d |  | 2026-03-12 | OFCI Procurement | Preconstruction |  | Chris Perales | Preconstruction | 01ADMIN |
| QTS-40741 |  | DH 1300 / E13 Lineup // Assembly - Tank #GEN-E13 | 20d | 2025-12-17 A | 2026-03-03 | QTS-1371 |  | 34d | 2025-12-31 | 2026-01-30 | 7d | 0d |  | 2026-03-03 | OFCI Procurement | Preconstruction |  | Chris Perales | Preconstruction | 01ADMIN |
| QTS-40751 |  | DH 1300 / E13 Lineup // Assembly - Engine #GEN-E13 | 20d | 2025-12-17 A | 2026-03-04 | QTS-1371 |  | 35d | 2025-12-31 | 2026-01-30 | 6d | 0d |  | 2026-03-04 | OFCI Procurement | Preconstruction |  | Chris Perales | Preconstruction | 01ADMIN |
| QTS-40771 |  | DH 1300 / E13 Lineup // Assembly - Housing #GEN-E13 | 20d | 2025-12-17 A | 2026-03-05 | QTS-1371 |  | 36d | 2025-12-31 | 2026-01-30 | 5d | 0d |  | 2026-03-05 | OFCI Procurement | Preconstruction |  | Chris Perales | Preconstruction | 01ADMIN |
| QTS-37391 |  | DH 1300 / E13 Lineup // 1300A MOD #E13-02 (Liquid to Chip Support) | 20d | 2026-01-12 A | 2026-01-12 A | QTS-1371 | 100% |  | 2026-01-20 | 2026-02-16 |  |  | as late as possible; as late as possible |  | OFCI Procurement | Preconstruction | GMP | Chris Perales | Preconstruction | 01ADMIN |
| QTS-37451 |  | DH 1300 / E13 Lineup // 600A MOD #E13-03 (CRAH Support) | 20d | 2026-01-12 A | 2026-01-12 A | QTS-1371 | 100% |  | 2026-01-20 | 2026-02-16 |  |  | as late as possible; as late as possible |  | OFCI Procurement | Preconstruction | GMP | Chris Perales | Preconstruction | 01ADMIN |
| QTS-37531 |  | DH 1300 / E13 Lineup // Skid #E13 | 20d | 2026-01-12 A | 2026-01-12 A | QTS-1371 | 100% |  | 2026-02-02 | 2026-02-27 |  |  | as late as possible |  | OFCI Procurement | Preconstruction | GMP | Chris Perales | Preconstruction |  |
|  | 6 | **F13 Lineup** |  | 2025-09-08 | 2026-03-12 |  |  |  |  |  |  |  |  |  |  |  |  |  |  |  |
| QTS-38011 |  | DH 1300 / F13 Lineup // Chiller #1RT40-F13 | 20d | 2025-09-08 A | 2025-09-10 A | QTS-1371 | 100% |  | 2025-09-10 | 2025-10-07 |  |  |  |  | OFCI Procurement | Preconstruction | GMP | Chris Perales | Preconstruction | 01ADMIN |
| QTS-38171 |  | DH 1300 / F13 Lineup // 2500KVA Padmount XFMR #F13 | 20d | 2025-11-03 A | 2025-11-03 A | QTS-1371 | 100% |  | 2025-12-03 | 2026-01-06 |  |  |  |  | OFCI Procurement | Preconstruction | GMP | Chris Perales | Preconstruction | 01ADMIN |
| QTS-40951 |  | DH 1300 / F13 Lineup // Assembly - Engine #GEN-F13 | 20d | 2025-11-18 A | 2026-03-12 | QTS-1371 |  | 41d | 2026-01-05 | 2026-02-02 | 1d | 0d |  |  | OFCI Procurement | Preconstruction |  | Chris Perales | Preconstruction | 01ADMIN |
| QTS-40961 |  | DH 1300 / F13 Lineup // Assembly - SCR #GEN-F13 | 20d | 2025-12-03 A | 2026-03-12 | QTS-1371 |  | 41d | 2025-12-03 | 2026-01-06 | 47d | 0d |  | 2026-03-12 | OFCI Procurement | Preconstruction |  | Chris Perales | Preconstruction | 01ADMIN |
| QTS-40941 |  | DH 1300 / F13 Lineup // Assembly - Tank #GEN-F13 | 20d | 2025-12-17 A | 2026-03-03 | QTS-1371 |  | 34d | 2026-01-05 | 2026-02-02 | 8d | 0d |  | 2026-03-03 | OFCI Procurement | Preconstruction |  | Chris Perales | Preconstruction | 01ADMIN |
| QTS-40971 |  | DH 1300 / F13 Lineup // Assembly - Housing #GEN-F13 | 20d | 2025-12-17 A | 2026-03-05 | QTS-1371 |  | 36d | 2026-01-05 | 2026-02-02 | 6d | 0d |  | 2026-03-05 | OFCI Procurement | Preconstruction |  | Chris Perales | Preconstruction | 01ADMIN |
| QTS-37401 |  | DH 1300 / F13 Lineup // 1300A MOD #F13-02 (Liquid to Chip Support) | 20d | 2026-01-12 A | 2026-01-12 A | QTS-1371 | 100% |  | 2026-01-20 | 2026-02-16 |  |  | as late as possible; as late as possible |  | OFCI Procurement | Preconstruction | GMP | Chris Perales | Preconstruction | 01ADMIN |
| QTS-37461 |  | DH 1300 / F13 Lineup // 600A MOD #F13-03 (CRAH Support) | 20d | 2026-01-12 A | 2026-01-12 A | QTS-1371 | 100% |  | 2026-01-20 | 2026-02-16 |  |  | as late as possible; as late as possible |  | OFCI Procurement | Preconstruction | GMP | Chris Perales | Preconstruction | 01ADMIN |
| QTS-37541 |  | DH 1300 / F13 Lineup // Skid #F13 | 20d | 2026-01-12 A | 2026-01-12 A | QTS-1371 | 100% |  | 2026-02-05 | 2026-03-04 |  |  | as late as possible |  | OFCI Procurement | Preconstruction | GMP | Chris Perales | Preconstruction |  |

Notes:
- QTS-38151: allucent_notes_20251230_164549: John Capriotti on 2025-12-30 08:36: Scheduled for delivery on 1/7/2026 with QTS, confirmed with OEG/Sub that they are ready and have crane scheduled to set. / allucent_notes: 2025-12-30 08:36 - User: John Capriotti - Date Added: 2025-12-30 08:36 - Note: Scheduled for delivery on 1/7/2026 with QTS, confirmed with OEG/Sub that they are ready and have crane scheduled to set.
- QTS-40561: allucent_notes_20251230_164549: John Capriotti on 2025-12-30 09:50: Due to coordination with DC2 and DC9 and constraints on how many deliveries the vendor can deliver each day/week, including Holiday gaps, these are the new dates. / Management is aware, meetings held between all buildings to coordinate and these are the dates I was informed we get for DC1 in order to satisfy the DC2 and DC9 dates. / allucent_notes: 2025-12-30 09:50 - User: John Capriotti - Date Added: 2025-12-30 09:50 - Note: Due to coordination with DC2 and DC9 and constraints on how many deliveries the vendor can deliver each day/week, including Holiday gaps, these are the new dates.Management is
- QTS-40541: allucent_notes_20251230_164549: John Capriotti on 2025-12-30 09:49: Due to coordination with DC2 and DC9 and constraints on how many deliveries the vendor can deliver each day/week, including Holiday gaps, these are the new dates. / Management is aware, meetings held between all buildings to coordinate and these are the dates I was informed we get for DC1 in order to satisfy the DC2 and DC9 dates. / allucent_notes: 2025-12-30 09:49 - User: John Capriotti - Date Added: 2025-12-30 09:49 - Note: Due to coordination with DC2 and DC9 and constraints on how many deliveries the vendor can deliver each day/week, including Holiday gaps, these are the new dates.Management is
- QTS-40551: allucent_notes_20251230_164549: John Capriotti on 2025-12-30 09:49: Due to coordination with DC2 and DC9 and constraints on how many deliveries the vendor can deliver each day/week, including Holiday gaps, these are the new dates. / Management is aware, meetings held between all buildings to coordinate and these are the dates I was informed we get for DC1 in order to satisfy the DC2 and DC9 dates. / allucent_notes: 2025-12-30 09:49 - User: John Capriotti - Date Added: 2025-12-30 09:49 - Note: Due to coordination with DC2 and DC9 and constraints on how many deliveries the vendor can deliver each day/week, including Holiday gaps, these are the new dates.Management is
- QTS-40571: allucent_notes_20251230_164549: John Capriotti on 2025-12-30 09:50: Due to coordination with DC2 and DC9 and constraints on how many deliveries the vendor can deliver each day/week, including Holiday gaps, these are the new dates. / Management is aware, meetings held between all buildings to coordinate and these are the dates I was informed we get for DC1 in order to satisfy the DC2 and DC9 dates. / allucent_notes: 2025-12-30 09:50 - User: John Capriotti - Date Added: 2025-12-30 09:50 - Note: Due to coordination with DC2 and DC9 and constraints on how many deliveries the vendor can deliver each day/week, including Holiday gaps, these are the new dates.Management is
- QTS-40761: allucent_notes_20251230_164549: John Capriotti on 2025-12-30 09:52: Due to coordination with DC2 and DC9 and constraints on how many deliveries the vendor can deliver each day/week, including Holiday gaps, these are the new dates. / Management is aware, meetings held between all buildings to coordinate and these are the dates I was informed we get for DC1 in order to satisfy the DC2 and DC9 dates. / allucent_notes: 2025-12-30 09:52 - User: John Capriotti - Date Added: 2025-12-30 09:52 - Note: Due to coordination with DC2 and DC9 and constraints on how many deliveries the vendor can deliver each day/week, including Holiday gaps, these are the new dates.Management is
- QTS-40741: allucent_notes_20251230_164549: John Capriotti on 2025-12-30 09:52: Due to coordination with DC2 and DC9 and constraints on how many deliveries the vendor can deliver each day/week, including Holiday gaps, these are the new dates. / Management is aware, meetings held between all buildings to coordinate and these are the dates I was informed we get for DC1 in order to satisfy the DC2 and DC9 dates. / allucent_notes: 2025-12-30 09:52 - User: John Capriotti - Date Added: 2025-12-30 09:52 - Note: Due to coordination with DC2 and DC9 and constraints on how many deliveries the vendor can deliver each day/week, including Holiday gaps, these are the new dates.Management is
- QTS-40751: allucent_notes_20251230_164549: John Capriotti on 2025-12-30 09:52: Due to coordination with DC2 and DC9 and constraints on how many deliveries the vendor can deliver each day/week, including Holiday gaps, these are the new dates. / Management is aware, meetings held between all buildings to coordinate and these are the dates I was informed we get for DC1 in order to satisfy the DC2 and DC9 dates. / allucent_notes: 2025-12-30 09:52 - User: John Capriotti - Date Added: 2025-12-30 09:52 - Note: Due to coordination with DC2 and DC9 and constraints on how many deliveries the vendor can deliver each day/week, including Holiday gaps, these are the new dates.Management is
- QTS-40771: allucent_notes_20251230_164549: John Capriotti on 2025-12-30 09:52: Due to coordination with DC2 and DC9 and constraints on how many deliveries the vendor can deliver each day/week, including Holiday gaps, these are the new dates. / Management is aware, meetings held between all buildings to coordinate and these are the dates I was informed we get for DC1 in order to satisfy the DC2 and DC9 dates. / allucent_notes: 2025-12-30 09:52 - User: John Capriotti - Date Added: 2025-12-30 09:52 - Note: Due to coordination with DC2 and DC9 and constraints on how many deliveries the vendor can deliver each day/week, including Holiday gaps, these are the new dates.Management is
- QTS-40951: allucent_notes_20251230_164549: John Capriotti on 2025-12-30 09:53: Due to coordination with DC2 and DC9 and constraints on how many deliveries the vendor can deliver each day/week, including Holiday gaps, these are the new dates. / Management is aware, meetings held between all buildings to coordinate and these are the dates I was informed we get for DC1 in order to satisfy the DC2 and DC9 dates. / allucent_notes: 2025-12-30 09:53 - User: John Capriotti - Date Added: 2025-12-30 09:53 - Note: Due to coordination with DC2 and DC9 and constraints on how many deliveries the vendor can deliver each day/week, including Holiday gaps, these are the new dates.Management is
- QTS-40961: allucent_notes_20251230_164549: John Capriotti on 2025-12-30 09:53: Due to coordination with DC2 and DC9 and constraints on how many deliveries the vendor can deliver each day/week, including Holiday gaps, these are the new dates. / Management is aware, meetings held between all buildings to coordinate and these are the dates I was informed we get for DC1 in order to satisfy the DC2 and DC9 dates. / allucent_notes: 2025-12-30 09:53 - User: John Capriotti - Date Added: 2025-12-30 09:53 - Note: Due to coordination with DC2 and DC9 and constraints on how many deliveries the vendor can deliver each day/week, including Holiday gaps, these are the new dates.Management is
- QTS-40941: allucent_notes_20251230_164549: John Capriotti on 2025-12-30 09:53: Due to coordination with DC2 and DC9 and constraints on how many deliveries the vendor can deliver each day/week, including Holiday gaps, these are the new dates. / Management is aware, meetings held between all buildings to coordinate and these are the dates I was informed we get for DC1 in order to satisfy the DC2 and DC9 dates. / allucent_notes: 2025-12-30 09:53 - User: John Capriotti - Date Added: 2025-12-30 09:53 - Note: Due to coordination with DC2 and DC9 and constraints on how many deliveries the vendor can deliver each day/week, including Holiday gaps, these are the new dates.Management is
- QTS-40971: allucent_notes_20251230_164549: John Capriotti on 2025-12-30 09:53: Due to coordination with DC2 and DC9 and constraints on how many deliveries the vendor can deliver each day/week, including Holiday gaps, these are the new dates. / Management is aware, meetings held between all buildings to coordinate and these are the dates I was informed we get for DC1 in order to satisfy the DC2 and DC9 dates. / allucent_notes: 2025-12-30 09:53 - User: John Capriotti - Date Added: 2025-12-30 09:53 - Note: Due to coordination with DC2 and DC9 and constraints on how many deliveries the vendor can deliver each day/week, including Holiday gaps, these are the new dates.Management is

| ID | WBS | Activity | Duration | Start | Finish | Predecessors | Complete | Remaining | Planned start | Planned finish | Total float | Free float | Constraint | Expected finish | Precon Phase | Project Section-1 | Baseline | Layton Responsible Party | Project Section | Allucent CSI Group |
| --- | --- | --- | --- | --- | --- | --- | --- | --- | --- | --- | --- | --- | --- | --- | --- | --- | --- | --- | --- | --- |
|  | 9 | **R13 Lineup** |  | 2025-09-08 | 2026-03-06 |  |  |  |  |  |  |  |  |  |  |  |  |  |  |  |
| QTS-38021 |  | DH 1300 / R13 Lineup // Chiller #1RT40-R13 | 20d | 2025-09-08 A | 2025-09-10 A | QTS-1371 | 100% |  | 2025-09-10 | 2025-10-07 |  |  |  |  | OFCI Procurement | Preconstruction | GMP | Chris Perales | Preconstruction | 01ADMIN |
| QTS-38181 |  | DH 1300 / R13 Lineup // 2500KVA Padmount XFMR #R13 | 20d | 2025-11-03 A | 2025-11-03 A | QTS-1371 | 100% |  | 2025-12-03 | 2026-01-06 |  |  |  |  | OFCI Procurement | Preconstruction | GMP | Chris Perales | Preconstruction | 01ADMIN |
| QTS-41171 |  | DH 1300 / R13 Lineup // Assembly - Housing #GEN-R13 | 20d | 2025-11-24 A | 2026-02-27 | QTS-1371 |  | 32d | 2026-01-06 | 2026-02-03 | 10d | 0d |  | 2026-02-27 | OFCI Procurement | Preconstruction |  | Chris Perales | Preconstruction | 01ADMIN |
| QTS-41161 |  | DH 1300 / R13 Lineup // Assembly - SCR #GEN-R13 | 20d | 2025-12-03 A | 2026-03-06 | QTS-1371 |  | 37d | 2025-12-03 | 2026-01-06 | 51d | 0d |  | 2026-03-06 | OFCI Procurement | Preconstruction |  | Chris Perales | Preconstruction | 01ADMIN |
| QTS-41141 |  | DH 1300 / R13 Lineup // Assembly - Tank #GEN-R13 | 20d | 2025-12-17 A | 2026-02-25 | QTS-1371 |  | 30d | 2026-01-06 | 2026-02-03 | 12d | 0d |  | 2026-02-25 | OFCI Procurement | Preconstruction |  | Chris Perales | Preconstruction | 01ADMIN |
| QTS-41151 |  | DH 1300 / R13 Lineup // Assembly - Engine #GEN-R13 | 20d | 2025-12-17 A | 2026-02-26 | QTS-1371 |  | 31d | 2026-01-06 | 2026-02-03 | 11d | 0d |  | 2026-02-26 | OFCI Procurement | Preconstruction |  | Chris Perales | Preconstruction | 01ADMIN |
| QTS-37471 |  | DH 1300 / R13 Lineup // 600A MOD #R13-03 (CRAH Support) | 20d | 2026-01-12 A | 2026-01-12 A | QTS-1371 | 100% |  | 2026-01-20 | 2026-02-16 |  |  | as late as possible; as late as possible |  | OFCI Procurement | Preconstruction | GMP | Chris Perales | Preconstruction | 01ADMIN |
| QTS-37481 |  | DH 1300 / R13 Lineup // 1300A MOD #R13-02 | 20d | 2026-01-12 A | 2026-01-12 A | QTS-1371 | 100% |  | 2026-01-20 | 2026-02-16 |  |  | as late as possible; as late as possible |  | OFCI Procurement | Preconstruction | GMP | Chris Perales | Preconstruction | 01ADMIN |
|  | 11 | **Fragnet / Zone 3 // Pods** |  | 2025-11-06 | 2026-02-18 |  |  |  |  |  |  |  |  |  |  |  |  |  |  |  |
| QTS-120380 |  | Fragnet / Zone 3 POD Delivery Delay | 20d | 2025-11-06 A | 2026-01-30 | QTS-120410 | 40% | 12d | 2025-11-06 | 2025-12-05 | 22d | 0d |  | 2026-01-30 | OFCI Procurement | Preconstruction | GMP | Chris Perales | Preconstruction | 01ADMIN |
| QTS-36711 |  | Fragnet / DH 2300 / A23 Lineup // UPS Container #A23 | 20d | 2026-01-14 A | 2026-02-04 | QTS-1371, QTS-120380 FF | 25% | 15d | 2026-01-21 | 2026-02-17 | 29d | 0d |  | 2026-02-04 | OFCI Procurement | Preconstruction | GMP | Chris Perales | Preconstruction | 01ADMIN |
| QTS-36721 |  | Fragnet / DH 2300 / B23 Lineup // UPS Container #B23 | 20d | 2026-01-14 A | 2026-02-03 | QTS-1371, QTS-120380 FF+2d | 80% | 4d | 2026-01-21 | 2026-02-17 | 34d | 0d |  | 2026-02-02 | OFCI Procurement | Preconstruction | GMP | Chris Perales | Preconstruction | 01ADMIN |
| QTS-36731 |  | Fragnet / DH 2300 / C23 Lineup // UPS Container #C23 | 20d | 2026-01-14 A | 2026-02-04 | QTS-1371, QTS-120380 FF+3d | 80% | 4d | 2026-01-21 | 2026-02-17 | 33d | 0d |  | 2026-02-02 | OFCI Procurement | Preconstruction | GMP | Chris Perales | Preconstruction |  |
| QTS-36741 |  | Fragnet / DH 2300 / D23 Lineup // UPS Container #D23 | 20d | 2026-01-14 A | 2026-02-05 | QTS-1371, QTS-120380 FF+4d | 70% | 6d | 2026-01-21 | 2026-02-17 | 32d | 0d |  | 2026-02-04 | OFCI Procurement | Preconstruction | GMP | Chris Perales | Preconstruction |  |
| QTS-36751 |  | Fragnet / DH 2300 / E23 Lineup // UPS Container #E23 | 20d | 2026-01-14 A | 2026-02-12 | QTS-1371, QTS-120380 FF+9d | 45% | 11d | 2026-01-21 | 2026-02-17 | 27d | 0d |  | 2026-02-04 | OFCI Procurement | Preconstruction | GMP | Chris Perales | Preconstruction |  |
| QTS-36761 |  | Fragnet / DH 2300 / F23 Lineup // UPS Container #F23 | 20d | 2026-01-14 A | 2026-02-13 | QTS-1371, QTS-120380 FF+10d | 40% | 12d | 2026-01-21 | 2026-02-17 | 26d | 0d |  | 2026-02-05 | OFCI Procurement | Preconstruction | GMP | Chris Perales | Preconstruction |  |
| QTS-36771 |  | Fragnet / DH 2300 / R23 Lineup // UPS Container #R23 | 20d | 2026-01-14 A | 2026-02-13 | QTS-1371, QTS-120380 FF+10d | 60% | 8d | 2026-01-21 | 2026-02-17 | 26d | 0d |  | 2026-02-06 | OFCI Procurement | Preconstruction | GMP | Chris Perales | Preconstruction |  |
| QTS-37551 |  | Fragnet / DH 1300 / A13 Lineup // UPS Container #A13 | 20d | 2026-01-14 A | 2026-02-09 | QTS-1371, QTS-120380 FF | 10% | 18d | 2026-01-21 | 2026-02-17 | 21d | 0d |  | 2026-02-09 | OFCI Procurement | Preconstruction | GMP | Chris Perales | Preconstruction | 01ADMIN |
| QTS-37561 |  | Fragnet / DH 1300 / B13 Lineup // UPS Container #B13 | 20d | 2026-01-14 A | 2026-02-06 | QTS-1371, QTS-120380 FF+2d | 15% | 17d | 2026-01-21 | 2026-02-17 | 26d | 0d |  | 2026-02-06 | OFCI Procurement | Preconstruction | GMP | Chris Perales | Preconstruction | 01ADMIN |
| QTS-37571 |  | Fragnet / DH 1300 / C13 Lineup // UPS Container #C13 | 20d | 2026-01-14 A | 2026-02-09 | QTS-1371, QTS-120380 FF+2d | 10% | 18d | 2026-01-21 | 2026-02-17 | 25d | 0d |  | 2026-02-09 | OFCI Procurement | Preconstruction | GMP | Chris Perales | Preconstruction | 01ADMIN |
| QTS-37581 |  | Fragnet / DH 1300 / D13 Lineup // UPS Container #D13 | 20d | 2026-01-14 A | 2026-02-10 | QTS-1371, QTS-120380 FF+4d | 5% | 19d | 2026-01-21 | 2026-02-17 | 24d | 0d |  | 2026-02-10 | OFCI Procurement | Preconstruction | GMP | Chris Perales | Preconstruction |  |
| QTS-37591 |  | Fragnet / DH 1300 / E13 Lineup // UPS Container #E13 | 20d | 2026-01-14 A | 2026-02-11 | QTS-1371, QTS-120380 FF+4d |  | 20d | 2026-01-21 | 2026-02-17 | 23d | 0d |  | 2026-02-11 | OFCI Procurement | Preconstruction | GMP | Chris Perales | Preconstruction |  |
| QTS-37601 |  | Fragnet / DH 1300 / F13 Lineup // UPS Container #F13 | 20d | 2026-01-14 A | 2026-02-13 | QTS-1371, QTS-120380 FF+9d |  | 22d | 2026-01-21 | 2026-02-17 | 21d | 0d |  | 2026-02-13 | OFCI Procurement | Preconstruction | GMP | Chris Perales | Preconstruction |  |
| QTS-37611 |  | Fragnet / DH 1300 / R13 Lineup // UPS Container #R13 | 20d | 2026-01-14 A | 2026-02-18 | QTS-1371, QTS-120380 FF |  | 25d | 2026-01-21 | 2026-02-17 | 14d | 0d |  | 2026-02-18 | OFCI Procurement | Preconstruction | GMP | Chris Perales | Preconstruction | 01ADMIN |

Notes:
- QTS-41171: allucent_notes_20251230_164549: John Capriotti on 2025-12-30 08:51: Due to coordination with DC2 and DC9 and constraints on how many deliveries the vendor can deliver each day/week, including Holiday gaps, these are the new dates. / Management is aware, meetings held between all buildings to coordinate and these are the dates I was informed we get for DC1 in order to satisfy the DC2 and DC9 dates. / allucent_notes: 2025-12-30 08:51 - User: John Capriotti - Date Added: 2025-12-30 08:51 - Note: Due to coordination with DC2 and DC9 and constraints on how many deliveries the vendor can deliver each day/week, including Holiday gaps, these are the new dates.Management is
- QTS-41161: allucent_notes_20251230_164549: John Capriotti on 2025-12-30 08:52: Due to coordination with DC2 and DC9 and constraints on how many deliveries the vendor can deliver each day/week, including Holiday gaps, these are the new dates. / Management is aware, meetings held between all buildings to coordinate and these are the dates I was informed we get for DC1 in order to satisfy the DC2 and DC9 dates. / allucent_notes: 2025-12-30 08:52 - User: John Capriotti - Date Added: 2025-12-30 08:52 - Note: Due to coordination with DC2 and DC9 and constraints on how many deliveries the vendor can deliver each day/week, including Holiday gaps, these are the new dates.Management is
- QTS-41141: allucent_notes_20251230_164549: John Capriotti on 2025-12-30 08:50: Due to coordination with DC2 and DC9 and constraints on how many deliveries the vendor can deliver each day/week, including Holiday gaps, these are the new dates. / Management is aware, meetings held between all buildings to coordinate and these are the dates I was informed we get for DC1 in order to satisfy the DC2 and DC9 dates. / allucent_notes: 2025-12-30 08:50 - User: John Capriotti - Date Added: 2025-12-30 08:50 - Note: Due to coordination with DC2 and DC9 and constraints on how many deliveries the vendor can deliver each day/week, including Holiday gaps, these are the new dates.Management is
- QTS-41151: allucent_notes_20251230_164549: John Capriotti on 2025-12-30 08:51: Due to coordination with DC2 and DC9 and constraints on how many deliveries the vendor can deliver each day/week, including Holiday gaps, these are the new dates. / Management is aware, meetings held between all buildings to coordinate and these are the dates I was informed we get for DC1 in order to satisfy the DC2 and DC9 dates. / allucent_notes: 2025-12-30 08:51 - User: John Capriotti - Date Added: 2025-12-30 08:51 - Note: Due to coordination with DC2 and DC9 and constraints on how many deliveries the vendor can deliver each day/week, including Holiday gaps, these are the new dates.Management is
- QTS-120380: allucent_notes_20251202_153722: John Capriotti on 2025-12-02 12:34: Fibrebond Delivery date is 12/18. Due to the coordination and/or the other building ROJ dates impacting DC1 ROJs, this has been pushed out. Fibrebond can only deliver so many a week and all building need by dates overlap. / John Capriotti on 2025-12-02 12:36: Fibrebond Delivery date is 12/19. Due to the coordination and/or the other building ROJ dates impacting DC1 ROJs, this has been pushed out. Fibrebond can only deliver so many a week and all building need by dates overlap. / allucent_notes: 2025-12-02 12:34 - User: John Capriotti - Date Added: 2025-12-02 12:34 - Note: Fibrebond Delivery date is 12/18. Due to the coordination and/or the other building ROJ dates impacting DC1 ROJs, this has been pushed out. Fibrebond can only deliver so many a

| ID | WBS | Activity | Type | Duration | Start | Finish | Predecessors | Complete | Remaining | Planned start | Planned finish | Total float | Free float | Expected finish | Precon Phase | Project Section-1 | Baseline | Layton Responsible Party | Project Section | Allucent CSI Group |
| --- | --- | --- | --- | --- | --- | --- | --- | --- | --- | --- | --- | --- | --- | --- | --- | --- | --- | --- | --- | --- |
|  | 9 | **MVGs** |  |  | 2025-09-08 | 2025-12-29 |  |  |  |  |  |  |  |  |  |  |  |  |  |  |
| QTS-99300 |  | Zone 1 / DC1-MVG-A1 |  | 20d | 2025-09-08 A | 2025-10-20 A | QTS-1371 SS | 100% |  | 2025-09-08 | 2025-10-03 |  |  |  | OFCI Procurement | Preconstruction | GMP | Chris Perales | Preconstruction | 01ADMIN |
| QTS-99310 |  | Zone 1 / DC1-MVG-B1 |  | 20d | 2025-09-09 A | 2025-10-21 A | QTS-1371 SS | 100% |  | 2025-09-09 | 2025-10-06 |  |  |  | OFCI Procurement | Preconstruction | GMP | Chris Perales | Preconstruction | 01ADMIN |
| QTS-99340 |  | Zone 3 / DC1-MVG-A2 |  | 20d | 2025-10-27 A | 2025-10-27 A | QTS-1371 SS | 100% |  | 2025-12-10 | 2026-01-13 |  |  |  | OFCI Procurement | Preconstruction | GMP | Chris Perales | Preconstruction | 01ADMIN |
| QTS-99350 |  | Zone 3 / DC1-MVG-C2/G1 |  | 20d | 2025-10-27 A | 2025-10-27 A | QTS-1371 SS | 100% |  | 2025-12-11 | 2026-01-14 |  |  |  | OFCI Procurement | Preconstruction | GMP | Chris Perales | Preconstruction | 01ADMIN |
| QTS-99320 |  | Zone 2 / DC1-MVG-C1 |  | 20d | 2025-10-31 A | 2025-12-29 A | QTS-1371 SS | 100% |  | 2025-10-31 | 2025-12-01 |  |  |  | OFCI Procurement | Preconstruction | GMP | Chris Perales | Preconstruction | 01ADMIN |
| QTS-99330 |  | Zone 2 / DC1-MVG-D1 |  | 20d | 2025-11-03 A | 2025-12-29 A | QTS-1371 SS | 100% |  | 2025-11-03 | 2025-12-02 |  |  |  | OFCI Procurement | Preconstruction | GMP | Chris Perales | Preconstruction | 01ADMIN |
|  | 12 | **Fragnet / Generator Neutral Bus Kits** |  |  | 2025-12-15 | 2026-02-17 |  |  |  |  |  |  |  |  |  |  |  |  |  |  |
| QTS-1004490 |  | Fragnet / Deliver Zone 1 Generator Neutral Bus Kits (21) |  | 20d | 2025-12-15 A | 2026-02-17 | QTS-1371 SS |  | 24d | 2025-10-31 | 2025-12-01 | 6d | 0d | 2026-02-17 | OFCI Procurement | Preconstruction | GMP | Chris Perales | Preconstruction | 01ADMIN |
|  | 14 | **BIM** |  |  | 2025-01-28 | 2025-10-14 |  |  |  |  |  |  |  |  |  |  |  |  |  |  |
|  | 1 | **Under Slab Coordination** |  |  | 2025-01-28 | 2025-07-11 |  |  |  |  |  |  |  |  |  |  |  |  |  |  |
| QTS-10993 |  | Model Preparation (Underslab BIM) |  | 4d | 2025-01-28 A | 2025-01-31 A | QTS-1381 | 100% |  |  |  |  |  |  | BIM | Preconstruction |  |  |  |  |
| QTS-10997 |  | Coordination (Underslab BIM) |  | 25d | 2025-02-03 A | 2025-04-25 A | QTS-10993 | 100% |  | 2025-02-03 | 2025-03-07 |  |  |  | BIM | Preconstruction |  |  |  |  |
| QTS-10994 |  | Sign-Off (Underslab BIM) | milestone | 0d | 2025-04-25 A | 2025-04-25 A | QTS-10997 FF | 100% |  |  |  |  |  |  | BIM | Preconstruction |  |  |  |  |
| QTS-10995 |  | Submit Shop Drawings (Underslab BIM) |  | 5d | 2025-04-28 A | 2025-07-02 A | QTS-10994 | 100% |  | 2025-04-28 | 2025-05-02 |  |  |  | BIM | Preconstruction |  | Chris Perales | Preconstruction | 01ADMIN |
| QTS-10996 |  | Shop Drawings Review (Underslab BIM) |  | 5d | 2025-07-03 A | 2025-07-10 A | QTS-10995 | 100% |  | 2025-06-26 | 2025-07-02 |  |  |  | BIM | Preconstruction |  | Chris Perales | Preconstruction | 01ADMIN |
| QTS-10998 |  | First MEP Install Date (Underslab BIM) (DUE BY 3/27/25) |  | 1d | 2025-07-11 A | 2025-07-11 A | QTS-10996 | 100% |  |  |  |  |  |  | BIM | Preconstruction |  | Chris Perales | Preconstruction | 01ADMIN |
|  | 2 | **Site Coordination** |  |  | 2025-01-28 | 2025-07-15 |  |  |  |  |  |  |  |  |  |  |  |  |  |  |
| QTS-38691 |  | Model Preparation (Site BIM) |  | 4d | 2025-01-28 A | 2025-01-31 A | QTS-9711 | 100% |  |  |  |  |  |  | BIM | Preconstruction |  |  |  |  |
| QTS-38701 |  | Coordination (Site BIM) |  | 25d | 2025-02-03 A | 2025-04-29 A | QTS-38691 | 100% |  | 2025-02-03 | 2025-03-07 |  |  |  | BIM | Preconstruction |  |  |  |  |
| QTS-38711 |  | Sign-Off (Site BIM) | milestone | 0d | 2025-04-29 A | 2025-04-29 A | QTS-38701 FF | 100% |  |  |  |  |  |  | BIM | Preconstruction |  |  |  |  |
| QTS-38721 |  | Submit Shop Drawings (Site BIM) |  | 5d | 2025-04-30 A | 2025-05-08 A | QTS-38711 | 100% |  | 2025-04-30 | 2025-05-06 |  |  |  | BIM | Preconstruction |  |  |  |  |
| QTS-38731 |  | Shop Drawings Review (Site BIM) |  | 5d | 2025-05-09 A | 2025-07-14 A | QTS-38721 | 100% |  | 2025-05-09 | 2025-05-15 |  |  |  | BIM | Preconstruction |  | Chris Perales | Preconstruction | 01ADMIN |
| QTS-38741 |  | First MEP Install Date (Site BIM) (DUE BY 3/27/25) |  | 1d | 2025-07-15 A | 2025-07-15 A | QTS-38731, QTS-10998 | 100% |  |  |  |  |  |  | BIM | Preconstruction |  | Chris Perales | Preconstruction | 01ADMIN |

Notes:
- QTS-99300: allucent_notes_20251014_152335: John Capriotti on 2025-10-07 13:10: Plan is to set this first MVG with FOH XFMR on 10/16 / allucent_notes_20251021_145627: John Capriotti on 2025-10-07 13:10: Plan is to set this first MVG with FOH XFMR on 10/16 / John Capriotti on 2025-10-21 14:10: Received on 10/20 / allucent_notes: 2025-10-07 13:10 - User: John Capriotti - Date Added: 2025-10-07 13:10 - Note: Plan is to set this first MVG with FOH XFMR on 10/16 / 2025-10-21 14:10 - User: John Capriotti - Date Added: 2025-10-21 14:10 - Note: Received on 10/20
- QTS-99310: allucent_notes_20251014_152335: John Capriotti on 2025-10-14 13:10: Delivery set for 10/21. / allucent_notes_20251021_145627: John Capriotti on 2025-10-14 13:10: Delivery set for 10/21. / allucent_notes: 2025-10-14 13:10 - User: John Capriotti - Date Added: 2025-10-14 13:10 - Note: Delivery set for 10/21.
- QTS-99320: allucent_notes_20251230_164549: John Capriotti on 2025-12-02 12:42: Need to confirm when Pads will be complete and OEG can get crane/fork to set. / John Capriotti on 2025-12-16 13:56: From my recent updates we are looking at possibly setting these on 12/22 so will request these for 12/22. Confirming with OEG and Suntec now. / John Capriotti on 2025-12-30 09:58: Received and set on 12/29 / allucent_notes_20251202_153722: John Capriotti on 2025-12-02 12:42: Need to confirm when Pads will be complete and OEG can get crane/fork to set. / allucent_notes_20251209_203830: John Capriotti on 2025-12-02 12:42: Need to confirm when Pads will be complete and OEG can get crane/fork to set. / allucent_notes_20251216_165335: John Capriotti on 2025-12-02 12:42: Need to confirm when Pads will be complete and OEG can get crane/fork to set. / John Capriotti on 2025-12-16 13:56: From my recent updates we are looking at possibly setting these on 12/22 so will request these for 12/22. Confirming with OEG and Suntec now. / allucent_notes: 2025-12-02 12:42 - User: John Capriotti - Date Added: 2025-12-02 12:42 - Note: Need to confirm when Pads will be complete and OEG can get crane/fork to set. / 2025-12-16 13:56 - User: John Capriotti - Date Added: 2025-12-16 13:56 - Note: From my recent u
- QTS-99330: allucent_notes_20251230_164549: John Capriotti on 2025-12-02 12:42: Need to confirm when Pads will be complete and OEG can get crane/fork to set. / John Capriotti on 2025-12-16 13:56: From my recent updates we are looking at possibly setting these on 12/22 so will request these for 12/22. Confirming with OEG and Suntec now. / John Capriotti on 2025-12-30 09:58: Received and set on 12/29 / allucent_notes_20251202_153722: John Capriotti on 2025-12-02 12:42: Need to confirm when Pads will be complete and OEG can get crane/fork to set. / allucent_notes_20251209_203830: John Capriotti on 2025-12-02 12:42: Need to confirm when Pads will be complete and OEG can get crane/fork to set. / allucent_notes_20251216_165335: John Capriotti on 2025-12-02 12:42: Need to confirm when Pads will be complete and OEG can get crane/fork to set. / John Capriotti on 2025-12-16 13:56: From my recent updates we are looking at possibly setting these on 12/22 so will request these for 12/22. Confirming with OEG and Suntec now. / allucent_notes: 2025-12-02 12:42 - User: John Capriotti - Date Added: 2025-12-02 12:42 - Note: Need to confirm when Pads will be complete and OEG can get crane/fork to set. / 2025-12-16 13:56 - User: John Capriotti - Date Added: 2025-12-16 13:56 - Note: From my recent u
- QTS-1004490: allucent_notes_20251230_164549: John Capriotti on 2025-12-02 12:42: Need to confirm when Pads will be complete and OEG can get crane/fork to set. / John Capriotti on 2025-12-16 13:56: From my recent updates we are looking at possibly setting these on 12/22 so will request these for 12/22. Confirming with OEG and Suntec now. / John Capriotti on 2025-12-30 09:58: Received and set on 12/29 / allucent_notes_20251202_153722: John Capriotti on 2025-12-02 12:42: Need to confirm when Pads will be complete and OEG can get crane/fork to set. / allucent_notes_20251209_203830: John Capriotti on 2025-12-02 12:42: Need to confirm when Pads will be complete and OEG can get crane/fork to set. / allucent_notes_20251216_165335: John Capriotti on 2025-12-02 12:42: Need to confirm when Pads will be complete and OEG can get crane/fork to set. / John Capriotti on 2025-12-16 13:56: From my recent updates we are looking at possibly setting these on 12/22 so will request these for 12/22. Confirming with OEG and Suntec now. / allucent_notes: 2025-12-02 12:42 - User: John Capriotti - Date Added: 2025-12-02 12:42 - Note: Need to confirm when Pads will be complete and OEG can get crane/fork to set. / 2025-12-16 13:56 - User: John Capriotti - Date Added: 2025-12-16 13:56 - Note: From my recent u

| ID | WBS | Activity | Type | Duration | Start | Finish | Predecessors | Complete | Planned start | Planned finish | Precon Phase | Project Section-1 | Layton Responsible Party | Project Section | Allucent CSI Group |
| --- | --- | --- | --- | --- | --- | --- | --- | --- | --- | --- | --- | --- | --- | --- | --- |
|  | 3 | **Panel Penetrations Coordination** |  |  | 2025-03-31 | 2025-08-08 |  |  |  |  |  |  |  |  |  |
| QTS-38751 |  | Model Preparation (Panel Penetrations BIM) |  | 10d | 2025-03-31 A | 2025-04-25 A | QTS-9711, QTS-38691 SS | 100% | 2025-03-31 | 2025-04-11 | BIM | Preconstruction |  |  |  |
| QTS-38761 |  | Coordination (Panel Penetrations BIM) |  | 10d | 2025-04-23 A | 2025-07-02 A | QTS-38751 | 100% | 2025-04-23 | 2025-05-06 | BIM | Preconstruction | Chris Perales | Preconstruction | 01ADMIN |
| QTS-38771 |  | Sign-Off (Panel Penetrations BIM) | milestone | 0d | 2025-07-02 A | 2025-07-02 A | QTS-38761 FF | 100% | 2025-06-27 | 2025-06-27 | BIM | Preconstruction | Chris Perales | Preconstruction | 01ADMIN |
| QTS-38781 |  | Submit Shop Drawings (Panel Penetrations BIM) |  | 5d | 2025-07-03 A | 2025-07-10 A | QTS-38771 | 100% | 2025-06-30 | 2025-07-07 | BIM | Preconstruction | Chris Perales | Preconstruction | 01ADMIN |
| QTS-38791 |  | Shop Drawings Review (Panel Penetrations BIM) |  | 15d | 2025-07-11 A | 2025-08-07 A | QTS-38781 | 100% | 2025-07-11 | 2025-07-31 | BIM | Preconstruction | Chris Perales | Preconstruction | 01ADMIN |
| QTS-38801 |  | First MEP Install Date (Panel Penetrations BIM) |  | 1d | 2025-08-08 A | 2025-08-08 A | QTS-38791 | 100% |  |  | BIM | Preconstruction | Chris Perales | Preconstruction | 01ADMIN |
|  | 4 | **SOMD Penetrations Coordination** |  |  | 2025-03-03 | 2025-08-01 |  |  |  |  |  |  |  |  |  |
| QTS-38811 |  | Model Preparation (SOMD Penetrations BIM) |  | 10d | 2025-03-03 A | 2025-03-14 A | QTS-9711 | 100% |  |  | BIM | Preconstruction |  |  |  |
| QTS-38821 |  | Coordination (SOMD Penetrations BIM) |  | 15d | 2025-03-17 A | 2025-05-12 A | QTS-38811 | 100% | 2025-03-17 | 2025-04-04 | BIM | Preconstruction |  |  |  |
| QTS-38831 |  | Sign-Off (SOMD Penetrations BIM) | milestone | 0d | 2025-05-12 A | 2025-05-12 A | QTS-38821 FF | 100% |  |  | BIM | Preconstruction |  |  |  |
| QTS-38841 |  | Submit Shop Drawings (SOMD Penetrations BIM) |  | 5d | 2025-05-13 A | 2025-07-02 A | QTS-38831 | 100% | 2025-05-13 | 2025-05-19 | BIM | Preconstruction | Chris Perales | Preconstruction | 01ADMIN |
| QTS-38851 |  | Shop Drawings Review (SOMD Penetrations BIM) |  | 15d | 2025-07-03 A | 2025-07-31 A | QTS-38841 | 100% | 2025-06-26 | 2025-07-17 | BIM | Preconstruction | Chris Perales | Preconstruction | 01ADMIN |
| QTS-38861 |  | First MEP Install Date (SOMD Penetrations BIM) (DUE BY 6/2/25) |  | 1d | 2025-08-01 A | 2025-08-01 A | QTS-38851 | 100% |  |  | BIM | Preconstruction | Chris Perales | Preconstruction | 01ADMIN |
|  | 5 | **Roof Coordination** |  |  | 2025-03-31 | 2025-08-01 |  |  |  |  |  |  |  |  |  |
| QTS-38871 |  | Model Preparation (Roof BIM) |  | 10d | 2025-03-31 A | 2025-04-14 A | QTS-9711 | 100% | 2025-03-31 | 2025-04-11 | BIM | Preconstruction |  |  |  |
| QTS-38881 |  | Coordination (Roof BIM) |  | 14d | 2025-04-15 A | 2025-06-17 A | QTS-38871 | 100% | 2025-04-15 | 2025-05-02 | BIM | Preconstruction | Chris Perales | Preconstruction | 01ADMIN |
| QTS-38891 |  | Sign-Off (Roof BIM) | milestone | 0d | 2025-06-17 A | 2025-06-17 A | QTS-38881 FF | 100% | 2025-06-25 | 2025-06-25 | BIM | Preconstruction | Chris Perales | Preconstruction | 01ADMIN |
| QTS-38901 |  | Submit Shop Drawings (Roof BIM) |  | 11d | 2025-06-18 A | 2025-07-02 A | QTS-38891 | 100% | 2025-06-26 | 2025-07-11 | BIM | Preconstruction | Chris Perales | Preconstruction | 01ADMIN |
| QTS-38911 |  | Shop Drawings Review (Roof BIM) |  | 15d | 2025-07-03 A | 2025-07-31 A | QTS-38901 | 100% | 2025-06-30 | 2025-07-21 | BIM | Preconstruction | Chris Perales | Preconstruction | 01ADMIN |
| QTS-38921 |  | First MEP Install Date (Roof BIM) |  | 1d | 2025-08-01 A | 2025-08-01 A | QTS-38911 | 100% |  |  | BIM | Preconstruction | Chris Perales | Preconstruction | 01ADMIN |
|  | 6 | **Level 2 Corridors** |  |  | 2025-04-14 | 2025-08-01 |  |  |  |  |  |  |  |  |  |
| QTS-38931 |  | Model Preparation (Level 2 Corridors BIM) |  | 10d | 2025-04-14 A | 2025-05-07 A | QTS-38871 | 100% | 2025-04-14 | 2025-04-25 | BIM | Preconstruction |  |  |  |
| QTS-38941 |  | Coordination (Level 2 Corridors BIM) |  | 15d | 2025-05-08 A | 2025-06-18 A | QTS-38931, QTS-38881 SS | 100% | 2025-05-08 | 2025-05-29 | BIM | Preconstruction | Chris Perales | Preconstruction | 01ADMIN |
| QTS-38951 |  | Sign-Off (Level 2 Corridors BIM) | milestone | 0d | 2025-06-18 A | 2025-06-18 A | QTS-38941 FF | 100% | 2025-06-25 | 2025-06-25 | BIM | Preconstruction | Chris Perales | Preconstruction | 01ADMIN |
| QTS-38961 |  | Submit Shop Drawings (Level 2 Corridors BIM) |  | 10d | 2025-06-19 A | 2025-07-02 A | QTS-38951 | 100% | 2025-06-26 | 2025-07-10 | BIM | Preconstruction | Chris Perales | Preconstruction | 01ADMIN |
| QTS-38971 |  | Shop Drawings Review (Level 2 Corridors BIM) |  | 15d | 2025-07-03 A | 2025-07-31 A | QTS-38961 | 100% | 2025-07-03 | 2025-07-24 | BIM | Preconstruction | Chris Perales | Preconstruction | 01ADMIN |
| QTS-38981 |  | First MEP Install Date (Level 2 Corridors BIM) |  | 1d | 2025-08-01 A | 2025-08-01 A | QTS-38971 | 100% |  |  | BIM | Preconstruction | Chris Perales | Preconstruction | 01ADMIN |

| ID | WBS | Activity | Type | Duration | Start | Finish | Predecessors | Complete | Planned start | Planned finish | Precon Phase | Project Section-1 | Layton Responsible Party | Project Section | Allucent CSI Group |
| --- | --- | --- | --- | --- | --- | --- | --- | --- | --- | --- | --- | --- | --- | --- | --- |
|  | 7 | **Level 1 Corridors** |  |  | 2025-05-14 | 2025-08-28 |  |  |  |  |  |  |  |  |  |
| QTS-38991 |  | Model Preparation (Level 1 Corridors BIM) |  | 10d | 2025-05-14 A | 2025-06-16 A | QTS-9711, QTS-38931 | 100% | 2025-05-14 | 2025-05-28 | BIM | Preconstruction | Chris Perales | Preconstruction | 01ADMIN |
| QTS-39001 |  | Coordination (Level 1 Corridors BIM) |  | 18d | 2025-06-17 A | 2025-07-11 A | QTS-38991, QTS-38941 | 100% | 2025-06-26 | 2025-07-22 | BIM | Preconstruction | Chris Perales | Preconstruction | 01ADMIN |
| QTS-39011 |  | Sign-Off (Level 1 Corridors BIM) | milestone | 0d | 2025-07-11 A | 2025-07-11 A | QTS-39001 FF | 100% |  |  | BIM | Preconstruction | Chris Perales | Preconstruction | 01ADMIN |
| QTS-39021 |  | Submit Shop Drawings (Level 1 Corridors BIM) |  | 5d | 2025-07-14 A | 2025-08-01 A | QTS-39011 | 100% | 2025-07-14 | 2025-07-18 | BIM | Preconstruction | Chris Perales | Preconstruction | 01ADMIN |
| QTS-39031 |  | Shop Drawings Review (Level 1 Corridors BIM) |  | 15d | 2025-08-04 A | 2025-08-19 A | QTS-39021 | 100% | 2025-08-04 | 2025-08-22 | BIM | Preconstruction | Chris Perales | Preconstruction | 01ADMIN |
| QTS-39041 |  | First MEP Install Date (Level 1 Corridors BIM) |  | 1d | 2025-08-20 A | 2025-08-28 A | QTS-39031 | 100% | 2025-08-20 | 2025-08-20 | BIM | Preconstruction | Chris Perales | Preconstruction | 01ADMIN |
|  | 8 | **Level 2 DH 2100** |  |  | 2025-06-26 | 2025-08-28 |  |  |  |  |  |  |  |  |  |
| QTS-39051 |  | Model Preparation (DH 2100 BIM) |  | 10d | 2025-06-26 A | 2025-07-10 A | QTS-9711, QTS-38991 | 100% |  |  | BIM | Preconstruction | Chris Perales | Preconstruction | 01ADMIN |
| QTS-39061 |  | Coordination (DH 2100 BIM) |  | 15d | 2025-07-11 A | 2025-08-07 A | QTS-39051, QTS-39001 SS | 100% | 2025-07-11 | 2025-07-31 | BIM | Preconstruction | Chris Perales | Preconstruction | 01ADMIN |
| QTS-39081 |  | Submit Shop Drawings (DH 2100 BIM) |  | 5d | 2025-08-08 A | 2025-08-14 A | QTS-39071 FF | 100% |  |  | BIM | Preconstruction | Chris Perales | Preconstruction | 01ADMIN |
| QTS-39091 |  | Shop Drawings Review (DH 2100 BIM) |  | 15d | 2025-08-13 A | 2025-08-13 A | QTS-39081 | 100% | 2025-08-15 | 2025-09-05 | BIM | Preconstruction | Chris Perales | Preconstruction | 01ADMIN |
| QTS-39071 |  | Sign-Off (DH 2100 BIM) | milestone | 0d | 2025-08-13 A | 2025-08-13 A | QTS-39061 FF | 100% |  |  | BIM | Preconstruction | Chris Perales | Preconstruction | 01ADMIN |
| QTS-39101 |  | First MEP Install Date (DH 2100 BIM) |  | 1d | 2025-08-20 A | 2025-08-28 A | QTS-39091 | 100% | 2025-08-20 | 2025-08-20 | BIM | Preconstruction | Chris Perales | Preconstruction | 01ADMIN |
|  | 9 | **Level 1 DH 1100** |  |  | 2025-07-11 | 2025-10-14 |  |  |  |  |  |  |  |  |  |
| QTS-39111 |  | Model Preparation (DH 1100 BIM) |  | 10d | 2025-07-11 A | 2025-08-08 A | QTS-9711, QTS-39051 | 100% | 2025-07-11 | 2025-07-24 | BIM | Preconstruction | Chris Perales | Preconstruction | 01ADMIN |
| QTS-39121 |  | Coordination (DH 1100 BIM) |  | 15d | 2025-08-11 A | 2025-08-29 A | QTS-39111, QTS-39061 | 100% |  |  | BIM | Preconstruction | Chris Perales | Preconstruction | 01ADMIN |
| QTS-39131 |  | Sign-Off (DH 1100 BIM) | milestone | 0d | 2025-08-29 A | 2025-08-29 A | QTS-39121 FF | 100% |  |  | BIM | Preconstruction | Chris Perales | Preconstruction | 01ADMIN |
| QTS-39141 |  | Submit Shop Drawings (DH 1100 BIM) |  | 5d | 2025-09-02 A | 2025-09-08 A | QTS-39131 | 100% |  |  | BIM | Preconstruction | Chris Perales | Preconstruction | 01ADMIN |
| QTS-39151 |  | Shop Drawings Review (DH 1100 BIM) |  | 15d | 2025-10-01 A | 2025-10-13 A | QTS-39141 | 100% | 2025-10-01 | 2025-10-21 | BIM | Preconstruction | Chris Perales | Preconstruction | 01ADMIN |
| QTS-39161 |  | First MEP Install Date (DH 1100 BIM) |  | 1d | 2025-10-14 A | 2025-10-14 A | QTS-39151 | 100% | 2025-10-22 | 2025-10-22 | BIM | Preconstruction | Chris Perales | Preconstruction | 01ADMIN |
|  | 10 | **Level 2 FOH/BOH** |  |  | 2025-08-11 | 2025-10-14 |  |  |  |  |  |  |  |  |  |
| QTS-39171 |  | Model Preparation (Level 2 FOH/BOH BIM) |  | 10d | 2025-08-11 A | 2025-08-13 A | QTS-9711, QTS-39111 | 100% | 2025-08-11 | 2025-08-22 | BIM | Preconstruction | Chris Perales | Preconstruction | 01ADMIN |
| QTS-39181 |  | Coordination (Level 2 FOH/BOH BIM) |  | 15d | 2025-08-11 A | 2025-08-13 A | QTS-39171 SS, QTS-39121 SS | 100% | 2025-09-02 | 2025-09-22 | BIM | Preconstruction | Chris Perales | Preconstruction | 01ADMIN |
| QTS-39201 |  | Submit Shop Drawings (Level 2 FOH/BOH BIM) |  | 5d | 2025-08-21 A | 2025-10-10 A | QTS-39191 FF | 100% | 2025-09-02 | 2025-09-08 | BIM | Preconstruction | Chris Perales | Preconstruction | 01ADMIN |
| QTS-39191 |  | Sign-Off (Level 2 FOH/BOH BIM) | milestone | 0d | 2025-10-01 A | 2025-10-01 A | QTS-39181 FF | 100% |  |  | BIM | Preconstruction | Chris Perales | Preconstruction | 01ADMIN |
| QTS-39211 |  | Shop Drawings Review (Level 2 FOH/BOH BIM) |  | 15d | 2025-10-09 A | 2025-10-13 A | QTS-39201 | 100% | 2025-10-27 | 2025-11-14 | BIM | Preconstruction | Chris Perales | Preconstruction | 01ADMIN |
| QTS-39221 |  | First MEP Install Date (Level 2 FOH/BOH BIM) |  | 1d | 2025-10-14 A | 2025-10-14 A | QTS-39211 SS+5d | 100% | 2025-11-03 | 2025-11-03 | BIM | Preconstruction | Chris Perales | Preconstruction | 01ADMIN |

Notes:
- QTS-39031: allucent_notes: John Capriotti on 2025-08-19 15:08: Adjusting to 8/19, confirmed all are complete. / allucent_notes: 2025-08-19 15:08 - User: John Capriotti - Date Added: 2025-08-19 15:08 - Note: Adjusting to 8/19, confirmed all are complete.
- QTS-39041: allucent_notes: Jason Johnston on 2025-08-27 07:08: No comment / allucent_notes: 2025-08-27 07:08 - User: Jason Johnston - Date Added: 2025-08-27 07:08 - Note: No comment
- QTS-39091: allucent_notes: John Capriotti on 2025-08-19 15:08: Confirmed Level 2 Sign-off sent out on 8/13/2025. / John Capriotti on 2025-08-19 15:08: Confirmed Level 2 Sign-off sent out on 8/13/2025. / allucent_notes: 2025-08-19 15:08 - User: John Capriotti - Date Added: 2025-08-19 15:08 - Note: Confirmed Level 2 Sign-off sent out on 8/13/2025. / 2025-08-19 15:08 - User: John Capriotti - Date Added: 2025-08-19 15:08 - Note: Confirmed Level 2 Sign-off sent out on 8/13
- QTS-39071: allucent_notes: Jason Johnston on 2025-08-12 18:08: Need response from team / allucent_notes: 2025-08-12 18:08 - User: Jason Johnston - Date Added: 2025-08-12 18:08 - Note: Need response from team
- QTS-39101: allucent_notes: Jason Johnston on 2025-08-27 07:08: No comment / allucent_notes: 2025-08-27 07:08 - User: Jason Johnston - Date Added: 2025-08-27 07:08 - Note: No comment
- QTS-39171: allucent_notes: John Capriotti on 2025-08-19 15:08: Confirmed Level 2 FOH/BOH Sign-off sent out on 8/13/2025. / allucent_notes: 2025-08-19 15:08 - User: John Capriotti - Date Added: 2025-08-19 15:08 - Note: Confirmed Level 2 FOH/BOH Sign-off sent out on 8/13/2025.
- QTS-39181: allucent_notes: John Capriotti on 2025-08-19 15:08: Coordination started when the model was being prepared. / John Capriotti on 2025-08-19 15:08: Confirmed Level 2 FOH/BOH Sign-off sent out on 8/13/2025. / allucent_notes: 2025-08-19 15:08 - User: John Capriotti - Date Added: 2025-08-19 15:08 - Note: Coordination started when the model was being prepared. / 2025-08-19 15:08 - User: John Capriotti - Date Added: 2025-08-19 15:08 - Note: Confirmed Level 2 FOH/BOH Sign-off sen
- QTS-39201: allucent_notes: Jason Johnston on 2025-08-27 07:08: No comment / allucent_notes_20251014_152335: Jason Johnston on 2025-08-27 07:08: No comment / Chris Perales on 2025-09-02 12:09: New clashes after integrating TFO scope need to be rectified. Trying to get these coordinated this week / allucent_notes_20251021_145627: Jason Johnston on 2025-08-27 07:08: No comment / Chris Perales on 2025-09-02 12:09: New clashes after integrating TFO scope need to be rectified. Trying to get these coordinated this week / allucent_notes_20251027_224008: Jason Johnston on 2025-08-27 07:08: No comment / Chris Perales on 2025-09-02 12:09: New clashes after integrating TFO scope need to be rectified. Trying to get these coordinated this week / allucent_notes: 2025-08-27 07:08 - User: Jason Johnston - Date Added: 2025-08-27 07:08 - Note: No comment / 2025-09-02 12:09 - User: Chris Perales - Date Added: 2025-09-02 12:09 - Note: New clashes after integrating TFO scope need to be rectified. Trying to get these co
- QTS-39191: allucent_notes: Jason Johnston on 2025-08-27 07:08: No comment / allucent_notes: 2025-08-27 07:08 - User: Jason Johnston - Date Added: 2025-08-27 07:08 - Note: No comment / 2025-09-02 12:09 - User: Chris Perales - Date Added: 2025-09-02 12:09 - Note: Tied to re-coordination of BIM due to TFO

| ID | WBS | Activity | Type | Duration | Start | Finish | Predecessors | Complete | Planned start | Planned finish | Precon Phase | Project Section-1 | Layton Responsible Party | Project Section | Allucent CSI Group |
| --- | --- | --- | --- | --- | --- | --- | --- | --- | --- | --- | --- | --- | --- | --- | --- |
|  | 11 | **Level 1 FOH/BOH** |  |  | 2025-08-14 | 2025-10-14 |  |  |  |  |  |  |  |  |  |
| QTS-39231 |  | Model Preparation (Level 1 FOH/BOH BIM) |  | 10d | 2025-08-14 A | 2025-08-14 A | QTS-9711, QTS-39171 | 100% | 2025-08-25 | 2025-09-08 | BIM | Preconstruction | Chris Perales | Preconstruction | 01ADMIN |
| QTS-39241 |  | Coordination (Level 1 FOH/BOH BIM) |  | 15d | 2025-08-20 A | 2025-08-22 A | QTS-39231, QTS-39181 | 100% | 2025-09-02 | 2025-09-22 | BIM | Preconstruction | Chris Perales | Preconstruction | 01ADMIN |
| QTS-39251 |  | Sign-Off (Level 1 FOH/BOH BIM) | milestone | 0d | 2025-08-22 A | 2025-08-22 A | QTS-39241 FF | 100% |  |  | BIM | Preconstruction | Chris Perales | Preconstruction | 01ADMIN |
| QTS-39261 |  | Submit Shop Drawings (Level 1 FOH/BOH BIM) |  | 5d | 2025-10-06 A | 2025-10-08 A | QTS-39251 | 100% | 2025-10-01 | 2025-10-07 | BIM | Preconstruction | Chris Perales | Preconstruction | 01ADMIN |
| QTS-39271 |  | Shop Drawings Review (Level 1 FOH/BOH BIM) |  | 15d | 2025-10-09 A | 2025-10-13 A | QTS-39261 | 100% | 2025-10-08 | 2025-10-28 | BIM | Preconstruction | Chris Perales | Preconstruction | 01ADMIN |
| QTS-39281 |  | First MEP Install Date (Level 1 FOH/BOH BIM) |  | 1d | 2025-10-14 A | 2025-10-14 A | QTS-39271 | 100% | 2025-10-29 | 2025-10-29 | BIM | Preconstruction | Chris Perales | Preconstruction | 01ADMIN |
|  | 12 | **Level 2 DH 2200** |  |  | 2025-08-20 | 2025-10-14 |  |  |  |  |  |  |  |  |  |
| QTS-39291 |  | Model Preparation (Level 2 DH 2200 BIM) |  | 10d | 2025-08-20 A | 2025-09-24 A | QTS-9711, QTS-39231 | 100% | 2025-08-20 | 2025-09-03 | BIM | Preconstruction | Chris Perales | Preconstruction | 01ADMIN |
| QTS-39301 |  | Coordination (Level 2 DH 2200 BIM) |  | 8d | 2025-09-25 A | 2025-10-03 A | QTS-39291, QTS-39241 | 100% | 2025-10-01 | 2025-10-10 | BIM | Preconstruction | Chris Perales | Preconstruction | 01ADMIN |
| QTS-39311 |  | Sign-Off (Level 2 DH 2200 BIM) | milestone | 0d | 2025-10-03 A | 2025-10-03 A | QTS-39301 FF | 100% | 2025-10-10 | 2025-10-10 | BIM | Preconstruction | Chris Perales | Preconstruction | 01ADMIN |
| QTS-39321 |  | Submit Shop Drawings (Level 2 DH 2200 BIM) |  | 5d | 2025-10-06 A | 2025-10-08 A | QTS-39311 | 100% | 2025-10-13 | 2025-10-17 | BIM | Preconstruction | Chris Perales | Preconstruction | 01ADMIN |
| QTS-39331 |  | Shop Drawings Review (Level 2 DH 2200 BIM) |  | 8d | 2025-10-09 A | 2025-10-13 A | QTS-39321 | 100% | 2025-10-20 | 2025-10-29 | BIM | Preconstruction | Chris Perales | Preconstruction | 01ADMIN |
| QTS-39341 |  | First MEP Install Date (Level 2 DH 2200 BIM) |  | 1d | 2025-10-14 A | 2025-10-14 A | QTS-39331 | 100% | 2025-10-30 | 2025-10-30 | BIM | Preconstruction | Chris Perales | Preconstruction | 01ADMIN |
|  | 14 | **Level 2 DH 2300** |  |  | 2025-08-20 | 2025-10-14 |  |  |  |  |  |  |  |  |  |
| QTS-41961 |  | Model Preparation (Level 2 DH 2300 BIM) |  | 10d | 2025-08-20 A | 2025-09-24 A | QTS-39291 | 100% | 2025-10-01 | 2025-10-14 | BIM | Preconstruction | Chris Perales | Preconstruction | 01ADMIN |
| QTS-41971 |  | Coordination (Level 2 DH 2300 BIM) |  | 5d | 2025-09-25 A | 2025-10-03 A | QTS-41961, QTS-39301 SS | 100% | 2025-10-15 | 2025-10-21 | BIM | Preconstruction | Chris Perales | Preconstruction | 01ADMIN |
| QTS-41981 |  | Sign-Off (Level 2 DH 2300 BIM) | milestone | 0d | 2025-10-03 A | 2025-10-03 A | QTS-41971 FF | 100% | 2025-10-21 | 2025-10-21 | BIM | Preconstruction | Chris Perales | Preconstruction | 01ADMIN |
| QTS-41991 |  | Submit Shop Drawings (Level 2 DH 2300 BIM) |  | 5d | 2025-10-06 A | 2025-10-08 A | QTS-41981 | 100% | 2025-10-22 | 2025-10-28 | BIM | Preconstruction | Chris Perales | Preconstruction | 01ADMIN |
| QTS-42001 |  | Shop Drawings Review (Level 2 DH 2300 BIM) |  | 10d | 2025-10-09 A | 2025-10-13 A | QTS-41991 | 100% | 2025-10-29 | 2025-11-11 | BIM | Preconstruction | Chris Perales | Preconstruction | 01ADMIN |
| QTS-42011 |  | First MEP Install Date (Level 2 DH 2300 BIM) |  | 1d | 2025-10-14 A | 2025-10-14 A | QTS-42001 | 100% | 2025-11-12 | 2025-11-12 | BIM | Preconstruction | Chris Perales | Preconstruction | 01ADMIN |
|  | 13 | **Level 1 DH 1200** |  |  | 2025-08-20 | 2025-10-14 |  |  |  |  |  |  |  |  |  |
| QTS-39351 |  | Model Preparation (Level 1 DH 1200 BIM) |  | 10d | 2025-08-20 A | 2025-09-24 A | QTS-9711, QTS-41961 | 100% | 2025-10-15 | 2025-10-28 | BIM | Preconstruction | Chris Perales | Preconstruction | 01ADMIN |
| QTS-39361 |  | Coordination (Level 1 DH 1200 BIM) |  | 5d | 2025-09-25 A | 2025-10-03 A | QTS-39351, QTS-41971 | 100% | 2025-10-29 | 2025-11-04 | BIM | Preconstruction | Chris Perales | Preconstruction | 01ADMIN |
| QTS-39371 |  | Sign-Off (Level 1 DH 1200 BIM) | milestone | 0d | 2025-10-03 A | 2025-10-03 A | QTS-39361 FF | 100% | 2025-11-04 | 2025-11-04 | BIM | Preconstruction | Chris Perales | Preconstruction | 01ADMIN |
| QTS-39381 |  | Submit Shop Drawings (Level 1 DH 1200 BIM) |  | 5d | 2025-10-06 A | 2025-10-08 A | QTS-39371 | 100% | 2025-11-05 | 2025-11-11 | BIM | Preconstruction | Chris Perales | Preconstruction | 01ADMIN |
| QTS-39391 |  | Shop Drawings Review (Level 1 DH 1200 BIM) |  | 10d | 2025-10-09 A | 2025-10-13 A | QTS-39381 | 100% | 2025-11-12 | 2025-11-25 | BIM | Preconstruction | Chris Perales | Preconstruction | 01ADMIN |
| QTS-39401 |  | First MEP Install Date |  | 1d | 2025-10-14 A | 2025-10-14 A | QTS-39391 | 100% | 2025-11-26 | 2025-11-26 | BIM | Preconstruction | Chris Perales | Preconstruction |  |

Notes:
- QTS-39231: allucent_notes: John Capriotti on 2025-08-19 15:08: Confirmed Level 2 FOH/BOH Sign-off sent out on 8/13/2025. / allucent_notes: 2025-08-19 15:08 - User: John Capriotti - Date Added: 2025-08-19 15:08 - Note: Confirmed Level 2 FOH/BOH Sign-off sent out on 8/13/2025.
- QTS-39241: allucent_notes: John Capriotti on 2025-08-26 16:08: Sign off was completed 8/22. / John Capriotti on 2025-08-26 16:08: Signed off on 8/22. / allucent_notes: 2025-08-26 16:08 - User: John Capriotti - Date Added: 2025-08-26 16:08 - Note: Sign off was completed 8/22. / 2025-08-26 16:08 - User: John Capriotti - Date Added: 2025-08-26 16:08 - Note: Signed off on 8/22.
- QTS-39251: allucent_notes: Jason Johnston on 2025-09-02 16:09: Still in progress / allucent_notes: 2025-09-02 16:09 - User: Jason Johnston - Date Added: 2025-09-02 16:09 - Note: Still in progress

| ID | WBS | Activity | Type | Duration | Start | Finish | Predecessors | Complete | Remaining | Planned start | Planned finish | Total float | Free float | Constraint | Expected finish | Calendar | Precon Phase | Project Section-1 | Layton Responsible Party | Project Section | Allucent CSI Group |
| --- | --- | --- | --- | --- | --- | --- | --- | --- | --- | --- | --- | --- | --- | --- | --- | --- | --- | --- | --- | --- | --- |
|  | 15 | **Level 1 DH 1300** |  |  | 2025-08-20 | 2025-10-14 |  |  |  |  |  |  |  |  |  |  |  |  |  |  |  |
| QTS-42021 |  | Model Preparation (Level 1 DH 1300 BIM) |  | 10d | 2025-08-20 A | 2025-09-24 A | QTS-39351 | 100% |  | 2025-10-29 | 2025-11-11 |  |  |  |  |  | BIM | Preconstruction | Chris Perales | Preconstruction | 01ADMIN |
| QTS-42031 |  | Coordination (Level 1 DH 1300 BIM) |  | 10d | 2025-09-25 A | 2025-10-03 A | QTS-42021, QTS-39361 SS | 100% |  | 2025-11-12 | 2025-11-25 |  |  |  |  |  | BIM | Preconstruction | Chris Perales | Preconstruction | 01ADMIN |
| QTS-42041 |  | Sign-Off (Level 1 DH 1300 BIM) | milestone | 0d | 2025-10-03 A | 2025-10-03 A | QTS-42031 FF | 100% |  | 2025-11-25 | 2025-11-25 |  |  |  |  |  | BIM | Preconstruction | Chris Perales | Preconstruction |  |
| QTS-42051 |  | Submit Shop Drawings (Level 1 DH 1300 BIM) |  | 5d | 2025-10-06 A | 2025-10-08 A | QTS-42041 | 100% |  | 2025-11-26 | 2025-12-04 |  |  |  |  |  | BIM | Preconstruction | Chris Perales | Preconstruction |  |
| QTS-42061 |  | Shop Drawings Review (Level 1 DH 1300 BIM) |  | 10d | 2025-10-09 A | 2025-10-13 A | QTS-42051 | 100% |  | 2025-12-05 | 2025-12-18 |  |  |  |  |  | BIM | Preconstruction | Chris Perales | Preconstruction |  |
| QTS-42071 |  | First MEP Install Date |  | 1d | 2025-10-14 A | 2025-10-14 A | QTS-42061 | 100% |  | 2025-12-19 | 2025-12-19 |  |  |  |  |  | BIM | Preconstruction | Chris Perales | Preconstruction |  |
|  | 36 | **TFO Preconstruction** |  |  | 2025-09-03 | 2026-04-29 |  |  |  |  |  |  |  |  |  |  |  |  |  |  |  |
|  | 4 | **Preconstruction** |  |  | 2025-09-03 | 2026-04-29 |  |  |  |  |  |  |  |  |  |  |  |  |  |  |  |
|  | 1 | **Procurement & Submittals** |  |  | 2025-09-03 | 2026-04-29 |  |  |  |  |  |  |  |  |  |  |  |  |  |  |  |
|  | 1 | **CFCI** |  |  | 2025-09-03 | 2026-02-11 |  |  |  |  |  |  |  |  |  |  |  |  |  |  |  |
| QTS - 1020 |  | TFO Scope // Submittals & Approval - HACs |  | 30d | 2025-09-03 A | 2025-10-14 A | QTS-1371 SS | 100% |  |  |  |  |  |  |  |  |  |  |  |  |  |
| QTS - 2590 |  | TFO Scope // Submittals & Procurement - Stainless Steel |  | 30d | 2025-09-03 A | 2025-11-05 A | QTS-1371 SS | 100% |  | 2025-09-03 | 2025-10-14 |  |  |  |  |  |  |  |  |  |  |
| QTS - 1980 |  | TFO Scope // Structural Steel Procurement |  | 5d | 2025-09-08 A | 2025-09-12 A | QTS-1371 SS | 100% |  |  |  |  |  |  |  | **GLOBAL - 5 Day Workweek w/ Basic Holidays |  |  |  |  |  |
| QTS - 2620 |  | TFO Scope // Procure Grating |  | 30d | 2025-10-08 A | 2026-01-14 | QTS-1371 SS | 100% | 0d | 2025-10-08 | 2025-11-18 | 59d | 0d |  | 2026-01-07 |  |  |  |  |  | 01ADMIN |
| QTS - 2610 |  | TFO Scope // DH 2100 Fabricate Stainless Steel |  | 20d | 2025-11-06 A | 2025-12-05 A | QTS-1371 SS, QTS-1371 | 100% |  | 2025-11-24 | 2025-12-23 |  |  |  |  |  |  |  |  |  |  |
| QTS - 24731 |  | TFO Scope // DH 1100 Fabricate Stainless Steel |  | 20d | 2025-12-03 A | 2025-12-08 A | QTS-1371 SS | 100% |  | 2025-12-03 | 2026-01-06 |  |  |  |  |  |  |  |  |  | 01ADMIN |
| QTS - 24741 |  | TFO Scope // DH 2200 Fabricate Stainless Steel |  | 20d | 2025-12-03 A | 2026-01-14 | QTS-1371 SS | 100% | 0d | 2025-12-03 | 2026-01-06 | 41d | 0d |  | 2026-01-09 |  |  |  |  |  | 01ADMIN |
| QTS - 24751 |  | TFO Scope // DH 1200 Fabricate Stainless Steel |  | 20d | 2025-12-03 A | 2026-01-14 | QTS-1371 SS | 100% | 0d | 2025-12-03 | 2026-01-06 | 12d | 0d |  | 2026-01-09 |  |  |  |  |  | 01ADMIN |
| QTS - 24771 |  | TFO Scope // DH 1300 Fabricate Stainless Steel |  | 20d | 2025-12-03 A | 2026-01-14 | QTS-1371 SS | 100% | 0d | 2025-12-03 | 2026-01-06 | 55d | 0d |  | 2026-01-09 |  |  |  |  |  | 01ADMIN |
| QTS - 24851 |  | TFO Scope // Zone 1 MC Cable |  | 20d | 2025-12-03 A | 2026-01-23 | QTS-1371 SS | 65% | 7d | 2025-12-03 | 2026-01-06 | 20d | 0d |  | 2026-01-23 |  |  |  |  |  | 01ADMIN |
| QTS - 24761 |  | TFO Scope // DH 2300 Fabricate Stainless Steel |  | 20d | 2026-01-14 | 2026-02-11 | QTS-1371 SS |  |  |  |  | 31d | 0d | as late as possible; as late as possible |  |  |  |  |  |  | 01ADMIN |
|  | 2 | **OFCI** |  |  | 2025-10-29 | 2026-04-29 |  |  |  |  |  |  |  |  |  |  |  |  |  |  |  |
| QTS - 2600 |  | TFO Scope // Zone 1 QCool Procurement |  | 20d | 2025-10-29 A | 2025-12-23 A | QTS-1371 SS | 100% |  | 2025-10-29 | 2025-11-25 |  |  |  |  |  |  |  |  |  | 01ADMIN |
| QTS - 7540 |  | TFO Scope // Zone 2 QCool Procurement |  | 41d | 2025-11-05 A | 2026-01-13 A | QTS-1371 SS | 100% |  | 2025-11-05 | 2026-01-09 |  |  |  |  |  |  |  |  |  | 01ADMIN |
| QTS - 7550 |  | TFO Scope // Zone 3 QCool Procurement |  | 62d | 2025-11-05 A | 2026-02-10 | QTS-1371 SS | 69% | 19d |  |  | 30d | 0d |  | 2026-02-10 |  |  |  |  |  | 01ADMIN |
| QTS - 1040 |  | TFO Scope // CDU - Zone 1 |  | 20d | 2025-11-17 A | 2025-12-12 A | QTS-1371 SS | 100% |  | 2025-11-17 | 2025-12-16 |  |  |  |  |  |  |  |  |  | 01ADMIN |
| QTS - 1030 |  | TFO Scope // RPP |  | 20d | 2025-12-31 A | 2026-01-26 | QTS-1371 SS | 60% | 8d | 2025-12-31 | 2026-01-30 | 9d | 0d |  | 2026-01-26 |  |  |  |  |  | 01ADMIN |

Notes:
- QTS - 2600: allucent_notes_20251230_164549: Jason Johnston on 2025-12-16 15:18: no update / allucent_notes_20251216_165335: Jason Johnston on 2025-12-16 15:18: no update / allucent_notes: 2025-12-16 15:18 - User: Jason Johnston - Date Added: 2025-12-16 15:18 - Note: no update
- QTS - 1040: allucent_notes_20251230_164549: Jason Johnston on 2025-12-16 15:18: no update / Jason Johnston on 2025-12-30 16:36: No update / allucent_notes_20251216_165335: Jason Johnston on 2025-12-16 15:18: no update / allucent_notes: 2025-12-16 15:18 - User: Jason Johnston - Date Added: 2025-12-16 15:18 - Note: no update / 2025-12-30 16:36 - User: Jason Johnston - Date Added: 2025-12-30 16:36 - Note: No update

| ID | WBS | Activity | Duration | Start | Finish | Predecessors | Complete | Remaining | Planned start | Planned finish | Total float | Free float | Expected finish | Notes | Allucent CSI Group | Baseline | Project Section | Phase-1 | Project Section-1 | Phase-1-1 | Subcontractor | Layton Responsible Party | Level |
| --- | --- | --- | --- | --- | --- | --- | --- | --- | --- | --- | --- | --- | --- | --- | --- | --- | --- | --- | --- | --- | --- | --- | --- |
|  | 1 | **Fragnet / Additional Procurement for RPP Whips** |  | 2025-11-06 | 2026-04-29 |  |  |  |  |  |  |  |  |  |  |  |  |  |  |  |  |  |  |
| QTS - 24781 |  | Fragnet / TFO Scope // Received Equipment for RPP Whips | 1d | 2025-11-06 A | 2025-11-06 A | QTS-1030 SS | 100% |  |  |  |  |  |  |  |  |  |  |  |  |  |  |  |  |
| QTS - 24801 |  | Fragnet / TFO Scope // Identify Issue with Equipment for RPP Whips | 10d | 2025-11-07 A | 2025-11-20 A | QTS - 24781 | 100% |  |  |  |  |  |  |  |  |  |  |  |  |  |  |  |  |
| QTS - 24811 |  | Fragnet / TFO Scope // QTS Notifies Layton Sourcing for Whips Has Begun | 18d | 2025-11-21 A | 2025-12-18 A | QTS - 24801 | 100% |  |  |  |  |  |  |  |  |  |  |  |  |  |  |  |  |
| QTS - 24821 |  | Fragnet / TFO Scope // QTS Notifies Layton Procurement for Whips Has Begun | 10d | 2025-12-19 A | 2026-01-14 | QTS - 24811 | 100% | 0d | 2025-12-19 | 2026-01-08 | 4d | 0d | 2026-01-08 |  |  |  |  |  |  |  |  |  |  |
| QTS - 24791 |  | Fragnet / TFO Scope // Procure Connectors for RPP Whips | 75d | 2026-01-14 | 2026-04-29 | QTS - 24821 |  |  |  |  | 4d | 0d |  |  |  |  |  |  |  |  |  |  |  |
|  | 2 | **BIM TFO Scope** |  | 2025-10-15 | 2026-02-18 |  |  |  |  |  |  |  |  |  |  |  |  |  |  |  |  |  |  |
| QTS - 2240 |  | TFO Scope // DH 2100 BIM | 15d | 2025-10-15 A | 2025-12-03 A | QTS - 1020 FF | 100% |  | 2025-10-15 | 2025-11-04 |  |  |  | 11/20 |  |  |  |  |  |  |  |  |  |
| QTS - 2250 |  | TFO Scope // DH 1100 BIM | 15d | 2025-10-22 A | 2025-12-03 A | QTS - 2240 SS+5d | 100% |  | 2025-10-22 | 2025-11-11 |  |  |  | 12/15 |  |  |  |  |  |  |  |  |  |
| QTS - 10190 |  | TFO Scope // DH 2200 BIM | 15d | 2025-10-29 A | 2026-01-14 A | QTS - 2250 SS+5d | 100% |  | 2025-10-29 | 2025-11-18 |  |  |  | 1/7/26 | 01ADMIN |  |  |  |  |  |  |  |  |
| QTS - 10200 |  | TFO Scope // DH 1200 BIM | 15d | 2026-01-14 | 2026-02-04 | QTS - 10190 SS+5d |  |  |  |  | 29d | 0d |  | 1/29/26 | 01ADMIN |  |  |  |  |  |  |  |  |
| QTS - 10210 |  | TFO Scope // DH 2300 BIM | 15d | 2026-01-22 | 2026-02-11 | QTS - 10200 SS+5d |  |  |  |  | 29d | 0d |  | 2/19/26 | 01ADMIN |  |  |  |  |  |  |  |  |
| QTS - 10220 |  | TFO Scope // DH 1300 BIM | 15d | 2026-01-29 | 2026-02-18 | QTS - 10210 SS+5d |  |  |  |  | 58d | 22d |  | 3/12/26 | 01ADMIN |  |  |  |  |  |  |  |  |
|  | 3 | **Construction** |  | 2025-01-09 | 2026-07-10 |  |  |  |  |  |  |  |  |  |  |  |  |  |  |  |  |  |  |
|  | 1 | **Earthwork & Foundations** |  | 2025-01-15 | 2025-11-14 |  |  |  |  |  |  |  |  |  |  |  |  |  |  |  |  |  |  |
| QTS-1201 |  | Mobilize | 5d | 2025-01-15 A | 2025-01-22 A | QTS-1030 SS | 100% |  |  |  |  |  |  |  |  | IGMP | Construction |  |  |  |  |  |  |
| QTS-3101 |  | Survey Building Corners & Line of Disturbance | 1d | 2025-01-22 A | 2025-01-22 A | QTS-1201 FF | 100% |  |  |  |  |  |  |  |  | IGMP | Construction |  |  |  |  |  |  |
|  | 1 | **Zone 1 Building Pad / Gridlines 1-21** |  | 2025-01-23 | 2025-11-12 |  |  |  |  |  |  |  |  |  |  |  |  |  |  |  |  |  |  |
| QTS-3191 |  | Zone 1 Building Pad / Gridlines H to D.5 // Condition Existing Bldg. Pad & Import Soil (Includes Roll Test) | 5d | 2025-01-23 A | 2025-02-07 A | QTS-3101, QTS-1171, QTS-1201 | 100% |  | 2025-01-23 | 2025-01-29 |  |  |  |  |  | IGMP | Construction | Phase 1 |  |  |  |  |  |
| QTS-3301 |  | Zone 1 Building Pad / Gridlines 1-21 // Mobilize Rammed Aggregate Piers Subcontractor | 3d | 2025-02-12 A | 2025-02-14 A | QTS-1151 FF, QTS-3191, QTS-10922 | 100% |  |  |  |  |  |  |  |  | IGMP |  |  | Construction | Phase 1 |  |  |  |
| QTS-7301 |  | Zone 1 Building Pad / Gridlines 1-21 // Install Rammed Aggregate Piers (Building) | 6d | 2025-02-17 A | 2025-02-24 A | QTS-3301, QTS-4421 | 100% |  | 2025-02-12 | 2025-02-19 |  |  |  |  |  | IGMP | Construction | Phase 1 |  |  |  |  |  |
| QTS-4331 |  | Zone 1 Building Pad / Gridlines 1-21 // Fine Grade Pad | 2d | 2025-03-12 A | 2025-03-13 A | QTS-3191 SS+2d, QTS-3191 FF+2d, QTS-7301, QTS-12821 | 100% |  |  |  |  |  |  |  |  | IGMP | Construction | Phase 1 |  |  |  |  |  |
| QTS-10841 |  | Zone 1 Building Pad / Gridlines 1-21 // Mobilize Equipment | 2d | 2025-03-12 A | 2025-03-14 A | QTS-7301 | 100% |  |  |  |  |  |  |  |  | IGMP |  |  | Construction | Phase 1 |  |  |  |
| QTS-4721 |  | Zone 1 Building Pad / Gridlines 1-21 // Survey & Certify Pad | 1d | 2025-03-14 A | 2025-03-14 A | QTS-4331 SS+2d, QTS-4331 FF | 100% |  |  |  |  |  |  |  |  | IGMP | Construction | Phase 1 |  |  |  |  |  |
| QTS-10851 |  | Zone 1 Building Pad / Gridlines 1-21 // Layout Footings & Grade Beams | 1d | 2025-03-17 A | 2025-03-17 A | QTS-7301, QTS-1131, QTS-4721, QTS-1031 | 100% |  |  |  |  |  |  |  |  | IGMP |  |  | Construction | Phase 1 |  |  |  |
| QTS-11391 |  | Zone 1 Building Pad / Gridlines 1-21 // Excavate & Form Footings & Grade Beams | 10d | 2025-03-17 A | 2025-03-28 A | QTS-10851 SS, QTS-10841, QTS-7301, QTS-8671 SS | 100% |  | 2025-03-17 | 2025-03-31 |  |  |  |  |  | IGMP | Construction | Phase 1 |  |  | Suntec Concrete Inc |  |  |
| QTS-12071 |  | Zone 1 Building Pad / Gridlines 1-21 // Reinforce Footings & Grade Beams | 7d | 2025-03-31 A | 2025-04-08 A | QTS-4451, QTS-6241, QTS-11401 FF, QTS-11391 | 100% |  |  |  |  |  |  |  |  | IGMP | Construction | Phase 1 |  |  | Suntec Concrete Inc |  |  |
| QTS-14901 |  | Zone 1 Building Pad / Gridlines 1-21 // Form, Reinforce, & Pour Freight Elevator Pits | 10d | 2025-03-31 A | 2025-04-23 A | QTS-11391, QTS-12071 SS, QTS-1411 | 100% |  | 2025-03-31 | 2025-04-11 |  |  |  |  |  | IGMP |  |  | Construction | Phase 1 | Suntec Concrete Inc |  |  |
| QTS-12621 |  | Zone 1 Building Pad / Gridlines 1-21 // Install MEP Sleeves | 5d | 2025-04-01 A | 2025-04-04 A | QTS-7301, QTS-11391 SS+7d | 100% |  | 2025-04-01 | 2025-04-08 |  |  |  |  |  | IGMP | Construction | Phase 1 |  |  |  |  |  |
| QTS-42321 |  | Zone 1 Building Pad / Gridlines 1-21 // Excavate, Install, & Backfill Telecom Ductbank | 5d | 2025-04-01 A | 2025-04-04 A | QTS-11391 SS+5d | 100% |  | 2025-04-01 | 2025-04-08 |  |  |  |  |  | IGMP |  |  | Construction | Phase 2 |  |  |  |
| QTS-42331 |  | Zone 1 Building Pad / Gridlines 1-21 // Excavate, Install, & Backfill Telecom Ductbank | 5d | 2025-04-07 A | 2025-05-20 A | QTS-42321 | 100% |  | 2025-04-07 | 2025-04-11 |  |  |  |  |  | IGMP |  |  | Construction | Phase 2 | Suntec Concrete Inc | Ron Carroll |  |
| QTS-12771 |  | Zone 1 Building Pad / Gridlines 1-21 // Pour Footings & Grade Beams | 8d | 2025-04-09 A | 2025-04-23 A | QTS-12761, QTS-3241, QTS-12071, QTS-7871 | 100% |  | 2025-04-09 | 2025-04-18 |  |  |  |  |  | IGMP | Construction | Phase 1 |  |  | Suntec Concrete Inc |  |  |
| QTS-41931 |  | Zone 1 Building Pad / Gridlines 1-21 // Form, Reinforce, & Pour Cast in Place Walls & Grade Beam Tie In | 10d | 2025-04-23 A | 2025-06-12 A | QTS-14901 | 100% |  | 2025-04-23 | 2025-05-06 |  |  |  |  |  | IGMP |  |  | Construction | Phase 1 | Suntec Concrete Inc | Ron Carroll |  |
| QTS-14001 |  | Zone 1 Building Pad / Gridlines 10-21 // Install Sanitary Underground | 10d | 2025-06-13 A | 2025-07-02 A | QTS-12621 FF, QTS-9851, QTS-12771, QTS-10831, QTS-19051 | 100% |  | 2025-06-13 | 2025-06-26 |  |  |  |  | 01ADMIN | IGMP | Construction | Phase 1 |  |  |  | Dave Wiltberger | Underground |
| QTS-15031 |  | Zone 1 Building Pad / Gridlines 10-21 // Install Underground Electrical | 7d | 2025-07-02 A | 2025-07-11 A | QTS-42591, QTS-12621 FF, QTS-1421, QTS-14001 SS+5d, QTS-14001 FF+5d, QTS-12771, QTS-41931 FF | 100% |  | 2025-06-27 | 2025-07-08 |  |  |  |  | 01ADMIN | IGMP | Construction | Phase 1 |  |  | Rosendin Electric, Inc | Scott Masterson | Underground |
| QTS-44791 |  | Zone 1 Building Pad / Gridlines 1-10 // Install Sanitary Underground - FOH - North | 10d | 2025-07-07 A | 2025-07-22 A | QTS-19621 | 100% |  | 2025-07-01 | 2025-07-15 |  |  |  |  | 01ADMIN | IGMP | Construction |  | Construction | Phase 1 | Bel-Aire Mechanical, LLC | Dave Wiltberger | Underground |
| QTS-44801 |  | Zone 1 Building Pad / Gridlines 1-10 // Install Underground Electrical - FOH - North | 7d | 2025-07-21 A | 2025-08-15 A | QTS-44791 SS+5d, QTS-44791 FF+5d | 100% |  | 2025-07-17 | 2025-07-25 |  |  |  |  | 01ADMIN | IGMP | Construction |  | Construction | Phase 1 | Rosendin Electric, Inc | Scott Masterson | Underground |
| QTS-46961 |  | Zone 1 Building Pad / Gridlines 1-10 // Install Sanitary Underground - FOH - South | 10d | 2025-07-23 A | 2025-08-26 A | QTS-44801 SS | 100% |  | 2025-07-23 | 2025-08-05 |  |  |  |  | 01ADMIN | IGMP | Construction |  | Construction | Phase 1 | Bel-Aire Mechanical, LLC | Dave Wiltberger | Underground |
| QTS-16641 |  | Zone 1 Building Pad / Gridlines 1-21 // Waterproof Foundations | 5d | 2025-08-11 A | 2025-08-15 A | QTS-10081, QTS-12771 SS, QTS-19811 | 100% |  | 2025-08-08 | 2025-08-14 |  |  |  |  | 01ADMIN | IGMP | Construction |  | Construction | Phase 1 | Alpha Insulation & Waterproofing, Inc. | Ron Carroll |  |
| QTS-99140 |  | Zone 1 Building Pad / Gridlines 1-10 // Waterproof Foundations | 5d | 2025-08-21 A | 2025-11-12 A | QTS-16641 | 100% |  | 2025-08-21 | 2025-08-27 |  |  |  |  | 01ADMIN | IGMP | Construction |  | Construction | Phase 1 | Alpha Insulation & Waterproofing, Inc. | Ron Carroll |  |
| QTS-46971 |  | Zone 1 Building Pad / Gridlines 1-10 // Install Underground Electrical - FOH - South | 7d | 2025-08-27 A | 2025-09-05 A | QTS-46961 SS+7d, QTS-46961 FF+7d | 100% |  |  |  |  |  |  |  | 01ADMIN | IGMP | Construction |  | Construction | Phase 1 | Rosendin Electric, Inc | Scott Masterson | Underground |
| QTS-99290 |  | Zone 1 Building Pad / Gridlines 10-21 // Waterproof Foundations - South | 2d | 2025-10-07 A | 2025-10-08 A | QTS-16641 | 100% |  |  |  |  |  |  |  | 01ADMIN | IGMP | Construction |  | Construction | Phase 1 | Alpha Insulation & Waterproofing, Inc. | Ron Carroll |  |

Notes:
- QTS - 10190: allucent_notes_20251230_164549: Jason Johnston on 2025-12-09 15:18: Need to confirm who is responsible for updating this / Jason Johnston on 2025-12-16 15:18: no update / Jason Johnston on 2025-12-30 16:36: No update / allucent_notes_20251209_203830: Jason Johnston on 2025-12-09 15:18: Need to confirm who is responsible for updating this / allucent_notes_20251216_165335: Jason Johnston on 2025-12-09 15:18: Need to confirm who is responsible for updating this / Jason Johnston on 2025-12-16 15:18: no update / allucent_notes: 2025-12-09 15:18 - User: Jason Johnston - Date Added: 2025-12-09 15:18 - Note: Need to confirm who is responsible for updating this / 2025-12-16 15:18 - User: Jason Johnston - Date Added: 2025-12-16 15:18 - Note: no update / 2025-12-30 16:36 - User: Jas
- QTS - 10200: allucent_notes_20251230_164549: Jason Johnston on 2025-12-09 15:18: Need to confirm who is responsible for updating this / Jason Johnston on 2025-12-16 15:18: no update / Jason Johnston on 2025-12-30 16:36: No update / allucent_notes_20251209_203830: Jason Johnston on 2025-12-09 15:18: Need to confirm who is responsible for updating this / allucent_notes_20251216_165335: Jason Johnston on 2025-12-09 15:18: Need to confirm who is responsible for updating this / Jason Johnston on 2025-12-16 15:18: no update / allucent_notes: 2025-12-09 15:18 - User: Jason Johnston - Date Added: 2025-12-09 15:18 - Note: Need to confirm who is responsible for updating this / 2025-12-16 15:18 - User: Jason Johnston - Date Added: 2025-12-16 15:18 - Note: no update / 2025-12-30 16:36 - User: Jas
- QTS-11391: allucent_notes: Adam Evarts on 2024-08-21 10:08: test / Sean Waisner on 2024-08-21 09:08: Awaiting Elevator Shop drawings
- QTS-46961: allucent_notes: David Wiltberger on 2025-08-05T10:59:21.984Z: impacted by OEG and REI turnover in FOH. Turn over is 8/5/2025 / allucent_notes: 2025-08-05T10:59:21.984Z - User: David Wiltberger - Date Added: 2025-08-05T10:59:21.984Z - Note: impacted by OEG and REI turnover in FOH. Turn over is 8/5/2025 / 2025-08-19 09:08 - User: David Wiltberger - Date Added: 2025-08-19 09:08 - Note: Front of
- QTS-16641: allucent_notes: Jason Johnston on 2025-08-12 13:08: tilt panels delayed start / allucent_notes: 2025-08-12 13:08 - User: Jason Johnston - Date Added: 2025-08-12 13:08 - Note: tilt panels delayed start
- QTS-99140: allucent_notes: Jason Johnston on 2025-08-19 13:08: Need to get survey out to mark grade height for water proofers. - Ron / allucent_notes_20251014_152335: Jason Johnston on 2025-08-19 13:08: Need to get survey out to mark grade height for water proofers. - Ron / Jason Johnston on 2025-08-26 15:08: Other subcontractor was impeding access to area of front of house. / Jason Johnston on 2025-09-02 15:09: Man power issues. / Jason Johnston on 2025-09-30 12:09: Workers were reallocated to ensure gen yard was completely finished / Jason Johnston on 2025-10-07 13:10: water proofers were behind due to man power issues. painters painted over remaining section for water proofing delaying finish of water proofers. / Jason Johnston on 2025-10-14 14:10: Will return to this on the back end / allucent_notes_20251021_145627: Jason Johnston on 2025-08-19 13:08: Need to get survey out to mark grade height for water proofers. - Ron / Jason Johnston on 2025-08-26 15:08: Other subcontractor was impeding access to area of front of house. / Jason Johnston on 2025-09-02 15:09: Man power issues. / Jason Johnston on 2025-09-30 12:09: Workers were reallocated to ensure gen yard was completely finished / Jason Johnston on 2025-10-07 13:10: water proofers were behind due to man power issues. painters painted over remaining section for water proofing delaying finish of water proofers. / Jason Johnston on 2025-10-14 14:10: Will return to this on the back end / allucent_notes_20251027_224008: Jason Johnston on 2025-08-19 13:08: Need to get survey out to mark grade height for water proofers. - Ron / Jason Johnston on 2025-08-26 15:08: Other subcontractor was impeding access to area of front of house. / Jason Johnston on 2025-09-02 15:09: Man power issues. / Jason Johnston on 2025-09-30 12:09: Workers were reallocated to ensure gen yard was completely finished / Jason Johnston on 2025-10-07 13:10: water proofers were behind due to man power issues. painters painted over remaining section for water proofing delaying finish of water proofers. / Jason Johnston on 2025-10-14 14:10: Will return to this on the back end / Jason Johnston on 2025-10-27 13:10: Area restricted because of building access path / allucent_notes_20251028_163138: Jason Johnston on 2025-08-19 13:08: Need to get survey out to mark grade height for water proofers. - Ron / Jason Johnston on 2025-08-26 15:08: Other subcontractor was impeding access to area of front of house. / Jason Johnston on 2025-09-02 15:09: Man power issues. / Jason Johnston on 2025-09-30 12:09: Workers were reallocated to ensure gen yard was completely finished / Jason Johnston on 2025-10-07 13:10: water proofers were behind due to man power issues. painters painted over remaining section for water proofing delaying finish of water proofers. / Jason Johnston on 2025-10-14 14:10: Will return to this on the back end / Jason Johnston on 2025-10-27 13:10: Area restricted because of building access path / allucent_notes_20251104_160200: Jason Johnston on 2025-08-19 13:08: Need to get survey out to mark grade height for water proofers. - Ron / Jason Johnston on 2025-08-26 15:08: Other subcontractor was impeding access to area of front of house. / Jason Johnston on 2025-09-02 15:09: Man power issues. / Jason Johnston on 2025-09-30 12:09: Workers were reallocated to ensure gen yard was completely finished / Jason Johnston on 2025-10-07 13:10: water proofers were behind due to man power issues. painters painted over remaining section for water proofing delaying finish of water proofers. / Jason Johnston on 2025-10-14 14:10: Will return to this on the back end / Jason Johnston on 2025-10-27 13:10: Area restricted because of building access path / allucent_notes_20251111_182405: Jason Johnston on 2025-08-19 13:08: Need to get survey out to mark grade height for water proofers. - Ron / Jason Johnston on 2025-08-26 15:08: Other subcontractor was impeding access to area of front of house. / Jason Johnston on 2025-09-02 15:09: Man power issues. / Jason Johnston on 2025-09-30 12:09: Workers were reallocated to ensure gen yard was completely finished / Jason Johnston on 2025-10-07 13:10: water proofers were behind due to man power issues. painters painted over remaining section for water proofing delaying finish of water proofers. / Jason Johnston on 2025-10-14 14:10: Will return to this on the back end / Jason Johnston on 2025-10-27 13:10: Area restricted because of building access path / Jason Johnston on 2025-11-11 14:11: Halfway done. will be done 11/12. / allucent_notes_20251118_192630: Jason Johnston on 2025-08-19 13:08: Need to get survey out to mark grade height for water proofers. - Ron / Jason Johnston on 2025-08-26 15:08: Other subcontractor was impeding access to area of front of house. / Jason Johnston on 2025-09-02 15:09: Man power issues. / Jason Johnston on 2025-09-30 12:09: Workers were reallocated to ensure gen yard was completely finished / Jason Johnston on 2025-10-07 13:10: water proofers were behind due to man power issues. painters painted over remaining section for water proofing delaying finish of water proofers. / Jason Johnston on 2025-10-14 14:10: Will return to this on the back end / Jason Johnston on 2025-10-27 13:10: Area restricted because of building access path / Jason Johnston on 2025-11-11 14:11: Halfway done. will be done 11/12. / allucent_notes: 2025-08-19 13:08 - User: Jason Johnston - Date Added: 2025-08-19 13:08 - Note: Need to get survey out to mark grade height for water proofers. - Ron / 2025-08-26 15:08 - User: Jason Johnston - Date Added: 2025-08-26 15:08 - Note: Other subcontractor was
- QTS-99290: allucent_notes: Jason Johnston on 2025-08-19 13:08: Need to get survey out to mark grade height for water proofers. - Ron / allucent_notes_20251014_152335: Jason Johnston on 2025-10-14 14:10: Breaking tie to FOH / allucent_notes: 2025-10-14 14:10 - User: Jason Johnston - Date Added: 2025-10-14 14:10 - Note: Breaking tie to FOH

| ID | WBS | Activity | Duration | Start | Finish | Predecessors | Complete | Planned start | Planned finish | Baseline | Phase-1 | Project Section | Project Section-1 | Phase-1-1 | Subcontractor | Layton Responsible Party | Allucent CSI Group | Level |
| --- | --- | --- | --- | --- | --- | --- | --- | --- | --- | --- | --- | --- | --- | --- | --- | --- | --- | --- |
|  | 2 | **Zone 2 Building Pad / Gridlines 21-30** |  | 2025-01-31 | 2025-10-29 |  |  |  |  |  |  |  |  |  |  |  |  |  |
| QTS-4421 |  | Zone 2 Building Pad / Gridlines 21-30 // Condition Existing Bldg. Pad & Import Soil (Includes Roll Test) | 5d | 2025-01-31 A | 2025-02-06 A | QTS-3191, QTS-3191 SS | 100% |  |  | IGMP | Phase 2 | Construction |  |  |  |  |  |  |
| QTS-10831 |  | Zone 2 Building Pad / Gridlines 21-30 // Install Rammed Aggregate Piers (Building) | 5d | 2025-02-25 A | 2025-03-03 A | QTS-7301 | 100% |  |  | IGMP | Phase 2 | Construction |  |  |  |  |  |  |
| QTS-41891 |  | Zone 2 Building Pad / Gridlines 21-30 // Fine Grade Pad | 2d | 2025-03-12 A | 2025-03-13 A | QTS-12821 | 100% |  |  | IGMP |  |  | Construction | Phase 2 |  |  |  |  |
| QTS-41901 |  | Zone 2 Building Pad / Gridlines 21-30 // Survey & Certify Pad | 1d | 2025-03-14 A | 2025-03-14 A | QTS-41891 SS+2d, QTS-41891 FF | 100% |  |  | IGMP |  |  | Construction | Phase 2 |  |  |  |  |
| QTS-14851 |  | Zone 2 Building Pad / Gridlines 21-30 // Form, Reinforce, & Pour Freight Elevator Pit | 10d | 2025-03-31 A | 2025-04-23 A | QTS-14901 SS | 100% | 2025-03-31 | 2025-04-11 | IGMP | Phase 2 | Construction |  |  | Suntec Concrete Inc |  |  |  |
| QTS-15411 |  | Zone 2 Building Pad / Gridlines 21-30 // Excavate, Install, & Backfill Telecom Ductbank | 5d | 2025-04-14 A | 2025-04-18 A | QTS-10831 | 100% |  |  | IGMP |  |  | Construction | Phase 2 |  |  |  |  |
| QTS-12801 |  | Zone 2 Building Pad / Gridlines 21-30 // Layout Footings & Grade Beams | 1d | 2025-04-21 A | 2025-04-21 A | QTS-10831, QTS-12771 SS+8d | 100% |  |  | IGMP |  |  | Construction | Phase 2 |  |  |  |  |
| QTS-12881 |  | Zone 2 Building Pad / Gridlines 21-30 // Excavate & Form Footings & Grade Beams | 6d | 2025-04-21 A | 2025-04-28 A | QTS-12801 SS, QTS-10831, QTS-11391, QTS-41901, QTS-3251 | 100% |  |  | IGMP | Phase 2 | Construction |  |  | Suntec Concrete Inc |  |  |  |
| QTS-41941 |  | Zone 2 Building Pad / Gridlines 21-30 // Form, Reinforce, & Pour Cast in Place Walls & Grade Beam Tie In | 10d | 2025-04-23 A | 2025-06-12 A | QTS-14851 FF+5d, QTS-14851, QTS-42331 SS | 100% | 2025-04-23 | 2025-05-06 | IGMP |  |  | Construction | Phase 2 | Suntec Concrete Inc | Ron Carroll |  |  |
| QTS-13291 |  | Zone 2 Building Pad / Gridlines 21-30 // Reinforce Footings & Grade Beams | 4d | 2025-04-29 A | 2025-05-02 A | QTS-12071 SS, QTS-12881 | 100% |  |  | IGMP | Phase 2 | Construction |  |  | Suntec Concrete Inc |  |  |  |
| QTS-13981 |  | Zone 2 Building Pad / Gridlines 21-30 // Pour Footings & Grade Beams | 6d | 2025-05-05 A | 2025-05-12 A | QTS-13291 | 100% |  |  | IGMP | Phase 2 | Construction |  |  | Suntec Concrete Inc | Ron Carroll |  |  |
| QTS-15831 |  | Zone 2 Building Pad / Gridlines 21-30 // Excavate, Install, & Backfill Telecom Ductbank | 5d | 2025-06-04 A | 2025-06-10 A | QTS-15411 | 100% |  |  | IGMP |  |  | Construction | Phase 2 |  | Ron Carroll |  |  |
| QTS-13241 |  | Zone 2 Building Pad / Gridlines 21-30 // Install MEP Sleeves | 5d | 2025-07-07 A | 2025-07-11 A | QTS-10831, QTS-12881 SS+2d, QTS-12621 SS | 100% |  |  | IGMP | Phase 2 | Construction |  |  | Rosendin Electric, Inc | Dave Wiltberger | 01ADMIN |  |
| QTS-15791 |  | Zone 2 Building Pad / Gridlines 21-30 // Install Sanitary Underground | 5d | 2025-08-11 A | 2025-08-27 A | QTS-13981, QTS-14001, QTS-12881, QTS-41941, QTS-21081, QTS-13241, QTS-38741, QTS-42601 | 100% | 2025-08-11 | 2025-08-15 | IGMP | Phase 2 | Construction |  |  | Bel-Aire Mechanical, LLC | Dave Wiltberger | 01ADMIN | Underground |
| QTS-16771 |  | Zone 2 Building Pad / Gridlines 21-30 // Install Underground Electrical | 4d | 2025-08-15 A | 2025-09-08 A | QTS-15791 SS+3d, QTS-15791 FF+3d, QTS-15031, QTS-15831, QTS-38741 | 100% | 2025-08-15 | 2025-08-20 | IGMP | Phase 2 | Construction |  |  | Rosendin Electric, Inc | Scott Masterson | 01ADMIN | Underground |
| QTS-17261 |  | Zone 2 Building Pad / Gridlines 21-30 // Waterproof Foundations - North | 5d | 2025-09-16 A | 2025-09-24 A | QTS-16641, QTS-13241, QTS-13981, QTS-21521 SS | 100% | 2025-09-16 | 2025-09-22 | IGMP |  | Construction | Construction | Phase 2 | Alpha Insulation & Waterproofing, Inc. | Ron Carroll | 01ADMIN |  |
| QTS-99460 |  | Zone 2 Building Pad / Gridlines 21-30 // Waterproof Foundations - South | 2d | 2025-10-22 A | 2025-10-29 A | QTS-99290 | 100% | 2025-10-22 | 2025-10-23 | IGMP |  | Construction | Construction | Phase 2 | Alpha Insulation & Waterproofing, Inc. | Ron Carroll | 01ADMIN |  |
|  | 5 | **Zone 3 Building Pad / Gridlines 30-41** |  | 2025-02-07 | 2025-11-14 |  |  |  |  |  |  |  |  |  |  |  |  |  |
| QTS-6301 |  | Zone 3 Building Pad / Gridlines 30-41 // Condition Existing Bldg. Pad & Import Soil (Includes Roll Test) | 5d | 2025-02-07 A | 2025-02-13 A | QTS-4421 | 100% |  |  | IGMP |  |  | Construction | Phase 3 |  | Ron Carroll |  |  |
| QTS-12821 |  | Zone 3 Building Pad / Gridlines 30-41 // Install Rammed Aggregate Piers (Building) | 6d | 2025-03-04 A | 2025-03-11 A | QTS-10831, QTS-6301 | 100% |  |  | IGMP |  |  | Construction | Phase 3 |  | Ron Carroll |  |  |
| QTS-41911 |  | Zone 3 Building Pad / Gridlines 30-41 // Fine Grade Pad | 2d | 2025-03-12 A | 2025-03-13 A | QTS-12821 | 100% |  |  | IGMP |  |  | Construction | Phase 3 |  | Ron Carroll |  |  |
| QTS-41921 |  | Zone 3 Building Pad / Gridlines 30-41 // Survey & Certify Pad | 1d | 2025-03-14 A | 2025-03-14 A | QTS-41911 SS+2d, QTS-41911 FF | 100% |  |  | IGMP |  |  | Construction | Phase 3 |  | Ron Carroll |  |  |
| QTS-14461 |  | Zone 3 Building Pad / Gridlines 30-41 // Layout Footings & Grade Beams | 1d | 2025-05-19 A | 2025-05-19 A | QTS-12821 | 100% |  |  | IGMP |  |  | Construction | Phase 3 |  | Ron Carroll |  |  |
| QTS-14631 |  | Zone 3 Building Pad / Gridlines 30-41 // Excavate & Form Footings & Grade Beams | 10d | 2025-05-20 A | 2025-06-03 A | QTS-14461, QTS-12821, QTS-41921, QTS-12881, QTS-13981 | 100% |  |  | IGMP |  |  | Construction | Phase 3 | Suntec Concrete Inc | Ron Carroll |  |  |
| QTS-15241 |  | Zone 3 Building Pad / Gridlines 30-41 // Reinforce Footings & Grade Beams | 7d | 2025-05-28 A | 2025-06-05 A | QTS-14631 | 100% |  |  | IGMP |  |  | Construction | Phase 3 | Suntec Concrete Inc | Ron Carroll |  |  |
| QTS-16661 |  | Zone 3 Building Pad / Gridlines 30-41 // Form, Reinforce, & Pour Freight Elevator Pit | 10d | 2025-06-04 A | 2025-06-17 A | QTS-14631, QTS-15241 SS+4d | 100% |  |  | IGMP |  |  | Construction | Phase 3 | Suntec Concrete Inc | Ron Carroll |  |  |
| QTS-15721 |  | Zone 3 Building Pad / Gridlines 30-41 // Pour Footings & Grade Beams | 7d | 2025-06-06 A | 2025-06-16 A | QTS-15241 | 100% |  |  | IGMP |  |  | Construction | Phase 3 | Suntec Concrete Inc | Ron Carroll |  |  |
| QTS-16191 |  | Zone 3 Building Pad / Gridlines 30-41 // Excavate, Install, & Backfill Telecom Ductbank | 5d | 2025-06-11 A | 2025-06-17 A | QTS-10831, QTS-15831 | 100% |  |  | IGMP |  |  | Construction | Phase 3 |  | Ron Carroll |  |  |
| QTS-16761 |  | Zone 3 Building Pad / Gridlines 30-41 // Excavate, Install, & Backfill Telecom Ductbank | 5d | 2025-06-11 A | 2025-06-17 A | QTS-16191 | 100% |  |  | IGMP |  |  | Construction | Phase 3 |  | Ron Carroll |  |  |
| QTS-41951 |  | Zone 3 Building Pad / Gridlines 30-41 // Form, Reinforce, & Pour Cast in Place Walls & Grade Beam Tie In | 9d | 2025-06-11 A | 2025-06-25 A | QTS-16661 SS | 100% | 2025-06-11 | 2025-06-23 | IGMP |  | Construction | Construction | Phase 3 | Suntec Concrete Inc | Ron Carroll | 01ADMIN |  |
| QTS-15081 |  | Zone 3 Building Pad / Gridlines 30-41 // Install MEP Sleeves | 5d | 2025-07-07 A | 2025-07-11 A | QTS-12821, QTS-14631 SS+2d | 100% |  |  | IGMP |  | Construction | Construction | Phase 3 | Rosendin Electric, Inc | Dave Wiltberger | 01ADMIN |  |
| QTS-16671 |  | Zone 3 Building Pad / Gridlines 38-41 // Install Sanitary Underground | 9d | 2025-09-24 A | 2025-10-08 A | QTS-15721, QTS-14631, QTS-41951, QTS-15081, QTS-38741, QTS-42611 | 100% | 2025-09-24 | 2025-10-06 | IGMP |  | Construction | Construction | Phase 3 | Bel-Aire Mechanical, LLC | Dave Wiltberger | 01ADMIN | Underground |
| QTS-18061 |  | Zone 3 Building Pad / Gridlines 30-41 // Waterproof Foundations - North | 2d | 2025-09-25 A | 2025-10-02 A | QTS-17261, QTS-15081, QTS-15721 | 100% | 2025-09-25 | 2025-09-26 | IGMP |  | Construction | Construction | Phase 3 | Alpha Insulation & Waterproofing, Inc. | Ron Carroll | 01ADMIN |  |
| QTS-17341 |  | Zone 3 Building Pad / Gridlines 38-41 // Install Underground Electrical | 8d | 2025-10-09 A | 2025-10-24 A | QTS-16671, QTS-16761, QTS-38741, QTS-7311 | 100% | 2025-10-09 | 2025-10-20 | IGMP |  | Construction | Construction | Phase 3 | Rosendin Electric, Inc | Scott Masterson | 01ADMIN | Underground |
| QTS-99480 |  | Zone 3 Building Pad / Gridlines 30-41 // Waterproof Foundations - South | 2d | 2025-11-03 A | 2025-11-04 A | QTS-99460 | 100% |  |  | IGMP |  | Construction | Construction | Phase 3 | Alpha Insulation & Waterproofing, Inc. | Ron Carroll | 01ADMIN |  |
| QTS-99470 |  | Zone 3 Building Pad / Gridlines 30-41 // Waterproof Foundations - East | 2d | 2025-11-13 A | 2025-11-14 A | QTS-18061, QTS-99460, QTS-99140, QTS-99480 | 100% | 2025-11-06 | 2025-11-07 | IGMP |  | Construction | Construction | Phase 3 | Alpha Insulation & Waterproofing, Inc. | Ron Carroll | 01ADMIN |  |

Notes:
- QTS-15791: allucent_notes: David Wiltberger on 2025-08-05 04:08: Bel-Aire impact. only 1 plumbing team working in FOH / allucent_notes: 2025-08-05 04:08 - User: David Wiltberger - Date Added: 2025-08-05 04:08 - Note: Bel-Aire impact. only 1 plumbing team working in FOH / 2025-08-19 09:08 - User: David Wiltberger - Date Added: 2025-08-19 09:08 - Note: Pushed due to delays from front of ho
- QTS-16771: allucent_notes: Jason Johnston on 2025-09-02 15:09: Delayed due to access to zone 3 for underground. / allucent_notes: 2025-09-02 15:09 - User: Jason Johnston - Date Added: 2025-09-02 15:09 - Note: Delayed due to access to zone 3 for underground.
- QTS-99460: allucent_notes_20251014_152335: Jason Johnston on 2025-10-14 14:10: Rain delayed start / allucent_notes_20251021_145627: Jason Johnston on 2025-10-14 14:10: Rain delayed start / Jason Johnston on 2025-10-21 12:10: Needed area cleaned before this could start. / allucent_notes_20251027_224008: Jason Johnston on 2025-10-14 14:10: Rain delayed start / Jason Johnston on 2025-10-21 12:10: Needed area cleaned before this could start. / Jason Johnston on 2025-10-27 13:10: Prep for water proofers was sub standard so the work could not be completed. / allucent_notes_20251028_163138: Jason Johnston on 2025-10-14 14:10: Rain delayed start / Jason Johnston on 2025-10-21 12:10: Needed area cleaned before this could start. / Jason Johnston on 2025-10-27 13:10: Prep for water proofers was sub standard so the work could not be completed. / allucent_notes_20251104_160200: Jason Johnston on 2025-10-14 14:10: Rain delayed start / Jason Johnston on 2025-10-21 12:10: Needed area cleaned before this could start. / Jason Johnston on 2025-10-27 13:10: Prep for water proofers was sub standard so the work could not be completed. / allucent_notes: 2025-10-14 14:10 - User: Jason Johnston - Date Added: 2025-10-14 14:10 - Note: Rain delayed start / 2025-10-21 12:10 - User: Jason Johnston - Date Added: 2025-10-21 12:10 - Note: Needed area cleaned before this could start. / 2025-10-27 13:10 - User: Ja
- QTS-16671: allucent_notes_20251014_152335: David Wiltberger on 2025-09-09 13:09: Zone not turned over until 9/7 / David Wiltberger on 2025-09-09 14:09: impacted by Late Zone 3 turnover and waiting for BAM to complete tasks / David Wiltberger on 2025-10-07 15:10: Need to backfill / allucent_notes: 2025-09-09 13:09 - User: David Wiltberger - Date Added: 2025-09-09 13:09 - Note: Zone not turned over until 9/7 / 2025-09-09 14:09 - User: David Wiltberger - Date Added: 2025-09-09 14:09 - Note: impacted by Late Zone 3 turnover and waiting for BAM to com
- QTS-17341: allucent_notes_20251021_145627: Scott Masterson on 2025-10-21 11:10: Rain delays created issues with digging and back filling. The south portion has been released to SUntec. The small northern portion is all that requires this date extention. / allucent_notes_20251027_224008: Scott Masterson on 2025-10-21 11:10: Rain delays created issues with digging and back filling. The south portion has been released to SUntec. The small northern portion is all that requires this date extention. / allucent_notes: 2025-10-21 11:10 - User: Scott Masterson - Date Added: 2025-10-21 11:10 - Note: Rain delays created issues with digging and back filling. The south portion has been released to SUntec. The small northern portion is all that requires this date extention.
- QTS-99470: allucent_notes_20251104_160200: Jason Johnston on 2025-11-03 14:11: Change tie to after FOH water proofing. / allucent_notes_20251111_182405: Jason Johnston on 2025-11-03 14:11: Change tie to after FOH water proofing. / allucent_notes_20251118_192630: Jason Johnston on 2025-11-03 14:11: Change tie to after FOH water proofing. / allucent_notes: 2025-11-03 14:11 - User: Jason Johnston - Date Added: 2025-11-03 14:11 - Note: Change tie to after FOH water proofing.

| ID | WBS | Activity | Duration | Start | Finish | Predecessors | Complete | Planned start | Planned finish | Subcontractor | Project Section-1 | Phase-1-1 | Baseline | Layton Responsible Party | Phase-1 | Project Section | Allucent CSI Group | Location |
| --- | --- | --- | --- | --- | --- | --- | --- | --- | --- | --- | --- | --- | --- | --- | --- | --- | --- | --- |
|  | 3 | **Gen Yard** |  |  |  |  |  |  |  |  |  |  |  |  |  |  |  |  |
|  | 3 | **Structure & Shell** |  | 2025-04-22 | 2026-01-16 |  |  |  |  |  |  |  |  |  |  |  |  |  |
|  | 3 | **Zone 1 / Gridlines 1-21 (Steel/SOMD/SOG/Tilt)** |  | 2025-04-22 | 2025-10-01 |  |  |  |  |  |  |  |  |  |  |  |  |  |
|  | 2 | **Zone 1 / Structural Steel** |  | 2025-04-22 | 2025-10-01 |  |  |  |  |  |  |  |  |  |  |  |  |  |
| QTS-43381 |  | Zone 1 / Staging and Layout Steel | 6d | 2025-04-22 A | 2025-04-29 A | QTS-43001 | 100% |  |  | Steel, LLC | Construction | Phase 1 | IGMP | Ron Carroll |  |  |  |  |
| QTS-16911 |  | Zone 1 / Gridlines 10-11 // Erect Steel | 4d | 2025-04-30 A | 2025-05-05 A | QTS-15371, QTS-12771, QTS-1121, QTS-43381 | 100% |  |  | Steel, LLC |  |  | IGMP | Ron Carroll | Phase 1 | Construction |  |  |
| QTS-17621 |  | Zone 1 / Gridlines 11-13 // Erect Steel | 3d | 2025-05-06 A | 2025-05-08 A | QTS-16911, QTS-19471 SS | 100% |  |  | SteelFab Texas, Inc |  |  | IGMP | Ron Carroll | Phase 1 | Construction |  |  |
| QTS-17631 |  | Zone 1 / Gridlines 10-11 // Install Decking & Studs | 4d | 2025-05-06 A | 2025-05-09 A | QTS-16911, QTS-43171 | 100% |  |  | SteelFab Texas, Inc |  |  | IGMP | Ron Carroll | Phase 1 | Construction |  |  |
| QTS-18351 |  | Zone 1 / Gridlines 13-15 // Erect Steel | 3d | 2025-05-09 A | 2025-05-13 A | QTS-17621 | 100% |  |  | SteelFab Texas, Inc |  |  | IGMP | Ron Carroll | Phase 1 | Construction |  |  |
| QTS-18361 |  | Zone 1 / Gridlines 11-13 // Install Decking & Studs | 3d | 2025-05-12 A | 2025-05-14 A | QTS-17631 FF+3d, QTS-17621 | 100% |  |  | SteelFab Texas, Inc |  |  | IGMP | Ron Carroll | Phase 1 | Construction |  |  |
| QTS-18491 |  | Zone 1 / Gridlines 15-17 // Erect Steel | 3d | 2025-05-14 A | 2025-05-16 A | QTS-18351 | 100% |  |  | SteelFab Texas, Inc |  |  | IGMP | Ron Carroll | Phase 1 | Construction |  |  |
| QTS-18501 |  | Zone 1 / Gridlines 13-15 // Install Decking & Studs | 3d | 2025-05-15 A | 2025-05-19 A | QTS-18361, QTS-18351 | 100% |  |  | SteelFab Texas, Inc |  |  | IGMP | Ron Carroll | Phase 1 | Construction |  |  |
| QTS-18761 |  | Zone 1 / Gridlines 17-19 // Erect Steel | 3d | 2025-05-19 A | 2025-05-22 A | QTS-18491 | 100% | 2025-05-19 | 2025-05-21 | SteelFab Texas, Inc |  |  | IGMP | Ron Carroll | Phase 1 | Construction |  |  |
| QTS-18791 |  | Zone 1 / Gridlines 15-17 // Install Decking & Studs | 3d | 2025-05-20 A | 2025-05-23 A | QTS-18501 FF+3d, QTS-18491 | 100% | 2025-05-20 | 2025-05-22 | SteelFab Texas, Inc | Construction | Phase 1 | IGMP | Ron Carroll |  |  |  |  |
| QTS-18911 |  | Zone 1 / Gridlines 19-21 // Erect Steel | 5d | 2025-05-23 A | 2025-05-30 A | QTS-18761, QTS-43211 | 100% |  |  | SteelFab Texas, Inc | Construction | Phase 1 | IGMP | Ron Carroll |  |  |  |  |
| QTS-18871 |  | Zone 1 / Gridlines 17-19 // Install Decking & Studs | 3d | 2025-05-27 A | 2025-05-29 A | QTS-18791 FF+3d, QTS-18761 | 100% |  |  | SteelFab Texas, Inc |  |  | IGMP | Ron Carroll | Phase 1 | Construction |  |  |
| QTS-19051 |  | Zone 1 / Gridlines 19-21 // Install Decking & Studs | 4d | 2025-06-02 A | 2025-06-05 A | QTS-18911, QTS-18871 FF+3d | 100% |  |  | SteelFab Texas, Inc | Construction | Phase 1 | IGMP | Ron Carroll |  |  |  |  |
| QTS-42591 |  | Zone 1 / Gridlines 10-21 // Detailing and Bracing | 10d | 2025-06-06 A | 2025-06-19 A | QTS-19051 | 100% |  |  | SteelFab Texas, Inc | Construction | Phase 1 | IGMP | Ron Carroll |  |  |  |  |
| QTS-49351 |  | Zone 1 / Gridlines 10-21 // Stair 705 Erect/Detail | 5d | 2025-07-07 A | 2025-07-07 A | QTS-49221, QTS-46821 | 100% | 2025-07-16 | 2025-07-22 | SteelFab Texas, Inc | Construction | Phase 1 | IGMP | Ron Carroll |  | Construction | 01ADMIN |  |
| QTS-50811 |  | Zone 1 / Gridlines 10-21 // Stair 705 Erect/Detail | 5d | 2025-09-24 A | 2025-09-30 A | QTS-49351, QTS-44781 | 100% |  |  | SteelFab Texas, Inc | Construction | Phase 1 | IGMP | Ron Carroll |  | Construction | 01ADMIN |  |
|  | 1 | **Zone 1 / FOH Structural Steel** |  | 2025-05-14 | 2025-10-01 |  |  |  |  |  |  |  |  |  |  |  |  |  |
| QTS-18801 |  | Zone 1 / Gridlines 1-10 // Perimeter/Roof Erect - Sequence 40-3,340-341 | 8d | 2025-05-14 A | 2025-06-03 A | QTS-18351, QTS-43421 | 100% | 2025-05-14 | 2025-05-23 | SteelFab Texas, Inc | Construction | Phase 1 | IGMP | Ron Carroll |  |  |  | FOH |
| QTS-19061 |  | Zone 1 / Gridlines 1-10 // Perimeter/Roof Detail - Sequence 40-3 | 10d | 2025-05-16 A | 2025-05-30 A | QTS-18801 SS+2d, QTS-43171 | 100% |  |  | SteelFab Texas, Inc | Construction | Phase 1 | IGMP | Ron Carroll |  |  |  | FOH |
| QTS-42621 |  | Zone 1 / Gridlines 1-10 // Mezzanine Erect - Sequence 240-241 | 10d | 2025-05-30 A | 2025-06-12 A | QTS-18801 | 100% |  |  | SteelFab Texas, Inc | Construction | Phase 1 | IGMP | Ron Carroll |  |  |  | FOH |
| QTS-42631 |  | Zone 1 / Gridlines 1-10 // Perimeter/Roof Detail - Sequence 340-341 | 10d | 2025-06-02 A | 2025-06-16 A | QTS-19061 | 100% | 2025-06-02 | 2025-06-13 | SteelFab Texas, Inc | Construction | Phase 1 | IGMP | Ron Carroll |  |  |  | FOH |
| QTS-19071 |  | Zone 1 / Gridlines 1-10 // Mezzanine Detail - Sequence 240 | 10d | 2025-06-04 A | 2025-06-17 A | QTS-18801, QTS-42621 | 100% |  |  | SteelFab Texas, Inc | Construction | Phase 1 | IGMP | Ron Carroll |  | Construction |  | FOH |
| QTS-42641 |  | Zone 1 / Gridlines 1-10 // Stair 702 Erect/Detail | 4d | 2025-06-13 A | 2025-10-01 A | QTS-19071 SS, QTS-19811 FF+3d, QTS-99150 FF+1d | 100% | 2025-06-13 | 2025-06-18 | SteelFab Texas, Inc | Construction | Phase 1 | IGMP | Ron Carroll |  | Construction | 01ADMIN |  |
| QTS-19621 |  | Zone 1 / Gridlines 1-10 // Mezzanine Detail - Sequence 241 | 9d | 2025-06-18 A | 2025-06-30 A | QTS-19071, QTS-42631 | 100% |  |  | SteelFab Texas, Inc | Construction | Phase 1 | IGMP | Ron Carroll |  | Construction | 01ADMIN | FOH |
| QTS-46831 |  | Zone 1 / Gridlines 1-10 // Stud Welding | 6d | 2025-06-23 A | 2025-06-30 A | QTS-19621 FF | 100% |  |  | SteelFab Texas, Inc | Construction | Phase 1 | IGMP | Ron Carroll |  | Construction | 01ADMIN |  |
| QTS-46821 |  | Zone 1 / Gridlines 1-10 // Stair 703 Erect/Detail | 4d | 2025-06-30 A | 2025-07-03 A | QTS-42631 | 100% | 2025-07-09 | 2025-07-14 | SteelFab Texas, Inc | Construction | Phase 1 | IGMP | Ron Carroll |  | Construction | 01ADMIN |  |
| QTS-46841 |  | Zone 1 / Gridlines 1-10 // Eyebrow Steel | 10d | 2025-08-27 A | 2025-09-08 A | QTS-19821, QTS-19811, QTS-22981 SS | 100% | 2025-08-25 | 2025-09-08 | SteelFab Texas, Inc | Construction | Phase 1 | IGMP | Ron Carroll |  | Construction | 01ADMIN |  |

Notes:
- QTS-42641: allucent_notes: Jason Johnston on 2025-07-08T20:06:04.119Z: 07/08/25 - Cannot erect stair case until tilt panel is erected. / allucent_notes: 2025-07-08T20:06:04.119Z - User: Jason Johnston - Date Added: 2025-07-08T20:06:04.119Z - Note: 07/08/25 - Cannot erect stair case until tilt panel is erected.
- QTS-46841: allucent_notes: Jason Johnston on 2025-08-19 13:08: Subcontractor man power issues. Sub is getting a supplemental man power. That is expected on site 8-25. - Ron / allucent_notes: 2025-08-19 13:08 - User: Jason Johnston - Date Added: 2025-08-19 13:08 - Note: Subcontractor man power issues. Sub is getting a supplemental man power. That is expected on site 8-25. - Ron / 2025-08-26 15:08 - User: Jason Johnston - Date Added: 2025-08-2

| ID | WBS | Activity | Duration | Start | Finish | Predecessors | Complete | Planned start | Planned finish | Subcontractor | Baseline | Layton Responsible Party | Phase-1 | Project Section | Allucent CSI Group | Project Section-1 | Phase-1-1 | Level | Location |
| --- | --- | --- | --- | --- | --- | --- | --- | --- | --- | --- | --- | --- | --- | --- | --- | --- | --- | --- | --- |
|  | 8 | **Zone 1 / Slab On Metal Deck** |  | 2025-06-23 | 2025-07-23 |  |  |  |  |  |  |  |  |  |  |  |  |  |  |
| QTS-18941 |  | Zone 1 / Gridlines 10-13 // MEP Penetrations SOMD | 5d | 2025-06-23 A | 2025-07-02 A | QTS-42591, QTS-19051 | 100% | 2025-06-23 | 2025-06-27 | Rosendin Electric, Inc | IGMP | Dave Wiltberger | Phase 1 | Construction | 01ADMIN |  |  |  |  |
| QTS-19021 |  | Zone 1 / Gridlines 10-13 // Prep, Form, & Pour SOMD | 3d | 2025-07-03 A | 2025-07-08 A | QTS-17631, QTS-18941 | 100% | 2025-06-30 | 2025-07-02 | Suntec Concrete Inc | IGMP | Ron Carroll | Phase 1 | Construction | 01ADMIN |  |  |  |  |
| QTS-19311 |  | Zone 1 / Gridlines 13-16 // MEP Penetrations SOMD | 4d | 2025-07-03 A | 2025-07-09 A | QTS-18501, QTS-19051, QTS-18941 | 100% | 2025-06-30 | 2025-07-03 | Rosendin Electric, Inc | IGMP | Dave Wiltberger |  | Construction | 01ADMIN | Construction | Phase 1 |  |  |
| QTS-19521 |  | Zone 1 / Gridlines 13-16 // Prep, Form, & Pour SOMD | 2d | 2025-07-10 A | 2025-07-15 A | QTS-18501, QTS-19311, QTS-19021 FF+2d | 100% | 2025-07-10 | 2025-07-11 | Suntec Concrete Inc | IGMP | Ron Carroll | Phase 1 | Construction | 01ADMIN |  |  |  |  |
| QTS-46911 |  | Zone 1 / Gridlines 16-21 // MEP Penetrations SOMD | 2d | 2025-07-10 A | 2025-07-15 A | QTS-19311 | 100% | 2025-07-10 | 2025-07-11 | Rosendin Electric, Inc | IGMP | Dave Wiltberger |  | Construction | 01ADMIN | Construction | Phase 1 |  |  |
| QTS-46921 |  | Zone 1 / Gridlines 16-21 // Prep, Form, & Pour SOMD | 2d | 2025-07-16 A | 2025-07-17 A | QTS-46911, QTS-19521 FF+2d | 100% |  |  | Suntec Concrete Inc | IGMP | Ron Carroll | Phase 1 | Construction | 01ADMIN | Construction |  |  |  |
|  | 1 | **Zone 1 / FOH Slab on Metal Deck** |  | 2025-07-15 | 2025-07-23 |  |  |  |  |  |  |  |  |  |  |  |  |  |  |
| QTS-20671 |  | Zone 1 / Gridlines L-X // Prep, Form, & Pour SOMD | 5d | 2025-07-15 A | 2025-07-21 A | QTS-20521 FF, QTS-46921 FF, QTS-46831 | 100% |  |  | Suntec Concrete Inc | IGMP | Ron Carroll |  | Construction | 01ADMIN | Construction | Phase 1 | Level 2 | FOH |
| QTS-20521 |  | Zone 1 / Gridlines L-X // MEP Penetrations SOMD | 5d | 2025-07-16 A | 2025-07-16 A | QTS-19621, QTS-46911 | 100% | 2025-07-10 | 2025-07-16 | Rosendin Electric, Inc | IGMP | Dave Wiltberger |  | Construction | 01ADMIN | Construction | Phase 1 | Level 2 | FOH |
| QTS-46931 |  | Zone 1 / Gridlines A-L // MEP Penetrations SOMD | 2d | 2025-07-16 A | 2025-07-16 A | QTS-20521 FF | 100% | 2025-07-15 | 2025-07-16 | Rosendin Electric, Inc | IGMP | Dave Wiltberger |  | Construction | 01ADMIN | Construction | Phase 1 | Level 2 | FOH |
| QTS-46941 |  | Zone 1 / Gridlines A-L // Prep, Form, & Pour SOMD | 5d | 2025-07-17 A | 2025-07-23 A | QTS-46931, QTS-20671 FF+2d | 100% |  |  | Suntec Concrete Inc | IGMP | Ron Carroll |  | Construction | 01ADMIN | Construction | Phase 1 | Level 2 | FOH |
|  | 3 | **Zone 1 / Slab On Grade** |  | 2025-08-04 | 2025-09-22 |  |  |  |  |  |  |  |  |  |  |  |  |  |  |
| QTS-19261 |  | Zone 1 / Gridlines 10-13 // Prep, Form, & Pour SOG | 8d | 2025-08-04 A | 2025-08-11 A | QTS-46921, QTS-46941, QTS-19811 FF+5d | 100% | 2025-08-04 | 2025-08-13 | Suntec Concrete Inc | IGMP | Ron Carroll | Phase 1 | Construction | 01ADMIN |  |  | Level 1 |  |
| QTS-19531 |  | Zone 1 / Gridlines 13-17 // Prep, Form, & Pour SOG | 8d | 2025-08-08 A | 2025-08-18 A | QTS-19261 SS+2d, QTS-19261 FF+2d | 100% | 2025-08-12 | 2025-08-21 | Suntec Concrete Inc | IGMP | Ron Carroll | Phase 1 | Construction | 01ADMIN |  |  | Level 1 |  |
| QTS-19631 |  | Zone 1 / Gridlines 17-21 // Prep, Form, & Pour SOG | 8d | 2025-08-13 A | 2025-08-21 A | QTS-19531 SS+3d, QTS-19531 FF+3d | 100% | 2025-08-15 | 2025-08-26 | Suntec Concrete Inc | IGMP | Ron Carroll | Phase 1 | Construction | 01ADMIN |  |  | Level 1 |  |
| QTS-99030 |  | Zone 1 / Gridlines 17-21 // Cure SOG | 8d | 2025-08-22 A | 2025-09-03 A | QTS-19631 | 100% |  |  | Suntec Concrete Inc | IGMP | Ron Carroll | Phase 1 | Construction | 01ADMIN |  |  | Level 1 |  |
|  | 1 | **Zone 1 / FOH Slab On Grade** |  | 2025-08-27 | 2025-09-22 |  |  |  |  |  |  |  |  |  |  |  |  |  |  |
| QTS-21391 |  | Zone 1 / Gridlines 1-10 // Prep, Form, & Pour SOG - North | 2d | 2025-08-27 A | 2025-09-15 A | QTS-44801, QTS-20671, QTS-19631, QTS-46941 | 100% | 2025-08-22 | 2025-08-25 | Suntec Concrete Inc | IGMP | Ron Carroll |  | Construction | 01ADMIN | Construction | Phase 1 | Level 1 | FOH |
| QTS-44781 |  | Zone 1 / Gridlines 1-10 // Prep, Form, & Pour SOG - South | 5d | 2025-09-04 A | 2025-09-12 A | QTS-21391 FF, QTS-46971 FF+3d | 100% | 2025-09-04 | 2025-09-10 | Suntec Concrete Inc | IGMP | Ron Carroll |  | Construction | 01ADMIN | Construction | Phase 1 | Level 1 | FOH |
| QTS-99150 |  | Zone 1 / Gridlines 1-10 // Cure SOG - North | 5d | 2025-09-16 A | 2025-09-22 A | QTS-21391 | 100% |  |  | Suntec Concrete Inc | IGMP | Ron Carroll |  | Construction | 01ADMIN | Construction | Phase 1 | Level 1 | FOH |
|  | 1 | **Zone 1 / Tilt Panel Casting** |  | 2025-06-03 | 2025-08-12 |  |  |  |  |  |  |  |  |  |  |  |  |  |  |
| QTS-14041 |  | Zone 1 / Mobilization to Clear & Grade for Waste Slabs | 5d | 2025-06-03 A | 2025-06-05 A | QTS-4421, QTS-4421 SS, QTS-7301, QTS-12771, QTS-1131, QTS-18801 | 100% | 2025-05-08 | 2025-05-14 | Redpoint Contracting | IGMP | Ron Carroll |  |  |  | Construction | Phase 1 |  |  |
| QTS-15041 |  | Zone 1 / Prep & Place Waste Slabs | 6d | 2025-06-06 A | 2025-06-09 A | QTS-14041, QTS-12771 FF, QTS-10831 SS, QTS-4421, QTS-4421 SS | 100% | 2025-06-06 | 2025-06-13 | Suntec Concrete Inc | IGMP | Ron Carroll | Phase 1 | Construction |  |  |  |  |  |
| QTS-16781 |  | Zone 1 / Panel Embeds, Jamb Steel & Ledgers | 1d | 2025-06-10 A | 2025-06-10 A | QTS-15041, QTS-16011 | 100% |  |  | Suntec Concrete Inc | IGMP | Ron Carroll | Phase 1 | Construction |  |  |  |  |  |
| QTS-16011 |  | Zone 1 / Panel Embeds, Jamb Steel & Ledgers Shake Out | 5d | 2025-06-11 A | 2025-06-11 A | QTS-15041 | 100% | 2025-06-10 | 2025-06-16 | Suntec Concrete Inc | IGMP | Ron Carroll | Phase 1 | Construction |  |  |  |  |  |
| QTS-16921 |  | Zone 1 / Layout, Form, Reinforce, & Pour Tilt Panels | 10d | 2025-06-12 A | 2025-07-18 A | QTS-13611, QTS-16781 FF+1d, QTS-14071 FF, QTS-12491, QTS-16781 | 100% | 2025-06-12 | 2025-06-25 | Suntec Concrete Inc | IGMP | Ron Carroll | Phase 1 | Construction | 01ADMIN |  |  |  |  |
| QTS-19811 |  | Zone 1 / Erect Cast Panels | 10d | 2025-07-21 A | 2025-08-12 A | QTS-16921, QTS-19621, QTS-19051, QTS-42591 | 100% | 2025-07-21 | 2025-08-01 | Suntec Concrete Inc | IGMP | Ron Carroll |  | Construction | 01ADMIN | Construction | Phase 1 |  |  |

Notes:
- QTS-20671: Scheduler's Notes: 7/17/25 / Team swapped zone 1 SOG with FOH SOMD
- QTS-19261: Scheduler's Notes: 7/17/25 / Team swapped zone 1 SOG with FOH SOMD / allucent_notes: Jason Johnston on 2025-08-19 13:08: Pour was complete ahead of schedule
- QTS-19531: allucent_notes: Jason Johnston on 2025-08-19 13:08: Pour was completed ahead of schedule.
- QTS-19631: allucent_notes: Jason Johnston on 2025-08-19 14:08: Pour schedule moved up. / allucent_notes: 2025-08-19 14:08 - User: Jason Johnston - Date Added: 2025-08-19 14:08 - Note: Pour schedule moved up.
- QTS-99030: Scheduler's Notes: 8/1/25 / Activity added to provide for cure time before lifts and other heavy / equipment can be on SOG.
- QTS-21391: allucent_notes: Jason Johnston on 2025-08-12 13:08: Pulled in date based on input from trade partner / allucent_notes: 2025-08-12 13:08 - User: Jason Johnston - Date Added: 2025-08-12 13:08 - Note: Pulled in date based on input from trade partner / 2025-08-26 15:08 - User: Jason Johnston - Date Added: 2025-08-26 15:08 - Note: Need to get better answer from Suntec
- QTS-19811: allucent_notes: Jason Johnston on 2025-08-12 14:08: Logistical delays with MEP in FOH backfill caused no tilt panels to erect 8/7 & 8/8 / allucent_notes: 2025-08-12 14:08 - User: Jason Johnston - Date Added: 2025-08-12 14:08 - Note: Logistical delays with MEP in FOH backfill caused no tilt panels to erect 8/7 & 8/8

| ID | WBS | Activity | Duration | Start | Finish | Predecessors | Complete | Planned start | Planned finish | Subcontractor | Project Section-1 | Phase-1-1 | Baseline | Layton Responsible Party | Project Section | Allucent CSI Group | Level |
| --- | --- | --- | --- | --- | --- | --- | --- | --- | --- | --- | --- | --- | --- | --- | --- | --- | --- |
|  | 5 | **Zone 2 / Gridlines 21-30 (Steel/SOMD/SOG/Tilt)** |  | 2025-06-11 | 2025-10-07 |  |  |  |  |  |  |  |  |  |  |  |  |
|  | 2 | **Zone 2 / Structural Steel** |  | 2025-06-11 | 2025-07-30 |  |  |  |  |  |  |  |  |  |  |  |  |
| QTS-19081 |  | Zone 2 / Gridlines 21-30 // Perimeter - Sequence 20-21 | 9d | 2025-06-11 A | 2025-06-23 A | QTS-42591 SS+3d, QTS-18911, QTS-13981, QTS-43001, QTS-43421, QTS-13471 | 100% |  |  | SteelFab Texas, Inc | Construction | Phase 2 | IGMP | Ron Carroll |  |  |  |
| QTS-19301 |  | Zone 2 / Gridlines 21-30 // Dunnage - Sequence 521-524 | 9d | 2025-06-16 A | 2025-06-26 A | QTS-19081 SS+3d | 100% |  |  | SteelFab Texas, Inc | Construction | Phase 2 | IGMP | Ron Carroll | Construction | 01ADMIN |  |
| QTS-19581 |  | Zone 2 / Gridlines 21-30 // Dunnage/Perimeter Detail - Sequence 521-523 | 9d | 2025-06-18 A | 2025-06-30 A | QTS-19301 SS+2d | 100% |  |  | SteelFab Texas, Inc | Construction | Phase 2 | IGMP | Ron Carroll | Construction | 01ADMIN |  |
| QTS-19291 |  | Zone 2 / Gridlines 21-30 // Perimeter - Sequence 320 | 9d | 2025-06-24 A | 2025-07-07 A | QTS-19081 | 100% |  |  | SteelFab Texas, Inc | Construction | Phase 2 | IGMP | Ron Carroll | Construction | 01ADMIN |  |
| QTS-19571 |  | Zone 2 / Gridlines 21-30 // Dunnage - Sequence 524-527 | 8d | 2025-06-27 A | 2025-07-09 A | QTS-19301, QTS-19291 FF+2d | 100% |  |  | SteelFab Texas, Inc | Construction | Phase 2 | IGMP | Ron Carroll | Construction | 01ADMIN |  |
| QTS-19831 |  | Zone 2 / Gridlines 21-30 // Dunnage/Perimeter Detail - Sequence 523-525 | 8d | 2025-07-01 A | 2025-07-11 A | QTS-19581, QTS-19291 FF+2d | 100% |  |  | SteelFab Texas, Inc | Construction | Phase 2 | IGMP | Ron Carroll | Construction | 01ADMIN |  |
| QTS-19821 |  | Zone 2 / Gridlines 21-30 // High Roof Erection - Sequence 321-327 | 7d | 2025-07-10 A | 2025-07-18 A | QTS-19571 | 100% |  |  | SteelFab Texas, Inc | Construction | Phase 2 | IGMP | Ron Carroll | Construction | 01ADMIN |  |
| QTS-20181 |  | Zone 2 / Gridlines 21-30 // High Roof Detail - Sequence 321-324 | 7d | 2025-07-14 A | 2025-07-22 A | QTS-19821 SS+2d | 100% |  |  | SteelFab Texas, Inc | Construction | Phase 2 | IGMP | Ron Carroll | Construction | 01ADMIN |  |
| QTS-20191 |  | Zone 2 / Gridlines 21-30 // Dunnage/Perimeter Detail - Sequence 525-527 | 8d | 2025-07-14 A | 2025-07-23 A | QTS-19831 | 100% |  |  | SteelFab Texas, Inc | Construction | Phase 2 | IGMP | Ron Carroll | Construction | 01ADMIN |  |
| QTS-20561 |  | Zone 2 / Gridlines 21-30 // Mezzanine Erection - Sequence 221-227 | 5d | 2025-07-21 A | 2025-07-25 A | QTS-19821 | 100% |  |  | SteelFab Texas, Inc | Construction | Phase 2 | IGMP | Ron Carroll | Construction | 01ADMIN |  |
| QTS-20551 |  | Zone 2 / Gridlines 21-30 // High Roof Detail - Sequence 324-327 | 6d | 2025-07-23 A | 2025-07-30 A | QTS-20181 | 100% |  |  | SteelFab Texas, Inc | Construction | Phase 2 | IGMP | Ron Carroll | Construction | 01ADMIN |  |
| QTS-21081 |  | Zone 2 / Gridlines 21-30 // Mezzanine Detail - Sequence 221-227 | 6d | 2025-07-23 A | 2025-07-30 A | QTS-20561 SS+2d | 100% |  |  | SteelFab Texas, Inc | Construction | Phase 2 | IGMP | Ron Carroll | Construction | 01ADMIN |  |
| QTS-42601 |  | Zone 2 / Gridlines 21-30 // Stud Welding | 4d | 2025-07-25 A | 2025-07-30 A | QTS-21081 FF, QTS-20191 FF | 100% |  |  | SteelFab Texas, Inc | Construction | Phase 2 | IGMP | Ron Carroll | Construction | 01ADMIN |  |
|  | 3 | **Zone 2 / Slab On Metal Deck (SOMD)** |  | 2025-08-04 | 2025-08-18 |  |  |  |  |  |  |  |  |  |  |  |  |
| QTS-20981 |  | Zone 2 / Gridlines 21-24 // MEP Penetrations SOMD | 5d | 2025-08-04 A | 2025-08-08 A | QTS-20551, QTS-38861, QTS-42601 | 100% |  |  | Rosendin Electric, Inc | Construction | Phase 2 | IGMP | Dave Wiltberger | Construction | 01ADMIN | Level 2 |
| QTS-21171 |  | Zone 2 / Gridlines 21-24 // Prep, Form, & Pour SOMD | 5d | 2025-08-04 A | 2025-08-12 A | QTS-20981 FF+2d | 100% | 2025-08-11 | 2025-08-15 | Suntec Concrete Inc | Construction | Phase 2 | IGMP | Ron Carroll | Construction | 01ADMIN | Level 2 |
| QTS-21181 |  | Zone 2 / Gridlines 24-27 // MEP Penetrations SOMD | 5d | 2025-08-11 A | 2025-08-15 A | QTS-20981, QTS-38861 | 100% |  |  | Rosendin Electric, Inc | Construction | Phase 2 | IGMP | Dave Wiltberger | Construction | 01ADMIN | Level 2 |
| QTS-21401 |  | Zone 2 / Gridlines 24-27 // Prep, Form, & Pour SOMD | 5d | 2025-08-11 A | 2025-08-15 A | QTS-21171 SS+2d, QTS-21171 FF+2d, QTS-21181 | 100% | 2025-08-18 | 2025-08-22 | Suntec Concrete Inc | Construction | Phase 2 | IGMP | Ron Carroll | Construction | 01ADMIN | Level 2 |
| QTS-21511 |  | Zone 2 / Gridlines 27-30 // MEP Penetrations SOMD | 5d | 2025-08-12 A | 2025-08-18 A | QTS-21181 SS, QTS-21081, QTS-38861 | 100% | 2025-08-18 | 2025-08-22 | Rosendin Electric, Inc | Construction | Phase 2 | IGMP | Dave Wiltberger | Construction | 01ADMIN | Level 2 |
| QTS-21711 |  | Zone 2 / Gridlines 27-30 // Prep, Form & Pour SOMD | 5d | 2025-08-15 A | 2025-08-18 A | QTS-21401 SS+2d, QTS-21401 FF+2d, QTS-21511 | 100% | 2025-08-20 | 2025-08-26 | Suntec Concrete Inc | Construction | Phase 2 | IGMP | Ron Carroll | Construction | 01ADMIN | Level 2 |
|  | 4 | **Zone 2 / Slab On Grade (SOG)** |  | 2025-09-11 | 2025-10-07 |  |  |  |  |  |  |  |  |  |  |  |  |
| QTS-21641 |  | Zone 2 / Gridlines 21-30 // Prep, Form, & Pour SOG - North | 8d | 2025-09-11 A | 2025-09-24 A | QTS-16771, QTS-14851, QTS-15791, QTS-21521, QTS-99190 | 100% | 2025-09-11 | 2025-09-22 | Suntec Concrete Inc | Construction | Phase 2 | IGMP | Ron Carroll | Construction | 01ADMIN | Level 1 |
| QTS-21771 |  | Zone 2 / Gridlines 21-30 // Prep, Form, & Pour SOG - South | 8d | 2025-09-16 A | 2025-09-30 A | QTS-21641 SS+3d, QTS-21641 FF+3d | 100% | 2025-09-16 | 2025-09-25 | Suntec Concrete Inc | Construction | Phase 2 | IGMP | Ron Carroll | Construction | 01ADMIN | Level 1 |
| QTS-22021 |  | Zone 2 / Gridlines 21-30 // Cure SOG | 5d | 2025-10-01 A | 2025-10-07 A | QTS-21771 SS+3d, QTS-21771 FF+3d, QTS-21711 | 100% |  |  | Suntec Concrete Inc | Construction | Phase 2 | IGMP | Ron Carroll | Construction | 01ADMIN | Level 1 |

Notes:
- QTS-21171: allucent_notes: David Wiltberger on 2025-08-06 03:08: Suntech pulling in Start date / allucent_notes: 2025-08-06 03:08 - User: David Wiltberger - Date Added: 2025-08-06 03:08 - Note: Suntech pulling in Start date
- QTS-21401: allucent_notes: David Wiltberger on 2025-08-06 03:08: Suntech pulling in dates / allucent_notes: 2025-08-06 03:08 - User: David Wiltberger - Date Added: 2025-08-06 03:08 - Note: Suntech pulling in dates / 2025-08-19 14:08 - User: Jason Johnston - Date Added: 2025-08-19 14:08 - Note: Pour schedule moved up
- QTS-21511: allucent_notes: David Wiltberger on 2025-08-12 08:08: Started 2 and 3 the same time / allucent_notes: 2025-08-12 08:08 - User: David Wiltberger - Date Added: 2025-08-12 08:08 - Note: Started 2 and 3 the same time
- QTS-21711: allucent_notes: David Wiltberger on 2025-08-06 03:08: Suntech pulling in date / allucent_notes: 2025-08-06 03:08 - User: David Wiltberger - Date Added: 2025-08-06 03:08 - Note: Suntech pulling in date / 2025-08-19 14:08 - User: Jason Johnston - Date Added: 2025-08-19 14:08 - Note: Pour schedule moved up / 2025-08-19 14:08 - User: Jason Johnston -

| ID | WBS | Activity | Duration | Start | Finish | Predecessors | Complete | Planned start | Planned finish | Subcontractor | Project Section-1 | Phase-1-1 | Baseline | Layton Responsible Party | Project Section | Allucent CSI Group |
| --- | --- | --- | --- | --- | --- | --- | --- | --- | --- | --- | --- | --- | --- | --- | --- | --- |
|  | 1 | **Zone 2 / Tilt Panel Casting** |  | 2025-07-21 | 2025-09-10 |  |  |  |  |  |  |  |  |  |  |  |
| QTS-16031 |  | Zone 2 / Gridline 21-30 // Prep & Place Waste Slabs | 6d | 2025-07-21 A | 2025-07-28 A | QTS-15041, QTS-19821 | 100% |  |  | Suntec Concrete Inc | Construction | Phase 2 | IGMP | Ron Carroll | Construction | 01ADMIN |
| QTS-16961 |  | Zone 2 / Gridline 21-30 // Panel Embeds, Jamb Steel & Ledgers Shake Out | 5d | 2025-07-29 A | 2025-08-04 A | QTS-16031 | 100% |  |  | Suntec Concrete Inc | Construction | Phase 2 | IGMP | Ron Carroll | Construction | 01ADMIN |
| QTS-17911 |  | Zone 2 / Gridline 21-30 // Layout, Form, Reinforce, & Pour North Tilt Panels | 10d | 2025-08-01 A | 2025-08-12 A | QTS-17661 FF+1d, QTS-16921 | 100% | 2025-08-01 | 2025-08-14 | Suntec Concrete Inc | Construction | Phase 2 | IGMP | Ron Carroll | Construction | 01ADMIN |
| QTS-17661 |  | Zone 2 / Gridline 21-30 // Panel Embeds, Jamb Steel & Ledgers | 1d | 2025-08-05 A | 2025-08-05 A | QTS-16031, QTS-16961 | 100% |  |  | Suntec Concrete Inc | Construction | Phase 2 | IGMP | Ron Carroll | Construction | 01ADMIN |
| QTS-99160 |  | Zone 2 / Gridline 21-30 // Cure North Tilt Panels | 5d | 2025-08-13 A | 2025-08-19 A | QTS-17911 | 100% |  |  | Suntec Concrete Inc | Construction | Phase 2 | IGMP | Ron Carroll | Construction | 01ADMIN |
| QTS-99170 |  | Zone 2 / Gridline 21-30 // Layout, Form, Reinforce, & Pour South Tilt Panels | 10d | 2025-08-13 A | 2025-08-25 A | QTS-16031 | 100% | 2025-08-13 | 2025-08-26 | Suntec Concrete Inc | Construction | Phase 2 | IGMP | Ron Carroll | Construction | 01ADMIN |
| QTS-21521 |  | Zone 2 / Gridline 21-30 // Erect North Cast Panels | 5d | 2025-08-21 A | 2025-08-26 A | QTS-17911, QTS-20561, QTS-19811, QTS-42601, QTS-99160 | 100% | 2025-08-20 | 2025-08-26 | Suntec Concrete Inc | Construction | Phase 2 | IGMP | Ron Carroll | Construction | 01ADMIN |
| QTS-99180 |  | Zone 2 / Gridline 21-30 // Cure South Tilt Panels | 3d | 2025-08-26 A | 2025-08-28 A | QTS-99170 | 100% |  |  | Suntec Concrete Inc | Construction | Phase 2 | IGMP | Ron Carroll | Construction | 01ADMIN |
| QTS-99190 |  | Zone 2 / Gridline 21-30 // Erect South Cast Panels | 5d | 2025-09-04 A | 2025-09-10 A | QTS-99170, QTS-99180 | 100% |  |  | Suntec Concrete Inc | Construction | Phase 2 | IGMP | Ron Carroll | Construction | 01ADMIN |
|  | 4 | **Zone 3 / Gridlines 30-41 (Steel/SOMD/SOG/Tilt)** |  | 2025-07-10 | 2025-11-05 |  |  |  |  |  |  |  |  |  |  |  |
|  | 2 | **Zone 3 / Structural Steel** |  | 2025-07-10 | 2025-09-03 |  |  |  |  |  |  |  |  |  |  |  |
| QTS-21091 |  | Zone 3 / Gridlines 30-41 // Perimeter - Sequence 30-31 | 9d | 2025-07-10 A | 2025-07-22 A | QTS-13471, QTS-14861, QTS-43211, QTS-43131, QTS-19821 SS | 100% |  |  | SteelFab Texas, Inc | Construction | Phase 3 | IGMP | Ron Carroll | Construction | 01ADMIN |
| QTS-21541 |  | Zone 3 / Gridlines 30-41 // Dunnage - Sequence 530-533 | 9d | 2025-07-14 A | 2025-07-24 A | QTS-21091 SS+2d | 100% |  |  | SteelFab Texas, Inc | Construction | Phase 3 | IGMP | Ron Carroll | Construction | 01ADMIN |
| QTS-21791 |  | Zone 3 / Gridlines 30-41 // Dunnage/Perimeter Detail - Sequence 530-532 | 9d | 2025-07-16 A | 2025-07-28 A | QTS-21541 SS+2d | 100% |  |  | SteelFab Texas, Inc | Construction | Phase 3 | IGMP | Ron Carroll | Construction | 01ADMIN |
| QTS-21531 |  | Zone 3 / Gridlines 30-41 // Perimeter - Sequence 31-32 | 8d | 2025-07-23 A | 2025-08-01 A | QTS-21091 | 100% |  |  | SteelFab Texas, Inc | Construction | Phase 3 | IGMP | Ron Carroll | Construction | 01ADMIN |
| QTS-21781 |  | Zone 3 / Gridlines 30-41 // Dunnage - Sequence 533-536 | 8d | 2025-07-25 A | 2025-08-05 A | QTS-21541 | 100% |  |  | SteelFab Texas, Inc | Construction | Phase 3 | IGMP | Ron Carroll | Construction | 01ADMIN |
| QTS-22051 |  | Zone 3 / Gridlines 30-41 // Dunnage/Perimeter Detail - Sequence 532-534 | 8d | 2025-07-29 A | 2025-08-07 A | QTS-21791 | 100% |  |  | SteelFab Texas, Inc | Construction | Phase 3 | IGMP | Ron Carroll | Construction | 01ADMIN |
| QTS-22351 |  | Zone 3 / Gridlines 30-41 // High Roof Erection - Sequence 330-337 | 10d | 2025-08-06 A | 2025-08-19 A | QTS-21781 | 100% |  |  | SteelFab Texas, Inc | Construction | Phase 3 | IGMP | Ron Carroll | Construction | 01ADMIN |
| QTS-22361 |  | Zone 3 / Gridlines 30-41 // Penthouse/Stair 710 Erection - Sequence 537 | 5d | 2025-08-06 A | 2025-08-12 A | QTS-21781, QTS-49341 | 100% |  |  | SteelFab Texas, Inc | Construction | Phase 3 | IGMP | Ron Carroll | Construction | 01ADMIN |
| QTS-22061 |  | Zone 3 / Gridlines 30-41 // Dunnage/Perimeter Detail - Sequence 534-536 | 8d | 2025-08-08 A | 2025-08-19 A | QTS-22051, QTS-43251 | 100% |  |  | SteelFab Texas, Inc | Construction | Phase 3 | IGMP | Ron Carroll | Construction | 01ADMIN |
| QTS-22621 |  | Zone 3 / Gridlines 30-41 // Penthouse/Stair 710 Detail - Sequence 537 | 7d | 2025-08-11 A | 2025-08-19 A | QTS-16931 FF, QTS-22361 SS+3d | 100% |  |  | SteelFab Texas, Inc | Construction | Phase 3 | IGMP | Ron Carroll | Construction | 01ADMIN |
| QTS-22611 |  | Zone 3 / Gridlines 30-41 // Mezzanine Erection - Sequence 230-236 | 6d | 2025-08-20 A | 2025-08-27 A | QTS-22351 | 100% |  |  | SteelFab Texas, Inc | Construction | Phase 3 | IGMP | Ron Carroll | Construction | 01ADMIN |
| QTS-22981 |  | Zone 3 / Gridlines 30-41 // Mezzanine Detail - Sequence 230-236 | 6d | 2025-08-25 A | 2025-09-02 A | QTS-22621, QTS-22611 SS+3d | 100% |  |  | SteelFab Texas, Inc | Construction | Phase 3 | IGMP | Ron Carroll | Construction | 01ADMIN |
| QTS-42611 |  | Zone 3 / Gridlines 30-41 // Stud Welding | 5d | 2025-08-26 A | 2025-09-02 A | QTS-22981 FF, QTS-22061 | 100% |  |  | SteelFab Texas, Inc | Construction | Phase 3 | IGMP | Ron Carroll | Construction | 01ADMIN |
| QTS-46811 |  | Zone 3 / Gridlines 30-41 // Stair 709 Erect & Detail | 4d | 2025-08-28 A | 2025-09-03 A | QTS-22611, QTS-49301 | 100% |  |  | SteelFab Texas, Inc | Construction | Phase 3 | IGMP | Ron Carroll | Construction | 01ADMIN |

Notes:
- QTS-99170: allucent_notes: Jason Johnston on 2025-08-19 14:08: Pour date moved up. / allucent_notes: 2025-08-19 14:08 - User: Jason Johnston - Date Added: 2025-08-19 14:08 - Note: Pour date moved up.
- QTS-21521: allucent_notes: Jason Johnston on 2025-08-26 15:08: One day delay in start no change to finish / Jason Johnston on 2025-08-26 15:08: Completed on time. / allucent_notes: 2025-08-26 15:08 - User: Jason Johnston - Date Added: 2025-08-26 15:08 - Note: One day delay in start no change to finish / 2025-08-26 15:08 - User: Jason Johnston - Date Added: 2025-08-26 15:08 - Note: Completed on time.
- QTS-99190: allucent_notes: Jason Johnston on 2025-09-02 15:09: Dirt ramps need to be removed before tilting can begin. / allucent_notes: 2025-09-02 15:09 - User: Jason Johnston - Date Added: 2025-09-02 15:09 - Note: Dirt ramps need to be removed before tilting can begin.

| ID | WBS | Activity | Duration | Start | Finish | Predecessors | Complete | Planned start | Planned finish | Subcontractor | Project Section-1 | Phase-1-1 | Baseline | Layton Responsible Party | Project Section | Allucent CSI Group |
| --- | --- | --- | --- | --- | --- | --- | --- | --- | --- | --- | --- | --- | --- | --- | --- | --- |
|  | 3 | **Zone 3 / Slab On Metal Deck (SOMD)** |  | 2025-08-27 | 2025-09-11 |  |  |  |  |  |  |  |  |  |  |  |
| QTS-22891 |  | Zone 3 / Gridlines 30-33 // MEP Penetrations SOMD | 2d | 2025-08-27 A | 2025-09-03 A | QTS-38861, QTS-42611 SS+1d | 100% | 2025-08-27 | 2025-08-28 | Rosendin Electric, Inc | Construction | Phase 3 | IGMP | Dave Wiltberger | Construction | 01ADMIN |
| QTS-23021 |  | Zone 3 / Gridlines 30-33 // Prep, Form, & Pour SOMD | 5d | 2025-09-02 A | 2025-09-05 A | QTS-22891 FF | 100% | 2025-09-02 | 2025-09-08 | Suntec Concrete Inc | Construction | Phase 3 | IGMP | Ron Carroll | Construction | 01ADMIN |
| QTS-23031 |  | Zone 3 / Gridlines 33-37 // MEP Penetrations SOMD | 2d | 2025-09-04 A | 2025-09-05 A | QTS-22891, QTS-38861, QTS-42611 | 100% |  |  | Rosendin Electric, Inc | Construction | Phase 3 | IGMP | Dave Wiltberger | Construction | 01ADMIN |
| QTS-23111 |  | Zone 3 / Gridlines 33-37 // Prep, Form, & Pour SOMD | 5d | 2025-09-04 A | 2025-09-10 A | QTS-23021 FF+3d, QTS-23031 FF | 100% |  |  | Suntec Concrete Inc | Construction | Phase 3 | IGMP | Ron Carroll | Construction | 01ADMIN |
| QTS-23381 |  | Zone 3 / Gridlines 37-41 // Prep, Form & Pour SOMD | 5d | 2025-09-05 A | 2025-09-11 A | QTS-23111 FF+1d, QTS-23251 FF | 100% |  |  | Suntec Concrete Inc | Construction | Phase 3 | IGMP | Ron Carroll | Construction | 01ADMIN |
| QTS-23251 |  | Zone 3 / Gridlines 37-41 // MEP Penetrations SOMD | 2d | 2025-09-08 A | 2025-09-09 A | QTS-23031, QTS-22981, QTS-38861 | 100% |  |  | Rosendin Electric, Inc | Construction | Phase 3 | IGMP | Dave Wiltberger | Construction | 01ADMIN |
|  | 4 | **Zone 3 / Slab On Grade (SOG)** |  | 2025-10-02 | 2025-11-05 |  |  |  |  |  |  |  |  |  |  |  |
| QTS-23551 |  | Zone 3 / Gridlines 30-37 // Prep, Form, & Pour SOG - North | 8d | 2025-10-02 A | 2025-10-14 A | QTS-23111, QTS-99200, QTS-99210 | 100% | 2025-10-02 | 2025-10-13 | Suntec Concrete Inc | Construction | Phase 3 | IGMP | Ron Carroll | Construction | 01ADMIN |
| QTS-23741 |  | Zone 3 / Gridlines 30-37 // Prep, Form, & Pour SOG - South | 8d | 2025-10-07 A | 2025-10-20 A | QTS-23551 SS+3d, QTS-23551 FF+3d, QTS-1035 | 100% | 2025-10-07 | 2025-10-16 | Suntec Concrete Inc | Construction | Phase 3 | IGMP | Ron Carroll | Construction | 01ADMIN |
| QTS-23281 |  | Zone 3 / Gridlines 37-41 // Prep, Form, & Pour SOG - BOH - South | 8d | 2025-10-21 A | 2025-10-28 A | QTS-17341 FF, QTS-16661, QTS-16671, QTS-23261, QTS-23741 SS+3d, QTS-23741 FF+3d, QTS-19031 FF | 100% | 2025-10-21 | 2025-10-30 | Suntec Concrete Inc | Construction | Phase 3 | IGMP | Ron Carroll | Construction | 01ADMIN |
| QTS-99490 |  | Zone 3 / Gridlines 30-37 // Cure SOG | 5d | 2025-10-21 A | 2025-10-27 A | QTS-23741 | 100% |  |  | Suntec Concrete Inc | Construction | Phase 3 | IGMP | Ron Carroll | Construction | 01ADMIN |
| QTS-99870 |  | Zone 3 / Gridlines 37-41 // Prep, Form, & Pour SOG - BOH - North | 5d | 2025-10-27 A | 2025-11-03 A | QTS-23741, QTS-23281 FF+3d | 100% | 2025-10-27 | 2025-10-31 | Suntec Concrete Inc | Construction | Phase 3 | IGMP | Ron Carroll | Construction | 01ADMIN |
| QTS-99500 |  | Zone 3 / Gridlines 37-41 // Cure BOH SOG | 5d | 2025-10-30 A | 2025-11-05 A | QTS-23281, QTS-99870 FF+2d | 100% | 2025-10-29 | 2025-11-04 | Suntec Concrete Inc | Construction | Phase 3 | IGMP | Ron Carroll | Construction | 01ADMIN |
|  | 6 | **Zone 3 / Tilt Panel Casting** |  | 2025-08-04 | 2025-10-01 |  |  |  |  |  |  |  |  |  |  |  |
| QTS-16971 |  | Zone 3 / Gridlines 30-41 // Prep & Place Waste Slabs - North | 6d | 2025-08-04 A | 2025-08-25 A | QTS-16031, QTS-21531 | 100% | 2025-08-04 | 2025-08-11 | Suntec Concrete Inc | Construction | Phase 3 | IGMP | Ron Carroll | Construction | 01ADMIN |
| QTS-18481 |  | Zone 3 / Gridlines 30-41 // Layout, Form, Reinforce, & Pour Tilt Panels - North | 5d | 2025-08-26 A | 2025-09-05 A | QTS-17911, QTS-38801, QTS-16971 | 100% | 2025-08-21 | 2025-08-27 | Suntec Concrete Inc | Construction | Phase 3 | IGMP | Ron Carroll | Construction | 01ADMIN |
| QTS-99220 |  | Zone 3 / Gridlines 30-41 // Prep & Place Waste Slabs - South | 6d | 2025-08-26 A | 2025-09-03 A | QTS-16971 | 100% | 2025-08-21 | 2025-08-28 | Suntec Concrete Inc | Construction | Phase 3 | IGMP | Ron Carroll | Construction | 01ADMIN |
| QTS-99240 |  | Zone 3 / Gridlines 30-41 // Prep & Place Waste Slabs - East | 6d | 2025-08-27 A | 2025-08-29 A | QTS-18481 SS | 100% | 2025-08-27 | 2025-09-04 | Suntec Concrete Inc | Construction | Phase 3 | IGMP | Ron Carroll | Construction | 01ADMIN |
| QTS-99250 |  | Zone 3 / Gridlines 30-41 // Layout, Form, Reinforce, & Pour Tilt Panels - East | 5d | 2025-09-02 A | 2025-09-12 A | QTS-99240 | 100% | 2025-09-02 | 2025-09-08 | Suntec Concrete Inc | Construction | Phase 3 | IGMP | Ron Carroll | Construction | 01ADMIN |
| QTS-99230 |  | Zone 3 / Gridlines 30-41 // Layout, Form, Reinforce, & Pour Tilt Panels - South | 5d | 2025-09-04 A | 2025-09-10 A | QTS-99220 | 100% |  |  | Suntec Concrete Inc | Construction | Phase 3 | IGMP | Ron Carroll | Construction | 01ADMIN |
| QTS-99260 |  | Zone 3 / Gridlines 30-41 // Cure Tilt Panels - North | 5d | 2025-09-08 A | 2025-09-12 A | QTS-18481 | 100% |  |  | Suntec Concrete Inc | Construction | Phase 3 | IGMP | Ron Carroll | Construction | 01ADMIN |
| QTS-99270 |  | Zone 3 / Gridlines 30-41 // Cure - South | 5d | 2025-09-11 A | 2025-09-17 A | QTS-99230 | 100% |  |  | Suntec Concrete Inc | Construction | Phase 3 | IGMP | Ron Carroll | Construction | 01ADMIN |
| QTS-99200 |  | Zone 3 / Gridlines 30-41 // Erect Cast Panels - North | 4d | 2025-09-15 A | 2025-09-22 A | QTS-99260, QTS-99190, QTS-23111 | 100% | 2025-09-15 | 2025-09-18 | Suntec Concrete Inc | Construction | Phase 3 | IGMP | Ron Carroll | Construction | 01ADMIN |
| QTS-99280 |  | Zone 3 / Gridlines 30-41 // Cure - East | 4d | 2025-09-15 A | 2025-09-18 A | QTS-99250 | 100% |  |  | Suntec Concrete Inc | Construction | Phase 3 | IGMP | Ron Carroll | Construction | 01ADMIN |
| QTS-23261 |  | Zone 3 / Gridlines 30-41 // Erect Cast Panels - East | 3d | 2025-09-23 A | 2025-09-25 A | QTS-22981, QTS-15071 FF, QTS-21521, QTS-42611, QTS-46811, QTS-99280, QTS-99200 | 100% |  |  | Suntec Concrete Inc | Construction | Phase 3 | IGMP | Ron Carroll | Construction | 01ADMIN |
| QTS-99210 |  | Zone 3 / Gridlines 30-41 // Erect Cast Panels - South | 4d | 2025-09-26 A | 2025-10-01 A | QTS-99270, QTS-23261 | 100% |  |  | Suntec Concrete Inc | Construction | Phase 3 | IGMP | Ron Carroll | Construction |  |

Notes:
- QTS-22891: allucent_notes: David Wiltberger on 2025-09-02 10:09: ZOne not released until 9-3-25 / allucent_notes: 2025-09-02 10:09 - User: David Wiltberger - Date Added: 2025-09-02 10:09 - Note: ZOne not released until 9-3-25
- QTS-23551: allucent_notes_20251014_152335: Jason Johnston on 2025-10-14 14:10: Rain Delay / allucent_notes: 2025-10-14 14:10 - User: Jason Johnston - Date Added: 2025-10-14 14:10 - Note: Rain Delay
- QTS-23741: allucent_notes_20251014_152335: Jason Johnston on 2025-10-14 14:10: Rain delay and concrete availability / allucent_notes_20251021_145627: Jason Johnston on 2025-10-14 14:10: Rain delay and concrete availability / allucent_notes: 2025-10-14 14:10 - User: Jason Johnston - Date Added: 2025-10-14 14:10 - Note: Rain delay and concrete availability
- QTS-23281: allucent_notes_20251021_145627: Jason Johnston on 2025-10-21 13:10: switching pours from north to south / Jason Johnston on 2025-10-21 13:10: switching pours from north to south / allucent_notes_20251027_224008: Jason Johnston on 2025-10-21 13:10: switching pours from north to south / Jason Johnston on 2025-10-21 13:10: switching pours from north to south / allucent_notes_20251028_163138: Jason Johnston on 2025-10-21 13:10: switching pours from north to south / Jason Johnston on 2025-10-21 13:10: switching pours from north to south / allucent_notes: 2025-10-21 13:10 - User: Jason Johnston - Date Added: 2025-10-21 13:10 - Note: switching pours from north to south / 2025-10-21 13:10 - User: Jason Johnston - Date Added: 2025-10-21 13:10 - Note: switching pours from north to south
- QTS-99870: allucent_notes_20251021_145627: Jason Johnston on 2025-10-21 13:10: switching pours from north to south / Jason Johnston on 2025-10-21 13:10: switching pours from north to south / allucent_notes_20251027_224008: Jason Johnston on 2025-10-21 13:10: switching pours from north to south / Jason Johnston on 2025-10-21 13:10: switching pours from north to south / allucent_notes_20251028_163138: Jason Johnston on 2025-10-21 13:10: switching pours from north to south / Jason Johnston on 2025-10-21 13:10: switching pours from north to south / allucent_notes_20251104_160200: Jason Johnston on 2025-10-21 13:10: switching pours from north to south / Jason Johnston on 2025-10-21 13:10: switching pours from north to south / Jason Johnston on 2025-11-03 14:11: Moving pour to 11/3. / allucent_notes: 2025-10-21 13:10 - User: Jason Johnston - Date Added: 2025-10-21 13:10 - Note: switching pours from north to south / 2025-10-21 13:10 - User: Jason Johnston - Date Added: 2025-10-21 13:10 - Note: switching pours from north to south / 2025-11-03 14:11 -
- QTS-99500: allucent_notes_20251111_182405: Zack Goertz on 2025-11-05 10:11: Pour sequence got divided into 2. South was poured first. Suntec needed to do 2 pours so they could get their equipment in. / allucent_notes_20251118_192630: Zack Goertz on 2025-11-05 10:11: Pour sequence got divided into 2. South was poured first. Suntec needed to do 2 pours so they could get their equipment in. / allucent_notes: 2025-11-05 10:11 - User: Zack Goertz - Date Added: 2025-11-05 10:11 - Note: Pour sequence got divided into 2. South was poured first. Suntec needed to do 2 pours so they could get their equipment in.
- QTS-16971: allucent_notes: Jason Johnston on 2025-08-12 14:08: Pushing to allow time for single crane mob for zone 2 and zone 3 / allucent_notes: 2025-08-12 14:08 - User: Jason Johnston - Date Added: 2025-08-12 14:08 - Note: Pushing to allow time for single crane mob for zone 2 and zone 3 / 2025-08-26 15:08 - User: Jason Johnston - Date Added: 2025-08-26 15:08 - Note: Delay in pour
- QTS-18481: allucent_notes: Jason Johnston on 2025-09-02 15:09: delay in pour / allucent_notes: 2025-09-02 15:09 - User: Jason Johnston - Date Added: 2025-09-02 15:09 - Note: delay in pour
- QTS-99220: allucent_notes: Jason Johnston on 2025-08-12 14:08: Pushing to allow time for single crane mob for zone 2 and zone 3 / allucent_notes: 2025-08-12 14:08 - User: Jason Johnston - Date Added: 2025-08-12 14:08 - Note: Pushing to allow time for single crane mob for zone 2 and zone 3
- QTS-99240: allucent_notes: Jason Johnston on 2025-08-12 14:08: Pushing to allow time for single crane mob for zone 2 and zone 3 / allucent_notes: 2025-08-12 14:08 - User: Jason Johnston - Date Added: 2025-08-12 14:08 - Note: Pushing to allow time for single crane mob for zone 2 and zone 3

| ID | WBS | Activity | Duration | Start | Finish | Predecessors | Complete | Remaining | Planned start | Planned finish | Total float | Free float | Constraint | Subcontractor | Project Section-1 | Phase-1-1 | Baseline | Layton Responsible Party | Project Section | Allucent CSI Group | Level | Location | Notes |
| --- | --- | --- | --- | --- | --- | --- | --- | --- | --- | --- | --- | --- | --- | --- | --- | --- | --- | --- | --- | --- | --- | --- | --- |
|  | 1 | **External Stairs** |  | 2025-08-27 | 2026-01-16 |  |  |  |  |  |  |  |  |  |  |  |  |  |  |  |  |  |  |
| QTS-46851 |  | Stair 706 Erect & Detail | 7d | 2025-08-27 A | 2025-09-18 A | QTS-22361, QTS-49181, QTS-21521 | 100% |  | 2025-08-27 | 2025-09-05 |  |  |  | Suntec Concrete Inc | Construction | Phase 3 | IGMP | Ron Carroll | Construction | 01ADMIN |  |  |  |
| QTS-46861 |  | Stair 708 Erect & Detail | 6d | 2025-09-17 A | 2025-09-22 A | QTS-46851, QTS-49101 | 100% |  | 2025-09-24 | 2025-10-01 |  |  |  | Suntec Concrete Inc | Construction | Phase 3 | IGMP | Ron Carroll | Construction |  |  |  |  |
| QTS-46871 |  | Stair 711 Erect & Detail | 7d | 2025-09-26 A | 2025-10-28 A | QTS-46861, QTS-49261, QTS-23261 | 100% |  | 2025-09-26 | 2025-10-06 |  |  |  | Suntec Concrete Inc | Construction | Phase 3 | IGMP | Ron Carroll | Construction | 01ADMIN |  |  |  |
| QTS-46881 |  | Stair 707 Erect & Detail | 9d | 2025-11-24 A | 2026-01-14 A | QTS-49141, QTS-23261, QTS-46871 | 100% |  | 2025-11-19 | 2025-12-03 |  |  |  | SteelFab Texas, Inc | Construction | Phase 3 | IGMP | Ron Carroll | Construction | 01ADMIN |  |  |  |
| QTS-46891 |  | Stair 704 Erect & Detail | 5d | 2026-01-15 A | 2026-01-16 | QTS-46871, QTS-49061, QTS-21521, QTS-46881 FF | 40% | 3d | 2026-01-15 | 2026-01-22 | 65d | 0d |  | SteelFab Texas, Inc | Construction | Phase 3 | IGMP | Ron Carroll | Construction | 01ADMIN |  |  |  |
|  | 6 | **Exterior Finishes** |  | 2025-07-22 | 2026-07-10 |  |  |  |  |  |  |  |  |  |  |  |  |  |  |  |  |  |  |
|  | 5 | **Roof Top Units** |  | 2025-07-22 | 2026-02-16 |  |  |  |  |  |  |  |  |  |  |  |  |  |  |  |  |  |  |
| QTS-19101 |  | Set FOH RTU 01 Curbs | 9d | 2025-07-22 A | 2025-07-25 A | QTS-19121, QTS-19071, QTS-19621 | 100% |  | 2025-08-04 | 2025-08-14 |  |  |  | Bel-Aire Mechanical, LLC | Construction | Phase 1 | DC | Dave Wiltberger | Construction | 01ADMIN | Roof | FOH |  |
| QTS-36101 |  | Set FOH RTU 02 Curbs | 9d | 2025-07-22 A | 2025-07-25 A | QTS-19071, QTS-19101 SS | 100% |  | 2025-07-22 | 2025-08-01 |  |  |  | Bel-Aire Mechanical, LLC | Construction | Phase 1 | DC | Dave Wiltberger | Construction |  | Roof | FOH |  |
|  | 1 | **Supplemental Steel Install** |  | 2025-08-04 | 2025-09-04 |  |  |  |  |  |  |  |  |  |  |  |  |  |  |  |  |  |  |
| QTS-50791 |  | Install Supplemental Steel For RTU Penetrations | 10d | 2025-08-04 A | 2025-09-04 A | QTS-19101, QTS-50801 | 100% |  | 2025-08-04 | 2025-08-15 |  |  |  | Bel-Aire Mechanical, LLC | Construction | Phase 1 | DC | Dave Wiltberger | Construction | 01ADMIN | Roof | FOH |  |
|  | 2 | **Remaining Scope** |  | 2025-08-18 | 2026-02-16 |  |  |  |  |  |  |  |  |  |  |  |  |  |  |  |  |  |  |
| QTS-50781 |  | Set FOH RTU 01 & 02 Penetrations | 5d | 2025-08-18 A | 2025-08-22 A | QTS-50791 SS | 100% |  |  |  |  |  |  | Bel-Aire Mechanical, LLC | Construction | Phase 1 | DC | Dave Wiltberger | Construction | 01ADMIN | Roof | FOH |  |
| QTS-19111 |  | Set BOH RTU 03 Curbs & Penetrations | 10d | 2025-10-08 A | 2025-10-21 A | QTS-19121, QTS-22621, QTS-22981, QTS-23261 | 100% |  |  |  |  |  |  | Bel-Aire Mechanical, LLC | Construction | Phase 1 | DC | Dave Wiltberger | Construction | 01ADMIN | Roof | BOH |  |
| QTS-36111 |  | Set FOH RTU 02 | 2d | 2025-10-28 A | 2025-10-28 A | QTS-36101, QTS-36091 | 100% |  | 2025-10-28 | 2025-10-29 |  |  |  | Bel-Aire Mechanical, LLC | Construction | Phase 1 | DC | Dave Wiltberger | Construction | 01ADMIN | Roof | FOH |  |
| QTS-38421 |  | Set FOH RTU 01 | 2d | 2025-10-28 A | 2025-10-28 A | QTS-19101, QTS-25371, QTS-50781 | 100% |  | 2025-10-29 | 2025-10-30 |  |  |  | Bel-Aire Mechanical, LLC | Construction | Phase 1 | DC | Dave Wiltberger | Construction | 01ADMIN | Roof | FOH |  |
| QTS-101600 |  | Set Condensers | 1d | 2025-10-29 A | 2025-10-29 A | QTS-38421 | 100% |  |  |  |  |  |  | Bel-Aire Mechanical, LLC | Construction | Phase 1 | DC | Dave Wiltberger | Construction | 01ADMIN | Roof | FOH |  |
| QTS-101620 |  | Install Piping for Condensors | 4d | 2025-10-30 A | 2025-12-02 A | QTS-101600 | 100% |  | 2025-10-30 | 2025-11-04 |  |  |  | Bel-Aire Mechanical, LLC | Construction | Phase 1 | DC | Dave Wiltberger | Construction | 01ADMIN | Roof | FOH |  |
| QTS-48911 |  | Rough In Plumbing from to FOH RTU 01 | 1d | 2025-12-05 A | 2025-12-05 A | QTS-38421, QTS-101620 | 100% |  |  |  |  |  |  | Bel-Aire Mechanical, LLC | Construction | Phase 1 | DC | Dave Wiltberger | Construction | 01ADMIN | Roof | FOH |  |
| QTS-48951 |  | Rough In Plumbing from to FOH RTU 02 | 1d | 2025-12-05 A | 2025-12-05 A | QTS-36111, QTS-101620 | 100% |  |  |  |  |  |  | Bel-Aire Mechanical, LLC | Construction | Phase 1 | DC | Dave Wiltberger | Construction | 01ADMIN | Roof | FOH |  |
| QTS-48921 |  | Rough In Power from to FOH RTU 01 | 3d | 2025-12-23 A | 2025-12-30 A | QTS-48911 | 100% |  |  |  |  |  |  | Bel-Aire Mechanical, LLC | Construction | Phase 1 | DC | Dave Wiltberger | Construction | 01ADMIN | Roof | FOH |  |
| QTS-48961 |  | Rough In Power from to FOH RTU 02 | 3d | 2025-12-23 A | 2025-12-30 A | QTS-48951 | 100% |  |  |  |  |  |  | Bel-Aire Mechanical, LLC | Construction | Phase 1 | DC | Dave Wiltberger | Construction | 01ADMIN | Roof | FOH |  |
| QTS-48931 |  | Rough In Controls from to FOH RTU 01 | 1d | 2025-12-30 A | 2025-12-30 A | QTS-48921 FF | 100% |  |  |  |  |  |  | Bel-Aire Mechanical, LLC | Construction | Phase 1 | DC | Dave Wiltberger | Construction | 01ADMIN | Roof | FOH |  |
| QTS-48971 |  | Rough In Controls from to FOH RTU 02 | 1d | 2025-12-30 A | 2025-12-30 A | QTS-48961 FF | 100% |  |  |  |  |  |  | Bel-Aire Mechanical, LLC | Construction | Phase 1 | DC | Dave Wiltberger | Construction | 01ADMIN | Roof | FOH |  |
| QTS-38431 |  | Set BOH RTU 03 | 2d | 2026-01-14 A | 2026-01-15 A | QTS-2201, QTS-19111, QTS-23461, QTS-2071 | 100% |  |  |  |  |  |  | Bel-Aire Mechanical, LLC | Construction | Phase 1 | DC | Dave Wiltberger | Construction | 01ADMIN | Roof | BOH |  |
| QTS-48941 |  | Pre Energization Inspection FOH RTU 01 | 1d | 2026-01-14 | 2026-01-14 | QTS-48931 |  |  |  |  | 141d | 0d |  | Bel-Aire Mechanical, LLC | Construction | Phase 1 | DC | Dave Wiltberger | Construction | 01ADMIN | Roof | FOH | 1/20/26: Dave is not sure if there is power to RTUs |
| QTS-48981 |  | Pre Energization Inspection FOH RTU 02 | 1d | 2026-01-14 | 2026-01-14 | QTS-48971 |  |  |  |  | 141d | 0d |  | Bel-Aire Mechanical, LLC | Construction | Phase 1 | DC | Dave Wiltberger | Construction | 01ADMIN | Roof | FOH | 1/20/26: Dave is not sure if there is power to RTUs |
| QTS-48991 |  | Rough In Plumbing from to BOH RTU 03 | 1d | 2026-02-10 | 2026-02-10 | QTS-38431 |  |  |  |  | 38d | 0d | start on or after 2026-02-10 | Bel-Aire Mechanical, LLC | Construction | Phase 1 | DC | Dave Wiltberger | Construction | 01ADMIN | Roof | FOH | 1/20/26: BAM has not started yet. |
| QTS-49001 |  | Rough In Power from to BOH RTU 03 | 3d | 2026-02-11 | 2026-02-13 | QTS-48991 |  |  |  |  | 38d | 0d |  | Bel-Aire Mechanical, LLC | Construction | Phase 1 | DC | Dave Wiltberger | Construction | 01ADMIN | Roof | FOH |  |
| QTS-49011 |  | Rough In Controls from to BOH RTU 03 | 1d | 2026-02-13 | 2026-02-13 | QTS-49001 FF |  |  |  |  | 38d | 0d |  | Bel-Aire Mechanical, LLC | Construction | Phase 1 | DC | Dave Wiltberger | Construction | 01ADMIN | Roof | FOH |  |
| QTS-49021 |  | Pre Energization Inspection BOH RTU 03 | 1d | 2026-02-16 | 2026-02-16 | QTS-49011 |  |  |  |  | 38d | 0d |  | Bel-Aire Mechanical, LLC | Construction | Phase 1 | DC | Dave Wiltberger | Construction | 01ADMIN | Roof | FOH |  |

Notes:
- QTS-46871: allucent_notes_20251014_152335: Jason Johnston on 2025-10-07 12:10: Waiting for pad for south side stairs to be poured / allucent_notes_20251021_145627: Jason Johnston on 2025-10-07 12:10: Waiting for pad for south side stairs to be poured / Jason Johnston on 2025-10-21 13:10: Waiting to complete until after gen yard work is done in area / allucent_notes_20251027_224008: Jason Johnston on 2025-10-07 12:10: Waiting for pad for south side stairs to be poured / Jason Johnston on 2025-10-21 13:10: Waiting to complete until after gen yard work is done in area / allucent_notes_20251028_163138: Jason Johnston on 2025-10-07 12:10: Waiting for pad for south side stairs to be poured / Jason Johnston on 2025-10-21 13:10: Waiting to complete until after gen yard work is done in area / allucent_notes: 2025-10-07 12:10 - User: Jason Johnston - Date Added: 2025-10-07 12:10 - Note: Waiting for pad for south side stairs to be poured / 2025-10-21 13:10 - User: Jason Johnston - Date Added: 2025-10-21 13:10 - Note: Waiting to complete until after gen yard wo
- QTS-46881: allucent_notes_20251230_164549: Jason Johnston on 2025-11-11 14:11: No update. Effected by RFI over conflicting shop drawings. / Jason Johnston on 2025-11-18T21:06:27.628Z: Tie to TES tanks zone 3 set / Jason Johnston on 2025-11-24 13:11: Rain delay / Chris Waddell on 2025-12-09T21:06:46.927Z: Suntec installed anchor bolts by drill and epoxy today / Chris Waddell on 2025-12-09 14:10: Suntec needs to pour pedestals for stairs to sit on before they can finish. / Ron Carroll on 2025-12-15T21:17:12.856Z: Pending possible RFI / Ron Carroll on 2025-12-15 14:18: Pending possible RFI / Andrew Melis on 2025-12-30 12:46: work in progress / allucent_notes_20251111_182405: Jason Johnston on 2025-11-11 14:11: No update. Effected by RFI over conflicting shop drawings. / allucent_notes_20251118_192630: Jason Johnston on 2025-11-11 14:11: No update. Effected by RFI over conflicting shop drawings. / Jason Johnston on 2025-11-18T21:06:27.628Z: Tie to TES tanks zone 3 set / allucent_notes_20251202_153722: Jason Johnston on 2025-11-11 14:11: No update. Effected by RFI over conflicting shop drawings. / Jason Johnston on 2025-11-18T21:06:27.628Z: Tie to TES tanks zone 3 set / Jason Johnston on 2025-11-24 13:11: Rain delay / allucent_notes_20251209_203830: Jason Johnston on 2025-11-11 14:11: No update. Effected by RFI over conflicting shop drawings. / Jason Johnston on 2025-11-18T21:06:27.628Z: Tie to TES tanks zone 3 set / Jason Johnston on 2025-11-24 13:11: Rain delay / Chris Waddell on 2025-12-09T21:06:46.927Z: Suntec installed anchor bolts by drill and epoxy today / Chris Waddell on 2025-12-09 14:10: Suntec needs to pour pedestals for stairs to sit on before they can finish. / allucent_notes_20251216_165335: Jason Johnston on 2025-11-11 14:11: No update. Effected by RFI over conflicting shop drawings. / Jason Johnston on 2025-11-18T21:06:27.628Z: Tie to TES tanks zone 3 set / Jason Johnston on 2025-11-24 13:11: Rain delay / Chris Waddell on 2025-12-09T21:06:46.927Z: Suntec installed anchor bolts by drill and epoxy today / Chris Waddell on 2025-12-09 14:10: Suntec needs to pour pedestals for stairs to sit on before they can finish. / Ron Carroll on 2025-12-15T21:17:12.856Z: Pending possible RFI / Ron Carroll on 2025-12-15 14:18: Pending possible RFI / allucent_notes: 2025-11-11 14:11 - User: Jason Johnston - Date Added: 2025-11-11 14:11 - Note: No update. Effected by RFI over conflicting shop drawings. / 2025-11-18T21:06:27.628Z - User: Jason Johnston - Date Added: 2025-11-18T21:06:27.628Z - Note: Tie to TES tanks zo
- QTS-46891: allucent_notes_20251230_164549: Jason Johnston on 2025-10-28 14:10: OEG install telecom duct bank in area. set to be complete 10/31. / Jason Johnston on 2025-11-03 14:11: Change tie between 704 and 707 / Ron Carroll on 2025-12-15T21:17:34.791Z: Pending possible RFI / allucent_notes_20251028_163138: Jason Johnston on 2025-10-28 14:10: OEG install telecom duct bank in area. set to be complete 10/31. / allucent_notes_20251104_160200: Jason Johnston on 2025-10-28 14:10: OEG install telecom duct bank in area. set to be complete 10/31. / Jason Johnston on 2025-11-03 14:11: Change tie between 704 and 707 / allucent_notes_20251111_182405: Jason Johnston on 2025-10-28 14:10: OEG install telecom duct bank in area. set to be complete 10/31. / Jason Johnston on 2025-11-03 14:11: Change tie between 704 and 707 / allucent_notes_20251118_192630: Jason Johnston on 2025-10-28 14:10: OEG install telecom duct bank in area. set to be complete 10/31. / Jason Johnston on 2025-11-03 14:11: Change tie between 704 and 707 / allucent_notes_20251202_153722: Jason Johnston on 2025-10-28 14:10: OEG install telecom duct bank in area. set to be complete 10/31. / Jason Johnston on 2025-11-03 14:11: Change tie between 704 and 707 / allucent_notes_20251209_203830: Jason Johnston on 2025-10-28 14:10: OEG install telecom duct bank in area. set to be complete 10/31. / Jason Johnston on 2025-11-03 14:11: Change tie between 704 and 707 / allucent_notes_20251216_165335: Jason Johnston on 2025-10-28 14:10: OEG install telecom duct bank in area. set to be complete 10/31. / Jason Johnston on 2025-11-03 14:11: Change tie between 704 and 707 / Ron Carroll on 2025-12-15T21:17:34.791Z: Pending possible RFI / allucent_notes: 2025-10-28 14:10 - User: Jason Johnston - Date Added: 2025-10-28 14:10 - Note: OEG install telecom duct bank in area. set to be complete 10/31. / 2025-11-03 14:11 - User: Jason Johnston - Date Added: 2025-11-03 14:11 - Note: Change tie between 704 and 70
- QTS-50791: allucent_notes: David Wiltberger on 2025-08-19 09:08: Extended schedule due to manpower / allucent_notes: 2025-08-19 09:08 - User: David Wiltberger - Date Added: 2025-08-19 09:08 - Note: Extended schedule due to manpower / 2025-08-26 06:08 - User: David Wiltberger - Date Added: 2025-08-26 06:08 - Note: still installing due to manpower constraints
- QTS-19111: allucent_notes_20251014_152335: David Wiltberger on 2025-09-30 09:09: Structural steel is in wrong location Needs BZI attention / allucent_notes_20251021_145627: David Wiltberger on 2025-09-30 09:09: Structural steel is in wrong location Needs BZI attention / allucent_notes: 2025-09-30 09:09 - User: David Wiltberger - Date Added: 2025-09-30 09:09 - Note: Structural steel is in wrong location Needs BZI attention
- QTS-36111: allucent_notes_20251021_145627: David Wiltberger on 2025-10-21 13:10: Crane scheduled 3 weeks prior for 10/27.to ensure curb wrap was completed from progressive / allucent_notes_20251027_224008: David Wiltberger on 2025-10-21 13:10: Crane scheduled 3 weeks prior for 10/27.to ensure curb wrap was completed from progressive / allucent_notes_20251028_163138: David Wiltberger on 2025-10-21 13:10: Crane scheduled 3 weeks prior for 10/27.to ensure curb wrap was completed from progressive / Joseph Gyurko on 2025-10-28T20:36:31.838Z: Curb was wrapped and unit has been installed. / Jason Johnston on 2025-10-28 14:10: Set 10/28 / allucent_notes: 2025-10-21 13:10 - User: David Wiltberger - Date Added: 2025-10-21 13:10 - Note: Crane scheduled 3 weeks prior for 10/27.to ensure curb wrap was completed from progressive / 2025-10-28T20:36:31.838Z - User: Joseph Gyurko - Date Added: 2025-10-28T20:36:31
- QTS-38421: allucent_notes_20251021_145627: David Wiltberger on 2025-10-21 13:10: to ensure curbs are wrapped prior to install Crane was scheduled 3 weeks ago to do the lift on 10/27 / allucent_notes_20251027_224008: David Wiltberger on 2025-10-21 13:10: to ensure curbs are wrapped prior to install Crane was scheduled 3 weeks ago to do the lift on 10/27 / allucent_notes_20251028_163138: David Wiltberger on 2025-10-21 13:10: to ensure curbs are wrapped prior to install Crane was scheduled 3 weeks ago to do the lift on 10/27 / Joseph Gyurko on 2025-10-28T20:36:54.629Z: null / Joseph Gyurko on 2025-10-28T20:37:29.070Z: Curb was wrapped and unit has been installed. / Scott Masterson on 2025-10-28 14:10: Set the RTUs for FOH complete!!! / Jason Johnston on 2025-10-28 14:10: Set 10/28 / allucent_notes: 2025-10-21 13:10 - User: David Wiltberger - Date Added: 2025-10-21 13:10 - Note: to ensure curbs are wrapped prior to install Crane was scheduled 3 weeks ago to do the lift on 10/27 / 2025-10-28T20:36:54.629Z - User: Joseph Gyurko - Date Added: 2025-10-2
- QTS-101620: allucent_notes_20251104_160200: David Wiltberger on 2025-11-04 14:11: Roof access impacted sequence / allucent_notes_20251111_182405: David Wiltberger on 2025-11-04 14:11: Roof access impacted sequence / Jason Johnston on 2025-11-11 14:11: BAM off for veterans day. / allucent_notes_20251118_192630: David Wiltberger on 2025-11-04 14:11: Roof access impacted sequence / Jason Johnston on 2025-11-11 14:11: BAM off for veterans day. / David Wiltberger on 2025-11-17 16:11: slow Bam / allucent_notes_20251202_153722: David Wiltberger on 2025-11-04 14:11: Roof access impacted sequence / Jason Johnston on 2025-11-11 14:11: BAM off for veterans day. / David Wiltberger on 2025-11-17 16:11: slow Bam / David Wiltberger on 2025-12-01 09:19: did not complete to schedule / allucent_notes: 2025-11-04 14:11 - User: David Wiltberger - Date Added: 2025-11-04 14:11 - Note: Roof access impacted sequence / 2025-11-11 14:11 - User: Jason Johnston - Date Added: 2025-11-11 14:11 - Note: BAM off for veterans day. / 2025-11-17 16:11 - User: David Wi
- QTS-48911: allucent_notes_20251104_160200: Jason Johnston on 2025-11-03 14:11: BAM impact. / David Wiltberger on 2025-11-04 14:11: Roof access impacted schedule / allucent_notes_20251111_182405: Jason Johnston on 2025-11-03 14:11: BAM impact. / David Wiltberger on 2025-11-04 14:11: Roof access impacted schedule / Jason Johnston on 2025-11-11 14:11: BAM off for veterans day. / allucent_notes_20251118_192630: Jason Johnston on 2025-11-03 14:11: BAM impact. / David Wiltberger on 2025-11-04 14:11: Roof access impacted schedule / Jason Johnston on 2025-11-11 14:11: BAM off for veterans day. / David Wiltberger on 2025-11-17 16:11: out of sequence / allucent_notes_20251202_153722: Jason Johnston on 2025-11-03 14:11: BAM impact. / David Wiltberger on 2025-11-04 14:11: Roof access impacted schedule / Jason Johnston on 2025-11-11 14:11: BAM off for veterans day. / David Wiltberger on 2025-11-17 16:11: out of sequence / David Wiltberger on 2025-12-01 09:48: Was not reflected in BAM recovery schedule until12/5 / allucent_notes_20251209_203830: Jason Johnston on 2025-11-03 14:11: BAM impact. / David Wiltberger on 2025-11-04 14:11: Roof access impacted schedule / Jason Johnston on 2025-11-11 14:11: BAM off for veterans day. / David Wiltberger on 2025-11-17 16:11: out of sequence / David Wiltberger on 2025-12-01 09:48: Was not reflected in BAM recovery schedule until12/5 / allucent_notes: 2025-11-03 14:11 - User: Jason Johnston - Date Added: 2025-11-03 14:11 - Note: BAM impact. / 2025-11-04 14:11 - User: David Wiltberger - Date Added: 2025-11-04 14:11 - Note: Roof access impacted schedule / 2025-11-11 14:11 - User: Jason Johnston - Date
- QTS-48951: allucent_notes_20251104_160200: Jason Johnston on 2025-11-03 14:11: BAM impact. / David Wiltberger on 2025-11-04 14:11: Roof access impacted schedule / allucent_notes_20251111_182405: Jason Johnston on 2025-11-03 14:11: BAM impact. / David Wiltberger on 2025-11-04 14:11: Roof access impacted schedule / Jason Johnston on 2025-11-11 14:11: BAM off for veterans day. / allucent_notes_20251118_192630: Jason Johnston on 2025-11-03 14:11: BAM impact. / David Wiltberger on 2025-11-04 14:11: Roof access impacted schedule / Jason Johnston on 2025-11-11 14:11: BAM off for veterans day. / David Wiltberger on 2025-11-17 16:11: out of sequence / allucent_notes_20251202_153722: Jason Johnston on 2025-11-03 14:11: BAM impact. / David Wiltberger on 2025-11-04 14:11: Roof access impacted schedule / Jason Johnston on 2025-11-11 14:11: BAM off for veterans day. / David Wiltberger on 2025-11-17 16:11: out of sequence / David Wiltberger on 2025-12-01 09:47: Was not reflected in BAM recovery schedule until12/5 / allucent_notes_20251209_203830: Jason Johnston on 2025-11-03 14:11: BAM impact. / David Wiltberger on 2025-11-04 14:11: Roof access impacted schedule / Jason Johnston on 2025-11-11 14:11: BAM off for veterans day. / David Wiltberger on 2025-11-17 16:11: out of sequence / David Wiltberger on 2025-12-01 09:47: Was not reflected in BAM recovery schedule until12/5 / allucent_notes: 2025-11-03 14:11 - User: Jason Johnston - Date Added: 2025-11-03 14:11 - Note: BAM impact. / 2025-11-04 14:11 - User: David Wiltberger - Date Added: 2025-11-04 14:11 - Note: Roof access impacted schedule / 2025-11-11 14:11 - User: Jason Johnston - Date
- QTS-48921: allucent_notes_20251230_164549: Jason Johnston on 2025-12-09 20:34: Need update from team / Scott Masterson on 2025-12-16 16:27: Dave added these descriptions and Scott Needs to set dates for this activities. / allucent_notes_20251209_203830: Jason Johnston on 2025-12-09 20:34: Need update from team / allucent_notes_20251216_165335: Jason Johnston on 2025-12-09 20:34: Need update from team / Scott Masterson on 2025-12-16 16:27: Dave added these descriptions and Scott Needs to set dates for this activities. / allucent_notes: 2025-12-09 20:34 - User: Jason Johnston - Date Added: 2025-12-09 20:34 - Note: Need update from team / 2025-12-16 16:27 - User: Scott Masterson - Date Added: 2025-12-16 16:27 - Note: Dave added these descriptions and Scott Needs to set dates for this act
- QTS-48961: allucent_notes_20251230_164549: Jason Johnston on 2025-12-09 20:34: Need update from team / Scott Masterson on 2025-12-16 16:28: Dave added these descriptions and Scott Needs to set dates for this activities. / allucent_notes_20251209_203830: Jason Johnston on 2025-12-09 20:34: Need update from team / allucent_notes_20251216_165335: Jason Johnston on 2025-12-09 20:34: Need update from team / Scott Masterson on 2025-12-16 16:28: Dave added these descriptions and Scott Needs to set dates for this activities. / allucent_notes: 2025-12-09 20:34 - User: Jason Johnston - Date Added: 2025-12-09 20:34 - Note: Need update from team / 2025-12-16 16:28 - User: Scott Masterson - Date Added: 2025-12-16 16:28 - Note: Dave added these descriptions and Scott Needs to set dates for this act
- QTS-38431: allucent_notes_20251104_160200: Jason Johnston on 2025-11-03 14:11: Tie to BOH DOAS units. / allucent_notes: 2025-11-03 14:11 - User: Jason Johnston - Date Added: 2025-11-03 14:11 - Note: Tie to BOH DOAS units.

| ID | WBS | Activity | Duration | Start | Finish | Predecessors | Complete | Planned start | Planned finish | Total float | Free float | Subcontractor | Level | Baseline | Layton Responsible Party | Phase-1 | Project Section | Allucent CSI Group | Project Section-1 | Phase-1-1 |
| --- | --- | --- | --- | --- | --- | --- | --- | --- | --- | --- | --- | --- | --- | --- | --- | --- | --- | --- | --- | --- |
|  | 4 | **Roofing** |  | 2025-08-27 | 2026-01-21 |  |  |  |  |  |  |  |  |  |  |  |  |  |  |  |
| QTS-20771 |  | FOH / Gridlines 1-10 // Install Vapor Barrier | 5d | 2025-08-27 A | 2025-09-03 A | QTS-19101, QTS-19811, QTS-19141, QTS-36101 | 100% |  |  |  |  | Progressive Roofing | Roof | IGMP | Ron Carroll | Phase 1 | Construction | 01ADMIN |  |  |
| QTS-42651 |  | Zone 1 / Gridlines 10-21 // Install Vapor Barrier | 8d | 2025-09-04 A | 2025-09-15 A | QTS-20771 | 100% |  |  |  |  | Progressive Roofing | Roof | IGMP | Ron Carroll |  | Construction | 01ADMIN | Construction | Phase 1 |
| QTS-22151 |  | Zone 2 / Gridlines 21-30 // Install Vapor Barrier | 7d | 2025-09-16 A | 2025-09-24 A | QTS-21521, QTS-42651 | 100% |  |  |  |  | Progressive Roofing | Roof | IGMP | Ron Carroll | Phase 2 | Construction | 01ADMIN |  |  |
| QTS-23911 |  | Zone 3 / Gridlines 30-41 // Install Vapor Barrier | 8d | 2025-09-25 A | 2025-10-06 A | QTS-22151, QTS-23261 SS | 100% |  |  |  |  | Progressive Roofing | Roof | IGMP | Ron Carroll | Phase 3 | Construction |  |  |  |
| QTS-42661 |  | Zone 1 / Gridlines 10-21 // Install Roofing System | 11d | 2025-09-30 A | 2025-10-17 A | QTS-42651, QTS-23911 SS+2d | 100% | 2025-09-30 | 2025-10-14 |  |  | Progressive Roofing | Roof | IGMP | Ron Carroll |  | Construction | 01ADMIN | Construction | Phase 1 |
| QTS-21651 |  | FOH / Gridlines 1-10 // Install Roofing System | 8d | 2025-10-20 A | 2025-10-29 A | QTS-18881, QTS-18911, QTS-38921, QTS-23911, QTS-42661 | 100% |  |  |  |  | Progressive Roofing | Roof | IGMP | Ron Carroll | Phase 1 | Construction | 01ADMIN |  |  |
| QTS-42671 |  | Zone 3 / Gridlines 30-36 // Install Roofing System | 6d | 2025-10-31 A | 2025-11-07 A | QTS-23911, QTS-21651 | 100% | 2025-10-30 | 2025-11-06 |  |  | Progressive Roofing | Roof | IGMP | Ron Carroll |  | Construction | 01ADMIN | Construction | Phase 3 |
| QTS-22861 |  | Zone 2 / Gridlines 21-30 // Install Roofing System | 7d | 2025-11-10 A | 2025-12-05 A | QTS-22151 SS+10d, QTS-18881, QTS-38921, QTS-42661, QTS-21651, QTS-42671 | 100% | 2025-11-10 | 2025-11-18 |  |  | Progressive Roofing | Roof | IGMP | Ron Carroll | Phase 2 | Construction | 01ADMIN |  |  |
| QTS-24581 |  | Zone 3 / Gridlines 36-41 // Install Roofing System | 5d | 2025-12-12 A | 2025-12-17 A | QTS-20771, QTS-20881 FF, QTS-18881, QTS-38921, QTS-42671, QTS-22861, QTS-99730 SS+1d | 100% | 2025-12-12 | 2025-12-18 |  |  | Progressive Roofing | Roof | IGMP | Ron Carroll | Phase 3 | Construction | 01ADMIN |  |  |
| QTS-28991 |  | Roofing // Contractor Punch List | 5d | 2026-01-14 | 2026-01-21 | QTS-24581, QTS-22861, QTS-24581 FF |  |  |  | 50d | 0d | Progressive Roofing | Roof | IGMP | Ron Carroll |  | Construction | 01ADMIN |  |  |
|  | 6 | **Penthouse** |  | 2025-10-17 | 2026-02-24 |  |  |  |  |  |  |  |  |  |  |  |  |  |  |  |
| QTS-99700 |  | Penthouse // Install Scaffolding | 2d | 2025-10-17 A | 2025-10-27 A | QTS-1371 SS | 100% | 2025-10-17 | 2025-10-20 |  |  | Progressive Roofing | Roof | IGMP | Ron Carroll |  | Construction | 01ADMIN |  |  |
| QTS-99710 |  | Penthouse // Install Framing | 5d | 2025-10-28 A | 2025-11-03 A | QTS-99700 | 100% |  |  |  |  | Progressive Roofing | Roof | IGMP | Ron Carroll |  | Construction | 01ADMIN |  |  |
| QTS-99720 |  | Penthouse // Install Exterior Sheathing | 5d | 2025-11-04 A | 2025-11-14 A | QTS-99710 | 100% | 2025-11-04 | 2025-11-10 |  |  | Progressive Roofing | Roof | IGMP | Ron Carroll |  | Construction | 01ADMIN |  |  |
| QTS-99780 |  | Penthouse // Install In Wall MEPs | 5d | 2025-11-19 A | 2025-11-25 A | QTS-99720 | 100% |  |  |  |  | Progressive Roofing | Roof | IGMP | Sean Waisner |  | Construction | 01ADMIN |  |  |
|  | 1 | **Fragnet / RFI for Curb to Penthouse** |  | 2025-11-03 | 2025-12-10 |  |  |  |  |  |  |  |  |  |  |  |  |  |  |  |
| QTS-120030 |  | Fragnet / Penthouse // Submission RFI #685 | 1d | 2025-11-03 A | 2025-11-03 A | QTS-1030 SS | 100% |  |  |  |  | Progressive Roofing | Roof | IGMP | Sean Waisner |  | Construction | 01ADMIN |  |  |
| QTS-1000420 |  | Fragnet / Penthouse // Design Response RFI #685 | 8d | 2025-11-04 A | 2025-11-13 A | QTS-120030 | 100% |  |  |  |  | Progressive Roofing | Roof | IGMP | Sean Waisner |  | Construction | 01ADMIN |  |  |
| QTS-1000430 |  | Fragnet / Penthouse // Design Response Distribution RFI #685 | 8d | 2025-11-14 A | 2025-11-14 A | QTS-1000420 | 100% | 2025-11-04 | 2025-11-13 |  |  | Progressive Roofing | Roof | IGMP | Sean Waisner |  | Construction | 01ADMIN |  |  |
| QTS-1000440 |  | Fragnet / Penthouse // Subcontractor Design RFI #685 | 8d | 2025-11-17 A | 2025-12-01 A | QTS-1000430 | 100% | 2025-11-04 | 2025-11-13 |  |  | Progressive Roofing | Roof | IGMP | Sean Waisner |  | Construction | 01ADMIN |  |  |
| QTS-1000450 |  | Fragnet / Penthouse // Demo Penthouse Scaffold | 4d | 2025-12-02 A | 2025-12-05 A | QTS-1000440 | 100% |  |  |  |  | Progressive Roofing | Roof | IGMP | Ron Carroll |  | Construction | 01ADMIN |  |  |
| QTS-1000460 |  | Fragnet / Penthouse // Install Penthouse Roof Curbs | 5d | 2025-12-08 A | 2025-12-10 A | QTS-1000450 | 100% | 2025-12-08 | 2025-12-12 |  |  | Progressive Roofing | Roof | IGMP | Ron Carroll |  | Construction | 01ADMIN |  |  |
|  | 3 | **Fragnet / RFI #781 Roof Hatch** |  | 2026-01-05 | 2026-01-14 |  |  |  |  |  |  |  |  |  |  |  |  |  |  |  |
| QTS-1004450 |  | Fragnet / Penthouse // Layton Submit RFI #781 | 1d | 2026-01-05 A | 2026-01-05 A | QTS-1371 SS | 100% |  |  |  |  | Progressive Roofing | Roof | IGMP | Ron Carroll |  | Construction | 01ADMIN |  |  |
| QTS-1004460 |  | Fragnet / Penthouse // Design Response for RFI #781 | 5d | 2026-01-06 A | 2026-01-14 A | QTS-1004450 | 100% | 2026-01-06 | 2026-01-12 |  |  | Progressive Roofing | Roof | IGMP | Ron Carroll |  | Construction | 01ADMIN |  |  |

Notes:
- QTS-20771: allucent_notes: Jason Johnston on 2025-08-19 14:08: Bulletin 3 design changes delayed the start of vapor barrier / allucent_notes: 2025-08-19 14:08 - User: Jason Johnston - Date Added: 2025-08-19 14:08 - Note: Bulletin 3 design changes delayed the start of vapor barrier
- QTS-42661: allucent_notes_20251014_152335: Jason Johnston on 2025-09-30 12:09: Rain delayed loading of the roof material. Pushed start one day. / Jason Johnston on 2025-10-14 14:10: Rain delay / allucent_notes_20251021_145627: Jason Johnston on 2025-09-30 12:09: Rain delayed loading of the roof material. Pushed start one day. / Jason Johnston on 2025-10-14 14:10: Rain delay / allucent_notes: 2025-09-30 12:09 - User: Jason Johnston - Date Added: 2025-09-30 12:09 - Note: Rain delayed loading of the roof material. Pushed start one day. / 2025-10-14 14:10 - User: Jason Johnston - Date Added: 2025-10-14 14:10 - Note: Rain delay
- QTS-42671: allucent_notes_20251104_160200: Freddy Arrizon on 2025-10-30 14:10: *PCI didnt complete sheathing and framing EJ at zone 2-3. Will start 10/31/2025, / Freddy Arrizon on 2025-11-03 08:11: Started 10/31/2025 due to expansion joint framing and sheathing not being completed. / allucent_notes_20251111_182405: Freddy Arrizon on 2025-10-30 14:10: *PCI didnt complete sheathing and framing EJ at zone 2-3. Will start 10/31/2025, / Freddy Arrizon on 2025-11-03 08:11: Started 10/31/2025 due to expansion joint framing and sheathing not being completed. / allucent_notes_20251118_192630: Freddy Arrizon on 2025-10-30 14:10: *PCI didnt complete sheathing and framing EJ at zone 2-3. Will start 10/31/2025, / Freddy Arrizon on 2025-11-03 08:11: Started 10/31/2025 due to expansion joint framing and sheathing not being completed. / allucent_notes: 2025-10-30 14:10 - User: Freddy Arrizon - Date Added: 2025-10-30 14:10 - Note: *PCI didnt complete sheathing and framing EJ at zone 2-3. Will start 10/31/2025, / 2025-11-03 08:11 - User: Freddy Arrizon - Date Added: 2025-11-03 08:11 - Note: Started 10/31
- QTS-22861: allucent_notes_20251118_192630: Freddy Arrizon on 2025-11-18T19:14:05.583Z: The final roofing system cant be installed while the vapor retarder is wet. Can be installed 24 hours post rain events and is dry. / allucent_notes_20251202_153722: Freddy Arrizon on 2025-11-18T19:14:05.583Z: The final roofing system cant be installed while the vapor retarder is wet. Can be installed 24 hours post rain events and is dry. / Freddy Arrizon on 2025-11-26 09:11: Progressive has been delayed due to weather Nov 15-20 it rained multiple times. The deck never dried before it rained again the following day. To include light rain Monday 11/24/25 night rain. The roof needs to be dry in order to install the roofing system. / allucent_notes_20251209_203830: Freddy Arrizon on 2025-11-18T19:14:05.583Z: The final roofing system cant be installed while the vapor retarder is wet. Can be installed 24 hours post rain events and is dry. / Freddy Arrizon on 2025-11-26 09:11: Progressive has been delayed due to weather Nov 15-20 it rained multiple times. The deck never dried before it rained again the following day. To include light rain Monday 11/24/25 night rain. The roof needs to be dry in order to install the roofing system. / allucent_notes: 2025-11-18T19:14:05.583Z - User: Freddy Arrizon - Date Added: 2025-11-18T19:14:05.583Z - Note: The final roofing system cant be installed while the vapor retarder is wet. Can be installed 24 hours post rain events and is dry. / 2025-11-26 09:11 - User
- QTS-24581: allucent_notes_20251230_164549: Jason Johnston on 2025-11-04T17:17:02.573Z: Switch BOH Roofing with Zone 2 Roofing. / Jason Johnston on 2025-12-30 16:35: No update / allucent_notes_20251104_160200: Jason Johnston on 2025-11-04T17:17:02.573Z: Switch BOH Roofing with Zone 2 Roofing. / allucent_notes_20251111_182405: Jason Johnston on 2025-11-04T17:17:02.573Z: Switch BOH Roofing with Zone 2 Roofing. / allucent_notes_20251118_192630: Jason Johnston on 2025-11-04T17:17:02.573Z: Switch BOH Roofing with Zone 2 Roofing. / allucent_notes_20251202_153722: Jason Johnston on 2025-11-04T17:17:02.573Z: Switch BOH Roofing with Zone 2 Roofing. / allucent_notes_20251209_203830: Jason Johnston on 2025-11-04T17:17:02.573Z: Switch BOH Roofing with Zone 2 Roofing. / allucent_notes_20251216_165335: Jason Johnston on 2025-11-04T17:17:02.573Z: Switch BOH Roofing with Zone 2 Roofing. / allucent_notes: 2025-11-04T17:17:02.573Z - User: Jason Johnston - Date Added: 2025-11-04T17:17:02.573Z - Note: Switch BOH Roofing with Zone 2 Roofing. / 2025-12-30 16:35 - User: Jason Johnston - Date Added: 2025-12-30 16:35 - Note: No update
- QTS-99700: allucent_notes_20251021_145627: Jason Johnston on 2025-10-21 13:10: delays / Jason Johnston on 2025-10-21 13:10: Moving very slow / allucent_notes_20251027_224008: Jason Johnston on 2025-10-21 13:10: delays / Jason Johnston on 2025-10-21 13:10: Moving very slow / Jason Johnston on 2025-10-27 10:10: Delayed due to roof protection needs / allucent_notes: 2025-10-21 13:10 - User: Jason Johnston - Date Added: 2025-10-21 13:10 - Note: delays / 2025-10-21 13:10 - User: Jason Johnston - Date Added: 2025-10-21 13:10 - Note: Moving very slow / 2025-10-27 10:10 - User: Jason Johnston - Date Added: 2025-10-27 10
- QTS-99720: allucent_notes_20251111_182405: Zack Goertz on 2025-11-11T18:22:56.604Z: Alpha failed inspection and cannot get onto shaft wall to finish fire caulking. / Jason Johnston on 2025-11-11 14:11: Fire caulking delays holding up inspection. / allucent_notes_20251118_192630: Zack Goertz on 2025-11-11T18:22:56.604Z: Alpha failed inspection and cannot get onto shaft wall to finish fire caulking. / Jason Johnston on 2025-11-11 14:11: Fire caulking delays holding up inspection. / allucent_notes: 2025-11-11T18:22:56.604Z - User: Zack Goertz - Date Added: 2025-11-11T18:22:56.604Z - Note: Alpha failed inspection and cannot get onto shaft wall to finish fire caulking. / 2025-11-11 14:11 - User: Jason Johnston - Date Added: 2025-11-11 14:11 - Note:
- QTS-99780: Schedulers Notes: There are several RFIs holding this up. Team needs to get me RFI number / and timeline.
- QTS-120030: Schedulers Notes: There are several RFIs holding this up. Team needs to get me RFI number / and timeline.
- QTS-1000420: Schedulers Notes: There are several RFIs holding this up. Team needs to get me RFI number / and timeline.
- QTS-1000430: Schedulers Notes: There are several RFIs holding this up. Team needs to get me RFI number / and timeline.
- QTS-1000440: Schedulers Notes: There are several RFIs holding this up. Team needs to get me RFI number / and timeline.
- QTS-1000450: allucent_notes_20251202_153722: Freddy Arrizon on 2025-11-24T20:02:37.113Z: Progressive cannot start this until PCI completes framing and sheathing of the penthouse. Current date as of now 12/5 finish for PCI. Progressive will likely start 12/8/2025. / Freddy Arrizon on 2025-11-24 13:11: PCI is delaying the penthouse sheathing and framing. There committed completion date is now 12/5/2025. Progressive will likely start install 12/8/2025 pending PCI's completion of framing, sheathing, and removing the scaffold at the penthouse. / allucent_notes: 2025-11-24T20:02:37.113Z - User: Freddy Arrizon - Date Added: 2025-11-24T20:02:37.113Z - Note: Progressive cannot start this until PCI completes framing and sheathing of the penthouse. Current date as of now 12/5 finish for PCI. Progressive will likely st
- QTS-1000460: allucent_notes_20251202_153722: Freddy Arrizon on 2025-11-24T20:02:37.113Z: Progressive cannot start this until PCI completes framing and sheathing of the penthouse. Current date as of now 12/5 finish for PCI. Progressive will likely start 12/8/2025. / Freddy Arrizon on 2025-11-24 13:11: PCI is delaying the penthouse sheathing and framing. There committed completion date is now 12/5/2025. Progressive will likely start install 12/8/2025 pending PCI's completion of framing, sheathing, and removing the scaffold at the penthouse. / allucent_notes_20251209_203830: Jason Johnston on 2025-12-09 16:31: Early finish / allucent_notes_20251216_165335: Jason Johnston on 2025-12-09 16:31: Early finish / allucent_notes: 2025-12-09 16:31 - User: Jason Johnston - Date Added: 2025-12-09 16:31 - Note: Early finish

| ID | WBS | Activity | Duration | Start | Finish | Predecessors | Complete | Remaining | Planned start | Planned finish | Total float | Free float | Subcontractor | Level | Baseline | Layton Responsible Party | Project Section | Allucent CSI Group | Notes | Project Section-1 | Phase-1-1 | Phase-1 |
| --- | --- | --- | --- | --- | --- | --- | --- | --- | --- | --- | --- | --- | --- | --- | --- | --- | --- | --- | --- | --- | --- | --- |
|  | 2 | **Remaining Work** |  | 2025-12-11 | 2026-02-24 |  |  |  |  |  |  |  |  |  |  |  |  |  |  |  |  |  |
| QTS-99730 |  | Penthouse // Install Roofing Flashing | 5d | 2025-12-11 A | 2025-12-17 A | QTS-99720, QTS-22861, QTS-1000460 | 100% |  |  |  |  |  | Progressive Roofing | Roof | IGMP | Ron Carroll | Construction | 01ADMIN |  |  |  |  |
| QTS-1002010 |  | Penthouse // Fabricate Metal Panels | 15d | 2025-12-18 A | 2026-01-14 | QTS-99730 | 100% | 0d |  |  | 142d | 0d | Progressive Roofing | Roof | IGMP | Ron Carroll | Construction | 01ADMIN | 1/20/26: Wall Tolerance off True Metal waiting to proceed. |  |  |  |
| QTS-1002040 |  | Penthouse // Install Scaffolding for Metals Panels | 4d | 2026-01-08 A | 2026-01-14 A | QTS-99730 | 100% |  | 2026-01-07 | 2026-01-12 |  |  | Progressive Roofing | Roof | IGMP | Ron Carroll | Construction | 01ADMIN |  |  |  |  |
| QTS-1002020 |  | Penthouse // Frame In Scuppers | 2d | 2026-01-14 A | 2026-01-15 A | QTS-1002010 SS | 100% |  |  |  |  |  | Progressive Roofing | Roof | IGMP | Ron Carroll | Construction | 01ADMIN |  |  |  |  |
| QTS-1002030 |  | Penthouse // Install Lightning Protection | 1d | 2026-01-16 | 2026-01-16 | QTS-99740 |  |  |  |  | 143d | 23d | Progressive Roofing | Roof | IGMP | Ron Carroll | Construction | 01ADMIN |  |  |  |  |
| QTS-1002070 |  | Penthouse // Install Scuppers | 2d | 2026-01-16 | 2026-01-20 | QTS-99740, QTS-1002020 |  |  |  |  | 140d | 20d | Progressive Roofing | Roof | IGMP | Ron Carroll | Construction | 01ADMIN |  |  |  |  |
| QTS-1002050 |  | Penthouse // Inspection of Waterproofing | 1d | 2026-01-27 | 2026-01-27 | QTS-99830 |  |  |  |  | 120d | 0d | Progressive Roofing | Roof | IGMP | Ron Carroll | Construction | 01ADMIN |  |  |  |  |
| QTS-99740 |  | Penthouse // Install Roofing System | 3d | 2026-01-27 A | 2026-01-15 | QTS-1004460, QTS-99730, QTS-24581 | 33% | 2d | 2026-01-27 | 2026-01-29 | 140d | 0d | Progressive Roofing | Roof | IGMP | Ron Carroll | Construction | 01ADMIN |  |  |  |  |
| QTS-99770 |  | Penthouse // Install Interior Shaft Panels | 5d | 2026-01-27 | 2026-02-02 | QTS-99780, QTS-99830 |  |  |  |  | 128d | 0d | Progressive Roofing | Roof | IGMP | Sean Waisner | Construction | 01ADMIN |  |  |  |  |
| QTS-99830 |  | Penthouse // Install Waterproofing | 9d | 2026-01-27 A | 2026-01-26 | QTS-99730, QTS-1002040 | 11% | 8d | 2026-01-27 | 2026-02-06 | 120d | 0d | Progressive Roofing | Roof | IGMP | Ron Carroll | Construction | 01ADMIN |  |  |  |  |
| QTS-99840 |  | Penthouse // Install Wall Insulation | 4d | 2026-01-28 | 2026-02-02 | QTS-99830, QTS-1002050 |  |  |  |  | 120d | 0d | Progressive Roofing | Roof | IGMP | Sean Waisner | Construction | 01ADMIN |  |  |  |  |
| QTS-99750 |  | Penthouse // Install Trim for Metal Panels | 2d | 2026-02-03 | 2026-02-04 | QTS-99720, QTS-99840 |  |  |  |  | 120d | 0d | Progressive Roofing | Roof | IGMP | Sean Waisner | Construction |  |  |  |  |  |
| QTS-99790 |  | Penthouse // Install HM Door Frame | 1d | 2026-02-03 | 2026-02-03 | QTS-99770 |  |  |  |  | 128d | 0d | Progressive Roofing | Roof | IGMP | Sean Waisner | Construction | 01ADMIN |  |  |  |  |
| QTS-1002060 |  | Penthouse // Rough In In Wall Electrical | 3d | 2026-02-04 | 2026-02-06 | QTS-99790 |  |  |  |  | 138d | 9d | Progressive Roofing | Roof | IGMP | Sean Waisner | Construction |  |  |  |  |  |
| QTS-99800 |  | Penthouse // Install HM Door | 1d | 2026-02-04 | 2026-02-04 | QTS-99790, QTS-99630 |  |  |  |  | 133d | 41d | Progressive Roofing | Roof | IGMP | Sean Waisner | Construction |  |  |  |  |  |
| QTS-99810 |  | Penthouse // Install Paint Interior Walls | 3d | 2026-02-04 | 2026-02-06 | QTS-99790 |  |  |  |  | 128d | 0d | Pennington Painting Company, LLC | Roof | IGMP | Sean Waisner | Construction | 01ADMIN |  |  |  |  |
| QTS-99760 |  | Penthouse // Install Metal Panels | 9d | 2026-02-05 | 2026-02-17 | QTS-99750 |  |  |  |  | 120d | 0d | Progressive Roofing | Roof | IGMP | Ron Carroll | Construction |  |  |  |  |  |
| QTS-99820 |  | Penthouse // Install Interoir Wall Fixtures | 3d | 2026-02-09 | 2026-02-11 | QTS-99810 |  |  |  |  | 128d | 36d | Progressive Roofing | Roof | IGMP | Sean Waisner | Construction |  |  |  |  |  |
| QTS-99850 |  | Penthouse // Install Collector Boxes & Downspouts | 2d | 2026-02-18 | 2026-02-19 | QTS-99760, QTS-1002070 |  |  |  |  | 120d | 0d | Progressive Roofing | Roof | IGMP | Ron Carroll | Construction |  |  |  |  |  |
| QTS-1002080 |  | Penthouse // Install Light Fixtures | 3d | 2026-02-20 | 2026-02-24 | QTS-99850, QTS-1002060 |  |  |  |  | 129d |  | Progressive Roofing | Roof | IGMP | Sean Waisner | Construction |  |  |  |  |  |
| QTS-99860 |  | Penthouse // Install Roof Coping Cap | 2d | 2026-02-20 | 2026-02-23 | QTS-99850, QTS-1002030 |  |  |  |  | 120d | 28d | Progressive Roofing | Roof | IGMP | Ron Carroll | Construction |  |  |  |  |  |
|  | 1 | **Zone 1 / Exterior Finishes** |  | 2025-08-06 | 2026-04-02 |  |  |  |  |  |  |  |  |  |  |  |  |  |  |  |  |  |
|  | 3 | **Zone 1 / Exterior Finishes // North Elevation** |  | 2025-08-06 | 2026-03-04 |  |  |  |  |  |  |  |  |  |  |  |  |  |  |  |  |  |
| QTS-42681 |  | Zone 1 Gridlines 10-21 / North // Sack & Patch Tilt Panels | 8d | 2025-08-06 A | 2025-08-11 A | QTS-19811 | 100% |  | 2025-08-06 | 2025-08-15 |  |  | Suntec Concrete Inc |  | IGMP | Ron Carroll | Construction | 01ADMIN |  | Construction | Phase 1 |  |
| QTS-42691 |  | Zone 1 Gridlines 10-21 / North // Power Wash Tilt Panels | 3d | 2025-08-18 A | 2025-08-19 A | QTS-42681 | 100% |  | 2025-08-13 | 2025-08-15 |  |  | Suntec Concrete Inc |  | IGMP | Ron Carroll | Construction | 01ADMIN |  | Construction | Phase 1 |  |
| QTS-43061 |  | FOH / North // Sack & Patch Tilt Panels | 6d | 2025-08-19 A | 2025-08-28 A | QTS-42681, QTS-23621 FF | 100% |  | 2025-08-19 | 2025-08-26 |  |  | Suntec Concrete Inc |  | IGMP | Ron Carroll | Construction | 01ADMIN |  | Construction | Phase 1 |  |
| QTS-42701 |  | Zone 1 Gridlines 10-21 / North // Prime & Paint Tilt Panels | 7d | 2025-08-20 A | 2025-08-29 A | QTS-42681, QTS-42691 | 100% |  | 2025-08-20 | 2025-08-28 |  |  | Pennington Painting Company, LLC |  | IGMP | Doug Hayes | Construction | 01ADMIN |  | Construction | Phase 1 |  |
| QTS-49441 |  | Zone 1 Gridlines 10-21 / North // Caulk Panel Joints | 4d | 2025-08-26 A | 2025-09-04 A | QTS-42701 FF+1d | 100% |  | 2025-08-26 | 2025-08-29 |  |  | Alpha Insulation & Waterproofing, Inc. |  | IGMP | Ron Carroll | Construction | 01ADMIN |  | Construction | Phase 1 |  |
| QTS-43071 |  | FOH / North // Power Wash Tilt Panels | 2d | 2025-08-29 A | 2025-09-02 A | QTS-43061 | 100% |  |  |  |  |  | Suntec Concrete Inc |  | IGMP | Ron Carroll | Construction | 01ADMIN |  | Construction | Phase 1 |  |
| QTS-49451 |  | FOH / North // Caulk Panel Joints | 7d | 2025-09-05 A | 2025-09-15 A | QTS-49441 | 100% |  |  |  |  |  | Alpha Insulation & Waterproofing, Inc. |  | IGMP | Ron Carroll | Construction | 01ADMIN |  | Construction | Phase 1 |  |
| QTS-43081 |  | FOH / North // Prime & Paint Tilt Panels | 9d | 2025-09-09 A | 2025-09-25 A | QTS-43061, QTS-43071 | 100% |  | 2025-09-09 | 2025-09-19 |  |  | Pennington Painting Company, LLC |  | IGMP | Ron Carroll | Construction | 01ADMIN |  | Construction | Phase 1 |  |
| QTS-50461 |  | FOH / North // Install Strip Glass Window Frames | 3d | 2025-09-24 A | 2025-09-26 A | QTS-49451, QTS-24101 | 100% |  |  |  |  |  | Performance Contracting, Inc. |  | IGMP | Ron Carroll | Construction |  |  |  |  | Phase 1 |
| QTS-50471 |  | FOH / North // Install Strip Glass Window Glass | 2d | 2025-10-20 A | 2025-10-24 A | QTS-50461, QTS-18561 | 100% |  | 2025-10-20 | 2025-10-21 |  |  | Performance Contracting, Inc. |  | IGMP | Ron Carroll | Construction | 01ADMIN |  |  |  | Phase 1 |
| QTS-50481 |  | FOH / North // Install Strip Glass Window Exterior Caulking | 2d | 2025-10-27 A | 2025-11-05 A | QTS-50471 | 100% |  | 2025-10-27 | 2025-10-28 |  |  | Performance Contracting, Inc. |  | IGMP | Ron Carroll | Construction | 01ADMIN |  |  |  | Phase 1 |
| QTS-50721 |  | FOH / North // Field Measure OH Doors | 1d | 2025-10-27 A | 2025-10-27 A | QTS-49451, QTS-50471 | 100% |  |  |  |  |  | D.H. Pace Company, Inc. |  | IGMP | Ron Carroll | Construction | 01ADMIN |  | Construction | Phase 2 |  |
| QTS-100000 |  | FOH / North // Excavate Loading Dock Pits | 1d | 2025-11-03 A | 2025-11-03 A | QTS-50471 | 100% |  |  |  |  |  | SteelFab Texas, Inc |  | IGMP | Ron Carroll | Construction | 01ADMIN |  | Construction | Phase 2 |  |
| QTS-100010 |  | FOH / North // Layout & Form Loading Dock Pits | 1d | 2025-11-04 A | 2025-11-04 A | QTS-100000 | 100% |  |  |  |  |  | SteelFab Texas, Inc |  | IGMP | Ron Carroll | Construction | 01ADMIN |  | Construction | Phase 2 |  |
| QTS-100020 |  | FOH / North // Install Rebar at Loading Dock Pits | 1d | 2025-11-05 A | 2025-11-05 A | QTS-100010 | 100% |  |  |  |  |  | SteelFab Texas, Inc |  | IGMP | Ron Carroll | Construction | 01ADMIN |  | Construction | Phase 2 |  |
| QTS-100030 |  | FOH / North // Pour Bottoms for Loading Dock | 1d | 2025-11-06 A | 2025-11-06 A | QTS-100020 | 100% |  |  |  |  |  | SteelFab Texas, Inc |  | IGMP | Ron Carroll | Construction | 01ADMIN |  | Construction | Phase 2 |  |
| QTS-50491 |  | FOH / North // Install Strip Glass Window Interior Caulking | 2d | 2025-11-06 A | 2025-11-07 A | QTS-50481 | 100% |  |  |  |  |  | Performance Contracting, Inc. |  | IGMP | Ron Carroll | Construction | 01ADMIN |  |  |  | Phase 1 |
| QTS-100040 |  | FOH / North // Build Walls for Loading Dock | 2d | 2025-11-07 A | 2025-11-10 A | QTS-100030 | 100% |  |  |  |  |  | SteelFab Texas, Inc |  | IGMP | Ron Carroll | Construction | 01ADMIN |  | Construction | Phase 2 |  |
| QTS-100050 |  | FOH / North // Pour Walls for Loading Dock | 1d | 2025-11-11 A | 2025-11-11 A | QTS-100040 | 100% |  |  |  |  |  | SteelFab Texas, Inc |  | IGMP | Ron Carroll | Construction | 01ADMIN |  | Construction | Phase 2 |  |
| QTS-100060 |  | FOH / North // Strip & Grade Walls for Loading Dock | 2d | 2025-11-12 A | 2025-11-13 A | QTS-100050 | 100% |  |  |  |  |  | SteelFab Texas, Inc |  | IGMP | Ron Carroll | Construction | 01ADMIN |  | Construction | Phase 2 |  |
| QTS-100070 |  | FOH / North // Pour Slab Enclosure Loading Dock | 1d | 2025-11-17 A | 2025-11-17 A | QTS-100060 | 100% |  | 2025-11-14 | 2025-11-14 |  |  | SteelFab Texas, Inc |  | IGMP | Ron Carroll | Construction | 01ADMIN |  | Construction | Phase 2 |  |

Notes:
- QTS-99730: allucent_notes_20251230_164549: Freddy Arrizon on 2025-11-24T20:02:37.113Z: Progressive cannot start this until PCI completes framing and sheathing of the penthouse. Current date as of now 12/5 finish for PCI. Progressive will likely start 12/8/2025. / Freddy Arrizon on 2025-11-24 13:11: PCI is delaying the penthouse sheathing and framing. There committed completion date is now 12/5/2025. Progressive will likely start install 12/8/2025 pending PCI's completion of framing, sheathing, and removing the scaffold at the penthouse. / Jason Johnston on 2025-12-30 16:35: No update / allucent_notes_20251202_153722: Freddy Arrizon on 2025-11-24T20:02:37.113Z: Progressive cannot start this until PCI completes framing and sheathing of the penthouse. Current date as of now 12/5 finish for PCI. Progressive will likely start 12/8/2025. / Freddy Arrizon on 2025-11-24 13:11: PCI is delaying the penthouse sheathing and framing. There committed completion date is now 12/5/2025. Progressive will likely start install 12/8/2025 pending PCI's completion of framing, sheathing, and removing the scaffold at the penthouse. / allucent_notes_20251209_203830: Freddy Arrizon on 2025-11-24T20:02:37.113Z: Progressive cannot start this until PCI completes framing and sheathing of the penthouse. Current date as of now 12/5 finish for PCI. Progressive will likely start 12/8/2025. / Freddy Arrizon on 2025-11-24 13:11: PCI is delaying the penthouse sheathing and framing. There committed completion date is now 12/5/2025. Progressive will likely start install 12/8/2025 pending PCI's completion of framing, sheathing, and removing the scaffold at the penthouse. / allucent_notes_20251216_165335: Freddy Arrizon on 2025-11-24T20:02:37.113Z: Progressive cannot start this until PCI completes framing and sheathing of the penthouse. Current date as of now 12/5 finish for PCI. Progressive will likely start 12/8/2025. / Freddy Arrizon on 2025-11-24 13:11: PCI is delaying the penthouse sheathing and framing. There committed completion date is now 12/5/2025. Progressive will likely start install 12/8/2025 pending PCI's completion of framing, sheathing, and removing the scaffold at the penthouse. / allucent_notes: 2025-11-24T20:02:37.113Z - User: Freddy Arrizon - Date Added: 2025-11-24T20:02:37.113Z - Note: Progressive cannot start this until PCI completes framing and sheathing of the penthouse. Current date as of now 12/5 finish for PCI. Progressive will likely st
- QTS-99770: allucent_notes_20251230_164549: Zack Goertz on 2025-12-02 14:31: THis is not a critical item / allucent_notes_20251202_153722: Zack Goertz on 2025-12-02 14:31: THis is not a critical item / allucent_notes: 2025-12-02 14:31 - User: Zack Goertz - Date Added: 2025-12-02 14:31 - Note: THis is not a critical item
- QTS-42691: allucent_notes: Jason Johnston on 2025-08-19 14:08: Cure time for the caulking was no accounted for and delayed power washing. / Jason Johnston on 2025-08-19 14:08: Caulking cure time was not accounted for and required a 72 hour wait period before power washing could occur. / allucent_notes: 2025-08-19 14:08 - User: Jason Johnston - Date Added: 2025-08-19 14:08 - Note: Cure time for the caulking was no accounted for and delayed power washing. / 2025-08-19 14:08 - User: Jason Johnston - Date Added: 2025-08-19 14:08 - Note: Caulking cure time
- QTS-43061: allucent_notes: Jason Johnston on 2025-08-26 15:08: Access restricted causing delays. / allucent_notes: 2025-08-26 15:08 - User: Jason Johnston - Date Added: 2025-08-26 15:08 - Note: Access restricted causing delays.
- QTS-42701: allucent_notes: Jason Johnston on 2025-09-02 15:09: Delays in access / Jason Johnston on 2025-09-02 15:09: comment added. / allucent_notes: 2025-09-02 15:09 - User: Jason Johnston - Date Added: 2025-09-02 15:09 - Note: Delays in access / 2025-09-02 15:09 - User: Jason Johnston - Date Added: 2025-09-02 15:09 - Note: comment added.
- QTS-49441: allucent_notes: Jason Johnston on 2025-09-02 15:09: Need extra time to complete final caulking / allucent_notes: 2025-09-02 15:09 - User: Jason Johnston - Date Added: 2025-09-02 15:09 - Note: Need extra time to complete final caulking
- QTS-50471: allucent_notes_20251014_152335: Jason Johnston on 2025-09-30 12:09: Glass will not be on site until 10/20 / allucent_notes_20251021_145627: Jason Johnston on 2025-09-30 12:09: Glass will not be on site until 10/20 / Jason Johnston on 2025-10-21 12:10: Needed delivery of top section of glazing. / allucent_notes_20251027_224008: Jason Johnston on 2025-09-30 12:09: Glass will not be on site until 10/20 / Jason Johnston on 2025-10-21 12:10: Needed delivery of top section of glazing. / allucent_notes: 2025-09-30 12:09 - User: Jason Johnston - Date Added: 2025-09-30 12:09 - Note: Glass will not be on site until 10/20 / 2025-10-21 12:10 - User: Jason Johnston - Date Added: 2025-10-21 12:10 - Note: Needed delivery of top section of glazing.
- QTS-50481: allucent_notes_20251028_163138: Jason Johnston on 2025-10-28 14:10: Starting this on 10/29 finishing 10/30 / allucent_notes_20251104_160200: Jason Johnston on 2025-10-28 14:10: Starting this on 10/29 finishing 10/30 / Jason Johnston on 2025-11-03 14:11: Working on south west lower windows. / allucent_notes_20251111_182405: Jason Johnston on 2025-10-28 14:10: Starting this on 10/29 finishing 10/30 / Jason Johnston on 2025-11-03 14:11: Working on south west lower windows. / allucent_notes_20251118_192630: Jason Johnston on 2025-10-28 14:10: Starting this on 10/29 finishing 10/30 / Jason Johnston on 2025-11-03 14:11: Working on south west lower windows. / allucent_notes: 2025-10-28 14:10 - User: Jason Johnston - Date Added: 2025-10-28 14:10 - Note: Starting this on 10/29 finishing 10/30 / 2025-11-03 14:11 - User: Jason Johnston - Date Added: 2025-11-03 14:11 - Note: Working on south west lower windows.
- QTS-100000: allucent_notes_20251027_224008: Jason Johnston on 2025-10-27 13:10: Needed electrical conduits to be moved out of the way. / allucent_notes_20251028_163138: Jason Johnston on 2025-10-27 13:10: Needed electrical conduits to be moved out of the way. / allucent_notes_20251104_160200: Jason Johnston on 2025-10-27 13:10: Needed electrical conduits to be moved out of the way. / Jason Johnston on 2025-11-03 14:11: Needed clear area to start digging. / allucent_notes: 2025-10-27 13:10 - User: Jason Johnston - Date Added: 2025-10-27 13:10 - Note: Needed electrical conduits to be moved out of the way. / 2025-11-03 14:11 - User: Jason Johnston - Date Added: 2025-11-03 14:11 - Note: Needed clear area to start digging.
- QTS-100070: allucent_notes_20251111_182405: Jason Johnston on 2025-11-11 14:11: Pour moved to Monday 11/17 / allucent_notes_20251118_192630: Jason Johnston on 2025-11-11 14:11: Pour moved to Monday 11/17 / allucent_notes: 2025-11-11 14:11 - User: Jason Johnston - Date Added: 2025-11-11 14:11 - Note: Pour moved to Monday 11/17

| ID | WBS | Activity | Duration | Start | Finish | Predecessors | Complete | Remaining | Planned start | Planned finish | Total float | Free float | Subcontractor | Project Section-1 | Phase-1-1 | Baseline | Layton Responsible Party | Project Section | Allucent CSI Group | Phase-1 |
| --- | --- | --- | --- | --- | --- | --- | --- | --- | --- | --- | --- | --- | --- | --- | --- | --- | --- | --- | --- | --- |
|  | 1 | **Fragnet RFI #719 for FOH Loading Dock Elevation** |  | 2025-11-21 | 2025-12-08 |  |  |  |  |  |  |  |  |  |  |  |  |  |  |  |
| QTS-1001150 |  | Fragnet / FOH / North // Submission of RFI #719 | 1d | 2025-11-21 A | 2025-11-21 A | QTS-1030 SS | 100% |  |  |  |  |  | D.H. Pace Company, Inc. | Construction | Phase 2 | IGMP | Ron Carroll | Construction | 01ADMIN |  |
| QTS-1001160 |  | Fragnet / FOH / North // Design Response by Kimley Horn to RFI #719 | 6d | 2025-11-24 A | 2025-12-03 A | QTS-1001150 | 100% |  |  |  |  |  | D.H. Pace Company, Inc. | Construction | Phase 2 | IGMP | Ron Carroll | Construction | 01ADMIN |  |
| QTS-1001170 |  | Fragnet / FOH / North // Design Response by Corgan to RFI #719 | 1d | 2025-11-24 A | 2025-12-08 A | QTS-1001150 | 100% |  | 2025-11-24 | 2025-11-24 |  |  | D.H. Pace Company, Inc. | Construction | Phase 2 | IGMP | Ron Carroll | Construction | 01ADMIN |  |
|  | 2 | **Remaining Scope** |  | 2025-11-18 | 2026-03-04 |  |  |  |  |  |  |  |  |  |  |  |  |  |  |  |
| QTS-100080 |  | FOH / North // Grade Landing/Ramp for Loading Dock | 1d | 2025-11-18 A | 2026-01-14 A | QTS-100070 FF, QTS-1001170 FF+4d, QTS-1001160 FF | 100% |  | 2025-11-14 | 2025-11-14 |  |  | SteelFab Texas, Inc | Construction | Phase 2 | IGMP | Ron Carroll | Construction | 01ADMIN |  |
| QTS-43091 |  | FOH / North // Set Single Skin Metal Screen Wall | 10d | 2025-12-08 A | 2026-01-14 | QTS-21651, QTS-43081, QTS-42661 | 100% | 0d | 2025-11-24 | 2025-12-09 | 73d | 0d | True Metal Solutions, LLC | Construction | Phase 1 | IGMP | Ron Carroll | Construction | 01ADMIN |  |
| QTS-100090 |  | FOH / North // Install Rebar for Landing/Ramp for Loading Dock | 1d | 2026-01-14 | 2026-01-14 | QTS-100080 |  |  |  |  | 133d | 0d | SteelFab Texas, Inc | Construction | Phase 2 | IGMP | Ron Carroll | Construction | 01ADMIN |  |
| QTS-100100 |  | FOH / North // Pour Landing/Ramp for Loading Dock | 1d | 2026-01-15 | 2026-01-15 | QTS-100090 |  |  |  |  | 133d | 0d | SteelFab Texas, Inc | Construction | Phase 2 | IGMP | Ron Carroll | Construction | 01ADMIN |  |
| QTS-6851 |  | FOH / North // Set Loading Dock Steel Frames | 3d | 2026-01-16 | 2026-01-21 | QTS-100100 |  |  |  |  | 133d | 0d | SteelFab Texas, Inc | Construction | Phase 2 | IGMP | Ron Carroll | Construction | 01ADMIN |  |
| QTS-5481 |  | FOH / North // Hang OH Doors | 6d | 2026-01-21 A | 2026-01-14 | QTS-43081, QTS-50481, QTS-50731 | 83% | 1d | 2026-01-21 | 2026-01-28 | 147d | 55d | D.H. Pace Company, Inc. | Construction | Phase 2 | IGMP | Ron Carroll | Construction | 01ADMIN |  |
| QTS-7761 |  | FOH / North // Install Dock Levelers | 3d | 2026-01-22 | 2026-01-26 | QTS-6851 |  |  |  |  | 133d | 0d | D.H. Pace Company, Inc. | Construction | Phase 2 | IGMP | Ron Carroll | Construction | 01ADMIN |  |
| QTS-7771 |  | FOH / North // Install Dock Scissor Lift | 2d | 2026-01-22 | 2026-01-23 | QTS-6851 |  |  |  |  | 136d | 3d | D.H. Pace Company, Inc. | Construction | Phase 2 | IGMP | Ron Carroll | Construction | 01ADMIN |  |
| QTS-8711 |  | FOH / North // Install Dock Bumpers | 2d | 2026-01-27 | 2026-01-28 | QTS-7761 |  |  |  |  | 133d | 0d | D.H. Pace Company, Inc. | Construction | Phase 2 | IGMP | Ron Carroll | Construction | 01ADMIN |  |
| QTS-9841 |  | FOH / North // Tie In Electrical Connections to Dock Equipment | 5d | 2026-01-29 | 2026-02-04 | QTS-7771, QTS-8711 |  |  |  |  | 133d | 41d | D.H. Pace Company, Inc. | Construction | Phase 2 | IGMP | Ron Carroll | Construction | 01ADMIN |  |
| QTS-101700 |  | North // Set Single Skin Metal Screen Wall | 10d | 2026-02-19 | 2026-03-04 | QTS-3201 |  |  |  |  | 73d | 0d | True Metal Solutions, LLC | Construction | Phase 1 | IGMP | Ron Carroll | Construction | 01ADMIN |  |
|  | 4 | **Zone 1 / Exterior Finishes // East Elevation** |  |  |  |  |  |  |  |  |  |  |  |  |  |  |  |  |  |  |
|  | 1 | **Zone 1 / Exterior Finishes // West Elevation** |  | 2025-08-08 | 2026-03-06 |  |  |  |  |  |  |  |  |  |  |  |  |  |  |  |
| QTS-23621 |  | West Elevation // Sack & Patch Panels | 4d | 2025-08-08 A | 2025-09-08 A | QTS-19811, QTS-42681 SS | 100% |  | 2025-08-08 | 2025-08-13 |  |  | Suntec Concrete Inc |  |  | IGMP | Ron Carroll | Construction | 01ADMIN | Phase 1 |
| QTS-23791 |  | West Elevation // Power Wash Tilt Panels | 1d | 2025-09-09 A | 2025-09-09 A | QTS-23621 | 100% |  |  |  |  |  | Suntec Concrete Inc |  |  | IGMP | Ron Carroll | Construction | 01ADMIN | Phase 1 |
| QTS-24101 |  | West Elevation // Caulk Panel Joints | 4d | 2025-09-15 A | 2025-09-18 A | QTS-49451, QTS-49441 | 100% |  |  |  |  |  | Alpha Insulation & Waterproofing, Inc. |  |  | IGMP | Ron Carroll | Construction |  | Phase 1 |
| QTS-23921 |  | West Elevation // Prime & Paint Tilt Panels | 7d | 2025-09-22 A | 2025-09-25 A | QTS-23621, QTS-23791, QTS-43081 FF | 100% |  | 2025-09-22 | 2025-09-30 |  |  | Pennington Painting Company, LLC |  |  | IGMP | Ron Carroll | Construction | 01ADMIN | Phase 1 |
| QTS-24861 |  | West Elevation // Frame for Metal Panels | 8d | 2025-09-26 A | 2025-10-08 A | QTS-24101, QTS-23921 | 100% |  | 2025-09-26 | 2025-10-07 |  |  | Performance Contracting, Inc. |  |  | IGMP | Ron Carroll | Construction | 01ADMIN | Phase 1 |
| QTS-50331 |  | West Elevation // Install Strip Glass Window Frames - North Upper | 5d | 2025-10-27 A | 2025-10-31 A | QTS-24101, QTS-50471 | 100% |  |  |  |  |  | Performance Contracting, Inc. |  |  | IGMP | Doug Hayes | Construction | 01ADMIN | Phase 1 |

Notes:
- QTS-100080: allucent_notes_20251230_164549: Chris Waddell on 2025-11-18T20:17:24.167Z: Pushed due to rain this week / Jason Johnston on 2025-11-24 13:11: RFI to confirm loading dock elevations. / Jason Johnston on 2025-12-01 14:08: RFI to resolve conflicting grade and concrete heights is still pending. Response expected 12/2. / Chris Waddell on 2025-12-09 14:31: Waiting on RFI confirming elevation, will update when answer is received / Ron Carroll on 2025-12-15T19:43:37.699Z: RFI 719 was returned and there will need to be rework made to Suntec's ramp wall. The ramp wall will need to have 5' added to the wall. Grading will happen after the wall in complete. Tentative date for Suntec to start rework is 12/22. / Ron Carroll on 2025-12-15 12:45: RFI 719 was returned and there will need to be rework made to Suntec's ramp wall. The ramp wall will need to have 5' added to the wall. Grading will happen after the wall in complete. Tentative date for Suntec to start rework is 12/22. / Jason Johnston on 2025-12-30 16:35: No update / allucent_notes_20251118_192630: Chris Waddell on 2025-11-18T20:17:24.167Z: Pushed due to rain this week / allucent_notes_20251202_153722: Chris Waddell on 2025-11-18T20:17:24.167Z: Pushed due to rain this week / Jason Johnston on 2025-11-24 13:11: RFI to confirm loading dock elevations. / Jason Johnston on 2025-12-01 14:08: RFI to resolve conflicting grade and concrete heights is still pending. Response expected 12/2. / allucent_notes_20251209_203830: Chris Waddell on 2025-11-18T20:17:24.167Z: Pushed due to rain this week / Jason Johnston on 2025-11-24 13:11: RFI to confirm loading dock elevations. / Jason Johnston on 2025-12-01 14:08: RFI to resolve conflicting grade and concrete heights is still pending. Response expected 12/2. / Chris Waddell on 2025-12-09 14:31: Waiting on RFI confirming elevation, will update when answer is received / allucent_notes_20251216_165335: Chris Waddell on 2025-11-18T20:17:24.167Z: Pushed due to rain this week / Jason Johnston on 2025-11-24 13:11: RFI to confirm loading dock elevations. / Jason Johnston on 2025-12-01 14:08: RFI to resolve conflicting grade and concrete heights is still pending. Response expected 12/2. / Chris Waddell on 2025-12-09 14:31: Waiting on RFI confirming elevation, will update when answer is received / Ron Carroll on 2025-12-15T19:43:37.699Z: RFI 719 was returned and there will need to be rework made to Suntec's ramp wall. The ramp wall will need to have 5' added to the wall. Grading will happen after the wall in complete. Tentative date for Suntec to start rework is 12/22. / Ron Carroll on 2025-12-15 12:45: RFI 719 was returned and there will need to be rework made to Suntec's ramp wall. The ramp wall will need to have 5' added to the wall. Grading will happen after the wall in complete. Tentative date for Suntec to start rework is 12/22. / allucent_notes: 2025-11-18T20:17:24.167Z - User: Chris Waddell - Date Added: 2025-11-18T20:17:24.167Z - Note: Pushed due to rain this week / 2025-11-24 13:11 - User: Jason Johnston - Date Added: 2025-11-24 13:11 - Note: RFI to confirm loading dock elevations. / 2025-12
- QTS-43091: allucent_notes_20251230_164549: Jason Johnston on 2025-11-04 10:11: Mobilizing 11/24 / Chris Waddell on 2025-12-09 14:32: Need to speak with Ron before updating, will update Wednesday / Jason Johnston on 2025-12-30 16:35: No update / allucent_notes_20251104_160200: Jason Johnston on 2025-11-04 10:11: Mobilizing 11/24 / allucent_notes_20251111_182405: Jason Johnston on 2025-11-04 10:11: Mobilizing 11/24 / allucent_notes_20251118_192630: Jason Johnston on 2025-11-04 10:11: Mobilizing 11/24 / allucent_notes_20251202_153722: Jason Johnston on 2025-11-04 10:11: Mobilizing 11/24 / allucent_notes_20251209_203830: Jason Johnston on 2025-11-04 10:11: Mobilizing 11/24 / Chris Waddell on 2025-12-09 14:32: Need to speak with Ron before updating, will update Wednesday / allucent_notes_20251216_165335: Jason Johnston on 2025-11-04 10:11: Mobilizing 11/24 / Chris Waddell on 2025-12-09 14:32: Need to speak with Ron before updating, will update Wednesday / allucent_notes: 2025-11-04 10:11 - User: Jason Johnston - Date Added: 2025-11-04 10:11 - Note: Mobilizing 11/24 / 2025-12-09 14:32 - User: Chris Waddell - Date Added: 2025-12-09 14:32 - Note: Need to speak with Ron before updating, will update Wednesday / 2025-12-30 16
- QTS-5481: allucent_notes_20251230_164549: Ron Carroll on 2025-12-15T21:05:46.525Z: This activity belongs to Luis Vea / allucent_notes_20251216_165335: Ron Carroll on 2025-12-15T21:05:46.525Z: This activity belongs to Luis Vea / allucent_notes: 2025-12-15T21:05:46.525Z - User: Ron Carroll - Date Added: 2025-12-15T21:05:46.525Z - Note: This activity belongs to Luis Vea
- QTS-23621: allucent_notes: Jason Johnston on 2025-08-19 14:08: Unable to access southern half of the wall due to OEG underground work taking place in same area. / allucent_notes: 2025-08-19 14:08 - User: Jason Johnston - Date Added: 2025-08-19 14:08 - Note: Unable to access southern half of the wall due to OEG underground work taking place in same area. / 2025-08-27 07:08 - User: Jason Johnston - Date Added: 2025-08-27 07:08 - No
- QTS-24861: allucent_notes_20251014_152335: Jason Johnston on 2025-10-08 08:10: not done / allucent_notes: 2025-10-08 08:10 - User: Jason Johnston - Date Added: 2025-10-08 08:10 - Note: not done

| ID | WBS | Activity | Duration | Start | Finish | Predecessors | Complete | Planned start | Planned finish | Total float | Free float | Subcontractor | Baseline | Layton Responsible Party | Phase-1 | Project Section | Allucent CSI Group |
| --- | --- | --- | --- | --- | --- | --- | --- | --- | --- | --- | --- | --- | --- | --- | --- | --- | --- |
|  | 1 | **Fragnet / RFI #646 for Eyebrow Steel** |  | 2025-10-14 | 2026-01-14 |  |  |  |  |  |  |  |  |  |  |  |  |
| QTS-120090 |  | Fragnet / West Elevation // Submission of RFI #640 | 6d | 2025-10-14 A | 2025-10-20 A | QTS-1030 SS | 100% | 2025-10-14 | 2025-10-21 |  |  | True Metal Solutions, LLC | IGMP | Ron Carroll | Phase 1 | Construction | 01ADMIN |
| QTS-120040 |  | Fragnet / West Elevation // Submission of RFI #646 | 6d | 2025-10-21 A | 2025-10-21 A | QTS-1030 SS | 100% | 2025-10-14 | 2025-10-21 |  |  | True Metal Solutions, LLC | IGMP | Ron Carroll | Phase 1 | Construction | 01ADMIN |
| QTS-120100 |  | Fragnet / West Elevation // Design Response RFI #640 | 6d | 2025-10-21 A | 2025-10-30 A | QTS-120090, QTS-120040 | 100% | 2025-10-14 | 2025-10-21 |  |  | True Metal Solutions, LLC | IGMP | Ron Carroll | Phase 1 | Construction | 01ADMIN |
| QTS-120050 |  | Fragnet / West Elevation // Design Response RFI #646 | 3d | 2025-10-22 A | 2025-10-24 A | QTS-120040, QTS-120100 | 100% |  |  |  |  | True Metal Solutions, LLC | IGMP | Ron Carroll | Phase 1 | Construction | 01ADMIN |
| QTS-120060 |  | Fragnet / West Elevation // Create Mock Up and Submitted Submitted for RFI #646 | 8d | 2025-10-27 A | 2025-11-05 A | QTS-120050 | 100% |  |  |  |  | True Metal Solutions, LLC | IGMP | Ron Carroll | Phase 1 | Construction | 01ADMIN |
| QTS-120110 |  | Fragnet / West Elevation // Resubmit RFI #640 | 1d | 2025-10-30 A | 2025-10-30 A | QTS-120100 | 100% | 2025-10-14 | 2025-10-14 |  |  | True Metal Solutions, LLC | IGMP | Ron Carroll | Phase 1 | Construction | 01ADMIN |
| QTS-120150 |  | Fragnet / West Elevation // Submission of RFI #676 | 6d | 2025-10-30 A | 2025-10-30 A | QTS-1030 SS | 100% | 2025-10-14 | 2025-10-21 |  |  | True Metal Solutions, LLC | IGMP | Ron Carroll | Phase 1 | Construction | 01ADMIN |
| QTS-120120 |  | Fragnet / West Elevation // Design Response to Resubmitted RFI #640 | 6d | 2025-10-31 A | 2025-11-05 A | QTS-120110 | 100% | 2025-10-14 | 2025-10-21 |  |  | True Metal Solutions, LLC | IGMP | Ron Carroll | Phase 1 | Construction | 01ADMIN |
| QTS-120160 |  | Fragnet / West Elevation // Design Response RFI #676 | 6d | 2025-10-31 A | 2025-12-01 A | QTS-120150 | 100% | 2025-10-14 | 2025-10-21 |  |  | True Metal Solutions, LLC | IGMP | Ron Carroll | Phase 1 | Construction | 01ADMIN |
| QTS-120070 |  | Fragnet / West Elevation // Submittal Approved for RFI #646 | 4d | 2025-11-06 A | 2025-11-11 A | QTS-120060, QTS-120050 | 100% |  |  |  |  | True Metal Solutions, LLC | IGMP | Ron Carroll | Phase 1 | Construction | 01ADMIN |
| QTS-120130 |  | Fragnet / West Elevation // New Detail to be Received and Finalized RFI #640 | 6d | 2025-11-06 A | 2025-11-26 A | QTS-120120 | 100% | 2025-10-14 | 2025-10-21 |  |  | True Metal Solutions, LLC | IGMP | Ron Carroll | Phase 1 | Construction | 01ADMIN |
| QTS-120080 |  | Fragnet / West Elevation // Material Procurement for RFI #646 | 19d | 2025-11-12 A | 2025-12-10 A | QTS-120070, QTS-120070 FF | 100% |  |  |  |  | True Metal Solutions, LLC | IGMP | Ron Carroll | Phase 1 | Construction | 01ADMIN |
| QTS-120170 |  | Fragnet / West Elevation // Layton Reviewing Detail for Constructability RFI #676 | 3d | 2025-12-01 A | 2025-12-10 A | QTS-120160 | 100% | 2025-12-01 | 2025-12-03 |  |  | True Metal Solutions, LLC | IGMP | Ron Carroll | Phase 1 | Construction | 01ADMIN |
| QTS-120180 |  | Fragnet / West Elevation // Install Studs Eyebrow Steel for Reduced Framing | 10d | 2025-12-08 A | 2025-12-19 A | QTS-120170 FF | 100% |  |  |  |  | True Metal Solutions, LLC | IGMP | Ron Carroll | Phase 1 | Construction | 01ADMIN |
| QTS-120140 |  | Fragnet / West Elevation // Layton Reviewing Detail for Constructability RFI #640 | 1d | 2025-12-10 A | 2025-12-10 A | QTS-120130, QTS-120130 FF | 100% |  |  |  |  | True Metal Solutions, LLC | IGMP | Ron Carroll | Phase 1 | Construction | 01ADMIN |
| QTS-120190 |  | Fragnet / West Elevation // Frame Eyebrow Steel | 10d | 2025-12-22 A | 2026-01-14 A | QTS-1004410 FF, QTS-120180, QTS-120140 | 100% | 2025-12-22 | 2026-01-09 |  |  | True Metal Solutions, LLC | IGMP | Ron Carroll | Phase 1 | Construction | 01ADMIN |
| QTS-1004400 |  | Fragnet / West Elevation // Submit RFI #788 | 1d | 2026-01-08 A | 2026-01-08 A | QTS-1371 SS | 100% |  |  |  |  | True Metal Solutions, LLC | IGMP | Ron Carroll | Phase 1 | Construction | 01ADMIN |
| QTS-1004410 |  | Fragnet / West Elevation // Design Response for RFI #788 | 3d | 2026-01-09 A | 2026-01-14 A | QTS-1004400 | 100% | 2026-01-09 | 2026-01-13 |  |  | True Metal Solutions, LLC | IGMP | Ron Carroll | Phase 1 | Construction | 01ADMIN |
|  | 2 | **Remaining Scope** |  | 2025-11-03 | 2026-03-06 |  |  |  |  |  |  |  |  |  |  |  |  |
| QTS-50341 |  | West Elevation // Install Strip Glass Window Glass - North Upper | 5d | 2025-11-03 A | 2025-11-07 A | QTS-50331, QTS-18561 | 100% |  |  |  |  | Performance Contracting, Inc. | IGMP | Sean Waisner | Phase 1 | Construction | 01ADMIN |
| QTS-50411 |  | West Elevation // Install Strip Glass Window Frames - South Lower | 5d | 2025-11-03 A | 2025-11-07 A | QTS-50341 SS | 100% |  |  |  |  | Performance Contracting, Inc. | IGMP | Sean Waisner | Phase 1 | Construction | 01ADMIN |
| QTS-50351 |  | West Elevation // Install Strip Glass Window Exterior Caulking - North Upper | 2d | 2025-11-10 A | 2025-11-11 A | QTS-50341 | 100% |  |  |  |  | Performance Contracting, Inc. | IGMP | Sean Waisner | Phase 1 | Construction | 01ADMIN |
| QTS-50421 |  | West Elevation // Install Strip Glass Window Glass - South Lower | 5d | 2025-11-10 A | 2025-11-14 A | QTS-50411, QTS-18561 | 100% |  |  |  |  | Performance Contracting, Inc. | IGMP | Sean Waisner | Phase 1 | Construction | 01ADMIN |
| QTS-50361 |  | West Elevation // Install Strip Glass Window Interior Caulking - North Upper | 3d | 2025-11-12 A | 2025-11-14 A | QTS-50351 | 100% |  |  |  |  | Performance Contracting, Inc. | IGMP | Sean Waisner | Phase 1 | Construction |  |
| QTS-50431 |  | West Elevation // Install Strip Glass Window Exterior Caulking - South Lower | 2d | 2025-11-17 A | 2025-11-18 A | QTS-50421 | 100% |  |  |  |  | Performance Contracting, Inc. | IGMP | Sean Waisner | Phase 1 | Construction | 01ADMIN |
| QTS-50441 |  | West Elevation // Install Strip Glass Window Interior Caulking - South Lower | 3d | 2025-11-19 A | 2025-11-21 A | QTS-50431 | 100% |  |  |  |  | Performance Contracting, Inc. | IGMP | Sean Waisner | Phase 1 | Construction |  |
| QTS-25071 |  | West Elevation // Hang Sheathing for Metal Panels | 4d | 2026-01-14 | 2026-01-20 | QTS-24861, QTS-120190 |  |  |  | 17d | 0d | True Metal Solutions, LLC | IGMP | Ron Carroll | Phase 1 | Construction | 01ADMIN |
| QTS-28071 |  | West Elevation // Set Louvered Metal Screen Wall | 5d | 2026-01-14 | 2026-01-21 | QTS-43091 |  |  |  | 73d | 0d | True Metal Solutions, LLC | IGMP | Ron Carroll | Phase 1 | Construction | 01ADMIN |
| QTS-50371 |  | West Elevation // Install Strip/Spandrel Glass Window Frames - South Upper | 5d | 2026-01-14 | 2026-01-21 | QTS-50331, QTS-24861, QTS-25071 SS |  |  |  | 132d | 0d | Performance Contracting, Inc. | IGMP | Ron Carroll | Phase 1 | Construction | 01ADMIN |
| QTS-25351 |  | West Elevation // Install Weather Barrier & Insulation | 5d | 2026-01-21 | 2026-01-27 | QTS-25071 |  |  |  | 17d | 0d | True Metal Solutions, LLC | IGMP | Ron Carroll | Phase 1 | Construction | 01ADMIN |
| QTS-50381 |  | West Elevation // Install Strip/Spandrel Glass Window Glass - South Upper | 5d | 2026-01-22 | 2026-01-28 | QTS-50371, QTS-18561, QTS-120080 |  |  |  | 132d | 0d | Giroux Glass, Inc | IGMP | Ron Carroll | Phase 1 | Construction | 01ADMIN |
| QTS-25661 |  | West Elevation // Inspect Weather Barrier | 1d | 2026-01-28 | 2026-01-28 | QTS-25351 |  |  |  | 17d | 0d | True Metal Solutions, LLC | IGMP | Ron Carroll | Phase 1 | Construction | 01ADMIN |
| QTS-27491 |  | West Elevation // Install Metal Panels | 10d | 2026-01-29 | 2026-02-11 | QTS-25071, QTS-25351, QTS-25661, QTS-50431, QTS-25411 |  |  |  | 17d | 0d | True Metal Solutions, LLC | IGMP | Ron Carroll | Phase 1 | Construction |  |
| QTS-50391 |  | West Elevation // Install Strip/Spandrel Glass Window Exterior Caulking - South Upper | 2d | 2026-01-29 | 2026-01-30 | QTS-50381 |  |  |  | 132d | 0d | Giroux Glass, Inc | IGMP | Sean Waisner | Phase 1 | Construction | 01ADMIN |
| QTS-50401 |  | West Elevation // Install Strip Glass Window Interior Caulking - South Upper | 3d | 2026-02-02 | 2026-02-04 | QTS-50391 |  |  |  | 132d | 33d | Giroux Glass, Inc | IGMP | Sean Waisner | Phase 1 | Construction | 01ADMIN |
| QTS-24591 |  | West Elevation // Install Store Front Frames | 10d | 2026-02-12 | 2026-02-25 | QTS-23921, QTS-18561, QTS-46841, QTS-27491 |  |  |  | 17d | 0d | Giroux Glass, Inc | IGMP | Sean Waisner | Phase 1 | Construction |  |
| QTS-28731 |  | West Elevation // Install QTS Signage | 2d | 2026-02-12 | 2026-02-13 | QTS-27491 |  |  |  | 126d | 34d |  | IGMP | Sean Waisner | Phase 1 | Construction |  |
| QTS-50071 |  | West Elevation // Set Store Front Glass | 10d | 2026-02-19 | 2026-03-04 | QTS-24591 FF+5d |  |  |  | 17d | 0d | Giroux Glass, Inc | IGMP | Sean Waisner | Phase 1 | Construction |  |
| QTS-24831 |  | West Elevation // Electrical Rough In for Signage | 2d | 2026-02-26 | 2026-02-27 | QTS-24591, QTS-24861 |  |  |  | 113d | 0d | Rosendin Electric, Inc | IGMP | Scott Masterson | Phase 1 | Construction | 01ADMIN |
| QTS-24971 |  | West Elevation // Inspect Electrical & Framing | 1d | 2026-03-02 | 2026-03-02 | QTS-24831 |  |  |  | 113d | 0d | Rosendin Electric, Inc | IGMP | Scott Masterson | Phase 1 | Construction | 01ADMIN |
| QTS-1004110 |  | West Elevation // Install QTS Signage | 2d | 2026-03-03 | 2026-03-04 | QTS-24971 |  |  |  | 113d | 21d | Rosendin Electric, Inc | IGMP | Scott Masterson | Phase 1 | Construction | 01ADMIN |
| QTS-25181 |  | West Elevation // Install Store Front Window Exterior Caulking | 2d | 2026-03-03 | 2026-03-04 | QTS-50071 FF |  |  |  | 17d | 0d | Giroux Glass, Inc | IGMP | Sean Waisner | Phase 1 | Construction |  |
| QTS-50681 |  | West Elevation // Install Store Front Window Interior Caulking | 2d | 2026-03-05 | 2026-03-06 | QTS-25181 |  |  |  | 110d | 11d | Giroux Glass, Inc | IGMP | Sean Waisner | Phase 1 | Construction |  |

Notes:
- QTS-120090: allucent_notes_20251014_152335: Zack Goertz on 2025-10-14T14:47:19.586Z: This falls under Ron Carroll / -ZG 10/14 / allucent_notes_20251021_145627: Zack Goertz on 2025-10-14T14:47:19.586Z: This falls under Ron Carroll / -ZG 10/14 / allucent_notes_20251027_224008: Zack Goertz on 2025-10-14T14:47:19.586Z: This falls under Ron Carroll / -ZG 10/14 / allucent_notes_20251028_163138: Zack Goertz on 2025-10-14T14:47:19.586Z: This falls under Ron Carroll / -ZG 10/14 / allucent_notes_20251104_160200: Zack Goertz on 2025-10-14T14:47:19.586Z: This falls under Ron Carroll / -ZG 10/14 / allucent_notes_20251111_182405: Zack Goertz on 2025-10-14T14:47:19.586Z: This falls under Ron Carroll / -ZG 10/14 / Jason Johnston on 2025-11-11 14:11: RFI requires framing to be uninstalled and changed. / allucent_notes_20251118_192630: Zack Goertz on 2025-10-14T14:47:19.586Z: This falls under Ron Carroll / -ZG 10/14 / Jason Johnston on 2025-11-11 14:11: RFI requires framing to be uninstalled and changed. / Chris Waddell on 2025-11-18T20:07:57.342Z: RFI was answered, now waiting on the submittal for material / Jason Johnston on 2025-11-18T21:14:22.460Z: Tie to spandrel glass install / allucent_notes_20251202_153722: Zack Goertz on 2025-10-14T14:47:19.586Z: This falls under Ron Carroll / -ZG 10/14 / Jason Johnston on 2025-11-11 14:11: RFI requires framing to be uninstalled and changed. / Chris Waddell on 2025-11-18T20:07:57.342Z: RFI was answered, now waiting on the submittal for material / Jason Johnston on 2025-11-18T21:14:22.460Z: Tie to spandrel glass install / allucent_notes: 2025-10-14T14:47:19.586Z - User: Zack Goertz - Date Added: 2025-10-14T14:47:19.586Z - Note: This falls under Ron Carroll-ZG 10/14 / 2025-11-11 14:11 - User: Jason Johnston - Date Added: 2025-11-11 14:11 - Note: RFI requires framing to be uninstalled and
- QTS-120040: allucent_notes_20251014_152335: Zack Goertz on 2025-10-14T14:47:19.586Z: This falls under Ron Carroll / -ZG 10/14 / allucent_notes_20251021_145627: Zack Goertz on 2025-10-14T14:47:19.586Z: This falls under Ron Carroll / -ZG 10/14 / allucent_notes_20251027_224008: Zack Goertz on 2025-10-14T14:47:19.586Z: This falls under Ron Carroll / -ZG 10/14 / allucent_notes_20251028_163138: Zack Goertz on 2025-10-14T14:47:19.586Z: This falls under Ron Carroll / -ZG 10/14 / allucent_notes_20251104_160200: Zack Goertz on 2025-10-14T14:47:19.586Z: This falls under Ron Carroll / -ZG 10/14 / allucent_notes_20251111_182405: Zack Goertz on 2025-10-14T14:47:19.586Z: This falls under Ron Carroll / -ZG 10/14 / Jason Johnston on 2025-11-11 14:11: RFI requires framing to be uninstalled and changed. / allucent_notes_20251118_192630: Zack Goertz on 2025-10-14T14:47:19.586Z: This falls under Ron Carroll / -ZG 10/14 / Jason Johnston on 2025-11-11 14:11: RFI requires framing to be uninstalled and changed. / Chris Waddell on 2025-11-18T20:07:57.342Z: RFI was answered, now waiting on the submittal for material / Jason Johnston on 2025-11-18T21:14:22.460Z: Tie to spandrel glass install / allucent_notes_20251202_153722: Zack Goertz on 2025-10-14T14:47:19.586Z: This falls under Ron Carroll / -ZG 10/14 / Jason Johnston on 2025-11-11 14:11: RFI requires framing to be uninstalled and changed. / Chris Waddell on 2025-11-18T20:07:57.342Z: RFI was answered, now waiting on the submittal for material / Jason Johnston on 2025-11-18T21:14:22.460Z: Tie to spandrel glass install / allucent_notes: 2025-10-14T14:47:19.586Z - User: Zack Goertz - Date Added: 2025-10-14T14:47:19.586Z - Note: This falls under Ron Carroll-ZG 10/14 / 2025-11-11 14:11 - User: Jason Johnston - Date Added: 2025-11-11 14:11 - Note: RFI requires framing to be uninstalled and
- QTS-120100: allucent_notes_20251014_152335: Zack Goertz on 2025-10-14T14:47:19.586Z: This falls under Ron Carroll / -ZG 10/14 / allucent_notes_20251021_145627: Zack Goertz on 2025-10-14T14:47:19.586Z: This falls under Ron Carroll / -ZG 10/14 / allucent_notes_20251027_224008: Zack Goertz on 2025-10-14T14:47:19.586Z: This falls under Ron Carroll / -ZG 10/14 / allucent_notes_20251028_163138: Zack Goertz on 2025-10-14T14:47:19.586Z: This falls under Ron Carroll / -ZG 10/14 / allucent_notes_20251104_160200: Zack Goertz on 2025-10-14T14:47:19.586Z: This falls under Ron Carroll / -ZG 10/14 / allucent_notes_20251111_182405: Zack Goertz on 2025-10-14T14:47:19.586Z: This falls under Ron Carroll / -ZG 10/14 / Jason Johnston on 2025-11-11 14:11: RFI requires framing to be uninstalled and changed. / allucent_notes_20251118_192630: Zack Goertz on 2025-10-14T14:47:19.586Z: This falls under Ron Carroll / -ZG 10/14 / Jason Johnston on 2025-11-11 14:11: RFI requires framing to be uninstalled and changed. / Chris Waddell on 2025-11-18T20:07:57.342Z: RFI was answered, now waiting on the submittal for material / Jason Johnston on 2025-11-18T21:14:22.460Z: Tie to spandrel glass install / allucent_notes_20251202_153722: Zack Goertz on 2025-10-14T14:47:19.586Z: This falls under Ron Carroll / -ZG 10/14 / Jason Johnston on 2025-11-11 14:11: RFI requires framing to be uninstalled and changed. / Chris Waddell on 2025-11-18T20:07:57.342Z: RFI was answered, now waiting on the submittal for material / Jason Johnston on 2025-11-18T21:14:22.460Z: Tie to spandrel glass install / allucent_notes: 2025-10-14T14:47:19.586Z - User: Zack Goertz - Date Added: 2025-10-14T14:47:19.586Z - Note: This falls under Ron Carroll-ZG 10/14 / 2025-11-11 14:11 - User: Jason Johnston - Date Added: 2025-11-11 14:11 - Note: RFI requires framing to be uninstalled and
- QTS-120050: allucent_notes_20251014_152335: Zack Goertz on 2025-10-14T14:47:19.586Z: This falls under Ron Carroll / -ZG 10/14 / allucent_notes_20251021_145627: Zack Goertz on 2025-10-14T14:47:19.586Z: This falls under Ron Carroll / -ZG 10/14 / allucent_notes_20251027_224008: Zack Goertz on 2025-10-14T14:47:19.586Z: This falls under Ron Carroll / -ZG 10/14 / allucent_notes_20251028_163138: Zack Goertz on 2025-10-14T14:47:19.586Z: This falls under Ron Carroll / -ZG 10/14 / allucent_notes_20251104_160200: Zack Goertz on 2025-10-14T14:47:19.586Z: This falls under Ron Carroll / -ZG 10/14 / allucent_notes_20251111_182405: Zack Goertz on 2025-10-14T14:47:19.586Z: This falls under Ron Carroll / -ZG 10/14 / Jason Johnston on 2025-11-11 14:11: RFI requires framing to be uninstalled and changed. / allucent_notes_20251118_192630: Zack Goertz on 2025-10-14T14:47:19.586Z: This falls under Ron Carroll / -ZG 10/14 / Jason Johnston on 2025-11-11 14:11: RFI requires framing to be uninstalled and changed. / Chris Waddell on 2025-11-18T20:07:57.342Z: RFI was answered, now waiting on the submittal for material / Jason Johnston on 2025-11-18T21:14:22.460Z: Tie to spandrel glass install / allucent_notes_20251202_153722: Zack Goertz on 2025-10-14T14:47:19.586Z: This falls under Ron Carroll / -ZG 10/14 / Jason Johnston on 2025-11-11 14:11: RFI requires framing to be uninstalled and changed. / Chris Waddell on 2025-11-18T20:07:57.342Z: RFI was answered, now waiting on the submittal for material / Jason Johnston on 2025-11-18T21:14:22.460Z: Tie to spandrel glass install / allucent_notes: 2025-10-14T14:47:19.586Z - User: Zack Goertz - Date Added: 2025-10-14T14:47:19.586Z - Note: This falls under Ron Carroll-ZG 10/14 / 2025-11-11 14:11 - User: Jason Johnston - Date Added: 2025-11-11 14:11 - Note: RFI requires framing to be uninstalled and
- QTS-120060: allucent_notes_20251014_152335: Zack Goertz on 2025-10-14T14:47:19.586Z: This falls under Ron Carroll / -ZG 10/14 / allucent_notes_20251021_145627: Zack Goertz on 2025-10-14T14:47:19.586Z: This falls under Ron Carroll / -ZG 10/14 / allucent_notes_20251027_224008: Zack Goertz on 2025-10-14T14:47:19.586Z: This falls under Ron Carroll / -ZG 10/14 / allucent_notes_20251028_163138: Zack Goertz on 2025-10-14T14:47:19.586Z: This falls under Ron Carroll / -ZG 10/14 / allucent_notes_20251104_160200: Zack Goertz on 2025-10-14T14:47:19.586Z: This falls under Ron Carroll / -ZG 10/14 / allucent_notes_20251111_182405: Zack Goertz on 2025-10-14T14:47:19.586Z: This falls under Ron Carroll / -ZG 10/14 / Jason Johnston on 2025-11-11 14:11: RFI requires framing to be uninstalled and changed. / allucent_notes_20251118_192630: Zack Goertz on 2025-10-14T14:47:19.586Z: This falls under Ron Carroll / -ZG 10/14 / Jason Johnston on 2025-11-11 14:11: RFI requires framing to be uninstalled and changed. / Chris Waddell on 2025-11-18T20:07:57.342Z: RFI was answered, now waiting on the submittal for material / Jason Johnston on 2025-11-18T21:14:22.460Z: Tie to spandrel glass install / allucent_notes_20251202_153722: Zack Goertz on 2025-10-14T14:47:19.586Z: This falls under Ron Carroll / -ZG 10/14 / Jason Johnston on 2025-11-11 14:11: RFI requires framing to be uninstalled and changed. / Chris Waddell on 2025-11-18T20:07:57.342Z: RFI was answered, now waiting on the submittal for material / Jason Johnston on 2025-11-18T21:14:22.460Z: Tie to spandrel glass install / allucent_notes: 2025-10-14T14:47:19.586Z - User: Zack Goertz - Date Added: 2025-10-14T14:47:19.586Z - Note: This falls under Ron Carroll-ZG 10/14 / 2025-11-11 14:11 - User: Jason Johnston - Date Added: 2025-11-11 14:11 - Note: RFI requires framing to be uninstalled and
- QTS-120110: allucent_notes_20251014_152335: Zack Goertz on 2025-10-14T14:47:19.586Z: This falls under Ron Carroll / -ZG 10/14 / allucent_notes_20251021_145627: Zack Goertz on 2025-10-14T14:47:19.586Z: This falls under Ron Carroll / -ZG 10/14 / allucent_notes_20251027_224008: Zack Goertz on 2025-10-14T14:47:19.586Z: This falls under Ron Carroll / -ZG 10/14 / allucent_notes_20251028_163138: Zack Goertz on 2025-10-14T14:47:19.586Z: This falls under Ron Carroll / -ZG 10/14 / allucent_notes_20251104_160200: Zack Goertz on 2025-10-14T14:47:19.586Z: This falls under Ron Carroll / -ZG 10/14 / allucent_notes_20251111_182405: Zack Goertz on 2025-10-14T14:47:19.586Z: This falls under Ron Carroll / -ZG 10/14 / Jason Johnston on 2025-11-11 14:11: RFI requires framing to be uninstalled and changed. / allucent_notes_20251118_192630: Zack Goertz on 2025-10-14T14:47:19.586Z: This falls under Ron Carroll / -ZG 10/14 / Jason Johnston on 2025-11-11 14:11: RFI requires framing to be uninstalled and changed. / Chris Waddell on 2025-11-18T20:07:57.342Z: RFI was answered, now waiting on the submittal for material / Jason Johnston on 2025-11-18T21:14:22.460Z: Tie to spandrel glass install / allucent_notes_20251202_153722: Zack Goertz on 2025-10-14T14:47:19.586Z: This falls under Ron Carroll / -ZG 10/14 / Jason Johnston on 2025-11-11 14:11: RFI requires framing to be uninstalled and changed. / Chris Waddell on 2025-11-18T20:07:57.342Z: RFI was answered, now waiting on the submittal for material / Jason Johnston on 2025-11-18T21:14:22.460Z: Tie to spandrel glass install / allucent_notes: 2025-10-14T14:47:19.586Z - User: Zack Goertz - Date Added: 2025-10-14T14:47:19.586Z - Note: This falls under Ron Carroll-ZG 10/14 / 2025-11-11 14:11 - User: Jason Johnston - Date Added: 2025-11-11 14:11 - Note: RFI requires framing to be uninstalled and
- QTS-120150: allucent_notes_20251014_152335: Zack Goertz on 2025-10-14T14:47:19.586Z: This falls under Ron Carroll / -ZG 10/14 / allucent_notes_20251021_145627: Zack Goertz on 2025-10-14T14:47:19.586Z: This falls under Ron Carroll / -ZG 10/14 / allucent_notes_20251027_224008: Zack Goertz on 2025-10-14T14:47:19.586Z: This falls under Ron Carroll / -ZG 10/14 / allucent_notes_20251028_163138: Zack Goertz on 2025-10-14T14:47:19.586Z: This falls under Ron Carroll / -ZG 10/14 / allucent_notes_20251104_160200: Zack Goertz on 2025-10-14T14:47:19.586Z: This falls under Ron Carroll / -ZG 10/14 / allucent_notes_20251111_182405: Zack Goertz on 2025-10-14T14:47:19.586Z: This falls under Ron Carroll / -ZG 10/14 / Jason Johnston on 2025-11-11 14:11: RFI requires framing to be uninstalled and changed. / allucent_notes_20251118_192630: Zack Goertz on 2025-10-14T14:47:19.586Z: This falls under Ron Carroll / -ZG 10/14 / Jason Johnston on 2025-11-11 14:11: RFI requires framing to be uninstalled and changed. / Chris Waddell on 2025-11-18T20:07:57.342Z: RFI was answered, now waiting on the submittal for material / Jason Johnston on 2025-11-18T21:14:22.460Z: Tie to spandrel glass install / allucent_notes_20251202_153722: Zack Goertz on 2025-10-14T14:47:19.586Z: This falls under Ron Carroll / -ZG 10/14 / Jason Johnston on 2025-11-11 14:11: RFI requires framing to be uninstalled and changed. / Chris Waddell on 2025-11-18T20:07:57.342Z: RFI was answered, now waiting on the submittal for material / Jason Johnston on 2025-11-18T21:14:22.460Z: Tie to spandrel glass install / allucent_notes: 2025-10-14T14:47:19.586Z - User: Zack Goertz - Date Added: 2025-10-14T14:47:19.586Z - Note: This falls under Ron Carroll-ZG 10/14 / 2025-11-11 14:11 - User: Jason Johnston - Date Added: 2025-11-11 14:11 - Note: RFI requires framing to be uninstalled and
- QTS-120120: allucent_notes_20251014_152335: Zack Goertz on 2025-10-14T14:47:19.586Z: This falls under Ron Carroll / -ZG 10/14 / allucent_notes_20251021_145627: Zack Goertz on 2025-10-14T14:47:19.586Z: This falls under Ron Carroll / -ZG 10/14 / allucent_notes_20251027_224008: Zack Goertz on 2025-10-14T14:47:19.586Z: This falls under Ron Carroll / -ZG 10/14 / allucent_notes_20251028_163138: Zack Goertz on 2025-10-14T14:47:19.586Z: This falls under Ron Carroll / -ZG 10/14 / allucent_notes_20251104_160200: Zack Goertz on 2025-10-14T14:47:19.586Z: This falls under Ron Carroll / -ZG 10/14 / allucent_notes_20251111_182405: Zack Goertz on 2025-10-14T14:47:19.586Z: This falls under Ron Carroll / -ZG 10/14 / Jason Johnston on 2025-11-11 14:11: RFI requires framing to be uninstalled and changed. / allucent_notes_20251118_192630: Zack Goertz on 2025-10-14T14:47:19.586Z: This falls under Ron Carroll / -ZG 10/14 / Jason Johnston on 2025-11-11 14:11: RFI requires framing to be uninstalled and changed. / Chris Waddell on 2025-11-18T20:07:57.342Z: RFI was answered, now waiting on the submittal for material / Jason Johnston on 2025-11-18T21:14:22.460Z: Tie to spandrel glass install / allucent_notes_20251202_153722: Zack Goertz on 2025-10-14T14:47:19.586Z: This falls under Ron Carroll / -ZG 10/14 / Jason Johnston on 2025-11-11 14:11: RFI requires framing to be uninstalled and changed. / Chris Waddell on 2025-11-18T20:07:57.342Z: RFI was answered, now waiting on the submittal for material / Jason Johnston on 2025-11-18T21:14:22.460Z: Tie to spandrel glass install / allucent_notes: 2025-10-14T14:47:19.586Z - User: Zack Goertz - Date Added: 2025-10-14T14:47:19.586Z - Note: This falls under Ron Carroll-ZG 10/14 / 2025-11-11 14:11 - User: Jason Johnston - Date Added: 2025-11-11 14:11 - Note: RFI requires framing to be uninstalled and
- QTS-120160: allucent_notes_20251014_152335: Zack Goertz on 2025-10-14T14:47:19.586Z: This falls under Ron Carroll / -ZG 10/14 / allucent_notes_20251021_145627: Zack Goertz on 2025-10-14T14:47:19.586Z: This falls under Ron Carroll / -ZG 10/14 / allucent_notes_20251027_224008: Zack Goertz on 2025-10-14T14:47:19.586Z: This falls under Ron Carroll / -ZG 10/14 / allucent_notes_20251028_163138: Zack Goertz on 2025-10-14T14:47:19.586Z: This falls under Ron Carroll / -ZG 10/14 / allucent_notes_20251104_160200: Zack Goertz on 2025-10-14T14:47:19.586Z: This falls under Ron Carroll / -ZG 10/14 / allucent_notes_20251111_182405: Zack Goertz on 2025-10-14T14:47:19.586Z: This falls under Ron Carroll / -ZG 10/14 / Jason Johnston on 2025-11-11 14:11: RFI requires framing to be uninstalled and changed. / allucent_notes_20251118_192630: Zack Goertz on 2025-10-14T14:47:19.586Z: This falls under Ron Carroll / -ZG 10/14 / Jason Johnston on 2025-11-11 14:11: RFI requires framing to be uninstalled and changed. / Chris Waddell on 2025-11-18T20:07:57.342Z: RFI was answered, now waiting on the submittal for material / Jason Johnston on 2025-11-18T21:14:22.460Z: Tie to spandrel glass install / allucent_notes_20251202_153722: Zack Goertz on 2025-10-14T14:47:19.586Z: This falls under Ron Carroll / -ZG 10/14 / Jason Johnston on 2025-11-11 14:11: RFI requires framing to be uninstalled and changed. / Chris Waddell on 2025-11-18T20:07:57.342Z: RFI was answered, now waiting on the submittal for material / Jason Johnston on 2025-11-18T21:14:22.460Z: Tie to spandrel glass install / allucent_notes: 2025-10-14T14:47:19.586Z - User: Zack Goertz - Date Added: 2025-10-14T14:47:19.586Z - Note: This falls under Ron Carroll-ZG 10/14 / 2025-11-11 14:11 - User: Jason Johnston - Date Added: 2025-11-11 14:11 - Note: RFI requires framing to be uninstalled and
- QTS-120070: allucent_notes_20251014_152335: Zack Goertz on 2025-10-14T14:47:19.586Z: This falls under Ron Carroll / -ZG 10/14 / allucent_notes_20251021_145627: Zack Goertz on 2025-10-14T14:47:19.586Z: This falls under Ron Carroll / -ZG 10/14 / allucent_notes_20251027_224008: Zack Goertz on 2025-10-14T14:47:19.586Z: This falls under Ron Carroll / -ZG 10/14 / allucent_notes_20251028_163138: Zack Goertz on 2025-10-14T14:47:19.586Z: This falls under Ron Carroll / -ZG 10/14 / allucent_notes_20251104_160200: Zack Goertz on 2025-10-14T14:47:19.586Z: This falls under Ron Carroll / -ZG 10/14 / allucent_notes_20251111_182405: Zack Goertz on 2025-10-14T14:47:19.586Z: This falls under Ron Carroll / -ZG 10/14 / Jason Johnston on 2025-11-11 14:11: RFI requires framing to be uninstalled and changed. / allucent_notes_20251118_192630: Zack Goertz on 2025-10-14T14:47:19.586Z: This falls under Ron Carroll / -ZG 10/14 / Jason Johnston on 2025-11-11 14:11: RFI requires framing to be uninstalled and changed. / Chris Waddell on 2025-11-18T20:07:57.342Z: RFI was answered, now waiting on the submittal for material / Jason Johnston on 2025-11-18T21:14:22.460Z: Tie to spandrel glass install / allucent_notes_20251202_153722: Zack Goertz on 2025-10-14T14:47:19.586Z: This falls under Ron Carroll / -ZG 10/14 / Jason Johnston on 2025-11-11 14:11: RFI requires framing to be uninstalled and changed. / Chris Waddell on 2025-11-18T20:07:57.342Z: RFI was answered, now waiting on the submittal for material / Jason Johnston on 2025-11-18T21:14:22.460Z: Tie to spandrel glass install / allucent_notes: 2025-10-14T14:47:19.586Z - User: Zack Goertz - Date Added: 2025-10-14T14:47:19.586Z - Note: This falls under Ron Carroll-ZG 10/14 / 2025-11-11 14:11 - User: Jason Johnston - Date Added: 2025-11-11 14:11 - Note: RFI requires framing to be uninstalled and
- QTS-120130: allucent_notes_20251014_152335: Zack Goertz on 2025-10-14T14:47:19.586Z: This falls under Ron Carroll / -ZG 10/14 / allucent_notes_20251021_145627: Zack Goertz on 2025-10-14T14:47:19.586Z: This falls under Ron Carroll / -ZG 10/14 / allucent_notes_20251027_224008: Zack Goertz on 2025-10-14T14:47:19.586Z: This falls under Ron Carroll / -ZG 10/14 / allucent_notes_20251028_163138: Zack Goertz on 2025-10-14T14:47:19.586Z: This falls under Ron Carroll / -ZG 10/14 / allucent_notes_20251104_160200: Zack Goertz on 2025-10-14T14:47:19.586Z: This falls under Ron Carroll / -ZG 10/14 / allucent_notes_20251111_182405: Zack Goertz on 2025-10-14T14:47:19.586Z: This falls under Ron Carroll / -ZG 10/14 / Jason Johnston on 2025-11-11 14:11: RFI requires framing to be uninstalled and changed. / allucent_notes_20251118_192630: Zack Goertz on 2025-10-14T14:47:19.586Z: This falls under Ron Carroll / -ZG 10/14 / Jason Johnston on 2025-11-11 14:11: RFI requires framing to be uninstalled and changed. / Chris Waddell on 2025-11-18T20:07:57.342Z: RFI was answered, now waiting on the submittal for material / Jason Johnston on 2025-11-18T21:14:22.460Z: Tie to spandrel glass install / allucent_notes_20251202_153722: Zack Goertz on 2025-10-14T14:47:19.586Z: This falls under Ron Carroll / -ZG 10/14 / Jason Johnston on 2025-11-11 14:11: RFI requires framing to be uninstalled and changed. / Chris Waddell on 2025-11-18T20:07:57.342Z: RFI was answered, now waiting on the submittal for material / Jason Johnston on 2025-11-18T21:14:22.460Z: Tie to spandrel glass install / allucent_notes: 2025-10-14T14:47:19.586Z - User: Zack Goertz - Date Added: 2025-10-14T14:47:19.586Z - Note: This falls under Ron Carroll-ZG 10/14 / 2025-11-11 14:11 - User: Jason Johnston - Date Added: 2025-11-11 14:11 - Note: RFI requires framing to be uninstalled and
- QTS-120080: allucent_notes_20251014_152335: Zack Goertz on 2025-10-14T14:47:19.586Z: This falls under Ron Carroll / -ZG 10/14 / allucent_notes_20251021_145627: Zack Goertz on 2025-10-14T14:47:19.586Z: This falls under Ron Carroll / -ZG 10/14 / allucent_notes_20251027_224008: Zack Goertz on 2025-10-14T14:47:19.586Z: This falls under Ron Carroll / -ZG 10/14 / allucent_notes_20251028_163138: Zack Goertz on 2025-10-14T14:47:19.586Z: This falls under Ron Carroll / -ZG 10/14 / allucent_notes_20251104_160200: Zack Goertz on 2025-10-14T14:47:19.586Z: This falls under Ron Carroll / -ZG 10/14 / allucent_notes_20251111_182405: Zack Goertz on 2025-10-14T14:47:19.586Z: This falls under Ron Carroll / -ZG 10/14 / Jason Johnston on 2025-11-11 14:11: RFI requires framing to be uninstalled and changed. / allucent_notes_20251118_192630: Zack Goertz on 2025-10-14T14:47:19.586Z: This falls under Ron Carroll / -ZG 10/14 / Jason Johnston on 2025-11-11 14:11: RFI requires framing to be uninstalled and changed. / Chris Waddell on 2025-11-18T20:07:57.342Z: RFI was answered, now waiting on the submittal for material / Jason Johnston on 2025-11-18T21:14:22.460Z: Tie to spandrel glass install / allucent_notes_20251202_153722: Zack Goertz on 2025-10-14T14:47:19.586Z: This falls under Ron Carroll / -ZG 10/14 / Jason Johnston on 2025-11-11 14:11: RFI requires framing to be uninstalled and changed. / Chris Waddell on 2025-11-18T20:07:57.342Z: RFI was answered, now waiting on the submittal for material / Jason Johnston on 2025-11-18T21:14:22.460Z: Tie to spandrel glass install / allucent_notes_20251209_203830: Chris Waddell on 2025-12-09 14:26: Need to speak with Ron before this update. / allucent_notes_20251216_165335: Chris Waddell on 2025-12-09 14:26: Need to speak with Ron before this update. / allucent_notes: 2025-12-09 14:26 - User: Chris Waddell - Date Added: 2025-12-09 14:26 - Note: Need to speak with Ron before this update.
- QTS-120170: allucent_notes_20251014_152335: Zack Goertz on 2025-10-14T14:47:19.586Z: This falls under Ron Carroll / -ZG 10/14 / allucent_notes_20251021_145627: Zack Goertz on 2025-10-14T14:47:19.586Z: This falls under Ron Carroll / -ZG 10/14 / allucent_notes_20251027_224008: Zack Goertz on 2025-10-14T14:47:19.586Z: This falls under Ron Carroll / -ZG 10/14 / allucent_notes_20251028_163138: Zack Goertz on 2025-10-14T14:47:19.586Z: This falls under Ron Carroll / -ZG 10/14 / allucent_notes_20251104_160200: Zack Goertz on 2025-10-14T14:47:19.586Z: This falls under Ron Carroll / -ZG 10/14 / allucent_notes_20251111_182405: Zack Goertz on 2025-10-14T14:47:19.586Z: This falls under Ron Carroll / -ZG 10/14 / Jason Johnston on 2025-11-11 14:11: RFI requires framing to be uninstalled and changed. / allucent_notes_20251118_192630: Zack Goertz on 2025-10-14T14:47:19.586Z: This falls under Ron Carroll / -ZG 10/14 / Jason Johnston on 2025-11-11 14:11: RFI requires framing to be uninstalled and changed. / Chris Waddell on 2025-11-18T20:07:57.342Z: RFI was answered, now waiting on the submittal for material / Jason Johnston on 2025-11-18T21:14:22.460Z: Tie to spandrel glass install / allucent_notes_20251202_153722: Zack Goertz on 2025-10-14T14:47:19.586Z: This falls under Ron Carroll / -ZG 10/14 / Jason Johnston on 2025-11-11 14:11: RFI requires framing to be uninstalled and changed. / Chris Waddell on 2025-11-18T20:07:57.342Z: RFI was answered, now waiting on the submittal for material / Jason Johnston on 2025-11-18T21:14:22.460Z: Tie to spandrel glass install / allucent_notes_20251209_203830: Chris Waddell on 2025-12-09 14:27: Need to speak with Ron, will update on Wednesday / allucent_notes_20251216_165335: Chris Waddell on 2025-12-09 14:27: Need to speak with Ron, will update on Wednesday / allucent_notes: 2025-12-09 14:27 - User: Chris Waddell - Date Added: 2025-12-09 14:27 - Note: Need to speak with Ron, will update on Wednesday
- QTS-120180: allucent_notes_20251014_152335: Zack Goertz on 2025-10-14T14:47:19.586Z: This falls under Ron Carroll / -ZG 10/14 / allucent_notes_20251021_145627: Zack Goertz on 2025-10-14T14:47:19.586Z: This falls under Ron Carroll / -ZG 10/14 / allucent_notes_20251027_224008: Zack Goertz on 2025-10-14T14:47:19.586Z: This falls under Ron Carroll / -ZG 10/14 / allucent_notes_20251028_163138: Zack Goertz on 2025-10-14T14:47:19.586Z: This falls under Ron Carroll / -ZG 10/14 / allucent_notes_20251104_160200: Zack Goertz on 2025-10-14T14:47:19.586Z: This falls under Ron Carroll / -ZG 10/14 / allucent_notes_20251111_182405: Zack Goertz on 2025-10-14T14:47:19.586Z: This falls under Ron Carroll / -ZG 10/14 / Jason Johnston on 2025-11-11 14:11: RFI requires framing to be uninstalled and changed. / allucent_notes_20251118_192630: Zack Goertz on 2025-10-14T14:47:19.586Z: This falls under Ron Carroll / -ZG 10/14 / Jason Johnston on 2025-11-11 14:11: RFI requires framing to be uninstalled and changed. / Chris Waddell on 2025-11-18T20:07:57.342Z: RFI was answered, now waiting on the submittal for material / Jason Johnston on 2025-11-18T21:14:22.460Z: Tie to spandrel glass install / allucent_notes_20251202_153722: Zack Goertz on 2025-10-14T14:47:19.586Z: This falls under Ron Carroll / -ZG 10/14 / Jason Johnston on 2025-11-11 14:11: RFI requires framing to be uninstalled and changed. / Chris Waddell on 2025-11-18T20:07:57.342Z: RFI was answered, now waiting on the submittal for material / Jason Johnston on 2025-11-18T21:14:22.460Z: Tie to spandrel glass install / allucent_notes: 2025-10-14T14:47:19.586Z - User: Zack Goertz - Date Added: 2025-10-14T14:47:19.586Z - Note: This falls under Ron Carroll-ZG 10/14 / 2025-11-11 14:11 - User: Jason Johnston - Date Added: 2025-11-11 14:11 - Note: RFI requires framing to be uninstalled and
- QTS-120140: allucent_notes_20251014_152335: Zack Goertz on 2025-10-14T14:47:19.586Z: This falls under Ron Carroll / -ZG 10/14 / allucent_notes_20251021_145627: Zack Goertz on 2025-10-14T14:47:19.586Z: This falls under Ron Carroll / -ZG 10/14 / allucent_notes_20251027_224008: Zack Goertz on 2025-10-14T14:47:19.586Z: This falls under Ron Carroll / -ZG 10/14 / allucent_notes_20251028_163138: Zack Goertz on 2025-10-14T14:47:19.586Z: This falls under Ron Carroll / -ZG 10/14 / allucent_notes_20251104_160200: Zack Goertz on 2025-10-14T14:47:19.586Z: This falls under Ron Carroll / -ZG 10/14 / allucent_notes_20251111_182405: Zack Goertz on 2025-10-14T14:47:19.586Z: This falls under Ron Carroll / -ZG 10/14 / Jason Johnston on 2025-11-11 14:11: RFI requires framing to be uninstalled and changed. / allucent_notes_20251118_192630: Zack Goertz on 2025-10-14T14:47:19.586Z: This falls under Ron Carroll / -ZG 10/14 / Jason Johnston on 2025-11-11 14:11: RFI requires framing to be uninstalled and changed. / Chris Waddell on 2025-11-18T20:07:57.342Z: RFI was answered, now waiting on the submittal for material / Jason Johnston on 2025-11-18T21:14:22.460Z: Tie to spandrel glass install / allucent_notes_20251202_153722: Zack Goertz on 2025-10-14T14:47:19.586Z: This falls under Ron Carroll / -ZG 10/14 / Jason Johnston on 2025-11-11 14:11: RFI requires framing to be uninstalled and changed. / Chris Waddell on 2025-11-18T20:07:57.342Z: RFI was answered, now waiting on the submittal for material / Jason Johnston on 2025-11-18T21:14:22.460Z: Tie to spandrel glass install / allucent_notes_20251209_203830: Chris Waddell on 2025-12-09 14:27: Need to speak with Ron, will update on Wednesday. / Jason Johnston on 2025-12-09 16:36: No update from team / allucent_notes_20251216_165335: Chris Waddell on 2025-12-09 14:27: Need to speak with Ron, will update on Wednesday. / Jason Johnston on 2025-12-09 16:36: No update from team / allucent_notes: 2025-12-09 14:27 - User: Chris Waddell - Date Added: 2025-12-09 14:27 - Note: Need to speak with Ron, will update on Wednesday. / 2025-12-09 16:36 - User: Jason Johnston - Date Added: 2025-12-09 16:36 - Note: No update from team
- QTS-120190: allucent_notes_20251014_152335: Zack Goertz on 2025-10-14T14:47:19.586Z: This falls under Ron Carroll / -ZG 10/14 / allucent_notes_20251021_145627: Zack Goertz on 2025-10-14T14:47:19.586Z: This falls under Ron Carroll / -ZG 10/14 / allucent_notes_20251027_224008: Zack Goertz on 2025-10-14T14:47:19.586Z: This falls under Ron Carroll / -ZG 10/14 / allucent_notes_20251028_163138: Zack Goertz on 2025-10-14T14:47:19.586Z: This falls under Ron Carroll / -ZG 10/14 / allucent_notes_20251104_160200: Zack Goertz on 2025-10-14T14:47:19.586Z: This falls under Ron Carroll / -ZG 10/14 / allucent_notes_20251111_182405: Zack Goertz on 2025-10-14T14:47:19.586Z: This falls under Ron Carroll / -ZG 10/14 / Jason Johnston on 2025-11-11 14:11: RFI requires framing to be uninstalled and changed. / allucent_notes_20251118_192630: Zack Goertz on 2025-10-14T14:47:19.586Z: This falls under Ron Carroll / -ZG 10/14 / Jason Johnston on 2025-11-11 14:11: RFI requires framing to be uninstalled and changed. / Chris Waddell on 2025-11-18T20:07:57.342Z: RFI was answered, now waiting on the submittal for material / Jason Johnston on 2025-11-18T21:14:22.460Z: Tie to spandrel glass install / allucent_notes_20251202_153722: Zack Goertz on 2025-10-14T14:47:19.586Z: This falls under Ron Carroll / -ZG 10/14 / Jason Johnston on 2025-11-11 14:11: RFI requires framing to be uninstalled and changed. / Chris Waddell on 2025-11-18T20:07:57.342Z: RFI was answered, now waiting on the submittal for material / Jason Johnston on 2025-11-18T21:14:22.460Z: Tie to spandrel glass install / allucent_notes: 2025-10-14T14:47:19.586Z - User: Zack Goertz - Date Added: 2025-10-14T14:47:19.586Z - Note: This falls under Ron Carroll-ZG 10/14 / 2025-11-11 14:11 - User: Jason Johnston - Date Added: 2025-11-11 14:11 - Note: RFI requires framing to be uninstalled and
- QTS-1004400: allucent_notes_20251014_152335: Zack Goertz on 2025-10-14T14:47:19.586Z: This falls under Ron Carroll / -ZG 10/14 / allucent_notes_20251021_145627: Zack Goertz on 2025-10-14T14:47:19.586Z: This falls under Ron Carroll / -ZG 10/14 / allucent_notes_20251027_224008: Zack Goertz on 2025-10-14T14:47:19.586Z: This falls under Ron Carroll / -ZG 10/14 / allucent_notes_20251028_163138: Zack Goertz on 2025-10-14T14:47:19.586Z: This falls under Ron Carroll / -ZG 10/14 / allucent_notes_20251104_160200: Zack Goertz on 2025-10-14T14:47:19.586Z: This falls under Ron Carroll / -ZG 10/14 / allucent_notes_20251111_182405: Zack Goertz on 2025-10-14T14:47:19.586Z: This falls under Ron Carroll / -ZG 10/14 / Jason Johnston on 2025-11-11 14:11: RFI requires framing to be uninstalled and changed. / allucent_notes_20251118_192630: Zack Goertz on 2025-10-14T14:47:19.586Z: This falls under Ron Carroll / -ZG 10/14 / Jason Johnston on 2025-11-11 14:11: RFI requires framing to be uninstalled and changed. / Chris Waddell on 2025-11-18T20:07:57.342Z: RFI was answered, now waiting on the submittal for material / Jason Johnston on 2025-11-18T21:14:22.460Z: Tie to spandrel glass install / allucent_notes_20251202_153722: Zack Goertz on 2025-10-14T14:47:19.586Z: This falls under Ron Carroll / -ZG 10/14 / Jason Johnston on 2025-11-11 14:11: RFI requires framing to be uninstalled and changed. / Chris Waddell on 2025-11-18T20:07:57.342Z: RFI was answered, now waiting on the submittal for material / Jason Johnston on 2025-11-18T21:14:22.460Z: Tie to spandrel glass install / allucent_notes: 2025-10-14T14:47:19.586Z - User: Zack Goertz - Date Added: 2025-10-14T14:47:19.586Z - Note: This falls under Ron Carroll-ZG 10/14 / 2025-11-11 14:11 - User: Jason Johnston - Date Added: 2025-11-11 14:11 - Note: RFI requires framing to be uninstalled and
- QTS-1004410: allucent_notes_20251014_152335: Zack Goertz on 2025-10-14T14:47:19.586Z: This falls under Ron Carroll / -ZG 10/14 / allucent_notes_20251021_145627: Zack Goertz on 2025-10-14T14:47:19.586Z: This falls under Ron Carroll / -ZG 10/14 / allucent_notes_20251027_224008: Zack Goertz on 2025-10-14T14:47:19.586Z: This falls under Ron Carroll / -ZG 10/14 / allucent_notes_20251028_163138: Zack Goertz on 2025-10-14T14:47:19.586Z: This falls under Ron Carroll / -ZG 10/14 / allucent_notes_20251104_160200: Zack Goertz on 2025-10-14T14:47:19.586Z: This falls under Ron Carroll / -ZG 10/14 / allucent_notes_20251111_182405: Zack Goertz on 2025-10-14T14:47:19.586Z: This falls under Ron Carroll / -ZG 10/14 / Jason Johnston on 2025-11-11 14:11: RFI requires framing to be uninstalled and changed. / allucent_notes_20251118_192630: Zack Goertz on 2025-10-14T14:47:19.586Z: This falls under Ron Carroll / -ZG 10/14 / Jason Johnston on 2025-11-11 14:11: RFI requires framing to be uninstalled and changed. / Chris Waddell on 2025-11-18T20:07:57.342Z: RFI was answered, now waiting on the submittal for material / Jason Johnston on 2025-11-18T21:14:22.460Z: Tie to spandrel glass install / allucent_notes_20251202_153722: Zack Goertz on 2025-10-14T14:47:19.586Z: This falls under Ron Carroll / -ZG 10/14 / Jason Johnston on 2025-11-11 14:11: RFI requires framing to be uninstalled and changed. / Chris Waddell on 2025-11-18T20:07:57.342Z: RFI was answered, now waiting on the submittal for material / Jason Johnston on 2025-11-18T21:14:22.460Z: Tie to spandrel glass install / allucent_notes: 2025-10-14T14:47:19.586Z - User: Zack Goertz - Date Added: 2025-10-14T14:47:19.586Z - Note: This falls under Ron Carroll-ZG 10/14 / 2025-11-11 14:11 - User: Jason Johnston - Date Added: 2025-11-11 14:11 - Note: RFI requires framing to be uninstalled and
- QTS-25071: allucent_notes_20251014_152335: Zack Goertz on 2025-10-14T14:47:19.586Z: This falls under Ron Carroll / -ZG 10/14 / allucent_notes_20251021_145627: Zack Goertz on 2025-10-14T14:47:19.586Z: This falls under Ron Carroll / -ZG 10/14 / allucent_notes_20251027_224008: Zack Goertz on 2025-10-14T14:47:19.586Z: This falls under Ron Carroll / -ZG 10/14 / allucent_notes_20251028_163138: Zack Goertz on 2025-10-14T14:47:19.586Z: This falls under Ron Carroll / -ZG 10/14 / allucent_notes_20251104_160200: Zack Goertz on 2025-10-14T14:47:19.586Z: This falls under Ron Carroll / -ZG 10/14 / allucent_notes_20251111_182405: Zack Goertz on 2025-10-14T14:47:19.586Z: This falls under Ron Carroll / -ZG 10/14 / Jason Johnston on 2025-11-11 14:11: RFI requires framing to be uninstalled and changed. / allucent_notes_20251118_192630: Zack Goertz on 2025-10-14T14:47:19.586Z: This falls under Ron Carroll / -ZG 10/14 / Jason Johnston on 2025-11-11 14:11: RFI requires framing to be uninstalled and changed. / Chris Waddell on 2025-11-18T20:07:57.342Z: RFI was answered, now waiting on the submittal for material / Jason Johnston on 2025-11-18T21:14:22.460Z: Tie to spandrel glass install / allucent_notes_20251202_153722: Zack Goertz on 2025-10-14T14:47:19.586Z: This falls under Ron Carroll / -ZG 10/14 / Jason Johnston on 2025-11-11 14:11: RFI requires framing to be uninstalled and changed. / Chris Waddell on 2025-11-18T20:07:57.342Z: RFI was answered, now waiting on the submittal for material / Jason Johnston on 2025-11-18T21:14:22.460Z: Tie to spandrel glass install / allucent_notes: 2025-10-14T14:47:19.586Z - User: Zack Goertz - Date Added: 2025-10-14T14:47:19.586Z - Note: This falls under Ron Carroll-ZG 10/14 / 2025-11-11 14:11 - User: Jason Johnston - Date Added: 2025-11-11 14:11 - Note: RFI requires framing to be uninstalled and
- QTS-50371: allucent_notes_20251104_160200: Jason Johnston on 2025-11-03 14:11: On hold for RFI #646 for steel out of alignment to the framing of the store front. / allucent_notes_20251111_182405: Jason Johnston on 2025-11-03 14:11: On hold for RFI #646 for steel out of alignment to the framing of the store front. / Jason Johnston on 2025-11-10 14:11: Clips for frames to begin install 11/11. / Jason Johnston on 2025-11-11 14:11: There is no spandrel glass on the FOH. / allucent_notes_20251118_192630: Jason Johnston on 2025-11-03 14:11: On hold for RFI #646 for steel out of alignment to the framing of the store front. / Jason Johnston on 2025-11-10 14:11: Clips for frames to begin install 11/11. / Jason Johnston on 2025-11-11 14:11: There is no spandrel glass on the FOH. / Chris Waddell on 2025-11-18T20:09:47.156Z: RFI was answered, now waiting on a submittal / allucent_notes_20251202_153722: Jason Johnston on 2025-11-03 14:11: On hold for RFI #646 for steel out of alignment to the framing of the store front. / Jason Johnston on 2025-11-10 14:11: Clips for frames to begin install 11/11. / Jason Johnston on 2025-11-11 14:11: There is no spandrel glass on the FOH. / Chris Waddell on 2025-11-18T20:09:47.156Z: RFI was answered, now waiting on a submittal / Jason Johnston on 2025-12-01 14:12: RFI response received 12/1 rework to start 12/3. Rework to add one additional day to duration. / Jason Johnston on 2025-12-01 14:12: RFI response received 12/1 rework to start 12/3. Rework to add one additional day to duration. / allucent_notes: 2025-11-03 14:11 - User: Jason Johnston - Date Added: 2025-11-03 14:11 - Note: On hold for RFI #646 for steel out of alignment to the framing of the store front. / 2025-11-10 14:11 - User: Jason Johnston - Date Added: 2025-11-10 14:11 - Note: Clips for f
- QTS-24831: allucent_notes_20251230_164549: David Wiltberger on 2025-10-14 12:10: No walls / Jason Johnston on 2025-11-03 14:11: Moving closer to TCO. / allucent_notes_20251014_152335: David Wiltberger on 2025-10-14 12:10: No walls / allucent_notes_20251021_145627: David Wiltberger on 2025-10-14 12:10: No walls / allucent_notes_20251027_224008: David Wiltberger on 2025-10-14 12:10: No walls / allucent_notes_20251028_163138: David Wiltberger on 2025-10-14 12:10: No walls / allucent_notes_20251104_160200: David Wiltberger on 2025-10-14 12:10: No walls / Jason Johnston on 2025-11-03 14:11: Moving closer to TCO. / allucent_notes: 2025-10-14 12:10 - User: David Wiltberger - Date Added: 2025-10-14 12:10 - Note: No walls / 2025-11-03 14:11 - User: Jason Johnston - Date Added: 2025-11-03 14:11 - Note: Moving closer to TCO.

| ID | WBS | Activity | Duration | Start | Finish | Predecessors | Complete | Remaining | Planned start | Planned finish | Total float | Free float | Subcontractor | Baseline | Layton Responsible Party | Phase-1 | Project Section | Allucent CSI Group | Project Section-1 | Phase-1-1 |
| --- | --- | --- | --- | --- | --- | --- | --- | --- | --- | --- | --- | --- | --- | --- | --- | --- | --- | --- | --- | --- |
|  | 2 | **Zone 1 / Exterior Finishes // South Elevation** |  | 2025-08-21 | 2026-04-02 |  |  |  |  |  |  |  |  |  |  |  |  |  |  |  |
| QTS-3561 |  | Zone 1 Gridlines 1-21 / South // Sack & Patch Panels | 8d | 2025-08-21 A | 2025-09-08 A | QTS-23621 SS | 100% |  | 2025-08-28 | 2025-09-09 |  |  | Suntec Concrete Inc | IGMP | Ron Carroll | Phase 1 | Construction | 01ADMIN |  |  |
| QTS-5441 |  | Zone 1 Gridlines 1-21 / South // Power Wash Tilt Panels | 1d | 2025-09-09 A | 2025-09-09 A | QTS-3561 | 100% |  |  |  |  |  | Suntec Concrete Inc | IGMP | Ron Carroll | Phase 1 | Construction | 01ADMIN |  |  |
| QTS-5661 |  | Zone 1 Gridlines 1-21 / South // Prime & Paint Tilt Panels | 5d | 2025-09-24 A | 2025-09-30 A | QTS-3561, QTS-5441, QTS-23921 FF | 100% |  |  |  |  |  | Pennington Painting Company, LLC | IGMP | Ron Carroll | Phase 1 | Construction |  |  |  |
| QTS-6981 |  | Zone 1 Gridlines 1-21 / South // Caulk Panel Joints | 4d | 2025-10-01 A | 2025-10-06 A | QTS-5661 | 100% |  |  |  |  |  | Alpha Insulation & Waterproofing, Inc. | IGMP | Ron Carroll | Phase 1 | Construction |  |  |  |
| QTS-24401 |  | Zone 1 Gridlines 1-21 / South // Install Scuppers | 5d | 2025-10-20 A | 2026-01-13 A | QTS-6981, QTS-42661 | 100% |  | 2025-10-20 | 2025-10-24 |  |  | Progressive Roofing | IGMP | Ron Carroll |  | Construction | 01ADMIN | Construction | Phase 1 |
| QTS-1002100 |  | Zone 1 Gridlines 1-21 / South // Layout Downspout Stub Outs | 5d | 2026-01-06 A | 2026-01-13 A | QTS-24401 SS | 100% |  | 2026-01-06 | 2026-01-12 |  |  | Suntec Concrete Inc | IGMP | Ron Carroll | Phase 1 | Construction |  |  |  |
| QTS-50581 |  | Zone 1 Gridlines 1-21 / South // Install Spandrel Glass Window Frames | 2d | 2026-01-08 A | 2026-01-14 A | QTS-6981 | 100% |  | 2026-01-08 | 2026-01-09 |  |  | Performance Contracting, Inc. | IGMP | Ron Carroll | Phase 1 | Construction | 01ADMIN |  |  |
| QTS-1002130 |  | Zone 1 Gridlines 1-21 / South // Install Downspouts | 2d | 2026-01-13 A | 2026-01-13 A | QTS-1002100 SS | 100% |  | 2026-01-20 | 2026-01-21 |  |  | Bel-Aire Mechanical, LLC | IGMP | Ron Carroll | Phase 1 | Construction |  |  |  |
| QTS-1002110 |  | Zone 1 Gridlines 1-21 / South // Inspection on Rebar for Downspout Stub Outs | 1d | 2026-01-14 A | 2026-01-14 A | QTS-1002100 | 100% |  |  |  |  |  | Suntec Concrete Inc | IGMP | Ron Carroll | Phase 1 | Construction |  |  |  |
| QTS-50601 |  | Zone 1 Gridlines 1-21 / South // Install Spandrel Glass Window Exterior Caulking | 5d | 2026-01-14 | 2026-01-21 | QTS-50591 |  |  |  |  | 143d | 51d | Giroux Glass, Inc | IGMP | Ron Carroll | Phase 1 | Construction |  |  |  |
| QTS-1002120 |  | Zone 1 Gridlines 1-21 / South // Pour Concrete Pedestals Downspout Stub Outs | 1d | 2026-01-15 A | 2026-01-21 | QTS-1002110 |  | 5d | 2026-01-16 | 2026-01-16 | 96d | 4d | Suntec Concrete Inc | IGMP | Ron Carroll | Phase 1 | Construction |  |  |  |
| QTS-1002150 |  | Zone 1 Gridlines 1-21 / South // Install Metal Panel Z Clips - Downspouts | 8d | 2026-01-15 | 2026-01-27 | QTS-49461 |  |  |  |  | 92d | 0d | True Metal Solutions, LLC | IGMP | Ron Carroll | Phase 1 | Construction | 01ADMIN | Construction |  |
| QTS-50591 |  | Zone 1 Gridlines 1-21 / South // Install Spandrel Glass Window Glass | 6d | 2026-01-15 A | 2026-01-15 A | QTS-50581, QTS-18561 | 100% |  | 2026-01-16 | 2026-01-26 |  |  | Performance Contracting, Inc. | IGMP | Ron Carroll | Phase 1 | Construction |  |  |  |
| QTS-1002140 |  | Zone 1 Gridlines 1-21 / South // Frame Metal Panels - Steel Stair Enclosure | 8d | 2026-01-20 | 2026-01-29 | QTS-46891, QTS-49461 |  |  |  |  | 65d | 0d | True Metal Solutions, LLC | IGMP | Ron Carroll | Phase 1 | Construction | 01ADMIN | Construction |  |
| QTS-101710 |  | Zone 1 Gridlines 1-21 / South // Set Louvered Metal Screen Wall | 10d | 2026-01-22 | 2026-02-04 | QTS-28071 |  |  |  |  | 73d | 0d | True Metal Solutions, LLC | IGMP | Ron Carroll | Phase 1 | Construction | 01ADMIN |  |  |
| QTS-49461 |  | Zone 1 Gridlines 1-21 / South // Frame for Metal Panels - Downspouts | 8d | 2026-01-26 A | 2026-01-14 | QTS-1002130, QTS-50581, QTS-6981, QTS-24401, QTS-100200, QTS-100720 | 88% | 1d | 2026-01-26 | 2026-02-04 | 67d | 0d | Performance Contracting, Inc. | IGMP | Ron Carroll | Phase 1 | Construction | 01ADMIN | Construction |  |
| QTS-1002160 |  | Zone 1 Gridlines 1-21 / South // Install Metal Panel Trim - Downspouts | 4d | 2026-01-28 | 2026-02-02 | QTS-1002120, QTS-1002150 |  |  |  |  | 92d | 0d | True Metal Solutions, LLC | IGMP | Sean Waisner | Phase 1 | Construction | 01ADMIN | Construction |  |
| QTS-1002170 |  | Zone 1 Gridlines 1-21 / South // Install Metal Panel Z Clips - Steel Stair Enclosure | 8d | 2026-01-30 | 2026-02-10 | QTS-1002140 FF, QTS-1002140 |  |  |  |  | 116d | 0d | True Metal Solutions, LLC | IGMP | Sean Waisner | Phase 1 | Construction | 01ADMIN | Construction |  |
| QTS-1002180 |  | Zone 1 Gridlines 1-21 / South // Install ACM Panels - Downspout #1 | 11d | 2026-02-03 | 2026-02-17 | QTS-1002160 |  |  |  |  | 92d | 0d | True Metal Solutions, LLC | IGMP | Sean Waisner | Phase 1 | Construction | 01ADMIN | Construction |  |
| QTS-3201 |  | Zone 1 Gridlines 1-21 / South // Set Louvered Metal Screen Wall | 10d | 2026-02-05 | 2026-02-18 | QTS-23621, QTS-28071, QTS-101710 |  |  |  |  | 73d | 0d | True Metal Solutions, LLC | IGMP | Sean Waisner | Phase 1 | Construction | 01ADMIN |  |  |
| QTS-1004210 |  | Zone 1 Gridlines 1-21 / South // Install Metal Panel Trim - Steel Stair Enclosure | 1d | 2026-02-11 | 2026-02-11 | QTS-1002170 |  |  |  |  | 116d | 24d | True Metal Solutions, LLC | IGMP | Sean Waisner | Phase 1 | Construction | 01ADMIN | Construction |  |
| QTS-1002190 |  | Zone 1 Gridlines 1-21 / South // Install ACM Panels - Downspout #2 | 10d | 2026-02-18 | 2026-03-03 | QTS-1002180 |  |  |  |  | 92d | 0d | True Metal Solutions, LLC | IGMP | Sean Waisner | Phase 1 | Construction | 01ADMIN | Construction |  |
| QTS-1002200 |  | Zone 1 Gridlines 1-21 / South // Install ACM Panels - Downspout #3 | 10d | 2026-03-04 | 2026-03-17 | QTS-1002190 |  |  |  |  | 92d | 0d | True Metal Solutions, LLC | IGMP | Sean Waisner | Phase 1 | Construction | 01ADMIN | Construction |  |
| QTS-1002210 |  | Zone 1 Gridlines 1-21 / South // Install ACM Panels - Stair Enclosure | 12d | 2026-03-18 | 2026-04-02 | QTS-1004210, QTS-1002170, QTS-1002200 |  |  |  |  | 92d | 0d | True Metal Solutions, LLC | IGMP | Sean Waisner | Phase 1 | Construction | 01ADMIN | Construction |  |
| QTS-50111 |  | Zone 1 Gridlines 1-21 / South // Set Spandrel Window Glass | 3d | 2026-03-18 | 2026-03-20 | QTS-18561, QTS-1002200 |  |  |  |  | 99d | 0d | Giroux Glass, Inc | IGMP | Sean Waisner | Phase 2 | Construction |  |  |  |
| QTS-50121 |  | Zone 1 Gridlines 1-21 / South // Caulk Spandrel Windows | 2d | 2026-03-23 | 2026-03-24 | QTS-50111 |  |  |  |  | 99d | 7d | Giroux Glass, Inc | IGMP | Sean Waisner | Phase 2 | Construction |  |  |  |

Notes:
- QTS-3561: allucent_notes: Jason Johnston on 2025-08-26 15:08: Got an earlier start due to limited access to other areas. / allucent_notes: 2025-08-26 15:08 - User: Jason Johnston - Date Added: 2025-08-26 15:08 - Note: Got an earlier start due to limited access to other areas. / 2025-09-02 15:09 - User: Jason Johnston - Date Added: 2025-09-02 15:09 - Note: access was restricted to building
- QTS-24401: allucent_notes_20251230_164549: Jason Johnston on 2025-10-08 08:10: not done / Jason Johnston on 2025-10-14 14:10: Must wait for TPO roof to be complete / Jason Johnston on 2025-10-27 13:10: Sleeves are installed, but collector boxes are not installed. Delay caused by incorrect grade. / Jason Johnston on 2025-11-03 14:11: Progressive needs to correct crooked sections of roof in order to install downspouts / Freddy Arrizon on 2025-11-10T20:24:45.181Z: Progressive corrected cricket slopes at overflow locations. Suntec, Progressive, and Layton reviewing tomorrow at 07:00am. / Jason Johnston on 2025-11-10 14:11: Will be done by end of next week. Walking 11/11, 5 days to fab, 3 days to install. / Jason Johnston on 2025-11-11 14:11: Scupper opening changed and therefore grading height changed. / Freddy Arrizon on 2025-11-18T19:15:36.945Z: Suntec needs to correct scupper and overflow dimensions. Suntec couldn't access scuppers due to BZI Crane activity on the SS of Zone 1. / Freddy Arrizon on 2025-11-24T20:06:11.444Z: Crane Activity at the southside of DC1 for TES tank install is preventing Suntec from repairing Zone 1 and Zone 2 scupper dimensions. Will need to re-sequence this activity. Zone 3 first, Zone 1, then lastly Zone 2. / Jason Johnston on 2025-11-24 13:11: Close and add new line following zone 3. / Jason Johnston on 2025-12-01 14:14: Delayed until crane for roof pipe moves to zone 2 on 12/5. / Chris Waddell on 2025-12-09 14:22: Need to talk to Ron before updating, will update on 12/10/25 / Ron Carroll on 2025-12-15T20:00:21.974Z: Scuppers will be done today. Collector boxes will be complete 12/19. Bel-aire will start downspouts Monday12/22. / Ron Carroll on 2025-12-15T20:00:26.655Z: null / Ron Carroll on 2025-12-15 13:00: Scuppers will be done today. Collector boxes will be complete 12/19. Bel-aire will start downspouts Monday12/22. / Jason Johnston on 2025-12-30 16:35: No update / allucent_notes_20251014_152335: Jason Johnston on 2025-10-08 08:10: not done / Jason Johnston on 2025-10-14 14:10: Must wait for TPO roof to be complete / allucent_notes_20251021_145627: Jason Johnston on 2025-10-08 08:10: not done / Jason Johnston on 2025-10-14 14:10: Must wait for TPO roof to be complete / allucent_notes_20251027_224008: Jason Johnston on 2025-10-08 08:10: not done / Jason Johnston on 2025-10-14 14:10: Must wait for TPO roof to be complete / Jason Johnston on 2025-10-27 13:10: Sleeves are installed, but collector boxes are not installed. Delay caused by incorrect grade. / allucent_notes_20251028_163138: Jason Johnston on 2025-10-08 08:10: not done / Jason Johnston on 2025-10-14 14:10: Must wait for TPO roof to be complete / Jason Johnston on 2025-10-27 13:10: Sleeves are installed, but collector boxes are not installed. Delay caused by incorrect grade. / allucent_notes_20251104_160200: Jason Johnston on 2025-10-08 08:10: not done / Jason Johnston on 2025-10-14 14:10: Must wait for TPO roof to be complete / Jason Johnston on 2025-10-27 13:10: Sleeves are installed, but collector boxes are not installed. Delay caused by incorrect grade. / Jason Johnston on 2025-11-03 14:11: Progressive needs to correct crooked sections of roof in order to install downspouts / allucent_notes_20251111_182405: Jason Johnston on 2025-10-08 08:10: not done / Jason Johnston on 2025-10-14 14:10: Must wait for TPO roof to be complete / Jason Johnston on 2025-10-27 13:10: Sleeves are installed, but collector boxes are not installed. Delay caused by incorrect grade. / Jason Johnston on 2025-11-03 14:11: Progressive needs to correct crooked sections of roof in order to install downspouts / Freddy Arrizon on 2025-11-10T20:24:45.181Z: Progressive corrected cricket slopes at overflow locations. Suntec, Progressive, and Layton reviewing tomorrow at 07:00am. / Jason Johnston on 2025-11-10 14:11: Will be done by end of next week. Walking 11/11, 5 days to fab, 3 days to install. / Jason Johnston on 2025-11-11 14:11: Scupper opening changed and therefore grading height changed. / allucent_notes_20251118_192630: Jason Johnston on 2025-10-08 08:10: not done / Jason Johnston on 2025-10-14 14:10: Must wait for TPO roof to be complete / Jason Johnston on 2025-10-27 13:10: Sleeves are installed, but collector boxes are not installed. Delay caused by incorrect grade. / Jason Johnston on 2025-11-03 14:11: Progressive needs to correct crooked sections of roof in order to install downspouts / Freddy Arrizon on 2025-11-10T20:24:45.181Z: Progressive corrected cricket slopes at overflow locations. Suntec, Progressive, and Layton reviewing tomorrow at 07:00am. / Jason Johnston on 2025-11-10 14:11: Will be done by end of next week. Walking 11/11, 5 days to fab, 3 days to install. / Jason Johnston on 2025-11-11 14:11: Scupper opening changed and therefore grading height changed. / Freddy Arrizon on 2025-11-18T19:15:36.945Z: Suntec needs to correct scupper and overflow dimensions. Suntec couldn't access scuppers due to BZI Crane activity on the SS of Zone 1. / allucent_notes_20251202_153722: Jason Johnston on 2025-10-08 08:10: not done / Jason Johnston on 2025-10-14 14:10: Must wait for TPO roof to be complete / Jason Johnston on 2025-10-27 13:10: Sleeves are installed, but collector boxes are not installed. Delay caused by incorrect grade. / Jason Johnston on 2025-11-03 14:11: Progressive needs to correct crooked sections of roof in order to install downspouts / Freddy Arrizon on 2025-11-10T20:24:45.181Z: Progressive corrected cricket slopes at overflow locations. Suntec, Progressive, and Layton reviewing tomorrow at 07:00am. / Jason Johnston on 2025-11-10 14:11: Will be done by end of next week. Walking 11/11, 5 days to fab, 3 days to install. / Jason Johnston on 2025-11-11 14:11: Scupper opening changed and therefore grading height changed. / Freddy Arrizon on 2025-11-18T19:15:36.945Z: Suntec needs to correct scupper and overflow dimensions. Suntec couldn't access scuppers due to BZI Crane activity on the SS of Zone 1. / Freddy Arrizon on 2025-11-24T20:06:11.444Z: Crane Activity at the southside of DC1 for TES tank install is preventing Suntec from repairing Zone 1 and Zone 2 scupper dimensions. Will need to re-sequence this activity. Zone 3 first, Zone 1, then lastly Zone 2. / Jason Johnston on 2025-11-24 13:11: Close and add new line following zone 3. / Jason Johnston on 2025-12-01 14:14: Delayed until crane for roof pipe moves to zone 2 on 12/5. / allucent_notes_20251209_203830: Jason Johnston on 2025-10-08 08:10: not done / Jason Johnston on 2025-10-14 14:10: Must wait for TPO roof to be complete / Jason Johnston on 2025-10-27 13:10: Sleeves are installed, but collector boxes are not installed. Delay caused by incorrect grade. / Jason Johnston on 2025-11-03 14:11: Progressive needs to correct crooked sections of roof in order to install downspouts / Freddy Arrizon on 2025-11-10T20:24:45.181Z: Progressive corrected cricket slopes at overflow locations. Suntec, Progressive, and Layton reviewing tomorrow at 07:00am. / Jason Johnston on 2025-11-10 14:11: Will be done by end of next week. Walking 11/11, 5 days to fab, 3 days to install. / Jason Johnston on 2025-11-11 14:11: Scupper opening changed and therefore grading height changed. / Freddy Arrizon on 2025-11-18T19:15:36.945Z: Suntec needs to correct scupper and overflow dimensions. Suntec couldn't access scuppers due to BZI Crane activity on the SS of Zone 1. / Freddy Arrizon on 2025-11-24T20:06:11.444Z: Crane Activity at the southside of DC1 for TES tank install is preventing Suntec from repairing Zone 1 and Zone 2 scupper dimensions. Will need to re-sequence this activity. Zone 3 first, Zone 1, then lastly Zone 2. / Jason Johnston on 2025-11-24 13:11: Close and add new line following zone 3. / Jason Johnston on 2025-12-01 14:14: Delayed until crane for roof pipe moves to zone 2 on 12/5. / Chris Waddell on 2025-12-09 14:22: Need to talk to Ron before updating, will update on 12/10/25 / allucent_notes_20251216_165335: Jason Johnston on 2025-10-08 08:10: not done / Jason Johnston on 2025-10-14 14:10: Must wait for TPO roof to be complete / Jason Johnston on 2025-10-27 13:10: Sleeves are installed, but collector boxes are not installed. Delay caused by incorrect grade. / Jason Johnston on 2025-11-03 14:11: Progressive needs to correct crooked sections of roof in order to install downspouts / Freddy Arrizon on 2025-11-10T20:24:45.181Z: Progressive corrected cricket slopes at overflow locations. Suntec, Progressive, and Layton reviewing tomorrow at 07:00am. / Jason Johnston on 2025-11-10 14:11: Will be done by end of next week. Walking 11/11, 5 days to fab, 3 days to install. / Jason Johnston on 2025-11-11 14:11: Scupper opening changed and therefore grading height changed. / Freddy Arrizon on 2025-11-18T19:15:36.945Z: Suntec needs to correct scupper and overflow dimensions. Suntec couldn't access scuppers due to BZI Crane activity on the SS of Zone 1. / Freddy Arrizon on 2025-11-24T20:06:11.444Z: Crane Activity at the southside of DC1 for TES tank install is preventing Suntec from repairing Zone 1 and Zone 2 scupper dimensions. Will need to re-sequence this activity. Zone 3 first, Zone 1, then lastly Zone 2. / Jason Johnston on 2025-11-24 13:11: Close and add new line following zone 3. / Jason Johnston on 2025-12-01 14:14: Delayed until crane for roof pipe moves to zone 2 on 12/5. / Chris Waddell on 2025-12-09 14:22: Need to talk to Ron before updating, will update on 12/10/25 / Ron Carroll on 2025-12-15T20:00:21.974Z: Scuppers will be done today. Collector boxes will be complete 12/19. Bel-aire will start downspouts Monday12/22. / Ron Carroll on 2025-12-15T20:00:26.655Z: null / Ron Carroll on 2025-12-15 13:00: Scuppers will be done today. Collector boxes will be complete 12/19. Bel-aire will start downspouts Monday12/22. / allucent_notes: 2025-10-08 08:10 - User: Jason Johnston - Date Added: 2025-10-08 08:10 - Note: not done / 2025-10-14 14:10 - User: Jason Johnston - Date Added: 2025-10-14 14:10 - Note: Must wait for TPO roof to be complete / 2025-10-27 13:10 - User: Jason Johnston - Da
- QTS-49461: allucent_notes_20251230_164549: Jason Johnston on 2025-11-11 14:11: Impacted by bulletin 4 TES tank grating and set. / allucent_notes_20251111_182405: Jason Johnston on 2025-11-11 14:11: Impacted by bulletin 4 TES tank grating and set. / allucent_notes_20251118_192630: Jason Johnston on 2025-11-11 14:11: Impacted by bulletin 4 TES tank grating and set. / allucent_notes_20251202_153722: Jason Johnston on 2025-11-11 14:11: Impacted by bulletin 4 TES tank grating and set. / allucent_notes: 2025-11-11 14:11 - User: Jason Johnston - Date Added: 2025-11-11 14:11 - Note: Impacted by bulletin 4 TES tank grating and set.

| ID | WBS | Activity | Duration | Start | Finish | Predecessors | Complete | Planned start | Planned finish | Total float | Free float | Subcontractor | Project Section-1 | Baseline | Layton Responsible Party | Phase-1 | Project Section | Allucent CSI Group | Phase-1-1 |
| --- | --- | --- | --- | --- | --- | --- | --- | --- | --- | --- | --- | --- | --- | --- | --- | --- | --- | --- | --- |
|  | 1 | **FOH / South Elevation** |  | 2026-01-15 | 2026-02-17 |  |  |  |  |  |  |  |  |  |  |  |  |  |  |
| QTS-49471 |  | Zone 1 Gridlines 1-2 / South // Hang Sheathing for Metal Panels | 4d | 2026-01-15 | 2026-01-21 | QTS-49461 |  |  |  | 124d | 0d | True Metal Solutions, LLC | Construction | IGMP | Ron Carroll | Phase 1 | Construction | 01ADMIN |  |
| QTS-49481 |  | Zone 1 Gridlines 1-2 / South // Install Weather Barrier & Insulation | 5d | 2026-01-22 | 2026-01-28 | QTS-49471 |  |  |  | 124d | 0d | True Metal Solutions, LLC | Construction | IGMP | Sean Waisner | Phase 1 | Construction | 01ADMIN |  |
| QTS-49491 |  | Zone 1 Gridlines 1-2 / South // Inspect Weather Barrier | 1d | 2026-01-29 | 2026-01-29 | QTS-49481 |  |  |  | 124d | 0d | True Metal Solutions, LLC | Construction | IGMP | Sean Waisner | Phase 1 | Construction |  |  |
| QTS-49501 |  | Zone 1 Gridlines 1-2 / South // Install Metal Panels | 10d | 2026-01-30 | 2026-02-12 | QTS-49471, QTS-49481, QTS-49491 |  |  |  | 124d | 0d | True Metal Solutions, LLC | Construction | IGMP | Sean Waisner | Phase 1 | Construction |  |  |
| QTS-50501 |  | Zone 1 Gridlines 1-2 / South // Install Strip Glass Window Frames - Upper | 3d | 2026-02-13 | 2026-02-17 | QTS-6981, QTS-49461, QTS-49501 |  |  |  | 124d | 32d | Performance Contracting, Inc. |  | IGMP | Sean Waisner | Phase 1 | Construction | 01ADMIN |  |
|  | 2 | **Zone 2 / Exterior Finishes** |  | 2025-09-08 | 2026-05-11 |  |  |  |  |  |  |  |  |  |  |  |  |  |  |
|  | 1 | **Zone 2 / Exterior Finishes // South Elevation** |  | 2025-09-09 | 2026-05-11 |  |  |  |  |  |  |  |  |  |  |  |  |  |  |
| QTS-23801 |  | Zone 2 Gridlines 21-30 / South // Sack & Patch Panels | 6d | 2025-09-09 A | 2025-09-16 A | QTS-23621, QTS-21521 | 100% |  |  |  |  | Suntec Concrete Inc |  | IGMP | Ron Carroll | Phase 2 | Construction | 01ADMIN |  |
| QTS-24331 |  | Zone 2 Gridlines 21-30 / South // Power Wash Tilt Panels | 1d | 2025-09-17 A | 2025-09-17 A | QTS-23801 | 100% |  |  |  |  | Suntec Concrete Inc |  | IGMP | Ron Carroll | Phase 2 | Construction | 01ADMIN |  |
| QTS-24391 |  | Zone 2 Gridlines 21-30 / South // Prime & Paint Tilt Panels | 5d | 2025-11-12 A | 2025-11-20 A | QTS-23921, QTS-24331, QTS-5661 | 100% | 2025-11-10 | 2025-11-14 |  |  | Pennington Painting Company, LLC |  | IGMP | Ron Carroll | Phase 2 | Construction | 01ADMIN |  |
| QTS-24851 |  | Zone 2 Gridlines 21-30 / South // Caulk Panel Joints | 4d | 2025-11-26 A | 2025-12-01 A | QTS-24391 | 100% | 2025-11-21 | 2025-11-26 |  |  | Alpha Insulation & Waterproofing, Inc. |  | IGMP | Sean Waisner | Phase 2 | Construction | 01ADMIN |  |
| QTS-1004140 |  | Zone 2 Gridlines 21-30 / South // Inspection on Rebar for Downspout Stub Outs | 1d | 2026-01-14 A | 2026-01-14 A | QTS-1004130 | 100% |  |  |  |  | True Metal Solutions, LLC | Construction | IGMP | Ron Carroll |  | Construction | 01ADMIN | Phase 2 |
| QTS-1004160 |  | Zone 2 Gridlines 21-30 / South // Install Downspouts | 3d | 2026-01-14 A | 2026-01-16 A | QTS-1004150 FF | 100% |  |  |  |  | True Metal Solutions, LLC | Construction | IGMP | Ron Carroll |  | Construction | 01ADMIN | Phase 2 |
| QTS-25151 |  | Zone 2 Gridlines 21-30 / South // Install Collector Boxes | 2d | 2026-01-14 A | 2026-01-15 A | QTS-1002130, QTS-24851 | 100% |  |  |  |  | True Metal Solutions, LLC | Construction | IGMP | Ron Carroll |  | Construction | 01ADMIN | Phase 2 |
| QTS-1004150 |  | Zone 2 Gridlines 21-30 / South // Pour Concrete Pedestals for Downspout Stub Outs | 1d | 2026-01-15 A | 2026-01-15 A | QTS-1004140 | 100% |  |  |  |  | True Metal Solutions, LLC | Construction | IGMP | Ron Carroll |  | Construction | 01ADMIN | Phase 2 |
| QTS-1004130 |  | Zone 2 Gridlines 21-30 / South // Layout Downspout Stub Outs | 5d | 2026-01-16 A | 2026-01-19 A | QTS-25151 | 100% | 2026-01-16 | 2026-01-23 |  |  | True Metal Solutions, LLC | Construction | IGMP | Ron Carroll |  | Construction | 01ADMIN | Phase 2 |
| QTS-50091 |  | Zone 2 Gridlines 21-30 / South // Install QTS Signage | 2d | 2026-01-22 | 2026-01-23 | QTS-49471 |  |  |  | 141d | 76d |  |  | IGMP | Sean Waisner | Phase 1 | Construction | 01ADMIN |  |
| QTS-50611 |  | Zone 2 Gridlines 21-30 / South // Install Spandrel Glass Window Frames | 9d | 2026-01-30 | 2026-02-11 | QTS-1002140, QTS-24851 |  |  |  | 65d | 0d | Giroux Glass, Inc |  | IGMP | Sean Waisner | Phase 1 | Construction | 01ADMIN |  |
| QTS-25511 |  | Zone 2 Gridlines 21-30 / South // Frame for Metal Panels - Downspouts | 8d | 2026-02-12 | 2026-02-23 | QTS-50611, QTS-25151, QTS-24861, QTS-24851 |  |  |  | 65d | 0d | Performance Contracting, Inc. |  | IGMP | Sean Waisner | Phase 2 | Construction |  |  |
| QTS-50621 |  | Zone 2 Gridlines 21-30 / South // Install Spandrel Glass Window Glass | 6d | 2026-02-12 | 2026-02-19 | QTS-50611, QTS-18561 |  |  |  | 117d | 0d | Giroux Glass, Inc |  | IGMP | Sean Waisner | Phase 1 | Construction |  |  |
| QTS-50631 |  | Zone 2 Gridlines 21-30 / South // Install Spandrel Glass Window Exterior Caulking | 5d | 2026-02-20 | 2026-02-26 | QTS-50621 |  |  |  | 117d | 52d | Giroux Glass, Inc |  | IGMP | Sean Waisner | Phase 1 | Construction |  |  |
| QTS-1004220 |  | Zone 2 Gridlines 21-30 / South // Frame Metal Panels - Steel Stair Enclosure | 8d | 2026-02-24 | 2026-03-05 | QTS-25511 |  |  |  | 66d | 0d | True Metal Solutions, LLC | Construction | IGMP | Sean Waisner | Phase 1 | Construction | 01ADMIN |  |
| QTS-28941 |  | Zone 2 Gridlines 21-30 / South // Install Metal Panel Z Clips - Downspouts | 8d | 2026-02-24 | 2026-03-05 | QTS-25511, QTS-25821 |  |  |  | 65d | 0d | True Metal Solutions, LLC |  | IGMP | Sean Waisner | Phase 2 | Construction |  |  |
| QTS-28661 |  | Zone 2 Gridlines 21-30 / South // Set Louvered Metal Screen Wall | 10d | 2026-03-05 | 2026-03-18 | QTS-22861, QTS-101700 |  |  |  | 73d | 0d | True Metal Solutions, LLC |  | IGMP | Sean Waisner | Phase 2 | Construction |  |  |
| QTS-1004170 |  | Zone 2 Gridlines 21-30 / South // Install Metal Panel Trim - Downspouts | 4d | 2026-03-06 | 2026-03-11 | QTS-28941 |  |  |  | 65d | 0d | True Metal Solutions, LLC |  | IGMP | Sean Waisner | Phase 2 | Construction |  |  |
| QTS-1004230 |  | Zone 2 Gridlines 21-30 / South // Install Metal Panel Z Clips - Steel Stair Enclosure | 8d | 2026-03-06 | 2026-03-17 | QTS-28941, QTS-1004220 |  |  |  | 91d | 0d | True Metal Solutions, LLC | Construction | IGMP | Sean Waisner | Phase 1 | Construction | 01ADMIN |  |
| QTS-1004180 |  | Zone 2 Gridlines 21-30 / South // Install ACM Panels - Downspout #1 | 11d | 2026-03-12 | 2026-03-26 | QTS-1004170 |  |  |  | 65d | 0d | True Metal Solutions, LLC |  | IGMP | Sean Waisner | Phase 2 | Construction |  |  |
| QTS-1004240 |  | Zone 2 Gridlines 21-30 / South // Install Metal Panel Trim - Steel Stair Enclosure | 1d | 2026-03-18 | 2026-03-18 | QTS-1004230 |  |  |  | 91d | 26d | True Metal Solutions, LLC | Construction | IGMP | Sean Waisner | Phase 1 | Construction | 01ADMIN |  |
| QTS-1004190 |  | Zone 2 Gridlines 21-30 / South // Install ACM Panels - Downspout #2 | 10d | 2026-03-27 | 2026-04-09 | QTS-1004180 |  |  |  | 65d | 0d | True Metal Solutions, LLC |  | IGMP | Sean Waisner | Phase 2 | Construction |  |  |
| QTS-1004200 |  | Zone 2 Gridlines 21-30 / South // Install ACM Panels - Downspout #3 | 10d | 2026-04-10 | 2026-04-23 | QTS-1004190 |  |  |  | 65d | 0d | True Metal Solutions, LLC |  | IGMP | Sean Waisner | Phase 2 | Construction |  |  |
| QTS-1004250 |  | Zone 2 Gridlines 21-30 / South // Install ACM Panels - Stair Enclosure | 12d | 2026-04-24 | 2026-05-11 | QTS-1004240, QTS-1004200, QTS-1004230 |  |  |  | 65d | 0d | True Metal Solutions, LLC | Construction | IGMP | Sean Waisner | Phase 1 | Construction | 01ADMIN |  |
| QTS-50081 |  | Zone 2 Gridlines 21-30 / South // Electrical Rough In for Signage | 2d | 2026-04-24 | 2026-04-27 | QTS-1004200, QTS-49461 |  |  |  | 75d | 10d | Rosendin Electric, Inc |  | IGMP | Scott Masterson | Phase 1 | Construction | 01ADMIN |  |

Notes:
- QTS-24391: allucent_notes_20251014_152335: Jason Johnston on 2025-10-08 08:10: not done / Zack Goertz on 2025-10-14T14:48:26.113Z: Not started. Flow of work made us skip southside of zone 2. And jump to northside of zone 3. Also, should be a Ron Carroll task. / -ZG 10/14 / David Wiltberger on 2025-10-14 12:10: resequencing, / allucent_notes_20251021_145627: Jason Johnston on 2025-10-08 08:10: not done / Zack Goertz on 2025-10-14T14:48:26.113Z: Not started. Flow of work made us skip southside of zone 2. And jump to northside of zone 3. Also, should be a Ron Carroll task. / -ZG 10/14 / David Wiltberger on 2025-10-14 12:10: resequencing, / allucent_notes_20251027_224008: Jason Johnston on 2025-10-08 08:10: not done / Zack Goertz on 2025-10-14T14:48:26.113Z: Not started. Flow of work made us skip southside of zone 2. And jump to northside of zone 3. Also, should be a Ron Carroll task. / -ZG 10/14 / David Wiltberger on 2025-10-14 12:10: resequencing, / allucent_notes_20251028_163138: Jason Johnston on 2025-10-08 08:10: not done / Zack Goertz on 2025-10-14T14:48:26.113Z: Not started. Flow of work made us skip southside of zone 2. And jump to northside of zone 3. Also, should be a Ron Carroll task. / -ZG 10/14 / David Wiltberger on 2025-10-14 12:10: resequencing, / allucent_notes_20251104_160200: Jason Johnston on 2025-10-08 08:10: not done / Zack Goertz on 2025-10-14T14:48:26.113Z: Not started. Flow of work made us skip southside of zone 2. And jump to northside of zone 3. Also, should be a Ron Carroll task. / -ZG 10/14 / David Wiltberger on 2025-10-14 12:10: resequencing, / Jason Johnston on 2025-11-03 14:11: Moving out to accommodate campus telecom scope in area. / allucent_notes_20251111_182405: Jason Johnston on 2025-10-08 08:10: not done / Zack Goertz on 2025-10-14T14:48:26.113Z: Not started. Flow of work made us skip southside of zone 2. And jump to northside of zone 3. Also, should be a Ron Carroll task. / -ZG 10/14 / David Wiltberger on 2025-10-14 12:10: resequencing, / Jason Johnston on 2025-11-03 14:11: Moving out to accommodate campus telecom scope in area. / Jason Johnston on 2025-11-11 14:11: Starting 11/12. / allucent_notes_20251118_192630: Jason Johnston on 2025-10-08 08:10: not done / Zack Goertz on 2025-10-14T14:48:26.113Z: Not started. Flow of work made us skip southside of zone 2. And jump to northside of zone 3. Also, should be a Ron Carroll task. / -ZG 10/14 / David Wiltberger on 2025-10-14 12:10: resequencing, / Jason Johnston on 2025-11-03 14:11: Moving out to accommodate campus telecom scope in area. / Jason Johnston on 2025-11-11 14:11: Starting 11/12. / Chris Waddell on 2025-11-18T20:12:43.123Z: panels are primed, weather prevented final coat. / allucent_notes_20251202_153722: Jason Johnston on 2025-10-08 08:10: not done / Zack Goertz on 2025-10-14T14:48:26.113Z: Not started. Flow of work made us skip southside of zone 2. And jump to northside of zone 3. Also, should be a Ron Carroll task. / -ZG 10/14 / David Wiltberger on 2025-10-14 12:10: resequencing, / Jason Johnston on 2025-11-03 14:11: Moving out to accommodate campus telecom scope in area. / Jason Johnston on 2025-11-11 14:11: Starting 11/12. / Chris Waddell on 2025-11-18T20:12:43.123Z: panels are primed, weather prevented final coat. / allucent_notes: 2025-10-08 08:10 - User: Jason Johnston - Date Added: 2025-10-08 08:10 - Note: not done / 2025-10-14T14:48:26.113Z - User: Zack Goertz - Date Added: 2025-10-14T14:48:26.113Z - Note: Not started. Flow of work made us skip southside of zone 2. And jump to
- QTS-24851: allucent_notes_20251202_153722: Jason Johnston on 2025-11-24 13:11: Tie to Tes tank set for zone 2 / Jason Johnston on 2025-12-01 14:16: Finished early. / allucent_notes: 2025-11-24 13:11 - User: Jason Johnston - Date Added: 2025-11-24 13:11 - Note: Tie to Tes tank set for zone 2 / 2025-12-01 14:16 - User: Jason Johnston - Date Added: 2025-12-01 14:16 - Note: Finished early.
- QTS-1004140: allucent_notes_20251230_164549: Jason Johnston on 2025-12-02 14:16: Tie to BAM Crane removal from zone 2 / Freddy Arrizon on 2025-12-16 12:15: Procurement of scuppers in zone 2 is delayed. / Jason Johnston on 2025-12-30 16:35: No update / allucent_notes_20251202_153722: Jason Johnston on 2025-12-02 14:16: Tie to BAM Crane removal from zone 2 / allucent_notes_20251209_203830: Jason Johnston on 2025-12-02 14:16: Tie to BAM Crane removal from zone 2 / allucent_notes_20251216_165335: Jason Johnston on 2025-12-02 14:16: Tie to BAM Crane removal from zone 2 / Freddy Arrizon on 2025-12-16 12:15: Procurement of scuppers in zone 2 is delayed. / allucent_notes: 2025-12-02 14:16 - User: Jason Johnston - Date Added: 2025-12-02 14:16 - Note: Tie to BAM Crane removal from zone 2 / 2025-12-16 12:15 - User: Freddy Arrizon - Date Added: 2025-12-16 12:15 - Note: Procurement of scuppers in zone 2 is delayed. / 2025-12
- QTS-1004160: allucent_notes_20251230_164549: Jason Johnston on 2025-12-02 14:16: Tie to BAM Crane removal from zone 2 / Freddy Arrizon on 2025-12-16 12:15: Procurement of scuppers in zone 2 is delayed. / Jason Johnston on 2025-12-30 16:35: No update / allucent_notes_20251202_153722: Jason Johnston on 2025-12-02 14:16: Tie to BAM Crane removal from zone 2 / allucent_notes_20251209_203830: Jason Johnston on 2025-12-02 14:16: Tie to BAM Crane removal from zone 2 / allucent_notes_20251216_165335: Jason Johnston on 2025-12-02 14:16: Tie to BAM Crane removal from zone 2 / Freddy Arrizon on 2025-12-16 12:15: Procurement of scuppers in zone 2 is delayed. / allucent_notes: 2025-12-02 14:16 - User: Jason Johnston - Date Added: 2025-12-02 14:16 - Note: Tie to BAM Crane removal from zone 2 / 2025-12-16 12:15 - User: Freddy Arrizon - Date Added: 2025-12-16 12:15 - Note: Procurement of scuppers in zone 2 is delayed. / 2025-12
- QTS-25151: allucent_notes_20251230_164549: Jason Johnston on 2025-12-02 14:16: Tie to BAM Crane removal from zone 2 / Freddy Arrizon on 2025-12-16 12:15: Procurement of scuppers in zone 2 is delayed. / Jason Johnston on 2025-12-30 16:35: No update / allucent_notes_20251202_153722: Jason Johnston on 2025-12-02 14:16: Tie to BAM Crane removal from zone 2 / allucent_notes_20251209_203830: Jason Johnston on 2025-12-02 14:16: Tie to BAM Crane removal from zone 2 / allucent_notes_20251216_165335: Jason Johnston on 2025-12-02 14:16: Tie to BAM Crane removal from zone 2 / Freddy Arrizon on 2025-12-16 12:15: Procurement of scuppers in zone 2 is delayed. / allucent_notes: 2025-12-02 14:16 - User: Jason Johnston - Date Added: 2025-12-02 14:16 - Note: Tie to BAM Crane removal from zone 2 / 2025-12-16 12:15 - User: Freddy Arrizon - Date Added: 2025-12-16 12:15 - Note: Procurement of scuppers in zone 2 is delayed. / 2025-12
- QTS-1004150: allucent_notes_20251230_164549: Jason Johnston on 2025-12-02 14:16: Tie to BAM Crane removal from zone 2 / Freddy Arrizon on 2025-12-16 12:15: Procurement of scuppers in zone 2 is delayed. / Jason Johnston on 2025-12-30 16:35: No update / allucent_notes_20251202_153722: Jason Johnston on 2025-12-02 14:16: Tie to BAM Crane removal from zone 2 / allucent_notes_20251209_203830: Jason Johnston on 2025-12-02 14:16: Tie to BAM Crane removal from zone 2 / allucent_notes_20251216_165335: Jason Johnston on 2025-12-02 14:16: Tie to BAM Crane removal from zone 2 / Freddy Arrizon on 2025-12-16 12:15: Procurement of scuppers in zone 2 is delayed. / allucent_notes: 2025-12-02 14:16 - User: Jason Johnston - Date Added: 2025-12-02 14:16 - Note: Tie to BAM Crane removal from zone 2 / 2025-12-16 12:15 - User: Freddy Arrizon - Date Added: 2025-12-16 12:15 - Note: Procurement of scuppers in zone 2 is delayed. / 2025-12
- QTS-1004130: allucent_notes_20251230_164549: Jason Johnston on 2025-12-02 14:16: Tie to BAM Crane removal from zone 2 / Freddy Arrizon on 2025-12-16 12:15: Procurement of scuppers in zone 2 is delayed. / Jason Johnston on 2025-12-30 16:35: No update / allucent_notes_20251202_153722: Jason Johnston on 2025-12-02 14:16: Tie to BAM Crane removal from zone 2 / allucent_notes_20251209_203830: Jason Johnston on 2025-12-02 14:16: Tie to BAM Crane removal from zone 2 / allucent_notes_20251216_165335: Jason Johnston on 2025-12-02 14:16: Tie to BAM Crane removal from zone 2 / Freddy Arrizon on 2025-12-16 12:15: Procurement of scuppers in zone 2 is delayed. / allucent_notes: 2025-12-02 14:16 - User: Jason Johnston - Date Added: 2025-12-02 14:16 - Note: Tie to BAM Crane removal from zone 2 / 2025-12-16 12:15 - User: Freddy Arrizon - Date Added: 2025-12-16 12:15 - Note: Procurement of scuppers in zone 2 is delayed. / 2025-12

| ID | WBS | Activity | Duration | Start | Finish | Predecessors | Complete | Remaining | Planned start | Planned finish | Total float | Free float | Constraint | Subcontractor | Baseline | Layton Responsible Party | Phase-1 | Project Section | Allucent CSI Group | Project Section-1 | Phase-1-1 |
| --- | --- | --- | --- | --- | --- | --- | --- | --- | --- | --- | --- | --- | --- | --- | --- | --- | --- | --- | --- | --- | --- |
|  | 3 | **Zone 2 / Exterior Finishes // North Elevation** |  | 2025-09-08 | 2026-04-29 |  |  |  |  |  |  |  |  |  |  |  |  |  |  |  |  |
| QTS-1211 |  | Zone 2 Gridlines 21-30 / North // Sack & Patch Panels | 5d | 2025-09-08 A | 2025-09-12 A | QTS-23801 SS | 100% |  | 2025-09-17 | 2025-09-23 |  |  |  | Suntec Concrete Inc | IGMP | Ron Carroll | Phase 2 | Construction | 01ADMIN |  |  |
| QTS-3571 |  | Zone 2 Gridlines 21-30 / North // Power Wash Tilt Panels | 1d | 2025-09-15 A | 2025-09-15 A | QTS-1211 | 100% |  | 2025-09-24 | 2025-09-24 |  |  |  | Suntec Concrete Inc | IGMP | Ron Carroll | Phase 2 | Construction | 01ADMIN |  |  |
| QTS-3621 |  | Zone 2 Gridlines 21-30 / North // Prime & Paint Tilt Panels | 5d | 2025-09-16 A | 2025-09-19 A | QTS-3571 | 100% |  | 2025-09-25 | 2025-10-01 |  |  |  | Pennington Painting Company, LLC | IGMP | Ron Carroll | Phase 2 | Construction | 01ADMIN |  |  |
| QTS-5451 |  | Zone 2 Gridlines 21-30 / North // Caulk Panel Joints | 4d | 2025-09-22 A | 2025-09-25 A | QTS-3621 | 100% |  |  |  |  |  |  | Alpha Insulation & Waterproofing, Inc. | IGMP | Ron Carroll | Phase 2 | Construction |  |  |  |
| QTS-5461 |  | Zone 2 Gridlines 21-30 / North // Hang Exterior Doors & Frames | 2d | 2026-02-04 | 2026-02-05 | QTS-3621, QTS-99620, QTS-99630, QTS-5451 |  |  |  |  | 122d | 0d | start on or after 2026-02-04 | ISEC Incorporated | IGMP | Sean Waisner | Phase 2 | Construction | 01ADMIN |  |  |
| QTS-1221 |  | Zone 2 Gridlines 21-30 / North // Set Single Skin Metal Screen Wall | 10d | 2026-04-16 | 2026-04-29 | QTS-5461, QTS-25501 |  |  |  |  | 73d | 8d |  | True Metal Solutions, LLC | IGMP | Sean Waisner | Phase 2 | Construction | 01ADMIN |  |  |
|  | 3 | **Zone 3 / Exterior Finishes** |  | 2025-09-26 | 2026-07-10 |  |  |  |  |  |  |  |  |  |  |  |  |  |  |  |  |
|  | 3 | **Zone 3 / Exterior Finishes // North Elevation** |  | 2025-09-26 | 2026-04-15 |  |  |  |  |  |  |  |  |  |  |  |  |  |  |  |  |
| QTS-5471 |  | Zone 3 Gridlines 30-41 / North // Sack & Patch Panels | 7d | 2025-09-26 A | 2025-10-06 A | QTS-3561, QTS-23261 | 100% |  |  |  |  |  |  | Suntec Concrete Inc | IGMP | Ron Carroll | Phase 3 | Construction |  |  |  |
| QTS-6711 |  | Zone 3 Gridlines 30-41 / North // Power Wash Tilt Panels | 1d | 2025-10-07 A | 2025-10-07 A | QTS-5471 | 100% |  |  |  |  |  |  | Suntec Concrete Inc | IGMP | Ron Carroll | Phase 3 | Construction |  |  |  |
| QTS-6991 |  | Zone 3 Gridlines 30-41 / North // Prime & Paint Tilt Panels | 5d | 2025-10-08 A | 2025-10-14 A | QTS-5661, QTS-6711 | 100% |  |  |  |  |  |  | Pennington Painting Company, LLC | IGMP | Doug Hayes | Phase 3 | Construction | 01ADMIN |  |  |
| QTS-8531 |  | Zone 3 Gridlines 30-41 / North // Caulk Panel Joints | 3d | 2025-10-15 A | 2025-10-17 A | QTS-6991 | 100% |  |  |  |  |  |  | Alpha Insulation & Waterproofing, Inc. | IGMP | Doug Hayes | Phase 3 | Construction | 01ADMIN |  |  |
| QTS-50761 |  | Zone 3 Gridlines 30-41 / North // Field Measure OH Doors | 1d | 2025-10-20 A | 2025-10-20 A | QTS-8531 | 100% |  |  |  |  |  |  | D.H. Pace Company, Inc. | IGMP | Doug Hayes |  | Construction | 01ADMIN | Construction | Phase 2 |
| QTS-20901 |  | Zone 3 Gridlines 30-41 / North // Set Loading Dock Steel Frames | 3d | 2026-01-14 | 2026-01-16 | QTS-8551, QTS-15391 |  |  |  |  | 49d | 0d |  | SteelFab Texas, Inc | IGMP | Ron Carroll |  | Construction |  | Construction | Phase 3 |
| QTS-8551 |  | Zone 3 Gridlines 30-41 / North // Hang OH Doors | 6d | 2026-01-19 A | 2026-01-14 | QTS-6991, QTS-50771 | 100% | 0d | 2026-01-20 | 2026-01-27 | 49d | 0d |  | D.H. Pace Company, Inc. | IGMP | Ron Carroll |  | Construction |  | Construction | Phase 3 |
| QTS-21061 |  | Zone 3 Gridlines 30-41 / North // Install Dock Levelers | 3d | 2026-01-20 | 2026-01-22 | QTS-20901 |  |  |  |  | 49d | 0d |  | D.H. Pace Company, Inc. | IGMP | Ron Carroll |  | Construction |  | Construction | Phase 3 |
| QTS-21071 |  | Zone 3 Gridlines 30-41 / North // Install Dock Scissor Lift | 2d | 2026-01-20 | 2026-01-21 | QTS-20901 |  |  |  |  | 52d | 3d |  | D.H. Pace Company, Inc. | IGMP | Ron Carroll |  | Construction |  | Construction | Phase 3 |
| QTS-21371 |  | Zone 3 Gridlines 30-41 / North // Install Dock Bumpers | 2d | 2026-01-23 | 2026-01-26 | QTS-21061 |  |  |  |  | 49d | 0d |  | D.H. Pace Company, Inc. | IGMP | Ron Carroll |  | Construction |  | Construction | Phase 3 |
| QTS-21501 |  | Zone 3 Gridlines 30-41 / North // Tie In Electrical Connections to Dock Equipment | 5d | 2026-01-27 | 2026-02-02 | QTS-21071, QTS-21371 |  |  |  |  | 49d | 43d |  | D.H. Pace Company, Inc. | IGMP | Ron Carroll |  | Construction |  | Construction | Phase 3 |
| QTS-8541 |  | Zone 3 Gridlines 30-41 / North // Hang Exterior Doors & Frames | 2d | 2026-02-06 | 2026-02-09 | QTS-5461, QTS-6991, QTS-99630 |  |  |  |  | 130d | 0d |  | ISEC Incorporated | IGMP | Sean Waisner | Phase 3 | Construction | 01ADMIN |  |  |
| QTS-25501 |  | Zone 3 Gridlines 30-41 / North // Set Single Skin Metal Screen Wall | 5d | 2026-04-09 | 2026-04-15 | QTS-24581, QTS-25711 |  |  |  |  | 73d | 0d |  | True Metal Solutions, LLC | IGMP | Sean Waisner |  | Construction | 01ADMIN | Construction | Phase 3 |
|  | 2 | **Zone 3 / Exterior Finishes // East Elevation** |  | 2025-10-10 | 2026-05-18 |  |  |  |  |  |  |  |  |  |  |  |  |  |  |  |  |
| QTS-6701 |  | East Elevation // Sack & Patch Panels | 4d | 2025-10-10 A | 2025-10-17 A | QTS-5471, QTS-9691 | 100% |  | 2025-10-10 | 2025-10-15 |  |  |  | Suntec Concrete Inc | IGMP | Ron Carroll | Phase 3 | Construction | 01ADMIN |  |  |
| QTS-7661 |  | East Elevation // Power Wash Tilt Panels | 1d | 2025-12-03 A | 2025-12-03 A | QTS-6701, QTS-10931 | 100% |  |  |  |  |  |  | Suntec Concrete Inc | IGMP | Ron Carroll | Phase 3 | Construction | 01ADMIN |  |  |
| QTS-24621 |  | East Elevation // Set Window Frames | 3d | 2025-12-08 A | 2025-12-10 A | QTS-18561, QTS-10051 | 100% |  |  |  |  |  |  | Giroux Glass, Inc | IGMP | Sean Waisner | Phase 3 | Construction | 01ADMIN |  |  |
| QTS-24891 |  | East Elevation // Set Window Glass | 1d | 2025-12-11 A | 2025-12-11 A | QTS-24621, QTS-18561 | 100% |  |  |  |  |  |  | Giroux Glass, Inc | IGMP | Sean Waisner | Phase 3 | Construction | 01ADMIN |  |  |
| QTS-8521 |  | East Elevation // Prime & Paint Tilt Panels | 3d | 2025-12-11 A | 2026-01-05 A | QTS-6991, QTS-7661 | 100% |  | 2025-12-11 | 2025-12-15 |  |  |  | Pennington Painting Company, LLC | IGMP | Sean Waisner | Phase 3 | Construction | 01ADMIN |  |  |
| QTS-25141 |  | East Elevation // Caulk Windows | 2d | 2025-12-12 A | 2025-12-15 A | QTS-24891 | 100% |  |  |  |  |  |  | Giroux Glass, Inc | IGMP | Sean Waisner | Phase 3 | Construction | 01ADMIN |  |  |
| QTS-50741 |  | East Elevation // Field Measure OH Doors | 1d | 2026-01-05 A | 2026-01-05 A | QTS-10051 | 100% |  |  |  |  |  |  | D.H. Pace Company, Inc. | IGMP | Sean Waisner |  | Construction | 01ADMIN | Construction | Phase 2 |
| QTS-10051 |  | East Elevation // Caulk Panel Joints | 3d | 2026-01-06 A | 2026-01-09 A | QTS-8521 | 100% |  | 2026-01-06 | 2026-01-08 |  |  |  | Alpha Insulation & Waterproofing, Inc. | IGMP | Sean Waisner | Phase 3 | Construction | 01ADMIN |  |  |
| QTS-44291 |  | East Elevation // Hang OH Door Level 2 | 6d | 2026-01-19 A | 2026-01-20 A | QTS-10051, QTS-50751 | 100% |  | 2026-01-14 | 2026-01-22 |  |  |  | D.H. Pace Company, Inc. | IGMP | Ron Carroll |  | Construction |  | Construction | Phase 3 |
| QTS-44301 |  | East Elevation // Hang OH Door Level 1 | 6d | 2026-01-20 A | 2026-01-21 A | QTS-44291 FF | 100% |  | 2026-01-20 | 2026-01-27 |  |  |  | D.H. Pace Company, Inc. | IGMP | Ron Carroll |  | Construction |  | Construction | Phase 3 |
| QTS-50451 |  | East Elevation // Install Exterior Doors | 6d | 2026-01-20 | 2026-01-27 | QTS-44301, QTS-99630 |  |  |  |  | 139d | 106d |  | D.H. Pace Company, Inc. | IGMP | Ron Carroll |  | Construction |  | Construction | Phase 3 |
| QTS-25711 |  | East Elevation // Set Louvered Metal Screen Wall | 5d | 2026-04-02 | 2026-04-08 | QTS-24581, QTS-26341 |  |  |  |  | 73d | 0d |  | True Metal Solutions, LLC | IGMP | Sean Waisner |  | Construction | 01ADMIN | Construction | Phase 3 |
| QTS-14571 |  | East Elevation // Install Framing for Metal Panels | 3d | 2026-04-27 | 2026-04-29 | QTS-13591 |  |  |  |  | 60d | 0d |  | True Metal Solutions, LLC | IGMP | Sean Waisner | Phase 3 | Construction |  |  |  |
| QTS-15221 |  | East Elevation // Inspect Framing & Electrical | 1d | 2026-04-30 | 2026-04-30 | QTS-14571 |  |  |  |  | 60d | 0d |  | Performance Contracting, Inc. | IGMP | Sean Waisner | Phase 3 | Construction |  |  |  |
| QTS-15351 |  | East Elevation // Hang Soffit Sheathing | 4d | 2026-05-01 | 2026-05-06 | QTS-15221 |  |  |  |  | 60d | 0d |  | Performance Contracting, Inc. | IGMP | Sean Waisner | Phase 3 | Construction |  |  |  |
| QTS-16001 |  | East Elevation // Install ISO Board | 3d | 2026-05-07 | 2026-05-11 | QTS-15351 |  |  |  |  | 60d | 0d |  | Performance Contracting, Inc. | IGMP | Sean Waisner | Phase 3 | Construction |  |  |  |
| QTS-18231 |  | East Elevation // Install Soffit Panels | 5d | 2026-05-07 | 2026-05-13 | QTS-15351 |  |  |  |  | 63d | 30d |  | Performance Contracting, Inc. | IGMP | Sean Waisner | Phase 3 | Construction |  |  |  |
| QTS-16631 |  | East Elevation // Field Scan For Soffit Panels | 1d | 2026-05-12 | 2026-05-12 | QTS-16001 |  |  |  |  | 60d | 0d |  | Performance Contracting, Inc. | IGMP | Sean Waisner | Phase 3 | Construction |  |  |  |
| QTS-25571 |  | East Elevation // Rough Electrical for QTS Signage | 2d | 2026-05-13 | 2026-05-14 | QTS-16631 |  |  |  |  | 60d | 0d |  | Rosendin Electric, Inc | IGMP | Sean Waisner | Phase 3 | Construction |  |  |  |
| QTS-25921 |  | East Elevation // Install QTS Signage | 2d | 2026-05-15 | 2026-05-18 | QTS-25571 |  |  |  |  | 60d | 27d |  |  | IGMP | Sean Waisner | Phase 3 | Construction |  |  |  |

Notes:
- QTS-5461: allucent_notes_20251230_164549: Jason Johnston on 2025-09-30 15:09: Moving out a ways needs resequencing. / Zack Goertz on 2025-10-14T14:49:15.500Z: No doors here. Also, needs resequencing. Flow of work has zone 2 being last. / -ZG 10/14 / Jason Johnston on 2025-10-14 14:10: TIe to HM Door frame and HM Doors delivery - make two different line items. / allucent_notes_20251014_152335: Jason Johnston on 2025-09-30 15:09: Moving out a ways needs resequencing. / Zack Goertz on 2025-10-14T14:49:15.500Z: No doors here. Also, needs resequencing. Flow of work has zone 2 being last. / -ZG 10/14 / Jason Johnston on 2025-10-14 14:10: TIe to HM Door frame and HM Doors delivery - make two different line items. / allucent_notes_20251209_203830: Jason Johnston on 2025-09-30 15:09: Moving out a ways needs resequencing. / Zack Goertz on 2025-10-14T14:49:15.500Z: No doors here. Also, needs resequencing. Flow of work has zone 2 being last. / -ZG 10/14 / Jason Johnston on 2025-10-14 14:10: TIe to HM Door frame and HM Doors delivery - make two different line items. / allucent_notes_20251216_165335: Jason Johnston on 2025-09-30 15:09: Moving out a ways needs resequencing. / Zack Goertz on 2025-10-14T14:49:15.500Z: No doors here. Also, needs resequencing. Flow of work has zone 2 being last. / -ZG 10/14 / Jason Johnston on 2025-10-14 14:10: TIe to HM Door frame and HM Doors delivery - make two different line items. / allucent_notes: 2025-09-30 15:09 - User: Jason Johnston - Date Added: 2025-09-30 15:09 - Note: Moving out a ways needs resequencing. / 2025-10-14T14:49:15.500Z - User: Zack Goertz - Date Added: 2025-10-14T14:49:15.500Z - Note: No doors here. Also, needs resequencing. Fl
- QTS-6991: allucent_notes_20251014_152335: Zack Goertz on 2025-10-14T14:50:26.313Z: Should be a Ron Carroll task now. / -ZG 10/14 / allucent_notes: 2025-10-14T14:50:26.313Z - User: Zack Goertz - Date Added: 2025-10-14T14:50:26.313Z - Note: Should be a Ron Carroll task now. -ZG 10/14
- QTS-8541: allucent_notes_20251230_164549: Zack Goertz on 2025-10-21T17:22:13.142Z: Starting back of house. BOH is higher priority than Zone 3 / Zack Goertz on 2025-10-21T17:26:38.554Z: Ignore last comment. Exterior door has been installed into tilt panel wall / Jason Johnston on 2025-10-21 13:10: Procurement not until December / Zack Goertz on 2025-10-27T13:59:24.887Z: Exterior frames have been installed. Door projected to be here in January / allucent_notes_20251021_145627: Zack Goertz on 2025-10-21T17:22:13.142Z: Starting back of house. BOH is higher priority than Zone 3 / Zack Goertz on 2025-10-21T17:26:38.554Z: Ignore last comment. Exterior door has been installed into tilt panel wall / Jason Johnston on 2025-10-21 13:10: Procurement not until December / allucent_notes_20251027_224008: Zack Goertz on 2025-10-21T17:22:13.142Z: Starting back of house. BOH is higher priority than Zone 3 / Zack Goertz on 2025-10-21T17:26:38.554Z: Ignore last comment. Exterior door has been installed into tilt panel wall / Jason Johnston on 2025-10-21 13:10: Procurement not until December / Zack Goertz on 2025-10-27T13:59:24.887Z: Exterior frames have been installed. Door projected to be here in January / allucent_notes_20251209_203830: Zack Goertz on 2025-10-21T17:22:13.142Z: Starting back of house. BOH is higher priority than Zone 3 / Zack Goertz on 2025-10-21T17:26:38.554Z: Ignore last comment. Exterior door has been installed into tilt panel wall / Jason Johnston on 2025-10-21 13:10: Procurement not until December / Zack Goertz on 2025-10-27T13:59:24.887Z: Exterior frames have been installed. Door projected to be here in January / allucent_notes_20251216_165335: Zack Goertz on 2025-10-21T17:22:13.142Z: Starting back of house. BOH is higher priority than Zone 3 / Zack Goertz on 2025-10-21T17:26:38.554Z: Ignore last comment. Exterior door has been installed into tilt panel wall / Jason Johnston on 2025-10-21 13:10: Procurement not until December / Zack Goertz on 2025-10-27T13:59:24.887Z: Exterior frames have been installed. Door projected to be here in January / allucent_notes: 2025-10-21T17:22:13.142Z - User: Zack Goertz - Date Added: 2025-10-21T17:22:13.142Z - Note: Starting back of house. BOH is higher priority than Zone 3 / 2025-10-21T17:26:38.554Z - User: Zack Goertz - Date Added: 2025-10-21T17:26:38.554Z - Note: Ignore la
- QTS-7661: allucent_notes_20251021_145627: Jason Johnston on 2025-10-21 12:10: Starting in zone 1 south and moving to east last. / allucent_notes_20251028_163138: Jason Johnston on 2025-10-21 12:10: Starting in zone 1 south and moving to east last. / allucent_notes_20251104_160200: Jason Johnston on 2025-10-21 12:10: Starting in zone 1 south and moving to east last. / allucent_notes_20251111_182405: Jason Johnston on 2025-10-21 12:10: Starting in zone 1 south and moving to east last. / allucent_notes_20251118_192630: Jason Johnston on 2025-10-21 12:10: Starting in zone 1 south and moving to east last. / allucent_notes_20251202_153722: Jason Johnston on 2025-10-21 12:10: Starting in zone 1 south and moving to east last. / allucent_notes_20251209_203830: Jason Johnston on 2025-10-21 12:10: Starting in zone 1 south and moving to east last. / allucent_notes: 2025-10-21 12:10 - User: Jason Johnston - Date Added: 2025-10-21 12:10 - Note: Starting in zone 1 south and moving to east last.
- QTS-8521: allucent_notes_20251230_164549: Zack Goertz on 2025-10-21T17:23:13.983Z: Working on south exterior walls / Chris Waddell on 2025-12-09 14:24: Painters were waiting for waterproofing to end before painting, will star on Thursday after backfill is complete / Jason Johnston on 2025-12-09 14:35: Will start 12/11 / Chris Waddell on 2025-12-16 12:15: Suntec patchers are working on this elevation, PPC will do final coat Wednesday 12/17/25 / Chris Waddell on 2025-12-22 14:52: Waiting on Suntec to patch panels for final paint, will complete final on 12/23/25 / Jason Johnston on 2025-12-30 16:35: No update / allucent_notes_20251021_145627: Zack Goertz on 2025-10-21T17:23:13.983Z: Working on south exterior walls / allucent_notes_20251028_163138: Zack Goertz on 2025-10-21T17:23:13.983Z: Working on south exterior walls / allucent_notes_20251104_160200: Zack Goertz on 2025-10-21T17:23:13.983Z: Working on south exterior walls / allucent_notes_20251111_182405: Zack Goertz on 2025-10-21T17:23:13.983Z: Working on south exterior walls / allucent_notes_20251118_192630: Zack Goertz on 2025-10-21T17:23:13.983Z: Working on south exterior walls / allucent_notes_20251202_153722: Zack Goertz on 2025-10-21T17:23:13.983Z: Working on south exterior walls / allucent_notes_20251209_203830: Zack Goertz on 2025-10-21T17:23:13.983Z: Working on south exterior walls / Chris Waddell on 2025-12-09 14:24: Painters were waiting for waterproofing to end before painting, will star on Thursday after backfill is complete / Jason Johnston on 2025-12-09 14:35: Will start 12/11 / allucent_notes_20251216_165335: Zack Goertz on 2025-10-21T17:23:13.983Z: Working on south exterior walls / Chris Waddell on 2025-12-09 14:24: Painters were waiting for waterproofing to end before painting, will star on Thursday after backfill is complete / Jason Johnston on 2025-12-09 14:35: Will start 12/11 / Chris Waddell on 2025-12-16 12:15: Suntec patchers are working on this elevation, PPC will do final coat Wednesday 12/17/25 / allucent_notes: 2025-10-21T17:23:13.983Z - User: Zack Goertz - Date Added: 2025-10-21T17:23:13.983Z - Note: Working on south exterior walls / 2025-12-09 14:24 - User: Chris Waddell - Date Added: 2025-12-09 14:24 - Note: Painters were waiting for waterproofing to end bef

| ID | WBS | Activity | Duration | Start | Finish | Predecessors | Complete | Planned start | Planned finish | Total float | Free float | Subcontractor | Baseline | Layton Responsible Party | Phase-1 | Project Section | Allucent CSI Group | Project Section-1 | Phase-1-1 |
| --- | --- | --- | --- | --- | --- | --- | --- | --- | --- | --- | --- | --- | --- | --- | --- | --- | --- | --- | --- |
|  | 1 | **Zone 3 / Exterior Finishes // South Elevation** |  | 2025-10-01 | 2026-06-25 |  |  |  |  |  |  |  |  |  |  |  |  |  |  |
| QTS-9691 |  | Zone 3 Gridlines 30-41 / South // Sack & Patch Panels | 7d | 2025-10-01 A | 2025-10-09 A | QTS-5471 | 100% |  |  |  |  | Suntec Concrete Inc | IGMP | Ron Carroll | Phase 3 | Construction | 01ADMIN |  |  |
| QTS-10801 |  | Zone 3 Gridlines 30-41 / South // Power Wash Tilt Panels | 1d | 2025-10-10 A | 2025-10-10 A | QTS-9691 | 100% |  |  |  |  | Suntec Concrete Inc | IGMP | Ron Carroll | Phase 3 | Construction | 01ADMIN |  |  |
| QTS-10931 |  | Zone 3 Gridlines 30-41 / South // Prime & Paint Tilt Panels | 5d | 2025-11-21 A | 2025-12-02 A | QTS-10801, QTS-24391 | 100% | 2025-11-21 | 2025-12-01 |  |  | Pennington Painting Company, LLC | IGMP | Sean Waisner | Phase 3 | Construction | 01ADMIN |  |  |
| QTS-11911 |  | Zone 3 Gridlines 30-41 / South // Hang Exterior Doors & Frames | 2d | 2026-02-10 | 2026-02-11 | QTS-8541, QTS-10931, QTS-99630 |  |  |  | 138d |  | ISEC Incorporated | IGMP | Sean Waisner |  | Construction | 01ADMIN | Construction | Phase 3 |
| QTS-11861 |  | Zone 3 Gridlines 30-41 / South // Caulk Panel Joints | 2d | 2026-03-02 | 2026-03-03 | QTS-10931, QTS-101420, QTS-101180 |  |  |  | 44d | 11d | Alpha Insulation & Waterproofing, Inc. | IGMP | Sean Waisner | Phase 3 | Construction | 01ADMIN |  |  |
| QTS-1004120 |  | Zone 3 Gridlines 30-41 / South // Install Final Tilt Panel | 1d | 2026-03-18 | 2026-03-18 | QTS - 9720, QTS - 9490, QTS - 9230, QTS - 7100, QTS - 6870, QTS - 6610, QTS - 3120, QTS - 2890, QTS - 1750, QTS-15341, QTS-46751, QTS-15321, QTS-14311 |  |  |  | 33d | 0d | Suntec Concrete Inc | IGMP | Sean Waisner |  | Construction | 01ADMIN | Construction | Phase 3 |
| QTS-1004300 |  | Zone 3 Gridlines 30-41 / South // Sack & Patch Tilt Panel | 3d | 2026-03-19 | 2026-03-23 | QTS-1004120 |  |  |  | 51d | 0d | Suntec Concrete Inc | IGMP | Sean Waisner |  | Construction | 01ADMIN | Construction | Phase 3 |
| QTS-26341 |  | Zone 3 Gridlines 30-41 / South // Set Louvered Metal Screen Wall | 10d | 2026-03-19 | 2026-04-01 | QTS-24581, QTS-28661 |  |  |  | 73d | 0d | True Metal Solutions, LLC | IGMP | Sean Waisner |  | Construction |  | Construction | Phase 3 |
| QTS-9831 |  | Zone 3 Gridlines 30-41 / South // Install Collector Boxes | 2d | 2026-03-19 | 2026-03-20 | QTS-1004160, QTS-1004120, QTS-11861 |  |  |  | 33d | 0d | Progressive Roofing | IGMP | Sean Waisner |  | Construction | 01ADMIN | Construction | Phase 3 |
| QTS-1004260 |  | Zone 3 Gridlines 30-41 / South // Layout Downspout Stub Outs | 5d | 2026-03-23 | 2026-03-27 | QTS-9831 |  |  |  | 33d | 0d | True Metal Solutions, LLC | IGMP | Sean Waisner |  | Construction | 01ADMIN | Construction | Phase 2 |
| QTS-1004310 |  | Zone 3 Gridlines 30-41 / South // Prime & Paint Tilt Panel | 3d | 2026-03-24 | 2026-03-26 | QTS-1004300 |  |  |  | 51d | 18d | Suntec Concrete Inc | IGMP | Sean Waisner |  | Construction | 01ADMIN | Construction | Phase 3 |
| QTS-1004270 |  | Zone 3 Gridlines 30-41 / South // Inspection on Rebar for Downspout Stub Outs | 1d | 2026-03-30 | 2026-03-30 | QTS-1004260 |  |  |  | 33d | 0d | True Metal Solutions, LLC | IGMP | Sean Waisner |  | Construction | 01ADMIN | Construction | Phase 2 |
| QTS-1004280 |  | Zone 3 Gridlines 30-41 / South // Pour Concrete Pedestals for Downspout Stub Outs | 1d | 2026-03-31 | 2026-03-31 | QTS-1004270 |  |  |  | 33d | 0d | True Metal Solutions, LLC | IGMP | Sean Waisner |  | Construction | 01ADMIN | Construction | Phase 2 |
| QTS-1004290 |  | Zone 3 Gridlines 30-41 / South // Install Downspouts | 3d | 2026-04-01 | 2026-04-03 | QTS-1004280 |  |  |  | 33d | 0d | True Metal Solutions, LLC | IGMP | Sean Waisner |  | Construction | 01ADMIN | Construction | Phase 2 |
| QTS-50641 |  | Zone 3 Gridlines 30-41 / South // Install Spandrel Glass Window Frames - Openings 1&2 | 6d | 2026-04-06 | 2026-04-13 | QTS-1004290, QTS-11861 |  |  |  | 33d | 0d | Giroux Glass, Inc | IGMP | Sean Waisner | Phase 1 | Construction |  |  |  |
| QTS-50671 |  | Zone 3 Gridlines 30-41 / South // Install Spandrel Glass Window Frames - Openings 3&4 | 6d | 2026-04-14 | 2026-04-21 | QTS-50641 |  |  |  | 33d | 0d | Giroux Glass, Inc | IGMP | Sean Waisner | Phase 1 | Construction |  |  |  |
| QTS-13591 |  | Zone 3 Gridlines 30-41 / South // Frame for Metal Panels | 3d | 2026-04-22 | 2026-04-24 | QTS-1004310, QTS-1004220, QTS-50671 |  |  |  | 33d | 0d | True Metal Solutions, LLC | IGMP | Sean Waisner | Phase 3 | Construction |  |  |  |
| QTS-50651 |  | Zone 3 Gridlines 30-41 / South // Install Spandrel Glass Window Glass | 8d | 2026-04-22 | 2026-05-01 | QTS-50641, QTS-50671, QTS-18561 |  |  |  | 65d | 0d | Giroux Glass, Inc | IGMP | Sean Waisner | Phase 1 | Construction |  |  |  |
| QTS-1004340 |  | Zone 2 Gridlines 30-41 / South // Install Metal Panel Z Clips - Downspouts | 8d | 2026-04-27 | 2026-05-06 | QTS-13591 |  |  |  | 33d | 0d | True Metal Solutions, LLC | IGMP | Sean Waisner | Phase 2 | Construction |  |  |  |
| QTS-14051 |  | Zone 3 Gridlines 30-41 / South // Inspect Framing | 1d | 2026-04-27 | 2026-04-27 | QTS-13591 |  |  |  | 43d | 0d | Performance Contracting, Inc. | IGMP | Sean Waisner | Phase 3 | Construction |  |  |  |
| QTS-15681 |  | Zone 3 Gridlines 30-41 / South // Field Scan For Metal Panels | 1d | 2026-04-28 | 2026-04-28 | QTS-14051, QTS-50671 |  |  |  | 43d | 10d | True Metal Solutions, LLC | IGMP | Sean Waisner | Phase 3 | Construction |  |  |  |
| QTS-50661 |  | Zone 3 Gridlines 30-41 / South // Install Spandrel Glass Window Exterior Caulking | 6d | 2026-05-04 | 2026-05-11 | QTS-50651 |  |  |  | 65d | 32d | Giroux Glass, Inc | IGMP | Sean Waisner | Phase 1 | Construction |  |  |  |
| QTS-1004350 |  | Zone 2 Gridlines 30-41 / South // Install Metal Panel Trim | 4d | 2026-05-07 | 2026-05-12 | QTS-1004340 |  |  |  | 33d | 0d | True Metal Solutions, LLC | IGMP | Sean Waisner | Phase 2 | Construction |  |  |  |
| QTS-17291 |  | Zone 3 Gridlines 30-41 / South // Install ACM Panels - Downspouts #1 | 11d | 2026-05-13 | 2026-05-28 | QTS-15681, QTS-15801, QTS-1004350 |  |  |  | 33d | 0d | True Metal Solutions, LLC | IGMP | Sean Waisner | Phase 3 | Construction |  |  |  |
| QTS-1004320 |  | Zone 3 Gridlines 30-41 / South // Install ACM Panels - Downspouts #2 | 10d | 2026-05-29 | 2026-06-11 | QTS-17291 |  |  |  | 33d | 0d | True Metal Solutions, LLC | IGMP | Sean Waisner | Phase 3 | Construction |  |  |  |
| QTS-1004330 |  | Zone 3 Gridlines 30-41 / South // Install ACM Panels - Downspouts #3 | 10d | 2026-06-12 | 2026-06-25 | QTS-1004320 |  |  |  | 33d | 0d | True Metal Solutions, LLC | IGMP | Sean Waisner | Phase 3 | Construction |  |  |  |

Notes:
- QTS-9691: allucent_notes_20251014_152335: Jason Johnston on 2025-10-07 12:10: Working around the building switched East and South elevation order. / allucent_notes: 2025-10-07 12:10 - User: Jason Johnston - Date Added: 2025-10-07 12:10 - Note: Working around the building switched East and South elevation order.
- QTS-10931: allucent_notes_20251014_152335: Zack Goertz on 2025-10-14T14:51:31.259Z: Needs to be a Ron Carrol task. Sequencing changed. Waiting for Suntec and Alpha to be done in that area. / -ZG 10/14 / Jason Johnston on 2025-10-14 14:10: Moving out to resequence. Will plan with Waddell / allucent_notes_20251021_145627: Zack Goertz on 2025-10-14T14:51:31.259Z: Needs to be a Ron Carrol task. Sequencing changed. Waiting for Suntec and Alpha to be done in that area. / -ZG 10/14 / Jason Johnston on 2025-10-14 14:10: Moving out to resequence. Will plan with Waddell / allucent_notes_20251027_224008: Zack Goertz on 2025-10-14T14:51:31.259Z: Needs to be a Ron Carrol task. Sequencing changed. Waiting for Suntec and Alpha to be done in that area. / -ZG 10/14 / Jason Johnston on 2025-10-14 14:10: Moving out to resequence. Will plan with Waddell / allucent_notes_20251028_163138: Zack Goertz on 2025-10-14T14:51:31.259Z: Needs to be a Ron Carrol task. Sequencing changed. Waiting for Suntec and Alpha to be done in that area. / -ZG 10/14 / Jason Johnston on 2025-10-14 14:10: Moving out to resequence. Will plan with Waddell / allucent_notes_20251104_160200: Zack Goertz on 2025-10-14T14:51:31.259Z: Needs to be a Ron Carrol task. Sequencing changed. Waiting for Suntec and Alpha to be done in that area. / -ZG 10/14 / Jason Johnston on 2025-10-14 14:10: Moving out to resequence. Will plan with Waddell / allucent_notes_20251111_182405: Zack Goertz on 2025-10-14T14:51:31.259Z: Needs to be a Ron Carrol task. Sequencing changed. Waiting for Suntec and Alpha to be done in that area. / -ZG 10/14 / Jason Johnston on 2025-10-14 14:10: Moving out to resequence. Will plan with Waddell / allucent_notes_20251118_192630: Zack Goertz on 2025-10-14T14:51:31.259Z: Needs to be a Ron Carrol task. Sequencing changed. Waiting for Suntec and Alpha to be done in that area. / -ZG 10/14 / Jason Johnston on 2025-10-14 14:10: Moving out to resequence. Will plan with Waddell / allucent_notes_20251202_153722: Zack Goertz on 2025-10-14T14:51:31.259Z: Needs to be a Ron Carrol task. Sequencing changed. Waiting for Suntec and Alpha to be done in that area. / -ZG 10/14 / Jason Johnston on 2025-10-14 14:10: Moving out to resequence. Will plan with Waddell / Jason Johnston on 2025-12-01 14:18: Paint delayed due to short day Wednesday. / allucent_notes: 2025-10-14T14:51:31.259Z - User: Zack Goertz - Date Added: 2025-10-14T14:51:31.259Z - Note: Needs to be a Ron Carrol task. Sequencing changed. Waiting for Suntec and Alpha to be done in that area. -ZG 10/14 / 2025-10-14 14:10 - User: Jason Johnston - Dat
- QTS-11861: allucent_notes_20251209_203830: Chris Waddell on 2025-12-09 14:25: Waiting on BZI crane to vacate the area. / Jason Johnston on 2025-12-09 14:36: Waiting for crane to leave area to resume work. / allucent_notes: 2025-12-09 14:25 - User: Chris Waddell - Date Added: 2025-12-09 14:25 - Note: Waiting on BZI crane to vacate the area. / 2025-12-09 14:36 - User: Jason Johnston - Date Added: 2025-12-09 14:36 - Note: Waiting for crane to leave area to resume work.
- QTS-9831: allucent_notes_20251202_153722: Jason Johnston on 2025-11-24T20:40:40.210Z: Add line for scupper fabrication. / allucent_notes_20251209_203830: Jason Johnston on 2025-11-24T20:40:40.210Z: Add line for scupper fabrication. / allucent_notes: 2025-11-24T20:40:40.210Z - User: Jason Johnston - Date Added: 2025-11-24T20:40:40.210Z - Note: Add line for scupper fabrication.
- QTS-1004260: allucent_notes_20251230_164549: Jason Johnston on 2025-12-02 14:16: Tie to BAM Crane removal from zone 2 / Freddy Arrizon on 2025-12-16 12:15: Procurement of scuppers in zone 2 is delayed. / Jason Johnston on 2025-12-30 16:35: No update / allucent_notes_20251202_153722: Jason Johnston on 2025-12-02 14:16: Tie to BAM Crane removal from zone 2 / allucent_notes_20251209_203830: Jason Johnston on 2025-12-02 14:16: Tie to BAM Crane removal from zone 2 / allucent_notes_20251216_165335: Jason Johnston on 2025-12-02 14:16: Tie to BAM Crane removal from zone 2 / Freddy Arrizon on 2025-12-16 12:15: Procurement of scuppers in zone 2 is delayed. / allucent_notes: 2025-12-02 14:16 - User: Jason Johnston - Date Added: 2025-12-02 14:16 - Note: Tie to BAM Crane removal from zone 2 / 2025-12-16 12:15 - User: Freddy Arrizon - Date Added: 2025-12-16 12:15 - Note: Procurement of scuppers in zone 2 is delayed. / 2025-12
- QTS-1004270: allucent_notes_20251230_164549: Jason Johnston on 2025-12-02 14:16: Tie to BAM Crane removal from zone 2 / Freddy Arrizon on 2025-12-16 12:15: Procurement of scuppers in zone 2 is delayed. / Jason Johnston on 2025-12-30 16:35: No update / allucent_notes_20251202_153722: Jason Johnston on 2025-12-02 14:16: Tie to BAM Crane removal from zone 2 / allucent_notes_20251209_203830: Jason Johnston on 2025-12-02 14:16: Tie to BAM Crane removal from zone 2 / allucent_notes_20251216_165335: Jason Johnston on 2025-12-02 14:16: Tie to BAM Crane removal from zone 2 / Freddy Arrizon on 2025-12-16 12:15: Procurement of scuppers in zone 2 is delayed. / allucent_notes: 2025-12-02 14:16 - User: Jason Johnston - Date Added: 2025-12-02 14:16 - Note: Tie to BAM Crane removal from zone 2 / 2025-12-16 12:15 - User: Freddy Arrizon - Date Added: 2025-12-16 12:15 - Note: Procurement of scuppers in zone 2 is delayed. / 2025-12
- QTS-1004280: allucent_notes_20251230_164549: Jason Johnston on 2025-12-02 14:16: Tie to BAM Crane removal from zone 2 / Freddy Arrizon on 2025-12-16 12:15: Procurement of scuppers in zone 2 is delayed. / Jason Johnston on 2025-12-30 16:35: No update / allucent_notes_20251202_153722: Jason Johnston on 2025-12-02 14:16: Tie to BAM Crane removal from zone 2 / allucent_notes_20251209_203830: Jason Johnston on 2025-12-02 14:16: Tie to BAM Crane removal from zone 2 / allucent_notes_20251216_165335: Jason Johnston on 2025-12-02 14:16: Tie to BAM Crane removal from zone 2 / Freddy Arrizon on 2025-12-16 12:15: Procurement of scuppers in zone 2 is delayed. / allucent_notes: 2025-12-02 14:16 - User: Jason Johnston - Date Added: 2025-12-02 14:16 - Note: Tie to BAM Crane removal from zone 2 / 2025-12-16 12:15 - User: Freddy Arrizon - Date Added: 2025-12-16 12:15 - Note: Procurement of scuppers in zone 2 is delayed. / 2025-12
- QTS-1004290: allucent_notes_20251230_164549: Jason Johnston on 2025-12-02 14:16: Tie to BAM Crane removal from zone 2 / Freddy Arrizon on 2025-12-16 12:15: Procurement of scuppers in zone 2 is delayed. / Jason Johnston on 2025-12-30 16:35: No update / allucent_notes_20251202_153722: Jason Johnston on 2025-12-02 14:16: Tie to BAM Crane removal from zone 2 / allucent_notes_20251209_203830: Jason Johnston on 2025-12-02 14:16: Tie to BAM Crane removal from zone 2 / allucent_notes_20251216_165335: Jason Johnston on 2025-12-02 14:16: Tie to BAM Crane removal from zone 2 / Freddy Arrizon on 2025-12-16 12:15: Procurement of scuppers in zone 2 is delayed. / allucent_notes: 2025-12-02 14:16 - User: Jason Johnston - Date Added: 2025-12-02 14:16 - Note: Tie to BAM Crane removal from zone 2 / 2025-12-16 12:15 - User: Freddy Arrizon - Date Added: 2025-12-16 12:15 - Note: Procurement of scuppers in zone 2 is delayed. / 2025-12

| ID | WBS | Activity | Duration | Start | Finish | Predecessors | Complete | Remaining | Planned start | Planned finish | Total float | Free float | Subcontractor | Baseline | Layton Responsible Party | Project Section | Allucent CSI Group | Level | Location | Project Section-1 | Phase-1-1 |
| --- | --- | --- | --- | --- | --- | --- | --- | --- | --- | --- | --- | --- | --- | --- | --- | --- | --- | --- | --- | --- | --- |
|  | 4 | **Exterior Punch List** |  | 2026-04-03 | 2026-07-10 |  |  |  |  |  |  |  |  |  |  |  |  |  |  |  |  |
| QTS-29461 |  | Exterior // Contractor Punch List - Zone 1 & FOH | 10d | 2026-04-03 | 2026-04-16 | QTS-1004110, QTS-1002210, QTS-5481, QTS-25181, QTS-28731, QTS-6981, QTS-6981 FF, QTS-3201, QTS-43091, QTS-49501, QTS-50121, QTS-9841, QTS-50681, QTS-50361, QTS-50401, QTS-50441, QTS-50491, QTS-50601, QTS-99860, QTS-99740, QTS-99800, QTS-99820, QTS-99140, QTS-101700, QTS-50501 |  |  |  |  | 92d |  | Structure Tone / Layton Construction | IGMP | Sean Waisner | Construction |  |  |  |  |  |
| QTS-101680 |  | Exterior // Contractor Punch List - Zone 2 | 10d | 2026-05-12 | 2026-05-26 | QTS-50081, QTS-1004250, QTS-50091, QTS-28661, QTS-50631, QTS-1221 |  |  |  |  | 65d |  | Structure Tone / Layton Construction | IGMP | Sean Waisner | Construction |  |  |  |  |  |
| QTS-101690 |  | Exterior // Contractor Punch List - Zone 3 & BOH | 10d | 2026-06-26 | 2026-07-10 | QTS-1004330, QTS-17291, QTS-50661, QTS-26341, QTS-50451, QTS-18231, QTS-25921, QTS-8541 |  |  |  |  | 33d |  | Structure Tone / Layton Construction | IGMP | Sean Waisner | Construction |  |  |  |  |  |
|  | 7 | **Site Improvements** |  | 2025-01-09 | 2026-05-19 |  |  |  |  |  |  |  |  |  |  |  |  |  |  |  |  |
|  | 14 | **EPCOR Approval Impact** |  | 2025-01-09 | 2026-02-24 |  |  |  |  |  |  |  |  |  |  |  |  |  |  |  |  |
| QTS-47500 |  | DC1 Civil/Wet Utility IFP Drawings Received/Completed by Kimley-Horn/Design Team | 1d | 2025-01-09 A | 2025-01-09 A | QTS-1371 SS | 100% |  |  |  |  |  |  |  | Jason Johnston |  |  |  |  |  |  |
| QTS-47510 |  | DC1 Civil/Wet Utility IFP Drawings Submitted to EPCOR by Kimley-Horn/Design Team | 94d | 2025-01-10 A | 2025-05-22 A | QTS-47500 | 100% |  |  |  |  |  |  |  | Jason Johnston |  |  |  |  |  |  |
| QTS-47520 |  | DC1 Civil/Wet Utility IFP Drawings EPCOR Approval | 48d | 2025-05-23 A | 2026-01-20 | QTS-47510 | 92% | 4d | 2025-05-23 | 2025-07-31 | 11d | 0d | Structure Tone / Layton Construction |  | Jason Johnston | Construction | 01ADMIN |  |  |  |  |
| QTS-99020 |  | DC1 Civil/Wet Utility IFP Drawings Maricopa County Approval | 15d | 2026-01-21 | 2026-02-10 | QTS-47520 |  |  |  |  | 11d | 0d | Structure Tone / Layton Construction |  | Jason Johnston | Construction | 01ADMIN |  |  |  |  |
| QTS-99010 |  | Public Water Line Drawing Review & Coordination | 10d | 2026-02-11 | 2026-02-24 | QTS-47520, QTS-99020 |  |  |  |  | 11d | 0d | Structure Tone / Layton Construction |  | Jason Johnston | Construction |  |  |  |  |  |
|  | 2 | **Site Improvements / Area C South Phase 3** |  |  |  |  |  |  |  |  |  |  |  |  |  |  |  |  |  |  |  |
|  | 3 | **Site Improvements / Area A West Phase 1** |  |  |  |  |  |  |  |  |  |  |  |  |  |  |  |  |  |  |  |
|  | 1 | **Site Improvements / Area B North Phase 2** |  |  |  |  |  |  |  |  |  |  |  |  |  |  |  |  |  |  |  |
|  | 4 | **Site Improvements / Area D East Phase 4** |  |  |  |  |  |  |  |  |  |  |  |  |  |  |  |  |  |  |  |
|  | 5 | **Site Improvements / Zone 1 North - West** |  | 2025-08-14 | 2026-05-11 |  |  |  |  |  |  |  |  |  |  |  |  |  |  |  |  |
| QTS-47061 |  | Zone 1 North - West // Excavate, Install, & Backfill Storm B Line | 5d | 2025-08-14 A | 2025-08-20 A | QTS-19811, QTS-47351, QTS-14381, QTS-14891 | 100% |  |  |  |  |  |  | IGMP | Jason Johnston | Construction |  | Level 1 | Site Work | Construction |  |
| QTS-49661 |  | Zone 1 North - West // Inspection Storm B Line | 1d | 2025-08-29 A | 2025-08-29 A | QTS-47351, QTS-19811, QTS-47061 | 100% |  | 2025-09-15 | 2025-09-15 |  |  |  | IGMP | Jason Johnston | Construction | 01ADMIN | Level 1 | Site Work | Construction |  |
| QTS-47081 |  | Zone 1 North - West // Excavate, Install, & Backfill Fire Water Line | 3d | 2026-02-25 | 2026-02-27 | QTS-47061, QTS-49661, QTS-99010 |  |  |  |  | 14d | 0d |  | IGMP | Jason Johnston | Construction | 01ADMIN | Level 1 | Site Work | Construction |  |
| QTS-49671 |  | Zone 1 North - West // Inspection Fire Water Line | 1d | 2026-03-02 | 2026-03-02 | QTS-49661, QTS-47081 |  |  |  |  | 14d | 0d |  | IGMP | Jason Johnston | Construction |  | Level 1 | Site Work | Construction |  |
| QTS-47071 |  | Zone 1 North - West // Excavate, Install, & Backfill Domestic Water Line | 3d | 2026-03-03 | 2026-03-05 | QTS-47081, QTS-49671, QTS-15541, QTS-15701, QTS-99010 |  |  |  |  | 14d | 0d |  | IGMP | Jason Johnston | Construction |  | Level 1 | Site Work | Construction |  |
| QTS-49681 |  | Zone 1 North - West // Inspection Domestic Water Line | 1d | 2026-03-06 | 2026-03-06 | QTS-47071 |  |  |  |  | 14d | 0d |  | IGMP | Jason Johnston | Construction |  | Level 1 | Site Work | Construction |  |
| QTS-48871 |  | Zone 1 North - West // Excavate & Pour CMU Footings | 3d | 2026-03-09 | 2026-03-11 | QTS-47071, QTS-49681 |  |  |  |  | 14d | 0d |  | IGMP | Jason Johnston | Construction |  | Level 1 | Site Work | Construction |  |
| QTS-48881 |  | Zone 1 North - West // Place CMU Block Wall | 3d | 2026-03-12 | 2026-03-16 | QTS-48871 |  |  |  |  | 14d | 0d |  | IGMP | Jason Johnston | Construction |  | Level 1 | Site Work | Construction |  |
| QTS-47091 |  | Zone 1 North - West // Rough Grade | 3d | 2026-03-17 | 2026-03-19 | QTS-47061, QTS-47071, QTS-48881 |  |  |  |  | 14d | 0d |  | IGMP | Jason Johnston | Construction |  | Level 1 | Site Work | Construction |  |
| QTS-47101 |  | Zone 1 North - West // Stake Curbs | 1d | 2026-03-20 | 2026-03-20 | QTS-47091 |  |  |  |  | 16d | 2d |  | IGMP | Jason Johnston | Construction |  | Level 1 | Site Work | Construction |  |
| QTS-47121 |  | Zone 1 North - West // Install Underground Grounding Ring | 3d | 2026-03-20 | 2026-03-24 | QTS-47091 |  |  |  |  | 14d | 0d |  | IGMP | Jason Johnston | Construction |  | Underground | Site Work | Construction | Phase 1 |
| QTS-47111 |  | Zone 1 North - West // Excavate, Install, & Backfill Electrical for Site Lighting | 3d | 2026-03-25 | 2026-03-27 | QTS-47091, QTS-47121, QTS-47141 SS |  |  |  |  | 14d | 0d |  | IGMP | Jason Johnston | Construction |  | Level 1 | Site Work | Construction |  |
| QTS-47141 |  | Zone 1 North - West // Install Irrigation Sleeves | 5d | 2026-03-25 | 2026-03-31 | QTS-47101, QTS-47121 |  |  |  |  | 14d | 0d |  | IGMP | Jason Johnston | Construction |  | Level 1 | Site Work | Construction |  |
| QTS-47131 |  | Zone 1 North - West // Grade for Curb | 2d | 2026-03-30 | 2026-03-31 | QTS-47101, QTS-47111 |  |  |  |  | 14d | 0d |  | IGMP | Jason Johnston | Construction |  | Level 1 | Site Work | Construction |  |
| QTS-47151 |  | Zone 1 North - West // Stringline for Curb | 2d | 2026-04-01 | 2026-04-02 | QTS-47131 |  |  |  |  | 14d | 0d |  | IGMP | Jason Johnston | Construction |  | Level 1 | Site Work | Construction |  |
| QTS-47171 |  | Zone 1 North - West // Machine Curb | 1d | 2026-04-03 | 2026-04-03 | QTS-47151, QTS-47141 |  |  |  |  | 14d | 0d |  | IGMP | Jason Johnston | Construction |  | Level 1 | Site Work | Construction |  |
| QTS-47181 |  | Zone 1 North - West // Form & Place Curb Tie Ins | 1d | 2026-04-06 | 2026-04-06 | QTS-47171 |  |  |  |  | 14d | 0d |  | IGMP | Jason Johnston | Construction |  | Level 1 | Site Work | Construction |  |
| QTS-47161 |  | Zone 1 North - West // Drill & Reinforce Light Pole Bases | 8d | 2026-04-07 | 2026-04-16 | QTS-47111, QTS-47181 |  |  |  |  | 14d | 0d |  | IGMP | Jason Johnston | Construction |  | Level 1 | Site Work | Construction |  |
| QTS-47191 |  | Zone 1 North - West // Install Irrigation Main Lines | 4d | 2026-04-07 | 2026-04-10 | QTS-47181 |  |  |  |  | 24d | 0d |  | IGMP | Jason Johnston | Construction |  | Level 1 | Site Work | Construction |  |
| QTS-47211 |  | Zone 1 North - West // Prep & Place Heavy Duty Concrete | 5d | 2026-04-07 | 2026-04-13 | QTS-47181 |  |  |  |  | 22d | 0d |  | IGMP | Jason Johnston | Construction |  | Level 1 | Site Work | Construction |  |
| QTS-47231 |  | Zone 1 North - West // Install Irrigation Laterals | 4d | 2026-04-13 | 2026-04-16 | QTS-47191 |  |  |  |  | 24d | 10d |  | IGMP | Jason Johnston | Construction |  | Level 1 | Site Work | Construction |  |
| QTS-47241 |  | Zone 1 North - West // Prep & Place Medium Duty Asphalt Pavement | 3d | 2026-04-14 | 2026-04-16 | QTS-47211, QTS-47171, QTS-47181 |  |  |  |  | 24d | 0d |  | IGMP | Jason Johnston | Construction |  | Level 1 | Site Work | Construction |  |
| QTS-47221 |  | Zone 1 North - West // Stub Up Electrical to Light Poles | 4d | 2026-04-17 | 2026-04-22 | QTS-47161 |  |  |  |  | 14d | 0d |  | IGMP | Jason Johnston | Construction |  | Level 1 | Site Work | Construction |  |
| QTS-47271 |  | Zone 1 North - West // Utility Adjustments (Raise Cans & Collars) | 2d | 2026-04-17 | 2026-04-20 | QTS-47241 |  |  |  |  | 24d | 0d |  | IGMP | Jason Johnston | Construction |  | Level 1 | Site Work | Construction |  |
| QTS-47311 |  | Zone 1 North - West // Site Striping | 1d | 2026-04-21 | 2026-04-21 | QTS-47271 |  |  |  |  | 24d | 7d |  | IGMP | Jason Johnston | Construction |  | Level 1 | Site Work | Construction |  |
| QTS-47251 |  | Zone 1 North - West // Pour Light Pole Bases | 1d | 2026-04-23 | 2026-04-23 | QTS-47221 |  |  |  |  | 14d | 0d |  | IGMP | Jason Johnston | Construction |  | Level 1 | Site Work | Construction |  |
| QTS-47201 |  | Zone 1 North - West // Prep & Place Sidewalks | 5d | 2026-04-24 | 2026-04-30 | QTS-47181, QTS-47171, QTS-47121, QTS-47211, QTS-47251 |  |  |  |  | 14d | 0d |  | IGMP | Jason Johnston | Construction |  | Level 1 | Site Work | Construction |  |
| QTS-47261 |  | Zone 1 North - West // Install Landscaping & Planting | 4d | 2026-05-01 | 2026-05-06 | QTS-47231, QTS-47201 |  |  |  |  | 14d | 0d |  | IGMP | Jason Johnston | Construction |  | Level 1 | Site Work | Construction |  |
| QTS-47281 |  | Zone 1 North - West // Set Light Poles | 2d | 2026-05-01 | 2026-05-04 | QTS-47251, QTS-47201 |  |  |  |  | 14d | 0d |  | IGMP | Jason Johnston | Construction |  | Level 1 | Site Work | Construction |  |
| QTS-47321 |  | Zone 1 North - West // Install Signage | 1d | 2026-05-01 | 2026-05-01 | QTS-47311, QTS-47201 |  |  |  |  | 17d | 3d |  | IGMP | Jason Johnston | Construction |  | Level 1 | Site Work | Construction |  |
| QTS-47291 |  | Zone 1 North - West // Pull Electrical Wire & Make Up to Light Poles | 3d | 2026-05-05 | 2026-05-07 | QTS-47281 |  |  |  |  | 14d | 0d |  | IGMP | Jason Johnston | Construction |  | Level 1 | Site Work | Construction |  |
| QTS-47331 |  | Zone 1 North - West // Place DG | 3d | 2026-05-07 | 2026-05-11 | QTS-47261, QTS-47321 |  |  |  |  | 14d |  |  | IGMP | Jason Johnston | Construction |  | Level 1 | Site Work | Construction |  |
| QTS-47301 |  | Zone 1 North - West // Sack & Patch Light Pole Bases | 2d | 2026-05-08 | 2026-05-11 | QTS-47291 |  |  |  |  | 14d |  |  | IGMP | Jason Johnston | Construction |  | Level 1 | Site Work | Construction |  |

Notes:
- QTS-47520: allucent_notes_20251230_164549: Jason Johnston on 2025-08-26 10:08: Received update from QTS that they submitted round 4 of comments and is now expected to approve 9/5. / Jason Johnston on 2025-10-07 14:10: Approval pushed again / Jason Johnston on 2025-10-21 08:10: Pushed another week. / Jason Johnston on 2025-10-27 11:10: Update per Chris Perales text on 10/24/25 / Jason Johnston on 2025-12-02 08:13: No EPCOR Approval / allucent_notes: Jason Johnston on 2025-08-26 10:08: Received update from QTS that they submitted round 4 of comments and is now expected to approve 9/5. / allucent_notes_20251014_152335: Jason Johnston on 2025-08-26 10:08: Received update from QTS that they submitted round 4 of comments and is now expected to approve 9/5. / Jason Johnston on 2025-10-07 14:10: Approval pushed again / allucent_notes_20251021_145627: Jason Johnston on 2025-08-26 10:08: Received update from QTS that they submitted round 4 of comments and is now expected to approve 9/5. / Jason Johnston on 2025-10-07 14:10: Approval pushed again / Jason Johnston on 2025-10-21 08:10: Pushed another week. / allucent_notes_20251027_224008: Jason Johnston on 2025-08-26 10:08: Received update from QTS that they submitted round 4 of comments and is now expected to approve 9/5. / Jason Johnston on 2025-10-07 14:10: Approval pushed again / Jason Johnston on 2025-10-21 08:10: Pushed another week. / Jason Johnston on 2025-10-27 11:10: Update per Chris Perales text on 10/24/25 / allucent_notes_20251028_163138: Jason Johnston on 2025-08-26 10:08: Received update from QTS that they submitted round 4 of comments and is now expected to approve 9/5. / Jason Johnston on 2025-10-07 14:10: Approval pushed again / Jason Johnston on 2025-10-21 08:10: Pushed another week. / Jason Johnston on 2025-10-27 11:10: Update per Chris Perales text on 10/24/25 / allucent_notes_20251104_160200: Jason Johnston on 2025-08-26 10:08: Received update from QTS that they submitted round 4 of comments and is now expected to approve 9/5. / Jason Johnston on 2025-10-07 14:10: Approval pushed again / Jason Johnston on 2025-10-21 08:10: Pushed another week. / Jason Johnston on 2025-10-27 11:10: Update per Chris Perales text on 10/24/25 / allucent_notes_20251111_182405: Jason Johnston on 2025-08-26 10:08: Received update from QTS that they submitted round 4 of comments and is now expected to approve 9/5. / Jason Johnston on 2025-10-07 14:10: Approval pushed again / Jason Johnston on 2025-10-21 08:10: Pushed another week. / Jason Johnston on 2025-10-27 11:10: Update per Chris Perales text on 10/24/25 / allucent_notes_20251118_192630: Jason Johnston on 2025-08-26 10:08: Received update from QTS that they submitted round 4 of comments and is now expected to approve 9/5. / Jason Johnston on 2025-10-07 14:10: Approval pushed again / Jason Johnston on 2025-10-21 08:10: Pushed another week. / Jason Johnston on 2025-10-27 11:10: Update per Chris Perales text on 10/24/25 / allucent_notes_20251202_153722: Jason Johnston on 2025-08-26 10:08: Received update from QTS that they submitted round 4 of comments and is now expected to approve 9/5. / Jason Johnston on 2025-10-07 14:10: Approval pushed again / Jason Johnston on 2025-10-21 08:10: Pushed another week. / Jason Johnston on 2025-10-27 11:10: Update per Chris Perales text on 10/24/25 / Jason Johnston on 2025-12-02 08:13: No EPCOR Approval / allucent_notes_20251209_203830: Jason Johnston on 2025-08-26 10:08: Received update from QTS that they submitted round 4 of comments and is now expected to approve 9/5. / Jason Johnston on 2025-10-07 14:10: Approval pushed again / Jason Johnston on 2025-10-21 08:10: Pushed another week. / Jason Johnston on 2025-10-27 11:10: Update per Chris Perales text on 10/24/25 / Jason Johnston on 2025-12-02 08:13: No EPCOR Approval / allucent_notes_20251216_165335: Jason Johnston on 2025-08-26 10:08: Received update from QTS that they submitted round 4 of comments and is now expected to approve 9/5. / Jason Johnston on 2025-10-07 14:10: Approval pushed again / Jason Johnston on 2025-10-21 08:10: Pushed another week. / Jason Johnston on 2025-10-27 11:10: Update per Chris Perales text on 10/24/25 / Jason Johnston on 2025-12-02 08:13: No EPCOR Approval / allucent_notes: 2025-08-26 10:08 - User: Jason Johnston - Date Added: 2025-08-26 10:08 - Note: Received update from QTS that they submitted round 4 of comments and is now expected to approve 9/5. / 2025-10-07 14:10 - User: Jason Johnston - Date Added: 2025-10-07 14:10 -

| ID | WBS | Activity | Type | Duration | Start | Finish | Predecessors | Complete | Planned start | Planned finish | Total float | Free float | Level | Location | Project Section-1 | Baseline | Layton Responsible Party | Project Section | Allucent CSI Group | Phase-1-1 |
| --- | --- | --- | --- | --- | --- | --- | --- | --- | --- | --- | --- | --- | --- | --- | --- | --- | --- | --- | --- | --- |
|  | 6 | **Site Improvements / Zone 1 South - West** |  |  | 2025-07-16 | 2026-05-14 |  |  |  |  |  |  |  |  |  |  |  |  |  |  |
| QTS-47351 |  | Zone 1 South - West // Excavate, Install, & Backfill Storm B Line |  | 3d | 2025-07-16 A | 2025-08-06 A | QTS-1371 SS | 100% | 2025-07-16 | 2025-07-18 |  |  | Level 1 | Site Work | Construction | IGMP | Jason Johnston | Construction | 01ADMIN |  |
| QTS-49741 |  | Zone 1 South - West // Inspection for Storm B Line |  | 1d | 2025-08-07 A | 2025-08-07 A | QTS-47351 | 100% |  |  |  |  | Level 1 | Site Work | Construction | IGMP | Jason Johnston | Construction | 01ADMIN |  |
| QTS-50841 |  | Zone 1 South - West // Camelback West Entrance Closure | milestone | 0d | 2025-10-10 A | 2025-10-10 A | QTS-1371 SS | 100% | 2025-10-24 | 2025-10-24 |  |  | Level 1 | Site Work | Construction | IGMP | Jason Johnston | Construction | 01ADMIN |  |
| QTS-50821 |  | Zone 1 South - West // Excavate, Install, & Backfill Storm A Line |  | 3d | 2025-10-29 A | 2025-10-31 A | QTS-50841 SS | 100% |  |  |  |  | Level 1 | Site Work | Construction | IGMP | Jason Johnston | Construction | 01ADMIN |  |
| QTS-50831 |  | Zone 1 South - West // Inspection for Storm A Line |  | 1d | 2025-11-03 A | 2025-11-03 A | QTS-50821 | 100% |  |  |  |  | Level 1 | Site Work | Construction | IGMP | Jason Johnston | Construction | 01ADMIN |  |
| QTS-49561 |  | Zone 1 South - West // Excavate, Install, & Backfill Storm Trench Drain to Storm Line B |  | 3d | 2026-01-14 | 2026-01-16 | QTS-47351, QTS-49741, QTS-100720 |  |  |  | 40d | 0d | Level 1 | Site Work | Construction | IGMP | Jason Johnston | Construction | 01ADMIN |  |
| QTS-49751 |  | Zone 1 South - West // Inspection for Storm Trench Drain to Storm Line B |  | 1d | 2026-01-20 | 2026-01-20 | QTS-49741, QTS-49561 |  |  |  | 40d | 29d | Level 1 | Site Work | Construction | IGMP | Jason Johnston | Construction | 01ADMIN |  |
| QTS-47361 |  | Zone 1 South - West // Excavate, Install, & Backfill Sanitary Line |  | 3d | 2026-02-25 | 2026-02-27 | QTS-47351, QTS-18031 SS, QTS-20761, QTS-99010 |  |  |  | 11d | 0d | Level 1 | Site Work | Construction | IGMP | Jason Johnston | Construction |  |  |
| QTS-49761 |  | Zone 1 South - West // Inspection for Sanitary Line |  | 1d | 2026-03-02 | 2026-03-02 | QTS-49741, QTS-47361 |  |  |  | 11d | 0d | Level 1 | Site Work | Construction | IGMP | Jason Johnston | Construction |  |  |
| QTS-47371 |  | Zone 1 South - West // Excavate, Install, & Backfill Fire Water Line |  | 3d | 2026-03-03 | 2026-03-05 | QTS-47351, QTS-47361, QTS-49761, QTS-49751 |  |  |  | 11d | 0d | Level 1 | Site Work | Construction | IGMP | Jason Johnston | Construction |  |  |
| QTS-49771 |  | Zone 1 South - West // Inspection for Fire Water Line |  | 1d | 2026-03-06 | 2026-03-06 | QTS-49741, QTS-49761, QTS-47371 |  |  |  | 11d | 0d | Level 1 | Site Work | Construction | IGMP | Jason Johnston | Construction |  |  |
| QTS-47381 |  | Zone 1 South - West // Excavate, Install, & Backfill Domestic Water Line |  | 3d | 2026-03-09 | 2026-03-11 | QTS-47371, QTS-49771 |  |  |  | 11d | 0d | Level 1 | Site Work | Construction | IGMP | Jason Johnston | Construction |  |  |
| QTS-49781 |  | Zone 1 South - West // Inspection for Domestic Water Line |  | 1d | 2026-03-12 | 2026-03-12 | QTS-49771, QTS-47381 |  |  |  | 11d | 0d | Level 1 | Site Work | Construction | IGMP | Jason Johnston | Construction |  |  |
| QTS-47391 |  | Zone 1 South - West // Rough Grade |  | 3d | 2026-03-13 | 2026-03-17 | QTS-47351, QTS-47381, QTS-20761, QTS-25181, QTS-49781, QTS-50831 |  |  |  | 11d | 0d | Level 1 | Site Work | Construction | IGMP | Jason Johnston | Construction |  |  |
| QTS-47401 |  | Zone 1 South - West // Stake Curbs |  | 1d | 2026-03-18 | 2026-03-18 | QTS-47391 |  |  |  | 13d | 2d | Level 1 | Site Work | Construction | IGMP | Jason Johnston | Construction |  |  |
| QTS-47411 |  | Zone 1 South - West // Install Underground Grounding Ring |  | 3d | 2026-03-18 | 2026-03-20 | QTS-47391 |  |  |  | 11d | 0d | Underground | Site Work | Construction | IGMP | Jason Johnston | Construction |  | Phase 1 |
| QTS-47421 |  | Zone 1 South - West // Install Irrigation Sleeves |  | 5d | 2026-03-23 | 2026-03-27 | QTS-47401, QTS-47411 |  |  |  | 11d | 0d | Level 1 | Site Work | Construction | IGMP | Jason Johnston | Construction |  |  |
| QTS-47431 |  | Zone 1 South - West // Excavate, Install, & Backfill Electrical for Site Lighting |  | 3d | 2026-03-30 | 2026-04-01 | QTS-47391, QTS-47411, QTS-47421 |  |  |  | 11d | 0d | Level 1 | Site Work | Construction | IGMP | Jason Johnston | Construction |  |  |
| QTS-47441 |  | Zone 1 South - West // Grade for Curb |  | 2d | 2026-04-02 | 2026-04-03 | QTS-47401, QTS-47431 |  |  |  | 11d | 0d | Level 1 | Site Work | Construction | IGMP | Jason Johnston | Construction |  |  |
| QTS-47461 |  | Zone 1 South - West // Stringline for Curb |  | 2d | 2026-04-06 | 2026-04-07 | QTS-47441 |  |  |  | 11d | 0d | Level 1 | Site Work | Construction | IGMP | Jason Johnston | Construction |  |  |
| QTS-47471 |  | Zone 1 South - West // Machine Curb |  | 1d | 2026-04-08 | 2026-04-08 | QTS-47461, QTS-47421 |  |  |  | 11d | 0d | Level 1 | Site Work | Construction | IGMP | Jason Johnston | Construction |  |  |
| QTS-47481 |  | Zone 1 South - West // Form & Place Curb Tie Ins |  | 1d | 2026-04-09 | 2026-04-09 | QTS-47471 |  |  |  | 11d | 0d | Level 1 | Site Work | Construction | IGMP | Jason Johnston | Construction |  |  |
| QTS-47451 |  | Zone 1 South - West // Drill & Reinforce Light Pole Bases |  | 8d | 2026-04-10 | 2026-04-21 | QTS-47431, QTS-47481 |  |  |  | 11d | 0d | Level 1 | Site Work | Construction | IGMP | Jason Johnston | Construction |  |  |
| QTS-47491 |  | Zone 1 South - West // Install Irrigation Main Lines |  | 4d | 2026-04-10 | 2026-04-15 | QTS-47481 |  |  |  | 21d | 0d | Level 1 | Site Work | Construction | IGMP | Jason Johnston | Construction |  |  |
| QTS-47641 |  | Zone 1 South - West // Prep & Place Medium Duty Concrete |  | 3d | 2026-04-10 | 2026-04-14 | QTS-47481 |  |  |  | 26d | 0d | Level 1 | Site Work | Construction | IGMP | Jason Johnston | Construction |  |  |
| QTS-47531 |  | Zone 1 South - West // Prep & Place Medium Duty Asphalt Pavement |  | 3d | 2026-04-15 | 2026-04-17 | QTS-47471, QTS-47481, QTS-47641 |  |  |  | 26d | 0d | Level 1 | Site Work | Construction | IGMP | Jason Johnston | Construction |  |  |
| QTS-47521 |  | Zone 1 South - West // Install Irrigation Laterals |  | 4d | 2026-04-16 | 2026-04-21 | QTS-47491 |  |  |  | 21d | 10d | Level 1 | Site Work | Construction | IGMP | Jason Johnston | Construction |  |  |
| QTS-47571 |  | Zone 1 South - West // Utility Adjustments (Raise Cans & Collars) |  | 2d | 2026-04-20 | 2026-04-21 | QTS-47531 |  |  |  | 26d | 0d | Level 1 | Site Work | Construction | IGMP | Jason Johnston | Construction |  |  |
| QTS-47511 |  | Zone 1 South - West // Stub Up Electrical to Light Poles |  | 4d | 2026-04-22 | 2026-04-27 | QTS-47451 |  |  |  | 11d | 0d | Level 1 | Site Work | Construction | IGMP | Jason Johnston | Construction |  |  |
| QTS-47601 |  | Zone 1 South - West // Site Striping |  | 1d | 2026-04-22 | 2026-04-22 | QTS-47571 |  |  |  | 26d | 9d | Level 1 | Site Work | Construction | IGMP | Jason Johnston | Construction |  |  |
| QTS-47551 |  | Zone 1 South - West // Pour Light Pole Bases |  | 1d | 2026-04-28 | 2026-04-28 | QTS-47511 |  |  |  | 11d | 0d | Level 1 | Site Work | Construction | IGMP | Jason Johnston | Construction |  |  |
| QTS-47541 |  | Zone 1 South - West // Prep & Place Sidewalks |  | 5d | 2026-04-29 | 2026-05-05 | QTS-47481, QTS-47471, QTS-47411, QTS-47551 |  |  |  | 11d | 0d | Level 1 | Site Work | Construction | IGMP | Jason Johnston | Construction |  |  |
| QTS-47561 |  | Zone 1 South - West // Set Light Poles |  | 2d | 2026-05-06 | 2026-05-07 | QTS-47551, QTS-47541 |  |  |  | 11d | 0d | Level 1 | Site Work | Construction | IGMP | Jason Johnston | Construction |  |  |
| QTS-47591 |  | Zone 1 South - West // Install Landscaping & Planting |  | 4d | 2026-05-06 | 2026-05-11 | QTS-47521, QTS-47541 |  |  |  | 11d | 0d | Level 1 | Site Work | Construction | IGMP | Jason Johnston | Construction |  |  |
| QTS-47611 |  | Zone 1 South - West // Install Signage |  | 1d | 2026-05-06 | 2026-05-06 | QTS-47601, QTS-47541 |  |  |  | 17d |  | Level 1 | Site Work | Construction | IGMP | Jason Johnston | Construction |  |  |
| QTS-47581 |  | Zone 1 South - West // Pull Electrical Wire & Make Up to Light Poles |  | 3d | 2026-05-08 | 2026-05-12 | QTS-47561 |  |  |  | 11d | 0d | Level 1 | Site Work | Construction | IGMP | Jason Johnston | Construction |  |  |
| QTS-47631 |  | Zone 1 South - West // Place DG |  | 3d | 2026-05-12 | 2026-05-14 | QTS-47591 |  |  |  | 11d |  | Level 1 | Site Work | Construction | IGMP | Jason Johnston | Construction |  |  |
| QTS-47621 |  | Zone 1 South - West // Sack & Patch Light Pole Bases |  | 2d | 2026-05-13 | 2026-05-14 | QTS-47581 |  |  |  | 11d |  | Level 1 | Site Work | Construction | IGMP | Jason Johnston | Construction |  |  |

Notes:
- QTS-50841: allucent_notes_20251027_224008: Jason Johnston on 2025-10-27 11:10: Closed early due to rain / allucent_notes: 2025-10-27 11:10 - User: Jason Johnston - Date Added: 2025-10-27 11:10 - Note: Closed early due to rain
- QTS-50821: allucent_notes_20251027_224008: Jason Johnston on 2025-10-27 14:10: Waiting for OEG to complete work in area. held up by TMH-01 additional holes / allucent_notes_20251028_163138: Jason Johnston on 2025-10-27 14:10: Waiting for OEG to complete work in area. held up by TMH-01 additional holes / allucent_notes_20251104_160200: Jason Johnston on 2025-10-27 14:10: Waiting for OEG to complete work in area. held up by TMH-01 additional holes / allucent_notes: 2025-10-27 14:10 - User: Jason Johnston - Date Added: 2025-10-27 14:10 - Note: Waiting for OEG to complete work in area. held up by TMH-01 additional holes
- QTS-49561: allucent_notes_20251230_164549: Jason Johnston on 2025-10-21 14:10: Moving this until after loading dock drains are complete. / Jason Johnston on 2025-11-12T00:48:42.883Z: tes tanks / allucent_notes_20251021_145627: Jason Johnston on 2025-10-21 14:10: Moving this until after loading dock drains are complete. / allucent_notes_20251027_224008: Jason Johnston on 2025-10-21 14:10: Moving this until after loading dock drains are complete. / allucent_notes_20251028_163138: Jason Johnston on 2025-10-21 14:10: Moving this until after loading dock drains are complete. / allucent_notes_20251104_160200: Jason Johnston on 2025-10-21 14:10: Moving this until after loading dock drains are complete. / allucent_notes_20251111_182405: Jason Johnston on 2025-10-21 14:10: Moving this until after loading dock drains are complete. / Jason Johnston on 2025-11-12T00:48:42.883Z: tes tanks / allucent_notes_20251118_192630: Jason Johnston on 2025-10-21 14:10: Moving this until after loading dock drains are complete. / Jason Johnston on 2025-11-12T00:48:42.883Z: tes tanks / allucent_notes: 2025-10-21 14:10 - User: Jason Johnston - Date Added: 2025-10-21 14:10 - Note: Moving this until after loading dock drains are complete. / 2025-11-12T00:48:42.883Z - User: Jason Johnston - Date Added: 2025-11-12T00:48:42.883Z - Note: tes tanks
- QTS-49751: allucent_notes_20251230_164549: Jason Johnston on 2025-11-12T00:48:48.643Z: tes tanks / allucent_notes_20251111_182405: Jason Johnston on 2025-11-12T00:48:48.643Z: tes tanks / allucent_notes_20251118_192630: Jason Johnston on 2025-11-12T00:48:48.643Z: tes tanks / allucent_notes: 2025-11-12T00:48:48.643Z - User: Jason Johnston - Date Added: 2025-11-12T00:48:48.643Z - Note: tes tanks

| ID | WBS | Activity | Duration | Start | Finish | Predecessors | Complete | Planned start | Planned finish | Total float | Free float | Level | Location | Project Section-1 | Baseline | Layton Responsible Party | Project Section | Allucent CSI Group | Phase-1-1 |
| --- | --- | --- | --- | --- | --- | --- | --- | --- | --- | --- | --- | --- | --- | --- | --- | --- | --- | --- | --- |
|  | 8 | **Site Improvements / Zone 2 North** |  | 2025-07-10 | 2026-05-08 |  |  |  |  |  |  |  |  |  |  |  |  |  |  |
| QTS-48551 |  | Zone 2 North // Excavate, Install, & Backfill Storm Line F Main & Branch Lines Below Duct Bank | 6d | 2025-07-10 A | 2025-07-30 A | QTS-1431, QTS-48241 SS | 100% | 2025-07-10 | 2025-07-17 |  |  | Level 1 | Site Work | Construction | IGMP | Jason Johnston | Construction | 01ADMIN |  |
| QTS-49541 |  | Zone 2 North // Excavate, Install, & Backfill Storm Line F Main & Branch Lines Above | 7d | 2025-07-31 A | 2025-09-16 A | QTS-48551 | 100% | 2025-07-31 | 2025-08-08 |  |  | Level 1 | Site Work | Construction | IGMP | Jason Johnston | Construction | 01ADMIN |  |
| QTS-49551 |  | Zone 2 North // Duct Bank Installation | 3d | 2025-07-31 A | 2025-08-04 A | QTS-48551 | 100% |  |  |  |  | Level 1 | Site Work | Construction | IGMP | Jason Johnston | Construction | 01ADMIN |  |
| QTS-49791 |  | Zone 2 North // Inspection for Storm Line F Main & Branch Lines | 1d | 2025-09-17 A | 2025-09-17 A | QTS-49541 | 100% |  |  |  |  | Level 1 | Site Work | Construction | IGMP | Jason Johnston | Construction | 01ADMIN |  |
| QTS-48571 |  | Zone 2 North // Excavate, Install, & Backfill Fire Water Line | 3d | 2026-02-25 | 2026-02-27 | QTS-48551, QTS-48551 FF, QTS-49541, QTS-49791, QTS-99010 |  |  |  | 37d | 0d | Level 1 | Site Work | Construction | IGMP | Jason Johnston | Construction | 01ADMIN |  |
| QTS-49801 |  | Zone 2 North // Inspection for Fire Water Line | 1d | 2026-03-02 | 2026-03-02 | QTS-49791, QTS-48571 |  |  |  | 37d | 0d | Level 1 | Site Work | Construction | IGMP | Jason Johnston | Construction | 01ADMIN |  |
| QTS-48581 |  | Zone 2 North // Excavate, Install, & Backfill Domestic Water Line | 3d | 2026-03-03 | 2026-03-05 | QTS-48571, QTS-49801, QTS-99010 |  |  |  | 37d | 0d | Level 1 | Site Work | Construction | IGMP | Jason Johnston | Construction | 01ADMIN |  |
| QTS-49811 |  | Zone 2 North // Inspection for Domestic Water Line | 1d | 2026-03-06 | 2026-03-06 | QTS-49801, QTS-48581 |  |  |  | 37d | 0d | Level 1 | Site Work | Construction | IGMP | Jason Johnston | Construction |  |  |
| QTS-48591 |  | Zone 2 North // Rough Grade | 3d | 2026-03-09 | 2026-03-11 | QTS-48551, QTS-48581, QTS-49811 |  |  |  | 37d | 0d | Level 1 | Site Work | Construction | IGMP | Jason Johnston | Construction |  |  |
| QTS-48601 |  | Zone 2 North // Stake Curbs | 1d | 2026-03-12 | 2026-03-12 | QTS-48591 |  |  |  | 39d | 2d | Level 1 | Site Work | Construction | IGMP | Jason Johnston | Construction |  |  |
| QTS-48611 |  | Zone 2 North // Install Underground Grounding Ring | 3d | 2026-03-12 | 2026-03-16 | QTS-48591 |  |  |  | 37d | 0d | Underground | Site Work | Construction | IGMP | Jason Johnston | Construction |  | Phase 1 |
| QTS-48621 |  | Zone 2 North // Install Irrigation Sleeves | 5d | 2026-03-17 | 2026-03-23 | QTS-48601, QTS-48611 |  |  |  | 37d | 0d | Level 1 | Site Work | Construction | IGMP | Jason Johnston | Construction |  |  |
| QTS-48631 |  | Zone 2 North // Excavate, Install, & Backfill Electrical for Site Lighting | 3d | 2026-03-24 | 2026-03-26 | QTS-48591, QTS-48611, QTS-48621 |  |  |  | 37d | 0d | Level 1 | Site Work | Construction | IGMP | Jason Johnston | Construction |  |  |
| QTS-48641 |  | Zone 2 North // Grade for Curb | 2d | 2026-03-27 | 2026-03-30 | QTS-48601, QTS-48631 |  |  |  | 37d | 0d | Level 1 | Site Work | Construction | IGMP | Jason Johnston | Construction |  |  |
| QTS-48661 |  | Zone 2 North // Stringline for Curb | 2d | 2026-03-31 | 2026-04-01 | QTS-48641 |  |  |  | 37d | 0d | Level 1 | Site Work | Construction | IGMP | Jason Johnston | Construction |  |  |
| QTS-48671 |  | Zone 2 North // Machine Curb | 1d | 2026-04-02 | 2026-04-02 | QTS-48661, QTS-48621 |  |  |  | 37d | 0d | Level 1 | Site Work | Construction | IGMP | Jason Johnston | Construction |  |  |
| QTS-48681 |  | Zone 2 North // Form & Place Curb Tie Ins | 1d | 2026-04-03 | 2026-04-03 | QTS-48671 |  |  |  | 37d | 0d | Level 1 | Site Work | Construction | IGMP | Jason Johnston | Construction |  |  |
| QTS-48651 |  | Zone 2 North // Drill & Reinforce Light Pole Bases | 8d | 2026-04-06 | 2026-04-15 | QTS-48631, QTS-48681 |  |  |  | 37d | 0d | Level 1 | Site Work | Construction | IGMP | Jason Johnston | Construction |  |  |
| QTS-48691 |  | Zone 2 North // Install Irrigation Main Lines | 4d | 2026-04-06 | 2026-04-09 | QTS-48681 |  |  |  | 47d | 0d | Level 1 | Site Work | Construction | IGMP | Jason Johnston | Construction |  |  |
| QTS-48741 |  | Zone 2 North // Prep & Place Heavy Duty Concrete - Loading Dock | 3d | 2026-04-06 | 2026-04-08 | QTS-48681 |  |  |  | 46d | 0d | Level 1 | Site Work | Construction | IGMP | Jason Johnston | Construction |  |  |
| QTS-48721 |  | Zone 2 North // Prep & Place Medium Duty Concrete | 3d | 2026-04-09 | 2026-04-13 | QTS-48681, QTS-48741 |  |  |  | 46d | 0d | Level 1 | Site Work | Construction | IGMP | Jason Johnston | Construction |  |  |
| QTS-48751 |  | Zone 2 North // Install Irrigation Laterals | 4d | 2026-04-10 | 2026-04-15 | QTS-48691 |  |  |  | 47d | 10d | Level 1 | Site Work | Construction | IGMP | Jason Johnston | Construction |  |  |
| QTS-48711 |  | Zone 2 North // Prep & Place Medium Duty Asphalt Pavement | 3d | 2026-04-14 | 2026-04-16 | QTS-48671, QTS-48681, QTS-48721 |  |  |  | 46d | 0d | Level 1 | Site Work | Construction | IGMP | Jason Johnston | Construction |  |  |
| QTS-48701 |  | Zone 2 North // Stub Up Electrical to Light Poles | 4d | 2026-04-16 | 2026-04-21 | QTS-48651 |  |  |  | 37d | 0d | Level 1 | Site Work | Construction | IGMP | Jason Johnston | Construction |  |  |
| QTS-48731 |  | Zone 2 North // Prep & Place Light Duty Asphalt Pavement | 3d | 2026-04-17 | 2026-04-21 | QTS-48711 |  |  |  | 46d | 0d | Level 1 | Site Work | Construction | IGMP | Jason Johnston | Construction |  |  |
| QTS-48761 |  | Zone 2 North // Pour Light Pole Bases | 1d | 2026-04-22 | 2026-04-22 | QTS-48701 |  |  |  | 37d | 0d | Level 1 | Site Work | Construction | IGMP | Jason Johnston | Construction |  |  |
| QTS-48771 |  | Zone 2 North // Utility Adjustments (Raise Cans & Collars) | 2d | 2026-04-22 | 2026-04-23 | QTS-48711, QTS-48731 |  |  |  | 46d | 0d | Level 1 | Site Work | Construction | IGMP | Jason Johnston | Construction |  |  |
| QTS-48781 |  | Zone 2 North // Prep & Place Sidewalks | 5d | 2026-04-23 | 2026-04-29 | QTS-48681, QTS-48671, QTS-48611, QTS-48761 |  |  |  | 37d | 0d | Level 1 | Site Work | Construction | IGMP | Jason Johnston | Construction |  |  |
| QTS-48791 |  | Zone 2 North // Site Striping | 1d | 2026-04-24 | 2026-04-24 | QTS-48771 |  |  |  | 46d | 3d | Level 1 | Site Work | Construction | IGMP | Jason Johnston | Construction |  |  |
| QTS-48801 |  | Zone 2 North // Set Light Poles | 2d | 2026-04-30 | 2026-05-01 | QTS-48761, QTS-48781 |  |  |  | 37d | 0d | Level 1 | Site Work | Construction | IGMP | Jason Johnston | Construction |  |  |
| QTS-48811 |  | Zone 2 North // Install Landscaping & Planting | 4d | 2026-04-30 | 2026-05-05 | QTS-48751, QTS-48781 |  |  |  | 37d | 0d | Level 1 | Site Work | Construction | IGMP | Jason Johnston | Construction |  |  |
| QTS-48821 |  | Zone 2 North // Install Signage | 1d | 2026-04-30 | 2026-04-30 | QTS-48791, QTS-48781 |  |  |  | 43d | 40d | Level 1 | Site Work | Construction | IGMP | Jason Johnston | Construction |  |  |
| QTS-48831 |  | Zone 2 North // Pull Electrical Wire & Make Up to Light Poles | 3d | 2026-05-04 | 2026-05-06 | QTS-48801 |  |  |  | 37d | 0d | Level 1 | Site Work | Construction | IGMP | Jason Johnston | Construction |  |  |
| QTS-48841 |  | Zone 2 North // Place DG | 3d | 2026-05-06 | 2026-05-08 | QTS-48811 |  |  |  | 37d | 34d | Level 1 | Site Work | Construction | IGMP | Jason Johnston | Construction |  |  |
| QTS-48851 |  | Zone 2 North // Sack & Patch Light Pole Bases | 2d | 2026-05-07 | 2026-05-08 | QTS-48831 |  |  |  | 37d | 34d | Level 1 | Site Work | Construction | IGMP | Jason Johnston | Construction |  |  |

Notes:
- QTS-49541: allucent_notes: Jason Johnston on 2025-08-12 15:08: Material procurement delaying activity start / allucent_notes: 2025-08-12 15:08 - User: Jason Johnston - Date Added: 2025-08-12 15:08 - Note: Material procurement delaying activity start / 2025-08-26 10:08 - User: Jason Johnston - Date Added: 2025-08-26 10:08 - Note: Resources reallocated delaying finish of scope.

| ID | WBS | Activity | Duration | Start | Finish | Predecessors | Total float | Free float | Level | Location | Project Section-1 | Baseline | Layton Responsible Party | Project Section | Allucent CSI Group | Phase-1-1 |
| --- | --- | --- | --- | --- | --- | --- | --- | --- | --- | --- | --- | --- | --- | --- | --- | --- |
|  | 9 | **Site Improvements / Zone 2 South** |  | 2026-01-20 | 2026-05-19 |  |  |  |  |  |  |  |  |  |  |  |
| QTS-47651 |  | Zone 2 South // Excavate, Install, & Backfill Storm Trench Drain to Storm Line B | 3d | 2026-01-20 | 2026-01-22 | QTS-21521, QTS-1891, QTS-49561, QTS-18781, QTS-100720 | 55d | 0d | Level 1 | Site Work | Construction | IGMP | Jason Johnston | Construction | 01ADMIN |  |
| QTS-49821 |  | Zone 2 South // Inspection for Storm Trench Drain to Storm Line B | 1d | 2026-01-23 | 2026-01-23 | QTS-47651 | 55d | 22d | Level 1 | Site Work | Construction | IGMP | Jason Johnston | Construction | 01ADMIN |  |
| QTS-47661 |  | Zone 2 South // Excavate, Install, & Backfill Sanitary Line | 3d | 2026-02-25 | 2026-02-27 | QTS-47651, QTS-49821, QTS-99010 | 33d | 0d | Level 1 | Site Work | Construction | IGMP | Jason Johnston | Construction |  |  |
| QTS-49831 |  | Zone 2 South // Inspection for Sanitary Line | 1d | 2026-03-02 | 2026-03-02 | QTS-49821, QTS-47661 | 33d | 0d | Level 1 | Site Work | Construction | IGMP | Jason Johnston | Construction |  |  |
| QTS-47671 |  | Zone 2 South // Excavate, Install, & Backfill Fire Water Line | 3d | 2026-03-03 | 2026-03-05 | QTS-47651, QTS-47661, QTS-49831, QTS-99010 | 33d | 0d | Level 1 | Site Work | Construction | IGMP | Jason Johnston | Construction |  |  |
| QTS-49571 |  | Zone 2 South // Excavate, Install, & Backfill Storm Trench Drain to Strom Line E | 3d | 2026-03-05 | 2026-03-09 | QTS-47651, QTS-47941 | 35d | 0d | Level 1 | Site Work | Construction | IGMP | Jason Johnston | Construction | 01ADMIN |  |
| QTS-49841 |  | Zone 2 South // Inspection for Fire Water Line | 1d | 2026-03-06 | 2026-03-06 | QTS-49821, QTS-49831, QTS-47671 | 33d | 0d | Level 1 | Site Work | Construction | IGMP | Jason Johnston | Construction |  |  |
| QTS-47681 |  | Zone 2 South // Excavate, Install, & Backfill Domestic Water Line | 3d | 2026-03-09 | 2026-03-11 | QTS-47671, QTS-49841, QTS-99010 | 33d | 0d | Level 1 | Site Work | Construction | IGMP | Jason Johnston | Construction |  |  |
| QTS-49861 |  | Zone 2 South // Inspection for Storm Trench Drain to Strom Line E | 1d | 2026-03-10 | 2026-03-10 | QTS-49821, QTS-49571 | 35d | 5d | Level 1 | Site Work | Construction | IGMP | Jason Johnston | Construction | 01ADMIN |  |
| QTS-49851 |  | Zone 2 South // Inspection for Domestic Water Line | 1d | 2026-03-12 | 2026-03-12 | QTS-49841, QTS-47681 | 33d | 3d | Level 1 | Site Work | Construction | IGMP | Jason Johnston | Construction |  |  |
| QTS-47691 |  | Zone 2 South // Rough Grade | 3d | 2026-03-18 | 2026-03-20 | QTS-47651, QTS-47681, QTS-47391, QTS-49571, QTS-49861, QTS-49851 | 30d | 0d | Level 1 | Site Work | Construction | IGMP | Jason Johnston | Construction |  |  |
| QTS-47701 |  | Zone 2 South // Stake Curbs | 1d | 2026-03-23 | 2026-03-23 | QTS-47691 | 32d | 2d | Level 1 | Site Work | Construction | IGMP | Jason Johnston | Construction |  |  |
| QTS-47711 |  | Zone 2 South // Install Underground Grounding Ring | 3d | 2026-03-23 | 2026-03-25 | QTS-47691 | 30d | 0d | Underground | Site Work | Construction | IGMP | Jason Johnston | Construction |  | Phase 1 |
| QTS-47721 |  | Zone 2 South // Install Irrigation Sleeves | 5d | 2026-03-26 | 2026-04-01 | QTS-47701, QTS-47711 | 30d | 0d | Level 1 | Site Work | Construction | IGMP | Jason Johnston | Construction |  |  |
| QTS-47731 |  | Zone 2 South // Excavate, Install, & Backfill Electrical for Site Lighting | 3d | 2026-04-02 | 2026-04-06 | QTS-47691, QTS-47711, QTS-47721 | 30d | 0d | Level 1 | Site Work | Construction | IGMP | Jason Johnston | Construction |  |  |
| QTS-47741 |  | Zone 2 South // Grade for Curb | 2d | 2026-04-07 | 2026-04-08 | QTS-47701, QTS-47731 | 30d | 0d | Level 1 | Site Work | Construction | IGMP | Jason Johnston | Construction |  |  |
| QTS-47761 |  | Zone 2 South // Stringline for Curb | 2d | 2026-04-09 | 2026-04-10 | QTS-47741 | 30d | 0d | Level 1 | Site Work | Construction | IGMP | Jason Johnston | Construction |  |  |
| QTS-47771 |  | Zone 2 South // Machine Curb | 1d | 2026-04-13 | 2026-04-13 | QTS-47761, QTS-47721 | 30d | 0d | Level 1 | Site Work | Construction | IGMP | Jason Johnston | Construction |  |  |
| QTS-47781 |  | Zone 2 South // Form & Place Curb Tie Ins | 1d | 2026-04-14 | 2026-04-14 | QTS-47771 | 30d | 0d | Level 1 | Site Work | Construction | IGMP | Jason Johnston | Construction |  |  |
| QTS-47751 |  | Zone 2 South // Drill & Reinforce Light Pole Bases | 8d | 2026-04-15 | 2026-04-24 | QTS-47731, QTS-47781 | 30d | 0d | Level 1 | Site Work | Construction | IGMP | Jason Johnston | Construction |  |  |
| QTS-47791 |  | Zone 2 South // Install Irrigation Main Lines | 4d | 2026-04-15 | 2026-04-20 | QTS-47781 | 40d | 0d | Level 1 | Site Work | Construction | IGMP | Jason Johnston | Construction |  |  |
| QTS-47821 |  | Zone 2 South // Prep & Place Medium Duty Asphalt Pavement | 3d | 2026-04-15 | 2026-04-17 | QTS-47771, QTS-47781 | 48d | 0d | Level 1 | Site Work | Construction | IGMP | Jason Johnston | Construction |  |  |
| QTS-47851 |  | Zone 2 South // Utility Adjustments (Raise Cans & Collars) | 2d | 2026-04-20 | 2026-04-21 | QTS-47821 | 48d | 0d | Level 1 | Site Work | Construction | IGMP | Jason Johnston | Construction |  |  |
| QTS-47831 |  | Zone 2 South // Install Irrigation Laterals | 4d | 2026-04-21 | 2026-04-24 | QTS-47791 | 40d | 10d | Level 1 | Site Work | Construction | IGMP | Jason Johnston | Construction |  |  |
| QTS-47871 |  | Zone 2 South // Site Striping | 1d | 2026-04-22 | 2026-04-22 | QTS-47851 | 48d | 12d | Level 1 | Site Work | Construction | IGMP | Jason Johnston | Construction |  |  |
| QTS-47811 |  | Zone 2 South // Stub Up Electrical to Light Poles | 4d | 2026-04-27 | 2026-04-30 | QTS-47751 | 30d | 0d | Level 1 | Site Work | Construction | IGMP | Jason Johnston | Construction |  |  |
| QTS-47841 |  | Zone 2 South // Pour Light Pole Bases | 1d | 2026-05-01 | 2026-05-01 | QTS-47811 | 30d | 0d | Level 1 | Site Work | Construction | IGMP | Jason Johnston | Construction |  |  |
| QTS-47861 |  | Zone 2 South // Prep & Place Sidewalks | 5d | 2026-05-04 | 2026-05-08 | QTS-47781, QTS-47771, QTS-47711, QTS-47841 | 30d | 0d | Level 1 | Site Work | Construction | IGMP | Jason Johnston | Construction |  |  |
| QTS-47881 |  | Zone 2 South // Set Light Poles | 2d | 2026-05-11 | 2026-05-12 | QTS-47841, QTS-47861 | 30d | 0d | Level 1 | Site Work | Construction | IGMP | Jason Johnston | Construction |  |  |
| QTS-47891 |  | Zone 2 South // Install Landscaping & Planting | 4d | 2026-05-11 | 2026-05-14 | QTS-47831, QTS-47861 | 30d | 0d | Level 1 | Site Work | Construction | IGMP | Jason Johnston | Construction |  |  |
| QTS-47901 |  | Zone 2 South // Install Signage | 1d | 2026-05-11 | 2026-05-11 | QTS-47871, QTS-47861 | 36d | 33d | Level 1 | Site Work | Construction | IGMP | Jason Johnston | Construction |  |  |
| QTS-47911 |  | Zone 2 South // Pull Electrical Wire & Make Up to Light Poles | 3d | 2026-05-13 | 2026-05-15 | QTS-47881 | 30d | 0d | Level 1 | Site Work | Construction | IGMP | Jason Johnston | Construction |  |  |
| QTS-47921 |  | Zone 2 South // Place DG | 3d | 2026-05-15 | 2026-05-19 | QTS-47891 | 30d | 27d | Level 1 | Site Work | Construction | IGMP | Jason Johnston | Construction |  |  |
| QTS-47931 |  | Zone 2 South // Sack & Patch Light Pole Bases | 2d | 2026-05-18 | 2026-05-19 | QTS-47911 | 30d | 27d | Level 1 | Site Work | Construction | IGMP | Jason Johnston | Construction |  |  |

| ID | WBS | Activity | Duration | Start | Finish | Predecessors | Total float | Free float | Level | Location | Project Section-1 | Baseline | Layton Responsible Party | Project Section | Allucent CSI Group | Phase-1-1 |
| --- | --- | --- | --- | --- | --- | --- | --- | --- | --- | --- | --- | --- | --- | --- | --- | --- |
|  | 7 | **Site Improvements / Zone 3 South - East** |  | 2026-03-02 | 2026-05-08 |  |  |  |  |  |  |  |  |  |  |  |
| QTS-47941 |  | Zone 3 South - East // Excavate, Install, & Backfill Storm Trench Drain to Storm Line E | 3d | 2026-03-02 | 2026-03-04 | QTS-2151, QTS-23261, QTS-99210, QTS-101180 | 35d | 0d | Level 1 | Site Work | Construction | IGMP | Jason Johnston | Construction |  |  |
| QTS-49871 |  | Zone 3 South - East // Inspection for Storm Trench Drain to Storm Line E | 1d | 2026-03-05 | 2026-03-05 | QTS-47941, QTS-100720 | 76d | 0d | Level 1 | Site Work | Construction | IGMP | Jason Johnston | Construction | 01ADMIN |  |
| QTS-47951 |  | Zone 3 South - East // Excavate, Install, & Backfill Sanitary Line | 3d | 2026-03-06 | 2026-03-10 | QTS-47941, QTS-49871, QTS-99010 | 76d | 0d | Level 1 | Site Work | Construction | IGMP | Jason Johnston | Construction |  |  |
| QTS-49881 |  | Zone 3 South - East // Inspection for Sanitary Line | 1d | 2026-03-11 | 2026-03-11 | QTS-49871, QTS-47951 | 76d | 0d | Level 1 | Site Work | Construction | IGMP | Jason Johnston | Construction |  |  |
| QTS-47961 |  | Zone 3 South - East // Excavate, Install, & Backfill Fire Water Line | 3d | 2026-03-12 | 2026-03-16 | QTS-47941, QTS-47951, QTS-47941 FF, QTS-49881, QTS-99010 | 76d | 0d | Level 1 | Site Work | Construction | IGMP | Jason Johnston | Construction |  |  |
| QTS-49891 |  | Zone 3 South - East // Inspection for Fire Water Line | 1d | 2026-03-17 | 2026-03-17 | QTS-49871, QTS-49881, QTS-49871 FF, QTS-47961 | 76d | 0d | Level 1 | Site Work | Construction | IGMP | Jason Johnston | Construction |  |  |
| QTS-47971 |  | Zone 3 South - East // Excavate, Install, & Backfill Domestic Water Line | 3d | 2026-03-18 | 2026-03-20 | QTS-47961, QTS-49891, QTS-99010 | 76d | 0d | Level 1 | Site Work | Construction | IGMP | Jason Johnston | Construction |  |  |
| QTS-49901 |  | Zone 3 South - East // Inspection for Domestic Water Line | 1d | 2026-03-23 | 2026-03-23 | QTS-49891, QTS-47971 | 76d | 0d | Level 1 | Site Work | Construction | IGMP | Jason Johnston | Construction |  |  |
| QTS-47981 |  | Zone 3 South - East // Rough Grade | 3d | 2026-03-24 | 2026-03-26 | QTS-47941, QTS-47971, QTS-47691, QTS-49901 | 76d | 0d | Level 1 | Site Work | Construction | IGMP | Jason Johnston | Construction |  |  |
| QTS-47991 |  | Zone 3 South - East // Stake Curbs | 1d | 2026-03-27 | 2026-03-27 | QTS-47981 | 85d | 0d | Level 1 | Site Work | Construction | IGMP | Jason Johnston | Construction |  |  |
| QTS-48001 |  | Zone 3 South - East // Install Underground Grounding Ring | 3d | 2026-03-27 | 2026-03-31 | QTS-47981 | 76d | 0d | Underground | Site Work | Construction | IGMP | Jason Johnston | Construction |  | Phase 1 |
| QTS-48011 |  | Zone 3 South - East // Install Irrigation Sleeves | 2d | 2026-03-30 | 2026-03-31 | QTS-47991 | 87d | 7d | Level 1 | Site Work | Construction | IGMP | Jason Johnston | Construction |  |  |
| QTS-48021 |  | Zone 3 South - East // Excavate, Install, & Backfill Electrical for Site Lighting | 3d | 2026-04-01 | 2026-04-03 | QTS-47981, QTS-48001 | 76d | 0d | Level 1 | Site Work | Construction | IGMP | Jason Johnston | Construction |  |  |
| QTS-48031 |  | Zone 3 South - East // Grade for Curb | 2d | 2026-04-06 | 2026-04-07 | QTS-47991, QTS-48021 | 80d | 0d | Level 1 | Site Work | Construction | IGMP | Jason Johnston | Construction |  |  |
| QTS-48041 |  | Zone 3 South - East // Drill & Reinforce Light Pole Bases | 8d | 2026-04-06 | 2026-04-15 | QTS-48021 | 76d | 0d | Level 1 | Site Work | Construction | IGMP | Jason Johnston | Construction |  |  |
| QTS-48051 |  | Zone 3 South - East // Stringline for Curb | 2d | 2026-04-08 | 2026-04-09 | QTS-48031 | 80d | 0d | Level 1 | Site Work | Construction | IGMP | Jason Johnston | Construction |  |  |
| QTS-48061 |  | Zone 3 South - East // Machine Curb | 1d | 2026-04-10 | 2026-04-10 | QTS-48051, QTS-48011 | 80d | 0d | Level 1 | Site Work | Construction | IGMP | Jason Johnston | Construction |  |  |
| QTS-48071 |  | Zone 3 South - East // Form & Place Curb Tie Ins | 1d | 2026-04-13 | 2026-04-13 | QTS-48061 | 80d | 0d | Level 1 | Site Work | Construction | IGMP | Jason Johnston | Construction |  |  |
| QTS-48081 |  | Zone 3 South - East // Install Irrigation Main Lines | 4d | 2026-04-14 | 2026-04-17 | QTS-48071 | 80d | 0d | Level 1 | Site Work | Construction | IGMP | Jason Johnston | Construction |  |  |
| QTS-48221 |  | Zone 3 South - East // Prep & Place Medium Duty Concrete | 3d | 2026-04-14 | 2026-04-16 | QTS-48071 | 82d | 0d | Level 1 | Site Work | Construction | IGMP | Jason Johnston | Construction |  |  |
| QTS-48091 |  | Zone 3 South - East // Stub Up Electrical to Light Poles | 4d | 2026-04-16 | 2026-04-21 | QTS-48041 | 76d | 0d | Level 1 | Site Work | Construction | IGMP | Jason Johnston | Construction |  |  |
| QTS-48101 |  | Zone 3 South - East // Prep & Place Medium Duty Asphalt Pavement | 3d | 2026-04-17 | 2026-04-21 | QTS-48061, QTS-48071, QTS-48221 | 82d | 0d | Level 1 | Site Work | Construction | IGMP | Jason Johnston | Construction |  |  |
| QTS-48111 |  | Zone 3 South - East // Install Irrigation Laterals | 4d | 2026-04-20 | 2026-04-23 | QTS-48081 | 80d | 4d | Level 1 | Site Work | Construction | IGMP | Jason Johnston | Construction |  |  |
| QTS-48121 |  | Zone 3 South - East // Pour Light Pole Bases | 1d | 2026-04-22 | 2026-04-22 | QTS-48091 | 76d | 0d | Level 1 | Site Work | Construction | IGMP | Jason Johnston | Construction |  |  |
| QTS-48231 |  | Zone 3 South - East // Prep & Place Light Duty Asphalt Pavement | 3d | 2026-04-22 | 2026-04-24 | QTS-48101 | 82d | 0d | Level 1 | Site Work | Construction | IGMP | Jason Johnston | Construction |  |  |
| QTS-48141 |  | Zone 3 South - East // Prep & Place Sidewalks | 5d | 2026-04-23 | 2026-04-29 | QTS-48071, QTS-48061, QTS-48001, QTS-48121 | 76d | 0d | Level 1 | Site Work | Construction | IGMP | Jason Johnston | Construction |  |  |
| QTS-48131 |  | Zone 3 South - East // Utility Adjustments (Raise Cans & Collars) | 2d | 2026-04-27 | 2026-04-28 | QTS-48101, QTS-48231 | 82d | 0d | Level 1 | Site Work | Construction | IGMP | Jason Johnston | Construction |  |  |
| QTS-48151 |  | Zone 3 South - East // Site Striping | 1d | 2026-04-29 | 2026-04-29 | QTS-48131 | 82d | 0d | Level 1 | Site Work | Construction | IGMP | Jason Johnston | Construction |  |  |
| QTS-48161 |  | Zone 3 South - East // Set Light Poles | 2d | 2026-04-30 | 2026-05-01 | QTS-48121, QTS-48141 | 76d | 0d | Level 1 | Site Work | Construction | IGMP | Jason Johnston | Construction |  |  |
| QTS-48171 |  | Zone 3 South - East // Install Landscaping & Planting | 4d | 2026-04-30 | 2026-05-05 | QTS-48111, QTS-48141 | 76d | 0d | Level 1 | Site Work | Construction | IGMP | Jason Johnston | Construction |  |  |
| QTS-48181 |  | Zone 3 South - East // Install Signage | 1d | 2026-04-30 | 2026-04-30 | QTS-48151, QTS-48141 | 82d |  | Level 1 | Site Work | Construction | IGMP | Jason Johnston | Construction |  |  |
| QTS-48191 |  | Zone 3 South - East // Pull Electrical Wire & Make Up to Light Poles | 3d | 2026-05-04 | 2026-05-06 | QTS-48161 | 76d | 0d | Level 1 | Site Work | Construction | IGMP | Jason Johnston | Construction |  |  |
| QTS-48201 |  | Zone 3 South - East // Place DG | 3d | 2026-05-06 | 2026-05-08 | QTS-48171 | 76d |  | Level 1 | Site Work | Construction | IGMP | Jason Johnston | Construction |  |  |
| QTS-48211 |  | Zone 3 South - East // Sack & Patch Light Pole Bases | 2d | 2026-05-07 | 2026-05-08 | QTS-48191 | 76d |  | Level 1 | Site Work | Construction | IGMP | Jason Johnston | Construction |  |  |

Notes:
- QTS-49871: allucent_notes_20251027_224008: Jason Johnston on 2025-10-07 14:10: moving out until access is available. / allucent_notes_20251028_163138: Jason Johnston on 2025-10-07 14:10: moving out until access is available. / allucent_notes_20251104_160200: Jason Johnston on 2025-10-07 14:10: moving out until access is available. / allucent_notes_20251111_182405: Jason Johnston on 2025-10-07 14:10: moving out until access is available. / Jason Johnston on 2025-11-12T00:48:59.333Z: tes tanks / allucent_notes_20251118_192630: Jason Johnston on 2025-10-07 14:10: moving out until access is available. / Jason Johnston on 2025-11-12T00:48:59.333Z: tes tanks / allucent_notes: 2025-10-07 14:10 - User: Jason Johnston - Date Added: 2025-10-07 14:10 - Note: moving out until access is available. / 2025-11-12T00:48:59.333Z - User: Jason Johnston - Date Added: 2025-11-12T00:48:59.333Z - Note: tes tanks

| ID | WBS | Activity | Duration | Start | Finish | Predecessors | Complete | Planned start | Planned finish | Total float | Free float | Level | Location | Project Section-1 | Baseline | Layton Responsible Party | Project Section | Allucent CSI Group | Phase-1-1 |
| --- | --- | --- | --- | --- | --- | --- | --- | --- | --- | --- | --- | --- | --- | --- | --- | --- | --- | --- | --- |
|  | 10 | **Site Improvements / Zone 3 North - East** |  | 2025-06-25 | 2026-05-11 |  |  |  |  |  |  |  |  |  |  |  |  |  |  |
| QTS-48241 |  | Zone 3 North - East // Excavate, Install, & Backfill Storm Line E | 3d | 2025-06-25 A | 2025-08-11 A | QTS-1431 | 100% | 2025-06-25 | 2025-06-27 |  |  | Level 1 | Site Work | Construction | IGMP | Jason Johnston | Construction | 01ADMIN |  |
| QTS-48861 |  | Zone 3 North - East // Excavate, Install, & Backfill Storm Line G | 3d | 2025-08-05 A | 2025-08-07 A | QTS-49551 | 100% |  |  |  |  | Level 1 | Site Work | Construction | IGMP | Jason Johnston | Construction | 01ADMIN |  |
| QTS-49911 |  | Zone 3 North - East // Inspection for Storm Line E | 1d | 2025-08-12 A | 2025-08-12 A | QTS-48241 | 100% |  |  |  |  | Level 1 | Site Work | Construction | IGMP | Jason Johnston | Construction | 01ADMIN |  |
| QTS-49921 |  | Zone 3 North - East // Inspection for Storm Line G | 1d | 2025-08-13 A | 2025-08-13 A | QTS-49911, QTS-48861 | 100% |  |  |  |  | Level 1 | Site Work | Construction | IGMP | Jason Johnston | Construction | 01ADMIN |  |
| QTS-48251 |  | Zone 3 North - East // Excavate, Install, & Backfill Sanitary Line | 3d | 2026-02-25 | 2026-02-27 | QTS-48241, QTS-48861, QTS-49921, QTS-99010 |  |  |  | 77d | 0d | Level 1 | Site Work | Construction | IGMP | Jason Johnston | Construction |  |  |
| QTS-49931 |  | Zone 3 North - East // Inspection for Sanitary Line | 1d | 2026-03-02 | 2026-03-02 | QTS-49911, QTS-49921, QTS-48251 |  |  |  | 77d | 0d | Level 1 | Site Work | Construction | IGMP | Jason Johnston | Construction |  |  |
| QTS-48261 |  | Zone 3 North - East // Excavate, Install, & Backfill Fire Water Line | 3d | 2026-03-03 | 2026-03-05 | QTS-48241, QTS-48251, QTS-48241 FF, QTS-49931, QTS-99010 |  |  |  | 77d | 0d | Level 1 | Site Work | Construction | IGMP | Jason Johnston | Construction |  |  |
| QTS-49941 |  | Zone 3 North - East // Inspection for Fire Water Line | 1d | 2026-03-06 | 2026-03-06 | QTS-49911, QTS-49931, QTS-49911 FF, QTS-48261 |  |  |  | 77d | 0d | Level 1 | Site Work | Construction | IGMP | Jason Johnston | Construction |  |  |
| QTS-48271 |  | Zone 3 North - East // Excavate, Install, & Backfill Domestic Water Line | 3d | 2026-03-09 | 2026-03-11 | QTS-48261, QTS-49941, QTS-99010 |  |  |  | 77d | 0d | Level 1 | Site Work | Construction | IGMP | Jason Johnston | Construction |  |  |
| QTS-49951 |  | Zone 3 North - East // Inspection for Domestic Water Line | 1d | 2026-03-12 | 2026-03-12 | QTS-49941, QTS-48271 |  |  |  | 77d | 2d | Level 1 | Site Work | Construction | IGMP | Jason Johnston | Construction |  |  |
| QTS-48891 |  | Zone 3 North - East // Excavate & Pour CMU Footings | 3d | 2026-03-17 | 2026-03-19 | QTS-48271, QTS-48881, QTS-49951 |  |  |  | 75d | 0d | Level 1 | Site Work | Construction | IGMP | Jason Johnston | Construction |  |  |
| QTS-48901 |  | Zone 3 North - East // Place CMU Block Wall | 3d | 2026-03-20 | 2026-03-24 | QTS-48891, QTS-48891 FF |  |  |  | 75d | 0d | Level 1 | Site Work | Construction | IGMP | Jason Johnston | Construction |  |  |
| QTS-48281 |  | Zone 3 North - East // Rough Grade | 3d | 2026-03-25 | 2026-03-27 | QTS-48241, QTS-48271, QTS-48901, QTS-48591 |  |  |  | 75d | 0d | Level 1 | Site Work | Construction | IGMP | Jason Johnston | Construction |  |  |
| QTS-48291 |  | Zone 3 North - East // Stake Curbs | 1d | 2026-03-30 | 2026-03-30 | QTS-48281 |  |  |  | 83d | 0d | Level 1 | Site Work | Construction | IGMP | Jason Johnston | Construction |  |  |
| QTS-48301 |  | Zone 3 North - East // Install Underground Grounding Ring | 3d | 2026-03-30 | 2026-04-01 | QTS-48281 |  |  |  | 75d | 0d | Underground | Site Work | Construction | IGMP | Jason Johnston | Construction |  | Phase 1 |
| QTS-48311 |  | Zone 3 North - East // Install Irrigation Sleeves | 2d | 2026-03-31 | 2026-04-01 | QTS-48291 |  |  |  | 85d | 7d | Level 1 | Site Work | Construction | IGMP | Jason Johnston | Construction |  |  |
| QTS-48321 |  | Zone 3 North - East // Excavate, Install, & Backfill Electrical for Site Lighting | 3d | 2026-04-02 | 2026-04-06 | QTS-48281, QTS-48301 |  |  |  | 75d | 0d | Level 1 | Site Work | Construction | IGMP | Jason Johnston | Construction |  |  |
| QTS-48331 |  | Zone 3 North - East // Grade for Curb | 2d | 2026-04-07 | 2026-04-08 | QTS-48291, QTS-48321 |  |  |  | 78d | 0d | Level 1 | Site Work | Construction | IGMP | Jason Johnston | Construction |  |  |
| QTS-48341 |  | Zone 3 North - East // Drill & Reinforce Light Pole Bases | 8d | 2026-04-07 | 2026-04-16 | QTS-48321 |  |  |  | 75d | 0d | Level 1 | Site Work | Construction | IGMP | Jason Johnston | Construction |  |  |
| QTS-48351 |  | Zone 3 North - East // Stringline for Curb | 2d | 2026-04-09 | 2026-04-10 | QTS-48331 |  |  |  | 78d | 0d | Level 1 | Site Work | Construction | IGMP | Jason Johnston | Construction |  |  |
| QTS-48361 |  | Zone 3 North - East // Machine Curb | 1d | 2026-04-13 | 2026-04-13 | QTS-48351, QTS-48311 |  |  |  | 78d | 0d | Level 1 | Site Work | Construction | IGMP | Jason Johnston | Construction |  |  |
| QTS-48371 |  | Zone 3 North - East // Form & Place Curb Tie Ins | 1d | 2026-04-14 | 2026-04-14 | QTS-48361 |  |  |  | 78d | 0d | Level 1 | Site Work | Construction | IGMP | Jason Johnston | Construction |  |  |
| QTS-48381 |  | Zone 3 North - East // Install Irrigation Main Lines | 4d | 2026-04-15 | 2026-04-20 | QTS-48371 |  |  |  | 79d | 0d | Level 1 | Site Work | Construction | IGMP | Jason Johnston | Construction |  |  |
| QTS-48541 |  | Zone 3 North - East // Prep & Place Heavy Duty Concrete - Loading Dock | 3d | 2026-04-15 | 2026-04-17 | QTS-48371 |  |  |  | 78d | 0d | Level 1 | Site Work | Construction | IGMP | Jason Johnston | Construction |  |  |
| QTS-48391 |  | Zone 3 North - East // Stub Up Electrical to Light Poles | 4d | 2026-04-17 | 2026-04-22 | QTS-48341 |  |  |  | 75d | 0d | Level 1 | Site Work | Construction | IGMP | Jason Johnston | Construction |  |  |
| QTS-48411 |  | Zone 3 North - East // Prep & Place Medium Duty Concrete | 3d | 2026-04-20 | 2026-04-22 | QTS-48371, QTS-48541 |  |  |  | 78d | 0d | Level 1 | Site Work | Construction | IGMP | Jason Johnston | Construction |  |  |
| QTS-48431 |  | Zone 3 North - East // Install Irrigation Laterals | 4d | 2026-04-21 | 2026-04-24 | QTS-48381 |  |  |  | 79d | 4d | Level 1 | Site Work | Construction | IGMP | Jason Johnston | Construction |  |  |
| QTS-48401 |  | Zone 3 North - East // Prep & Place Medium Duty Asphalt Pavement | 3d | 2026-04-23 | 2026-04-27 | QTS-48361, QTS-48371, QTS-48411 |  |  |  | 78d | 0d | Level 1 | Site Work | Construction | IGMP | Jason Johnston | Construction |  |  |
| QTS-48441 |  | Zone 3 North - East // Pour Light Pole Bases | 1d | 2026-04-23 | 2026-04-23 | QTS-48391 |  |  |  | 75d | 0d | Level 1 | Site Work | Construction | IGMP | Jason Johnston | Construction |  |  |
| QTS-48461 |  | Zone 3 North - East // Prep & Place Sidewalks | 5d | 2026-04-24 | 2026-04-30 | QTS-48371, QTS-48361, QTS-48301, QTS-48441 |  |  |  | 75d | 0d | Level 1 | Site Work | Construction | IGMP | Jason Johnston | Construction |  |  |
| QTS-48421 |  | Zone 3 North - East // Prep & Place Light Duty Asphalt Pavement | 3d | 2026-04-28 | 2026-04-30 | QTS-48401 |  |  |  | 78d | 0d | Level 1 | Site Work | Construction | IGMP | Jason Johnston | Construction |  |  |
| QTS-48451 |  | Zone 3 North - East // Utility Adjustments (Raise Cans & Collars) | 2d | 2026-05-01 | 2026-05-04 | QTS-48401, QTS-48421 |  |  |  | 78d | 0d | Level 1 | Site Work | Construction | IGMP | Jason Johnston | Construction |  |  |
| QTS-48481 |  | Zone 3 North - East // Set Light Poles | 2d | 2026-05-01 | 2026-05-04 | QTS-48441, QTS-48461 |  |  |  | 75d | 0d | Level 1 | Site Work | Construction | IGMP | Jason Johnston | Construction |  |  |
| QTS-48491 |  | Zone 3 North - East // Install Landscaping & Planting | 4d | 2026-05-01 | 2026-05-06 | QTS-48431, QTS-48461 |  |  |  | 75d | 0d | Level 1 | Site Work | Construction | IGMP | Jason Johnston | Construction |  |  |
| QTS-48471 |  | Zone 3 North - East // Site Striping | 1d | 2026-05-05 | 2026-05-05 | QTS-48451 |  |  |  | 78d | 0d | Level 1 | Site Work | Construction | IGMP | Jason Johnston | Construction |  |  |
| QTS-48511 |  | Zone 3 North - East // Pull Electrical Wire & Make Up to Light Poles | 3d | 2026-05-05 | 2026-05-07 | QTS-48481 |  |  |  | 75d | 0d | Level 1 | Site Work | Construction | IGMP | Jason Johnston | Construction |  |  |
| QTS-48501 |  | Zone 3 North - East // Install Signage | 1d | 2026-05-06 | 2026-05-06 | QTS-48471, QTS-48461 |  |  |  | 78d |  | Level 1 | Site Work | Construction | IGMP | Jason Johnston | Construction |  |  |
| QTS-48521 |  | Zone 3 North - East // Place DG | 3d | 2026-05-07 | 2026-05-11 | QTS-48491 |  |  |  | 75d |  | Level 1 | Site Work | Construction | IGMP | Jason Johnston | Construction |  |  |
| QTS-48531 |  | Zone 3 North - East // Sack & Patch Light Pole Bases | 2d | 2026-05-08 | 2026-05-11 | QTS-48511 |  |  |  | 75d |  | Level 1 | Site Work | Construction | IGMP | Jason Johnston | Construction |  |  |

| ID | WBS | Activity | Duration | Start | Finish | Predecessors | Complete | Remaining | Planned start | Planned finish | Total float | Free float | Calendar | Allucent CSI Group | Subcontractor | Level | Location | Project Section-1 | Phase-1-1 | Baseline | Layton Responsible Party | Project Section |
| --- | --- | --- | --- | --- | --- | --- | --- | --- | --- | --- | --- | --- | --- | --- | --- | --- | --- | --- | --- | --- | --- | --- |
|  | 2 | **Infrastructure Buildout** |  | 2025-01-17 | 2026-06-13 |  |  |  |  |  |  |  |  |  |  |  |  |  |  |  |  |  |
|  | 10 | **Fragnet / Fire Protection Re-Work Delay** |  | 2025-11-07 | 2025-11-20 |  |  |  |  |  |  |  |  |  |  |  |  |  |  |  |  |  |
|  | 1 | **DC1 Fire Protection Re-Design SWO** |  | 2025-11-07 | 2025-11-20 |  |  |  |  |  |  |  |  |  |  |  |  |  |  |  |  |  |
| QTS-120000 |  | Fragnet / Fire Protection Re-Work Delay // NTP From QTS | 5d | 2025-11-07 A | 2025-11-20 A | QTS-1371 SS | 100% |  | 2025-11-07 | 2025-11-13 |  |  | **GLOBAL - 5 Day Workweek w/ Basic Holidays | 01ADMIN |  |  |  |  |  |  |  |  |
| QTS-120010 |  | Fragnet / Fire Protection Re-Work Delay // Re-Design Fire Protection | 20d | 2025-11-13 A | 2025-11-20 A | QTS-120000 SS | 100% |  | 2025-11-14 | 2025-12-15 |  |  | **GLOBAL - 5 Day Workweek w/ Basic Holidays | 01ADMIN |  |  |  |  |  |  |  |  |
|  | 1 | **Front of House (FOH)** |  | 2025-03-31 | 2026-04-10 |  |  |  |  |  |  |  |  |  |  |  |  |  |  |  |  |  |
|  | 2 | **Front of House / Mechanical Yard Buildout** |  | 2025-03-31 | 2026-01-23 |  |  |  |  |  |  |  |  |  |  |  |  |  |  |  |  |  |
| QTS-41541 |  | FOH / Mechanical Yard // Form, Reinforce, & Pour Thickened Slab On Grade for Transformer & Generator | 8d | 2025-09-26 A | 2025-10-15 A | QTS-42791 SS | 100% |  | 2025-09-26 | 2025-10-07 |  |  |  | 01ADMIN | Suntec Concrete Inc | Level 1 | Gen Yard | Construction | Phase 1 | IGMP | Ron Carroll | Construction |
| QTS-41581 |  | FOH / Mechanical Yard // OFCI - L2 SET IN PLACE - Eq Type # - House Transformer - 1 units | 3d | 2025-10-20 A | 2025-10-20 A | QTS-36121, QTS-41541 | 100% |  | 2025-10-29 | 2025-10-31 |  |  |  | 01ADMIN | Rosendin Electric, Inc | Level 1 | Gen Yard | Construction | Phase 1 | IGMP | Scott Masterson | Construction |
| QTS-41621 |  | FOH / Mechanical Yard // Install Raceway from Transformers to SWD | 5d | 2025-11-21 A | 2025-12-01 A | QTS-41581, QTS-41641 SS+2d | 100% |  |  |  |  |  |  | 01ADMIN | Rosendin Electric, Inc | Level 1 | Gen Yard | Construction | Phase 1 | IGMP | Scott Masterson | Construction |
| QTS-41711 |  | FOH / Mechanical Yard // OFCI - L2 SET IN PLACE - Eq Type # - House Generator - 1 units | 1d | 2025-11-21 A | 2025-11-21 A | QTS-41581, QTS-39701, QTS-39711, QTS-39721, QTS-39731 | 100% |  |  |  |  |  |  | 01ADMIN | Rosendin Electric, Inc | Level 1 | Gen Yard | Construction | Phase 1 |  | Scott Masterson | Construction |
| QTS-41641 |  | FOH / Mechanical Yard // Install Raceway from Generators to SWD | 5d | 2025-11-24 A | 2025-11-25 A | QTS-41711 | 100% |  | 2025-11-19 | 2025-11-25 |  |  |  | 01ADMIN | Rosendin Electric, Inc | Level 1 | Gen Yard | Construction | Phase 1 | IGMP | Scott Masterson | Construction |
| QTS-41631 |  | FOH / Mechanical Yard // Pull from Transformers to SWD | 10d | 2025-12-02 A | 2025-12-10 A | QTS-41621 | 100% |  | 2025-12-02 | 2025-12-15 |  |  |  | 01ADMIN | Rosendin Electric, Inc | Level 1 | Gen Yard | Construction | Phase 1 | IGMP | Scott Masterson | Construction |
| QTS-41651 |  | FOH / Mechanical Yard // Pull from Generators to SWD | 4d | 2025-12-02 A | 2025-12-04 A | QTS-41641, QTS-41711, QTS-41631 SS | 100% |  | 2025-12-09 | 2025-12-12 |  |  |  | 01ADMIN | Rosendin Electric, Inc | Level 1 | Gen Yard | Construction | Phase 1 | IGMP | Scott Masterson | Construction |
| QTS-1000500 |  | FOH / Mechanical Yard // Terminate Wire from Transformers to SWD | 2d | 2025-12-09 A | 2025-12-10 A | QTS-41631 SS | 100% |  |  |  |  |  |  | 01ADMIN | Rosendin Electric, Inc | Level 1 | Gen Yard | Construction | Phase 1 | IGMP | Scott Masterson | Construction |
| QTS-1000510 |  | FOH / Mechanical Yard // Terminate Wire from Generator to SWD | 2d | 2025-12-11 A | 2025-12-12 A | QTS-41651 FF+1d, QTS-1000500 | 100% |  |  |  |  |  |  | 01ADMIN | Rosendin Electric, Inc | Level 1 | Gen Yard | Construction | Phase 1 | IGMP | Scott Masterson | Construction |
|  | 1 | **Fragnet / Incorrect Breakers in House Panel** |  | 2025-03-31 | 2026-01-23 |  |  |  |  |  |  |  |  |  |  |  |  |  |  |  |  |  |
| QTS-120260 |  | Fragnet / FOH / Mechanical Yard // Submittal Approved for FOH Switch Board | 1d | 2025-03-31 A | 2025-03-31 A | QTS-1030 SS | 100% |  |  |  |  |  |  | 01ADMIN | Rosendin Electric, Inc | Level 1 | Gen Yard | Construction | Phase 1 | IGMP | Scott Masterson | Construction |
| QTS-120270 |  | Fragnet / FOH / Mechanical Yard // Switch Board Changes Confirmed by Vendor | 1d | 2025-05-30 A | 2025-05-30 A | QTS-120260 | 100% |  |  |  |  |  |  | 01ADMIN | Rosendin Electric, Inc | Level 1 | Gen Yard | Construction | Phase 1 | IGMP | Scott Masterson | Construction |
| QTS-120280 |  | Fragnet / FOH / Mechanical Yard // Breaker Change Quote Submitted by Vendor to QTS | 1d | 2025-08-22 A | 2025-08-22 A | QTS-120270 | 100% |  | 2025-05-30 | 2025-05-30 |  |  |  | 01ADMIN | Rosendin Electric, Inc | Level 1 | Gen Yard | Construction | Phase 1 | IGMP | Scott Masterson | Construction |
| QTS-120290 |  | Fragnet / FOH / Mechanical Yard // Breaker Change PO Not Issued to Vendor by QTS | 1d | 2025-09-16 A | 2025-09-16 A | QTS-120280 | 100% |  | 2025-05-30 | 2025-05-30 |  |  |  | 01ADMIN | Rosendin Electric, Inc | Level 1 | Gen Yard | Construction | Phase 1 | IGMP | Scott Masterson | Construction |
| QTS-120300 |  | Fragnet / FOH / Mechanical Yard // Breaker Change PO Issued to Vendor by QTS | 1d | 2025-10-02 A | 2025-10-02 A | QTS-120290 | 100% |  | 2025-05-30 | 2025-05-30 |  |  |  | 01ADMIN | Rosendin Electric, Inc | Level 1 | Gen Yard | Construction | Phase 1 | IGMP | Scott Masterson | Construction |
| QTS-120310 |  | Fragnet / FOH / Mechanical Yard // Breaker Procurement | 69d | 2025-10-03 A | 2026-01-14 | QTS-120300 | 100% | 0d | 2025-10-03 | 2026-01-16 | 151d | 0d |  | 01ADMIN | Rosendin Electric, Inc | Level 1 | Gen Yard | Construction | Phase 1 | IGMP | Scott Masterson | Construction |
| QTS-120320 |  | Fragnet / FOH / Mechanical Yard // Swap and NETA Test Breakers | 6d | 2026-01-14 | 2026-01-22 | QTS-120310 |  |  |  |  | 151d | 0d |  | 01ADMIN | Rosendin Electric, Inc | Level 1 | Gen Yard | Construction | Phase 1 | IGMP | Scott Masterson | Construction |
| QTS-120330 |  | Fragnet / FOH / Mechanical Yard // Terminate Wire at Switchboard | 1d | 2026-01-23 | 2026-01-23 | QTS-120320 |  |  |  |  | 151d | 73d |  | 01ADMIN | Rosendin Electric, Inc | Level 1 | Gen Yard | Construction | Phase 1 | IGMP | Scott Masterson | Construction |

Notes:
- QTS-41541: allucent_notes_20251014_152335: Jason Johnston on 2025-10-07 13:10: Underground MV delaying start of / transformer pad. Add line for gen pad that goes with zone 1 gen / pads. / allucent_notes_20251021_145627: Jason Johnston on 2025-09-30 12:09: Schedule error / Jason Johnston on 2025-10-07 13:10: Underground MV delaying start of transformer pad. Add line for gen pad that goes with zone 1 gen pads. / allucent_notes: 2025-09-30 12:09 - User: Jason Johnston - Date Added: 2025-09-30 12:09 - Note: Schedule error / 2025-10-07 13:10 - User: Jason Johnston - Date Added: 2025-10-07 13:10 - Note: Underground MV delaying start of transformer pad. Add line for gen pad that goe
- QTS-41581: allucent_notes_20251021_145627: Scott Masterson on 2025-10-21 11:10: Installed HSE transformer. / Scott Masterson on 2025-10-21 11:10: Installed HSE transformer. / allucent_notes: 2025-10-21 11:10 - User: Scott Masterson - Date Added: 2025-10-21 11:10 - Note: Installed HSE transformer. / 2025-10-21 11:10 - User: Scott Masterson - Date Added: 2025-10-21 11:10 - Note: Installed HSE transformer.
- QTS-41621: allucent_notes_20251118_192630: Jason Johnston on 2025-11-19T02:22:34.690Z: undo / allucent_notes_20251202_153722: Jason Johnston on 2025-11-19T02:22:34.690Z: undo / allucent_notes: 2025-11-19T02:22:34.690Z - User: Jason Johnston - Date Added: 2025-11-19T02:22:34.690Z - Note: undo
- QTS-41711: allucent_notes_20251021_145627: Scott Masterson on 2025-10-21 11:10: Generator ROJ is set for 11/10 / allucent_notes_20251027_224008: Scott Masterson on 2025-10-21 11:10: Generator ROJ is set for 11/10 / allucent_notes_20251028_163138: Scott Masterson on 2025-10-21 11:10: Generator ROJ is set for 11/10 / allucent_notes_20251104_160200: Scott Masterson on 2025-10-21 11:10: Generator ROJ is set for 11/10 / Jason Johnston on 2025-11-04 10:11: Earlier set date / allucent_notes_20251111_182405: Scott Masterson on 2025-10-21 11:10: Generator ROJ is set for 11/10 / Jason Johnston on 2025-11-04 10:11: Earlier set date / Jason Johnston on 2025-11-11 14:11: Slab needs to be corrected before set can happen. / allucent_notes_20251118_192630: Scott Masterson on 2025-10-21 11:10: Generator ROJ is set for 11/10 / Jason Johnston on 2025-11-04 10:11: Earlier set date / Jason Johnston on 2025-11-11 14:11: Slab needs to be corrected before set can / happen. / Jason Johnston on 2025-11-19T02:22:24.588Z: Pad corrections complete 11/20 / setting 11/21. / allucent_notes_20251202_153722: Scott Masterson on 2025-10-21 11:10: Generator ROJ is set for 11/10 / Jason Johnston on 2025-11-04 10:11: Earlier set date / Jason Johnston on 2025-11-11 14:11: Slab needs to be corrected before set can happen. / Jason Johnston on 2025-11-19T02:22:24.588Z: undo / allucent_notes: 2025-10-21 11:10 - User: Scott Masterson - Date Added: 2025-10-21 11:10 - Note: Generator ROJ is set for 11/10 / 2025-11-04 10:11 - User: Jason Johnston - Date Added: 2025-11-04 10:11 - Note: Earlier set date / 2025-11-11 14:11 - User: Jason Johnston -
- QTS-41641: allucent_notes_20251118_192630: Jason Johnston on 2025-11-19T02:22:29.356Z: undo / allucent_notes_20251202_153722: Jason Johnston on 2025-11-19T02:22:29.356Z: undo / allucent_notes: 2025-11-19T02:22:29.356Z - User: Jason Johnston - Date Added: 2025-11-19T02:22:29.356Z - Note: undo
- QTS-41631: allucent_notes_20251209_203830: Jason Johnston on 2025-12-09 20:34: Need update from team / allucent_notes_20251216_165335: Jason Johnston on 2025-12-09 20:34: Need update from team / allucent_notes: 2025-12-09 20:34 - User: Jason Johnston - Date Added: 2025-12-09 20:34 - Note: Need update from team

| ID | WBS | Activity | Duration | Start | Finish | Predecessors | Complete | Remaining | Planned start | Planned finish | Total float | Free float | Constraint | Calendar | Level | Location | Project Section-1 | Phase-1-1 | Baseline | Layton Responsible Party | Project Section | Allucent CSI Group | Subcontractor | Phase-1 | Notes |
| --- | --- | --- | --- | --- | --- | --- | --- | --- | --- | --- | --- | --- | --- | --- | --- | --- | --- | --- | --- | --- | --- | --- | --- | --- | --- |
|  | 2 | **Remaining Scope** |  |  |  |  |  |  |  |  |  |  |  |  |  |  |  |  |  |  |  |  |  |  |  |
|  | 1 | **Level 1 Front of House Segment A (Gridlines A-P)** |  | 2025-09-11 | 2026-04-10 |  |  |  |  |  |  |  |  |  |  |  |  |  |  |  |  |  |  |  |  |
|  | 2 | **L1 / FOH // Tenant Improvement** |  | 2025-09-11 | 2026-03-24 |  |  |  |  |  |  |  |  |  |  |  |  |  |  |  |  |  |  |  |  |
| QTS-44091 |  | TI Area A // Concrete Seal | 3d | 2025-09-11 A | 2025-09-15 A | QTS-20771, QTS-21391 FF, QTS-46981 SS | 100% |  |  |  |  |  |  |  | Level 1 | FOH | Construction | Phase 1 | IGMP | Doug Hayes | Construction | 01ADMIN |  |  |  |
| QTS-46981 |  | TI Area A // Prime & Paint Exposed Structure | 5d | 2025-09-11 A | 2025-09-22 A | QTS-44781, QTS-47011 | 100% |  | 2025-09-11 | 2025-09-17 |  |  |  |  | Level 1 | FOH | Construction | Phase 1 | IGMP | Doug Hayes | Construction | 01ADMIN |  |  |  |
| QTS-25981 |  | TI Area A // Rough Overhead Fire Sprinkler | 10d | 2025-09-25 A | 2025-10-06 A | QTS-18841 | 100% |  | 2025-09-25 | 2025-10-08 |  |  |  |  | Level 1 | FOH |  |  | IGMP | Dave Wiltberger | Construction |  | Olympic West Fire Protection | Phase 1 |  |
| QTS-25421 |  | TI Area A // Layout Walls | 1d | 2025-09-30 A | 2025-09-30 A | QTS-20771, QTS-21391, QTS-25981 FF | 100% |  |  |  |  |  |  |  | Level 1 | FOH |  |  | IGMP | Doug Hayes | Construction |  |  | Phase 1 |  |
| QTS-25731 |  | TI Area A // Frame Priority Walls /Top Out ( Corridor 0105, 0140, 1011) | 6d | 2025-10-03 A | 2025-10-14 A | QTS-25421 | 100% |  | 2025-10-03 | 2025-10-10 |  |  |  |  | Level 1 | FOH |  |  | IGMP | Doug Hayes | Construction | 01ADMIN | Performance Contracting, Inc. | Phase 1 |  |
| QTS-44921 |  | TI Area A // Set HM Door Frames | 6d | 2025-10-03 A | 2025-10-31 A | QTS-25731 FF | 100% |  | 2025-10-03 | 2025-10-10 |  |  |  |  | Level 1 | FOH | Construction | Phase 1 | IGMP | Doug Hayes | Construction | 01ADMIN |  |  |  |
| QTS-26001 |  | TI Area A // Rough Overhead Electrical (Early Access) | 10d | 2025-10-15 A | 2025-11-12 A | QTS-25731 | 100% |  | 2025-10-15 | 2025-10-28 |  |  | start on or after 2026-01-09 |  | Level 1 | FOH |  |  | IGMP | Scott Masterson | Construction | 01ADMIN | Rosendin Electric, Inc | Phase 1 |  |
| QTS-25961 |  | TI Area A // Rough In-Wall Electrical, Security, & Access Controls | 8d | 2025-10-20 A | 2025-11-12 A | QTS-9871, QTS-25731, QTS-44921 FF | 100% |  | 2025-10-20 | 2025-10-29 |  |  |  |  | Level 1 | FOH |  |  | IGMP | Scott Masterson | Construction | 01ADMIN | Securitas Technology Corporation | Phase 1 |  |
| QTS-25971 |  | TI Area A // Rough In-Wall Plumbing | 2d | 2025-10-27 A | 2025-10-28 A | QTS-25731 | 100% |  |  |  |  |  |  |  | Level 1 | FOH |  |  | IGMP | Dave Wiltberger | Construction | 01ADMIN | Bel-Aire Mechanical, LLC | Phase 1 |  |
| QTS-27101 |  | TI Area A // Rough Overhead Plumbing & Refrigerant Piping | 6d | 2025-11-12 A | 2025-11-18 A | QTS-25421, QTS-25731, QTS-26001 | 100% |  | 2025-11-12 | 2025-11-19 |  |  |  |  | Level 1 | FOH |  |  | IGMP | Doug Hayes | Construction | 01ADMIN |  | Phase 1 |  |
| QTS-44101 |  | TI Area A // City Inspection Plumbing | 1d | 2025-11-19 A | 2025-11-19 A | QTS-27101 | 100% |  |  |  |  |  |  |  | Level 1 | FOH | Construction | Phase 1 | IGMP | Dave Wiltberger | Construction | 01ADMIN | Bel-Aire Mechanical, LLC |  |  |
| QTS-25991 |  | TI Area A // Layout Freight Elevator E2 Front & Start Install Shaft Wall | 7d | 2025-11-20 A | 2025-12-02 A | QTS-14901, QTS-25731 | 100% |  |  |  |  |  |  |  | Level 1 | FOH |  |  | IGMP | Sean Waisner | Construction | 01ADMIN |  | Phase 1 |  |
| QTS-26701 |  | TI Area A // Layout Passenger Elevator E1 Front & Start Install Shaft Wall | 7d | 2025-12-03 A | 2025-12-12 A | QTS-25731, QTS-25991 | 100% |  | 2025-12-03 | 2025-12-11 |  |  |  |  | Level 1 | FOH |  |  | IGMP | Sean Waisner | Construction | 01ADMIN |  | Phase 1 |  |
| QTS-26841 |  | TI Area A // MEP In Wall Inspection | 1d | 2025-12-03 A | 2025-12-03 A | QTS-25971, QTS-25961, QTS-25991 | 100% |  |  |  |  |  |  |  | Level 1 | FOH |  |  | IGMP | Dave Wiltberger | Construction | 01ADMIN | Bel-Aire Mechanical, LLC | Phase 1 |  |
| QTS-44931 |  | TI Area A // Pressure Test/Inspect Piping & Referigerant Lines | 2d | 2025-12-03 A | 2025-12-04 A | QTS-27101, QTS-101620 | 100% |  |  |  |  |  |  |  | Level 1 | FOH | Construction | Phase 1 | IGMP | Dave Wiltberger | Construction | 01ADMIN | Bel-Aire Mechanical, LLC |  |  |
| QTS-28381 |  | TI Area A // Insulate Piping & Referigerant Lines | 10d | 2025-12-05 A | 2025-12-31 A | QTS-25971, QTS-27101, QTS-44101, QTS-44931 | 100% |  | 2025-12-05 | 2025-12-18 |  |  |  |  | Level 1 | FOH |  |  | IGMP | Dave Wiltberger | Construction | 01ADMIN | Bel-Aire Mechanical, LLC | Phase 1 |  |
| QTS-28771 |  | TI Area A // Rough Overhead Ductwork | 10d | 2025-12-15 A | 2026-01-22 | QTS-25981 | 30% | 7d | 2025-12-15 | 2025-12-26 | 17d | 0d |  | QTS-PHX3 DC1 - 6 day w/ Holidays | Level 1 | FOH |  |  | IGMP | Dave Wiltberger | Construction | 01ADMIN | Bel-Aire Mechanical, LLC | Phase 1 | 1/20/26: Walls not completed enough to complete ductwork. |
| QTS-1001370 |  | TI Area A // Frame Shaft Wall for Elevator E1 | 2d | 2025-12-17 A | 2025-12-18 A | QTS-1030 SS | 100% |  |  |  |  |  |  |  | Level 1 | FOH |  |  | IGMP | Dave Wiltberger | Construction | 01ADMIN | Bel-Aire Mechanical, LLC | Phase 1 |  |
| QTS-1001360 |  | TI Area A // Complete Framing | 5d | 2025-12-19 A | 2025-12-23 A | QTS-1001370 | 100% |  | 2025-12-19 | 2025-12-30 |  |  |  |  | Level 1 | FOH |  |  | IGMP | Dave Wiltberger | Construction | 01ADMIN | Bel-Aire Mechanical, LLC | Phase 1 |  |
| QTS-1001340 |  | TI Area A // Rough In Wall Electrical | 10d | 2025-12-31 A | 2026-01-26 | QTS-26591 FF+4d, QTS-26561 FF+4d, QTS-1001360 FF+3d |  | 10d | 2025-12-31 | 2026-01-12 | 19d | 0d |  | QTS-PHX3 DC1 - 6 day w/ Holidays | Level 1 | FOH |  |  | IGMP | Scott Masterson | Construction | 01ADMIN | Bel-Aire Mechanical, LLC | Phase 1 |  |
| QTS-1002930 |  | TI Area A // Rough Overhead Electrical (Remaining) | 10d | 2026-01-23 | 2026-02-03 | QTS-28771 |  |  |  |  | 18d | 1d | start on or after 2026-01-09 | QTS-PHX3 DC1 - 6 day w/ Holidays | Level 1 | FOH |  |  | IGMP | Scott Masterson | Construction | 01ADMIN | Rosendin Electric, Inc | Phase 1 |  |
| QTS-44121 |  | TI Area A // City Inspection HVAC | 1d | 2026-01-23 | 2026-01-23 | QTS-28381, QTS-28771 |  |  |  |  | 17d | 0d |  | QTS-PHX3 DC1 - 6 day w/ Holidays | Level 1 | FOH | Construction | Phase 1 | IGMP | Dave Wiltberger | Construction |  | Bel-Aire Mechanical, LLC |  |  |
| QTS-29051 |  | TI Area A // Insulate HVAC Ductwork | 10d | 2026-01-24 | 2026-02-04 | QTS-28771 SS+5d, QTS-28771 FF+5d, QTS-44121 |  |  |  |  | 17d | 0d |  | QTS-PHX3 DC1 - 6 day w/ Holidays | Level 1 | FOH |  |  | IGMP | Dave Wiltberger | Construction |  | Bel-Aire Mechanical, LLC | Phase 1 |  |
| QTS-1001350 |  | TI Area A // In Wall Inspection Electrical | 1d | 2026-01-27 | 2026-01-27 | QTS-1001340 |  |  |  |  | 19d | 0d |  | QTS-PHX3 DC1 - 6 day w/ Holidays | Level 1 | FOH |  |  | IGMP | Dave Wiltberger | Construction | 01ADMIN | Bel-Aire Mechanical, LLC | Phase 1 |  |
| QTS-26921 |  | TI Area A // Insulate Walls | 3d | 2026-01-28 | 2026-01-30 | QTS-26841, QTS-1001340, QTS-1001350 |  |  |  |  | 19d | 0d |  | QTS-PHX3 DC1 - 6 day w/ Holidays | Level 1 | FOH |  |  | IGMP | Sean Waisner | Construction | 01ADMIN | Performance Contracting, Inc. | Phase 1 |  |
| QTS-27681 |  | TI Area A // Hang Drywall for Walls | 5d | 2026-01-29 | 2026-02-03 | QTS-25731, QTS-25971, QTS-26921 SS+1d, QTS-26701 |  |  |  |  | 19d | 0d |  | QTS-PHX3 DC1 - 6 day w/ Holidays | Level 1 | FOH |  |  | IGMP | Sean Waisner | Construction | 01ADMIN | Performance Contracting, Inc. | Phase 1 |  |
| QTS-1002600 |  | TI Area A // Measure and Fabricate Countertops | 2d | 2026-02-04 | 2026-02-05 | QTS-27681 |  |  |  |  | 153d | 0d |  | QTS-PHX3 DC1 - 6 day w/ Holidays | Level 1 | FOH |  |  | IGMP | Sean Waisner | Construction |  |  | Phase 1 |  |
| QTS-28291 |  | TI Area A // Tape & Finish Drywall for Walls | 10d | 2026-02-04 | 2026-02-14 | QTS-27681 SS+5d, QTS-27681 FF+5d |  |  |  |  | 19d | 0d |  | QTS-PHX3 DC1 - 6 day w/ Holidays | Level 1 | FOH |  |  | IGMP | Sean Waisner | Construction | 01ADMIN | Performance Contracting, Inc. | Phase 1 |  |
| QTS-44911 |  | TI Area A // Frame Hard Lids & Soffits | 6d | 2026-02-05 | 2026-02-11 | QTS-29051, QTS-1002930, QTS-1001360, QTS-25731, QTS-26001 SS |  |  |  |  | 17d | 0d |  | QTS-PHX3 DC1 - 6 day w/ Holidays | Level 1 | FOH | Construction | Phase 1 | IGMP | Sean Waisner | Construction | 01ADMIN | Performance Contracting, Inc. |  |  |
| QTS-1002590 |  | TI Area A // Install Countertops | 5d | 2026-02-06 | 2026-02-11 | QTS-1002600 |  |  |  |  | 153d | 34d |  | QTS-PHX3 DC1 - 6 day w/ Holidays | Level 1 | FOH |  |  | IGMP | Sean Waisner | Construction |  |  | Phase 1 |  |
| QTS-1002580 |  | TI Area A // Install Light Fixtures - Hard Lid | 5d | 2026-02-12 | 2026-02-17 | QTS-44911 |  |  |  |  | 17d | 0d |  | QTS-PHX3 DC1 - 6 day w/ Holidays | Level 1 | FOH |  |  | IGMP | Scott Masterson | Construction |  | Rosendin Electric, Inc | Phase 1 |  |
| QTS-29091 |  | TI Area A // Prime & Paints Walls | 2d | 2026-02-16 | 2026-02-17 | QTS-28291 |  |  |  |  | 19d | 0d |  | QTS-PHX3 DC1 - 6 day w/ Holidays | Level 1 | FOH |  |  | IGMP | Sean Waisner | Construction |  | Pennington Painting Company, LLC | Phase 1 |  |
| QTS-29151 |  | TI Area A // Install Low Voltage Trim | 5d | 2026-02-18 | 2026-02-23 | QTS-29091 |  |  |  |  | 36d | 4d |  | QTS-PHX3 DC1 - 6 day w/ Holidays | Level 1 | FOH |  |  | IGMP | Scott Masterson | Construction |  | Rosendin Electric, Inc | Phase 1 |  |
| QTS-29371 |  | TI Area A // Install Armstrong Ceiling Grid | 4d | 2026-02-18 | 2026-02-21 | QTS-29091, QTS-29051 FF, QTS-25981 |  |  |  |  | 19d | 0d |  | QTS-PHX3 DC1 - 6 day w/ Holidays | Level 1 | FOH |  |  | IGMP | Sean Waisner | Construction |  | Performance Contracting, Inc. | Phase 1 |  |
| QTS-44941 |  | TI Area A // Hang Drywall for Hard Lids and Soffits | 10d | 2026-02-18 | 2026-02-28 | QTS-1002580, QTS-44911, QTS-29051 |  |  |  |  | 17d | 0d |  | QTS-PHX3 DC1 - 6 day w/ Holidays | Level 1 | FOH | Construction | Phase 1 | IGMP | Sean Waisner | Construction |  | Performance Contracting, Inc. |  |  |
| QTS-29411 |  | TI Area A // Install Mechanical Trim | 8d | 2026-02-19 | 2026-02-27 | QTS-29371 SS+1d, QTS-29371 FF+1d |  |  |  |  | 19d | 0d |  | QTS-PHX3 DC1 - 6 day w/ Holidays | Level 1 | FOH |  |  | IGMP | Dave Wiltberger | Construction |  | Bel-Aire Mechanical, LLC | Phase 1 |  |
| QTS-29581 |  | TI Area A // Install Light Fixtures - Ceiling Grid | 5d | 2026-02-23 | 2026-02-27 | QTS-29091, QTS-29371 |  |  |  |  | 32d | 0d |  | QTS-PHX3 DC1 - 6 day w/ Holidays | Level 1 | FOH |  |  | IGMP | Scott Masterson | Construction |  | Rosendin Electric, Inc | Phase 1 |  |
| QTS-29591 |  | TI Area A // Install Fire Sprinkler Trim | 3d | 2026-02-23 | 2026-02-25 | QTS-29371 |  |  |  |  | 21d | 2d |  | QTS-PHX3 DC1 - 6 day w/ Holidays | Level 1 | FOH |  |  | IGMP | Dave Wiltberger | Construction |  | Olympic West Fire Protection | Phase 1 |  |
| QTS-44961 |  | TI Area A // Tape & Finish Drywall for Hard Lids and Soffits | 10d | 2026-02-24 | 2026-03-06 | QTS-44911, QTS-29051, QTS-44941 FF+5d |  |  |  |  | 17d | 0d |  | QTS-PHX3 DC1 - 6 day w/ Holidays | Level 1 | FOH | Construction | Phase 1 | IGMP | Sean Waisner | Construction |  | Performance Contracting, Inc. |  |  |
| QTS-29741 |  | TI Area A // MEP Overhead Inspection | 1d | 2026-02-28 | 2026-02-28 | QTS-29411, QTS-29591 |  |  |  |  | 19d | 0d |  | QTS-PHX3 DC1 - 6 day w/ Holidays | Level 1 | FOH |  |  | IGMP | Dave Wiltberger | Construction |  | Bel-Aire Mechanical, LLC | Phase 1 |  |
| QTS-29821 |  | TI Area A // Install Electrical Wall Trim | 5d | 2026-02-28 | 2026-03-05 | QTS-29091, QTS-29581, QTS-29151 |  |  |  |  | 32d | 24d |  | QTS-PHX3 DC1 - 6 day w/ Holidays | Level 1 | FOH |  |  | IGMP | Scott Masterson | Construction |  | Rosendin Electric, Inc | Phase 1 |  |
| QTS-29781 |  | TI Area A // Drop Ceiling Tiles | 5d | 2026-03-02 | 2026-03-06 | QTS-29741 |  |  |  |  | 19d | 0d |  | QTS-PHX3 DC1 - 6 day w/ Holidays | Level 1 | FOH |  |  | IGMP | Sean Waisner | Construction |  | Performance Contracting, Inc. | Phase 1 |  |
| QTS-29981 |  | TI Area A // Install Casework | 5d | 2026-03-07 | 2026-03-12 | QTS-29781 |  |  |  |  | 19d | 0d |  | QTS-PHX3 DC1 - 6 day w/ Holidays | Level 1 | FOH |  |  | IGMP | Sean Waisner | Construction |  |  | Phase 1 |  |
| QTS-44951 |  | TI Area A // Install Decorative Wood Ceilings (Corridor 0105) | 5d | 2026-03-07 | 2026-03-12 | QTS-30571, QTS-29781 |  |  |  |  | 24d | 5d |  | QTS-PHX3 DC1 - 6 day w/ Holidays | Level 1 | FOH | Construction | Phase 1 | IGMP | Sean Waisner | Construction |  | Performance Contracting, Inc. |  |  |
| QTS-44971 |  | TI Area A // Prime & Paints Hard Lids and Soffits | 2d | 2026-03-07 | 2026-03-09 | QTS-44961 |  |  |  |  | 17d | 0d |  | QTS-PHX3 DC1 - 6 day w/ Holidays | Level 1 | FOH | Construction | Phase 1 | IGMP | Sean Waisner | Construction |  | Pennington Painting Company, LLC |  |  |
| QTS-30051 |  | TI Area A // Install Flooring & Base | 10d | 2026-03-10 | 2026-03-20 | QTS-44971, QTS-29091 |  |  |  |  | 17d | 0d |  | QTS-PHX3 DC1 - 6 day w/ Holidays | Level 1 | FOH |  |  | IGMP | Sean Waisner | Construction |  |  | Phase 1 |  |
| QTS-30171 |  | TI Area A // Install Plumbing Finishes | 5d | 2026-03-13 | 2026-03-18 | QTS-29981 |  |  |  |  | 19d | 0d |  | QTS-PHX3 DC1 - 6 day w/ Holidays | Level 1 | FOH |  |  | IGMP | Dave Wiltberger | Construction |  | Bel-Aire Mechanical, LLC | Phase 1 |  |
| QTS-30421 |  | TI Area A // Set Doors & Hardware | 6d | 2026-03-17 | 2026-03-23 | QTS-30051 FF+2d, QTS-99650 |  |  |  |  | 17d | 0d |  | QTS-PHX3 DC1 - 6 day w/ Holidays | Level 1 | FOH |  |  | IGMP | Sean Waisner | Construction |  |  | Phase 1 |  |
| QTS-30351 |  | TI Area A // Install FEC's | 2d | 2026-03-19 | 2026-03-20 | QTS-1004520, QTS-30171, QTS-44951 |  |  |  |  | 19d | 2d |  | QTS-PHX3 DC1 - 6 day w/ Holidays | Level 1 | FOH |  |  | IGMP | Sean Waisner | Construction |  |  | Phase 1 |  |
| QTS-44141 |  | TI Area A // Test & Balance | 1d | 2026-03-24 | 2026-03-24 | QTS-30351, QTS-30421, QTS-1002590, QTS-50681, QTS-50401, QTS-29781, QTS-4741 |  |  |  |  | 119d | 0d |  | QTS-PHX3 DC1 - 6 day w/ Holidays | Level 1 | FOH | Construction | Phase 1 | IGMP | Dave Wiltberger | Construction | 01ADMIN | Bel-Aire Mechanical, LLC |  |  |

Notes:
- QTS-25731: allucent_notes_20251014_152335: Luis Vea on 2025-10-08 10:10: The space was available to start framing. / Luis Vea on 2025-10-14T16:49:06.456Z: getting pushed due to BZI in the way / due to RFI delay Response for the freedom stair embed, and completing the / elevator beams. they need the forklift to lift the beam and carry in the stairs. / resequencing trades after to complete this activity / Luis Vea on 2025-10-14T16:50:09.447Z: adding to previous comment, this is the / hallway 0140 / Luis Vea on 2025-10-14 09:10: BZI needs hallway 0140 to be able to use the / forklift to stand a beam for the elevator and freedom stairs, can i break out / the hallway 0140 and 1011 to a different activity? / allucent_notes: 2025-10-08 10:10 - User: Luis Vea - Date Added: 2025-10-08 10:10 - Note: The space was available to start framing. / 2025-10-14T16:49:06.456Z - User: Luis Vea - Date Added: 2025-10-14T16:49:06.456Z - Note: getting pushed due to BZI in the way due to R
- QTS-44921: allucent_notes_20251014_152335: Luis Vea on 2025-10-08 10:10: door frames have not been roughin. / allucent_notes_20251021_145627: Luis Vea on 2025-10-08 10:10: door frames have not been roughin. / Luis Vea on 2025-10-08 10:10: door frames have not been roughin / Jason Johnston on 2025-10-21 11:10: Awaiting delivery of door frames / allucent_notes_20251027_224008: Luis Vea on 2025-10-08 10:10: door frames have not been roughin. / Luis Vea on 2025-10-08 10:10: door frames have not been roughin / Jason Johnston on 2025-10-21 11:10: Awaiting delivery of door frames / allucent_notes_20251028_163138: Luis Vea on 2025-10-08 10:10: door frames have not been roughin. / Luis Vea on 2025-10-08 10:10: door frames have not been roughin / Jason Johnston on 2025-10-21 11:10: Awaiting delivery of door frames / allucent_notes_20251104_160200: Luis Vea on 2025-10-08 10:10: door frames have not been roughin. / Luis Vea on 2025-10-08 10:10: door frames have not been roughin / Jason Johnston on 2025-10-21 11:10: Awaiting delivery of door frames / allucent_notes: 2025-10-08 10:10 - User: Luis Vea - Date Added: 2025-10-08 10:10 - Note: door frames have not been roughin. / 2025-10-08 10:10 - User: Luis Vea - Date Added: 2025-10-08 10:10 - Note: door frames have not been roughin / 2025-10-21 11:10 - User: Jason Jo
- QTS-26001: allucent_notes_20251021_145627: Luis Vea on 2025-10-21T15:19:25.239Z: BZI is in the way with CAZ zones / allucent_notes_20251027_224008: Luis Vea on 2025-10-21T15:19:25.239Z: BZI is in the way with CAZ zones / allucent_notes_20251028_163138: Luis Vea on 2025-10-21T15:19:25.239Z: BZI is in the way with CAZ zones / Jason Johnston on 2025-10-28 16:10: Needs to be broken out into more detailed sections. / allucent_notes_20251104_160200: Luis Vea on 2025-10-21T15:19:25.239Z: BZI is in the way with CAZ zones / Jason Johnston on 2025-10-28 16:10: Needs to be broken out into more detailed sections. / Jason Johnston on 2025-11-03 11:11: HVAC needs to go before electrical. Need tie / allucent_notes_20251111_182405: Luis Vea on 2025-10-21T15:19:25.239Z: BZI is in the way with CAZ zones / Jason Johnston on 2025-10-28 16:10: Needs to be broken out into more detailed sections. / Jason Johnston on 2025-11-03 11:11: HVAC needs to go before electrical. Need tie / Jason Johnston on 2025-11-11T21:57:49.078Z: The overhead electrical needs to be restarted after early access and priority rooms are complete. / allucent_notes_20251118_192630: Luis Vea on 2025-10-21T15:19:25.239Z: BZI is in the way with CAZ zones / Jason Johnston on 2025-10-28 16:10: Needs to be broken out into more detailed sections. / Jason Johnston on 2025-11-03 11:11: HVAC needs to go before electrical. Need tie / Jason Johnston on 2025-11-11T21:57:49.078Z: The overhead electrical needs to be restarted after early access and priority rooms are complete. / allucent_notes: 2025-10-21T15:19:25.239Z - User: Luis Vea - Date Added: 2025-10-21T15:19:25.239Z - Note: BZI is in the way with CAZ zones / 2025-10-28 16:10 - User: Jason Johnston - Date Added: 2025-10-28 16:10 - Note: Needs to be broken out into more detailed sections
- QTS-25961: allucent_notes_20251104_160200: Jason Johnston on 2025-11-03 11:11: Pushing to next week in order to focus on priority rooms. / allucent_notes_20251111_182405: Jason Johnston on 2025-11-03 11:11: Pushing to next week in order to focus on priority rooms. / Jason Johnston on 2025-11-11 14:11: Like overhead it needs to be restarted after early / allucent_notes_20251118_192630: Jason Johnston on 2025-11-03 11:11: Pushing to next week in order to focus on priority rooms. / Jason Johnston on 2025-11-11 14:11: Like overhead it needs to be restarted after early / allucent_notes: 2025-11-03 11:11 - User: Jason Johnston - Date Added: 2025-11-03 11:11 - Note: Pushing to next week in order to focus on priority rooms. / 2025-11-11 14:11 - User: Jason Johnston - Date Added: 2025-11-11 14:11 - Note: Like overhead it needs to be restart
- QTS-25971: allucent_notes_20251021_145627: Luis Vea on 2025-10-21T15:17:01.669Z: delayed, focusing on line sets and shafts and fan walls area. per dave request / David Wiltberger on 2025-10-21 13:10: Wall schedule and focused changed to complete early access first the doo rest of build / allucent_notes_20251027_224008: Luis Vea on 2025-10-21T15:17:01.669Z: delayed, focusing on line sets and shafts and fan walls area. per dave request / David Wiltberger on 2025-10-21 13:10: Wall schedule and focused changed to complete early access first the doo rest of build / allucent_notes_20251028_163138: Luis Vea on 2025-10-21T15:17:01.669Z: delayed, focusing on line sets and shafts and fan walls area. per dave request / David Wiltberger on 2025-10-21 13:10: Wall schedule and focused changed to complete early access first the doo rest of build / allucent_notes: 2025-10-21T15:17:01.669Z - User: Luis Vea - Date Added: 2025-10-21T15:17:01.669Z - Note: delayed, focusing on line sets and shafts and fan walls area. per dave request / 2025-10-21 13:10 - User: David Wiltberger - Date Added: 2025-10-21 13:10 - Note: Wa
- QTS-25991: allucent_notes_20251021_145627: Luis Vea on 2025-10-21T15:18:39.606Z: BZI and PCI are in the way to start this scope / Jason Johnston on 2025-10-21 11:10: Still dealing with structural steel in area / allucent_notes_20251027_224008: Luis Vea on 2025-10-21T15:18:39.606Z: BZI and PCI are in the way to start this scope / Jason Johnston on 2025-10-21 11:10: Still dealing with structural steel in area / Jason Johnston on 2025-10-27 08:10: Waiting for dance floor removal. / allucent_notes_20251028_163138: Luis Vea on 2025-10-21T15:18:39.606Z: BZI and PCI are in the way to start this scope / Jason Johnston on 2025-10-21 11:10: Still dealing with structural steel in area / Jason Johnston on 2025-10-27 08:10: Waiting for dance floor removal. / allucent_notes_20251104_160200: Luis Vea on 2025-10-21T15:18:39.606Z: BZI and PCI are in the way to start this scope / Jason Johnston on 2025-10-21 11:10: Still dealing with structural steel in area / Jason Johnston on 2025-10-27 08:10: Waiting for dance floor removal. / Jason Johnston on 2025-11-04 12:11: Suntec needs to investigate pit to see if mitigation is required. / allucent_notes_20251111_182405: Luis Vea on 2025-10-21T15:18:39.606Z: BZI and PCI are in the way to start this scope / Jason Johnston on 2025-10-21 11:10: Still dealing with structural steel in area / Jason Johnston on 2025-10-27 08:10: Waiting for dance floor removal. / Jason Johnston on 2025-11-04 12:11: Suntec needs to investigate pit to see if mitigation is required. / Luis Vea on 2025-11-10 10:11: Layout has started today / Jason Johnston on 2025-11-11 14:11: Starting 11/12. Should be good to start but need to confirm. / allucent_notes_20251118_192630: Luis Vea on 2025-10-21T15:18:39.606Z: BZI and PCI are in the way to start / this scope / Jason Johnston on 2025-10-21 11:10: Still dealing with structural steel in / area / Jason Johnston on 2025-10-27 08:10: Waiting for dance floor removal. / Jason Johnston on 2025-11-04 12:11: Suntec needs to investigate pit to see if / mitigation is required. / Luis Vea on 2025-11-10 10:11: Layout has started today / Jason Johnston on 2025-11-11 14:11: Starting 11/12. Should be good to start / but need to confirm. / Jason Johnston on 2025-11-18T21:37:08.158Z: RFI 710 for beam fire proofing. / Starting 11/20. / allucent_notes_20251202_153722: Luis Vea on 2025-10-21T15:18:39.606Z: BZI and PCI are in the way to start this scope / Jason Johnston on 2025-10-21 11:10: Still dealing with structural steel in area / Jason Johnston on 2025-10-27 08:10: Waiting for dance floor removal. / Jason Johnston on 2025-11-04 12:11: Suntec needs to investigate pit to see if mitigation is required. / Luis Vea on 2025-11-10 10:11: Layout has started today / Jason Johnston on 2025-11-11 14:11: Starting 11/12. Should be good to start but need to confirm. / Jason Johnston on 2025-11-18T21:37:08.158Z: RFI for beam fire proofing / allucent_notes: 2025-10-21T15:18:39.606Z - User: Luis Vea - Date Added: 2025-10-21T15:18:39.606Z - Note: BZI and PCI are in the way to start this scope / 2025-10-21 11:10 - User: Jason Johnston - Date Added: 2025-10-21 11:10 - Note: Still dealing with structural steel
- QTS-26701: allucent_notes_20251216_165335: Sean Waisner on 2025-12-16 14:47: Had MEP in the way and had to move to install / allucent_notes: 2025-12-16 14:47 - User: Sean Waisner - Date Added: 2025-12-16 14:47 - Note: Had MEP in the way and had to move to install
- QTS-26841: allucent_notes_20251118_192630: David Wiltberger on 2025-11-17 16:11: out of sequence / allucent_notes_20251202_153722: David Wiltberger on 2025-11-17 16:11: out of sequence / allucent_notes_20251209_203830: David Wiltberger on 2025-11-17 16:11: out of sequence / allucent_notes: 2025-11-17 16:11 - User: David Wiltberger - Date Added: 2025-11-17 16:11 - Note: out of sequence
- QTS-28381: allucent_notes_20251230_164549: Sean Waisner on 2025-12-30 15:44: Do not have man power / allucent_notes: 2025-12-30 15:44 - User: Sean Waisner - Date Added: 2025-12-30 15:44 - Note: Do not have man power
- QTS-1001360: allucent_notes_20251230_164549: Sean Waisner on 2025-12-30 16:02: More man power arrives next week / allucent_notes: 2025-12-30 16:02 - User: Sean Waisner - Date Added: 2025-12-30 16:02 - Note: More man power arrives next week
- QTS-1002930: allucent_notes_20251021_145627: Luis Vea on 2025-10-21T15:19:25.239Z: BZI is in the way with CAZ zones / allucent_notes_20251027_224008: Luis Vea on 2025-10-21T15:19:25.239Z: BZI is in the way with CAZ zones / allucent_notes_20251028_163138: Luis Vea on 2025-10-21T15:19:25.239Z: BZI is in the way with CAZ zones / Jason Johnston on 2025-10-28 16:10: Needs to be broken out into more detailed sections. / allucent_notes_20251104_160200: Luis Vea on 2025-10-21T15:19:25.239Z: BZI is in the way with CAZ zones / Jason Johnston on 2025-10-28 16:10: Needs to be broken out into more detailed sections. / Jason Johnston on 2025-11-03 11:11: HVAC needs to go before electrical. Need tie / allucent_notes_20251111_182405: Luis Vea on 2025-10-21T15:19:25.239Z: BZI is in the way with CAZ zones / Jason Johnston on 2025-10-28 16:10: Needs to be broken out into more detailed sections. / Jason Johnston on 2025-11-03 11:11: HVAC needs to go before electrical. Need tie / Jason Johnston on 2025-11-11T21:57:49.078Z: The overhead electrical needs to be restarted after early access and priority rooms are complete. / allucent_notes_20251118_192630: Luis Vea on 2025-10-21T15:19:25.239Z: BZI is in the way with CAZ zones / Jason Johnston on 2025-10-28 16:10: Needs to be broken out into more detailed sections. / Jason Johnston on 2025-11-03 11:11: HVAC needs to go before electrical. Need tie / Jason Johnston on 2025-11-11T21:57:49.078Z: The overhead electrical needs to be restarted after early access and priority rooms are complete. / allucent_notes: 2025-10-21T15:19:25.239Z - User: Luis Vea - Date Added: 2025-10-21T15:19:25.239Z - Note: BZI is in the way with CAZ zones / 2025-10-28 16:10 - User: Jason Johnston - Date Added: 2025-10-28 16:10 - Note: Needs to be broken out into more detailed sections
- QTS-26921: allucent_notes_20251209_203830: Sean Waisner on 2025-12-09 15:28: Electrician not done / allucent_notes_20251216_165335: Sean Waisner on 2025-12-09 15:28: Electrician not done / Sean Waisner on 2025-12-16 14:48: this is too vague need to update by smaller areas / allucent_notes: 2025-12-09 15:28 - User: Sean Waisner - Date Added: 2025-12-09 15:28 - Note: Electrician not done / 2025-12-16 14:48 - User: Sean Waisner - Date Added: 2025-12-16 14:48 - Note: this is too vague need to update by smaller areas
- QTS-44911: allucent_notes_20251230_164549: Luis Vea on 2025-10-21T15:18:12.162Z: BZI is in the way for soffits in some locations / Jason Johnston on 2025-10-27 08:10: Second floor has taken priority and they will move to first floor once it is complete. / Luis Vea on 2025-11-10 10:11: PCI has not started, this activity is out of sequence. first its walls and MEP OH and then detail framing and ceiling / Jason Johnston on 2025-11-11 14:11: After all overhead work is complete. / Jason Johnston on 2025-11-18T21:35:09.473Z: not in green mile needs priority / Sean Waisner on 2025-12-02 15:21: Re-sequencing for priority / Sean Waisner on 2025-12-16 14:37: This needs to be broken up by room the title is too broad / allucent_notes_20251021_145627: Luis Vea on 2025-10-21T15:18:12.162Z: BZI is in the way for soffits in some locations / allucent_notes_20251027_224008: Luis Vea on 2025-10-21T15:18:12.162Z: BZI is in the way for soffits in some locations / Jason Johnston on 2025-10-27 08:10: Second floor has taken priority and they will move to first floor once it is complete. / allucent_notes_20251028_163138: Luis Vea on 2025-10-21T15:18:12.162Z: BZI is in the way for soffits in some locations / Jason Johnston on 2025-10-27 08:10: Second floor has taken priority and they will move to first floor once it is complete. / allucent_notes_20251104_160200: Luis Vea on 2025-10-21T15:18:12.162Z: BZI is in the way for soffits in some locations / Jason Johnston on 2025-10-27 08:10: Second floor has taken priority and they will move to first floor once it is complete. / allucent_notes_20251111_182405: Luis Vea on 2025-10-21T15:18:12.162Z: BZI is in the way for soffits in some locations / Jason Johnston on 2025-10-27 08:10: Second floor has taken priority and they will move to first floor once it is complete. / Luis Vea on 2025-11-10 10:11: PCI has not started, this activity is out of sequence. first its walls and MEP OH and then detail framing and ceiling / Jason Johnston on 2025-11-11 14:11: After all overhead work is complete. / allucent_notes_20251118_192630: Luis Vea on 2025-10-21T15:18:12.162Z: BZI is in the way for soffits in some locations / Jason Johnston on 2025-10-27 08:10: Second floor has taken priority and they will move to first floor once it is complete. / Luis Vea on 2025-11-10 10:11: PCI has not started, this activity is out of sequence. first its walls and MEP OH and then detail framing and ceiling / Jason Johnston on 2025-11-11 14:11: After all overhead work is complete. / Jason Johnston on 2025-11-18T21:35:09.473Z: not in green mile needs priority / allucent_notes_20251202_153722: Luis Vea on 2025-10-21T15:18:12.162Z: BZI is in the way for soffits in some locations / Jason Johnston on 2025-10-27 08:10: Second floor has taken priority and they will move to first floor once it is complete. / Luis Vea on 2025-11-10 10:11: PCI has not started, this activity is out of sequence. first its walls and MEP OH and then detail framing and ceiling / Jason Johnston on 2025-11-11 14:11: After all overhead work is complete. / Jason Johnston on 2025-11-18T21:35:09.473Z: not in green mile needs priority / Sean Waisner on 2025-12-02 15:21: Re-sequencing for priority / allucent_notes_20251209_203830: Luis Vea on 2025-10-21T15:18:12.162Z: BZI is in the way for soffits in some locations / Jason Johnston on 2025-10-27 08:10: Second floor has taken priority and they will move to first floor once it is complete. / Luis Vea on 2025-11-10 10:11: PCI has not started, this activity is out of sequence. first its walls and MEP OH and then detail framing and ceiling / Jason Johnston on 2025-11-11 14:11: After all overhead work is complete. / Jason Johnston on 2025-11-18T21:35:09.473Z: not in green mile needs priority / Sean Waisner on 2025-12-02 15:21: Re-sequencing for priority / allucent_notes_20251216_165335: Luis Vea on 2025-10-21T15:18:12.162Z: BZI is in the way for soffits in some locations / Jason Johnston on 2025-10-27 08:10: Second floor has taken priority and they will move to first floor once it is complete. / Luis Vea on 2025-11-10 10:11: PCI has not started, this activity is out of sequence. first its walls and MEP OH and then detail framing and ceiling / Jason Johnston on 2025-11-11 14:11: After all overhead work is complete. / Jason Johnston on 2025-11-18T21:35:09.473Z: not in green mile needs priority / Sean Waisner on 2025-12-02 15:21: Re-sequencing for priority / Sean Waisner on 2025-12-16 14:37: This needs to be broken up by room the title is too broad / allucent_notes: 2025-10-21T15:18:12.162Z - User: Luis Vea - Date Added: 2025-10-21T15:18:12.162Z - Note: BZI is in the way for soffits in some locations / 2025-10-27 08:10 - User: Jason Johnston - Date Added: 2025-10-27 08:10 - Note: Second floor has taken priority and
- QTS-44141: allucent_notes_20251202_153722: David Wiltberger on 2025-12-01 09:49: No power or controls to run unit for TAB / allucent_notes: 2025-12-01 09:49 - User: David Wiltberger - Date Added: 2025-12-01 09:49 - Note: No power or controls to run unit for TAB

| ID | WBS | Activity | Duration | Start | Finish | Predecessors | Complete | Remaining | Planned start | Planned finish | Total float | Free float | Calendar | Level | Location | Project Section-1 | Phase-1-1 | Baseline | Layton Responsible Party | Project Section | Allucent CSI Group | Subcontractor | Phase-1 | Notes |
| --- | --- | --- | --- | --- | --- | --- | --- | --- | --- | --- | --- | --- | --- | --- | --- | --- | --- | --- | --- | --- | --- | --- | --- | --- |
|  | 12 | **L1 / FOH // Elevator #E1** |  | 2025-12-03 | 2026-03-04 |  |  |  |  |  |  |  |  |  |  |  |  |  |  |  |  |  |  |  |
| QTS-27811 |  | Passenger Elevator E1 // Safety Barricade Install & Netting | 4d | 2025-12-03 A | 2025-12-04 A | QTS-26701 SS | 100% |  | 2025-12-01 | 2025-12-04 |  |  |  | Level 1 | FOH | Construction | Phase 1 | IGMP | Sean Waisner | Construction | 01ADMIN |  |  |  |
| QTS-28221 |  | Passenger Elevator E1 // Provide Temp Power Box at Level 1 Elevator Entry | 2d | 2025-12-03 A | 2025-12-04 A | QTS-27811 | 100% |  |  |  |  |  |  | Level 1 | FOH | Construction | Phase 1 | IGMP | Sean Waisner | Construction | 01ADMIN |  |  |  |
| QTS-1004430 |  | Passenger Elevator E1 // Sub Mobilization to Site | 28d | 2025-12-15 A | 2026-01-14 | QTS-26701 | 100% | 0d | 2025-12-15 | 2026-01-17 | -2d | 0d | QTS-PHX3 DC1 - 6 day w/ Holidays | Level 1 | FOH |  |  | IGMP | Sean Waisner | Construction | 01ADMIN | Otis Elevator Company | Phase 1 |  |
| QTS-29831 |  | Passenger Elevator E1 // Install Rails | 8d | 2026-01-14 | 2026-01-23 | QTS-1004430, QTS-28221, QTS-26701, QTS-22571 |  |  |  |  | 33d | 0d | QTS-PHX3 DC1 - 6 day w/ Holidays | Level 1 | FOH |  |  | IGMP | Sean Waisner | Construction | 01ADMIN | Otis Elevator Company | Phase 1 | 1/13/26: Sub Mobilization to Site 1/20. |
| QTS-30181 |  | Passenger Elevator E1 // Install Elevator Floor & Walls | 8d | 2026-01-24 | 2026-02-02 | QTS-29831 |  |  |  |  | 33d | 0d | QTS-PHX3 DC1 - 6 day w/ Holidays | Level 1 | FOH |  |  | IGMP | Sean Waisner | Construction | 01ADMIN | Otis Elevator Company | Phase 1 |  |
| QTS-30451 |  | Passenger Elevator E1 // Hoistway Equipment, Conduit & Wire | 8d | 2026-02-03 | 2026-02-11 | QTS-30181 |  |  |  |  | 33d | 0d | QTS-PHX3 DC1 - 6 day w/ Holidays | Level 1 | FOH |  |  | IGMP | Sean Waisner | Construction |  | Otis Elevator Company | Phase 1 |  |
| QTS-30481 |  | Passenger Elevator E1 // Install Elevator Thresholds & Grout | 2d | 2026-02-03 | 2026-02-04 | QTS-30181 |  |  |  |  | 34d | 0d | QTS-PHX3 DC1 - 6 day w/ Holidays | Level 1 | FOH | Construction | Phase 1 | IGMP | Sean Waisner | Construction |  | Otis Elevator Company |  |  |
| QTS-30531 |  | Passenger Elevator E1 // Install Conduit for Heat & Smoke Sensors Elevator Shaft | 2d | 2026-02-05 | 2026-02-06 | QTS-30481 |  |  |  |  | 34d | 1d | QTS-PHX3 DC1 - 6 day w/ Holidays | Level 1 | FOH | Construction | Phase 1 | IGMP | Sean Waisner | Construction |  | Otis Elevator Company |  |  |
| QTS-30571 |  | Passenger Elevator E1 // Install Entrances, Doors, Hardware | 7d | 2026-02-09 | 2026-02-16 | QTS-30531, QTS-30451 SS+5d, QTS-30181 |  |  |  |  | 33d | 0d | QTS-PHX3 DC1 - 6 day w/ Holidays | Level 1 | FOH |  |  | IGMP | Sean Waisner | Construction |  | Otis Elevator Company | Phase 1 |  |
| QTS-30691 |  | Passenger Elevator E1 // Pre-Adjustment Checklist | 1d | 2026-02-17 | 2026-02-17 | QTS-30451 FF, QTS-30571 |  |  |  |  | 33d | 0d | QTS-PHX3 DC1 - 6 day w/ Holidays | Level 1 | FOH |  |  | IGMP | Sean Waisner | Construction |  | Otis Elevator Company | Phase 1 |  |
| QTS-30711 |  | Passenger Elevator E1 // Adjust Passenger Elevator E1 | 3d | 2026-02-18 | 2026-02-20 | QTS-30691 |  |  |  |  | 33d | 0d | QTS-PHX3 DC1 - 6 day w/ Holidays | Level 1 | FOH |  |  | IGMP | Sean Waisner | Construction |  | Otis Elevator Company | Phase 1 |  |
| QTS-30721 |  | Passenger Elevator E1 // State Elevator Inspection | 5d | 2026-02-21 | 2026-02-26 | QTS-30711 |  |  |  |  | 33d | 0d | QTS-PHX3 DC1 - 6 day w/ Holidays | Level 1 | FOH |  |  | IGMP | Sean Waisner | Construction |  | Otis Elevator Company | Phase 1 |  |
| QTS-30761 |  | Passenger Elevator E1 // City Inspection | 5d | 2026-02-27 | 2026-03-04 | QTS-30721, QTS-30711 |  |  |  |  | 33d | 25d | QTS-PHX3 DC1 - 6 day w/ Holidays | Level 1 | FOH |  |  | IGMP | Sean Waisner | Construction |  | Otis Elevator Company | Phase 1 |  |
|  | 6 | **L1 / Zone 1 // Elevator #E3** |  | 2025-12-15 | 2026-04-10 |  |  |  |  |  |  |  |  |  |  |  |  |  |  |  |  |  |  |  |
| QTS-44071 |  | Passenger Elevator E3 // Layout Passenger Elevator E3 Front & Start Install Shaft Wall | 7d | 2025-12-15 A | 2025-12-23 A | QTS-26701 | 100% |  | 2025-12-12 | 2025-12-22 |  |  |  | Level 1 | FOH | Construction | Phase 1 | IGMP | Sean Waisner | Construction | 01ADMIN |  |  |  |
| QTS-44051 |  | Passenger Elevator E3 // Safety Barricade Install & Netting | 4d | 2026-01-07 A | 2026-01-10 A | QTS-44071 | 100% |  |  |  |  |  | QTS-PHX3 DC1 - 6 day w/ Holidays | Level 1 | FOH | Construction | Phase 1 | IGMP | Sean Waisner | Construction | 01ADMIN | Otis Elevator Company |  |  |
| QTS-44061 |  | Passenger Elevator E3 // Provide Temp Power Box at Level 1 Elevator Entry | 2d | 2026-01-12 A | 2026-01-14 | QTS-44051 | 100% | 0d | 2026-01-12 | 2026-01-13 | 75d | 32d | QTS-PHX3 DC1 - 6 day w/ Holidays | Level 1 | FOH | Construction | Phase 1 | IGMP | Sean Waisner | Construction | 01ADMIN | Otis Elevator Company |  |  |
| QTS-43951 |  | Passenger Elevator E3 // Install Rails | 8d | 2026-02-21 | 2026-03-02 | QTS-44061, QTS-44081, QTS-30711 |  |  |  |  | 43d | 0d | QTS-PHX3 DC1 - 6 day w/ Holidays | Level 1 | FOH | Construction | Phase 1 | IGMP | Sean Waisner | Construction |  | Otis Elevator Company |  |  |
| QTS-43961 |  | Passenger Elevator E3 // Install Elevator Floor & Walls | 8d | 2026-03-03 | 2026-03-11 | QTS-43951 |  |  |  |  | 43d | 0d | QTS-PHX3 DC1 - 6 day w/ Holidays | Level 1 | FOH | Construction | Phase 1 | IGMP | Sean Waisner | Construction |  | Otis Elevator Company |  |  |
| QTS-43981 |  | Passenger Elevator E3 // Hoistway Equipment, Conduit & Wire | 8d | 2026-03-12 | 2026-03-20 | QTS-43961 |  |  |  |  | 43d | 0d | QTS-PHX3 DC1 - 6 day w/ Holidays | Level 1 | FOH | Construction | Phase 1 | IGMP | Sean Waisner | Construction |  | Otis Elevator Company |  |  |
| QTS-44031 |  | Passenger Elevator E3 // Install Elevator Thresholds & Grout | 2d | 2026-03-12 | 2026-03-13 | QTS-43961 |  |  |  |  | 44d | 0d | QTS-PHX3 DC1 - 6 day w/ Holidays | Level 1 | FOH | Construction | Phase 1 | IGMP | Sean Waisner | Construction |  | Otis Elevator Company |  |  |
| QTS-44041 |  | Passenger Elevator E3 // Install Conduit for Heat & Smoke Sensors Elevator Shaft | 2d | 2026-03-14 | 2026-03-16 | QTS-44031 |  |  |  |  | 44d | 1d | QTS-PHX3 DC1 - 6 day w/ Holidays | Level 1 | FOH | Construction | Phase 1 | IGMP | Sean Waisner | Construction |  | Otis Elevator Company |  |  |
| QTS-43971 |  | Passenger Elevator E3 // Install Entrances, Doors, Hardware | 7d | 2026-03-18 | 2026-03-25 | QTS-44041, QTS-43981 SS+5d, QTS-43961 |  |  |  |  | 43d | 0d | QTS-PHX3 DC1 - 6 day w/ Holidays | Level 1 | FOH | Construction | Phase 1 | IGMP | Sean Waisner | Construction |  | Otis Elevator Company |  |  |
| QTS-43991 |  | Passenger Elevator E3 // Pre-Adjustment Checklist | 1d | 2026-03-26 | 2026-03-26 | QTS-43981 FF, QTS-43971 |  |  |  |  | 43d | 0d | QTS-PHX3 DC1 - 6 day w/ Holidays | Level 1 | FOH | Construction | Phase 1 | IGMP | Sean Waisner | Construction |  | Otis Elevator Company |  |  |
| QTS-44001 |  | Passenger Elevator E3 // Adjust Passenger Elevator E3 | 3d | 2026-03-27 | 2026-03-30 | QTS-43991 |  |  |  |  | 43d | 0d | QTS-PHX3 DC1 - 6 day w/ Holidays | Level 1 | FOH | Construction | Phase 1 | IGMP | Sean Waisner | Construction |  | Otis Elevator Company |  |  |
| QTS-44021 |  | Passenger Elevator E3 // State Elevator Inspection | 5d | 2026-03-31 | 2026-04-04 | QTS-44001 |  |  |  |  | 43d | 0d | QTS-PHX3 DC1 - 6 day w/ Holidays | Level 1 | FOH | Construction | Phase 1 | IGMP | Sean Waisner | Construction |  | Otis Elevator Company |  |  |
| QTS-44011 |  | Passenger Elevator E3 // City Inspection | 5d | 2026-04-06 | 2026-04-10 | QTS-44021, QTS-44001 |  |  |  |  | 43d | 41d | QTS-PHX3 DC1 - 6 day w/ Holidays | Level 1 | FOH | Construction | Phase 1 | IGMP | Sean Waisner | Construction |  | Otis Elevator Company |  |  |

Notes:
- QTS-27811: allucent_notes_20251021_145627: Luis Vea on 2025-10-20T17:59:06.763Z: should be ordering material this week for this scope. / allucent_notes_20251027_224008: Luis Vea on 2025-10-20T17:59:06.763Z: should be ordering material this week for this scope. / allucent_notes_20251028_163138: Luis Vea on 2025-10-20T17:59:06.763Z: should be ordering material this week for this scope. / allucent_notes_20251104_160200: Luis Vea on 2025-10-20T17:59:06.763Z: should be ordering material this week for this scope. / allucent_notes_20251111_182405: Luis Vea on 2025-10-20T17:59:06.763Z: should be ordering material this week for this scope. / allucent_notes_20251118_192630: Luis Vea on 2025-10-20T17:59:06.763Z: should be ordering material this week for this scope. / allucent_notes_20251202_153722: Luis Vea on 2025-10-20T17:59:06.763Z: should be ordering material this week for this scope. / allucent_notes_20251209_203830: Luis Vea on 2025-10-20T17:59:06.763Z: should be ordering material this week for this scope. / allucent_notes: 2025-10-20T17:59:06.763Z - User: Luis Vea - Date Added: 2025-10-20T17:59:06.763Z - Note: should be ordering material this week for this scope.
- QTS-1004430: allucent_notes_20251230_164549: Sean Waisner on 2025-12-16 14:48: Need to complete shaft to mobilize / Sean Waisner on 2025-12-30 16:03: Mobilization of crew / allucent_notes_20251216_165335: Sean Waisner on 2025-12-16 14:48: Need to complete shaft to mobilize / allucent_notes: 2025-12-16 14:48 - User: Sean Waisner - Date Added: 2025-12-16 14:48 - Note: Need to complete shaft to mobilize / 2025-12-30 16:03 - User: Sean Waisner - Date Added: 2025-12-30 16:03 - Note: Mobilization of crew
- QTS-29831: allucent_notes_20251230_164549: Sean Waisner on 2025-12-16 14:48: Need to complete shaft to mobilize / Sean Waisner on 2025-12-30 16:03: Mobilization of crew / allucent_notes_20251216_165335: Sean Waisner on 2025-12-16 14:48: Need to complete shaft to mobilize / allucent_notes: 2025-12-16 14:48 - User: Sean Waisner - Date Added: 2025-12-16 14:48 - Note: Need to complete shaft to mobilize / 2025-12-30 16:03 - User: Sean Waisner - Date Added: 2025-12-30 16:03 - Note: Mobilization of crew
- QTS-44051: allucent_notes_20251230_164549: Sean Waisner on 2025-12-30 16:03: materials arrived 12-29 / allucent_notes: 2025-12-30 16:03 - User: Sean Waisner - Date Added: 2025-12-30 16:03 - Note: materials arrived 12-29

| ID | WBS | Activity | Duration | Start | Finish | Predecessors | Complete | Planned start | Planned finish | Level | Location | Project Section-1 | Phase-1-1 | Baseline | Layton Responsible Party | Project Section | Subcontractor | Allucent CSI Group |
| --- | --- | --- | --- | --- | --- | --- | --- | --- | --- | --- | --- | --- | --- | --- | --- | --- | --- | --- |
|  | 4 | **L1 / FOH // Telecom Riser #0135 (Early Access)** |  | 2025-09-11 | 2025-12-05 |  |  |  |  |  |  |  |  |  |  |  |  |  |
| QTS-44131 |  | Telecom Riser #0135 // Concrete Seal | 3d | 2025-09-11 A | 2025-09-15 A | QTS-44091 SS | 100% |  |  | Level 1 | FOH | Construction | Phase 1 | IGMP | Doug Hayes | Construction |  |  |
| QTS-2421 |  | Telecom Riser #0135 // Rough Overhead Fire Sprinkler | 2d | 2025-09-29 A | 2025-10-01 A | QTS-44131, QTS-25981 | 100% | 2025-09-29 | 2025-09-30 | Level 1 | FOH | Construction | Phase 1 | IGMP | Dave Wiltberger | Construction | Olympic West Fire Protection |  |
| QTS-1501 |  | Telecom Riser #0135 // Frame Walls | 2d | 2025-10-14 A | 2025-10-24 A | QTS-25731, QTS-2421 | 100% | 2025-10-13 | 2025-10-14 | Level 1 | FOH | Construction | Phase 1 | IGMP | Doug Hayes | Construction |  | 01ADMIN |
| QTS-2401 |  | Telecom Riser #0135 // Rough In Electrical | 10d | 2025-10-16 A | 2025-10-29 A | QTS-1501 FF | 100% |  |  | Level 1 | FOH | Construction | Phase 1 | IGMP | Scott Masterson | Construction | Rosendin Electric, Inc | 01ADMIN |
| QTS-2431 |  | Telecom Riser #0135 // Rough Overhead Linesets | 3d | 2025-10-27 A | 2025-10-29 A | QTS-1501 | 100% |  |  | Level 1 | FOH | Construction | Phase 1 | IGMP | Dave Wiltberger | Construction | Bel-Aire Mechanical, LLC | 01ADMIN |
| QTS-3151 |  | Telecom Riser #0135 // In Wall Inspection | 1d | 2025-10-30 A | 2025-10-30 A | QTS-2401 | 100% |  |  | Level 1 | FOH | Construction | Phase 1 | IGMP | Dave Wiltberger | Construction | Bel-Aire Mechanical, LLC | 01ADMIN |
| QTS-2411 |  | Telecom Riser #0135 // Set HM Frame | 1d | 2025-10-31 A | 2025-10-31 A | QTS-1501 FF, QTS-15231 | 100% |  |  | Level 1 | FOH | Construction | Phase 1 | IGMP | Doug Hayes | Construction |  | 01ADMIN |
| QTS-3361 |  | Telecom Riser #0135 // Hang Drywall | 1d | 2025-10-31 A | 2025-10-31 A | QTS-3151, QTS-2421 | 100% |  |  | Level 1 | FOH | Construction | Phase 1 | IGMP | Doug Hayes | Construction |  | 01ADMIN |
| QTS-3591 |  | Telecom Riser #0135 // Tape & Finish Drywall | 3d | 2025-11-03 A | 2025-11-11 A | QTS-3361 | 100% | 2025-11-13 | 2025-11-17 | Level 1 | FOH | Construction | Phase 1 | IGMP | Doug Hayes | Construction |  | 01ADMIN |
| QTS-4361 |  | Telecom Riser #0135 // Prime & Paint | 2d | 2025-11-12 A | 2025-11-13 A | QTS-3591 | 100% |  |  | Level 1 | FOH | Construction | Phase 1 | IGMP | Doug Hayes | Construction |  | 01ADMIN |
| QTS-45491 |  | Telecom Riser #0135 // Set Door & Hardware (Temp) | 1d | 2025-11-17 A | 2025-11-17 A | QTS-3591 FF, QTS-99650 SS, QTS-2411, QTS-99630 SS | 100% |  |  | Level 1 | FOH | Construction | Phase 1 | IGMP | Sean Waisner | Construction |  | 01ADMIN |
| QTS-4741 |  | Telecom Riser #0135 // Install AC Unit | 2d | 2025-11-19 A | 2025-11-20 A | QTS-4361, QTS-2431 | 100% |  |  | Level 1 | FOH | Construction | Phase 1 | IGMP | Dave Wiltberger | Construction | Bel-Aire Mechanical, LLC | 01ADMIN |
| QTS-5721 |  | Telecom Riser #0135 // Install Light Fixtures | 2d | 2025-11-24 A | 2025-11-25 A | QTS-4361, QTS-4741 | 100% |  |  | Level 1 | FOH | Construction | Phase 1 | IGMP | Scott Masterson | Construction | Rosendin Electric, Inc | 01ADMIN |
| QTS-6311 |  | Telecom Riser #0135 // Install Cable Racks | 5d | 2025-11-26 A | 2025-12-05 A | QTS-5721 | 100% | 2025-11-26 | 2025-12-04 | Level 1 | FOH | Construction | Phase 1 | IGMP | Scott Masterson | Construction | E2 Optics, LLC | 01ADMIN |
|  | 3 | **L1 / FOH // MMR #0134/0133 (Early Access)** |  | 2025-09-11 | 2025-11-24 |  |  |  |  |  |  |  |  |  |  |  |  |  |
| QTS-44161 |  | MMR Room #0134 // Concrete Seal | 3d | 2025-09-11 A | 2025-09-15 A | QTS-44131 | 100% |  |  | Level 1 | FOH | Construction | Phase 1 | IGMP | Doug Hayes | Construction |  |  |
| QTS-2381 |  | MMR Room #0134 // Rough Overhead Fire Sprinkler | 2d | 2025-09-25 A | 2025-09-26 A | QTS-44161, QTS-2421 | 100% |  |  | Level 1 | FOH | Construction | Phase 1 | IGMP | Dave Wiltberger | Construction | Olympic West Fire Protection |  |
| QTS-1491 |  | MMR Room #0134 // Frame Walls | 2d | 2025-10-14 A | 2025-10-15 A | QTS-25731, QTS-2381 | 100% | 2025-10-13 | 2025-10-14 | Level 1 | FOH | Construction | Phase 1 | IGMP | Doug Hayes | Construction |  | 01ADMIN |
| QTS-2361 |  | MMR Room #0134 // Rough In Electrical | 10d | 2025-10-16 A | 2025-10-29 A | QTS-1491 | 100% |  |  | Level 1 | FOH | Construction | Phase 1 | IGMP | Scott Masterson | Construction | Rosendin Electric, Inc | 01ADMIN |
| QTS-2391 |  | MMR Room #0134 // Rough Overhead Linesets | 5d | 2025-10-16 A | 2025-10-29 A | QTS-1491 | 100% | 2025-10-16 | 2025-10-22 | Level 1 | FOH | Construction | Phase 1 | IGMP | Dave Wiltberger | Construction | Bel-Aire Mechanical, LLC | 01ADMIN |
| QTS-3141 |  | MMR Room #0134 // In Wall Inspection | 1d | 2025-10-30 A | 2025-10-30 A | QTS-2361 | 100% |  |  | Level 1 | FOH | Construction | Phase 1 | IGMP | Dave Wiltberger | Construction | Bel-Aire Mechanical, LLC | 01ADMIN |
| QTS-2371 |  | MMR Room #0134 // Set HM Frame | 1d | 2025-10-31 A | 2025-10-31 A | QTS-1491 FF, QTS-15231 | 100% |  |  | Level 1 | FOH | Construction | Phase 1 | IGMP | Doug Hayes | Construction |  | 01ADMIN |
| QTS-3351 |  | MMR Room #0134 // Hang Drywall | 1d | 2025-10-31 A | 2025-11-04 A | QTS-3141, QTS-2381 | 100% | 2025-10-31 | 2025-10-31 | Level 1 | FOH | Construction | Phase 1 | IGMP | Doug Hayes | Construction |  | 01ADMIN |
| QTS-3581 |  | MMR Room #0134 // Tape & Finish Drywall | 3d | 2025-11-05 A | 2025-11-07 A | QTS-3351 | 100% |  |  | Level 1 | FOH | Construction | Phase 1 | IGMP | Doug Hayes | Construction |  | 01ADMIN |
| QTS-4731 |  | MMR Room #0134 // Plywood Install | 1d | 2025-11-10 A | 2025-11-10 A | QTS-3581 | 100% |  |  | Level 1 | FOH | Construction | Phase 1 | IGMP | Doug Hayes | Construction |  | 01ADMIN |
| QTS-4351 |  | MMR Room #0134 // Prime & Paint | 2d | 2025-11-11 A | 2025-11-12 A | QTS-4731 | 100% |  |  | Level 1 | FOH | Construction | Phase 1 | IGMP | Doug Hayes | Construction |  | 01ADMIN |
| QTS-5491 |  | MMR Room #0134 // Install AC Unit | 2d | 2025-11-13 A | 2025-11-14 A | QTS-4351, QTS-4731, QTS-2391 | 100% |  |  | Level 1 | FOH | Construction | Phase 1 | IGMP | Dave Wiltberger | Construction | Bel-Aire Mechanical, LLC | 01ADMIN |
| QTS-45501 |  | MMR Room #0134 // Set Door & Hardware (Temp) | 1d | 2025-11-17 A | 2025-11-17 A | QTS-3581 FF, QTS-99650 SS, QTS-2371, QTS-99630 SS | 100% |  |  | Level 1 | FOH | Construction | Phase 1 | IGMP | Sean Waisner | Construction |  | 01ADMIN |
| QTS-6111 |  | MMR Room #0134 // Install Light Fixtures | 2d | 2025-11-17 A | 2025-11-19 A | QTS-5491 | 100% | 2025-11-17 | 2025-11-18 | Level 1 | FOH | Construction | Phase 1 | IGMP | Scott Masterson | Construction | Rosendin Electric, Inc | 01ADMIN |
| QTS-6731 |  | MMR Room #0134 // Install Cable Racks | 5d | 2025-11-18 A | 2025-11-24 A | QTS-6111 | 100% | 2025-11-19 | 2025-11-25 | Level 1 | FOH | Construction | Phase 1 | IGMP | Scott Masterson | Construction | E2 Optics, LLC | 01ADMIN |

Notes:
- QTS-1501: allucent_notes_20251014_152335: Luis Vea on 2025-10-14 09:10: area is available / allucent_notes_20251021_145627: Luis Vea on 2025-10-14 09:10: area is available / Luis Vea on 2025-10-20T18:03:07.467Z: shaft wall can't be completed due to Dave direction to give BAM another day to complete line sets / Jason Johnston on 2025-10-21 11:10: Overhead line sets need to finish in area to allow for framing to complete. / allucent_notes_20251027_224008: Luis Vea on 2025-10-14 09:10: area is available / Luis Vea on 2025-10-20T18:03:07.467Z: shaft wall can't be completed due to Dave direction to give BAM another day to complete line sets / Jason Johnston on 2025-10-21 11:10: Overhead line sets need to finish in area to allow for framing to complete. / allucent_notes: 2025-10-14 09:10 - User: Luis Vea - Date Added: 2025-10-14 09:10 - Note: area is available / 2025-10-20T18:03:07.467Z - User: Luis Vea - Date Added: 2025-10-20T18:03:07.467Z - Note: shaft wall can't be completed due to Dave direction to give BAM another
- QTS-2401: allucent_notes_20251021_145627: Luis Vea on 2025-10-20T18:04:55.251Z: room needs to be completed per rough in can be installed, / shaft wall needs to be framed, waiting on another day per daves request to have bam complete the line sets / allucent_notes_20251027_224008: Luis Vea on 2025-10-20T18:04:55.251Z: room needs to be completed per rough in can be installed, / shaft wall needs to be framed, waiting on another day per daves request to have bam complete the line sets / allucent_notes_20251028_163138: Luis Vea on 2025-10-20T18:04:55.251Z: room needs to be completed per rough in can be installed, / shaft wall needs to be framed, waiting on another day per daves request to have bam complete the line sets / allucent_notes_20251104_160200: Luis Vea on 2025-10-20T18:04:55.251Z: room needs to be completed per rough in can be installed, / shaft wall needs to be framed, waiting on another day per daves request to have bam complete the line sets / allucent_notes: 2025-10-20T18:04:55.251Z - User: Luis Vea - Date Added: 2025-10-20T18:04:55.251Z - Note: room needs to be completed per rough in can be installed, shaft wall needs to be framed, waiting on another day per daves request to have bam complete the line sets
- QTS-2431: allucent_notes_20251021_145627: Luis Vea on 2025-10-20T18:03:40.220Z: completed tomorrow per Daves direction / allucent_notes_20251027_224008: Luis Vea on 2025-10-20T18:03:40.220Z: completed tomorrow per Daves direction / allucent_notes_20251028_163138: Luis Vea on 2025-10-20T18:03:40.220Z: completed tomorrow per Daves direction / allucent_notes_20251104_160200: Luis Vea on 2025-10-20T18:03:40.220Z: completed tomorrow per Daves direction / allucent_notes: 2025-10-20T18:03:40.220Z - User: Luis Vea - Date Added: 2025-10-20T18:03:40.220Z - Note: completed tomorrow per Daves direction
- QTS-2411: allucent_notes_20251021_145627: Luis Vea on 2025-10-20T18:05:46.507Z: tracking for oct. 27th for arrival, would a 1 or 2 for rough in / allucent_notes_20251027_224008: Luis Vea on 2025-10-20T18:05:46.507Z: tracking for oct. 27th for arrival, would a 1 or 2 for rough in / allucent_notes_20251028_163138: Luis Vea on 2025-10-20T18:05:46.507Z: tracking for oct. 27th for arrival, would a 1 or 2 for rough in / allucent_notes_20251104_160200: Luis Vea on 2025-10-20T18:05:46.507Z: tracking for oct. 27th for arrival, would a 1 or 2 for rough in / allucent_notes: 2025-10-20T18:05:46.507Z - User: Luis Vea - Date Added: 2025-10-20T18:05:46.507Z - Note: tracking for oct. 27th for arrival, would a 1 or 2 for rough in
- QTS-3591: allucent_notes_20251104_160200: Jason Johnston on 2025-11-03 11:11: Need shaft wall to be complete. / allucent_notes_20251111_182405: Jason Johnston on 2025-11-03 11:11: Need shaft wall to be complete. / Luis Vea on 2025-11-10 10:11: Walls will be completed 11/10 / allucent_notes_20251118_192630: Jason Johnston on 2025-11-03 11:11: Need shaft wall to be complete. / Luis Vea on 2025-11-10 10:11: Walls will be completed 11/10 / allucent_notes: 2025-11-03 11:11 - User: Jason Johnston - Date Added: 2025-11-03 11:11 - Note: Need shaft wall to be complete. / 2025-11-10 10:11 - User: Luis Vea - Date Added: 2025-11-10 10:11 - Note: Walls will be completed 11/10
- QTS-6311: allucent_notes_20251209_203830: Jason Johnston on 2025-12-09 20:34: Need update from team / allucent_notes: 2025-12-09 20:34 - User: Jason Johnston - Date Added: 2025-12-09 20:34 - Note: Need update from team
- QTS-1491: allucent_notes_20251014_152335: Luis Vea on 2025-10-14 09:10: area was available / allucent_notes_20251021_145627: Luis Vea on 2025-10-14 09:10: area was available / Luis Vea on 2025-10-20T18:06:46.732Z: shaft walls needs to be completed. waiting for line sets to be completed per Daves request, should be ready for install tomorrow. / Luis Vea on 2025-10-20T18:07:34.861Z: 0133 it is completed by the way / allucent_notes: 2025-10-14 09:10 - User: Luis Vea - Date Added: 2025-10-14 09:10 - Note: area was available / 2025-10-20T18:06:46.732Z - User: Luis Vea - Date Added: 2025-10-20T18:06:46.732Z - Note: shaft walls needs to be completed. waiting for line sets to be complet
- QTS-2361: allucent_notes_20251021_145627: Luis Vea on 2025-10-20T18:10:27.109Z: waiting for shaft wall to be framed, waiting for line sets to be completed, wall should be up tomorrow mid day per dave request / allucent_notes_20251027_224008: Luis Vea on 2025-10-20T18:10:27.109Z: waiting for shaft wall to be framed, waiting for line sets to be completed, wall should be up tomorrow mid day per dave request / allucent_notes_20251028_163138: Luis Vea on 2025-10-20T18:10:27.109Z: waiting for shaft wall to be framed, waiting for line sets to be completed, wall should be up tomorrow mid day per dave request / allucent_notes_20251104_160200: Luis Vea on 2025-10-20T18:10:27.109Z: waiting for shaft wall to be framed, waiting for line sets to be completed, wall should be up tomorrow mid day per dave request / allucent_notes: 2025-10-20T18:10:27.109Z - User: Luis Vea - Date Added: 2025-10-20T18:10:27.109Z - Note: waiting for shaft wall to be framed, waiting for line sets to be completed, wall should be up tomorrow mid day per dave request
- QTS-2391: allucent_notes_20251021_145627: Luis Vea on 2025-10-20T18:08:57.234Z: waiting for line sets to be completed in the shaft wall area. / allucent_notes_20251027_224008: Luis Vea on 2025-10-20T18:08:57.234Z: waiting for line sets to be completed in the shaft wall area. / Scott Masterson on 2025-10-27 16:10: Room was completed oveerr the weekend so BAM can finalize install this week. / allucent_notes_20251028_163138: Luis Vea on 2025-10-20T18:08:57.234Z: waiting for line sets to be completed in the shaft wall area. / Scott Masterson on 2025-10-27 16:10: Room was completed oveerr the weekend so BAM can finalize install this week. / Jason Johnston on 2025-10-28 16:10: Need more detailed break out top out work to get lines installed. / allucent_notes_20251104_160200: Luis Vea on 2025-10-20T18:08:57.234Z: waiting for line sets to be completed in the shaft wall area. / Scott Masterson on 2025-10-27 16:10: Room was completed oveerr the weekend so BAM can finalize install this week. / Jason Johnston on 2025-10-28 16:10: Need more detailed break out top out work to get lines installed. / allucent_notes: 2025-10-20T18:08:57.234Z - User: Luis Vea - Date Added: 2025-10-20T18:08:57.234Z - Note: waiting for line sets to be completed in the shaft wall area. / 2025-10-27 16:10 - User: Scott Masterson - Date Added: 2025-10-27 16:10 - Note: Room was completed o
- QTS-3351: allucent_notes_20251104_160200: Jason Johnston on 2025-11-03 11:11: Need shaft wall and west wall completed. / allucent_notes: 2025-11-03 11:11 - User: Jason Johnston - Date Added: 2025-11-03 11:11 - Note: Need shaft wall and west wall completed.
- QTS-3581: allucent_notes_20251111_182405: Luis Vea on 2025-11-10 10:11: Walls will be completed 11/11 / allucent_notes_20251118_192630: Luis Vea on 2025-11-10 10:11: Walls will be completed 11/11 / allucent_notes: 2025-11-10 10:11 - User: Luis Vea - Date Added: 2025-11-10 10:11 - Note: Walls will be completed 11/11
- QTS-4731: allucent_notes_20251111_182405: Luis Vea on 2025-11-10 11:11: plywood got installed 11/06 / Luis Vea on 2025-11-10 11:11: completed 11/07 / allucent_notes_20251118_192630: Luis Vea on 2025-11-10 11:11: plywood got installed 11/06 / Luis Vea on 2025-11-10 11:11: completed 11/07 / allucent_notes: 2025-11-10 11:11 - User: Luis Vea - Date Added: 2025-11-10 11:11 - Note: plywood got installed 11/06 / 2025-11-10 11:11 - User: Luis Vea - Date Added: 2025-11-10 11:11 - Note: completed 11/07
- QTS-4351: allucent_notes_20251111_182405: Luis Vea on 2025-11-10 11:11: paint will start 11/11 from PCI direction / allucent_notes_20251118_192630: Luis Vea on 2025-11-10 11:11: paint will start 11/11 from PCI direction / allucent_notes: 2025-11-10 11:11 - User: Luis Vea - Date Added: 2025-11-10 11:11 - Note: paint will start 11/11 from PCI direction

| ID | WBS | Activity | Duration | Start | Finish | Predecessors | Complete | Remaining | Planned start | Planned finish | Total float | Free float | Constraint | Calendar | Last Period Finish | Last Period Start | Subcontractor | Level | Location | Project Section-1 | Phase-1-1 | Baseline | Layton Responsible Party | Project Section | Allucent CSI Group | Notes |
| --- | --- | --- | --- | --- | --- | --- | --- | --- | --- | --- | --- | --- | --- | --- | --- | --- | --- | --- | --- | --- | --- | --- | --- | --- | --- | --- |
|  | 1 | **L1 / FOH // Restrooms #0112/0107/0108** |  | 2025-09-25 | 2026-03-06 |  |  |  |  |  |  |  |  |  |  |  |  |  |  |  |  |  |  |  |  |  |
| QTS-5731 |  | Restrooms #0107/0108/0112 // Rough Overhead Fire Sprinkler | 1d | 2025-09-25 A | 2025-09-26 A | QTS-2381 | 100% |  | 2025-09-29 | 2025-09-29 |  |  |  |  | 2023-01-17 | 2023-01-13 | Olympic West Fire Protection | Level 1 | FOH | Construction | Phase 1 | IGMP | Dave Wiltberger | Construction |  |  |
| QTS-1521 |  | Restrooms #0107/0108/0112 // Layout | 1d | 2025-10-07 A | 2025-10-07 A | QTS-25731 SS, QTS-5731 | 100% |  |  |  |  |  |  |  | 2023-01-05 | 2023-01-05 |  | Level 1 | FOH | Construction | Phase 1 | IGMP | Doug Hayes | Construction |  |  |
| QTS-2291 |  | Restrooms #0107/0108/0112 // Frame Walls & Ceilings | 2d | 2025-10-07 A | 2025-11-17 A | QTS-1521 SS | 100% |  | 2025-10-07 | 2025-10-08 |  |  |  |  | 2023-01-09 | 2023-01-06 |  | Level 1 | FOH | Construction | Phase 1 | IGMP | Doug Hayes | Construction | 01ADMIN |  |
| QTS-2621 |  | Restrooms #0107/0108/0112 // Rough In-Wall Plumbing | 5d | 2025-10-13 A | 2025-11-26 A | QTS-2291 FF | 100% |  | 2025-10-09 | 2025-10-15 |  |  |  |  | 2023-01-13 | 2023-01-11 | Bel-Aire Mechanical, LLC | Level 1 | FOH | Construction | Phase 1 | IGMP | Dave Wiltberger | Construction | 01ADMIN |  |
| QTS-2611 |  | Restrooms #0107/0108/0112 // Rough In-Wall Electrical, Security, & Access Controls | 2d | 2025-10-20 A | 2025-11-19 A | QTS-2291 FF | 100% |  | 2025-10-20 | 2025-10-21 |  |  |  |  | 2023-01-12 | 2023-01-10 | Securitas Technology Corporation | Level 1 | FOH | Construction | Phase 1 | IGMP | Scott Masterson | Construction | 01ADMIN |  |
| QTS-3731 |  | Restrooms #0107/0108/0112 // Install Backing for Restroom Specialties/ Stainless Steel Wall Brackets | 1d | 2025-12-17 A | 2025-12-17 A | QTS-2621 | 100% |  |  |  |  |  |  |  | 2023-02-27 | 2023-02-27 |  | Level 1 | FOH | Construction | Phase 1 | IGMP | Sean Waisner | Construction | 01ADMIN |  |
| QTS-1004440 |  | Restrooms #0107/0108/0112 // Complete MEP In Wall | 1d | 2026-01-14 A | 2026-01-14 A | QTS-2611 | 100% |  |  |  |  |  |  | QTS-PHX3 DC1 - 6 day w/ Holidays | 2023-01-17 | 2023-01-17 | Bel-Aire Mechanical, LLC | Level 1 | FOH | Construction | Phase 1 | IGMP | Dave Wiltberger | Construction | 01ADMIN | Need duration for this |
| QTS-3711 |  | Restrooms #0107/0108/0112 // In Wall Inspection | 1d | 2026-01-16 A | 2026-01-16 A | QTS-1004440, QTS-2621, QTS-2611 | 100% |  |  |  |  |  |  | QTS-PHX3 DC1 - 6 day w/ Holidays | 2023-01-17 | 2023-01-17 | Bel-Aire Mechanical, LLC | Level 1 | FOH | Construction | Phase 1 | IGMP | Dave Wiltberger | Construction | 01ADMIN |  |
| QTS-120020 |  | Restrooms #0107/0108/0112 // Frame Walls & Ceilings (Remaining) | 2d | 2026-01-21 | 2026-01-22 | QTS-8661 |  |  |  |  | 31d | 0d |  | QTS-PHX3 DC1 - 6 day w/ Holidays | 2023-01-09 | 2023-01-06 | Performance Contracting, Inc. | Level 1 | FOH | Construction | Phase 1 | IGMP | Sean Waisner | Construction | 01ADMIN |  |
| QTS-4381 |  | Restrooms #0107/0108/0112 // Insulate Walls | 1d | 2026-01-22 | 2026-01-22 | QTS-3711, QTS-3731 |  |  |  |  | 37d | 0d | start on or after 2026-01-22 | QTS-PHX3 DC1 - 6 day w/ Holidays | 2023-02-24 | 2023-02-24 | Performance Contracting, Inc. | Level 1 | FOH | Construction | Phase 1 | IGMP | Sean Waisner | Construction | 01ADMIN | 1/20/26: In wall plumbing is incomplete in this room. |
| QTS-2601 |  | Restrooms #0107/0108/0112 // Rough Overhead Mechanical | 5d | 2026-01-23 A | 2026-01-23 | QTS-2291, QTS-120020 FF | 100% | 0d | 2026-01-23 | 2026-01-28 | 31d | 0d |  | QTS-PHX3 DC1 - 6 day w/ Holidays | 2023-01-26 | 2023-01-23 | Bel-Aire Mechanical, LLC | Level 1 | FOH | Construction | Phase 1 | IGMP | Dave Wiltberger | Construction | 01ADMIN |  |
| QTS-3701 |  | Restrooms #0107/0108/0112 // Rough Overhead Plumbing | 5d | 2026-01-23 | 2026-01-28 | QTS-2601, QTS-2291 |  |  |  |  | 31d | 0d |  | QTS-PHX3 DC1 - 6 day w/ Holidays | 2023-01-12 | 2023-01-10 | Bel-Aire Mechanical, LLC | Level 1 | FOH | Construction | Phase 1 | IGMP | Dave Wiltberger | Construction | 01ADMIN |  |
| QTS-3721 |  | Restrooms #0107/0108/0112 // Rough Overhead Electrical/ Light Fixtures Install | 2d | 2026-01-23 | 2026-01-24 | QTS-2601, QTS-2291 |  |  |  |  | 34d | 3d |  | QTS-PHX3 DC1 - 6 day w/ Holidays | 2023-03-08 | 2023-03-07 | Specified Electrical Contractors, Inc | Level 1 | FOH | Construction | Phase 1 | IGMP | Scott Masterson | Construction | 01ADMIN |  |
| QTS-45511 |  | Restrooms #0107/0108/0112 // Frame Hard Lids | 1d | 2026-01-23 | 2026-01-23 | QTS-3731 |  |  |  |  | 36d | 5d | start on or after 2026-01-23 | QTS-PHX3 DC1 - 6 day w/ Holidays | 2023-03-13 | 2023-03-10 | Performance Contracting, Inc. | Level 1 | FOH | Construction | Phase 1 | IGMP | Sean Waisner | Construction | 01ADMIN |  |
| QTS-6131 |  | Restrooms #0107/0108/0112 // Hang Drywall Walls | 1d | 2026-01-23 | 2026-01-23 | QTS-5731, QTS-4381, QTS-3711 |  |  |  |  | 37d | 6d |  | QTS-PHX3 DC1 - 6 day w/ Holidays | 2023-03-01 | 2023-02-28 | Performance Contracting, Inc. | Level 1 | FOH | Construction | Phase 1 | IGMP | Sean Waisner | Construction | 01ADMIN |  |
| QTS-6141 |  | Restrooms #0107/0108/0112 // Above Ceiling Inspection | 1d | 2026-01-29 | 2026-01-29 | QTS-5731, QTS-3721, QTS-2601, QTS-3701 |  |  |  |  | 31d | 0d |  | QTS-PHX3 DC1 - 6 day w/ Holidays | 2023-03-09 | 2023-03-09 | Bel-Aire Mechanical, LLC | Level 1 | FOH | Construction | Phase 1 | IGMP | Dave Wiltberger | Construction | 01ADMIN |  |
| QTS-6321 |  | Restrooms #0107/0108/0112 // Hang Drywall on Hard Lids | 1d | 2026-01-30 | 2026-01-30 | QTS-6131 FF, QTS-6141, QTS-45511 |  |  |  |  | 31d | 0d |  | QTS-PHX3 DC1 - 6 day w/ Holidays | 2023-03-13 | 2023-03-10 | Performance Contracting, Inc. | Level 1 | FOH | Construction | Phase 1 | IGMP | Sean Waisner | Construction | 01ADMIN |  |
| QTS-44181 |  | Restrooms #0107/0108/0112 // Screw Inspection | 1d | 2026-01-31 | 2026-01-31 | QTS-6131, QTS-6321 |  |  |  |  | 31d | 0d |  | QTS-PHX3 DC1 - 6 day w/ Holidays | 2023-03-09 | 2023-03-09 |  | Level 1 | FOH | Construction | Phase 1 | IGMP | Sean Waisner | Construction | 01ADMIN |  |
| QTS-6751 |  | Restrooms #0107/0108/0112 // Tape & Finish Drywall | 3d | 2026-02-02 | 2026-02-04 | QTS-6131, QTS-6321, QTS-44181 |  |  |  |  | 31d | 0d |  | QTS-PHX3 DC1 - 6 day w/ Holidays | 2023-03-20 | 2023-03-14 | Performance Contracting, Inc. | Level 1 | FOH | Construction | Phase 1 | IGMP | Sean Waisner | Construction | 01ADMIN |  |
| QTS-7341 |  | Restrooms #0107/0108/0112 // Prime & Paint | 1d | 2026-02-05 | 2026-02-05 | QTS-6751 |  |  |  |  | 31d | 0d |  | QTS-PHX3 DC1 - 6 day w/ Holidays | 2023-04-12 | 2023-04-11 | Pennington Painting Company, LLC | Level 1 | FOH | Construction | Phase 1 | IGMP | Sean Waisner | Construction | 01ADMIN |  |
| QTS-7801 |  | Restrooms #0107/0108/0112 // Install Wall & Floor Tile | 10d | 2026-02-06 | 2026-02-17 | QTS-6751, QTS-7341, QTS-18241 |  |  |  |  | 31d | 0d |  | QTS-PHX3 DC1 - 6 day w/ Holidays | 2023-04-10 | 2023-04-06 |  | Level 1 | FOH | Construction | Phase 1 | IGMP | Sean Waisner | Construction |  |  |
| QTS-11021 |  | Restrooms #0107/0108/0112 // Plumbing Fixtures Install | 5d | 2026-02-18 | 2026-02-23 | QTS-7801, QTS-7341 |  |  |  |  | 36d | 0d |  | QTS-PHX3 DC1 - 6 day w/ Holidays | 2023-04-14 | 2023-04-13 | Bel-Aire Mechanical, LLC | Level 1 | FOH | Construction | Phase 1 | IGMP | Dave Wiltberger | Construction |  |  |
| QTS-11031 |  | Restrooms #0107/0108/0112 // Electrical Trim | 1d | 2026-02-18 | 2026-02-18 | QTS-7801, QTS-7341 |  |  |  |  | 39d | 0d |  | QTS-PHX3 DC1 - 6 day w/ Holidays | 2023-04-14 | 2023-04-13 | Specified Electrical Contractors, Inc | Level 1 | FOH | Construction | Phase 1 | IGMP | Scott Masterson | Construction |  |  |
| QTS-11041 |  | Restrooms #0107/0108/0112 // Field Measure for Countertops | 1d | 2026-02-18 | 2026-02-18 | QTS-6751, QTS-7801 |  |  |  |  | 31d | 0d |  | QTS-PHX3 DC1 - 6 day w/ Holidays |  |  |  | Level 1 | FOH | Construction | Phase 1 | IGMP | Sean Waisner | Construction |  |  |
| QTS-11411 |  | Restrooms #0107/0108/0112 // Final Coat of Paint | 1d | 2026-02-19 | 2026-02-19 | QTS-11031 |  |  |  |  | 39d | 0d |  | QTS-PHX3 DC1 - 6 day w/ Holidays |  |  | Pennington Painting Company, LLC | Level 1 | FOH | Construction | Phase 1 | IGMP | Sean Waisner | Construction |  |  |
| QTS-11421 |  | Restrooms #0107/0108/0112 // Fabricate & Delivery Countertops | 10d | 2026-02-19 | 2026-03-02 | QTS-11041 |  |  |  |  | 31d | 0d |  | QTS-PHX3 DC1 - 6 day w/ Holidays |  |  |  | Level 1 | FOH | Construction | Phase 1 | IGMP | Sean Waisner | Construction |  |  |
| QTS-11481 |  | Restrooms #0107/0108/0112 // Install Mechanical Trim | 3d | 2026-02-20 | 2026-02-23 | QTS-11411, QTS-7341 |  |  |  |  | 39d | 3d |  | QTS-PHX3 DC1 - 6 day w/ Holidays | 2023-04-14 | 2023-04-13 | Bel-Aire Mechanical, LLC | Level 1 | FOH | Construction | Phase 1 | IGMP | Dave Wiltberger | Construction |  |  |
| QTS-12121 |  | Restrooms #0107/0108/0112 // Install Restroom Specialties/ ADA Trim | 2d | 2026-02-24 | 2026-02-25 | QTS-11411, QTS-11021 |  |  |  |  | 36d | 0d |  | QTS-PHX3 DC1 - 6 day w/ Holidays | 2023-04-21 | 2023-04-20 |  | Level 1 | FOH | Construction | Phase 1 | IGMP | Sean Waisner | Construction |  |  |
| QTS-44191 |  | Restrooms #0107/0108/0112 // ADA Inspection | 1d | 2026-02-26 | 2026-02-26 | QTS-12121 |  |  |  |  | 36d | 0d |  | QTS-PHX3 DC1 - 6 day w/ Holidays | 2023-03-09 | 2023-03-09 |  | Level 1 | FOH | Construction | Phase 1 | IGMP | Sean Waisner | Construction |  |  |
| QTS-12501 |  | Restrooms #0107/0108/0112 // Set Doors & Hardware | 2d | 2026-02-27 | 2026-02-28 | QTS-11481, QTS-12121, QTS-44191, QTS-99650, QTS-99640 |  |  |  |  | 36d | 28d |  | QTS-PHX3 DC1 - 6 day w/ Holidays | 2023-04-21 | 2023-04-20 |  | Level 1 | FOH | Construction | Phase 1 | IGMP | Sean Waisner | Construction |  |  |
| QTS-13171 |  | Restrooms #0107/0108/0112 // Set Countertops | 2d | 2026-03-03 | 2026-03-04 | QTS-11421 |  |  |  |  | 31d | 0d |  | QTS-PHX3 DC1 - 6 day w/ Holidays |  |  |  | Level 1 | FOH | Construction | Phase 1 | IGMP | Sean Waisner | Construction |  |  |
| QTS-13301 |  | Restrooms #0107/0108/0112 // Install Plumbing Trim at Countertops | 2d | 2026-03-05 | 2026-03-06 | QTS-13171 |  |  |  |  | 31d | 23d |  | QTS-PHX3 DC1 - 6 day w/ Holidays |  |  |  | Level 1 | FOH | Construction | Phase 1 | IGMP | Sean Waisner | Construction |  |  |

Notes:
- QTS-2291: allucent_notes_20251014_152335: Luis Vea on 2025-10-14 10:10: going to push this to Saturday work, PCI is completing a critical item this week. / allucent_notes_20251021_145627: Luis Vea on 2025-10-14 10:10: going to push this to Saturday work, PCI is completing a critical item this week. / Luis Vea on 2025-10-20T18:16:28.459Z: waiting for shaft wall due to BAM line sets and duct run to be installed. / Jason Johnston on 2025-10-21 11:10: Reallocated manpower to zone 1 priority / allucent_notes_20251027_224008: Luis Vea on 2025-10-14 10:10: going to push this to Saturday work, PCI is completing a critical item this week. / Luis Vea on 2025-10-20T18:16:28.459Z: waiting for shaft wall due to BAM line sets and duct run to be installed. / Jason Johnston on 2025-10-21 11:10: Reallocated manpower to zone 1 priority / allucent_notes_20251028_163138: Luis Vea on 2025-10-14 10:10: going to push this to Saturday work, PCI is completing a critical item this week. / Luis Vea on 2025-10-20T18:16:28.459Z: waiting for shaft wall due to BAM line sets and duct run to be installed. / Jason Johnston on 2025-10-21 11:10: Reallocated manpower to zone 1 priority / allucent_notes_20251104_160200: Luis Vea on 2025-10-14 10:10: going to push this to Saturday work, PCI is completing a critical item this week. / Luis Vea on 2025-10-20T18:16:28.459Z: waiting for shaft wall due to BAM line sets and duct run to be installed. / Jason Johnston on 2025-10-21 11:10: Reallocated manpower to zone 1 priority / Jason Johnston on 2025-11-03 11:11: Working to complete by Thursday. / allucent_notes_20251111_182405: Luis Vea on 2025-10-14 10:10: going to push this to Saturday work, PCI is completing a critical item this week. / Luis Vea on 2025-10-20T18:16:28.459Z: waiting for shaft wall due to BAM line sets and duct run to be installed. / Jason Johnston on 2025-10-21 11:10: Reallocated manpower to zone 1 priority / Jason Johnston on 2025-11-03 11:11: Working to complete by Thursday. / Luis Vea on 2025-11-10 11:11: Walls have been completed, needing just ceiling / Jason Johnston on 2025-11-11 15:11: Add shaft wall build out. / allucent_notes_20251118_192630: Luis Vea on 2025-10-14 10:10: going to push this to Saturday work, PCI is completing a critical item this week. / Luis Vea on 2025-10-20T18:16:28.459Z: waiting for shaft wall due to BAM line sets and duct run to be installed. / Jason Johnston on 2025-10-21 11:10: Reallocated manpower to zone 1 priority / Jason Johnston on 2025-11-03 11:11: Working to complete by Thursday. / Luis Vea on 2025-11-10 11:11: Walls have been completed, needing just ceiling / Jason Johnston on 2025-11-11 15:11: Add shaft wall build out. / Jason Johnston on 2025-11-18T21:39:14.695Z: After Green Mile / allucent_notes: 2025-10-14 10:10 - User: Luis Vea - Date Added: 2025-10-14 10:10 - Note: going to push this to Saturday work, PCI is completing a critical item this week. / 2025-10-20T18:16:28.459Z - User: Luis Vea - Date Added: 2025-10-20T18:16:28.459Z - Note: waiting
- QTS-2621: allucent_notes_20251014_152335: Luis Vea on 2025-10-14 10:10: installing their carriers, and DWV connections. going to be running water lines this week / allucent_notes_20251021_145627: Luis Vea on 2025-10-14 10:10: installing their carriers, and DWV connections. going to be running water lines this week / David Wiltberger on 2025-10-21 13:10: Wall priority changed to complete early access on time / allucent_notes_20251027_224008: Luis Vea on 2025-10-14 10:10: installing their carriers, and DWV connections. going to be running water lines this week / David Wiltberger on 2025-10-21 13:10: Wall priority changed to complete early access on time / allucent_notes_20251028_163138: Luis Vea on 2025-10-14 10:10: installing their carriers, and DWV connections. going to be running water lines this week / David Wiltberger on 2025-10-21 13:10: Wall priority changed to complete early access on time / allucent_notes_20251104_160200: Luis Vea on 2025-10-14 10:10: installing their carriers, and DWV connections. going to be running water lines this week / David Wiltberger on 2025-10-21 13:10: Wall priority changed to complete early access on time / Jason Johnston on 2025-11-03T18:50:20.963Z: Waiting for Second floor tie in inspection to be completed. / allucent_notes_20251111_182405: Luis Vea on 2025-10-14 10:10: installing their carriers, and DWV connections. going to be running water lines this week / David Wiltberger on 2025-10-21 13:10: Wall priority changed to complete early access on time / Jason Johnston on 2025-11-03T18:50:20.963Z: Waiting for Second floor tie in inspection to be completed. / allucent_notes_20251118_192630: Luis Vea on 2025-10-14 10:10: installing their carriers, and DWV connections. going to be running water lines this week / David Wiltberger on 2025-10-21 13:10: Wall priority changed to complete early access on time / Jason Johnston on 2025-11-03T18:50:20.963Z: Waiting for Second floor tie in inspection to be completed. / David Wiltberger on 2025-11-17 16:11: out of sequence / allucent_notes_20251202_153722: Luis Vea on 2025-10-14 10:10: installing their carriers, and DWV connections. going to be running water lines this week / David Wiltberger on 2025-10-21 13:10: Wall priority changed to complete early access on time / Jason Johnston on 2025-11-03T18:50:20.963Z: Waiting for Second floor tie in inspection to be completed. / David Wiltberger on 2025-11-17 16:11: out of sequence / allucent_notes: 2025-10-14 10:10 - User: Luis Vea - Date Added: 2025-10-14 10:10 - Note: installing their carriers, and DWV connections. going to be running water lines this week / 2025-10-21 13:10 - User: David Wiltberger - Date Added: 2025-10-21 13:10 - Note: Wall pri
- QTS-2611: allucent_notes_20251014_152335: Luis Vea on 2025-10-14 09:10: started from south 0105 corridor for inwall rough / Luis Vea on 2025-10-14 10:10: plumbing needs to finish and also needing furout walls for the wet walls to be framed. again, need plumbing to finish / allucent_notes_20251021_145627: Luis Vea on 2025-10-14 09:10: started from south 0105 corridor for inwall rough / Luis Vea on 2025-10-14 10:10: plumbing needs to finish and also needing furout walls for the wet walls to be framed. again, need plumbing to finish / Luis Vea on 2025-10-20T18:19:28.643Z: on going, plumbing needs to finish and also needing furout walls for the wet walls to be framed. again, need plumbing to finish / Framing is not completed due to fan walls manpower got pulled / Scott Masterson on 2025-10-21 11:10: Walls were held off due to plumbing carrier build out. Walls were also held back due to Steel install for the Elevator. REI will be working recovery thir week to get this caught up. / allucent_notes_20251027_224008: Luis Vea on 2025-10-14 09:10: started from south 0105 corridor for inwall rough / Luis Vea on 2025-10-14 10:10: plumbing needs to finish and also needing furout walls for the wet walls to be framed. again, need plumbing to finish / Luis Vea on 2025-10-20T18:19:28.643Z: on going, plumbing needs to finish and also needing furout walls for the wet walls to be framed. again, need plumbing to finish / Framing is not completed due to fan walls manpower got pulled / Scott Masterson on 2025-10-21 11:10: Walls were held off due to plumbing carrier build out. Walls were also held back due to Steel install for the Elevator. REI will be working recovery thir week to get this caught up. / allucent_notes_20251028_163138: Luis Vea on 2025-10-14 09:10: started from south 0105 corridor for inwall rough / Luis Vea on 2025-10-14 10:10: plumbing needs to finish and also needing furout walls for the wet walls to be framed. again, need plumbing to finish / Luis Vea on 2025-10-20T18:19:28.643Z: on going, plumbing needs to finish and also needing furout walls for the wet walls to be framed. again, need plumbing to finish / Framing is not completed due to fan walls manpower got pulled / Scott Masterson on 2025-10-21 11:10: Walls were held off due to plumbing carrier build out. Walls were also held back due to Steel install for the Elevator. REI will be working recovery thir week to get this caught up. / allucent_notes_20251104_160200: Luis Vea on 2025-10-14 09:10: started from south 0105 corridor for inwall rough / Luis Vea on 2025-10-14 10:10: plumbing needs to finish and also needing furout walls for the wet walls to be framed. again, need plumbing to finish / Luis Vea on 2025-10-20T18:19:28.643Z: on going, plumbing needs to finish and also needing furout walls for the wet walls to be framed. again, need plumbing to finish / Framing is not completed due to fan walls manpower got pulled / Scott Masterson on 2025-10-21 11:10: Walls were held off due to plumbing carrier build out. Walls were also held back due to Steel install for the Elevator. REI will be working recovery thir week to get this caught up. / allucent_notes_20251111_182405: Luis Vea on 2025-10-14 09:10: started from south 0105 corridor for inwall rough / Luis Vea on 2025-10-14 10:10: plumbing needs to finish and also needing furout walls for the wet walls to be framed. again, need plumbing to finish / Luis Vea on 2025-10-20T18:19:28.643Z: on going, plumbing needs to finish and also needing furout walls for the wet walls to be framed. again, need plumbing to finish / Framing is not completed due to fan walls manpower got pulled / Scott Masterson on 2025-10-21 11:10: Walls were held off due to plumbing carrier build out. Walls were also held back due to Steel install for the Elevator. REI will be working recovery thir week to get this caught up. / allucent_notes_20251118_192630: Luis Vea on 2025-10-14 09:10: started from south 0105 corridor for inwall rough / Luis Vea on 2025-10-14 10:10: plumbing needs to finish and also needing furout walls for the wet walls to be framed. again, need plumbing to finish / Luis Vea on 2025-10-20T18:19:28.643Z: on going, plumbing needs to finish and also needing furout walls for the wet walls to be framed. again, need plumbing to finish / Framing is not completed due to fan walls manpower got pulled / Scott Masterson on 2025-10-21 11:10: Walls were held off due to plumbing carrier build out. Walls were also held back due to Steel install for the Elevator. REI will be working recovery thir week to get this caught up. / allucent_notes_20251202_153722: Luis Vea on 2025-10-14 09:10: started from south 0105 corridor for inwall rough / Luis Vea on 2025-10-14 10:10: plumbing needs to finish and also needing furout walls for the wet walls to be framed. again, need plumbing to finish / Luis Vea on 2025-10-20T18:19:28.643Z: on going, plumbing needs to finish and also needing furout walls for the wet walls to be framed. again, need plumbing to finish / Framing is not completed due to fan walls manpower got pulled / Scott Masterson on 2025-10-21 11:10: Walls were held off due to plumbing carrier build out. Walls were also held back due to Steel install for the Elevator. REI will be working recovery thir week to get this caught up. / allucent_notes: 2025-10-14 09:10 - User: Luis Vea - Date Added: 2025-10-14 09:10 - Note: started from south 0105 corridor for inwall rough / 2025-10-14 10:10 - User: Luis Vea - Date Added: 2025-10-14 10:10 - Note: plumbing needs to finish and also needing furout walls f
- QTS-3731: allucent_notes_20251230_164549: Luis Vea on 2025-10-20T18:18:01.184Z: manpower got pulled for fan walls installation, focus right now is early access rooms and priority rooms / Jason Johnston on 2025-10-21 11:10: Moving out until after framing. / Luis Vea on 2025-11-10 11:11: brackets got installed, needing backing / Luis Vea on 2025-11-10 11:11: need backing, shafts walls and furout was holding up backing. / Sean Waisner on 2025-12-02 15:22: Re-sequencing for priority / Sean Waisner on 2025-12-16 15:06: Not priority due to sequencing / allucent_notes_20251021_145627: Luis Vea on 2025-10-20T18:18:01.184Z: manpower got pulled for fan walls installation, focus right now is early access rooms and priority rooms / Jason Johnston on 2025-10-21 11:10: Moving out until after framing. / allucent_notes_20251027_224008: Luis Vea on 2025-10-20T18:18:01.184Z: manpower got pulled for fan walls installation, focus right now is early access rooms and priority rooms / Jason Johnston on 2025-10-21 11:10: Moving out until after framing. / allucent_notes_20251028_163138: Luis Vea on 2025-10-20T18:18:01.184Z: manpower got pulled for fan walls installation, focus right now is early access rooms and priority rooms / Jason Johnston on 2025-10-21 11:10: Moving out until after framing. / allucent_notes_20251104_160200: Luis Vea on 2025-10-20T18:18:01.184Z: manpower got pulled for fan walls installation, focus right now is early access rooms and priority rooms / Jason Johnston on 2025-10-21 11:10: Moving out until after framing. / allucent_notes_20251111_182405: Luis Vea on 2025-10-20T18:18:01.184Z: manpower got pulled for fan walls installation, focus right now is early access rooms and priority rooms / Jason Johnston on 2025-10-21 11:10: Moving out until after framing. / Luis Vea on 2025-11-10 11:11: brackets got installed, needing backing / Luis Vea on 2025-11-10 11:11: need backing, shafts walls and furout was holding up backing. / allucent_notes_20251118_192630: Luis Vea on 2025-10-20T18:18:01.184Z: manpower got pulled for fan walls installation, focus right now is early access rooms and priority rooms / Jason Johnston on 2025-10-21 11:10: Moving out until after framing. / Luis Vea on 2025-11-10 11:11: brackets got installed, needing backing / Luis Vea on 2025-11-10 11:11: need backing, shafts walls and furout was holding up backing. / allucent_notes_20251202_153722: Luis Vea on 2025-10-20T18:18:01.184Z: manpower got pulled for fan walls installation, focus right now is early access rooms and priority rooms / Jason Johnston on 2025-10-21 11:10: Moving out until after framing. / Luis Vea on 2025-11-10 11:11: brackets got installed, needing backing / Luis Vea on 2025-11-10 11:11: need backing, shafts walls and furout was holding up backing. / Sean Waisner on 2025-12-02 15:22: Re-sequencing for priority / allucent_notes_20251209_203830: Luis Vea on 2025-10-20T18:18:01.184Z: manpower got pulled for fan walls installation, focus right now is early access rooms and priority rooms / Jason Johnston on 2025-10-21 11:10: Moving out until after framing. / Luis Vea on 2025-11-10 11:11: brackets got installed, needing backing / Luis Vea on 2025-11-10 11:11: need backing, shafts walls and furout was holding up backing. / Sean Waisner on 2025-12-02 15:22: Re-sequencing for priority / allucent_notes_20251216_165335: Luis Vea on 2025-10-20T18:18:01.184Z: manpower got pulled for fan walls installation, focus right now is early access rooms and priority rooms / Jason Johnston on 2025-10-21 11:10: Moving out until after framing. / Luis Vea on 2025-11-10 11:11: brackets got installed, needing backing / Luis Vea on 2025-11-10 11:11: need backing, shafts walls and furout was holding up backing. / Sean Waisner on 2025-12-02 15:22: Re-sequencing for priority / Sean Waisner on 2025-12-16 15:06: Not priority due to sequencing / allucent_notes: 2025-10-20T18:18:01.184Z - User: Luis Vea - Date Added: 2025-10-20T18:18:01.184Z - Note: manpower got pulled for fan walls installation, focus right now is early access rooms and priority rooms / 2025-10-21 11:10 - User: Jason Johnston - Date Added: 2025
- QTS-1004440: allucent_notes_20251230_164549: JD Kitchens on 2025-12-30 14:30: update / allucent_notes: 2025-12-30 14:30 - User: JD Kitchens - Date Added: 2025-12-30 14:30 - Note: update
- QTS-3711: allucent_notes_20251230_164549: JD Kitchens on 2025-12-30 14:30: update / allucent_notes: 2025-12-30 14:30 - User: JD Kitchens - Date Added: 2025-12-30 14:30 - Note: update
- QTS-120020: allucent_notes_20251014_152335: Luis Vea on 2025-10-14 10:10: going to push this to Saturday work, PCI is completing a critical item this week. / allucent_notes_20251021_145627: Luis Vea on 2025-10-14 10:10: going to push this to Saturday work, PCI is completing a critical item this week. / Luis Vea on 2025-10-20T18:16:28.459Z: waiting for shaft wall due to BAM line sets and duct run to be installed. / Jason Johnston on 2025-10-21 11:10: Reallocated manpower to zone 1 priority / allucent_notes_20251027_224008: Luis Vea on 2025-10-14 10:10: going to push this to Saturday work, PCI is completing a critical item this week. / Luis Vea on 2025-10-20T18:16:28.459Z: waiting for shaft wall due to BAM line sets and duct run to be installed. / Jason Johnston on 2025-10-21 11:10: Reallocated manpower to zone 1 priority / allucent_notes_20251028_163138: Luis Vea on 2025-10-14 10:10: going to push this to Saturday work, PCI is completing a critical item this week. / Luis Vea on 2025-10-20T18:16:28.459Z: waiting for shaft wall due to BAM line sets and duct run to be installed. / Jason Johnston on 2025-10-21 11:10: Reallocated manpower to zone 1 priority / allucent_notes_20251104_160200: Luis Vea on 2025-10-14 10:10: going to push this to Saturday work, PCI is completing a critical item this week. / Luis Vea on 2025-10-20T18:16:28.459Z: waiting for shaft wall due to BAM line sets and duct run to be installed. / Jason Johnston on 2025-10-21 11:10: Reallocated manpower to zone 1 priority / Jason Johnston on 2025-11-03 11:11: Working to complete by Thursday. / allucent_notes_20251111_182405: Luis Vea on 2025-10-14 10:10: going to push this to Saturday work, PCI is completing a critical item this week. / Luis Vea on 2025-10-20T18:16:28.459Z: waiting for shaft wall due to BAM line sets and duct run to be installed. / Jason Johnston on 2025-10-21 11:10: Reallocated manpower to zone 1 priority / Jason Johnston on 2025-11-03 11:11: Working to complete by Thursday. / Luis Vea on 2025-11-10 11:11: Walls have been completed, needing just ceiling / Jason Johnston on 2025-11-11 15:11: Add shaft wall build out. / allucent_notes_20251118_192630: Luis Vea on 2025-10-14 10:10: going to push this to Saturday work, PCI is completing a critical item this week. / Luis Vea on 2025-10-20T18:16:28.459Z: waiting for shaft wall due to BAM line sets and duct run to be installed. / Jason Johnston on 2025-10-21 11:10: Reallocated manpower to zone 1 priority / Jason Johnston on 2025-11-03 11:11: Working to complete by Thursday. / Luis Vea on 2025-11-10 11:11: Walls have been completed, needing just ceiling / Jason Johnston on 2025-11-11 15:11: Add shaft wall build out. / Jason Johnston on 2025-11-18T21:39:14.695Z: After Green Mile / allucent_notes: 2025-10-14 10:10 - User: Luis Vea - Date Added: 2025-10-14 10:10 - Note: going to push this to Saturday work, PCI is completing a critical item this week. / 2025-10-20T18:16:28.459Z - User: Luis Vea - Date Added: 2025-10-20T18:16:28.459Z - Note: waiting
- QTS-2601: allucent_notes_20251014_152335: Luis Vea on 2025-10-14 10:10: need bam to bring down the duct room from the shaft, also need plumbers to get area. / allucent_notes_20251021_145627: Luis Vea on 2025-10-14 10:10: need bam to bring down the duct room from the shaft, also need plumbers to get area. / allucent_notes_20251027_224008: Luis Vea on 2025-10-14 10:10: need bam to bring down the duct room from the shaft, also need plumbers to get area. / allucent_notes_20251028_163138: Luis Vea on 2025-10-14 10:10: need bam to bring down the duct room from the shaft, also need plumbers to get area. / allucent_notes_20251104_160200: Luis Vea on 2025-10-14 10:10: need bam to bring down the duct room from the shaft, also need plumbers to get area. / allucent_notes_20251111_182405: Luis Vea on 2025-10-14 10:10: need bam to bring down the duct room from the shaft, also need plumbers to get area. / allucent_notes_20251118_192630: Luis Vea on 2025-10-14 10:10: need bam to bring down the duct room from the shaft, also need plumbers to get area. / David Wiltberger on 2025-11-17 16:11: out of sequence / allucent_notes: 2025-10-14 10:10 - User: Luis Vea - Date Added: 2025-10-14 10:10 - Note: need bam to bring down the duct room from the shaft, also need plumbers to get area. / 2025-11-17 16:11 - User: David Wiltberger - Date Added: 2025-11-17 16:11 - Note: out of seque
- QTS-45511: allucent_notes_20251230_164549: JD Kitchens on 2025-12-30 14:36: Update / allucent_notes: 2025-12-30 14:36 - User: JD Kitchens - Date Added: 2025-12-30 14:36 - Note: Update

| ID | WBS | Activity | Duration | Start | Finish | Predecessors | Complete | Remaining | Planned start | Planned finish | Total float | Free float | Calendar | Level | Location | Project Section-1 | Phase-1-1 | Baseline | Layton Responsible Party | Project Section | Subcontractor | Phase-1 | Allucent CSI Group |
| --- | --- | --- | --- | --- | --- | --- | --- | --- | --- | --- | --- | --- | --- | --- | --- | --- | --- | --- | --- | --- | --- | --- | --- |
|  | 5 | **L1 / FOH // Electrical Room #0172/0173** |  | 2025-09-11 | 2025-12-16 |  |  |  |  |  |  |  |  |  |  |  |  |  |  |  |  |  |  |
| QTS-44241 |  | Electrical Room #0172 // Concrete Seal | 3d | 2025-09-11 A | 2025-09-15 A | QTS-44161 | 100% |  |  |  |  |  |  | Level 1 | FOH | Construction | Phase 1 | IGMP | Doug Hayes | Construction |  |  |  |
| QTS-26281 |  | Electrical Room #0172 // Rough Overhead Fire Sprinkler | 3d | 2025-10-08 A | 2025-10-10 A | QTS-44241, QTS-2381 | 100% |  |  |  |  |  |  | Level 1 | FOH |  |  | IGMP | Dave Wiltberger | Construction | Olympic West Fire Protection | Phase 1 | 01ADMIN |
| QTS-25941 |  | Electrical Room #0172 // Frame Walls | 2d | 2025-10-10 A | 2025-10-15 A | QTS-25731 SS, QTS-26281 | 100% |  | 2025-10-13 | 2025-10-14 |  |  |  | Level 1 | FOH |  |  | IGMP | Doug Hayes | Construction |  | Phase 1 | 01ADMIN |
| QTS-26261 |  | Electrical Room #0172 // Rough In Electrical | 10d | 2025-10-16 A | 2025-11-06 A | QTS-25941 | 100% |  | 2025-10-16 | 2025-10-29 |  |  |  | Level 1 | FOH |  |  | IGMP | Scott Masterson | Construction | Rosendin Electric, Inc | Phase 1 | 01ADMIN |
| QTS-26291 |  | Electrical Room #0172 // Rough Overhead Linesets | 3d | 2025-10-16 A | 2025-11-07 A | QTS-25941 | 100% |  | 2025-10-16 | 2025-10-20 |  |  |  | Level 1 | FOH |  |  | IGMP | Dave Wiltberger | Construction | Bel-Aire Mechanical, LLC | Phase 1 | 01ADMIN |
| QTS-26411 |  | Electrical Room #0172 // In Wall Inspection | 1d | 2025-11-06 A | 2025-11-06 A | QTS-26261 | 100% |  |  |  |  |  |  | Level 1 | FOH |  |  | IGMP | Dave Wiltberger | Construction | Bel-Aire Mechanical, LLC | Phase 1 | 01ADMIN |
| QTS-26431 |  | Electrical Room #0172 // Hang Drywall | 1d | 2025-11-12 A | 2025-11-12 A | QTS-26411 | 100% |  | 2025-11-07 | 2025-11-07 |  |  |  | Level 1 | FOH |  |  | IGMP | Doug Hayes | Construction |  | Phase 1 | 01ADMIN |
| QTS-44201 |  | Electrical Room #0172 // Screw Inspection | 1d | 2025-11-13 A | 2025-11-13 A | QTS-26431 | 100% |  | 2025-11-10 | 2025-11-10 |  |  |  | Level 1 | FOH | Construction | Phase 1 | IGMP | Doug Hayes | Construction |  |  | 01ADMIN |
| QTS-26541 |  | Electrical Room #0172 // Tape & Finish Drywall | 3d | 2025-11-14 A | 2025-11-19 A | QTS-26431, QTS-44201 | 100% |  | 2025-11-11 | 2025-11-13 |  |  |  | Level 1 | FOH |  |  | IGMP | Sean Waisner | Construction |  | Phase 1 | 01ADMIN |
| QTS-26901 |  | Electrical Room #0172 // Prime & Paint | 2d | 2025-11-20 A | 2025-11-20 A | QTS-26541 | 100% |  | 2025-11-21 | 2025-11-24 |  |  |  | Level 1 | FOH |  |  | IGMP | Sean Waisner | Construction |  | Phase 1 | 01ADMIN |
| QTS-44891 |  | Electrical Room #0172 // Set HM Frame | 1d | 2025-11-24 A | 2025-11-24 A | QTS-25941 SS, QTS-15231 | 100% |  |  |  |  |  |  | Level 1 | FOH | Construction | Phase 1 | IGMP | Sean Waisner | Construction |  |  | 01ADMIN |
| QTS-27341 |  | Electrical Room #0172 // Set House Switchboard | 1d | 2025-11-25 A | 2025-11-25 A | QTS-26901, QTS-27201 | 100% |  |  |  |  |  |  | Level 1 | FOH | Construction | Phase 1 | IGMP | Scott Masterson | Construction | Rosendin Electric, Inc |  | 01ADMIN |
| QTS-27461 |  | Electrical Room #0172 // Install AC Unit | 2d | 2025-11-25 A | 2025-11-25 A | QTS-26901, QTS-26291 | 100% |  | 2025-11-25 | 2025-11-26 |  |  |  | Level 1 | FOH |  |  | IGMP | Dave Wiltberger | Construction | Bel-Aire Mechanical, LLC | Phase 1 | 01ADMIN |
| QTS-44221 |  | Electrical Room #0172 // Rough In Electrical - HSE SWD (Early Access) | 10d | 2025-12-01 A | 2025-12-11 A | QTS-27341 | 100% |  | 2025-12-01 | 2025-12-12 |  |  |  | Level 1 | FOH | Construction | Phase 1 | IGMP | Scott Masterson | Construction | Rosendin Electric, Inc |  | 01ADMIN |
| QTS-44211 |  | Electrical Room #0172 // Rough Mechanical Inspection | 1d | 2025-12-03 A | 2025-12-03 A | QTS-27461 | 100% |  |  |  |  |  |  | Level 1 | FOH | Construction | Phase 1 | IGMP | Dave Wiltberger | Construction | Bel-Aire Mechanical, LLC |  | 01ADMIN |
| QTS-27291 |  | Electrical Room #0172 // Set Static Transfer Switch | 1d | 2025-12-04 A | 2025-12-04 A | QTS-27161, QTS-26901 | 100% |  |  |  |  |  |  | Level 1 | FOH | Construction | Phase 1 | IGMP | Scott Masterson | Construction | Rosendin Electric, Inc |  | 01ADMIN |
| QTS-27311 |  | Electrical Room #0172 // OFCI - L2 SET IN PLACE - Eq Type # - UPS HSE - 1 unit | 1d | 2025-12-04 A | 2025-12-04 A | QTS-27181, QTS-26901 | 100% |  |  |  |  |  |  | Level 1 | FOH | Construction | Phase 1 | IGMP | Scott Masterson | Construction | Rosendin Electric, Inc |  | 01ADMIN |
| QTS-27661 |  | Electrical Room #0172 // Install Light Fixtures | 2d | 2025-12-15 A | 2025-12-16 A | QTS-27461, QTS-44211 | 100% |  |  |  |  |  |  | Level 1 | FOH |  |  | IGMP | Scott Masterson | Construction | Rosendin Electric, Inc | Phase 1 | 01ADMIN |
| QTS-26271 |  | Electrical Room #0172 // Set Door & Hardware (Temp) | 3d | 2025-12-16 A | 2025-12-16 A | QTS-25941, QTS-15231, QTS-44891, QTS-26541 FF, QTS-99650, QTS-27661 | 100% |  | 2025-12-22 | 2025-12-29 |  |  |  | Level 1 | FOH |  |  | IGMP | Sean Waisner | Construction |  | Phase 1 | 01ADMIN |
|  | 7 | **L1 / FOH // Freedom Cafe/Board Room** |  | 2025-10-28 | 2026-03-30 |  |  |  |  |  |  |  |  |  |  |  |  |  |  |  |  |  |  |
| QTS-44981 |  | Freedom Cafe / Board Room #0103 // Layout Wall System | 2d | 2025-10-28 A | 2025-11-05 A | QTS-25731 | 100% |  | 2025-10-28 | 2025-10-29 |  |  |  | Level 1 | FOH | Construction | Phase 1 | IGMP | Doug Hayes | Construction |  |  | 01ADMIN |
| QTS-44991 |  | Freedom Cafe / Board Room #0103 // Frame Walls | 5d | 2025-11-17 A | 2025-11-26 A | QTS-44981 | 100% |  | 2025-11-17 | 2025-11-21 |  |  |  | Level 1 | FOH | Construction | Phase 1 | IGMP | Sean Waisner | Construction |  |  | 01ADMIN |
| QTS-45001 |  | Freedom Cafe / Board Room #0103 // Install Fire Sprinkler Drops | 2d | 2025-12-01 A | 2025-12-02 A | QTS-44981 | 100% |  |  |  |  |  |  | Level 1 | FOH | Construction | Phase 1 | IGMP | Dave Wiltberger | Construction | Olympic West Fire Protection |  | 01ADMIN |
| QTS-45011 |  | Freedom Cafe / Board Room #0103 // HVAC Overhead Duct Work | 2d | 2025-12-23 A | 2026-01-10 A | QTS-44991, QTS-45001 | 100% |  | 2025-12-23 | 2025-12-24 |  |  | QTS-PHX3 DC1 - 6 day w/ Holidays | Level 1 | FOH | Construction | Phase 1 | IGMP | Scott Masterson | Construction |  |  | 01ADMIN |
| QTS-45031 |  | Freedom Cafe / Board Room #0103 // Electrical Overhead Hangers/Conduit | 5d | 2026-01-15 | 2026-01-21 | QTS-45021 SS+1d |  |  |  |  | 11d | 0d | QTS-PHX3 DC1 - 6 day w/ Holidays | Level 1 | FOH | Construction | Phase 1 | IGMP | Scott Masterson | Construction | Rosendin Electric, Inc |  | 01ADMIN |
| QTS-45021 |  | Freedom Cafe / Board Room #0103 // Plumbing Overhead Hangers/Lines | 3d | 2026-01-21 A | 2026-01-14 | QTS-45011 | 100% | 0d | 2026-01-21 | 2026-01-23 | 11d | 0d | QTS-PHX3 DC1 - 6 day w/ Holidays | Level 1 | FOH | Construction | Phase 1 | IGMP | Dave Wiltberger | Construction | Bel-Aire Mechanical, LLC |  | 01ADMIN |
| QTS-45041 |  | Freedom Cafe / Board Room #0103 // Overhead/Wall MEP Inspections | 2d | 2026-01-22 | 2026-01-23 | QTS-45031 |  |  |  |  | 11d | 0d | QTS-PHX3 DC1 - 6 day w/ Holidays | Level 1 | FOH | Construction | Phase 1 | IGMP | Scott Masterson | Construction | Rosendin Electric, Inc |  | 01ADMIN |
| QTS-45051 |  | Freedom Cafe / Board Room #0103 // HVAC Overhead Duct Work Insulation | 2d | 2026-01-24 | 2026-01-26 | QTS-45041 |  |  |  |  | 11d | 0d | QTS-PHX3 DC1 - 6 day w/ Holidays | Level 1 | FOH | Construction | Phase 1 | IGMP | Dave Wiltberger | Construction | Bel-Aire Mechanical, LLC |  |  |
| QTS-101670 |  | Freedom Cafe / Board Room #0103 // Frame Ceilings | 5d | 2026-01-27 | 2026-01-31 | QTS-45051, QTS-45041 |  |  |  |  | 11d | 0d | QTS-PHX3 DC1 - 6 day w/ Holidays | Level 1 | FOH | Construction | Phase 1 | IGMP | Sean Waisner | Construction | Performance Contracting, Inc. |  | 01ADMIN |
| QTS-45061 |  | Freedom Cafe / Board Room #0103 // Hang Drywall Walls & Ceilings | 5d | 2026-02-02 | 2026-02-06 | QTS-45051, QTS-101670 |  |  |  |  | 11d | 0d | QTS-PHX3 DC1 - 6 day w/ Holidays | Level 1 | FOH | Construction | Phase 1 | IGMP | Sean Waisner | Construction | Performance Contracting, Inc. |  |  |
| QTS-45071 |  | Freedom Cafe / Board Room #0103 // Tape & Finish Drywall | 5d | 2026-02-07 | 2026-02-12 | QTS-45061 |  |  |  |  | 11d | 0d | QTS-PHX3 DC1 - 6 day w/ Holidays | Level 1 | FOH | Construction | Phase 1 | IGMP | Sean Waisner | Construction | Performance Contracting, Inc. |  |  |
| QTS-45081 |  | Freedom Cafe / Board Room #0103 // Layout Electrical For Pendent/Strip Lighting | 1d | 2026-02-13 | 2026-02-13 | QTS-45071 |  |  |  |  | 11d | 0d | QTS-PHX3 DC1 - 6 day w/ Holidays | Level 1 | FOH | Construction | Phase 1 | IGMP | Scott Masterson | Construction | Rosendin Electric, Inc |  |  |
| QTS-45091 |  | Freedom Cafe / Board Room #0103 // Layout Fire Suppression Drops In Decorative Wood Ceiling | 1d | 2026-02-13 | 2026-02-13 | QTS-45081 SS |  |  |  |  | 11d | 0d | QTS-PHX3 DC1 - 6 day w/ Holidays | Level 1 | FOH | Construction | Phase 1 | IGMP | Dave Wiltberger | Construction | Olympic West Fire Protection |  |  |
| QTS-45101 |  | Freedom Cafe / Board Room #0103 // Layout Supply Vents in Soffits/Wood Ceiling | 1d | 2026-02-13 | 2026-02-13 | QTS-45091 SS |  |  |  |  | 11d | 0d | QTS-PHX3 DC1 - 6 day w/ Holidays | Level 1 | FOH | Construction | Phase 1 | IGMP | Dave Wiltberger | Construction | Bel-Aire Mechanical, LLC |  |  |
| QTS-45111 |  | Freedom Cafe / Board Room #0103 // Prime /First Coat Walls For Tile | 1d | 2026-02-13 | 2026-02-13 | QTS-45101 SS |  |  |  |  | 43d | 32d | QTS-PHX3 DC1 - 6 day w/ Holidays | Level 1 | FOH | Construction | Phase 1 | IGMP | Sean Waisner | Construction |  |  |  |
| QTS-45121 |  | Freedom Cafe / Board Room #0103 // Set Grid System For Hard Lids | 2d | 2026-02-14 | 2026-02-16 | QTS-45101 |  |  |  |  | 11d | 0d | QTS-PHX3 DC1 - 6 day w/ Holidays | Level 1 | FOH | Construction | Phase 1 | IGMP | Sean Waisner | Construction | Performance Contracting, Inc. |  |  |
| QTS-45141 |  | Freedom Cafe / Board Room #0103 // Install Fire Sprinkler Drops In Grid System Hard Lid | 2d | 2026-02-17 | 2026-02-18 | QTS-45121 |  |  |  |  | 11d | 0d | QTS-PHX3 DC1 - 6 day w/ Holidays | Level 1 | FOH | Construction | Phase 1 | IGMP | Dave Wiltberger | Construction | Olympic West Fire Protection |  |  |
| QTS-45151 |  | Freedom Cafe / Board Room #0103 // Install Electrical Whips In Grid System Hard Lid | 3d | 2026-02-19 | 2026-02-21 | QTS-45141 |  |  |  |  | 11d | 0d | QTS-PHX3 DC1 - 6 day w/ Holidays | Level 1 | FOH | Construction | Phase 1 | IGMP | Scott Masterson | Construction | Rosendin Electric, Inc |  |  |
| QTS-45161 |  | Freedom Cafe / Board Room #0103 // Install Decorative Ceiling System Wood | 10d | 2026-02-23 | 2026-03-05 | QTS-45151 |  |  |  |  | 11d | 0d | QTS-PHX3 DC1 - 6 day w/ Holidays | Level 1 | FOH | Construction | Phase 1 | IGMP | Sean Waisner | Construction | Performance Contracting, Inc. |  |  |
| QTS-45231 |  | Freedom Cafe / Board Room #0103 // Paint Final Coat | 1d | 2026-03-06 | 2026-03-06 | QTS-45161 |  |  |  |  | 11d | 0d | QTS-PHX3 DC1 - 6 day w/ Holidays | Level 1 | FOH | Construction | Phase 1 | IGMP | Sean Waisner | Construction | Pennington Painting Company, LLC |  |  |
| QTS-45201 |  | Freedom Cafe / Board Room #0103 // Electrical Finishes | 3d | 2026-03-07 | 2026-03-10 | QTS-45231, QTS-45151, QTS-45161 |  |  |  |  | 11d | 0d | QTS-PHX3 DC1 - 6 day w/ Holidays | Level 1 | FOH | Construction | Phase 1 | IGMP | Scott Masterson | Construction | Rosendin Electric, Inc |  |  |
| QTS-45211 |  | Freedom Cafe / Board Room #0103 // Plumbing Finishes | 2d | 2026-03-11 | 2026-03-12 | QTS-45231, QTS-45201 |  |  |  |  | 11d | 0d | QTS-PHX3 DC1 - 6 day w/ Holidays | Level 1 | FOH | Construction | Phase 1 | IGMP | Dave Wiltberger | Construction | Bel-Aire Mechanical, LLC |  |  |
| QTS-45251 |  | Freedom Cafe / Board Room #0103 // Fire Sprinkler Finishes | 1d | 2026-03-11 | 2026-03-11 | QTS-45231, QTS-45211 SS |  |  |  |  | 19d | 8d | QTS-PHX3 DC1 - 6 day w/ Holidays | Level 1 | FOH | Construction | Phase 1 | IGMP | Dave Wiltberger | Construction | Olympic West Fire Protection |  |  |
| QTS-45181 |  | Freedom Cafe / Board Room #0103 // Install Millwork | 5d | 2026-03-13 | 2026-03-18 | QTS-45201, QTS-45211, QTS-45161 |  |  |  |  | 11d | 0d | QTS-PHX3 DC1 - 6 day w/ Holidays | Level 1 | FOH | Construction | Phase 1 | IGMP | Sean Waisner | Construction |  |  |  |
| QTS-45221 |  | Freedom Cafe / Board Room #0103 // Mechanical Finishes | 2d | 2026-03-13 | 2026-03-14 | QTS-45231, QTS-45211 |  |  |  |  | 17d | 3d | QTS-PHX3 DC1 - 6 day w/ Holidays | Level 1 | FOH | Construction | Phase 1 | IGMP | Dave Wiltberger | Construction | Bel-Aire Mechanical, LLC |  |  |
| QTS-45171 |  | Freedom Cafe / Board Room #0103 // Measure and Fabricate for Solid Surface Counter Tops | 2d | 2026-03-19 | 2026-03-20 | QTS-45181, QTS-45071 |  |  |  |  | 11d | 0d | QTS-PHX3 DC1 - 6 day w/ Holidays | Level 1 | FOH | Construction | Phase 1 | IGMP | Sean Waisner | Construction |  |  |  |
| QTS-45191 |  | Freedom Cafe / Board Room #0103 // Install Flooring | 5d | 2026-03-19 | 2026-03-24 | QTS-45221, QTS-45181, QTS-45231 |  |  |  |  | 14d | 0d | QTS-PHX3 DC1 - 6 day w/ Holidays | Level 1 | FOH | Construction | Phase 1 | IGMP | Sean Waisner | Construction |  |  |  |
| QTS-45261 |  | Freedom Cafe / Board Room #0103 // Install Solid Surface Counter Tops | 2d | 2026-03-21 | 2026-03-23 | QTS-45171, QTS-45251 |  |  |  |  | 11d | 0d | QTS-PHX3 DC1 - 6 day w/ Holidays | Level 1 | FOH | Construction | Phase 1 | IGMP | Sean Waisner | Construction |  |  |  |
| QTS-45131 |  | Freedom Cafe / Board Room #0103 // Set Accent Wall Tile | 5d | 2026-03-24 | 2026-03-28 | QTS-45261, QTS-45111 |  |  |  |  | 11d | 0d | QTS-PHX3 DC1 - 6 day w/ Holidays | Level 1 | FOH | Construction | Phase 1 | IGMP | Sean Waisner | Construction |  |  |  |
| QTS-45241 |  | Freedom Cafe / Board Room #0103 // Install Wall Base | 1d | 2026-03-25 | 2026-03-25 | QTS-45231, QTS-45191 |  |  |  |  | 14d | 3d | QTS-PHX3 DC1 - 6 day w/ Holidays | Level 1 | FOH | Construction | Phase 1 | IGMP | Sean Waisner | Construction |  |  |  |
| QTS-45271 |  | Freedom Cafe / Board Room #0103 // Install Doors & Hardware | 1d | 2026-03-25 | 2026-03-25 | QTS-45191, QTS-99650 |  |  |  |  | 14d | 3d | QTS-PHX3 DC1 - 6 day w/ Holidays | Level 1 | FOH | Construction | Phase 1 | IGMP | Sean Waisner | Construction |  |  |  |
| QTS-45281 |  | Freedom Cafe / Board Room #0103 // Set Vendors Equipment | 1d | 2026-03-30 | 2026-03-30 | QTS-45131, QTS-45271, QTS-45261 |  |  |  |  | 11d | 0d | QTS-PHX3 DC1 - 6 day w/ Holidays | Level 1 | FOH | Construction | Phase 1 | IGMP | Sean Waisner | Construction |  |  |  |
| QTS-45291 |  | Freedom Cafe / Board Room #0103 // Set FFE | 1d | 2026-03-30 | 2026-03-30 | QTS-45241, QTS-45281 SS |  |  |  |  | 11d | 3d | QTS-PHX3 DC1 - 6 day w/ Holidays | Level 1 | FOH | Construction | Phase 1 | IGMP | Sean Waisner | Construction |  |  |  |

Notes:
- QTS-25941: allucent_notes_20251014_152335: Luis Vea on 2025-10-08 10:10: space is available, top track has started / Luis Vea on 2025-10-14 10:10: area was available / Luis Vea on 2025-10-14 10:10: needing exterior walls to complete / allucent_notes_20251021_145627: Luis Vea on 2025-10-08 10:10: space is available, top track has started / Luis Vea on 2025-10-14 10:10: area was available / Luis Vea on 2025-10-14 10:10: needing exterior walls to complete / Luis Vea on 2025-10-20T18:21:54.942Z: waiting for 3-inch wall material to arrive, it should be arriving today to start tomorrow / allucent_notes: 2025-10-08 10:10 - User: Luis Vea - Date Added: 2025-10-08 10:10 - Note: space is available, top track has started / 2025-10-14 10:10 - User: Luis Vea - Date Added: 2025-10-14 10:10 - Note: area was available / 2025-10-14 10:10 - User: Luis Vea - Date
- QTS-26261: allucent_notes_20251021_145627: Luis Vea on 2025-10-20T18:26:03.210Z: this scope has started today, there are electrical boxes installed. / allucent_notes_20251027_224008: Luis Vea on 2025-10-20T18:26:03.210Z: this scope has started today, there are electrical boxes installed. / allucent_notes_20251028_163138: Luis Vea on 2025-10-20T18:26:03.210Z: this scope has started today, there are electrical boxes installed. / allucent_notes_20251104_160200: Luis Vea on 2025-10-20T18:26:03.210Z: this scope has started today, there are electrical boxes installed. / Jason Johnston on 2025-11-03 14:11: Completing tomorrow / Jason Johnston on 2025-11-04 12:11: Missed inspection because fire taping was incomplete gating the completion of electric rough in / allucent_notes_20251111_182405: Luis Vea on 2025-10-20T18:26:03.210Z: this scope has started today, there are electrical boxes installed. / Jason Johnston on 2025-11-03 14:11: Completing tomorrow / Jason Johnston on 2025-11-04 12:11: Missed inspection because fire taping was incomplete gating the completion of electric rough in / Luis Vea on 2025-11-10 11:11: expected to be completed 11/10 / allucent_notes_20251118_192630: Luis Vea on 2025-10-20T18:26:03.210Z: this scope has started today, there are electrical boxes installed. / Jason Johnston on 2025-11-03 14:11: Completing tomorrow / Jason Johnston on 2025-11-04 12:11: Missed inspection because fire taping was incomplete gating the completion of electric rough in / Luis Vea on 2025-11-10 11:11: expected to be completed 11/10 / allucent_notes: 2025-10-20T18:26:03.210Z - User: Luis Vea - Date Added: 2025-10-20T18:26:03.210Z - Note: this scope has started today, there are electrical boxes installed. / 2025-11-03 14:11 - User: Jason Johnston - Date Added: 2025-11-03 14:11 - Note: Completing tomo
- QTS-26291: allucent_notes_20251021_145627: Luis Vea on 2025-10-20T18:23:22.108Z: line sets have not been dropped from second floor / David Wiltberger on 2025-10-21 13:10: Finishing line sets impacted by Progressive not allowing roof access for safety reasons / allucent_notes_20251027_224008: Luis Vea on 2025-10-20T18:23:22.108Z: line sets have not been dropped from second floor / David Wiltberger on 2025-10-21 13:10: Finishing line sets impacted by Progressive not allowing roof access for safety reasons / Scott Masterson on 2025-10-27 16:10: Room was completed over the weekend so BAM can finalize install this week. / allucent_notes_20251028_163138: Luis Vea on 2025-10-20T18:23:22.108Z: line sets have not been dropped from second floor / David Wiltberger on 2025-10-21 13:10: Finishing line sets impacted by Progressive not allowing roof access for safety reasons / Scott Masterson on 2025-10-27 16:10: Room was completed over the weekend so BAM can finalize install this week. / Jason Johnston on 2025-10-28 16:10: Need more detailed break out top out work to get lines installed. / allucent_notes_20251104_160200: Luis Vea on 2025-10-20T18:23:22.108Z: line sets have not been dropped from second floor / David Wiltberger on 2025-10-21 13:10: Finishing line sets impacted by Progressive not allowing roof access for safety reasons / Scott Masterson on 2025-10-27 16:10: Room was completed over the weekend so BAM can finalize install this week. / Jason Johnston on 2025-10-28 16:10: Need more detailed break out top out work to get lines installed. / Jason Johnston on 2025-11-03 14:11: BAM committed to all line sets done by 11/14 / allucent_notes_20251111_182405: Luis Vea on 2025-10-20T18:23:22.108Z: line sets have not been dropped from second floor / David Wiltberger on 2025-10-21 13:10: Finishing line sets impacted by Progressive not allowing roof access for safety reasons / Scott Masterson on 2025-10-27 16:10: Room was completed over the weekend so BAM can finalize install this week. / Jason Johnston on 2025-10-28 16:10: Need more detailed break out top out work to get lines installed. / Jason Johnston on 2025-11-03 14:11: BAM committed to all line sets done by 11/14 / Luis Vea on 2025-11-10 11:11: needing to run to each room and brace and purge / allucent_notes_20251118_192630: Luis Vea on 2025-10-20T18:23:22.108Z: line sets have not been dropped from second floor / David Wiltberger on 2025-10-21 13:10: Finishing line sets impacted by Progressive not allowing roof access for safety reasons / Scott Masterson on 2025-10-27 16:10: Room was completed over the weekend so BAM can finalize install this week. / Jason Johnston on 2025-10-28 16:10: Need more detailed break out top out work to get lines installed. / Jason Johnston on 2025-11-03 14:11: BAM committed to all line sets done by 11/14 / Luis Vea on 2025-11-10 11:11: needing to run to each room and brace and purge / allucent_notes: 2025-10-20T18:23:22.108Z - User: Luis Vea - Date Added: 2025-10-20T18:23:22.108Z - Note: line sets have not been dropped from second floor / 2025-10-21 13:10 - User: David Wiltberger - Date Added: 2025-10-21 13:10 - Note: Finishing line sets impacted by
- QTS-26411: allucent_notes_20251104_160200: Jason Johnston on 2025-11-03 11:11: Inspection scheduled for 11/4 / Jason Johnston on 2025-11-04 12:11: Missed inspection because fire taping was incomplete gating the completion of electric rough in / allucent_notes_20251111_182405: Jason Johnston on 2025-11-03 11:11: Inspection scheduled for 11/4 / Jason Johnston on 2025-11-04 12:11: Missed inspection because fire taping was incomplete gating the completion of electric rough in / Luis Vea on 2025-11-10T18:07:11.153Z: passed inspection, Inspector requested some pictures for some walls for completion / allucent_notes_20251118_192630: Jason Johnston on 2025-11-03 11:11: Inspection scheduled for 11/4 / Jason Johnston on 2025-11-04 12:11: Missed inspection because fire taping was incomplete gating the completion of electric rough in / Luis Vea on 2025-11-10T18:07:11.153Z: passed inspection, Inspector requested some pictures for some walls for completion / allucent_notes: 2025-11-03 11:11 - User: Jason Johnston - Date Added: 2025-11-03 11:11 - Note: Inspection scheduled for 11/4 / 2025-11-04 12:11 - User: Jason Johnston - Date Added: 2025-11-04 12:11 - Note: Missed inspection because fire taping was incomplete gating the
- QTS-26431: allucent_notes_20251111_182405: Luis Vea on 2025-11-10 11:11: REI will release walls to PCI 11/11 / Jason Johnston on 2025-11-11 15:11: delayed by inspection. / allucent_notes_20251118_192630: Luis Vea on 2025-11-10 11:11: REI will release walls to PCI 11/11 / Jason Johnston on 2025-11-11 15:11: delayed by inspection. / allucent_notes: 2025-11-10 11:11 - User: Luis Vea - Date Added: 2025-11-10 11:11 - Note: REI will release walls to PCI 11/11 / 2025-11-11 15:11 - User: Jason Johnston - Date Added: 2025-11-11 15:11 - Note: delayed by inspection.
- QTS-26901: allucent_notes_20251202_153722: Sean Waisner on 2025-12-02 15:24: Scissor lift issue / allucent_notes: 2025-12-02 15:24 - User: Sean Waisner - Date Added: 2025-12-02 15:24 - Note: Scissor lift issue
- QTS-44891: allucent_notes_20251021_145627: Luis Vea on 2025-10-20T18:26:59.919Z: need 173 door to be installed, just need the rough in holes to be installed / allucent_notes_20251027_224008: Luis Vea on 2025-10-20T18:26:59.919Z: need 173 door to be installed, just need the rough in holes to be installed / allucent_notes_20251028_163138: Luis Vea on 2025-10-20T18:26:59.919Z: need 173 door to be installed, just need the rough in holes to be installed / allucent_notes_20251104_160200: Luis Vea on 2025-10-20T18:26:59.919Z: need 173 door to be installed, just need the rough in holes to be installed / Jason Johnston on 2025-11-03 11:11: Delivered and awaiting installation. / Scott Masterson on 2025-11-04 15:11: Just got the door frame, need to install electrical / security before it can be installed. / allucent_notes_20251111_182405: Luis Vea on 2025-10-20T18:26:59.919Z: need 173 door to be installed, just need the rough in holes to be installed / Jason Johnston on 2025-11-03 11:11: Delivered and awaiting installation. / Scott Masterson on 2025-11-04 15:11: Just got the door frame, need to install electrical / security before it can be installed. / Jason Johnston on 2025-11-11 15:11: Wrong frame was delivered. / allucent_notes_20251118_192630: Luis Vea on 2025-10-20T18:26:59.919Z: need 173 door to be installed, just need the rough in holes to be installed / Jason Johnston on 2025-11-03 11:11: Delivered and awaiting installation. / Scott Masterson on 2025-11-04 15:11: Just got the door frame, need to install electrical / security before it can be installed. / Jason Johnston on 2025-11-11 15:11: Wrong frame was delivered. / Jason Johnston on 2025-11-18T21:41:30.190Z: Door frame shipped from Mexico. / allucent_notes_20251202_153722: Luis Vea on 2025-10-20T18:26:59.919Z: need 173 door to be installed, just need the rough in holes to be installed / Jason Johnston on 2025-11-03 11:11: Delivered and awaiting installation. / Scott Masterson on 2025-11-04 15:11: Just got the door frame, need to install electrical / security before it can be installed. / Jason Johnston on 2025-11-11 15:11: Wrong frame was delivered. / Jason Johnston on 2025-11-18T21:41:30.190Z: Door frame shipped from Mexico. / allucent_notes: 2025-10-20T18:26:59.919Z - User: Luis Vea - Date Added: 2025-10-20T18:26:59.919Z - Note: need 173 door to be installed, just need the rough in holes to be installed / 2025-11-03 11:11 - User: Jason Johnston - Date Added: 2025-11-03 11:11 - Note: Delivere
- QTS-27461: allucent_notes_20251202_153722: David Wiltberger on 2025-12-02 06:38: wall built late / allucent_notes: 2025-12-02 06:38 - User: David Wiltberger - Date Added: 2025-12-02 06:38 - Note: wall built late
- QTS-44211: allucent_notes_20251209_203830: Jason Johnston on 2025-12-09 14:44: Not started / allucent_notes: 2025-12-09 14:44 - User: Jason Johnston - Date Added: 2025-12-09 14:44 - Note: Not started
- QTS-27291: allucent_notes_20251202_153722: David Wiltberger on 2025-12-02 13:40: pads need to be poured / allucent_notes_20251209_203830: David Wiltberger on 2025-12-02 13:40: pads need to be poured / Jason Johnston on 2025-12-09 14:43: No gear until dry in / Jason Johnston on 2025-12-09 20:34: Need update from team / allucent_notes: 2025-12-02 13:40 - User: David Wiltberger - Date Added: 2025-12-02 13:40 - Note: pads need to be poured / 2025-12-09 14:43 - User: Jason Johnston - Date Added: 2025-12-09 14:43 - Note: No gear until dry in / 2025-12-09 20:34 - User: Jason Johnston - Dat
- QTS-27311: allucent_notes_20251202_153722: David Wiltberger on 2025-12-02 13:40: New ROJ dates given for update / allucent_notes_20251209_203830: David Wiltberger on 2025-12-02 13:40: New ROJ dates given for update / Jason Johnston on 2025-12-09 14:43: No gear until dry in / Jason Johnston on 2025-12-09 20:34: Need update from team / allucent_notes: 2025-12-02 13:40 - User: David Wiltberger - Date Added: 2025-12-02 13:40 - Note: New ROJ dates given for update / 2025-12-09 14:43 - User: Jason Johnston - Date Added: 2025-12-09 14:43 - Note: No gear until dry in / 2025-12-09 20:34 - User: Jason Johnst
- QTS-27661: allucent_notes_20251209_203830: Jason Johnston on 2025-12-09 20:34: Need update from team / allucent_notes_20251216_165335: Jason Johnston on 2025-12-09 20:34: Need update from team / allucent_notes: 2025-12-09 20:34 - User: Jason Johnston - Date Added: 2025-12-09 20:34 - Note: Need update from team
- QTS-44981: allucent_notes_20251014_152335: Luis Vea on 2025-10-08 10:10: space was available to do layout / allucent_notes_20251021_145627: Luis Vea on 2025-10-08 10:10: space was available to do layout / Luis Vea on 2025-10-20T18:28:34.173Z: need north side of board room wall installed, cant happen until BZI installed the stair case / Jason Johnston on 2025-10-21 12:10: BZI stair install gating the start of this activity. / allucent_notes_20251027_224008: Luis Vea on 2025-10-08 10:10: space was available to do layout / Luis Vea on 2025-10-20T18:28:34.173Z: need north side of board room wall installed, cant happen until BZI installed the stair case / Jason Johnston on 2025-10-21 12:10: BZI stair install gating the start of this activity. / Jason Johnston on 2025-10-27 08:10: BZI finishing up stair welding CAZ to be removed by wednesday. / allucent_notes_20251028_163138: Luis Vea on 2025-10-08 10:10: space was available to do layout / Luis Vea on 2025-10-20T18:28:34.173Z: need north side of board room wall installed, cant happen until BZI installed the stair case / Jason Johnston on 2025-10-21 12:10: BZI stair install gating the start of this activity. / Jason Johnston on 2025-10-27 08:10: BZI finishing up stair welding CAZ to be removed by wednesday. / allucent_notes_20251104_160200: Luis Vea on 2025-10-08 10:10: space was available to do layout / Luis Vea on 2025-10-20T18:28:34.173Z: need north side of board room wall installed, cant happen until BZI installed the stair case / Jason Johnston on 2025-10-21 12:10: BZI stair install gating the start of this activity. / Jason Johnston on 2025-10-27 08:10: BZI finishing up stair welding CAZ to be removed by wednesday. / Jason Johnston on 2025-11-03 11:11: BZI impact in area removed and working can begin 11/5. / allucent_notes_20251111_182405: Luis Vea on 2025-10-08 10:10: space was available to do layout / Luis Vea on 2025-10-20T18:28:34.173Z: need north side of board room wall installed, cant happen until BZI installed the stair case / Jason Johnston on 2025-10-21 12:10: BZI stair install gating the start of this activity. / Jason Johnston on 2025-10-27 08:10: BZI finishing up stair welding CAZ to be removed by wednesday. / Jason Johnston on 2025-11-03 11:11: BZI impact in area removed and working can begin 11/5. / allucent_notes_20251118_192630: Luis Vea on 2025-10-08 10:10: space was available to do layout / Luis Vea on 2025-10-20T18:28:34.173Z: need north side of board room wall installed, cant happen until BZI installed the stair case / Jason Johnston on 2025-10-21 12:10: BZI stair install gating the start of this activity. / Jason Johnston on 2025-10-27 08:10: BZI finishing up stair welding CAZ to be removed by wednesday. / Jason Johnston on 2025-11-03 11:11: BZI impact in area removed and working can begin 11/5. / allucent_notes: 2025-10-08 10:10 - User: Luis Vea - Date Added: 2025-10-08 10:10 - Note: space was available to do layout / 2025-10-20T18:28:34.173Z - User: Luis Vea - Date Added: 2025-10-20T18:28:34.173Z - Note: need north side of board room wall installed, cant happe
- QTS-44991: allucent_notes_20251021_145627: Luis Vea on 2025-10-20T18:29:35.359Z: BZI is installing the stair case, once this is completed, they will finish the north wall of board room wall / allucent_notes_20251027_224008: Luis Vea on 2025-10-20T18:29:35.359Z: BZI is installing the stair case, once this is completed, they will finish the north wall of board room wall / allucent_notes_20251028_163138: Luis Vea on 2025-10-20T18:29:35.359Z: BZI is installing the stair case, once this is completed, they will finish the north wall of board room wall / Jason Johnston on 2025-10-28T21:58:51.922Z: Split framing walls and soffit details / framing before overhead and soffit after details. / allucent_notes_20251104_160200: Luis Vea on 2025-10-20T18:29:35.359Z: BZI is installing the stair case, once this is completed, they will finish the north wall of board room wall / Jason Johnston on 2025-10-28T21:58:51.922Z: Split framing walls and soffit details / framing before overhead and soffit after details. / allucent_notes_20251111_182405: Luis Vea on 2025-10-20T18:29:35.359Z: BZI is installing the stair case, once this is completed, they will finish the north wall of board room wall / Jason Johnston on 2025-10-28T21:58:51.922Z: Split framing walls and soffit details / framing before overhead and soffit after details. / Jason Johnston on 2025-11-11 15:11: Find new Predecessor / allucent_notes_20251118_192630: Luis Vea on 2025-10-20T18:29:35.359Z: BZI is installing the stair case, once this is completed, they will finish the north wall of board room wall / Jason Johnston on 2025-10-28T21:58:51.922Z: Split framing walls and soffit details / framing before overhead and soffit after details. / Jason Johnston on 2025-11-11 15:11: Find new Predecessor / Jason Johnston on 2025-11-18T21:44:28.921Z: After the Green Mile. / allucent_notes: 2025-10-20T18:29:35.359Z - User: Luis Vea - Date Added: 2025-10-20T18:29:35.359Z - Note: BZI is installing the stair case, once this is completed, they will finish the north wall of board room wall / 2025-10-28T21:58:51.922Z - User: Jason Johnston - Date
- QTS-101670: allucent_notes_20251021_145627: Luis Vea on 2025-10-20T18:29:35.359Z: BZI is installing the stair case, once this is completed, they will finish the north wall of board room wall / allucent_notes_20251027_224008: Luis Vea on 2025-10-20T18:29:35.359Z: BZI is installing the stair case, once this is completed, they will finish the north wall of board room wall / allucent_notes: 2025-10-20T18:29:35.359Z - User: Luis Vea - Date Added: 2025-10-20T18:29:35.359Z - Note: BZI is installing the stair case, once this is completed, they will finish the north wall of board room wall / 2025-10-28T21:58:51.922Z - User: Jason Johnston - Date

| ID | WBS | Activity | Duration | Start | Finish | Predecessors | Complete | Remaining | Planned start | Planned finish | Total float | Free float | Constraint | Calendar | Subcontractor | Level | Location | Project Section-1 | Phase-1-1 | Baseline | Layton Responsible Party | Project Section | Allucent CSI Group |
| --- | --- | --- | --- | --- | --- | --- | --- | --- | --- | --- | --- | --- | --- | --- | --- | --- | --- | --- | --- | --- | --- | --- | --- |
|  | 8 | **L1 / FOH // Lobby & Lobby Stairs** |  | 2026-01-10 | 2026-03-24 |  |  |  |  |  |  |  |  |  |  |  |  |  |  |  |  |  |  |
| QTS-45331 |  | Lobby / Install Sprinker Drops | 2d | 2026-01-10 A | 2026-01-12 A | QTS-46451 SS | 100% |  |  |  |  |  |  | QTS-PHX3 DC1 - 6 day w/ Holidays | Olympic West Fire Protection | Level 1 | FOH | Construction | Phase 1 | IGMP | Dave Wiltberger | Construction | 01ADMIN |
| QTS-46451 |  | Lobby / Layout Walls | 1d | 2026-01-10 A | 2026-01-10 A | QTS-44991 | 100% |  |  |  |  |  |  | QTS-PHX3 DC1 - 6 day w/ Holidays | Performance Contracting, Inc. | Level 1 | FOH | Construction | Phase 1 | IGMP | Sean Waisner | Construction | 01ADMIN |
| QTS-45301 |  | Lobby / Layout Overhead MEP/Sprinkler Drops Transfer To Deck | 2d | 2026-01-21 A | 2026-01-15 | QTS-46451 |  | 2d | 2026-01-21 | 2026-01-22 | 20d | 4d |  | QTS-PHX3 DC1 - 6 day w/ Holidays | Bel-Aire Mechanical, LLC | Level 1 | FOH | Construction | Phase 1 | IGMP | Dave Wiltberger | Construction | 01ADMIN |
| QTS-45311 |  | Lobby / Erect Platform Scaffold In Stairs & Lobby | 2d | 2026-01-22 | 2026-01-23 | QTS-45301, QTS-49391 |  |  |  |  | 16d | 0d | start on or after 2026-01-22 | QTS-PHX3 DC1 - 6 day w/ Holidays | Performance Contracting, Inc. | Level 1 | FOH | Construction | Phase 1 | IGMP | Sean Waisner | Construction | 01ADMIN |
| QTS-45321 |  | Lobby / Install MEP Hangers | 2d | 2026-01-23 | 2026-01-24 | QTS-45301, QTS-45311 FF+1d |  |  |  |  | 16d | 0d |  | QTS-PHX3 DC1 - 6 day w/ Holidays | Bel-Aire Mechanical, LLC | Level 1 | FOH | Construction | Phase 1 | IGMP | Dave Wiltberger | Construction | 01ADMIN |
| QTS-45341 |  | Lobby / Rough In Overhead Lighting | 5d | 2026-01-26 | 2026-01-30 | QTS-45331, QTS-45321 |  |  |  |  | 16d | 0d |  | QTS-PHX3 DC1 - 6 day w/ Holidays | Rosendin Electric, Inc | Level 1 | FOH | Construction | Phase 1 | IGMP | Scott Masterson | Construction | 01ADMIN |
| QTS-45351 |  | Lobby / Install MEP / Sprinkler Drops Overhead Stairwell Area | 2d | 2026-01-31 | 2026-02-02 | QTS-45341, QTS-45311 |  |  |  |  | 16d | 0d |  | QTS-PHX3 DC1 - 6 day w/ Holidays | Bel-Aire Mechanical, LLC | Level 1 | FOH | Construction | Phase 1 | IGMP | Dave Wiltberger | Construction | 01ADMIN |
| QTS-45361 |  | Lobby / Frame Lobby Ceiling / Walls (Freedom Wall) | 5d | 2026-02-03 | 2026-02-07 | QTS-45351 |  |  |  |  | 16d | 0d |  | QTS-PHX3 DC1 - 6 day w/ Holidays | Performance Contracting, Inc. | Level 1 | FOH | Construction | Phase 1 | IGMP | Sean Waisner | Construction |  |
| QTS-1002270 |  | Lobby / Hang Drywall - Walls | 6d | 2026-02-09 | 2026-02-14 | QTS-45361 |  |  |  |  | 35d | 0d |  | QTS-PHX3 DC1 - 6 day w/ Holidays | Performance Contracting, Inc. | Level 1 | FOH | Construction | Phase 1 | IGMP | Sean Waisner | Construction |  |
| QTS-45371 |  | Lobby / Hang Hard Lid Grid System | 2d | 2026-02-09 | 2026-02-10 | QTS-45361 |  |  |  |  | 16d | 0d |  | QTS-PHX3 DC1 - 6 day w/ Holidays | Performance Contracting, Inc. | Level 1 | FOH | Construction | Phase 1 | IGMP | Sean Waisner | Construction |  |
| QTS-45381 |  | Lobby / Rough In MEP Overhead Grid System | 3d | 2026-02-11 | 2026-02-13 | QTS-45371 |  |  |  |  | 16d | 0d |  | QTS-PHX3 DC1 - 6 day w/ Holidays | Rosendin Electric, Inc | Level 1 | FOH | Construction | Phase 1 | IGMP | Scott Masterson | Construction |  |
| QTS-45391 |  | Lobby / Inspect Overhead MEP | 2d | 2026-02-14 | 2026-02-16 | QTS-45381 |  |  |  |  | 16d | 0d |  | QTS-PHX3 DC1 - 6 day w/ Holidays | Rosendin Electric, Inc | Level 1 | FOH | Construction | Phase 1 | IGMP | Scott Masterson | Construction |  |
| QTS-1002280 |  | Lobby / Tape & Finish Drywall - Walls | 6d | 2026-02-16 | 2026-02-21 | QTS-1002270 |  |  |  |  | 35d | 0d |  | QTS-PHX3 DC1 - 6 day w/ Holidays | Performance Contracting, Inc. | Level 1 | FOH | Construction | Phase 1 | IGMP | Sean Waisner | Construction |  |
| QTS-45401 |  | Lobby / Hang Drywall Hard Lid | 6d | 2026-02-17 | 2026-02-23 | QTS-45391 |  |  |  |  | 16d | 0d |  | QTS-PHX3 DC1 - 6 day w/ Holidays | Performance Contracting, Inc. | Level 1 | FOH | Construction | Phase 1 | IGMP | Sean Waisner | Construction |  |
| QTS-1002290 |  | Lobby / Paint Walls | 2d | 2026-02-23 | 2026-02-24 | QTS-1002280 |  |  |  |  | 35d | 6d |  | QTS-PHX3 DC1 - 6 day w/ Holidays | Pennington Painting Company, LLC | Level 1 | FOH | Construction | Phase 1 | IGMP | Sean Waisner | Construction |  |
| QTS-1002300 |  | Lobby / Tape & Finish Drywall Hard Lid | 6d | 2026-02-24 | 2026-03-02 | QTS-45401 |  |  |  |  | 16d | 0d |  | QTS-PHX3 DC1 - 6 day w/ Holidays | Performance Contracting, Inc. | Level 1 | FOH | Construction | Phase 1 | IGMP | Sean Waisner | Construction |  |
| QTS-45411 |  | Lobby / Paint Hard Lid First Coat | 1d | 2026-03-03 | 2026-03-03 | QTS-1002300, QTS-45401 |  |  |  |  | 16d | 0d |  | QTS-PHX3 DC1 - 6 day w/ Holidays | Pennington Painting Company, LLC | Level 1 | FOH | Construction | Phase 1 | IGMP | Sean Waisner | Construction |  |
| QTS-45421 |  | Lobby / Finish Lighting Hard Lid | 5d | 2026-03-04 | 2026-03-09 | QTS-45411 |  |  |  |  | 16d | 0d |  | QTS-PHX3 DC1 - 6 day w/ Holidays | Rosendin Electric, Inc | Level 1 | FOH | Construction | Phase 1 | IGMP | Scott Masterson | Construction |  |
| QTS-45451 |  | Lobby / Install Storefront At Lobby & 2nd Floor Landing | 7d | 2026-03-04 | 2026-03-11 | QTS-45411 |  |  |  |  | 16d | 0d |  | QTS-PHX3 DC1 - 6 day w/ Holidays | Giroux Glass, Inc | Level 1 | FOH | Construction | Phase 1 | IGMP | Sean Waisner | Construction |  |
| QTS-45461 |  | Lobby / Install Glazing at Stairs & Soffit | 5d | 2026-03-04 | 2026-03-09 | QTS-45451 SS |  |  |  |  | 29d | 0d |  | QTS-PHX3 DC1 - 6 day w/ Holidays | Giroux Glass, Inc | Level 1 | FOH | Construction | Phase 1 | IGMP | Sean Waisner | Construction |  |
| QTS-45471 |  | Lobby / Install Art In Lobby Areas | 2d | 2026-03-04 | 2026-03-05 | QTS-1002290, QTS-45461 SS |  |  |  |  | 29d | 0d |  | QTS-PHX3 DC1 - 6 day w/ Holidays |  | Level 1 | FOH | Construction | Phase 1 | IGMP | Sean Waisner | Construction |  |
| QTS-45481 |  | Lobby / Install Millwork | 5d | 2026-03-04 | 2026-03-09 | QTS-45471 SS |  |  |  |  | 29d | 21d |  | QTS-PHX3 DC1 - 6 day w/ Holidays |  | Level 1 | FOH | Construction | Phase 1 | IGMP | Sean Waisner | Construction |  |
| QTS-45431 |  | Lobby / Install Defusers in Hard lid | 2d | 2026-03-10 | 2026-03-11 | QTS-45421 |  |  |  |  | 16d | 0d |  | QTS-PHX3 DC1 - 6 day w/ Holidays | Bel-Aire Mechanical, LLC | Level 1 | FOH | Construction | Phase 1 | IGMP | Dave Wiltberger | Construction |  |
| QTS-45441 |  | Lobby / Install Terazzo Flooring At Lobby & Stairs | 10d | 2026-03-12 | 2026-03-23 | QTS-45451, QTS-45431 |  |  |  |  | 16d | 0d |  | QTS-PHX3 DC1 - 6 day w/ Holidays |  | Level 1 | FOH | Construction | Phase 1 | IGMP | Sean Waisner | Construction |  |
| QTS-46461 |  | Lobby / Install Floor Protection | 2d | 2026-03-23 | 2026-03-24 | QTS-45441 FF+1d |  |  |  |  | 16d | 8d |  | QTS-PHX3 DC1 - 6 day w/ Holidays |  | Level 1 | FOH | Construction | Phase 1 | IGMP | Sean Waisner | Construction |  |

Notes:
- QTS-45301: Notes: 1/20/26: Eye brow work preventing the start of the of this item
- QTS-45311: allucent_notes_20251021_145627: Luis Vea on 2025-10-20T18:31:14.737Z: waiting for stairs to be installed to start coordinating / allucent_notes_20251027_224008: Luis Vea on 2025-10-20T18:31:14.737Z: waiting for stairs to be installed to start coordinating / allucent_notes_20251028_163138: Luis Vea on 2025-10-20T18:31:14.737Z: waiting for stairs to be installed to start coordinating / allucent_notes_20251104_160200: Luis Vea on 2025-10-20T18:31:14.737Z: waiting for stairs to be installed to start coordinating / allucent_notes_20251111_182405: Luis Vea on 2025-10-20T18:31:14.737Z: waiting for stairs to be installed to start coordinating / allucent_notes_20251118_192630: Luis Vea on 2025-10-20T18:31:14.737Z: waiting for stairs to be installed to start coordinating / allucent_notes: 2025-10-20T18:31:14.737Z - User: Luis Vea - Date Added: 2025-10-20T18:31:14.737Z - Note: waiting for stairs to be installed to start coordinating

| ID | WBS | Activity | Duration | Start | Finish | Predecessors | Complete | Remaining | Planned start | Planned finish | Total float | Free float | Calendar | Level | Location | Project Section-1 | Phase-1-1 | Baseline | Layton Responsible Party | Project Section | Allucent CSI Group | Subcontractor | Phase-1 | Notes |
| --- | --- | --- | --- | --- | --- | --- | --- | --- | --- | --- | --- | --- | --- | --- | --- | --- | --- | --- | --- | --- | --- | --- | --- | --- |
|  | 13 | **Level 1 Front of House Segment B (Gridlines P-V)** |  | 2025-08-28 | 2026-03-31 |  |  |  |  |  |  |  |  |  |  |  |  |  |  |  |  |  |  |  |
|  | 8 | **L1 / FOH // Tenant Improvement** |  | 2025-08-28 | 2026-03-31 |  |  |  |  |  |  |  |  |  |  |  |  |  |  |  |  |  |  |  |
| QTS-47011 |  | TI Area B // Prime & Paint Exposed Structure | 5d | 2025-08-28 A | 2025-09-02 A | QTS-44801 | 100% |  | 2025-08-28 | 2025-09-04 |  |  |  | Level 1 | FOH | Construction | Phase 1 | IGMP | Doug Hayes | Construction | 01ADMIN |  |  |  |
| QTS-44251 |  | TI Area B // Concrete Seal | 3d | 2025-09-04 A | 2025-09-08 A | QTS-47011 SS | 100% |  |  |  |  |  |  | Level 1 | FOH | Construction | Phase 1 | IGMP | Doug Hayes | Construction |  |  |  |  |
| QTS-26581 |  | TI Area B // Rough Overhead Fire Sprinkler | 7d | 2025-09-24 A | 2025-10-01 A | QTS-44251 | 100% |  | 2025-09-24 | 2025-10-02 |  |  |  | Level 1 | FOH |  |  | IGMP | Dave Wiltberger | Construction |  | Olympic West Fire Protection | Phase 1 |  |
| QTS-25431 |  | TI Area B // Layout Walls | 3d | 2025-09-30 A | 2025-10-09 A | QTS-26581 FF | 100% |  | 2025-09-30 | 2025-10-02 |  |  |  | Level 1 | FOH |  |  | IGMP | Doug Hayes | Construction | 01ADMIN |  | Phase 1 |  |
| QTS-26011 |  | TI Area B // Frame Walls & Soffits | 6d | 2025-10-15 A | 2025-10-29 A | QTS-25731, QTS-25431 | 100% |  | 2025-10-15 | 2025-10-22 |  |  |  | Level 1 | FOH |  |  | IGMP | Doug Hayes | Construction | 01ADMIN |  | Phase 1 |  |
| QTS-26571 |  | TI Area B // Rough In-Wall Plumbing | 5d | 2025-10-30 A | 2025-11-03 A | QTS-26011 | 100% |  | 2025-10-30 | 2025-11-05 |  |  |  | Level 1 | FOH |  |  | IGMP | Dave Wiltberger | Construction | 01ADMIN | Bel-Aire Mechanical, LLC | Phase 1 |  |
| QTS-26561 |  | TI Area B // Rough In-Wall Electrical, Security, & Access Controls | 8d | 2025-11-14 A | 2025-12-15 A | QTS-9871, QTS-26011 | 100% |  | 2025-11-14 | 2025-11-25 |  |  |  | Level 1 | FOH |  |  | IGMP | Scott Masterson | Construction | 01ADMIN | Securitas Technology Corporation | Phase 1 |  |
| QTS-26591 |  | TI Area B // Rough Overhead Electrical | 10d | 2025-11-19 A | 2026-01-14 | QTS-26011 | 100% | 0d | 2025-11-19 | 2025-12-02 | 12d | 0d | QTS-PHX3 DC1 - 6 day w/ Holidays | Level 1 | FOH |  |  | IGMP | Scott Masterson | Construction | 01ADMIN | Rosendin Electric, Inc | Phase 1 |  |
| QTS-28051 |  | TI Area B // Rough Overhead Plumbing & Refrigerant Piping | 10d | 2025-12-05 A | 2025-12-22 A | QTS-25431, QTS-26011 | 100% |  | 2025-12-05 | 2025-12-16 |  |  | QTS-PHX3 DC1 - 6 day w/ Holidays | Level 1 | FOH |  |  | IGMP | Dave Wiltberger | Construction | 01ADMIN | Bel-Aire Mechanical, LLC | Phase 1 |  |
| QTS-1002220 |  | TI Area B // In Wall Electrical, Security, & Access Controls Rough | 5d | 2025-12-18 A | 2026-01-14 | QTS-26591 SS | 100% | 0d | 2025-12-18 | 2025-12-23 | 12d | 0d | QTS-PHX3 DC1 - 6 day w/ Holidays | Level 1 | FOH |  |  | IGMP | Sean Waisner | Construction | 01ADMIN |  | Phase 1 | 1/13/26: Not complete. Held up by back box procurement |
| QTS-44871 |  | TI Area B // Pressure Testing and Inspection Plumbing & Refrigerant Piping | 1d | 2025-12-22 A | 2025-12-22 A | QTS-28051 FF | 100% |  |  |  |  |  | QTS-PHX3 DC1 - 6 day w/ Holidays | Level 1 | FOH | Construction | Phase 1 | IGMP | Dave Wiltberger | Construction | 01ADMIN | Bel-Aire Mechanical, LLC |  |  |
| QTS-28971 |  | TI Area B // Insulate Piping & Referigerant Lines | 10d | 2025-12-23 A | 2026-01-05 A | QTS-26571, QTS-28051, QTS-44871 | 100% |  |  |  |  |  | QTS-PHX3 DC1 - 6 day w/ Holidays | Level 1 | FOH |  |  | IGMP | Dave Wiltberger | Construction | 01ADMIN | Bel-Aire Mechanical, LLC | Phase 1 |  |
| QTS-27711 |  | TI Area B // MEP In Wall Inspection | 1d | 2026-01-15 A | 2026-01-15 A | QTS-26571, QTS-26561, QTS-1002220 | 100% |  |  |  |  |  | QTS-PHX3 DC1 - 6 day w/ Holidays | Level 1 | FOH |  |  | IGMP | Dave Wiltberger | Construction | 01ADMIN | Bel-Aire Mechanical, LLC | Phase 1 |  |
| QTS-28401 |  | TI Area B // Hang Drywall (Including Ceilings) | 6d | 2026-01-17 | 2026-01-24 | QTS-26011, QTS-26571, QTS-27881 |  |  |  |  | 10d | 0d | QTS-PHX3 DC1 - 6 day w/ Holidays | Level 1 | FOH |  |  | IGMP | Sean Waisner | Construction | 01ADMIN | Performance Contracting, Inc. | Phase 1 |  |
| QTS-28791 |  | TI Area B // Tape & Finish Drywall | 9d | 2026-01-22 | 2026-01-31 | QTS-28401 SS+3d, QTS-28401 FF+3d |  |  |  |  | 10d | 0d | QTS-PHX3 DC1 - 6 day w/ Holidays | Level 1 | FOH |  |  | IGMP | Sean Waisner | Construction | 01ADMIN | Performance Contracting, Inc. | Phase 1 |  |
| QTS-27881 |  | TI Area B // Insulate Walls | 5d | 2026-01-26 A | 2026-01-16 | QTS-27711 FF+1d | 40% | 3d | 2026-01-26 | 2026-01-30 | 10d | 0d | QTS-PHX3 DC1 - 6 day w/ Holidays | Level 1 | FOH |  |  | IGMP | Sean Waisner | Construction | 01ADMIN | Performance Contracting, Inc. | Phase 1 |  |
| QTS-29161 |  | TI Area B // Rough Overhead Ductwork | 8d | 2026-01-26 | 2026-02-03 | QTS-28791 FF+2d, QTS-28971 |  |  |  |  | 10d | 0d | QTS-PHX3 DC1 - 6 day w/ Holidays | Level 1 | FOH |  |  | IGMP | Dave Wiltberger | Construction |  | Bel-Aire Mechanical, LLC | Phase 1 |  |
| QTS-29471 |  | TI Area B // Insulate HVAC Ductwork | 8d | 2026-01-29 | 2026-02-06 | QTS-29161 SS+3d, QTS-29161 FF+3d |  |  |  |  | 10d | 0d | QTS-PHX3 DC1 - 6 day w/ Holidays | Level 1 | FOH |  |  | IGMP | Dave Wiltberger | Construction |  | Bel-Aire Mechanical, LLC | Phase 1 |  |
| QTS-29101 |  | TI Area B // Prime & Paints Walls/ Ceilings | 4d | 2026-02-02 | 2026-02-05 | QTS-28791 |  |  |  |  | 13d | 0d | QTS-PHX3 DC1 - 6 day w/ Holidays | Level 1 | FOH |  |  | IGMP | Sean Waisner | Construction |  | Pennington Painting Company, LLC | Phase 1 |  |
| QTS-29181 |  | TI Area B // Install Low Voltage Trim | 5d | 2026-02-06 | 2026-02-11 | QTS-29101 |  |  |  |  | 44d | 6d | QTS-PHX3 DC1 - 6 day w/ Holidays | Level 1 | FOH |  |  | IGMP | Scott Masterson | Construction |  | Rosendin Electric, Inc | Phase 1 |  |
| QTS-29201 |  | TI Area B // Install Operable Glass with Privacy Film | 5d | 2026-02-06 | 2026-02-11 | QTS-29101 |  |  |  |  | 42d | 32d | QTS-PHX3 DC1 - 6 day w/ Holidays | Level 1 | FOH |  |  | IGMP | Sean Waisner | Construction |  | Giroux Glass, Inc | Phase 1 |  |
| QTS-44881 |  | TI Area B // Install Ceiling Grid | 2d | 2026-02-07 | 2026-02-09 | QTS-29471 |  |  |  |  | 10d | 0d | QTS-PHX3 DC1 - 6 day w/ Holidays | Level 1 | FOH | Construction | Phase 1 | IGMP | Sean Waisner | Construction |  | Performance Contracting, Inc. |  |  |
| QTS-29171 |  | TI Area B // Install Light Fixtures | 8d | 2026-02-10 | 2026-02-18 | QTS-44881 SS+2d, QTS-29101 |  |  |  |  | 10d | 0d | QTS-PHX3 DC1 - 6 day w/ Holidays | Level 1 | FOH |  |  | IGMP | Scott Masterson | Construction |  | Rosendin Electric, Inc | Phase 1 |  |
| QTS-29611 |  | TI Area B // Install Electrical Trim | 5d | 2026-02-19 | 2026-02-24 | QTS-29171, QTS-29181 |  |  |  |  | 38d | 28d | QTS-PHX3 DC1 - 6 day w/ Holidays | Level 1 | FOH |  |  | IGMP | Scott Masterson | Construction |  | Rosendin Electric, Inc | Phase 1 |  |
| QTS-29621 |  | TI Area B // Install Manual Partition Wall | 5d | 2026-02-19 | 2026-02-24 | QTS-29171 |  |  |  |  | 10d | 0d | QTS-PHX3 DC1 - 6 day w/ Holidays | Level 1 | FOH |  |  | IGMP | Sean Waisner | Construction |  | Giroux Glass, Inc | Phase 1 |  |
| QTS-29691 |  | TI Area B // Install Armstrong Ceiling Grid | 4d | 2026-02-25 | 2026-02-28 | QTS-29471, QTS-26581, QTS-29621 |  |  |  |  | 10d | 0d | QTS-PHX3 DC1 - 6 day w/ Holidays | Level 1 | FOH |  |  | IGMP | Sean Waisner | Construction |  | Performance Contracting, Inc. | Phase 1 |  |
| QTS-29721 |  | TI Area B // Install Mechanical Trim | 8d | 2026-02-27 | 2026-03-07 | QTS-29691 SS+2d |  |  |  |  | 10d | 0d | QTS-PHX3 DC1 - 6 day w/ Holidays | Level 1 | FOH |  |  | IGMP | Dave Wiltberger | Construction |  | Bel-Aire Mechanical, LLC | Phase 1 |  |
| QTS-29841 |  | TI Area B // Install Fire Sprinkler Trim | 3d | 2026-02-27 | 2026-03-02 | QTS-29691 SS+2d |  |  |  |  | 15d | 5d | QTS-PHX3 DC1 - 6 day w/ Holidays | Level 1 | FOH |  |  | IGMP | Dave Wiltberger | Construction |  | Olympic West Fire Protection | Phase 1 |  |
| QTS-30071 |  | TI Area B // MEP Overhead Inspection | 1d | 2026-03-09 | 2026-03-09 | QTS-29721, QTS-29841 |  |  |  |  | 10d | 0d | QTS-PHX3 DC1 - 6 day w/ Holidays | Level 1 | FOH |  |  | IGMP | Dave Wiltberger | Construction |  | Bel-Aire Mechanical, LLC | Phase 1 |  |
| QTS-30111 |  | TI Area B // Drop Ceiling Tiles | 5d | 2026-03-10 | 2026-03-14 | QTS-30071, QTS-44881 |  |  |  |  | 10d | 0d | QTS-PHX3 DC1 - 6 day w/ Holidays | Level 1 | FOH |  |  | IGMP | Sean Waisner | Construction |  | Performance Contracting, Inc. | Phase 1 |  |
| QTS-30291 |  | TI Area B // Install Casework | 5d | 2026-03-16 | 2026-03-20 | QTS-30111 |  |  |  |  | 10d | 0d | QTS-PHX3 DC1 - 6 day w/ Holidays | Level 1 | FOH |  |  | IGMP | Sean Waisner | Construction |  |  | Phase 1 |  |
| QTS-30361 |  | TI Area B // Install Flooring & Base | 6d | 2026-03-21 | 2026-03-27 | QTS-30291, QTS-29201 |  |  |  |  | 10d | 0d | QTS-PHX3 DC1 - 6 day w/ Holidays | Level 1 | FOH |  |  | IGMP | Sean Waisner | Construction |  |  | Phase 1 |  |
| QTS-30461 |  | TI Area B // Install Plumbing Finishes | 2d | 2026-03-21 | 2026-03-23 | QTS-30291 |  |  |  |  | 13d | 0d | QTS-PHX3 DC1 - 6 day w/ Holidays | Level 1 | FOH |  |  | IGMP | Dave Wiltberger | Construction |  | Bel-Aire Mechanical, LLC | Phase 1 |  |
| QTS-30541 |  | TI Area B // Set Doors & Hardware | 5d | 2026-03-21 | 2026-03-26 | QTS-30361 SS, QTS-99650 |  |  |  |  | 10d | 0d | QTS-PHX3 DC1 - 6 day w/ Holidays | Level 1 | FOH |  |  | IGMP | Sean Waisner | Construction |  |  | Phase 1 |  |
| QTS-30511 |  | TI Area B // Install FEC's | 2d | 2026-03-24 | 2026-03-25 | QTS-1004520, QTS-30461 |  |  |  |  | 13d | 3d | QTS-PHX3 DC1 - 6 day w/ Holidays | Level 1 | FOH |  |  | IGMP | Sean Waisner | Construction |  |  | Phase 1 |  |
| QTS-30641 |  | TI Area B // Install Window Treatments | 2d | 2026-03-27 | 2026-03-28 | QTS-30541 |  |  |  |  | 10d | 0d | QTS-PHX3 DC1 - 6 day w/ Holidays | Level 1 | FOH |  |  | IGMP | Sean Waisner | Construction |  | Giroux Glass, Inc | Phase 1 |  |
| QTS-30671 |  | TI Area B // Install FF&E | 2d | 2026-03-30 | 2026-03-31 | QTS-29611, QTS-30511, QTS-30641 |  |  |  |  | 10d | 2d | QTS-PHX3 DC1 - 6 day w/ Holidays | Level 1 | FOH |  |  | IGMP | Sean Waisner | Construction |  |  | Phase 1 |  |

Notes:
- QTS-26011: allucent_notes_20251021_145627: Luis Vea on 2025-10-20T18:32:35.137Z: waiting on material for the 3inch wall, need BZI to finish stair case, BZI was using the forklift to finish the elevator beams / Jason Johnston on 2025-10-21 12:10: BZI stair install impacting access to complete the area. / allucent_notes_20251027_224008: Luis Vea on 2025-10-20T18:32:35.137Z: waiting on material for the 3inch wall, need BZI to finish stair case, BZI was using the forklift to finish the elevator beams / Jason Johnston on 2025-10-21 12:10: BZI stair install impacting access to complete the area. / allucent_notes_20251028_163138: Luis Vea on 2025-10-20T18:32:35.137Z: waiting on material for the 3inch wall, need BZI to finish stair case, BZI was using the forklift to finish the elevator beams / Jason Johnston on 2025-10-21 12:10: BZI stair install impacting access to complete the area. / allucent_notes_20251104_160200: Luis Vea on 2025-10-20T18:32:35.137Z: waiting on material for the 3inch wall, need BZI to finish stair case, BZI was using the forklift to finish the elevator beams / Jason Johnston on 2025-10-21 12:10: BZI stair install impacting access to complete the area. / allucent_notes: 2025-10-20T18:32:35.137Z - User: Luis Vea - Date Added: 2025-10-20T18:32:35.137Z - Note: waiting on material for the 3inch wall, need BZI to finish stair case, BZI was using the forklift to finish the elevator beams / 2025-10-21 12:10 - User: Jason John
- QTS-26571: allucent_notes_20251104_160200: Jason Johnston on 2025-11-03 11:11: Only in wall plumbing is in captured in restroom line. / allucent_notes: 2025-11-03 11:11 - User: Jason Johnston - Date Added: 2025-11-03 11:11 - Note: Only in wall plumbing is in captured in restroom line.
- QTS-26561: allucent_notes_20251104_160200: Jason Johnston on 2025-11-03 11:11: Focus on priority rooms first. / allucent_notes_20251111_182405: Jason Johnston on 2025-11-03 11:11: Focus on priority rooms first. / allucent_notes_20251118_192630: Jason Johnston on 2025-11-03 11:11: Focus on priority rooms first. / allucent_notes_20251202_153722: Jason Johnston on 2025-11-03 11:11: Focus on priority rooms first. / David Wiltberger on 2025-12-02 13:42: no walls built not early ACCESS / allucent_notes_20251209_203830: Jason Johnston on 2025-11-03 11:11: Focus on priority rooms first. / David Wiltberger on 2025-12-02 13:42: no walls built not early ACCESS / allucent_notes_20251216_165335: Jason Johnston on 2025-11-03 11:11: Focus on priority rooms first. / David Wiltberger on 2025-12-02 13:42: no walls built not early ACCESS / allucent_notes: 2025-11-03 11:11 - User: Jason Johnston - Date Added: 2025-11-03 11:11 - Note: Focus on priority rooms first. / 2025-12-02 13:42 - User: David Wiltberger - Date Added: 2025-12-02 13:42 - Note: no walls built not early ACCESS
- QTS-26591: allucent_notes_20251230_164549: Jason Johnston on 2025-11-03 11:11: focus on priority walls / Jason Johnston on 2025-11-19T02:22:41.829Z: undo / Jason Johnston on 2025-12-09 20:34: Need update from team / Scott Masterson on 2025-12-16 16:19: Jason is fixing the start... / Sean Waisner on 2025-12-30 16:05: Man power issues / allucent_notes_20251104_160200: Jason Johnston on 2025-11-03 11:11: focus on priority walls / allucent_notes_20251111_182405: Jason Johnston on 2025-11-03 11:11: focus on priority walls / allucent_notes_20251118_192630: Jason Johnston on 2025-11-03 11:11: focus on priority walls / Jason Johnston on 2025-11-19T02:22:41.829Z: undo / allucent_notes_20251202_153722: Jason Johnston on 2025-11-03 11:11: focus on priority walls / Jason Johnston on 2025-11-19T02:22:41.829Z: undo / allucent_notes_20251209_203830: Jason Johnston on 2025-11-03 11:11: focus on priority walls / Jason Johnston on 2025-11-19T02:22:41.829Z: undo / Jason Johnston on 2025-12-09 20:34: Need update from team / allucent_notes_20251216_165335: Jason Johnston on 2025-11-03 11:11: focus on priority walls / Jason Johnston on 2025-11-19T02:22:41.829Z: undo / Jason Johnston on 2025-12-09 20:34: Need update from team / Scott Masterson on 2025-12-16 16:19: Jason is fixing the start... / allucent_notes: 2025-11-03 11:11 - User: Jason Johnston - Date Added: 2025-11-03 11:11 - Note: focus on priority walls / 2025-11-19T02:22:41.829Z - User: Jason Johnston - Date Added: 2025-11-19T02:22:41.829Z - Note: undo / 2025-12-09 20:34 - User: Jason Johnston - Date
- QTS-27711: allucent_notes_20251230_164549: David Wiltberger on 2025-12-02 06:38: wall built late / JD Kitchens on 2025-12-30 14:28: update / allucent_notes_20251202_153722: David Wiltberger on 2025-12-02 06:38: wall built late / allucent_notes_20251209_203830: David Wiltberger on 2025-12-02 06:38: wall built late / allucent_notes_20251216_165335: David Wiltberger on 2025-12-02 06:38: wall built late / allucent_notes: 2025-12-02 06:38 - User: David Wiltberger - Date Added: 2025-12-02 06:38 - Note: wall built late / 2025-12-30 14:28 - User: JD Kitchens - Date Added: 2025-12-30 14:28 - Note: update
- QTS-27881: allucent_notes_20251230_164549: JD Kitchens on 2025-12-30 14:27: actual / JD Kitchens on 2025-12-30 14:27: actual / allucent_notes: 2025-12-30 14:27 - User: JD Kitchens - Date Added: 2025-12-30 14:27 - Note: actual / 2025-12-30 14:27 - User: JD Kitchens - Date Added: 2025-12-30 14:27 - Note: actual

| ID | WBS | Activity | Duration | Start | Finish | Predecessors | Complete | Remaining | Planned start | Planned finish | Total float | Free float | Calendar | Level | Location | Project Section-1 | Phase-1-1 | Baseline | Layton Responsible Party | Project Section | Phase-1 | Subcontractor | Allucent CSI Group |
| --- | --- | --- | --- | --- | --- | --- | --- | --- | --- | --- | --- | --- | --- | --- | --- | --- | --- | --- | --- | --- | --- | --- | --- |
|  | 6 | **L1 / FOH // SDF #0163 (Early Access)** |  | 2025-09-04 | 2025-12-16 |  |  |  |  |  |  |  |  |  |  |  |  |  |  |  |  |  |  |
| QTS-44261 |  | SDF #0163 // Concrete Seal | 3d | 2025-09-04 A | 2025-09-08 A | QTS-44251 FF | 100% |  |  |  |  |  |  | Level 1 | FOH | Construction | Phase 1 | IGMP | Doug Hayes | Construction |  |  |  |
| QTS-1271 |  | SDF #0163 // Frame Walls | 2d | 2025-10-03 A | 2025-10-06 A | QTS-26581 | 100% |  |  |  |  |  |  | Level 1 | FOH |  |  | IGMP | Doug Hayes | Construction | Phase 1 |  |  |
| QTS-2341 |  | SDF #0163 // Rough Overhead Fire Sprinkler | 2d | 2025-10-08 A | 2025-10-09 A | QTS-44261, QTS-26581 | 100% |  |  |  |  |  |  | Level 1 | FOH |  |  | IGMP | Dave Wiltberger | Construction | Phase 1 | Olympic West Fire Protection | 01ADMIN |
| QTS-2351 |  | SDF #0163 // Rough Overhead Linesets | 5d | 2025-10-17 A | 2025-11-14 A | QTS-1271 | 100% |  | 2025-10-17 | 2025-10-23 |  |  |  | Level 1 | FOH |  |  | IGMP | Dave Wiltberger | Construction | Phase 1 | Bel-Aire Mechanical, LLC | 01ADMIN |
| QTS-2331 |  | SDF #0163 // Rough In Electrical | 10d | 2025-10-20 A | 2025-11-12 A | QTS-1271, QTS-2341 | 100% |  | 2025-10-20 | 2025-10-31 |  |  |  | Level 1 | FOH |  |  | IGMP | Scott Masterson | Construction | Phase 1 | Rosendin Electric, Inc | 01ADMIN |
| QTS-99600 |  | SDF #0163 // Set Door Frame | 1d | 2025-11-12 A | 2025-11-12 A | QTS-1271 | 100% |  | 2025-11-05 | 2025-11-05 |  |  |  | Level 1 | FOH |  |  | IGMP | Doug Hayes | Construction | Phase 1 |  | 01ADMIN |
| QTS-3131 |  | SDF #0163 // In Wall Inspection | 1d | 2025-11-13 A | 2025-11-13 A | QTS-2331 | 100% |  | 2025-11-06 | 2025-11-06 |  |  |  | Level 1 | FOH |  |  | IGMP | Dave Wiltberger | Construction | Phase 1 | Bel-Aire Mechanical, LLC | 01ADMIN |
| QTS-20851 |  | SDF #0163 // Hang Drywall | 1d | 2025-11-14 A | 2025-11-17 A | QTS-3131 | 100% |  | 2025-11-07 | 2025-11-07 |  |  |  | Level 1 | FOH |  |  | IGMP | Doug Hayes | Construction | Phase 1 |  | 01ADMIN |
| QTS-20941 |  | SDF #0163 // Tape & Finish Drywall | 3d | 2025-11-17 A | 2025-11-19 A | QTS-20851 | 100% |  | 2025-11-10 | 2025-11-12 |  |  |  | Level 1 | FOH |  |  | IGMP | Sean Waisner | Construction | Phase 1 |  | 01ADMIN |
| QTS-21311 |  | SDF #0163 // Plywood Install | 1d | 2025-11-20 A | 2025-11-20 A | QTS-20941 | 100% |  |  |  |  |  |  | Level 1 | FOH |  |  | IGMP | Sean Waisner | Construction | Phase 1 |  | 01ADMIN |
| QTS-21151 |  | SDF #0163 // Prime & Paint | 2d | 2025-11-21 A | 2025-11-24 A | QTS-21311 | 100% |  |  |  |  |  |  | Level 1 | FOH |  |  | IGMP | Sean Waisner | Construction | Phase 1 |  | 01ADMIN |
| QTS-21611 |  | SDF #0163 // Install Light Fixtures | 2d | 2025-12-03 A | 2025-12-04 A | QTS-20631 | 100% |  |  |  |  |  |  | Level 1 | FOH |  |  | IGMP | Scott Masterson | Construction | Phase 1 | Rosendin Electric, Inc | 01ADMIN |
| QTS-21421 |  | SDF #0163 // Install AC Unit | 2d | 2025-12-05 A | 2025-12-08 A | QTS-21151, QTS-21311, QTS-2351, QTS-21611 | 100% |  |  |  |  |  |  | Level 1 | FOH |  |  | IGMP | Dave Wiltberger | Construction | Phase 1 | Bel-Aire Mechanical, LLC | 01ADMIN |
| QTS-20631 |  | SDF #0163 // Set Door | 1d | 2025-12-08 A | 2025-12-08 A | QTS-1271 FF, QTS-99600 | 100% |  |  |  |  |  |  | Level 1 | FOH |  |  | IGMP | Sean Waisner | Construction | Phase 1 |  | 01ADMIN |
| QTS-21731 |  | SDF #0163 // Install Cable Racks | 5d | 2025-12-10 A | 2025-12-16 A | QTS-21151 | 100% |  |  |  |  |  |  | Level 1 | FOH |  |  | IGMP | Scott Masterson | Construction | Phase 1 | E2 Optics, LLC | 01ADMIN |
|  | 10 | **L1 / FOH // Fire Riser #0171** |  | 2025-09-04 | 2026-02-03 |  |  |  |  |  |  |  |  |  |  |  |  |  |  |  |  |  |  |
| QTS-44271 |  | Fire Riser #0171 // Concrete Seal | 3d | 2025-09-04 A | 2025-09-08 A | QTS-44261 | 100% |  |  |  |  |  |  | Level 1 | FOH | Construction | Phase 1 | IGMP | Doug Hayes | Construction |  |  |  |
| QTS-22291 |  | Fire Riser #0171 // Rough Overhead Fire Sprinkler | 10d | 2025-09-29 A | 2025-10-03 A | QTS-44271 | 100% |  | 2025-09-29 | 2025-10-10 |  |  |  | Level 1 | FOH |  |  | IGMP | Dave Wiltberger | Construction | Phase 1 | Olympic West Fire Protection |  |
| QTS-4341 |  | Fire Riser #0171 // In Wall Inspection | 5d | 2025-10-15 A | 2025-10-21 A | QTS-3111 | 100% |  |  |  |  |  |  | Level 1 | FOH |  |  | IGMP | Dave Wiltberger | Construction | Phase 1 | Bel-Aire Mechanical, LLC | 01ADMIN |
| QTS-2321 |  | Fire Riser #0171 // Frame Walls | 2d | 2025-10-30 A | 2025-10-31 A | QTS-1271, QTS-26011, QTS-22291 | 100% |  |  |  |  |  |  | Level 1 | FOH |  |  | IGMP | Doug Hayes | Construction | Phase 1 |  | 01ADMIN |
| QTS-3111 |  | Fire Riser #0171 // Rough In Electrical | 5d | 2025-11-03 A | 2025-11-12 A | QTS-2321 | 100% |  | 2025-11-03 | 2025-11-07 |  |  |  | Level 1 | FOH |  |  | IGMP | Scott Masterson | Construction | Phase 1 | Rosendin Electric, Inc | 01ADMIN |
| QTS-99610 |  | Fire Riser #0171 // Set Door Frame | 1d | 2025-11-12 A | 2025-11-12 A | QTS-2321 | 100% |  | 2025-11-05 | 2025-11-05 |  |  |  | Level 1 | FOH |  |  | IGMP | Doug Hayes | Construction | Phase 1 |  | 01ADMIN |
| QTS-20841 |  | Fire Riser #0171 // Hang Drywall | 5d | 2025-11-20 A | 2025-11-26 A | QTS-4341 | 100% |  |  |  |  |  |  | Level 1 | FOH |  |  | IGMP | Sean Waisner | Construction | Phase 1 |  | 01ADMIN |
| QTS-21291 |  | Fire Riser #0171 // Tape & Finish Drywall | 5d | 2025-12-01 A | 2025-12-05 A | QTS-20841 | 100% |  |  |  |  |  |  | Level 1 | FOH |  |  | IGMP | Sean Waisner | Construction | Phase 1 |  | 01ADMIN |
| QTS-21691 |  | Fire Riser #0171 // Prime & Paint | 5d | 2025-12-08 A | 2025-12-09 A | QTS-21291 | 100% |  | 2025-12-08 | 2025-12-12 |  |  |  | Level 1 | FOH |  |  | IGMP | Sean Waisner | Construction | Phase 1 |  | 01ADMIN |
| QTS-20621 |  | Fire Riser #0171 // Set Door (Temp) | 1d | 2025-12-10 A | 2025-12-10 A | QTS-2321 FF, QTS-15231, QTS-99610 | 100% |  |  |  |  |  |  | Level 1 | FOH |  |  | IGMP | Sean Waisner | Construction | Phase 1 |  | 01ADMIN |
| QTS-21951 |  | Fire Riser #0171 // Install Light Fixtures | 5d | 2025-12-23 A | 2026-01-14 | QTS-21691, QTS-20621 FF | 100% | 0d | 2025-12-23 | 2025-12-29 | 75d | 67d | QTS-PHX3 DC1 - 6 day w/ Holidays | Level 1 | FOH |  |  | IGMP | Scott Masterson | Construction | Phase 1 | Rosendin Electric, Inc | 01ADMIN |
| QTS-23011 |  | Fire Riser #0171 // Build Fire Risers | 10d | 2026-01-07 A | 2026-01-15 | QTS-22291, QTS-120000 | 80% | 2d | 2026-01-07 | 2026-01-17 | 50d | 0d | QTS-PHX3 DC1 - 6 day w/ Holidays | Level 1 | FOH |  |  | IGMP | Dave Wiltberger | Construction | Phase 1 | Olympic West Fire Protection | 01ADMIN |
| QTS-27481 |  | Fire Riser #0171 // Install Fire Pump | 2d | 2026-01-22 | 2026-01-23 | QTS-23011, QTS-27111, QTS-12901 |  |  |  |  | 58d | 0d | QTS-PHX3 DC1 - 6 day w/ Holidays | Level 1 | FOH |  |  | IGMP | Dave Wiltberger | Construction | Phase 1 | Olympic West Fire Protection | 01ADMIN |
| QTS-27691 |  | Fire Riser #0171 // Install Heater | 5d | 2026-01-24 | 2026-01-29 | QTS-27481 |  |  |  |  | 58d | 0d | QTS-PHX3 DC1 - 6 day w/ Holidays | Level 1 | FOH |  |  | IGMP | Dave Wiltberger | Construction | Phase 1 | Bel-Aire Mechanical, LLC | 01ADMIN |
| QTS-27111 |  | Fire Riser #0171 // Air Test System | 2d | 2026-01-26 A | 2026-01-15 | QTS-23011 FF, QTS-26281, QTS-2341, QTS-26321, QTS-26801 |  | 2d | 2026-01-30 | 2026-01-31 | 62d | 4d | QTS-PHX3 DC1 - 6 day w/ Holidays | Level 1 | FOH |  |  | IGMP | Dave Wiltberger | Construction | Phase 1 | Olympic West Fire Protection | 01ADMIN |
| QTS-1003980 |  | Fire Riser #0171 // Water Test System | 2d | 2026-01-30 | 2026-01-31 | QTS-27691, QTS-27481 |  |  |  |  | 58d | 0d | QTS-PHX3 DC1 - 6 day w/ Holidays | Level 1 | FOH |  |  | IGMP | Dave Wiltberger | Construction | Phase 1 | Olympic West Fire Protection | 01ADMIN |
| QTS-1003990 |  | Fire Riser #0171 // City Inspection of Fire Pump/System | 2d | 2026-02-02 | 2026-02-03 | QTS-1003980 |  |  |  |  | 58d | 50d | QTS-PHX3 DC1 - 6 day w/ Holidays | Level 1 | FOH |  |  | IGMP | Dave Wiltberger | Construction | Phase 1 | Olympic West Fire Protection | 01ADMIN |

Notes:
- QTS-2351: allucent_notes_20251014_152335: Luis Vea on 2025-10-14 10:10: BZI can be in the way for scope to complete/sart / allucent_notes_20251021_145627: Luis Vea on 2025-10-14 10:10: BZI can be in the way for scope to complete/sart / Luis Vea on 2025-10-20T18:41:39.785Z: linesets are not run yet, walls have not be framed due to BZI was in the way with forklift / allucent_notes_20251027_224008: Luis Vea on 2025-10-14 10:10: BZI can be in the way for scope to complete/sart / Luis Vea on 2025-10-20T18:41:39.785Z: linesets are not run yet, walls have not be framed due to BZI was in the way with forklift / Scott Masterson on 2025-10-27 16:10: Room is not framed yet. BZI occupied the area installing stell at the entry and the lobby stairs. / allucent_notes_20251028_163138: Luis Vea on 2025-10-14 10:10: BZI can be in the way for scope to complete/sart / Luis Vea on 2025-10-20T18:41:39.785Z: linesets are not run yet, walls have not be framed due to BZI was in the way with forklift / Scott Masterson on 2025-10-27 16:10: Room is not framed yet. BZI occupied the area installing stell at the entry and the lobby stairs. / allucent_notes_20251104_160200: Luis Vea on 2025-10-14 10:10: BZI can be in the way for scope to complete/sart / Luis Vea on 2025-10-20T18:41:39.785Z: linesets are not run yet, walls have not be framed due to BZI was in the way with forklift / Scott Masterson on 2025-10-27 16:10: Room is not framed yet. BZI occupied the area installing stell at the entry and the lobby stairs. / Jason Johnston on 2025-11-03 14:11: Done 11/14 / allucent_notes_20251111_182405: Luis Vea on 2025-10-14 10:10: BZI can be in the way for scope to complete/sart / Luis Vea on 2025-10-20T18:41:39.785Z: linesets are not run yet, walls have not be framed due to BZI was in the way with forklift / Scott Masterson on 2025-10-27 16:10: Room is not framed yet. BZI occupied the area installing stell at the entry and the lobby stairs. / Jason Johnston on 2025-11-03 14:11: Done 11/14 / allucent_notes_20251118_192630: Luis Vea on 2025-10-14 10:10: BZI can be in the way for scope to complete/sart / Luis Vea on 2025-10-20T18:41:39.785Z: linesets are not run yet, walls have not be framed due to BZI was in the way with forklift / Scott Masterson on 2025-10-27 16:10: Room is not framed yet. BZI occupied the area installing stell at the entry and the lobby stairs. / Jason Johnston on 2025-11-03 14:11: Done 11/14 / allucent_notes: 2025-10-14 10:10 - User: Luis Vea - Date Added: 2025-10-14 10:10 - Note: BZI can be in the way for scope to complete/sart / 2025-10-20T18:41:39.785Z - User: Luis Vea - Date Added: 2025-10-20T18:41:39.785Z - Note: linesets are not run yet, walls have not
- QTS-2331: allucent_notes_20251014_152335: Luis Vea on 2025-10-14 10:10: walls are not framed. due to weather impact last weekend and BZI needing room for Forklift and material / allucent_notes_20251021_145627: Luis Vea on 2025-10-14 10:10: walls are not framed. due to weather impact last weekend and BZI needing room for Forklift and material / Luis Vea on 2025-10-20T18:42:59.886Z: walls are not framed due to manpower getting pulled to the fan walls / allucent_notes_20251027_224008: Luis Vea on 2025-10-14 10:10: walls are not framed. due to weather impact last weekend and BZI needing room for Forklift and material / Luis Vea on 2025-10-20T18:42:59.886Z: walls are not framed due to manpower getting pulled to the fan walls / allucent_notes_20251028_163138: Luis Vea on 2025-10-14 10:10: walls are not framed. due to weather impact last weekend and BZI needing room for Forklift and material / Luis Vea on 2025-10-20T18:42:59.886Z: walls are not framed due to manpower getting pulled to the fan walls / allucent_notes_20251104_160200: Luis Vea on 2025-10-14 10:10: walls are not framed. due to weather impact last weekend and BZI needing room for Forklift and material / Luis Vea on 2025-10-20T18:42:59.886Z: walls are not framed due to manpower getting pulled to the fan walls / Jason Johnston on 2025-11-03 14:11: Completing Wednesday. / allucent_notes_20251111_182405: Luis Vea on 2025-10-14 10:10: walls are not framed. due to weather impact last weekend and BZI needing room for Forklift and material / Luis Vea on 2025-10-20T18:42:59.886Z: walls are not framed due to manpower getting pulled to the fan walls / Jason Johnston on 2025-11-03 14:11: Completing Wednesday. / Luis Vea on 2025-11-10 11:11: completing 11/10 / Jason Johnston on 2025-11-11 15:11: Will be complete 11/12. / allucent_notes_20251118_192630: Luis Vea on 2025-10-14 10:10: walls are not framed. due to weather impact last weekend and BZI needing room for Forklift and material / Luis Vea on 2025-10-20T18:42:59.886Z: walls are not framed due to manpower getting pulled to the fan walls / Jason Johnston on 2025-11-03 14:11: Completing Wednesday. / Luis Vea on 2025-11-10 11:11: completing 11/10 / Jason Johnston on 2025-11-11 15:11: Will be complete 11/12. / allucent_notes: 2025-10-14 10:10 - User: Luis Vea - Date Added: 2025-10-14 10:10 - Note: walls are not framed. due to weather impact last weekend and BZI needing room for Forklift and material / 2025-10-20T18:42:59.886Z - User: Luis Vea - Date Added: 2025-10-20T18:42:5
- QTS-99600: allucent_notes_20251014_152335: Luis Vea on 2025-10-14 10:10: doors to arrive on October 27th / allucent_notes_20251021_145627: Luis Vea on 2025-10-14 10:10: doors to arrive on October 27th / allucent_notes_20251027_224008: Luis Vea on 2025-10-14 10:10: doors to arrive on October 27th / Jason Johnston on 2025-10-27 09:10: Door arrives on site 10/30. / allucent_notes_20251028_163138: Luis Vea on 2025-10-14 10:10: doors to arrive on October 27th / Jason Johnston on 2025-10-27 09:10: Door arrives on site 10/30. / allucent_notes_20251104_160200: Luis Vea on 2025-10-14 10:10: doors to arrive on October 27th / Jason Johnston on 2025-10-27 09:10: Door arrives on site 10/30. / Jason Johnston on 2025-11-03 14:11: Completing Wednesday / allucent_notes_20251111_182405: Luis Vea on 2025-10-14 10:10: doors to arrive on October 27th / Jason Johnston on 2025-10-27 09:10: Door arrives on site 10/30. / Jason Johnston on 2025-11-03 14:11: Completing Wednesday / Luis Vea on 2025-11-10 11:11: needing door frame to be installed / allucent_notes_20251118_192630: Luis Vea on 2025-10-14 10:10: doors to arrive on October 27th / Jason Johnston on 2025-10-27 09:10: Door arrives on site 10/30. / Jason Johnston on 2025-11-03 14:11: Completing Wednesday / Luis Vea on 2025-11-10 11:11: needing door frame to be installed / Jason Johnston on 2025-11-11 15:11: Its Wednesday. / allucent_notes: 2025-10-14 10:10 - User: Luis Vea - Date Added: 2025-10-14 10:10 - Note: doors to arrive on October 27th / 2025-10-27 09:10 - User: Jason Johnston - Date Added: 2025-10-27 09:10 - Note: Door arrives on site 10/30. / 2025-11-03 14:11 - User: Jason Johns
- QTS-20851: allucent_notes_20251118_192630: Jake Shimmin on 2025-11-17 13:11: finish rough in and inspection / allucent_notes: 2025-11-17 13:11 - User: Jake Shimmin - Date Added: 2025-11-17 13:11 - Note: finish rough in and inspection
- QTS-21611: allucent_notes_20251209_203830: Jason Johnston on 2025-12-09 20:34: Need update from team / allucent_notes: 2025-12-09 20:34 - User: Jason Johnston - Date Added: 2025-12-09 20:34 - Note: Need update from team
- QTS-21421: allucent_notes_20251202_153722: David Wiltberger on 2025-12-02 06:38: wall built late / allucent_notes_20251209_203830: David Wiltberger on 2025-12-02 06:38: wall built late / allucent_notes: 2025-12-02 06:38 - User: David Wiltberger - Date Added: 2025-12-02 06:38 - Note: wall built late
- QTS-20631: allucent_notes_20251209_203830: Sean Waisner on 2025-12-09T22:29:44.410Z: Needs to say temp door / allucent_notes: 2025-12-09T22:29:44.410Z - User: Sean Waisner - Date Added: 2025-12-09T22:29:44.410Z - Note: Needs to say temp door
- QTS-21731: allucent_notes_20251202_153722: David Wiltberger on 2025-12-02 13:43: last early access built / allucent_notes_20251209_203830: David Wiltberger on 2025-12-02 13:43: last early access built / Jason Johnston on 2025-12-09 20:34: Need update from team / allucent_notes_20251216_165335: David Wiltberger on 2025-12-02 13:43: last early access built / Jason Johnston on 2025-12-09 20:34: Need update from team / allucent_notes: 2025-12-02 13:43 - User: David Wiltberger - Date Added: 2025-12-02 13:43 - Note: last early access built / 2025-12-09 20:34 - User: Jason Johnston - Date Added: 2025-12-09 20:34 - Note: Need update from team
- QTS-2321: allucent_notes_20251021_145627: Luis Vea on 2025-10-20T18:44:52.014Z: needing exterior walls to be framed, waiting for material to arrive today to start tomorrow. / also, diamonds are not poured going to finish tomorrow / allucent_notes_20251027_224008: Luis Vea on 2025-10-20T18:44:52.014Z: needing exterior walls to be framed, waiting for material to arrive today to start tomorrow. / also, diamonds are not poured going to finish tomorrow / allucent_notes_20251028_163138: Luis Vea on 2025-10-20T18:44:52.014Z: needing exterior walls to be framed, waiting for material to arrive today to start tomorrow. / also, diamonds are not poured going to finish tomorrow / allucent_notes_20251104_160200: Luis Vea on 2025-10-20T18:44:52.014Z: needing exterior walls to be framed, waiting for material to arrive today to start tomorrow. / also, diamonds are not poured going to finish tomorrow / allucent_notes: 2025-10-20T18:44:52.014Z - User: Luis Vea - Date Added: 2025-10-20T18:44:52.014Z - Note: needing exterior walls to be framed, waiting for material to arrive today to start tomorrow. also, diamonds are not poured going to finish tomorrow
- QTS-3111: allucent_notes_20251021_145627: Luis Vea on 2025-10-20T18:45:25.239Z: it has started on the door frame the roughin / allucent_notes_20251027_224008: Luis Vea on 2025-10-20T18:45:25.239Z: it has started on the door frame the roughin / allucent_notes_20251028_163138: Luis Vea on 2025-10-20T18:45:25.239Z: it has started on the door frame the roughin / allucent_notes_20251104_160200: Luis Vea on 2025-10-20T18:45:25.239Z: it has started on the door frame the roughin / allucent_notes_20251111_182405: Luis Vea on 2025-10-20T18:45:25.239Z: it has started on the door frame the roughin / Luis Vea on 2025-11-10 11:11: completing 11/10 / Jason Johnston on 2025-11-11 17:11: SWO / allucent_notes_20251118_192630: Luis Vea on 2025-10-20T18:45:25.239Z: it has started on the door frame the roughin / Luis Vea on 2025-11-10 11:11: completing 11/10 / Jason Johnston on 2025-11-11 17:11: SWO / allucent_notes: 2025-10-20T18:45:25.239Z - User: Luis Vea - Date Added: 2025-10-20T18:45:25.239Z - Note: it has started on the door frame the roughin / 2025-11-10 11:11 - User: Luis Vea - Date Added: 2025-11-10 11:11 - Note: completing 11/10 / 2025-11-11 17:11 - User:
- QTS-99610: allucent_notes_20251104_160200: Jason Johnston on 2025-11-03 14:11: Late delivery. / allucent_notes_20251111_182405: Jason Johnston on 2025-11-03 14:11: Late delivery. / Luis Vea on 2025-11-10 11:11: needing to install door frame, rough in is completed / Jason Johnston on 2025-11-11 17:11: SWO / allucent_notes_20251118_192630: Jason Johnston on 2025-11-03 14:11: Late delivery. / Luis Vea on 2025-11-10 11:11: needing to install door frame, rough in is completed / Jason Johnston on 2025-11-11 17:11: SWO / allucent_notes: 2025-11-03 14:11 - User: Jason Johnston - Date Added: 2025-11-03 14:11 - Note: Late delivery. / 2025-11-10 11:11 - User: Luis Vea - Date Added: 2025-11-10 11:11 - Note: needing to install door frame, rough in is completed / 2025-11-11 17:11 - User: Jas
- QTS-21951: allucent_notes_20251230_164549: Scott Masterson on 2025-12-16 16:04: There are still other over head activitives that need completed. Mech, Elct. / allucent_notes_20251216_165335: Scott Masterson on 2025-12-16 16:04: There are still other over head activitives that need completed. Mech, Elct. / allucent_notes: 2025-12-16 16:04 - User: Scott Masterson - Date Added: 2025-12-16 16:04 - Note: There are still other over head activitives that need completed. Mech, Elct.
- QTS-23011: allucent_notes_20251230_164549: Luis Vea on 2025-10-14T17:10:08.219Z: waiting for concrete to be poured underneath stairs / Luis Vea on 2025-10-14 10:10: pushing due to underneath stairs not being poured. / Luis Vea on 2025-10-20T18:43:43.283Z: equipment has not arrived / David Wiltberger on 2025-10-21 13:10: Changed schedule to address early access / Jason Johnston on 2025-10-28 15:10: Fire riser room on hold due to potential design changes. / Jason Johnston on 2025-11-03 14:11: Still waiting for design finalization. / Luis Vea on 2025-11-10 11:11: equipment gets installed once drywall and OH is completed / Jason Johnston on 2025-11-11 17:11: SWO / David Wiltberger on 2025-11-17 16:11: Impacted by stop work / David Wiltberger on 2025-12-02 06:19: Delayed from Stop Work / allucent_notes_20251028_163138: Luis Vea on 2025-10-14T17:10:08.219Z: waiting for concrete to be poured underneath stairs / Luis Vea on 2025-10-14 10:10: pushing due to underneath stairs not being poured. / Luis Vea on 2025-10-20T18:43:43.283Z: equipment has not arrived / David Wiltberger on 2025-10-21 13:10: Changed schedule to address early access / Jason Johnston on 2025-10-28 15:10: Fire riser room on hold due to potential design changes. / allucent_notes_20251104_160200: Luis Vea on 2025-10-14T17:10:08.219Z: waiting for concrete to be poured underneath stairs / Luis Vea on 2025-10-14 10:10: pushing due to underneath stairs not being poured. / Luis Vea on 2025-10-20T18:43:43.283Z: equipment has not arrived / David Wiltberger on 2025-10-21 13:10: Changed schedule to address early access / Jason Johnston on 2025-10-28 15:10: Fire riser room on hold due to potential design changes. / Jason Johnston on 2025-11-03 14:11: Still waiting for design finalization. / allucent_notes_20251111_182405: Luis Vea on 2025-10-14T17:10:08.219Z: waiting for concrete to be poured underneath stairs / Luis Vea on 2025-10-14 10:10: pushing due to underneath stairs not being poured. / Luis Vea on 2025-10-20T18:43:43.283Z: equipment has not arrived / David Wiltberger on 2025-10-21 13:10: Changed schedule to address early access / Jason Johnston on 2025-10-28 15:10: Fire riser room on hold due to potential design changes. / Jason Johnston on 2025-11-03 14:11: Still waiting for design finalization. / Luis Vea on 2025-11-10 11:11: equipment gets installed once drywall and OH is completed / Jason Johnston on 2025-11-11 17:11: SWO / allucent_notes_20251118_192630: Luis Vea on 2025-10-14T17:10:08.219Z: waiting for concrete to be poured underneath stairs / Luis Vea on 2025-10-14 10:10: pushing due to underneath stairs not being poured. / Luis Vea on 2025-10-20T18:43:43.283Z: equipment has not arrived / David Wiltberger on 2025-10-21 13:10: Changed schedule to address early access / Jason Johnston on 2025-10-28 15:10: Fire riser room on hold due to potential design changes. / Jason Johnston on 2025-11-03 14:11: Still waiting for design finalization. / Luis Vea on 2025-11-10 11:11: equipment gets installed once drywall and OH is completed / Jason Johnston on 2025-11-11 17:11: SWO / David Wiltberger on 2025-11-17 16:11: Impacted by stop work / allucent_notes_20251202_153722: Luis Vea on 2025-10-14T17:10:08.219Z: waiting for concrete to be poured underneath stairs / Luis Vea on 2025-10-14 10:10: pushing due to underneath stairs not being poured. / Luis Vea on 2025-10-20T18:43:43.283Z: equipment has not arrived / David Wiltberger on 2025-10-21 13:10: Changed schedule to address early access / Jason Johnston on 2025-10-28 15:10: Fire riser room on hold due to potential design changes. / Jason Johnston on 2025-11-03 14:11: Still waiting for design finalization. / Luis Vea on 2025-11-10 11:11: equipment gets installed once drywall and OH is completed / Jason Johnston on 2025-11-11 17:11: SWO / David Wiltberger on 2025-11-17 16:11: Impacted by stop work / David Wiltberger on 2025-12-02 06:19: Delayed from Stop Work / allucent_notes_20251209_203830: Luis Vea on 2025-10-14T17:10:08.219Z: waiting for concrete to be poured underneath stairs / Luis Vea on 2025-10-14 10:10: pushing due to underneath stairs not being poured. / Luis Vea on 2025-10-20T18:43:43.283Z: equipment has not arrived / David Wiltberger on 2025-10-21 13:10: Changed schedule to address early access / Jason Johnston on 2025-10-28 15:10: Fire riser room on hold due to potential design changes. / Jason Johnston on 2025-11-03 14:11: Still waiting for design finalization. / Luis Vea on 2025-11-10 11:11: equipment gets installed once drywall and OH is completed / Jason Johnston on 2025-11-11 17:11: SWO / David Wiltberger on 2025-11-17 16:11: Impacted by stop work / David Wiltberger on 2025-12-02 06:19: Delayed from Stop Work / Notes: 1/20/26: BAM delayed this item by not completing domestic water piping. / allucent_notes: 2025-10-14T17:10:08.219Z - User: Luis Vea - Date Added: 2025-10-14T17:10:08.219Z - Note: waiting for concrete to be poured underneath stairs / 2025-10-14 10:10 - User: Luis Vea - Date Added: 2025-10-14 10:10 - Note: pushing due to underneath stairs not

| ID | WBS | Activity | Duration | Start | Finish | Predecessors | Complete | Remaining | Planned start | Planned finish | Total float | Free float | Constraint | Calendar | Level | Location | Project Section-1 | Phase-1-1 | Baseline | Layton Responsible Party | Project Section | Allucent CSI Group | Notes | Subcontractor | Phase-1 | Last Period Finish | Last Period Start |
| --- | --- | --- | --- | --- | --- | --- | --- | --- | --- | --- | --- | --- | --- | --- | --- | --- | --- | --- | --- | --- | --- | --- | --- | --- | --- | --- | --- |
|  | 2 | **Remaining Scope** |  |  |  |  |  |  |  |  |  |  |  |  |  |  |  |  |  |  |  |  |  |  |  |  |  |
|  | 11 | **L1 / FOH // Office Elevator #E2** |  | 2025-12-03 | 2026-03-24 |  |  |  |  |  |  |  |  |  |  |  |  |  |  |  |  |  |  |  |  |  |  |
| QTS-27351 |  | Freight Elevator E2 // Provide Temp Power Box at Level 1 Elevator Entry | 2d | 2025-12-03 A | 2025-12-04 A | QTS-25991 | 100% |  |  |  |  |  |  |  | Level 1 | FOH | Construction | Phase 1 | IGMP | Sean Waisner | Construction | 01ADMIN |  |  |  |  |  |
| QTS-26721 |  | Freight Elevator E2 // Safety Barricade Install & Netting | 4d | 2025-12-22 A | 2025-12-31 A | QTS-25991 | 100% |  | 2025-12-22 | 2025-12-30 |  |  |  |  | Level 1 | FOH | Construction | Phase 1 | IGMP | Sean Waisner | Construction | 01ADMIN |  |  |  |  |  |
| QTS-29341 |  | Freight Elevator E2 // Install Rails | 10d | 2026-01-20 A | 2026-01-23 | QTS-1004430, QTS-27351, QTS-25991, QTS-17311, QTS-26721 | 20% | 8d | 2026-01-26 | 2026-02-05 | -2d | 0d |  | QTS-PHX3 DC1 - 6 day w/ Holidays | Level 1 | FOH |  |  | IGMP | Sean Waisner | Construction | 01ADMIN | 1/13/26: Sub Mobilization to Site 1/20. | Otis Elevator Company | Phase 1 |  |  |
| QTS-29711 |  | Freight Elevator E2 // Install Machine & Controller | 8d | 2026-01-24 | 2026-02-02 | QTS-29341 |  |  |  |  | -2d | 0d |  | QTS-PHX3 DC1 - 6 day w/ Holidays | Level 1 | FOH |  |  | IGMP | Sean Waisner | Construction | 01ADMIN |  | Otis Elevator Company | Phase 1 |  |  |
| QTS-30141 |  | Freight Elevator E2 // Install Elevator Floor & Walls | 8d | 2026-02-03 | 2026-02-11 | QTS-29711 |  |  |  |  | -2d | 0d |  | QTS-PHX3 DC1 - 6 day w/ Holidays | Level 1 | FOH |  |  | IGMP | Sean Waisner | Construction |  |  | Otis Elevator Company | Phase 1 |  |  |
| QTS-30491 |  | Freight Elevator E2 // Hoistway Equipment, Conduit & Wire | 10d | 2026-02-12 | 2026-02-23 | QTS-30141 |  |  |  |  | -2d | 0d |  | QTS-PHX3 DC1 - 6 day w/ Holidays | Level 1 | FOH |  |  | IGMP | Sean Waisner | Construction |  |  | Otis Elevator Company | Phase 1 |  |  |
| QTS-30501 |  | Freight Elevator E2 // Install Elevator Thresholds & Grout | 5d | 2026-02-12 | 2026-02-17 | QTS-30141 |  |  |  |  | -2d | 0d |  | QTS-PHX3 DC1 - 6 day w/ Holidays | Level 1 | FOH | Construction | Phase 1 | IGMP | Sean Waisner | Construction |  |  | Otis Elevator Company |  |  |  |
| QTS-30601 |  | Freight Elevator E2 // Install Conduit for Heat & Smoke Sensors Elevator Shaft | 5d | 2026-02-18 | 2026-02-23 | QTS-30501 |  |  |  |  | -2d | 0d |  | QTS-PHX3 DC1 - 6 day w/ Holidays | Level 1 | FOH | Construction | Phase 1 | IGMP | Sean Waisner | Construction |  |  | Otis Elevator Company |  |  |  |
| QTS-30681 |  | Freight Elevator E2 // Install Entrances, Doors, Hardware | 7d | 2026-02-24 | 2026-03-03 | QTS-30601, QTS-30141, QTS-30491 |  |  |  |  | -2d | 0d |  | QTS-PHX3 DC1 - 6 day w/ Holidays | Level 1 | FOH |  |  | IGMP | Sean Waisner | Construction |  |  | Otis Elevator Company | Phase 1 |  |  |
| QTS-30741 |  | Freight Elevator E2 // Pre-Adjustment Checklist | 2d | 2026-03-04 | 2026-03-05 | QTS-30491, QTS-30681 |  |  |  |  | -2d | 0d |  | QTS-PHX3 DC1 - 6 day w/ Holidays | Level 1 | FOH |  |  | IGMP | Sean Waisner | Construction |  |  | Otis Elevator Company | Phase 1 |  |  |
| QTS-30751 |  | Freight Elevator E2 // Adjust Freight Elevator #FE1 | 6d | 2026-03-06 | 2026-03-12 | QTS-30741 |  |  |  |  | -2d | 0d |  | QTS-PHX3 DC1 - 6 day w/ Holidays | Level 1 | FOH |  |  | IGMP | Sean Waisner | Construction |  |  | Otis Elevator Company | Phase 1 |  |  |
| QTS-30771 |  | Freight Elevator E2 // State Elevator Inspection | 5d | 2026-03-13 | 2026-03-18 | QTS-30751 |  |  |  |  | 16d | 0d |  | QTS-PHX3 DC1 - 6 day w/ Holidays | Level 1 | FOH |  |  | IGMP | Sean Waisner | Construction |  |  | Otis Elevator Company | Phase 1 |  |  |
| QTS-30811 |  | Freight Elevator E2 // City Inspection | 5d | 2026-03-19 | 2026-03-24 | QTS-30771, QTS-30751 |  |  |  |  | 16d | 8d |  | QTS-PHX3 DC1 - 6 day w/ Holidays | Level 1 | FOH |  |  | IGMP | Sean Waisner | Construction |  |  | Otis Elevator Company | Phase 1 |  |  |
|  | 1 | **L1 / FOH // Restrooms #0157** |  | 2025-09-04 | 2026-02-19 |  |  |  |  |  |  |  |  |  |  |  |  |  |  |  |  |  |  |  |  |  |  |
| QTS-44281 |  | Restrooms #0157 // Concrete Seal | 3d | 2025-09-04 A | 2025-09-08 A | QTS-44271, QTS-44271 FF | 100% |  |  |  |  |  |  |  | Level 1 | FOH | Construction | Phase 1 | IGMP | Doug Hayes | Construction |  |  |  |  |  |  |
| QTS-5681 |  | Restrooms #0157 // Rough Overhead Fire Sprinkler | 1d | 2025-10-08 A | 2025-10-08 A | QTS-44281, QTS-22291 | 100% |  |  |  |  |  |  |  | Level 1 | FOH |  |  | IGMP | Dave Wiltberger | Construction | 01ADMIN |  | Olympic West Fire Protection | Phase 1 | 2023-01-17 | 2023-01-13 |
| QTS-3661 |  | Restrooms #0157 // Rough Overhead Plumbing | 5d | 2025-11-03 A | 2025-11-12 A | QTS-5681 | 100% |  | 2025-10-29 | 2025-11-04 |  |  |  |  | Level 1 | FOH |  |  | IGMP | Dave Wiltberger | Construction | 01ADMIN |  | Bel-Aire Mechanical, LLC | Phase 1 | 2023-01-12 | 2023-01-10 |
| QTS-1261 |  | Restrooms #0157 // Layout | 1d | 2025-11-13 A | 2025-11-13 A | QTS-26011, QTS-3661 | 100% |  | 2025-11-10 | 2025-11-10 |  |  |  |  | Level 1 | FOH |  |  | IGMP | Doug Hayes | Construction | 01ADMIN |  |  | Phase 1 | 2023-01-05 | 2023-01-05 |
| QTS-2281 |  | Restrooms #0157 // Frame Walls | 2d | 2025-11-13 A | 2025-11-14 A | QTS-1261 SS | 100% |  | 2025-11-10 | 2025-11-11 |  |  |  |  | Level 1 | FOH |  |  | IGMP | Doug Hayes | Construction | 01ADMIN |  |  | Phase 1 | 2023-01-09 | 2023-01-06 |
| QTS-2581 |  | Restrooms #0157 // Rough Overhead Mechanical | 5d | 2025-11-17 A | 2026-01-14 | QTS-2281 | 100% | 0d | 2025-11-12 | 2025-11-17 | 54d | 0d |  | QTS-PHX3 DC1 - 6 day w/ Holidays | Level 1 | FOH |  |  | IGMP | Dave Wiltberger | Construction | 01ADMIN | 1/13/26: Not started in area. | Bel-Aire Mechanical, LLC | Phase 1 | 2023-01-26 | 2023-01-23 |
| QTS-2591 |  | Restrooms #0157 // Rough In-Wall Plumbing | 5d | 2025-11-17 A | 2025-11-21 A | QTS-2281 | 100% |  | 2025-11-12 | 2025-11-18 |  |  |  |  | Level 1 | FOH |  |  | IGMP | Dave Wiltberger | Construction | 01ADMIN |  | Bel-Aire Mechanical, LLC | Phase 1 | 2023-01-13 | 2023-01-11 |
| QTS-10951 |  | Restrooms #0157 // Rough In-Wall Electrical, Security, & Access Controls | 2d | 2026-01-14 | 2026-01-15 | QTS-9871, QTS-2281, QTS-2581 |  |  |  |  | 55d | 0d |  | QTS-PHX3 DC1 - 6 day w/ Holidays | Level 1 | FOH |  |  | IGMP | Scott Masterson | Construction | 01ADMIN |  | Securitas Technology Corporation | Phase 1 | 2023-01-12 | 2023-01-10 |
| QTS-3671 |  | Restrooms #0157 // Rough Overhead Electrical/ Light Fixtures Install | 2d | 2026-01-14 | 2026-01-15 | QTS-2581, QTS-2281 |  |  |  |  | 54d | 0d |  | QTS-PHX3 DC1 - 6 day w/ Holidays | Level 1 | FOH |  |  | IGMP | Scott Masterson | Construction | 01ADMIN |  | Specified Electrical Contractors, Inc | Phase 1 | 2023-03-08 | 2023-03-07 |
| QTS-44901 |  | Restrooms #0157 // Frame Hard Lids | 1d | 2026-01-16 | 2026-01-16 | QTS-10951, QTS-3671 |  |  |  |  | 55d | 9d |  | QTS-PHX3 DC1 - 6 day w/ Holidays | Level 1 | FOH | Construction | Phase 1 | IGMP | Sean Waisner | Construction | 01ADMIN |  | Performance Contracting, Inc. |  | 2023-01-09 | 2023-01-06 |
| QTS-3681 |  | Restrooms #0157 // Install Backing for Restroom Specialties/Inwall Brakets | 1d | 2026-01-26 A | 2026-01-30 | QTS-1002940 FF, QTS-2591, QTS-2581 |  | 1d | 2026-01-26 | 2026-01-26 | 44d | 0d |  | QTS-PHX3 DC1 - 6 day w/ Holidays | Level 1 | FOH |  |  | IGMP | Sean Waisner | Construction | 01ADMIN |  | Performance Contracting, Inc. | Phase 1 | 2023-02-27 | 2023-02-27 |
| QTS-1002940 |  | Restrooms #0157 // Complete Top Out | 2d | 2026-01-29 | 2026-01-30 | QTS-3671, QTS-2281 |  |  |  |  | 44d | 0d | start on or after 2026-01-29 | QTS-PHX3 DC1 - 6 day w/ Holidays | Level 1 | FOH | Construction | Phase 1 | IGMP | Sean Waisner | Construction | 01ADMIN |  | Performance Contracting, Inc. |  | 2023-01-09 | 2023-01-06 |
| QTS-11461 |  | Restrooms #0157 // In Wall Inspection | 1d | 2026-01-29 | 2026-01-29 | QTS-2591, QTS-10951 |  |  |  |  | 45d | 1d | start on or after 2026-01-29 | QTS-PHX3 DC1 - 6 day w/ Holidays | Level 1 | FOH |  |  | IGMP | Dave Wiltberger | Construction | 01ADMIN | 1/20/26: Electrical is done. Plumbing is not. | Bel-Aire Mechanical, LLC | Phase 1 | 2023-01-17 | 2023-01-17 |
| QTS-6071 |  | Restrooms #0157 // Above Ceiling Inspection | 1d | 2026-01-29 | 2026-01-29 | QTS-44901, QTS-5681, QTS-3671 |  |  |  |  | 46d | 2d | start on or after 2026-01-29 | QTS-PHX3 DC1 - 6 day w/ Holidays | Level 1 | FOH |  |  | IGMP | Dave Wiltberger | Construction | 01ADMIN |  | Bel-Aire Mechanical, LLC | Phase 1 | 2023-03-09 | 2023-03-09 |
| QTS-11731 |  | Restrooms #0157 // Insulate Walls | 1d | 2026-01-31 | 2026-01-31 | QTS-11461, QTS-3681 |  |  |  |  | 44d | 0d |  | QTS-PHX3 DC1 - 6 day w/ Holidays | Level 1 | FOH |  |  | IGMP | Sean Waisner | Construction | 01ADMIN |  | Performance Contracting, Inc. | Phase 1 | 2023-02-24 | 2023-02-24 |
| QTS-11881 |  | Restrooms #0157 // Hang Drywall Walls | 1d | 2026-02-02 | 2026-02-02 | QTS-5681, QTS-11731, QTS-11461 |  |  |  |  | 44d | 0d |  | QTS-PHX3 DC1 - 6 day w/ Holidays | Level 1 | FOH |  |  | IGMP | Sean Waisner | Construction | 01ADMIN |  | Performance Contracting, Inc. | Phase 1 | 2023-03-01 | 2023-02-28 |
| QTS-11891 |  | Restrooms #0157 // Hang Drywall on Hard Lids | 1d | 2026-02-02 | 2026-02-02 | QTS-11881 FF, QTS-6071, QTS-44901 |  |  |  |  | 44d | 0d |  | QTS-PHX3 DC1 - 6 day w/ Holidays | Level 1 | FOH |  |  | IGMP | Sean Waisner | Construction | 01ADMIN |  | Performance Contracting, Inc. | Phase 1 | 2023-03-13 | 2023-03-10 |
| QTS-12081 |  | Restrooms #0157 // Tape & Finish Drywall | 3d | 2026-02-03 | 2026-02-05 | QTS-11881, QTS-11891 |  |  |  |  | 44d | 0d |  | QTS-PHX3 DC1 - 6 day w/ Holidays | Level 1 | FOH |  |  | IGMP | Sean Waisner | Construction | 01ADMIN |  | Performance Contracting, Inc. | Phase 1 | 2023-03-20 | 2023-03-14 |
| QTS-12631 |  | Restrooms #0157 // Prime & Paint | 1d | 2026-02-06 | 2026-02-06 | QTS-12081 |  |  |  |  | 44d | 0d |  | QTS-PHX3 DC1 - 6 day w/ Holidays | Level 1 | FOH |  |  | IGMP | Sean Waisner | Construction |  |  | Pennington Painting Company, LLC | Phase 1 | 2023-04-12 | 2023-04-11 |
| QTS-12781 |  | Restrooms #0157 // Install Wall & Floor Tile | 4d | 2026-02-07 | 2026-02-11 | QTS-12081, QTS-12631 |  |  |  |  | 44d | 0d |  | QTS-PHX3 DC1 - 6 day w/ Holidays | Level 1 | FOH |  |  | IGMP | Sean Waisner | Construction |  |  |  | Phase 1 | 2023-04-10 | 2023-04-06 |
| QTS-14401 |  | Restrooms #0157 // Plumbing Fixtures Install | 3d | 2026-02-12 | 2026-02-14 | QTS-12781, QTS-12631 |  |  |  |  | 44d | 0d |  | QTS-PHX3 DC1 - 6 day w/ Holidays | Level 1 | FOH |  |  | IGMP | Dave Wiltberger | Construction |  |  | Bel-Aire Mechanical, LLC | Phase 1 | 2023-04-14 | 2023-04-13 |
| QTS-14411 |  | Restrooms #0157 // Electrical Trim | 1d | 2026-02-12 | 2026-02-12 | QTS-12781, QTS-12631 |  |  |  |  | 44d | 0d |  | QTS-PHX3 DC1 - 6 day w/ Holidays | Level 1 | FOH |  |  | IGMP | Scott Masterson | Construction |  |  | Specified Electrical Contractors, Inc | Phase 1 | 2023-04-14 | 2023-04-13 |
| QTS-16451 |  | Restrooms #0157 // Set Sink | 1d | 2026-02-12 | 2026-02-12 | QTS-12781 |  |  |  |  | 49d | 0d |  | QTS-PHX3 DC1 - 6 day w/ Holidays | Level 1 | FOH |  |  | IGMP | Sean Waisner | Construction |  |  | Bel-Aire Mechanical, LLC | Phase 1 |  |  |
| QTS-14581 |  | Restrooms #0157 // Final Coat of Paint | 1d | 2026-02-13 | 2026-02-13 | QTS-14411 |  |  |  |  | 44d | 0d |  | QTS-PHX3 DC1 - 6 day w/ Holidays | Level 1 | FOH |  |  | IGMP | Sean Waisner | Construction |  |  | Pennington Painting Company, LLC | Phase 1 |  |  |
| QTS-16751 |  | Restrooms #0157 // Install Plumbing Trim at Sink | 1d | 2026-02-13 | 2026-02-13 | QTS-16451 |  |  |  |  | 49d | 41d |  | QTS-PHX3 DC1 - 6 day w/ Holidays | Level 1 | FOH |  |  | IGMP | Dave Wiltberger | Construction |  |  | Bel-Aire Mechanical, LLC | Phase 1 |  |  |
| QTS-14881 |  | Restrooms #0157 // Install Mechanical Trim | 3d | 2026-02-14 | 2026-02-17 | QTS-14581, QTS-12631 |  |  |  |  | 44d | 0d |  | QTS-PHX3 DC1 - 6 day w/ Holidays | Level 1 | FOH |  |  | IGMP | Dave Wiltberger | Construction |  |  | Bel-Aire Mechanical, LLC | Phase 1 | 2023-04-14 | 2023-04-13 |
| QTS-15361 |  | Restrooms #0157 // Install Restroom Specialties/ ADA Trim | 2d | 2026-02-16 | 2026-02-17 | QTS-14581, QTS-14401 |  |  |  |  | 44d | 0d |  | QTS-PHX3 DC1 - 6 day w/ Holidays | Level 1 | FOH |  |  | IGMP | Sean Waisner | Construction |  |  |  | Phase 1 | 2023-04-21 | 2023-04-20 |
| QTS-15691 |  | Restrooms #0157 // Set Doors & Hardware | 2d | 2026-02-18 | 2026-02-19 | QTS-14881, QTS-15361, QTS-99650, QTS-99640 |  |  |  |  | 44d | 36d |  | QTS-PHX3 DC1 - 6 day w/ Holidays | Level 1 | FOH |  |  | IGMP | Sean Waisner | Construction |  |  |  | Phase 1 | 2023-04-21 | 2023-04-20 |

Notes:
- QTS-26721: allucent_notes_20251230_164549: Sean Waisner on 2025-12-09 15:30: Need materials / Sean Waisner on 2025-12-16 15:05: Not started due to Sean / Sean Waisner on 2025-12-30 16:07: short week had guys busy / allucent_notes_20251209_203830: Sean Waisner on 2025-12-09 15:30: Need materials / allucent_notes_20251216_165335: Sean Waisner on 2025-12-09 15:30: Need materials / Sean Waisner on 2025-12-16 15:05: Not started due to Sean / allucent_notes: 2025-12-09 15:30 - User: Sean Waisner - Date Added: 2025-12-09 15:30 - Note: Need materials / 2025-12-16 15:05 - User: Sean Waisner - Date Added: 2025-12-16 15:05 - Note: Not started due to Sean / 2025-12-30 16:07 - User: Sean Waisner - Date Added: 20
- QTS-3661: allucent_notes_20251014_152335: Luis Vea on 2025-10-14 10:10: BZI needs to complete their scope to get walls up. for elevator and stairs / allucent_notes_20251021_145627: Luis Vea on 2025-10-14 10:10: BZI needs to complete their scope to get walls up. for elevator and stairs / Luis Vea on 2025-10-20T18:46:23.065Z: walls need to be framed, manpower got pulled for fan walls and early access rooms / David Wiltberger on 2025-10-21 13:10: Changed schedule to address early access / allucent_notes_20251027_224008: Luis Vea on 2025-10-14 10:10: BZI needs to complete their scope to get walls up. for elevator and stairs / Luis Vea on 2025-10-20T18:46:23.065Z: walls need to be framed, manpower got pulled for fan walls and early access rooms / David Wiltberger on 2025-10-21 13:10: Changed schedule to address early access / allucent_notes_20251028_163138: Luis Vea on 2025-10-14 10:10: BZI needs to complete their scope to get walls up. for elevator and stairs / Luis Vea on 2025-10-20T18:46:23.065Z: walls need to be framed, manpower got pulled for fan walls and early access rooms / David Wiltberger on 2025-10-21 13:10: Changed schedule to address early access / allucent_notes_20251104_160200: Luis Vea on 2025-10-14 10:10: BZI needs to complete their scope to get walls up. for elevator and stairs / Luis Vea on 2025-10-20T18:46:23.065Z: walls need to be framed, manpower got pulled for fan walls and early access rooms / David Wiltberger on 2025-10-21 13:10: Changed schedule to address early access / Jason Johnston on 2025-11-03 14:11: Starting on it today after PCI made opening for them. / allucent_notes_20251111_182405: Luis Vea on 2025-10-14 10:10: BZI needs to complete their scope to get walls up. for elevator and stairs / Luis Vea on 2025-10-20T18:46:23.065Z: walls need to be framed, manpower got pulled for fan walls and early access rooms / David Wiltberger on 2025-10-21 13:10: Changed schedule to address early access / Jason Johnston on 2025-11-03 14:11: Starting on it today after PCI made opening for them. / Luis Vea on 2025-11-10 11:11: Bel air is completing line sets for priority rooms / Jason Johnston on 2025-11-11 15:11: Push until after early access / allucent_notes_20251118_192630: Luis Vea on 2025-10-14 10:10: BZI needs to complete their scope to get walls up. for elevator and stairs / Luis Vea on 2025-10-20T18:46:23.065Z: walls need to be framed, manpower got pulled for fan walls and early access rooms / David Wiltberger on 2025-10-21 13:10: Changed schedule to address early access / Jason Johnston on 2025-11-03 14:11: Starting on it today after PCI made opening for them. / Luis Vea on 2025-11-10 11:11: Bel air is completing line sets for priority rooms / Jason Johnston on 2025-11-11 15:11: Push until after early access / allucent_notes: 2025-10-14 10:10 - User: Luis Vea - Date Added: 2025-10-14 10:10 - Note: BZI needs to complete their scope to get walls up. for elevator and stairs / 2025-10-20T18:46:23.065Z - User: Luis Vea - Date Added: 2025-10-20T18:46:23.065Z - Note: walls need to
- QTS-1261: allucent_notes_20251021_145627: Luis Vea on 2025-10-20T18:46:51.024Z: this got completed on the 10th of oct. / allucent_notes_20251027_224008: Luis Vea on 2025-10-20T18:46:51.024Z: this got completed on the 10th of oct. / allucent_notes_20251028_163138: Luis Vea on 2025-10-20T18:46:51.024Z: this got completed on the 10th of oct. / allucent_notes_20251104_160200: Luis Vea on 2025-10-20T18:46:51.024Z: this got completed on the 10th of oct. / allucent_notes_20251111_182405: Luis Vea on 2025-10-20T18:46:51.024Z: this got completed on the 10th of oct. / Luis Vea on 2025-11-10 11:11: completed / allucent_notes_20251118_192630: Luis Vea on 2025-10-20T18:46:51.024Z: this got completed on the 10th of oct. / Luis Vea on 2025-11-10 11:11: completed / allucent_notes: 2025-10-20T18:46:51.024Z - User: Luis Vea - Date Added: 2025-10-20T18:46:51.024Z - Note: this got completed on the 10th of oct. / 2025-11-10 11:11 - User: Luis Vea - Date Added: 2025-11-10 11:11 - Note: completed
- QTS-2281: allucent_notes_20251021_145627: Luis Vea on 2025-10-20T18:47:35.846Z: bottom and top track got installed on monday the 13th / allucent_notes_20251027_224008: Luis Vea on 2025-10-20T18:47:35.846Z: bottom and top track got installed on monday the 13th / allucent_notes_20251028_163138: Luis Vea on 2025-10-20T18:47:35.846Z: bottom and top track got installed on monday the 13th / allucent_notes_20251104_160200: Luis Vea on 2025-10-20T18:47:35.846Z: bottom and top track got installed on monday the 13th / allucent_notes_20251111_182405: Luis Vea on 2025-10-20T18:47:35.846Z: bottom and top track got installed on monday the 13th / allucent_notes_20251118_192630: Luis Vea on 2025-10-20T18:47:35.846Z: bottom and top track got installed on monday the 13th / allucent_notes: 2025-10-20T18:47:35.846Z - User: Luis Vea - Date Added: 2025-10-20T18:47:35.846Z - Note: bottom and top track got installed on monday the 13th
- QTS-2581: allucent_notes_20251230_164549: Luis Vea on 2025-11-10 11:11: focusing on priority rooms and early access / David Wiltberger on 2025-12-02 06:20: Chage of scope for TFO impacting the finish / allucent_notes_20251111_182405: Luis Vea on 2025-11-10 11:11: focusing on priority rooms and early access / allucent_notes_20251118_192630: Luis Vea on 2025-11-10 11:11: focusing on priority rooms and early access / allucent_notes_20251202_153722: Luis Vea on 2025-11-10 11:11: focusing on priority rooms and early access / David Wiltberger on 2025-12-02 06:20: Chage of scope for TFO impacting the finish / allucent_notes_20251209_203830: Luis Vea on 2025-11-10 11:11: focusing on priority rooms and early access / David Wiltberger on 2025-12-02 06:20: Chage of scope for TFO impacting the finish / allucent_notes_20251216_165335: Luis Vea on 2025-11-10 11:11: focusing on priority rooms and early access / David Wiltberger on 2025-12-02 06:20: Chage of scope for TFO impacting the finish / allucent_notes: 2025-11-10 11:11 - User: Luis Vea - Date Added: 2025-11-10 11:11 - Note: focusing on priority rooms and early access / 2025-12-02 06:20 - User: David Wiltberger - Date Added: 2025-12-02 06:20 - Note: Chage of scope for TFO impacting the finish
- QTS-2591: allucent_notes_20251111_182405: Luis Vea on 2025-11-10 11:11: fouscing on priority room and early access / allucent_notes_20251118_192630: Luis Vea on 2025-11-10 11:11: fouscing on priority room and early access / allucent_notes_20251202_153722: Luis Vea on 2025-11-10 11:11: fouscing on priority room and early access / allucent_notes: 2025-11-10 11:11 - User: Luis Vea - Date Added: 2025-11-10 11:11 - Note: fouscing on priority room and early access
- QTS-10951: allucent_notes_20251111_182405: Luis Vea on 2025-11-10 11:11: fousing on priority rooms for completing and early access / allucent_notes_20251118_192630: Luis Vea on 2025-11-10 11:11: fousing on priority rooms for completing and early access / Jason Johnston on 2025-11-19T02:22:46.029Z: undo / Jason Johnston on 2025-11-19T02:22:47.717Z: null / allucent_notes_20251209_203830: Luis Vea on 2025-11-10 11:11: fousing on priority rooms for completing and early access / Jason Johnston on 2025-11-19T02:22:46.029Z: undo / Jason Johnston on 2025-11-19T02:22:47.717Z: null / allucent_notes: 2025-11-10 11:11 - User: Luis Vea - Date Added: 2025-11-10 11:11 - Note: fousing on priority rooms for completing and early access / 2025-11-19T02:22:46.029Z - User: Jason Johnston - Date Added: 2025-11-19T02:22:46.029Z - Note: undo / 2025-11-19T02:22:4
- QTS-3681: allucent_notes_20251202_153722: Jake Shimmin on 2025-12-01T18:00:57.109Z: will start when green mile is finished / Jake Shimmin on 2025-12-01T18:11:58.875Z: null / Sean Waisner on 2025-12-02 15:24: Re-sequencing for priority / allucent_notes_20251209_203830: Jake Shimmin on 2025-12-01T18:00:57.109Z: will start when green mile is finished / Jake Shimmin on 2025-12-01T18:11:58.875Z: null / Sean Waisner on 2025-12-02 15:24: Re-sequencing for priority / allucent_notes: 2025-12-01T18:00:57.109Z - User: Jake Shimmin - Date Added: 2025-12-01T18:00:57.109Z - Note: will start when green mile is finished / 2025-12-01T18:11:58.875Z - User: Jake Shimmin - Date Added: 2025-12-01T18:11:58.875Z - Note: null / 2025-12-02 15:24

| ID | WBS | Activity | Duration | Start | Finish | Predecessors | Complete | Remaining | Planned start | Planned finish | Total float | Free float | Calendar | Level | Location | Project Section-1 | Baseline | Layton Responsible Party | Phase-1 | Project Section | Allucent CSI Group | Subcontractor | Notes | Phase-1-1 |
| --- | --- | --- | --- | --- | --- | --- | --- | --- | --- | --- | --- | --- | --- | --- | --- | --- | --- | --- | --- | --- | --- | --- | --- | --- |
|  | 3 | **Level 2 Front of House Segment A (Gridlines A-P)** |  | 2025-08-04 | 2026-03-26 |  |  |  |  |  |  |  |  |  |  |  |  |  |  |  |  |  |  |  |
|  | 2 | **L2 / FOH // Tenant Improvement** |  | 2025-08-07 | 2026-03-04 |  |  |  |  |  |  |  |  |  |  |  |  |  |  |  |  |  |  |  |
| QTS-46991 |  | TI Area A // Prime & Paint Exposed Structure | 5d | 2025-08-07 A | 2025-08-11 A | QTS-46941, QTS-19841, QTS-47001 FF | 100% |  | 2025-08-07 | 2025-08-13 |  |  |  | Level 2 | FOH | Construction | IGMP | Doug Hayes | Phase 1 | Construction | 01ADMIN |  |  |  |
| QTS-26031 |  | TI Area A // Rough Overhead Fire Sprinkler | 10d | 2025-08-12 A | 2025-08-26 A | QTS-19841, QTS-46941, QTS-46991 | 100% |  | 2025-08-12 | 2025-08-25 |  |  |  | Level 2 | FOH |  | IGMP | Dave Wiltberger | Phase 1 | Construction | 01ADMIN | Olympic West Fire Protection |  |  |
| QTS-25441 |  | TI Area A // Layout Walls | 3d | 2025-08-22 A | 2025-08-22 A | QTS-26031 FF | 100% |  | 2025-08-22 | 2025-08-26 |  |  |  | Level 2 | FOH |  | IGMP | Doug Hayes | Phase 1 | Construction | 01ADMIN |  |  |  |
| QTS-25741 |  | TI Area A // Frame Priority Walls/ Top Out Inside of Walls | 6d | 2025-08-25 A | 2025-09-09 A | QTS-25441, QTS-M3000 SS | 100% |  | 2025-08-27 | 2025-09-04 |  |  |  | Level 2 | FOH |  | IGMP | Doug Hayes | Phase 1 | Construction | 01ADMIN | Performance Contracting, Inc. |  |  |
| QTS-26021 |  | TI Area A // Rough In-Wall Electrical, Security, & Access Controls | 8d | 2025-09-24 A | 2025-10-31 A | QTS-9871, QTS-25741 | 100% |  | 2025-09-24 | 2025-10-03 |  |  |  | Level 2 | FOH |  | IGMP | Scott Masterson | Phase 1 | Construction | 01ADMIN | Securitas Technology Corporation |  |  |
| QTS-26941 |  | TI Area A // Insulate Walls | 5d | 2025-10-28 A | 2025-10-31 A | QTS-26851 | 100% |  | 2025-10-28 | 2025-11-03 |  |  |  | Level 2 | FOH |  | IGMP | Doug Hayes | Phase 1 | Construction | 01ADMIN |  |  |  |
| QTS-26041 |  | TI Area A // Rough Overhead Electrical | 10d | 2025-10-31 A | 2025-11-13 A | QTS-25741 | 100% |  |  |  |  |  |  | Level 2 | FOH |  | IGMP | Scott Masterson | Phase 1 | Construction | 01ADMIN | Rosendin Electric, Inc |  |  |
| QTS-26851 |  | TI Area A // MEP In Wall Inspection | 1d | 2025-11-03 A | 2025-11-03 A | QTS-26021, QTS-25741 | 100% |  | 2025-10-31 | 2025-10-31 |  |  |  | Level 2 | FOH |  | IGMP | Dave Wiltberger | Phase 1 | Construction | 01ADMIN | Bel-Aire Mechanical, LLC |  |  |
| QTS-27721 |  | TI Area A // Hang Drywall (Early Access) | 10d | 2025-11-03 A | 2025-11-14 A | QTS-25741, QTS-26941 | 100% |  | 2025-11-06 | 2025-11-19 |  |  |  | Level 2 | FOH |  | IGMP | Doug Hayes | Phase 1 | Construction | 01ADMIN |  |  |  |
| QTS-28301 |  | TI Area A // Tape & Finish Drywall | 10d | 2025-11-10 A | 2026-01-23 | QTS-1002950 FF+2d, QTS-27721 SS+5d, QTS-27721 FF+5d | 90% | 1d | 2025-11-10 | 2025-11-20 | 23d | 0d | QTS-PHX3 DC1 - 6 day w/ Holidays | Level 2 | FOH |  | IGMP | Sean Waisner | Phase 1 | Construction | 01ADMIN | Performance Contracting, Inc. | 1/13/26: Awaiting a door ISEC impact. |  |
| QTS-27121 |  | TI Area A // Rough Overhead Plumbing & Refrigerant Piping | 8d | 2025-11-14 A | 2025-11-25 A | QTS-25441, QTS-25741, QTS-26041 | 100% |  |  |  |  |  |  | Level 2 | FOH |  | IGMP | Dave Wiltberger | Phase 1 | Construction | 01ADMIN | Bel-Aire Mechanical, LLC |  |  |
| QTS-28541 |  | TI Area A // Rough Overhead Ductwork Gridline A-H | 8d | 2025-12-08 A | 2025-12-17 A | QTS-27121, QTS-28191, QTS-26941 | 100% |  |  |  |  |  |  | Level 2 | FOH |  | IGMP | Dave Wiltberger | Phase 1 | Construction | 01ADMIN | Bel-Aire Mechanical, LLC |  |  |
| QTS-44851 |  | TI Area A // Pressure Test Plumbing & Refrigerant Lines | 2d | 2025-12-12 A | 2025-12-31 A | QTS-27121 | 100% |  | 2025-12-12 | 2025-12-15 |  |  |  | Level 2 | FOH | Construction | IGMP | Dave Wiltberger |  | Construction | 01ADMIN | Bel-Aire Mechanical, LLC |  | Phase 1 |
| QTS-29221 |  | TI Area A // Insulate HVAC Ductwork | 10d | 2025-12-18 A | 2026-01-06 A | QTS-27121, QTS-28191, QTS-28191 FF, QTS-26941, QTS-26941 FF, QTS-28541 | 100% |  | 2025-12-18 | 2026-01-07 |  |  |  | Level 2 | FOH |  | IGMP | Dave Wiltberger | Phase 1 | Construction |  | Bel-Aire Mechanical, LLC |  |  |
| QTS-28191 |  | TI Area A // Insulate Piping & Referigerant Lines | 3d | 2025-12-29 A | 2026-01-05 A | QTS-27121, QTS-25741, QTS-44851 | 100% |  | 2025-12-29 | 2025-12-31 |  |  |  | Level 2 | FOH |  | IGMP | Dave Wiltberger | Phase 1 | Construction | 01ADMIN | Bel-Aire Mechanical, LLC |  |  |
| QTS-1002950 |  | TI Area A // Hang Drywall (Remaining) | 2d | 2026-01-14 A | 2026-01-21 | QTS-27721 |  | 6d | 2026-01-14 | 2026-01-15 | 23d | 0d | QTS-PHX3 DC1 - 6 day w/ Holidays | Level 2 | FOH |  | IGMP | Sean Waisner | Phase 1 | Construction | 01ADMIN | Performance Contracting, Inc. |  |  |
| QTS-29111 |  | TI Area A // Prime & Paints Walls | 7d | 2026-01-20 | 2026-01-27 | QTS-28301 FF+3d |  |  |  |  | 23d | 0d | QTS-PHX3 DC1 - 6 day w/ Holidays | Level 2 | FOH |  | IGMP | Sean Waisner | Phase 1 | Construction | 01ADMIN | Pennington Painting Company, LLC |  |  |
| QTS-1002320 |  | TI Area A // Layout Ceiling Grid | 2d | 2026-01-26 | 2026-01-27 | QTS-29111 FF |  |  |  |  | 23d | 0d | QTS-PHX3 DC1 - 6 day w/ Holidays | Level 2 | FOH |  | IGMP | Sean Waisner | Phase 1 | Construction | 01ADMIN | Performance Contracting, Inc. |  |  |
| QTS-29211 |  | TI Area A // Install Low Voltage Trim | 5d | 2026-01-28 | 2026-02-02 | QTS-29111 |  |  |  |  | 54d | 3d | QTS-PHX3 DC1 - 6 day w/ Holidays | Level 2 | FOH |  | IGMP | Scott Masterson | Phase 1 | Construction | 01ADMIN | Rosendin Electric, Inc |  |  |
| QTS-29651 |  | TI Area A // Install Armstrong Ceiling Grid | 5d | 2026-01-28 | 2026-02-02 | QTS-1002320, QTS-29111 FF+3d, QTS-29221, QTS-26031 |  |  |  |  | 23d | 0d | QTS-PHX3 DC1 - 6 day w/ Holidays | Level 2 | FOH |  | IGMP | Sean Waisner | Phase 1 | Construction |  | Performance Contracting, Inc. |  |  |
| QTS-29851 |  | TI Area A // Install Light Fixtures | 3d | 2026-02-03 | 2026-02-05 | QTS-29111, QTS-29651 |  |  |  |  | 23d | 0d | QTS-PHX3 DC1 - 6 day w/ Holidays | Level 2 | FOH |  | IGMP | Scott Masterson | Phase 1 | Construction |  | Rosendin Electric, Inc |  |  |
| QTS-29861 |  | TI Area A // Install Mechanical Trim | 4d | 2026-02-03 | 2026-02-06 | QTS-29651 |  |  |  |  | 33d | 0d | QTS-PHX3 DC1 - 6 day w/ Holidays | Level 2 | FOH |  | IGMP | Dave Wiltberger | Phase 1 | Construction |  | Bel-Aire Mechanical, LLC |  |  |
| QTS-29871 |  | TI Area A // Install Fire Sprinkler Trim | 3d | 2026-02-03 | 2026-02-05 | QTS-29651 |  |  |  |  | 34d | 1d | QTS-PHX3 DC1 - 6 day w/ Holidays | Level 2 | FOH |  | IGMP | Dave Wiltberger | Phase 1 | Construction |  | Olympic West Fire Protection |  |  |
| QTS-30191 |  | TI Area A // Install Electrical Wall Trim | 5d | 2026-02-06 | 2026-02-11 | QTS-29111, QTS-29851, QTS-29211 |  |  |  |  | 51d | 43d | QTS-PHX3 DC1 - 6 day w/ Holidays | Level 2 | FOH |  | IGMP | Scott Masterson | Phase 1 | Construction |  | Rosendin Electric, Inc |  |  |
| QTS-30081 |  | TI Area A // MEP Overhead Inspection | 1d | 2026-02-07 | 2026-02-07 | QTS-29861, QTS-29871 |  |  |  |  | 33d | 0d | QTS-PHX3 DC1 - 6 day w/ Holidays | Level 2 | FOH |  | IGMP | Dave Wiltberger | Phase 1 | Construction |  | Bel-Aire Mechanical, LLC |  |  |
| QTS-30121 |  | TI Area A // Drop Ceiling Tiles | 5d | 2026-02-09 | 2026-02-13 | QTS-30081 |  |  |  |  | 33d | 0d | QTS-PHX3 DC1 - 6 day w/ Holidays | Level 2 | FOH |  | IGMP | Sean Waisner | Phase 1 | Construction |  | Performance Contracting, Inc. |  |  |
| QTS-30221 |  | TI Area A // Install Casework | 2d | 2026-02-14 | 2026-02-16 | QTS-30121, QTS-99660 |  |  |  |  | 45d | 8d | QTS-PHX3 DC1 - 6 day w/ Holidays | Level 2 | FOH |  | IGMP | Sean Waisner | Phase 1 | Construction |  |  |  |  |
| QTS-30371 |  | TI Area A // Install Flooring & Base | 10d | 2026-02-14 | 2026-02-25 | QTS-29111, QTS-30121 |  |  |  |  | 33d | 0d | QTS-PHX3 DC1 - 6 day w/ Holidays | Level 2 | FOH |  | IGMP | Sean Waisner | Phase 1 | Construction |  |  |  |  |
| QTS-30611 |  | TI Area A // Install FEC's | 2d | 2026-02-26 | 2026-02-27 | QTS-1004520, QTS-30371, QTS-30221 |  |  |  |  | 37d | 29d | QTS-PHX3 DC1 - 6 day w/ Holidays | Level 2 | FOH |  | IGMP | Sean Waisner | Phase 1 | Construction |  |  |  |  |
| QTS-30621 |  | TI Area A // Set Doors & Hardware | 6d | 2026-02-26 | 2026-03-04 | QTS-30371, QTS-99650 |  |  |  |  | 33d | 25d | QTS-PHX3 DC1 - 6 day w/ Holidays | Level 2 | FOH |  | IGMP | Sean Waisner | Phase 1 | Construction |  |  |  |  |

Notes:
- QTS-25441: allucent_notes: Zack Goertz on 2025-08-25 13:08: FInished with layout early / allucent_notes: 2025-08-25 13:08 - User: Zack Goertz - Date Added: 2025-08-25 13:08 - Note: FInished with layout early
- QTS-25741: allucent_notes: Jason Johnston on 2025-09-02 13:09: Will be complete with walls by EOD Saturday / allucent_notes: 2025-09-02 13:09 - User: Jason Johnston - Date Added: 2025-09-02 13:09 - Note: Will be complete with walls by EOD Saturday
- QTS-26941: allucent_notes_20251027_224008: Jason Johnston on 2025-10-27 16:10: Jake owes update / allucent_notes_20251028_163138: Jason Johnston on 2025-10-27 16:10: Jake owes update / Jason Johnston on 2025-10-28 15:10: Driving in the field to make Friday. / allucent_notes_20251104_160200: Jason Johnston on 2025-10-27 16:10: Jake owes update / Jason Johnston on 2025-10-28 15:10: Driving in the field to make Friday. / allucent_notes: 2025-10-27 16:10 - User: Jason Johnston - Date Added: 2025-10-27 16:10 - Note: Jake owes update / 2025-10-28 15:10 - User: Jason Johnston - Date Added: 2025-10-28 15:10 - Note: Driving in the field to make Friday.
- QTS-26041: allucent_notes_20251014_152335: David Wiltberger on 2025-09-09 14:09: walls delayed / David Wiltberger on 2025-09-30 12:09: Waiting for plumbing to complete / David Wiltberger on 2025-10-07 16:10: need wall inspection first / David Wiltberger on 2025-10-14 12:10: No walls / allucent_notes_20251021_145627: David Wiltberger on 2025-09-09 14:09: walls delayed / David Wiltberger on 2025-09-30 12:09: Waiting for plumbing to complete / David Wiltberger on 2025-10-07 16:10: need wall inspection first / David Wiltberger on 2025-10-14 12:10: No walls / allucent_notes_20251027_224008: David Wiltberger on 2025-09-09 14:09: walls delayed / David Wiltberger on 2025-09-30 12:09: Waiting for plumbing to complete / David Wiltberger on 2025-10-07 16:10: need wall inspection first / David Wiltberger on 2025-10-14 12:10: No walls / allucent_notes_20251028_163138: David Wiltberger on 2025-09-09 14:09: walls delayed / David Wiltberger on 2025-09-30 12:09: Waiting for plumbing to complete / David Wiltberger on 2025-10-07 16:10: need wall inspection first / David Wiltberger on 2025-10-14 12:10: No walls / allucent_notes_20251104_160200: David Wiltberger on 2025-09-09 14:09: walls delayed / David Wiltberger on 2025-09-30 12:09: Waiting for plumbing to complete / David Wiltberger on 2025-10-07 16:10: need wall inspection first / David Wiltberger on 2025-10-14 12:10: No walls / allucent_notes_20251111_182405: David Wiltberger on 2025-09-09 14:09: walls delayed / David Wiltberger on 2025-09-30 12:09: Waiting for plumbing to complete / David Wiltberger on 2025-10-07 16:10: need wall inspection first / David Wiltberger on 2025-10-14 12:10: No walls / allucent_notes_20251118_192630: David Wiltberger on 2025-09-09 14:09: walls delayed / David Wiltberger on 2025-09-30 12:09: Waiting for plumbing to complete / David Wiltberger on 2025-10-07 16:10: need wall inspection first / David Wiltberger on 2025-10-14 12:10: No walls / Jason Johnston on 2025-11-19T02:23:05.995Z: undo / allucent_notes: 2025-09-09 14:09 - User: David Wiltberger - Date Added: 2025-09-09 14:09 - Note: walls delayed / 2025-09-30 12:09 - User: David Wiltberger - Date Added: 2025-09-30 12:09 - Note: Waiting for plumbing to complete / 2025-10-07 16:10 - User: David Wiltberge
- QTS-26851: allucent_notes_20251021_145627: Jake Shimmin on 2025-10-21 08:10: REI Man power is focusing on data hall walls. Last of rough will be inspected 9/28. / allucent_notes_20251027_224008: Jake Shimmin on 2025-10-21 08:10: REI Man power is focusing on data hall walls. Last of rough will be inspected 9/28. / allucent_notes_20251104_160200: Jake Shimmin on 2025-10-21 08:10: REI Man power is focusing on data hall walls. Last of rough will be inspected 9/28. / allucent_notes: 2025-10-21 08:10 - User: Jake Shimmin - Date Added: 2025-10-21 08:10 - Note: REI Man power is focusing on data hall walls. Last of rough will be inspected 9/28.
- QTS-28301: allucent_notes_20251230_164549: Jason Johnston on 2025-11-10 14:11: Need to confirm set. / Sean Waisner on 2025-12-02 15:26: Re-sequenced for priority / Sean Waisner on 2025-12-09 15:32: Not all drywall hung awaiting electricians / Sean Waisner on 2025-12-30 16:33: Not complete due to man power / allucent_notes_20251111_182405: Jason Johnston on 2025-11-10 14:11: Need to confirm set. / allucent_notes_20251118_192630: Jason Johnston on 2025-11-10 14:11: Need to confirm set. / allucent_notes_20251202_153722: Jason Johnston on 2025-11-10 14:11: Need to confirm set. / Sean Waisner on 2025-12-02 15:26: Re-sequenced for priority / allucent_notes_20251209_203830: Jason Johnston on 2025-11-10 14:11: Need to confirm set. / Sean Waisner on 2025-12-02 15:26: Re-sequenced for priority / Sean Waisner on 2025-12-09 15:32: Not all drywall hung awaiting electricians / allucent_notes_20251216_165335: Jason Johnston on 2025-11-10 14:11: Need to confirm set. / Sean Waisner on 2025-12-02 15:26: Re-sequenced for priority / Sean Waisner on 2025-12-09 15:32: Not all drywall hung awaiting electricians / allucent_notes: 2025-11-10 14:11 - User: Jason Johnston - Date Added: 2025-11-10 14:11 - Note: Need to confirm set. / 2025-12-02 15:26 - User: Sean Waisner - Date Added: 2025-12-02 15:26 - Note: Re-sequenced for priority / 2025-12-09 15:32 - User: Sean Waisner - Date
- QTS-44851: allucent_notes_20251230_164549: David Wiltberger on 2025-12-02 06:39: wall built late / Scott Masterson on 2025-12-16T23:05:00.670Z: We need to break this apart for early access vs priorty rooms / Scott Masterson on 2025-12-16T23:05:07.434Z: null / Scott Masterson on 2025-12-16 16:05: We need to break this apart for early access vs priorty rooms / David Wiltberger on 2025-12-30 16:06: roof delayed install / allucent_notes_20251202_153722: David Wiltberger on 2025-12-02 06:39: wall built late / allucent_notes_20251209_203830: David Wiltberger on 2025-12-02 06:39: wall built late / allucent_notes_20251216_165335: David Wiltberger on 2025-12-02 06:39: wall built late / Scott Masterson on 2025-12-16T23:05:00.670Z: We need to break this apart for early access vs priorty rooms / Scott Masterson on 2025-12-16T23:05:07.434Z: null / Scott Masterson on 2025-12-16 16:05: We need to break this apart for early access vs priorty rooms / allucent_notes: 2025-12-02 06:39 - User: David Wiltberger - Date Added: 2025-12-02 06:39 - Note: wall built late / 2025-12-16T23:05:00.670Z - User: Scott Masterson - Date Added: 2025-12-16T23:05:00.670Z - Note: We need to break this apart for early access vs priorty ro
- QTS-29111: allucent_notes_20251230_164549: JD Kitchens on 2025-12-30 14:31: update / allucent_notes: 2025-12-30 14:31 - User: JD Kitchens - Date Added: 2025-12-30 14:31 - Note: update
- QTS-1002320: allucent_notes_20251230_164549: JD Kitchens on 2025-12-30 14:31: update / allucent_notes: 2025-12-30 14:31 - User: JD Kitchens - Date Added: 2025-12-30 14:31 - Note: update
- QTS-29211: allucent_notes_20251202_153722: David Wiltberger on 2025-12-02 13:44: Not driven by early access / allucent_notes: 2025-12-02 13:44 - User: David Wiltberger - Date Added: 2025-12-02 13:44 - Note: Not driven by early access

| ID | WBS | Activity | Duration | Start | Finish | Predecessors | Complete | Planned start | Planned finish | Level | Location | Project Section-1 | Phase-1-1 | Baseline | Layton Responsible Party | Project Section | Allucent CSI Group | Subcontractor | Phase-1 |
| --- | --- | --- | --- | --- | --- | --- | --- | --- | --- | --- | --- | --- | --- | --- | --- | --- | --- | --- | --- |
|  | 8 | **L2 / FOH // IDF #0213 (Early Access)** |  | 2025-08-04 | 2025-11-17 |  |  |  |  |  |  |  |  |  |  |  |  |  |  |
| QTS-44311 |  | IDF Room #0213 // Concrete Seal | 3d | 2025-08-04 A | 2025-08-06 A | QTS-26031 | 100% | 2025-08-27 | 2025-08-29 | Level 2 | FOH | Construction | Phase 1 | IGMP | Doug Hayes | Construction | 01ADMIN |  |  |
| QTS-26801 |  | IDF Room #0213 // Rough Overhead Fire Sprinkler | 2d | 2025-08-28 A | 2025-08-29 A | QTS-44311, QTS-26031 | 100% |  |  | Level 2 | FOH |  |  | IGMP | Dave Wiltberger | Construction | 01ADMIN | Olympic West Fire Protection | Phase 1 |
| QTS-26491 |  | IDF Room #0213 // Frame Walls | 2d | 2025-09-08 A | 2025-09-11 A | QTS-26051, QTS-26801 | 100% | 2025-09-08 | 2025-09-09 | Level 2 | FOH |  |  | IGMP | Doug Hayes | Construction | 01ADMIN |  | Phase 1 |
| QTS-26781 |  | IDF Room #0213 // Rough In Electrical | 10d | 2025-09-24 A | 2025-10-07 A | QTS-26491 | 100% |  |  | Level 2 | FOH |  |  | IGMP | Scott Masterson | Construction | 01ADMIN | Rosendin Electric, Inc | Phase 1 |
| QTS-26811 |  | IDF Room #0213 // Rough Overhead Linesets | 5d | 2025-10-02 A | 2025-10-24 A | QTS-26491 | 100% | 2025-10-02 | 2025-10-08 | Level 2 | FOH |  |  | IGMP | Dave Wiltberger | Construction | 01ADMIN | Bel-Aire Mechanical, LLC | Phase 1 |
| QTS-99570 |  | IDF Room #0213 // Set Door Frame | 1d | 2025-10-06 A | 2025-10-06 A | QTS-26491 | 100% |  |  | Level 2 | FOH |  |  | IGMP | Doug Hayes | Construction |  |  | Phase 1 |
| QTS-27031 |  | IDF Room #0213 // In Wall Inspection | 1d | 2025-10-08 A | 2025-10-08 A | QTS-26781 | 100% |  |  | Level 2 | FOH |  |  | IGMP | Dave Wiltberger | Construction | 01ADMIN | Bel-Aire Mechanical, LLC | Phase 1 |
| QTS-27221 |  | IDF Room #0213 // Hang Drywall | 1d | 2025-10-09 A | 2025-10-09 A | QTS-27031, QTS-99570 | 100% |  |  | Level 2 | FOH |  |  | IGMP | Doug Hayes | Construction | 01ADMIN |  | Phase 1 |
| QTS-27391 |  | IDF Room #0213 // Tape & Finish Drywall | 3d | 2025-10-10 A | 2025-10-15 A | QTS-27221 | 100% | 2025-10-10 | 2025-10-14 | Level 2 | FOH |  |  | IGMP | Doug Hayes | Construction | 01ADMIN |  | Phase 1 |
| QTS-28101 |  | IDF Room #0213 // Plywood Install | 1d | 2025-10-16 A | 2025-10-16 A | QTS-27391 | 100% |  |  | Level 2 | FOH |  |  | IGMP | Doug Hayes | Construction | 01ADMIN |  | Phase 1 |
| QTS-27841 |  | IDF Room #0213 // Prime & Paint | 2d | 2025-10-20 A | 2025-10-21 A | QTS-28101 | 100% | 2025-10-17 | 2025-10-20 | Level 2 | FOH |  |  | IGMP | Doug Hayes | Construction | 01ADMIN |  | Phase 1 |
| QTS-28141 |  | IDF Room #0213 // Install AC Unit | 2d | 2025-10-27 A | 2025-10-28 A | QTS-27841, QTS-26811 | 100% |  |  | Level 2 | FOH |  |  | IGMP | Dave Wiltberger | Construction | 01ADMIN | Bel-Aire Mechanical, LLC | Phase 1 |
| QTS-38561 |  | IDF Room #0213 // Install Cable Racks | 5d | 2025-11-10 A | 2025-11-14 A | QTS-28341 | 100% | 2025-11-12 | 2025-11-18 | Level 2 | FOH | Construction | Phase 1 | IGMP | Scott Masterson | Construction | 01ADMIN | E2 Optics, LLC |  |
| QTS-28341 |  | IDF Room #0213 // Install Light Fixtures | 2d | 2025-11-12 A | 2025-11-13 A | QTS-28141 | 100% | 2025-11-10 | 2025-11-11 | Level 2 | FOH |  |  | IGMP | Scott Masterson | Construction | 01ADMIN | Rosendin Electric, Inc | Phase 1 |
| QTS-26791 |  | IDF Room #0213 // Set Door (Temp) | 1d | 2025-11-17 A | 2025-11-17 A | QTS-26491 FF, QTS-15231, QTS-99630 SS | 100% |  |  | Level 2 | FOH |  |  | IGMP | Sean Waisner | Construction | 01ADMIN |  | Phase 1 |
|  | 7 | **L2 / FOH // MMR #0212** |  | 2025-08-04 | 2025-11-17 |  |  |  |  |  |  |  |  |  |  |  |  |  |  |
| QTS-44321 |  | MMR Room #0212 // Concrete Seal | 3d | 2025-08-04 A | 2025-08-06 A | QTS-44311 | 100% |  |  | Level 2 | FOH | Construction | Phase 1 | IGMP | Doug Hayes | Construction | 01ADMIN |  |  |
| QTS-27071 |  | MMR Room #0212 // Rough Overhead Fire Sprinkler | 2d | 2025-09-02 A | 2025-09-24 A | QTS-44321, QTS-26801 | 100% | 2025-09-02 | 2025-09-03 | Level 2 | FOH |  |  | IGMP | Dave Wiltberger | Construction | 01ADMIN | Olympic West Fire Protection | Phase 1 |
| QTS-26821 |  | MMR Room #0212 // Frame Walls | 2d | 2025-09-10 A | 2025-09-11 A | QTS-26491 FF | 100% |  |  | Level 2 | FOH |  |  | IGMP | Doug Hayes | Construction | 01ADMIN |  | Phase 1 |
| QTS-27051 |  | MMR Room #0212 // Rough In Electrical | 10d | 2025-09-24 A | 2025-10-07 A | QTS-26821 | 100% |  |  | Level 2 | FOH |  |  | IGMP | Scott Masterson | Construction | 01ADMIN | Rosendin Electric, Inc | Phase 1 |
| QTS-99580 |  | MMR Room #0212 // Set Door Frame | 1d | 2025-10-06 A | 2025-10-06 A | QTS-26821 | 100% |  |  | Level 2 | FOH |  |  | IGMP | Doug Hayes | Construction |  |  | Phase 1 |
| QTS-27451 |  | MMR Room #0212 // In Wall Inspection | 1d | 2025-10-08 A | 2025-10-08 A | QTS-27051 | 100% |  |  | Level 2 | FOH |  |  | IGMP | Dave Wiltberger | Construction | 01ADMIN | Bel-Aire Mechanical, LLC | Phase 1 |
| QTS-27531 |  | MMR Room #0212 // Hang Drywall | 1d | 2025-10-09 A | 2025-10-09 A | QTS-27451, QTS-99580 | 100% |  |  | Level 2 | FOH |  |  | IGMP | Doug Hayes | Construction | 01ADMIN |  | Phase 1 |
| QTS-27651 |  | MMR Room #0212 // Tape & Finish Drywall | 3d | 2025-10-10 A | 2025-10-15 A | QTS-27531 | 100% | 2025-10-10 | 2025-10-14 | Level 2 | FOH |  |  | IGMP | Doug Hayes | Construction | 01ADMIN |  | Phase 1 |
| QTS-28281 |  | MMR Room #0212 // Plywood Install | 1d | 2025-10-16 A | 2025-10-16 A | QTS-27651 | 100% |  |  | Level 2 | FOH |  |  | IGMP | Doug Hayes | Construction | 01ADMIN |  | Phase 1 |
| QTS-28121 |  | MMR Room #0212 // Prime & Paint | 2d | 2025-10-17 A | 2025-10-20 A | QTS-28281 | 100% |  |  | Level 2 | FOH |  |  | IGMP | Doug Hayes | Construction | 01ADMIN |  | Phase 1 |
| QTS-27081 |  | MMR Room #0212 // Rough Overhead Linesets | 5d | 2025-10-21 A | 2025-10-27 A | QTS-26821, QTS-28121 | 100% |  |  | Level 2 | FOH |  |  | IGMP | Dave Wiltberger | Construction | 01ADMIN | Bel-Aire Mechanical, LLC | Phase 1 |
| QTS-28361 |  | MMR Room #0212 // Install AC Unit | 2d | 2025-10-28 A | 2025-10-29 A | QTS-28121, QTS-28281, QTS-27081 | 100% |  |  | Level 2 | FOH |  |  | IGMP | Dave Wiltberger | Construction | 01ADMIN | Bel-Aire Mechanical, LLC | Phase 1 |
| QTS-28851 |  | MMR Room #0212 // Install Cable Racks | 5d | 2025-11-10 A | 2025-11-14 A | QTS-28701 | 100% |  |  | Level 2 | FOH |  |  | IGMP | Scott Masterson | Construction | 01ADMIN | E2 Optics, LLC | Phase 1 |
| QTS-28701 |  | MMR Room #0212 // Install Light Fixtures | 2d | 2025-11-12 A | 2025-11-13 A | QTS-28361 | 100% | 2025-11-10 | 2025-11-11 | Level 2 | FOH |  |  | IGMP | Scott Masterson | Construction | 01ADMIN | Rosendin Electric, Inc | Phase 1 |
| QTS-27061 |  | MMR Room #0212 // Set Door (Temp) | 1d | 2025-11-17 A | 2025-11-17 A | QTS-26821, QTS-15231 FF, QTS-99630 SS | 100% |  |  | Level 2 | FOH |  |  | IGMP | Sean Waisner | Construction | 01ADMIN |  | Phase 1 |

Notes:
- QTS-26811: allucent_notes_20251014_152335: David Wiltberger on 2025-09-09 14:09: walls not ready / David Wiltberger on 2025-09-24 03:09: Need drywall before setting / David Wiltberger on 2025-09-30 09:09: Working with build out to correct / David Wiltberger on 2025-10-14 12:10: Need to finish walls / allucent_notes_20251021_145627: David Wiltberger on 2025-09-09 14:09: walls not ready / David Wiltberger on 2025-09-24 03:09: Need drywall before setting / David Wiltberger on 2025-09-30 09:09: Working with build out to correct / David Wiltberger on 2025-10-14 12:10: Need to finish walls / allucent_notes_20251027_224008: David Wiltberger on 2025-09-09 14:09: walls not ready / David Wiltberger on 2025-09-24 03:09: Need drywall before setting / David Wiltberger on 2025-09-30 09:09: Working with build out to correct / David Wiltberger on 2025-10-14 12:10: Need to finish walls / allucent_notes: 2025-09-09 14:09 - User: David Wiltberger - Date Added: 2025-09-09 14:09 - Note: walls not ready / 2025-09-24 03:09 - User: David Wiltberger - Date Added: 2025-09-24 03:09 - Note: Need drywall before setting / 2025-09-30 09:09 - User: David Wiltberger
- QTS-27391: allucent_notes_20251014_152335: Jake Shimmin on 2025-10-14T16:51:50.335Z: will be finished 10/16 / Jason Johnston on 2025-10-14 15:10: Waited for inspection and will be complete EOD 10-15 / allucent_notes_20251021_145627: Jake Shimmin on 2025-10-14T16:51:50.335Z: will be finished 10/16 / Jason Johnston on 2025-10-14 15:10: Waited for inspection and will be complete EOD 10-15 / allucent_notes: 2025-10-14T16:51:50.335Z - User: Jake Shimmin - Date Added: 2025-10-14T16:51:50.335Z - Note: will be finished 10/16 / 2025-10-14 15:10 - User: Jason Johnston - Date Added: 2025-10-14 15:10 - Note: Waited for inspection and will be complete EOD 10-15
- QTS-27841: allucent_notes_20251021_145627: Jake Shimmin on 2025-10-20 11:10: Hanging ply was finished 10/18 / allucent_notes: 2025-10-20 11:10 - User: Jake Shimmin - Date Added: 2025-10-20 11:10 - Note: Hanging ply was finished 10/18
- QTS-38561: allucent_notes_20251111_182405: Jason Johnston on 2025-11-11 15:11: Started early. / allucent_notes_20251118_192630: Jason Johnston on 2025-11-11 15:11: Started early. / allucent_notes: 2025-11-11 15:11 - User: Jason Johnston - Date Added: 2025-11-11 15:11 - Note: Started early.
- QTS-28341: allucent_notes_20251104_160200: Jason Johnston on 2025-11-03 15:11: Need to confirm that light fixtures are on site and ready to install. / allucent_notes_20251111_182405: Jason Johnston on 2025-11-03 15:11: Need to confirm that light fixtures are on site and ready to install. / Jason Johnston on 2025-11-11 15:11: starting 11/12. / allucent_notes_20251118_192630: Jason Johnston on 2025-11-03 15:11: Need to confirm that light fixtures are on site and ready to install. / Jason Johnston on 2025-11-11 15:11: starting 11/12. / allucent_notes: 2025-11-03 15:11 - User: Jason Johnston - Date Added: 2025-11-03 15:11 - Note: Need to confirm that light fixtures are on site and ready to install. / 2025-11-11 15:11 - User: Jason Johnston - Date Added: 2025-11-11 15:11 - Note: starting 11/12.
- QTS-27451: allucent_notes_20251014_152335: Jason Johnston on 2025-10-08 08:10: inspector only one tuesday and thursday / allucent_notes: 2025-10-08 08:10 - User: Jason Johnston - Date Added: 2025-10-08 08:10 - Note: inspector only one tuesday and thursday
- QTS-27651: allucent_notes_20251014_152335: Jake Shimmin on 2025-10-14T16:52:45.528Z: will be finished 10/15 / allucent_notes_20251021_145627: Jake Shimmin on 2025-10-14T16:52:45.528Z: will be finished 10/15 / Jason Johnston on 2025-10-14 15:10: Will be finished 10-15 / allucent_notes: 2025-10-14T16:52:45.528Z - User: Jake Shimmin - Date Added: 2025-10-14T16:52:45.528Z - Note: will be finished 10/15 / 2025-10-14 15:10 - User: Jason Johnston - Date Added: 2025-10-14 15:10 - Note: Will be finished 10-15
- QTS-27081: allucent_notes_20251014_152335: David Wiltberger on 2025-09-09 14:09: walls delayed / David Wiltberger on 2025-09-24T10:50:42.676Z: Need drywall up before setting / David Wiltberger on 2025-09-24 03:09: Need drywall before settings / David Wiltberger on 2025-09-30 09:09: Need to coordinate with Buildout / allucent_notes_20251021_145627: David Wiltberger on 2025-09-09 14:09: walls delayed / David Wiltberger on 2025-09-24T10:50:42.676Z: Need drywall up before setting / David Wiltberger on 2025-09-24 03:09: Need drywall before settings / David Wiltberger on 2025-09-30 09:09: Need to coordinate with Buildout / allucent_notes_20251027_224008: David Wiltberger on 2025-09-09 14:09: walls delayed / David Wiltberger on 2025-09-24T10:50:42.676Z: Need drywall up before setting / David Wiltberger on 2025-09-24 03:09: Need drywall before settings / David Wiltberger on 2025-09-30 09:09: Need to coordinate with Buildout / allucent_notes: 2025-09-09 14:09 - User: David Wiltberger - Date Added: 2025-09-09 14:09 - Note: walls delayed / 2025-09-24T10:50:42.676Z - User: David Wiltberger - Date Added: 2025-09-24T10:50:42.676Z - Note: Need drywall up before setting / 2025-09-24 03:09 - User: D
- QTS-28851: allucent_notes_20251104_160200: Jason Johnston on 2025-11-03 15:11: Light fixtures are not on site yet. / allucent_notes_20251111_182405: Jason Johnston on 2025-11-03 15:11: Light fixtures are not on site yet. / allucent_notes_20251118_192630: Jason Johnston on 2025-11-03 15:11: Light fixtures are not on site yet. / allucent_notes: 2025-11-03 15:11 - User: Jason Johnston - Date Added: 2025-11-03 15:11 - Note: Light fixtures are not on site yet.
- QTS-28701: allucent_notes_20251104_160200: Jason Johnston on 2025-11-03 15:11: Light fixtures are not on site. / allucent_notes_20251111_182405: Jason Johnston on 2025-11-03 15:11: Light fixtures are not on site. / Jason Johnston on 2025-11-11 15:11: Starting wednesday. / allucent_notes_20251118_192630: Jason Johnston on 2025-11-03 15:11: Light fixtures are not on site. / Jason Johnston on 2025-11-11 15:11: Starting wednesday. / allucent_notes: 2025-11-03 15:11 - User: Jason Johnston - Date Added: 2025-11-03 15:11 - Note: Light fixtures are not on site. / 2025-11-11 15:11 - User: Jason Johnston - Date Added: 2025-11-11 15:11 - Note: Starting wednesday.
- QTS-27061: allucent_notes_20251027_224008: Jake Shimmin on 2025-10-27 09:10: Door to be deliver on the 30th and set on 31st. / allucent_notes_20251028_163138: Jake Shimmin on 2025-10-27 09:10: Door to be deliver on the 30th and set on 31st. / allucent_notes_20251209_203830: Jake Shimmin on 2025-10-27 09:10: Door to be deliver on the 30th and set on 31st. / allucent_notes: 2025-10-27 09:10 - User: Jake Shimmin - Date Added: 2025-10-27 09:10 - Note: Door to be deliver on the 30th and set on 31st.

| ID | WBS | Activity | Duration | Start | Finish | Predecessors | Complete | Planned start | Planned finish | Total float | Free float | Constraint | Calendar | Level | Location | Project Section-1 | Phase-1-1 | Baseline | Layton Responsible Party | Project Section | Allucent CSI Group | Phase-1 | Subcontractor | Last Period Finish | Last Period Start |
| --- | --- | --- | --- | --- | --- | --- | --- | --- | --- | --- | --- | --- | --- | --- | --- | --- | --- | --- | --- | --- | --- | --- | --- | --- | --- |
|  | 1 | **L2 / FOH // Electrical Room #0222** |  | 2025-08-04 | 2025-11-24 |  |  |  |  |  |  |  |  |  |  |  |  |  |  |  |  |  |  |  |  |
| QTS-44331 |  | Electrical Room #0222 // Concrete Seal | 3d | 2025-08-04 A | 2025-08-06 A | QTS-44321 | 100% |  |  |  |  |  |  | Level 2 | FOH | Construction | Phase 1 | IGMP | Doug Hayes | Construction | 01ADMIN |  |  |  |  |
| QTS-25951 |  | Electrical Room #0222 // Frame Walls | 2d | 2025-09-08 A | 2025-09-09 A | QTS-25741 | 100% |  |  |  |  |  |  | Level 2 | FOH |  |  | IGMP | Doug Hayes | Construction | 01ADMIN | Phase 1 |  |  |  |
| QTS-26301 |  | Electrical Room #0222 // Rough In Electrical | 10d | 2025-09-24 A | 2025-10-07 A | QTS-25951 | 100% |  |  |  |  |  |  | Level 2 | FOH |  |  | IGMP | Scott Masterson | Construction | 01ADMIN | Phase 1 | Rosendin Electric, Inc |  |  |
| QTS-26321 |  | Electrical Room #0222 // Rough Overhead Fire Sprinkler | 2d | 2025-10-08 A | 2025-10-09 A | QTS-44331, QTS-27071 | 100% |  |  |  |  |  |  | Level 2 | FOH |  |  | IGMP | Dave Wiltberger | Construction | 01ADMIN | Phase 1 | Olympic West Fire Protection |  |  |
| QTS-26421 |  | Electrical Room #0222 // In Wall Inspection | 1d | 2025-10-08 A | 2025-10-08 A | QTS-26301 | 100% |  |  |  |  |  |  | Level 2 | FOH |  |  | IGMP | Dave Wiltberger | Construction | 01ADMIN | Phase 1 | Bel-Aire Mechanical, LLC |  |  |
| QTS-99590 |  | Electrical Room #0222 // Set Door Frame | 1d | 2025-10-08 A | 2025-10-08 A | QTS-25951 | 100% |  |  |  |  |  |  | Level 2 | FOH |  |  | IGMP | Doug Hayes | Construction | 01ADMIN | Phase 1 |  |  |  |
| QTS-26441 |  | Electrical Room #0222 // Hang Drywall | 1d | 2025-10-09 A | 2025-10-09 A | QTS-26421, QTS-99590 | 100% |  |  |  |  |  |  | Level 2 | FOH |  |  | IGMP | Doug Hayes | Construction | 01ADMIN | Phase 1 |  |  |  |
| QTS-26551 |  | Electrical Room #0222 // Tape & Finish Drywall | 3d | 2025-10-14 A | 2025-10-24 A | QTS-26441 | 100% | 2025-10-14 | 2025-10-16 |  |  |  |  | Level 2 | FOH |  |  | IGMP | Doug Hayes | Construction | 01ADMIN | Phase 1 |  |  |  |
| QTS-27241 |  | Electrical Room #0222 // Plywood Install | 1d | 2025-10-20 A | 2025-10-20 A | QTS-26551 SS | 100% |  |  |  |  |  |  | Level 2 | FOH |  |  | IGMP | Doug Hayes | Construction | 01ADMIN | Phase 1 |  |  |  |
| QTS-26911 |  | Electrical Room #0222 // Prime & Paint | 2d | 2025-10-21 A | 2025-10-28 A | QTS-26551 FF, QTS-27241 | 100% | 2025-10-21 | 2025-10-22 |  |  |  |  | Level 2 | FOH |  |  | IGMP | Doug Hayes | Construction | 01ADMIN | Phase 1 |  |  |  |
| QTS-101630 |  | Electrical Room #0222 // Cure and Seal House Pads | 3d | 2025-10-29 A | 2025-10-31 A | QTS-26911 | 100% |  |  |  |  |  |  | Level 2 | FOH | Construction | Phase 1 | IGMP | Ron Carroll | Construction | 01ADMIN |  | Rosendin Electric, Inc |  |  |
| QTS-26331 |  | Electrical Room #0222 // Rough Overhead Linesets | 5d | 2025-10-29 A | 2025-11-04 A | QTS-25951, QTS-26911 | 100% |  |  |  |  |  |  | Level 2 | FOH |  |  | IGMP | Dave Wiltberger | Construction | 01ADMIN | Phase 1 | Bel-Aire Mechanical, LLC |  |  |
| QTS-27471 |  | Electrical Room #0222 // Install AC Unit | 2d | 2025-11-05 A | 2025-11-06 A | QTS-26911, QTS-27241, QTS-26331, QTS-101630 | 100% |  |  |  |  |  |  | Level 2 | FOH |  |  | IGMP | Dave Wiltberger | Construction | 01ADMIN | Phase 1 | Bel-Aire Mechanical, LLC |  |  |
| QTS-28041 |  | Electrical Room #0222 // Install Cable Racks | 5d | 2025-11-14 A | 2025-11-24 A | QTS-27671 | 100% | 2025-11-11 | 2025-11-17 |  |  |  |  | Level 2 | FOH |  |  | IGMP | Scott Masterson | Construction | 01ADMIN | Phase 1 | E2 Optics, LLC |  |  |
| QTS-26311 |  | Electrical Room #0222 // Set Door (Temp) | 1d | 2025-11-17 A | 2025-11-17 A | QTS-25951 FF, QTS-15231, QTS-99630 SS | 100% |  |  |  |  |  |  | Level 2 | FOH |  |  | IGMP | Sean Waisner | Construction | 01ADMIN | Phase 1 |  |  |  |
| QTS-27671 |  | Electrical Room #0222 // Install Light Fixtures | 2d | 2025-11-19 A | 2025-11-20 A | QTS-27471 | 100% |  |  |  |  |  |  | Level 2 | FOH |  |  | IGMP | Scott Masterson | Construction | 01ADMIN | Phase 1 | Rosendin Electric, Inc |  |  |
|  | 3 | **L2 / FOH // Restrooms #0207/0208** |  | 2025-09-08 | 2026-03-26 |  |  |  |  |  |  |  |  |  |  |  |  |  |  |  |  |  |  |  |  |
| QTS-1531 |  | Restrooms #0207/0208 // Layout | 1d | 2025-09-08 A | 2025-09-08 A | QTS-25741 | 100% |  |  |  |  |  |  | Level 2 | FOH | Construction | Phase 1 | IGMP | Doug Hayes | Construction | 01ADMIN |  |  | 2023-01-05 | 2023-01-05 |
| QTS-2301 |  | Restrooms #0207/0208 // Frame Walls | 2d | 2025-09-08 A | 2025-09-09 A | QTS-1531 | 100% |  |  |  |  |  |  | Level 2 | FOH | Construction | Phase 1 | IGMP | Doug Hayes | Construction | 01ADMIN |  |  | 2023-01-09 | 2023-01-06 |
| QTS-2651 |  | Restrooms #0207/0208 // Rough In-Wall Plumbing | 5d | 2025-09-24 A | 2025-10-24 A | QTS-2301 | 100% | 2025-09-24 | 2025-09-30 |  |  |  |  | Level 2 | FOH | Construction | Phase 1 | IGMP | Dave Wiltberger | Construction | 01ADMIN |  | Bel-Aire Mechanical, LLC | 2023-01-13 | 2023-01-11 |
| QTS-4501 |  | Restrooms #0207/0208 // Rough Overhead Fire Sprinkler | 1d | 2025-09-29 A | 2025-09-29 A | QTS-1531 | 100% |  |  |  |  |  |  | Level 2 | FOH | Construction | Phase 1 | IGMP | Dave Wiltberger | Construction | 01ADMIN |  | Olympic West Fire Protection | 2023-01-17 | 2023-01-13 |
| QTS-99450 |  | Restrooms #0207/0208 // Frame Wet Walls | 2d | 2025-09-30 A | 2025-10-01 A | QTS-4501 | 100% |  |  |  |  |  |  | Level 2 | FOH | Construction | Phase 1 | IGMP | Doug Hayes | Construction | 01ADMIN |  |  | 2023-01-09 | 2023-01-06 |
| QTS-2631 |  | Restrooms #0207/0208 // Rough Overhead Mechanical | 2d | 2025-10-02 A | 2025-10-10 A | QTS-2301, QTS-99450 | 100% | 2025-10-02 | 2025-10-03 |  |  |  |  | Level 2 | FOH | Construction | Phase 1 | IGMP | Dave Wiltberger | Construction | 01ADMIN |  | Bel-Aire Mechanical, LLC | 2023-01-26 | 2023-01-23 |
| QTS-3751 |  | Restrooms #0207/0208 // Install Backing for Restroom Specialties/Counter Brackets | 1d | 2025-10-09 A | 2025-10-09 A | QTS-2651 SS | 100% |  |  |  |  |  |  | Level 2 | FOH | Construction | Phase 1 | IGMP | Doug Hayes | Construction | 01ADMIN |  |  | 2023-02-27 | 2023-02-27 |
| QTS-3381 |  | Restrooms #0207/0208 // Rough Overhead Plumbing | 5d | 2025-10-24 A | 2025-12-12 A | QTS-2631, QTS-2301 | 100% | 2025-10-24 | 2025-10-30 |  |  |  |  | Level 2 | FOH | Construction | Phase 1 | IGMP | Dave Wiltberger | Construction | 01ADMIN |  | Bel-Aire Mechanical, LLC | 2023-01-12 | 2023-01-10 |
| QTS-2641 |  | Restrooms #0207/0208 // Rough In-Wall Electrical, Security, & Access Controls | 2d | 2025-11-12 A | 2025-11-13 A | QTS-2301, QTS-99450 | 100% | 2025-11-11 | 2025-11-12 |  |  |  |  | Level 2 | FOH | Construction | Phase 1 | IGMP | Scott Masterson | Construction | 01ADMIN |  | Securitas Technology Corporation | 2023-01-12 | 2023-01-10 |
| QTS-3391 |  | Restrooms #0207/0208 // Rough Overhead Electrical/ Light Fixtures Install | 2d | 2025-11-12 A | 2025-11-13 A | QTS-2631, QTS-2301 | 100% | 2025-11-11 | 2025-11-12 |  |  |  |  | Level 2 | FOH | Construction | Phase 1 | IGMP | Scott Masterson | Construction | 01ADMIN |  | Specified Electrical Contractors, Inc | 2023-03-08 | 2023-03-07 |
| QTS-1001280 |  | Restrooms #0207/0208 // Rough In-Wall Electrical Final Connections | 2d | 2026-01-14 | 2026-01-15 | QTS-3381 |  |  |  | 42d | 10d |  | QTS-PHX3 DC1 - 6 day w/ Holidays | Level 2 | FOH | Construction | Phase 1 | IGMP | Scott Masterson | Construction | 01ADMIN |  | Securitas Technology Corporation | 2023-01-12 | 2023-01-10 |
| QTS-1002330 |  | Restrooms #0207/0208 // Install Mechanical Branch Lines | 1d | 2026-01-27 | 2026-01-27 | QTS-1003030 |  |  |  | 28d | 0d |  | QTS-PHX3 DC1 - 6 day w/ Holidays | Level 2 | FOH | Construction | Phase 1 | IGMP | Sean Waisner | Construction | 01ADMIN |  |  | 2023-03-01 | 2023-02-28 |
| QTS-1003040 |  | Restrooms #0207/0208 // Top Out Walls | 3d | 2026-01-28 | 2026-01-30 | QTS-1002330 |  |  |  | 28d | 14d |  | QTS-PHX3 DC1 - 6 day w/ Holidays | Level 2 | FOH | Construction | Phase 1 | IGMP | Sean Waisner | Construction | 01ADMIN |  | Performance Contracting, Inc. | 2023-03-01 | 2023-02-28 |
| QTS-3741 |  | Restrooms #0207/0208 // In Wall Inspection | 1d | 2026-01-29 | 2026-01-29 | QTS-2651, QTS-2641, QTS-1001280 |  |  |  | 32d | 0d | start on or after 2026-01-29 | QTS-PHX3 DC1 - 6 day w/ Holidays | Level 2 | FOH | Construction | Phase 1 | IGMP | Dave Wiltberger | Construction | 01ADMIN |  | Bel-Aire Mechanical, LLC | 2023-01-17 | 2023-01-17 |
| QTS-4391 |  | Restrooms #0207/0208 // Insulate Walls | 1d | 2026-01-30 | 2026-01-30 | QTS-3741, QTS-3751 |  |  |  | 32d | 14d |  | QTS-PHX3 DC1 - 6 day w/ Holidays | Level 2 | FOH | Construction | Phase 1 | IGMP | Sean Waisner | Construction | 01ADMIN |  | Performance Contracting, Inc. | 2023-02-24 | 2023-02-24 |
| QTS-44861 |  | Restrooms #0207/0208 // Frame Hard Lids | 2d | 2026-02-17 | 2026-02-18 | QTS-1003040, QTS-3381 FF, QTS-29851, QTS-13091 |  |  |  | 14d | 0d |  | QTS-PHX3 DC1 - 6 day w/ Holidays | Level 2 | FOH | Construction | Phase 1 | IGMP | Sean Waisner | Construction | 01ADMIN |  | Performance Contracting, Inc. | 2023-01-09 | 2023-01-06 |
| QTS-4791 |  | Restrooms #0207/0208 // Hang Drywall Walls | 1d | 2026-02-17 | 2026-02-17 | QTS-1002990, QTS-4501, QTS-4391, QTS-3741, QTS-13091 |  |  |  | 18d | 4d |  | QTS-PHX3 DC1 - 6 day w/ Holidays | Level 2 | FOH | Construction | Phase 1 | IGMP | Sean Waisner | Construction | 01ADMIN |  | Performance Contracting, Inc. | 2023-03-01 | 2023-02-28 |
| QTS-1002340 |  | Restrooms #0207/0208 // Install Light Fixtures | 1d | 2026-02-19 | 2026-02-19 | QTS-44861, QTS-1002330 |  |  |  | 14d | 0d |  | QTS-PHX3 DC1 - 6 day w/ Holidays | Level 2 | FOH | Construction | Phase 1 | IGMP | Sean Waisner | Construction | 01ADMIN |  |  | 2023-03-01 | 2023-02-28 |
| QTS-4801 |  | Restrooms #0207/0208 // Above Ceiling Inspection | 1d | 2026-02-20 | 2026-02-20 | QTS-1002340, QTS-44861, QTS-1002330, QTS-4501, QTS-3391, QTS-3381 |  |  |  | 14d | 0d |  | QTS-PHX3 DC1 - 6 day w/ Holidays | Level 2 | FOH | Construction | Phase 1 | IGMP | Dave Wiltberger | Construction | 01ADMIN |  | Bel-Aire Mechanical, LLC | 2023-03-09 | 2023-03-09 |
| QTS-5511 |  | Restrooms #0207/0208 // Hang Drywall on Hard Lids | 1d | 2026-02-21 | 2026-02-21 | QTS-4791 FF, QTS-4801 |  |  |  | 14d | 0d |  | QTS-PHX3 DC1 - 6 day w/ Holidays | Level 2 | FOH | Construction | Phase 1 | IGMP | Sean Waisner | Construction | 01ADMIN |  | Performance Contracting, Inc. | 2023-03-13 | 2023-03-10 |
| QTS-5741 |  | Restrooms #0207/0208 // Tape & Finish Drywall | 3d | 2026-02-23 | 2026-02-25 | QTS-4791, QTS-5511 |  |  |  | 14d | 0d |  | QTS-PHX3 DC1 - 6 day w/ Holidays | Level 2 | FOH | Construction | Phase 1 | IGMP | Sean Waisner | Construction | 01ADMIN |  | Performance Contracting, Inc. | 2023-03-20 | 2023-03-14 |
| QTS-10161 |  | Restrooms #0207/0208 // Field Measure for Countertops | 1d | 2026-02-26 | 2026-02-26 | QTS-5741 |  |  |  | 14d | 0d |  | QTS-PHX3 DC1 - 6 day w/ Holidays | Level 2 | FOH | Construction | Phase 1 | IGMP | Sean Waisner | Construction |  |  |  |  |  |
| QTS-6761 |  | Restrooms #0207/0208 // Prime & Paint | 1d | 2026-02-26 | 2026-02-26 | QTS-5741 |  |  |  | 14d | 0d |  | QTS-PHX3 DC1 - 6 day w/ Holidays | Level 2 | FOH | Construction | Phase 1 | IGMP | Sean Waisner | Construction | 01ADMIN |  | Pennington Painting Company, LLC | 2023-04-12 | 2023-04-11 |
| QTS-10821 |  | Restrooms #0207/0208 // Fabricate & Delivery Countertops | 10d | 2026-02-27 | 2026-03-10 | QTS-10161 |  |  |  | 14d | 0d |  | QTS-PHX3 DC1 - 6 day w/ Holidays | Level 2 | FOH | Construction | Phase 1 | IGMP | Sean Waisner | Construction |  |  |  |  |  |
| QTS-6861 |  | Restrooms #0207/0208 // Install Wall & Floor Tile | 10d | 2026-02-27 | 2026-03-10 | QTS-5741, QTS-6761 |  |  |  | 14d | 0d |  | QTS-PHX3 DC1 - 6 day w/ Holidays | Level 2 | FOH | Construction | Phase 1 | IGMP | Sean Waisner | Construction | 01ADMIN |  |  | 2023-04-10 | 2023-04-06 |
| QTS-10141 |  | Restrooms #0207/0208 // Plumbing Fixtures Install | 2d | 2026-03-11 | 2026-03-12 | QTS-6861, QTS-6761 |  |  |  | 22d | 8d |  | QTS-PHX3 DC1 - 6 day w/ Holidays | Level 2 | FOH | Construction | Phase 1 | IGMP | Dave Wiltberger | Construction |  |  | Bel-Aire Mechanical, LLC | 2023-04-14 | 2023-04-13 |
| QTS-10151 |  | Restrooms #0207/0208 // Electrical Trim | 1d | 2026-03-11 | 2026-03-11 | QTS-6861, QTS-6761 |  |  |  | 22d | 0d |  | QTS-PHX3 DC1 - 6 day w/ Holidays | Level 2 | FOH | Construction | Phase 1 | IGMP | Scott Masterson | Construction |  |  | Specified Electrical Contractors, Inc | 2023-04-14 | 2023-04-13 |
| QTS-12651 |  | Restrooms #0207/0208 // Set Countertops | 2d | 2026-03-11 | 2026-03-12 | QTS-6861, QTS-10821 |  |  |  | 14d | 0d |  | QTS-PHX3 DC1 - 6 day w/ Holidays | Level 2 | FOH | Construction | Phase 1 | IGMP | Sean Waisner | Construction |  |  |  |  |  |
| QTS-10811 |  | Restrooms #0207/0208 // Final Coat of Paint | 1d | 2026-03-12 | 2026-03-12 | QTS-10151 |  |  |  | 22d | 0d |  | QTS-PHX3 DC1 - 6 day w/ Holidays | Level 2 | FOH | Construction | Phase 1 | IGMP | Sean Waisner | Construction |  |  | Pennington Painting Company, LLC |  |  |
| QTS-1003050 |  | Restrooms #0207/0208 // Install Casework | 8d | 2026-03-13 | 2026-03-21 | QTS-12651 |  |  |  | 14d | 0d |  | QTS-PHX3 DC1 - 6 day w/ Holidays | Level 2 | FOH | Construction | Phase 1 | IGMP | Sean Waisner | Construction |  |  |  |  |  |
| QTS-10871 |  | Restrooms #0207/0208 // Install Mechanical Trim | 2d | 2026-03-13 | 2026-03-14 | QTS-10811, QTS-6761 |  |  |  | 22d | 8d |  | QTS-PHX3 DC1 - 6 day w/ Holidays | Level 2 | FOH | Construction | Phase 1 | IGMP | Dave Wiltberger | Construction |  |  | Bel-Aire Mechanical, LLC | 2023-04-14 | 2023-04-13 |
| QTS-12951 |  | Restrooms #0207/0208 // Install Plumbing Trim at Countertops | 2d | 2026-03-13 | 2026-03-14 | QTS-12651 |  |  |  | 24d | 16d |  | QTS-PHX3 DC1 - 6 day w/ Holidays | Level 2 | FOH | Construction | Phase 1 | IGMP | Dave Wiltberger | Construction |  |  | Bel-Aire Mechanical, LLC |  |  |
| QTS-10861 |  | Restrooms #0207/0208 // Install Restroom Specialties/ ADA Trim/ Partitions | 2d | 2026-03-23 | 2026-03-24 | QTS-1003050, QTS-10811, QTS-10141 |  |  |  | 14d | 0d |  | QTS-PHX3 DC1 - 6 day w/ Holidays | Level 2 | FOH | Construction | Phase 1 | IGMP | Sean Waisner | Construction |  |  |  | 2023-04-21 | 2023-04-20 |
| QTS-11431 |  | Restrooms #0207/0208 // Set Doors & Hardware | 2d | 2026-03-25 | 2026-03-26 | QTS-10871, QTS-10861, QTS-99650 |  |  |  | 14d | 6d |  | QTS-PHX3 DC1 - 6 day w/ Holidays | Level 2 | FOH | Construction | Phase 1 | IGMP | Sean Waisner | Construction |  |  |  | 2023-04-21 | 2023-04-20 |

Notes:
- QTS-26421: allucent_notes_20251014_152335: Jason Johnston on 2025-10-08 08:10: inspector only tuesday and thursday / allucent_notes: 2025-10-08 08:10 - User: Jason Johnston - Date Added: 2025-10-08 08:10 - Note: inspector only tuesday and thursday
- QTS-26441: allucent_notes_20251014_152335: Jake Shimmin on 2025-10-14T16:53:30.384Z: will be finished 10/17 / allucent_notes: 2025-10-14T16:53:30.384Z - User: Jake Shimmin - Date Added: 2025-10-14T16:53:30.384Z - Note: will be finished 10/17
- QTS-26551: allucent_notes_20251014_152335: Jake Shimmin on 2025-10-14T16:54:06.095Z: will be finished 10/17 / Jake Shimmin on 2025-10-14 10:10: dry wall is not complete / allucent_notes_20251021_145627: Jake Shimmin on 2025-10-14T16:54:06.095Z: will be finished 10/17 / Jake Shimmin on 2025-10-14 10:10: dry wall is not complete / Jake Shimmin on 2025-10-21 08:10: Not enough manpower / allucent_notes_20251027_224008: Jake Shimmin on 2025-10-14T16:54:06.095Z: will be finished 10/17 / Jake Shimmin on 2025-10-14 10:10: dry wall is not complete / Jake Shimmin on 2025-10-21 08:10: Not enough manpower / allucent_notes: 2025-10-14T16:54:06.095Z - User: Jake Shimmin - Date Added: 2025-10-14T16:54:06.095Z - Note: will be finished 10/17 / 2025-10-14 10:10 - User: Jake Shimmin - Date Added: 2025-10-14 10:10 - Note: dry wall is not complete / 2025-10-21 08:10 - User: Jak
- QTS-26911: allucent_notes_20251027_224008: Jake Shimmin on 2025-10-27 09:10: Paint will be done 10/28. Mud and tape was delayed do to man power. / allucent_notes_20251028_163138: Jake Shimmin on 2025-10-27 09:10: Paint will be done 10/28. Mud and tape was delayed do to man power. / allucent_notes: 2025-10-27 09:10 - User: Jake Shimmin - Date Added: 2025-10-27 09:10 - Note: Paint will be done 10/28. Mud and tape was delayed do to man power.
- QTS-26331: allucent_notes_20251014_152335: David Wiltberger on 2025-09-24 03:09: Need Drywall before setting / David Wiltberger on 2025-09-30 12:09: Waiting for drywall / allucent_notes_20251021_145627: David Wiltberger on 2025-09-24 03:09: Need Drywall before setting / David Wiltberger on 2025-09-30 12:09: Waiting for drywall / Jake Shimmin on 2025-10-21T15:24:58.946Z: THERE IS NO DRY PLYWOOD IN THIS ROOM LOOK AT THE PLANS. / allucent_notes_20251027_224008: David Wiltberger on 2025-09-24 03:09: Need Drywall before setting / David Wiltberger on 2025-09-30 12:09: Waiting for drywall / Jake Shimmin on 2025-10-21T15:24:58.946Z: THERE IS NO DRY PLYWOOD IN THIS ROOM LOOK AT THE PLANS. / allucent_notes_20251028_163138: David Wiltberger on 2025-09-24 03:09: Need Drywall before setting / David Wiltberger on 2025-09-30 12:09: Waiting for drywall / Jake Shimmin on 2025-10-21T15:24:58.946Z: THERE IS NO DRY PLYWOOD IN THIS ROOM LOOK AT THE PLANS. / allucent_notes_20251104_160200: David Wiltberger on 2025-09-24 03:09: Need Drywall before setting / David Wiltberger on 2025-09-30 12:09: Waiting for drywall / Jake Shimmin on 2025-10-21T15:24:58.946Z: THERE IS NO DRY PLYWOOD IN THIS ROOM LOOK AT THE PLANS. / allucent_notes: 2025-09-24 03:09 - User: David Wiltberger - Date Added: 2025-09-24 03:09 - Note: Need Drywall before setting / 2025-09-30 12:09 - User: David Wiltberger - Date Added: 2025-09-30 12:09 - Note: Waiting for drywall / 2025-10-21T15:24:58.946Z - User: Jake
- QTS-28041: allucent_notes_20251118_192630: JD Kitchens on 2025-11-18T20:43:13.783Z: No cable racks in this room / JD Kitchens on 2025-11-18T20:45:38.241Z: Please remove / Jason Johnston on 2025-11-19T02:23:14.770Z: undo / allucent_notes_20251202_153722: JD Kitchens on 2025-11-18T20:43:13.783Z: No cable racks in this room / JD Kitchens on 2025-11-18T20:45:38.241Z: Please remove / Jason Johnston on 2025-11-19T02:23:14.770Z: undo / allucent_notes: 2025-11-18T20:43:13.783Z - User: JD Kitchens - Date Added: 2025-11-18T20:43:13.783Z - Note: No cable racks in this room / 2025-11-18T20:45:38.241Z - User: JD Kitchens - Date Added: 2025-11-18T20:45:38.241Z - Note: Please remove / 2025-11-19T02:23:14.770
- QTS-27671: allucent_notes_20251111_182405: Jason Johnston on 2025-11-11 15:11: waiting until wednesday. / allucent_notes_20251118_192630: Jason Johnston on 2025-11-11 15:11: waiting until wednesday. / Jason Johnston on 2025-11-19T02:23:11.176Z: undo / allucent_notes_20251202_153722: Jason Johnston on 2025-11-11 15:11: waiting until wednesday. / Jason Johnston on 2025-11-19T02:23:11.176Z: undo / allucent_notes: 2025-11-11 15:11 - User: Jason Johnston - Date Added: 2025-11-11 15:11 - Note: waiting until wednesday. / 2025-11-19T02:23:11.176Z - User: Jason Johnston - Date Added: 2025-11-19T02:23:11.176Z - Note: undo
- QTS-2651: allucent_notes_20251014_152335: David Wiltberger on 2025-09-24 03:09: Needs wall framing completed / David Wiltberger on 2025-09-30 12:09: waitinf for framing to complete / David Wiltberger on 2025-10-14 12:10: Need wall built for water lines / allucent_notes_20251021_145627: David Wiltberger on 2025-09-24 03:09: Needs wall framing completed / David Wiltberger on 2025-09-30 12:09: waitinf for framing to complete / David Wiltberger on 2025-10-14 12:10: Need wall built for water lines / allucent_notes_20251027_224008: David Wiltberger on 2025-09-24 03:09: Needs wall framing completed / David Wiltberger on 2025-09-30 12:09: waitinf for framing to complete / David Wiltberger on 2025-10-14 12:10: Need wall built for water lines / allucent_notes: 2025-09-24 03:09 - User: David Wiltberger - Date Added: 2025-09-24 03:09 - Note: Needs wall framing completed / 2025-09-30 12:09 - User: David Wiltberger - Date Added: 2025-09-30 12:09 - Note: waitinf for framing to complete / 2025-10-14 12:10 - User: D
- QTS-2631: allucent_notes_20251014_152335: David Wiltberger on 2025-10-07 15:10: framing need to be finished / allucent_notes: 2025-10-07 15:10 - User: David Wiltberger - Date Added: 2025-10-07 15:10 - Note: framing need to be finished
- QTS-3751: allucent_notes_20251014_152335: Jake Shimmin on 2025-10-14T16:56:12.221Z: Bathroom framing is being delayed due to necessity of fan walls being built. push to 10/20 / allucent_notes: 2025-10-14T16:56:12.221Z - User: Jake Shimmin - Date Added: 2025-10-14T16:56:12.221Z - Note: Bathroom framing is being delayed due to necessity of fan walls being built. push to 10/20
- QTS-3381: allucent_notes_20251014_152335: David Wiltberger on 2025-10-14 12:10: No walls yet / allucent_notes_20251021_145627: David Wiltberger on 2025-10-14 12:10: No walls yet / allucent_notes_20251027_224008: David Wiltberger on 2025-10-14 12:10: No walls yet / allucent_notes_20251028_163138: David Wiltberger on 2025-10-14 12:10: No walls yet / allucent_notes_20251104_160200: David Wiltberger on 2025-10-14 12:10: No walls yet / David Wiltberger on 2025-11-04 14:11: Access limited due to walls / allucent_notes_20251111_182405: David Wiltberger on 2025-10-14 12:10: No walls yet / David Wiltberger on 2025-11-04 14:11: Access limited due to walls / Jason Johnston on 2025-11-10 14:11: Delayed by drywall completion. / Jason Johnston on 2025-11-11 15:11: Need to tie to early access and priority rooms. / allucent_notes_20251118_192630: David Wiltberger on 2025-10-14 12:10: No walls yet / David Wiltberger on 2025-11-04 14:11: Access limited due to walls / Jason Johnston on 2025-11-10 14:11: Delayed by drywall completion. / Jason Johnston on 2025-11-11 15:11: Need to tie to early access and priority rooms. / Jake Shimmin on 2025-11-17T20:32:23.185Z: THis needs to be pushed out. THe predecessor should be the last early Access rooms/priority rooms in the building / David Wiltberger on 2025-11-17 16:11: out of sequence / allucent_notes_20251202_153722: David Wiltberger on 2025-10-14 12:10: No walls yet / David Wiltberger on 2025-11-04 14:11: Access limited due to walls / Jason Johnston on 2025-11-10 14:11: Delayed by drywall completion. / Jason Johnston on 2025-11-11 15:11: Need to tie to early access and priority rooms. / Jake Shimmin on 2025-11-17T20:32:23.185Z: THis needs to be pushed out. THe predecessor should be the last early Access rooms/priority rooms in the building / David Wiltberger on 2025-11-17 16:11: out of sequence / David Wiltberger on 2025-12-02 06:39: wall built late / allucent_notes_20251209_203830: David Wiltberger on 2025-10-14 12:10: No walls yet / David Wiltberger on 2025-11-04 14:11: Access limited due to walls / Jason Johnston on 2025-11-10 14:11: Delayed by drywall completion. / Jason Johnston on 2025-11-11 15:11: Need to tie to early access and priority rooms. / Jake Shimmin on 2025-11-17T20:32:23.185Z: THis needs to be pushed out. THe predecessor should be the last early Access rooms/priority rooms in the building / David Wiltberger on 2025-11-17 16:11: out of sequence / David Wiltberger on 2025-12-02 06:39: wall built late / allucent_notes_20251216_165335: David Wiltberger on 2025-10-14 12:10: No walls yet / David Wiltberger on 2025-11-04 14:11: Access limited due to walls / Jason Johnston on 2025-11-10 14:11: Delayed by drywall completion. / Jason Johnston on 2025-11-11 15:11: Need to tie to early access and priority rooms. / Jake Shimmin on 2025-11-17T20:32:23.185Z: THis needs to be pushed out. THe predecessor should be the last early Access rooms/priority rooms in the building / David Wiltberger on 2025-11-17 16:11: out of sequence / David Wiltberger on 2025-12-02 06:39: wall built late / allucent_notes: 2025-10-14 12:10 - User: David Wiltberger - Date Added: 2025-10-14 12:10 - Note: No walls yet / 2025-11-04 14:11 - User: David Wiltberger - Date Added: 2025-11-04 14:11 - Note: Access limited due to walls / 2025-11-10 14:11 - User: Jason Johnston - Date
- QTS-2641: allucent_notes_20251014_152335: David Wiltberger on 2025-09-30 12:09: walls not complete / David Wiltberger on 2025-10-07 16:10: No doors / allucent_notes_20251021_145627: David Wiltberger on 2025-09-30 12:09: walls not complete / David Wiltberger on 2025-10-07 16:10: No doors / Jake Shimmin on 2025-10-21 08:10: REI does not have enough manpower to rough in bathroom and data hall walls at the same time. Data hall is priority. / allucent_notes_20251027_224008: David Wiltberger on 2025-09-30 12:09: walls not complete / David Wiltberger on 2025-10-07 16:10: No doors / Jake Shimmin on 2025-10-21 08:10: REI does not have enough manpower to rough in bathroom and data hall walls at the same time. Data hall is priority. / allucent_notes_20251028_163138: David Wiltberger on 2025-09-30 12:09: walls not complete / David Wiltberger on 2025-10-07 16:10: No doors / Jake Shimmin on 2025-10-21 08:10: REI does not have enough manpower to rough in bathroom and data hall walls at the same time. Data hall is priority. / Jason Johnston on 2025-10-28T22:25:08.907Z: Unactualize start. Room is low priority. / Jason Johnston on 2025-10-28 15:10: pushing / allucent_notes_20251104_160200: David Wiltberger on 2025-09-30 12:09: walls not complete / David Wiltberger on 2025-10-07 16:10: No doors / Jake Shimmin on 2025-10-21 08:10: REI does not have enough manpower to rough in bathroom and data hall walls at the same time. Data hall is priority. / Jason Johnston on 2025-10-28T22:25:08.907Z: Unactualize start. Room is low priority. / Jason Johnston on 2025-10-28 15:10: pushing / Scott Masterson on 2025-11-04 14:11: The Restrooms are not a high priority. Its completion date is TCO. / allucent_notes_20251111_182405: David Wiltberger on 2025-09-30 12:09: walls not complete / David Wiltberger on 2025-10-07 16:10: No doors / Jake Shimmin on 2025-10-21 08:10: REI does not have enough manpower to rough in bathroom and data hall walls at the same time. Data hall is priority. / Jason Johnston on 2025-10-28T22:25:08.907Z: Unactualize start. Room is low priority. / Jason Johnston on 2025-10-28 15:10: pushing / Scott Masterson on 2025-11-04 14:11: The Restrooms are not a high priority. Its completion date is TCO. / Jason Johnston on 2025-11-11 15:11: Tie to shaft wall / allucent_notes_20251118_192630: David Wiltberger on 2025-09-30 12:09: walls not complete / David Wiltberger on 2025-10-07 16:10: No doors / Jake Shimmin on 2025-10-21 08:10: REI does not have enough manpower to rough in bathroom and data hall walls at the same time. Data hall is priority. / Jason Johnston on 2025-10-28T22:25:08.907Z: Unactualize start. Room is low priority. / Jason Johnston on 2025-10-28 15:10: pushing / Scott Masterson on 2025-11-04 14:11: The Restrooms are not a high priority. Its completion date is TCO. / Jason Johnston on 2025-11-11 15:11: Tie to shaft wall / Jason Johnston on 2025-11-19T02:23:19.397Z: undo / allucent_notes: 2025-09-30 12:09 - User: David Wiltberger - Date Added: 2025-09-30 12:09 - Note: walls not complete / 2025-10-07 16:10 - User: David Wiltberger - Date Added: 2025-10-07 16:10 - Note: No doors / 2025-10-21 08:10 - User: Jake Shimmin - Date Added: 2025-1
- QTS-3391: allucent_notes_20251014_152335: David Wiltberger on 2025-10-14 12:10: No ceiling built / allucent_notes_20251021_145627: David Wiltberger on 2025-10-14 12:10: No ceiling built / allucent_notes_20251027_224008: David Wiltberger on 2025-10-14 12:10: No ceiling built / allucent_notes_20251028_163138: David Wiltberger on 2025-10-14 12:10: No ceiling built / allucent_notes_20251104_160200: David Wiltberger on 2025-10-14 12:10: No ceiling built / Scott Masterson on 2025-11-04 14:11: The Restrooms are not a high priority. Its completion date is TCO. / allucent_notes_20251111_182405: David Wiltberger on 2025-10-14 12:10: No ceiling built / Scott Masterson on 2025-11-04 14:11: The Restrooms are not a high priority. Its completion date is TCO. / Jason Johnston on 2025-11-11 15:11: Tie to shaft wall. / allucent_notes_20251118_192630: David Wiltberger on 2025-10-14 12:10: No ceiling built / Scott Masterson on 2025-11-04 14:11: The Restrooms are not a high priority. Its completion date is TCO. / Jason Johnston on 2025-11-11 15:11: Tie to shaft wall. / Jason Johnston on 2025-11-19T02:23:22.998Z: undo / allucent_notes: 2025-10-14 12:10 - User: David Wiltberger - Date Added: 2025-10-14 12:10 - Note: No ceiling built / 2025-11-04 14:11 - User: Scott Masterson - Date Added: 2025-11-04 14:11 - Note: The Restrooms are not a high priority. Its completion date is TCO. / 202
- QTS-1001280: allucent_notes_20251014_152335: David Wiltberger on 2025-09-30 12:09: walls not complete / David Wiltberger on 2025-10-07 16:10: No doors / allucent_notes_20251021_145627: David Wiltberger on 2025-09-30 12:09: walls not complete / David Wiltberger on 2025-10-07 16:10: No doors / Jake Shimmin on 2025-10-21 08:10: REI does not have enough manpower to rough in bathroom and data hall walls at the same time. Data hall is priority. / allucent_notes_20251027_224008: David Wiltberger on 2025-09-30 12:09: walls not complete / David Wiltberger on 2025-10-07 16:10: No doors / Jake Shimmin on 2025-10-21 08:10: REI does not have enough manpower to rough in bathroom and data hall walls at the same time. Data hall is priority. / allucent_notes_20251028_163138: David Wiltberger on 2025-09-30 12:09: walls not complete / David Wiltberger on 2025-10-07 16:10: No doors / Jake Shimmin on 2025-10-21 08:10: REI does not have enough manpower to rough in bathroom and data hall walls at the same time. Data hall is priority. / Jason Johnston on 2025-10-28T22:25:08.907Z: Unactualize start. Room is low priority. / Jason Johnston on 2025-10-28 15:10: pushing / allucent_notes_20251104_160200: David Wiltberger on 2025-09-30 12:09: walls not complete / David Wiltberger on 2025-10-07 16:10: No doors / Jake Shimmin on 2025-10-21 08:10: REI does not have enough manpower to rough in bathroom and data hall walls at the same time. Data hall is priority. / Jason Johnston on 2025-10-28T22:25:08.907Z: Unactualize start. Room is low priority. / Jason Johnston on 2025-10-28 15:10: pushing / Scott Masterson on 2025-11-04 14:11: The Restrooms are not a high priority. Its completion date is TCO. / allucent_notes_20251111_182405: David Wiltberger on 2025-09-30 12:09: walls not complete / David Wiltberger on 2025-10-07 16:10: No doors / Jake Shimmin on 2025-10-21 08:10: REI does not have enough manpower to rough in bathroom and data hall walls at the same time. Data hall is priority. / Jason Johnston on 2025-10-28T22:25:08.907Z: Unactualize start. Room is low priority. / Jason Johnston on 2025-10-28 15:10: pushing / Scott Masterson on 2025-11-04 14:11: The Restrooms are not a high priority. Its completion date is TCO. / Jason Johnston on 2025-11-11 15:11: Tie to shaft wall / allucent_notes_20251118_192630: David Wiltberger on 2025-09-30 12:09: walls not complete / David Wiltberger on 2025-10-07 16:10: No doors / Jake Shimmin on 2025-10-21 08:10: REI does not have enough manpower to rough in bathroom and data hall walls at the same time. Data hall is priority. / Jason Johnston on 2025-10-28T22:25:08.907Z: Unactualize start. Room is low priority. / Jason Johnston on 2025-10-28 15:10: pushing / Scott Masterson on 2025-11-04 14:11: The Restrooms are not a high priority. Its completion date is TCO. / Jason Johnston on 2025-11-11 15:11: Tie to shaft wall / Jason Johnston on 2025-11-19T02:23:19.397Z: undo / allucent_notes: 2025-09-30 12:09 - User: David Wiltberger - Date Added: 2025-09-30 12:09 - Note: walls not complete / 2025-10-07 16:10 - User: David Wiltberger - Date Added: 2025-10-07 16:10 - Note: No doors / 2025-10-21 08:10 - User: Jake Shimmin - Date Added: 2025-1
- QTS-3741: allucent_notes_20251230_164549: David Wiltberger on 2025-11-17 16:11: out of sequence / allucent_notes_20251118_192630: David Wiltberger on 2025-11-17 16:11: out of sequence / allucent_notes_20251209_203830: David Wiltberger on 2025-11-17 16:11: out of sequence / allucent_notes_20251216_165335: David Wiltberger on 2025-11-17 16:11: out of sequence / allucent_notes: 2025-11-17 16:11 - User: David Wiltberger - Date Added: 2025-11-17 16:11 - Note: out of sequence
- QTS-44861: allucent_notes_20251111_182405: Jason Johnston on 2025-11-10 14:11: delayed until light fixtures in TI area. / Jason Johnston on 2025-11-11 07:11: Tied to Light fixtures in TI Area / allucent_notes_20251118_192630: Jason Johnston on 2025-11-10 14:11: delayed until light fixtures in TI area. / Jason Johnston on 2025-11-11 07:11: Tied to Light fixtures in TI Area / allucent_notes: 2025-11-10 14:11 - User: Jason Johnston - Date Added: 2025-11-10 14:11 - Note: delayed until light fixtures in TI area. / 2025-11-11 07:11 - User: Jason Johnston - Date Added: 2025-11-11 07:11 - Note: Tied to Light fixtures in TI Area

| ID | WBS | Activity | Duration | Start | Finish | Predecessors | Complete | Remaining | Planned start | Planned finish | Total float | Free float | Calendar | Level | Location | Project Section-1 | Baseline | Layton Responsible Party | Phase-1 | Project Section | Allucent CSI Group | Subcontractor | Phase-1-1 |
| --- | --- | --- | --- | --- | --- | --- | --- | --- | --- | --- | --- | --- | --- | --- | --- | --- | --- | --- | --- | --- | --- | --- | --- |
|  | 4 | **FOH / Commissioning** |  |  |  |  |  |  |  |  |  |  |  |  |  |  |  |  |  |  |  |  |  |
|  | 2 | **Energization & Prefunctional Testing** |  |  |  |  |  |  |  |  |  |  |  |  |  |  |  |  |  |  |  |  |  |
|  | 1 | **Electrical** |  |  |  |  |  |  |  |  |  |  |  |  |  |  |  |  |  |  |  |  |  |
|  | 2 | **Mechanical** |  |  |  |  |  |  |  |  |  |  |  |  |  |  |  |  |  |  |  |  |  |
|  | 4 | **Functional Testing** |  |  |  |  |  |  |  |  |  |  |  |  |  |  |  |  |  |  |  |  |  |
|  | 3 | **Final Commissioning** |  |  |  |  |  |  |  |  |  |  |  |  |  |  |  |  |  |  |  |  |  |
|  | 5 | **Level 2 Front of House Segment B (Gridlines P-V)** |  | 2025-08-01 | 2026-02-23 |  |  |  |  |  |  |  |  |  |  |  |  |  |  |  |  |  |  |
|  | 3 | **L2 / FOH // Tenant Improvement** |  | 2025-08-01 | 2026-02-23 |  |  |  |  |  |  |  |  |  |  |  |  |  |  |  |  |  |  |
| QTS-47001 |  | TI Area B // Prime & Paint Exposed Structure | 5d | 2025-08-01 A | 2025-08-07 A | QTS-46941 | 100% |  |  |  |  |  |  | Level 2 | FOH | Construction | IGMP | Doug Hayes | Phase 1 | Construction | 01ADMIN |  |  |
| QTS-26611 |  | TI Area B // Rough Overhead Fire Sprinkler | 7d | 2025-08-18 A | 2025-08-26 A | QTS-47001, QTS-26031 FF | 100% |  |  |  |  |  |  | Level 2 | FOH |  | IGMP | Dave Wiltberger | Phase 1 | Construction | 01ADMIN | Olympic West Fire Protection |  |
| QTS-26051 |  | TI Area B // Frame Priority Walls /Top Out | 6d | 2025-08-28 A | 2025-09-02 A | QTS-25741, QTS-26611 | 100% |  | 2025-09-03 | 2025-09-10 |  |  |  | Level 2 | FOH |  | IGMP | Doug Hayes | Phase 1 | Construction | 01ADMIN | Performance Contracting, Inc. |  |
| QTS-44821 |  | TI Area B // Install H.M. Frames | 3d | 2025-08-28 A | 2025-09-02 A | QTS-26051 FF | 100% |  | 2025-09-08 | 2025-09-10 |  |  |  | Level 2 | FOH | Construction | IGMP | Doug Hayes |  | Construction | 01ADMIN |  | Phase 1 |
| QTS-25451 |  | TI Area B // Layout Walls | 3d | 2025-09-24 A | 2025-09-26 A | QTS-20771, QTS-25441 FF | 100% |  |  |  |  |  |  | Level 2 | FOH |  | IGMP | Doug Hayes | Phase 1 | Construction | 01ADMIN |  |  |
| QTS-26601 |  | TI Area B // Rough In-Wall Electrical, Security, & Access Controls | 8d | 2025-09-24 A | 2025-10-24 A | QTS-9871, QTS-26051, QTS-44821 | 100% |  | 2025-09-24 | 2025-10-03 |  |  |  | Level 2 | FOH |  | IGMP | Scott Masterson | Phase 1 | Construction | 01ADMIN | Securitas Technology Corporation |  |
| QTS-27891 |  | TI Area B // Insulate Walls | 5d | 2025-10-07 A | 2025-11-12 A | QTS-26601 FF | 100% |  | 2025-10-07 | 2025-10-13 |  |  |  | Level 2 | FOH |  | IGMP | Doug Hayes | Phase 1 | Construction | 01ADMIN |  |  |
| QTS-26621 |  | TI Area B // Rough Overhead Electrical | 10d | 2025-10-27 A | 2025-11-12 A | QTS-26051, QTS-26601 | 100% |  | 2025-10-27 | 2025-11-07 |  |  |  | Level 2 | FOH |  | IGMP | Scott Masterson | Phase 1 | Construction | 01ADMIN | Rosendin Electric, Inc |  |
| QTS-27731 |  | TI Area B // MEP In Wall Inspection | 1d | 2025-10-27 A | 2025-11-12 A | QTS-26601 | 100% |  | 2025-10-27 | 2025-10-27 |  |  |  | Level 2 | FOH |  | IGMP | Dave Wiltberger | Phase 1 | Construction | 01ADMIN | Bel-Aire Mechanical, LLC |  |
| QTS-28411 |  | TI Area B // Hang Drywall | 5d | 2025-11-13 A | 2026-01-10 A | QTS-26051, QTS-27891, QTS-27731, QTS-1001310 FF+4d | 100% |  | 2025-11-10 | 2025-11-14 |  |  | QTS-PHX3 DC1 - 6 day w/ Holidays | Level 2 | FOH |  | IGMP | Sean Waisner | Phase 1 | Construction | 01ADMIN | Performance Contracting, Inc. |  |
| QTS-28421 |  | TI Area B // Rough Overhead Ductwork Gridline P-V | 10d | 2025-11-13 A | 2025-12-23 A | QTS-25451, QTS-26051, QTS-26621, QTS-27891 | 100% |  | 2025-11-10 | 2025-11-21 |  |  |  | Level 2 | FOH |  | IGMP | Dave Wiltberger | Phase 1 | Construction | 01ADMIN | Bel-Aire Mechanical, LLC |  |
| QTS-28901 |  | TI Area B // Tape & Finish Drywall | 6d | 2025-11-20 A | 2026-01-17 | QTS-28411 FF+5d | 100% | 0d | 2025-11-20 | 2025-11-26 | 44d | 0d | QTS-PHX3 DC1 - 6 day w/ Holidays | Level 2 | FOH |  | IGMP | Sean Waisner | Phase 1 | Construction | 01ADMIN | Performance Contracting, Inc. |  |
| QTS-29351 |  | TI Area B // Insulate HVAC Ductwork | 10d | 2025-11-20 A | 2026-01-14 | QTS-28421 FF+5d | 100% | 0d | 2025-11-20 | 2025-12-03 | 51d | 7d | QTS-PHX3 DC1 - 6 day w/ Holidays | Level 2 | FOH |  | IGMP | Dave Wiltberger | Phase 1 | Construction | 01ADMIN | Bel-Aire Mechanical, LLC |  |
| QTS-1001290 |  | TI Area B // Install Overhead Electrical Conduits for Lights & HVAC Units | 8d | 2025-12-17 A | 2026-01-14 | QTS-28421 SS | 100% | 0d | 2025-12-17 | 2025-12-26 | 51d | 7d | QTS-PHX3 DC1 - 6 day w/ Holidays | Level 2 | FOH |  | IGMP | Sean Waisner | Phase 1 | Construction | 01ADMIN |  |  |
| QTS-1001300 |  | TI Area B // Install Framing | 5d | 2025-12-17 A | 2025-12-23 A | QTS-26051 | 100% |  |  |  |  |  |  | Level 2 | FOH |  | IGMP | Scott Masterson | Phase 1 | Construction | 01ADMIN | Rosendin Electric, Inc |  |
| QTS-1001310 |  | TI Area B // Rough In Electrical | 2d | 2025-12-29 A | 2025-12-30 A | QTS-1001300 | 100% |  |  |  |  |  |  | Level 2 | FOH |  | IGMP | Scott Masterson | Phase 1 | Construction | 01ADMIN | Rosendin Electric, Inc |  |
| QTS-29231 |  | TI Area B // Prime & Paints Walls/ Ceilings | 4d | 2026-01-17 A | 2026-01-22 | QTS-28901 |  | 4d |  |  | 44d | 0d | QTS-PHX3 DC1 - 6 day w/ Holidays | Level 2 | FOH |  | IGMP | Sean Waisner | Phase 1 | Construction | 01ADMIN | Pennington Painting Company, LLC |  |
| QTS-30581 |  | TI Area B // Set Doors & Hardware | 3d | 2026-01-21 | 2026-01-23 | QTS-30301, QTS-99650 |  |  |  |  | 60d | 0d | QTS-PHX3 DC1 - 6 day w/ Holidays | Level 2 | FOH |  | IGMP | Sean Waisner | Phase 1 | Construction |  |  |  |
| QTS-29731 |  | TI Area B // Install Armstrong Ceiling Grid | 4d | 2026-01-23 | 2026-01-27 | QTS-29231, QTS-29351, QTS-26611, QTS-1001290 |  |  |  |  | 44d | 0d | QTS-PHX3 DC1 - 6 day w/ Holidays | Level 2 | FOH |  | IGMP | Sean Waisner | Phase 1 | Construction | 01ADMIN | Performance Contracting, Inc. |  |
| QTS-30301 |  | TI Area B // Install Flooring & Base | 10d | 2026-01-23 A | 2026-01-20 | QTS-29231 SS | 80% | 2d | 2026-01-23 | 2026-02-03 | 60d | 0d | QTS-PHX3 DC1 - 6 day w/ Holidays | Level 2 | FOH |  | IGMP | Sean Waisner | Phase 1 | Construction | 01ADMIN |  |  |
| QTS-30651 |  | TI Area B // Install FF&E | 5d | 2026-01-24 | 2026-01-29 | QTS-30581 |  |  |  |  | 60d | 0d | QTS-PHX3 DC1 - 6 day w/ Holidays | Level 2 | FOH |  | IGMP | Sean Waisner | Phase 1 | Construction |  |  |  |
| QTS-29921 |  | TI Area B // Install Light Fixtures | 4d | 2026-01-28 | 2026-01-31 | QTS-29231, QTS-29731 |  |  |  |  | 50d | 0d | QTS-PHX3 DC1 - 6 day w/ Holidays | Level 2 | FOH |  | IGMP | Scott Masterson | Phase 1 | Construction | 01ADMIN | Rosendin Electric, Inc |  |
| QTS-29931 |  | TI Area B // Install Mechanical Trim | 7d | 2026-01-28 | 2026-02-04 | QTS-29731 |  |  |  |  | 44d | 0d | QTS-PHX3 DC1 - 6 day w/ Holidays | Level 2 | FOH |  | IGMP | Dave Wiltberger | Phase 1 | Construction | 01ADMIN | Bel-Aire Mechanical, LLC |  |
| QTS-29941 |  | TI Area B // Install Fire Sprinkler Trim | 3d | 2026-01-28 | 2026-01-30 | QTS-29731 |  |  |  |  | 48d | 4d | QTS-PHX3 DC1 - 6 day w/ Holidays | Level 2 | FOH |  | IGMP | Dave Wiltberger | Phase 1 | Construction | 01ADMIN | Olympic West Fire Protection |  |
| QTS-30701 |  | TI Area B // Install Window Treatments | 2d | 2026-01-30 | 2026-01-31 | QTS-30581, QTS-30651 |  |  |  |  | 60d | 52d | QTS-PHX3 DC1 - 6 day w/ Holidays | Level 2 | FOH |  | IGMP | Sean Waisner | Phase 1 | Construction |  | Giroux Glass, Inc |  |
| QTS-30061 |  | TI Area B // Install Electrical Wall Trim | 5d | 2026-02-02 | 2026-02-06 | QTS-29231, QTS-29921 |  |  |  |  | 50d | 6d | QTS-PHX3 DC1 - 6 day w/ Holidays | Level 2 | FOH |  | IGMP | Scott Masterson | Phase 1 | Construction |  | Rosendin Electric, Inc |  |
| QTS-30131 |  | TI Area B // MEP Overhead Inspection | 1d | 2026-02-05 | 2026-02-05 | QTS-29931, QTS-29941 |  |  |  |  | 44d | 0d | QTS-PHX3 DC1 - 6 day w/ Holidays | Level 2 | FOH |  | IGMP | Dave Wiltberger | Phase 1 | Construction |  | Bel-Aire Mechanical, LLC |  |
| QTS-30151 |  | TI Area B // Drop Ceiling Tiles | 2d | 2026-02-06 | 2026-02-07 | QTS-30131 |  |  |  |  | 44d | 0d | QTS-PHX3 DC1 - 6 day w/ Holidays | Level 2 | FOH |  | IGMP | Sean Waisner | Phase 1 | Construction |  | Performance Contracting, Inc. |  |
| QTS-30231 |  | TI Area B // Install Wood Ceiling | 5d | 2026-02-09 | 2026-02-13 | QTS-30151 |  |  |  |  | 44d | 0d | QTS-PHX3 DC1 - 6 day w/ Holidays | Level 2 | FOH |  | IGMP | Sean Waisner | Phase 1 | Construction |  | Performance Contracting, Inc. |  |
| QTS-30391 |  | TI Area B // Install Light Fixtures at Wood Ceiling | 5d | 2026-02-14 | 2026-02-19 | QTS-30231, QTS-30061 |  |  |  |  | 44d | 36d | QTS-PHX3 DC1 - 6 day w/ Holidays | Level 2 | FOH |  | IGMP | Scott Masterson | Phase 1 | Construction |  | Rosendin Electric, Inc |  |
| QTS-30311 |  | TI Area B // Install FEC's | 2d | 2026-02-21 | 2026-02-23 | QTS-1004520, QTS-30151 |  |  |  |  | 41d | 33d | QTS-PHX3 DC1 - 6 day w/ Holidays | Level 2 | FOH |  | IGMP | Sean Waisner | Phase 1 | Construction |  |  |  |

Notes:
- QTS-26611: allucent_notes: David Wiltberger on 2025-08-26 06:08: new piping needed to be fabricated for west branch line / allucent_notes: 2025-08-26 06:08 - User: David Wiltberger - Date Added: 2025-08-26 06:08 - Note: new piping needed to be fabricated for west branch line
- QTS-26051: allucent_notes: Jason Johnston on 2025-09-02 13:09: Switched with Area A to Area B / allucent_notes: 2025-09-02 13:09 - User: Jason Johnston - Date Added: 2025-09-02 13:09 - Note: Switched with Area A to Area B
- QTS-26601: allucent_notes: Jason Johnston on 2025-09-02 13:09: Broke tie to BIM. Framing to be completed by 9/6. / allucent_notes_20251014_152335: Jason Johnston on 2025-09-02 13:09: Broke tie to BIM. Framing to be completed by 9/6. / David Wiltberger on 2025-09-09 14:09: walls delayed / David Wiltberger on 2025-10-07 15:10: REI not completed / David Wiltberger on 2025-10-14 12:10: Missing door frames / allucent_notes_20251021_145627: Jason Johnston on 2025-09-02 13:09: Broke tie to BIM. Framing to be completed by 9/6. / David Wiltberger on 2025-09-09 14:09: walls delayed / David Wiltberger on 2025-10-07 15:10: REI not completed / David Wiltberger on 2025-10-14 12:10: Missing door frames / allucent_notes_20251027_224008: Jason Johnston on 2025-09-02 13:09: Broke tie to BIM. Framing to be completed by 9/6. / David Wiltberger on 2025-09-09 14:09: walls delayed / David Wiltberger on 2025-10-07 15:10: REI not completed / David Wiltberger on 2025-10-14 12:10: Missing door frames / allucent_notes: 2025-09-02 13:09 - User: Jason Johnston - Date Added: 2025-09-02 13:09 - Note: Broke tie to BIM. Framing to be completed by 9/6. / 2025-09-09 14:09 - User: David Wiltberger - Date Added: 2025-09-09 14:09 - Note: walls delayed / 2025-10-07 15:10 - User:
- QTS-27891: allucent_notes_20251027_224008: Jake Shimmin on 2025-10-27 10:10: Need manpower to finish install. Most of REI is on 1st floor. / allucent_notes_20251028_163138: Jake Shimmin on 2025-10-27 10:10: Need manpower to finish install. Most of REI is on 1st floor. / allucent_notes_20251104_160200: Jake Shimmin on 2025-10-27 10:10: Need manpower to finish install. Most of REI is on 1st floor. / Jason Johnston on 2025-11-04 15:11: Need Update / allucent_notes_20251111_182405: Jake Shimmin on 2025-10-27 10:10: Need manpower to finish install. Most of REI is on 1st floor. / Jason Johnston on 2025-11-04 15:11: Need Update / Jason Johnston on 2025-11-10 14:11: Delayed until early access rooms are done. / Jason Johnston on 2025-11-11 15:11: Waiting on elevator shaft walls / allucent_notes_20251118_192630: Jake Shimmin on 2025-10-27 10:10: Need manpower to finish install. Most of REI is on 1st floor. / Jason Johnston on 2025-11-04 15:11: Need Update / Jason Johnston on 2025-11-10 14:11: Delayed until early access rooms are done. / Jason Johnston on 2025-11-11 15:11: Waiting on elevator shaft walls / allucent_notes: 2025-10-27 10:10 - User: Jake Shimmin - Date Added: 2025-10-27 10:10 - Note: Need manpower to finish install. Most of REI is on 1st floor. / 2025-11-04 15:11 - User: Jason Johnston - Date Added: 2025-11-04 15:11 - Note: Need Update / 2025-11-10 14:11
- QTS-26621: allucent_notes_20251014_152335: David Wiltberger on 2025-09-09 14:09: Walls delayed / David Wiltberger on 2025-09-30 12:09: waiting for plumbing / allucent_notes_20251021_145627: David Wiltberger on 2025-09-09 14:09: Walls delayed / David Wiltberger on 2025-09-30 12:09: waiting for plumbing / allucent_notes_20251027_224008: David Wiltberger on 2025-09-09 14:09: Walls delayed / David Wiltberger on 2025-09-30 12:09: waiting for plumbing / allucent_notes_20251028_163138: David Wiltberger on 2025-09-09 14:09: Walls delayed / David Wiltberger on 2025-09-30 12:09: waiting for plumbing / allucent_notes_20251104_160200: David Wiltberger on 2025-09-09 14:09: Walls delayed / David Wiltberger on 2025-09-30 12:09: waiting for plumbing / allucent_notes_20251111_182405: David Wiltberger on 2025-09-09 14:09: Walls delayed / David Wiltberger on 2025-09-30 12:09: waiting for plumbing / Jason Johnston on 2025-11-10 14:11: Delayed until early access rooms are complete. / Jason Johnston on 2025-11-11 15:11: Waiting on elevator shaft walls / allucent_notes_20251118_192630: David Wiltberger on 2025-09-09 14:09: Walls delayed / David Wiltberger on 2025-09-30 12:09: waiting for plumbing / Jason Johnston on 2025-11-10 14:11: Delayed until early access rooms are complete. / Jason Johnston on 2025-11-11 15:11: Waiting on elevator shaft walls / Jason Johnston on 2025-11-19T02:23:26.718Z: undo / allucent_notes: 2025-09-09 14:09 - User: David Wiltberger - Date Added: 2025-09-09 14:09 - Note: Walls delayed / 2025-09-30 12:09 - User: David Wiltberger - Date Added: 2025-09-30 12:09 - Note: waiting for plumbing / 2025-11-10 14:11 - User: Jason Johnston - Date Added
- QTS-27731: allucent_notes_20251014_152335: David Wiltberger on 2025-10-07 15:10: REI not completed / allucent_notes_20251021_145627: David Wiltberger on 2025-10-07 15:10: REI not completed / allucent_notes_20251027_224008: David Wiltberger on 2025-10-07 15:10: REI not completed / Jake Shimmin on 2025-10-27 10:10: Waiting for manpower to free up. / allucent_notes_20251028_163138: David Wiltberger on 2025-10-07 15:10: REI not completed / Jake Shimmin on 2025-10-27 10:10: Waiting for manpower to free up. / allucent_notes_20251104_160200: David Wiltberger on 2025-10-07 15:10: REI not completed / Jake Shimmin on 2025-10-27 10:10: Waiting for manpower to free up. / David Wiltberger on 2025-11-04 14:11: Need breakout to define area. walls are not complete to finish / allucent_notes_20251111_182405: David Wiltberger on 2025-10-07 15:10: REI not completed / Jake Shimmin on 2025-10-27 10:10: Waiting for manpower to free up. / David Wiltberger on 2025-11-04 14:11: Need breakout to define area. walls are not complete to finish / Jason Johnston on 2025-11-10 14:11: Delayed until early access rooms are complete. / Jason Johnston on 2025-11-11 15:11: Waiting on elevator shaft walls / allucent_notes_20251118_192630: David Wiltberger on 2025-10-07 15:10: REI not completed / Jake Shimmin on 2025-10-27 10:10: Waiting for manpower to free up. / David Wiltberger on 2025-11-04 14:11: Need breakout to define area. walls are not complete to finish / Jason Johnston on 2025-11-10 14:11: Delayed until early access rooms are complete. / Jason Johnston on 2025-11-11 15:11: Waiting on elevator shaft walls / allucent_notes: 2025-10-07 15:10 - User: David Wiltberger - Date Added: 2025-10-07 15:10 - Note: REI not completed / 2025-10-27 10:10 - User: Jake Shimmin - Date Added: 2025-10-27 10:10 - Note: Waiting for manpower to free up. / 2025-11-04 14:11 - User: David Wiltber
- QTS-28411: allucent_notes_20251230_164549: Jake Shimmin on 2025-10-14T16:59:18.111Z: waiting on electrical rough in and inspection. will be complete 10/22 / Jake Shimmin on 2025-10-14 10:10: Focusing on fan walls not enough man power to do both. / Sean Waisner on 2025-12-02 15:31: Awaiting for electrical inspection / Sean Waisner on 2025-12-09 15:32: need electrical / Sean Waisner on 2025-12-16 15:05: Still need rough walls from REI / allucent_notes_20251014_152335: Jake Shimmin on 2025-10-14T16:59:18.111Z: waiting on electrical rough in and inspection. will be complete 10/22 / Jake Shimmin on 2025-10-14 10:10: Focusing on fan walls not enough man power to do both. / allucent_notes_20251021_145627: Jake Shimmin on 2025-10-14T16:59:18.111Z: waiting on electrical rough in and inspection. will be complete 10/22 / Jake Shimmin on 2025-10-14 10:10: Focusing on fan walls not enough man power to do both. / allucent_notes_20251027_224008: Jake Shimmin on 2025-10-14T16:59:18.111Z: waiting on electrical rough in and inspection. will be complete 10/22 / Jake Shimmin on 2025-10-14 10:10: Focusing on fan walls not enough man power to do both. / allucent_notes_20251028_163138: Jake Shimmin on 2025-10-14T16:59:18.111Z: waiting on electrical rough in and inspection. will be complete 10/22 / Jake Shimmin on 2025-10-14 10:10: Focusing on fan walls not enough man power to do both. / allucent_notes_20251104_160200: Jake Shimmin on 2025-10-14T16:59:18.111Z: waiting on electrical rough in and inspection. will be complete 10/22 / Jake Shimmin on 2025-10-14 10:10: Focusing on fan walls not enough man power to do both. / allucent_notes_20251111_182405: Jake Shimmin on 2025-10-14T16:59:18.111Z: waiting on electrical rough in and inspection. will be complete 10/22 / Jake Shimmin on 2025-10-14 10:10: Focusing on fan walls not enough man power to do both. / allucent_notes_20251118_192630: Jake Shimmin on 2025-10-14T16:59:18.111Z: waiting on electrical rough in and inspection. will be complete 10/22 / Jake Shimmin on 2025-10-14 10:10: Focusing on fan walls not enough man power to do both. / allucent_notes_20251202_153722: Jake Shimmin on 2025-10-14T16:59:18.111Z: waiting on electrical rough in and inspection. will be complete 10/22 / Jake Shimmin on 2025-10-14 10:10: Focusing on fan walls not enough man power to do both. / Sean Waisner on 2025-12-02 15:31: Awaiting for electrical inspection / allucent_notes_20251209_203830: Jake Shimmin on 2025-10-14T16:59:18.111Z: waiting on electrical rough in and inspection. will be complete 10/22 / Jake Shimmin on 2025-10-14 10:10: Focusing on fan walls not enough man power to do both. / Sean Waisner on 2025-12-02 15:31: Awaiting for electrical inspection / Sean Waisner on 2025-12-09 15:32: need electrical / allucent_notes_20251216_165335: Jake Shimmin on 2025-10-14T16:59:18.111Z: waiting on electrical rough in and inspection. will be complete 10/22 / Jake Shimmin on 2025-10-14 10:10: Focusing on fan walls not enough man power to do both. / Sean Waisner on 2025-12-02 15:31: Awaiting for electrical inspection / Sean Waisner on 2025-12-09 15:32: need electrical / Sean Waisner on 2025-12-16 15:05: Still need rough walls from REI / allucent_notes: 2025-10-14T16:59:18.111Z - User: Jake Shimmin - Date Added: 2025-10-14T16:59:18.111Z - Note: waiting on electrical rough in and inspection. will be complete 10/22 / 2025-10-14 10:10 - User: Jake Shimmin - Date Added: 2025-10-14 10:10 - Note: Focusing o
- QTS-28421: allucent_notes_20251230_164549: David Wiltberger on 2025-12-02 06:40: wall built late / Scott Masterson on 2025-12-16 16:20: some of this reamining duct is tied to the corridor stop work from fire suppression. / allucent_notes_20251202_153722: David Wiltberger on 2025-12-02 06:40: wall built late / allucent_notes_20251209_203830: David Wiltberger on 2025-12-02 06:40: wall built late / allucent_notes_20251216_165335: David Wiltberger on 2025-12-02 06:40: wall built late / Scott Masterson on 2025-12-16 16:20: some of this reamining duct is tied to the corridor stop work from fire suppression. / allucent_notes: 2025-12-02 06:40 - User: David Wiltberger - Date Added: 2025-12-02 06:40 - Note: wall built late / 2025-12-16 16:20 - User: Scott Masterson - Date Added: 2025-12-16 16:20 - Note: some of this reamining duct is tied to the corridor stop work from fire su
- QTS-28901: allucent_notes_20251230_164549: Sean Waisner on 2025-12-02 15:34: Only top out need electrical / allucent_notes_20251202_153722: Sean Waisner on 2025-12-02 15:34: Only top out need electrical / allucent_notes_20251209_203830: Sean Waisner on 2025-12-02 15:34: Only top out need electrical / allucent_notes_20251216_165335: Sean Waisner on 2025-12-02 15:34: Only top out need electrical / allucent_notes: 2025-12-02 15:34 - User: Sean Waisner - Date Added: 2025-12-02 15:34 - Note: Only top out need electrical

| ID | WBS | Activity | Duration | Start | Finish | Predecessors | Complete | Remaining | Planned start | Planned finish | Total float | Free float | Constraint | Calendar | Level | Location | Project Section-1 | Phase-1-1 | Baseline | Layton Responsible Party | Project Section | Allucent CSI Group | Subcontractor | Phase-1 |
| --- | --- | --- | --- | --- | --- | --- | --- | --- | --- | --- | --- | --- | --- | --- | --- | --- | --- | --- | --- | --- | --- | --- | --- | --- |
|  | 2 | **L2 / FOH // Electrical Room #0273** |  | 2025-09-24 | 2025-12-04 |  |  |  |  |  |  |  |  |  |  |  |  |  |  |  |  |  |  |  |
| QTS-1551 |  | Electrical Room #0273 // Frame Walls | 1d | 2025-09-24 A | 2025-09-24 A | QTS-26051 | 100% |  |  |  |  |  |  |  | Level 2 | FOH | Construction | Phase 1 | IGMP | Doug Hayes | Construction | 01ADMIN |  |  |
| QTS-44831 |  | Electrical Room #0273 // Set H.M. Door Frame | 1d | 2025-09-24 A | 2025-09-24 A | QTS-1551 FF | 100% |  |  |  |  |  |  |  | Level 2 | FOH | Construction | Phase 1 | IGMP | Doug Hayes | Construction | 01ADMIN |  |  |
| QTS-2511 |  | Electrical Room #0273 // Rough In Electrical | 2d | 2025-09-25 A | 2025-09-26 A | QTS-1551, QTS-44831 | 100% |  |  |  |  |  |  |  | Level 2 | FOH | Construction | Phase 1 | IGMP | Scott Masterson | Construction | 01ADMIN | Rosendin Electric, Inc |  |
| QTS-2541 |  | Electrical Room #0273 // Rough Overhead Linesets | 5d | 2025-10-03 A | 2025-10-24 A | QTS-1551 | 100% |  | 2025-10-03 | 2025-10-09 |  |  |  |  | Level 2 | FOH | Construction | Phase 1 | IGMP | Dave Wiltberger | Construction | 01ADMIN | Bel-Aire Mechanical, LLC |  |
| QTS-99560 |  | Electrical Room #0273 // Set Door Frame | 1d | 2025-10-06 A | 2025-10-06 A | QTS-1551 | 100% |  |  |  |  |  |  |  | Level 2 | FOH | Construction | Phase 1 | IGMP | Doug Hayes | Construction | 01ADMIN |  |  |
| QTS-3171 |  | Electrical Room #0273 // In Wall Inspection | 1d | 2025-10-09 A | 2025-10-09 A | QTS-2511 | 100% |  |  |  |  |  |  |  | Level 2 | FOH | Construction | Phase 1 | IGMP | Dave Wiltberger | Construction | 01ADMIN | Bel-Aire Mechanical, LLC |  |
| QTS-2531 |  | Electrical Room #0273 // Rough Overhead Fire Sprinkler | 2d | 2025-10-17 A | 2025-10-20 A | QTS-26611, QTS-11491 | 100% |  |  |  |  |  |  |  | Level 2 | FOH | Construction | Phase 1 | IGMP | Dave Wiltberger | Construction | 01ADMIN | Olympic West Fire Protection |  |
| QTS-3401 |  | Electrical Room #0273 // Hang Drywall | 1d | 2025-10-21 A | 2025-10-21 A | QTS-3171, QTS-2531, QTS-99560 | 100% |  |  |  |  |  |  |  | Level 2 | FOH | Construction | Phase 1 | IGMP | Doug Hayes | Construction | 01ADMIN |  |  |
| QTS-3611 |  | Electrical Room #0273 // Tape & Finish Drywall | 3d | 2025-10-22 A | 2025-10-24 A | QTS-3401 | 100% |  |  |  |  |  |  |  | Level 2 | FOH | Construction | Phase 1 | IGMP | Doug Hayes | Construction | 01ADMIN |  |  |
| QTS-4811 |  | Electrical Room #0273 // Plywood Install | 1d | 2025-10-27 A | 2025-10-27 A | QTS-3611 | 100% |  |  |  |  |  |  |  | Level 2 | FOH | Construction | Phase 1 | IGMP | Doug Hayes | Construction | 01ADMIN |  |  |
| QTS-4401 |  | Electrical Room #0273 // Prime & Paint | 2d | 2025-10-28 A | 2025-10-29 A | QTS-4811 | 100% |  |  |  |  |  |  |  | Level 2 | FOH | Construction | Phase 1 | IGMP | Doug Hayes | Construction | 01ADMIN |  |  |
| QTS-101640 |  | Electrical Room #0273 // Cure and Seal House Pads | 3d | 2025-10-30 A | 2025-11-03 A | QTS-4401 | 100% |  |  |  |  |  |  |  | Level 2 | FOH | Construction | Phase 1 | IGMP | Ron Carroll | Construction | 01ADMIN | Rosendin Electric, Inc |  |
| QTS-5531 |  | Electrical Room #0273 // Install AC Unit | 2d | 2025-10-30 A | 2025-10-31 A | QTS-4401, QTS-2541 | 100% |  |  |  |  |  |  |  | Level 2 | FOH | Construction | Phase 1 | IGMP | Dave Wiltberger | Construction | 01ADMIN | Bel-Aire Mechanical, LLC |  |
| QTS-4831 |  | Electrical Room #0273 // Set UPS | 1d | 2025-11-12 A | 2025-11-12 A | QTS-4401, QTS-27181, QTS-27191 | 100% |  | 2025-11-10 | 2025-11-10 |  |  |  |  | Level 2 | FOH | Construction | Phase 1 | IGMP | Scott Masterson | Construction | 01ADMIN | Rosendin Electric, Inc |  |
| QTS-6151 |  | Electrical Room #0273 // Install Light Fixtures | 2d | 2025-11-12 A | 2025-11-13 A | QTS-5531 | 100% |  | 2025-11-10 | 2025-11-11 |  |  |  |  | Level 2 | FOH | Construction | Phase 1 | IGMP | Scott Masterson | Construction | 01ADMIN | Rosendin Electric, Inc |  |
| QTS-6771 |  | Electrical Room #0273 // Install Cable Racks | 5d | 2025-11-14 A | 2025-11-20 A | QTS-1371 SS | 100% |  | 2025-11-12 | 2025-11-18 |  |  |  |  | Level 2 | FOH | Construction | Phase 1 | IGMP | Scott Masterson | Construction | 01ADMIN | E2 Optics, LLC |  |
| QTS-2521 |  | Electrical Room #0273 // Set Door (Temp) | 1d | 2025-11-17 A | 2025-11-17 A | QTS-1551 FF, QTS-6151, QTS-99630 SS | 100% |  |  |  |  |  |  |  | Level 2 | FOH | Construction | Phase 1 | IGMP | Sean Waisner | Construction | 01ADMIN |  |  |
| QTS-4821 |  | Electrical Room #0273 // Set Static Transfer Switch | 1d | 2025-12-04 A | 2025-12-04 A | QTS-4401, QTS-4401 FF, QTS-101640, QTS-27171 | 100% |  |  |  |  |  |  |  | Level 2 | FOH | Construction | Phase 1 | IGMP | Scott Masterson | Construction | 01ADMIN | Rosendin Electric, Inc |  |
|  | 4 | **L2 / FOH // Fire Riser #0271** |  | 2025-08-28 | 2026-02-12 |  |  |  |  |  |  |  |  |  |  |  |  |  |  |  |  |  |  |  |
| QTS-11491 |  | Fire Riser #0271 // Rough Overhead Fire Sprinkler | 10d | 2025-08-28 A | 2025-10-16 A | QTS-26611 | 100% |  | 2025-08-28 | 2025-09-11 |  |  |  |  | Level 2 | FOH | Construction | Phase 1 | IGMP | Dave Wiltberger | Construction | 01ADMIN | Olympic West Fire Protection |  |
| QTS-1541 |  | Fire Riser #0271 // Frame Walls | 2d | 2025-09-24 A | 2025-09-25 A | QTS-26051 | 100% |  |  |  |  |  |  |  | Level 2 | FOH | Construction | Phase 1 | IGMP | Doug Hayes | Construction | 01ADMIN |  |  |
| QTS-44841 |  | Fire Riser #0271 // Set H.M. Frame | 1d | 2025-09-24 A | 2025-09-24 A | QTS-1541 SS | 100% |  |  |  |  |  |  |  | Level 2 | FOH | Construction | Phase 1 | IGMP | Doug Hayes | Construction | 01ADMIN |  |  |
| QTS-2481 |  | Fire Riser #0271 // Rough In Electrical | 5d | 2025-09-26 A | 2025-10-02 A | QTS-1541 | 100% |  |  |  |  |  |  |  | Level 2 | FOH | Construction | Phase 1 | IGMP | Scott Masterson | Construction | 01ADMIN | Rosendin Electric, Inc |  |
| QTS-2491 |  | Fire Riser #0271 // In Wall Rough Plumbing | 5d | 2025-09-26 A | 2025-10-10 A | QTS-1541 | 100% |  | 2025-09-26 | 2025-10-02 |  |  |  |  | Level 2 | FOH | Construction | Phase 1 | IGMP | Dave Wiltberger | Construction | 01ADMIN | Bel-Aire Mechanical, LLC |  |
| QTS-3651 |  | Fire Riser #0271 // In Wall Inspection | 5d | 2025-10-13 A | 2025-10-29 A | QTS-2491, QTS-2481 | 100% |  | 2025-10-13 | 2025-10-17 |  |  |  |  | Level 2 | FOH | Construction | Phase 1 | IGMP | Dave Wiltberger | Construction | 01ADMIN | Bel-Aire Mechanical, LLC |  |
| QTS-5521 |  | Fire Riser #0271 // Hang Drywall | 5d | 2025-10-20 A | 2025-10-24 A | QTS-3651 SS | 100% |  |  |  |  |  |  |  | Level 2 | FOH | Construction | Phase 1 | IGMP | Doug Hayes | Construction | 01ADMIN |  |  |
| QTS-6871 |  | Fire Riser #0271 // Tape & Finish Drywall | 5d | 2025-10-27 A | 2025-10-31 A | QTS-5521 | 100% |  |  |  |  |  |  |  | Level 2 | FOH | Construction | Phase 1 | IGMP | Doug Hayes | Construction | 01ADMIN |  |  |
| QTS-8561 |  | Fire Riser #0271 // Prime & Paint | 5d | 2025-11-03 A | 2025-11-04 A | QTS-6871 | 100% |  | 2025-11-03 | 2025-11-07 |  |  |  |  | Level 2 | FOH | Construction | Phase 1 | IGMP | Doug Hayes | Construction | 01ADMIN |  |  |
| QTS-10181 |  | Fire Riser #0271 // Install VESDA | 2d | 2025-11-21 A | 2025-11-24 A | QTS-8561, QTS-120000 | 100% |  |  |  |  |  |  |  | Level 2 | FOH | Construction | Phase 1 | IGMP | Dave Wiltberger | Construction | 01ADMIN |  |  |
| QTS-2501 |  | Fire Riser #0271 // Install Door & Hardware (Temp) | 1d | 2025-11-24 A | 2025-11-24 A | QTS-1541, QTS-44841, QTS-6871, QTS-99650 SS, QTS-99630 SS | 100% |  |  |  |  |  |  |  | Level 2 | FOH | Construction | Phase 1 | IGMP | Sean Waisner | Construction | 01ADMIN |  |  |
| QTS-10171 |  | Fire Riser #0271 // Install Light Fixtures | 5d | 2025-12-15 A | 2026-01-14 | QTS-8561, QTS-120000 | 100% | 0d | 2025-12-15 | 2025-12-19 | 75d | 67d |  | QTS-PHX3 DC1 - 6 day w/ Holidays | Level 2 | FOH | Construction | Phase 1 | IGMP | Scott Masterson | Construction | 01ADMIN | Rosendin Electric, Inc |  |
| QTS-13281 |  | Fire Riser #0271 // Build Fire Risers | 10d | 2026-01-16 | 2026-01-28 | QTS-23011, QTS-11491, QTS-6871, QTS-120000 |  |  |  |  | 50d | 0d | start on or after 2026-01-05 | QTS-PHX3 DC1 - 6 day w/ Holidays | Level 2 | FOH | Construction | Phase 1 | IGMP | Dave Wiltberger | Construction | 01ADMIN | Olympic West Fire Protection |  |
| QTS-15091 |  | Fire Riser #0271 // Air Test System | 2d | 2026-01-29 | 2026-01-30 | QTS-13281 |  |  |  |  | 50d | 0d |  | QTS-PHX3 DC1 - 6 day w/ Holidays | Level 2 | FOH | Construction | Phase 1 | IGMP | Dave Wiltberger | Construction | 01ADMIN | Olympic West Fire Protection |  |
| QTS-15431 |  | Fire Riser #0271 // Install Fire Pump | 2d | 2026-01-31 | 2026-02-02 | QTS-13281, QTS-15091 |  |  |  |  | 50d | 0d |  | QTS-PHX3 DC1 - 6 day w/ Holidays | Level 2 | FOH | Construction | Phase 1 | IGMP | Dave Wiltberger | Construction | 01ADMIN | Olympic West Fire Protection |  |
| QTS-15731 |  | Fire Riser #0271 // Install Heater | 5d | 2026-02-03 | 2026-02-07 | QTS-15431 |  |  |  |  | 50d | 0d |  | QTS-PHX3 DC1 - 6 day w/ Holidays | Level 2 | FOH | Construction | Phase 1 | IGMP | Dave Wiltberger | Construction | 01ADMIN | Bel-Aire Mechanical, LLC |  |
| QTS-1004040 |  | Fire Riser #0271 // Water Test System | 2d | 2026-02-09 | 2026-02-10 | QTS-15731 |  |  |  |  | 50d | 0d |  | QTS-PHX3 DC1 - 6 day w/ Holidays | Level 1 | FOH |  |  | IGMP | Dave Wiltberger | Construction | 01ADMIN | Olympic West Fire Protection | Phase 1 |
| QTS-1004050 |  | Fire Riser #0271 // City Inspection of Fire Pump/System | 2d | 2026-02-11 | 2026-02-12 | QTS-1004040 |  |  |  |  | 50d | 42d |  | QTS-PHX3 DC1 - 6 day w/ Holidays | Level 1 | FOH |  |  | IGMP | Dave Wiltberger | Construction | 01ADMIN | Olympic West Fire Protection | Phase 1 |

Notes:
- QTS-2541: allucent_notes_20251014_152335: David Wiltberger on 2025-09-09 14:09: walls delayed / David Wiltberger on 2025-09-24 03:09: Need drywall completed / David Wiltberger on 2025-09-30 09:09: Need to coordinate with buildout / David Wiltberger on 2025-10-14 12:10: need to finish walls / allucent_notes_20251021_145627: David Wiltberger on 2025-09-09 14:09: walls delayed / David Wiltberger on 2025-09-24 03:09: Need drywall completed / David Wiltberger on 2025-09-30 09:09: Need to coordinate with buildout / David Wiltberger on 2025-10-14 12:10: need to finish walls / allucent_notes_20251027_224008: David Wiltberger on 2025-09-09 14:09: walls delayed / David Wiltberger on 2025-09-24 03:09: Need drywall completed / David Wiltberger on 2025-09-30 09:09: Need to coordinate with buildout / David Wiltberger on 2025-10-14 12:10: need to finish walls / allucent_notes: 2025-09-09 14:09 - User: David Wiltberger - Date Added: 2025-09-09 14:09 - Note: walls delayed / 2025-09-24 03:09 - User: David Wiltberger - Date Added: 2025-09-24 03:09 - Note: Need drywall completed / 2025-09-30 09:09 - User: David Wiltberger - Date A
- QTS-3171: allucent_notes_20251014_152335: David Wiltberger on 2025-09-30 12:09: did not pass inspection / David Wiltberger on 2025-10-07 16:10: REI Delayed / allucent_notes: 2025-09-30 12:09 - User: David Wiltberger - Date Added: 2025-09-30 12:09 - Note: did not pass inspection / 2025-10-07 16:10 - User: David Wiltberger - Date Added: 2025-10-07 16:10 - Note: REI Delayed
- QTS-4811: allucent_notes_20251027_224008: Jake Shimmin on 2025-10-27T16:14:53.231Z: No plywood din this room / allucent_notes: 2025-10-27T16:14:53.231Z - User: Jake Shimmin - Date Added: 2025-10-27T16:14:53.231Z - Note: No plywood din this room
- QTS-4831: allucent_notes_20251104_160200: Jason Johnston on 2025-11-04 12:11: Need to find better predecessor for equipment set / allucent_notes_20251111_182405: Jason Johnston on 2025-11-04 12:11: Need to find better predecessor for equipment set / Jason Johnston on 2025-11-10 14:11: Need updated predecessor / Jason Johnston on 2025-11-11 15:11: Finding the new pred / allucent_notes_20251118_192630: Jason Johnston on 2025-11-04 12:11: Need to find better predecessor for equipment set / Jason Johnston on 2025-11-10 14:11: Need updated predecessor / Jason Johnston on 2025-11-11 15:11: Finding the new pred / allucent_notes: 2025-11-04 12:11 - User: Jason Johnston - Date Added: 2025-11-04 12:11 - Note: Need to find better predecessor for equipment set / 2025-11-10 14:11 - User: Jason Johnston - Date Added: 2025-11-10 14:11 - Note: Need updated predecessor / 2025-11-11 15:11
- QTS-6151: allucent_notes_20251104_160200: Jason Johnston on 2025-11-04 12:11: Install light fixtures moved out until light fixtures are onsite. / allucent_notes_20251111_182405: Jason Johnston on 2025-11-04 12:11: Install light fixtures moved out until light fixtures are onsite. / Jason Johnston on 2025-11-10 14:11: Need updated predecessor / Jason Johnston on 2025-11-11 15:11: Finding the new pred / allucent_notes_20251118_192630: Jason Johnston on 2025-11-04 12:11: Install light fixtures moved out until light fixtures are onsite. / Jason Johnston on 2025-11-10 14:11: Need updated predecessor / Jason Johnston on 2025-11-11 15:11: Finding the new pred / allucent_notes: 2025-11-04 12:11 - User: Jason Johnston - Date Added: 2025-11-04 12:11 - Note: Install light fixtures moved out until light fixtures are onsite. / 2025-11-10 14:11 - User: Jason Johnston - Date Added: 2025-11-10 14:11 - Note: Need updated predecessor
- QTS-6771: allucent_notes_20251118_192630: JD Kitchens on 2025-11-18T20:48:17.622Z: No cable racks in this room. please remove / allucent_notes_20251202_153722: JD Kitchens on 2025-11-18T20:48:17.622Z: No cable racks in this room. please remove / allucent_notes: 2025-11-18T20:48:17.622Z - User: JD Kitchens - Date Added: 2025-11-18T20:48:17.622Z - Note: No cable racks in this room. please remove
- QTS-2521: allucent_notes_20251027_224008: Zack Goertz on 2025-09-30T21:46:22.538Z: Set door is not supposed to be this early. HM frame is set and I believe is a different item. / allucent_notes_20251028_163138: Zack Goertz on 2025-09-30T21:46:22.538Z: Set door is not supposed to be this early. HM frame is set and I believe is a different item. / allucent_notes_20251209_203830: Zack Goertz on 2025-09-30T21:46:22.538Z: Set door is not supposed to be this early. HM frame is set and I believe is a different item. / allucent_notes: 2025-09-30T21:46:22.538Z - User: Zack Goertz - Date Added: 2025-09-30T21:46:22.538Z - Note: Set door is not supposed to be this early. HM frame is set and I believe is a different item.
- QTS-4821: allucent_notes_20251104_160200: Jason Johnston on 2025-11-04 12:11: Need to find better predecessor for equipment set / allucent_notes_20251111_182405: Jason Johnston on 2025-11-04 12:11: Need to find better predecessor for equipment set / Jason Johnston on 2025-11-10 14:11: Need updated predecessor / Jason Johnston on 2025-11-11 15:11: Finding the new pred / allucent_notes_20251118_192630: Jason Johnston on 2025-11-04 12:11: Need to find better predecessor for equipment set / Jason Johnston on 2025-11-10 14:11: Need updated predecessor / Jason Johnston on 2025-11-11 15:11: Finding the new pred / allucent_notes_20251202_153722: Jason Johnston on 2025-11-04 12:11: Need to find better predecessor for equipment set / Jason Johnston on 2025-11-10 14:11: Need updated predecessor / Jason Johnston on 2025-11-11 15:11: Finding the new pred / David Wiltberger on 2025-12-02 13:46: Waiting for pad to be poured / allucent_notes_20251209_203830: Jason Johnston on 2025-11-04 12:11: Need to find better predecessor for equipment set / Jason Johnston on 2025-11-10 14:11: Need updated predecessor / Jason Johnston on 2025-11-11 15:11: Finding the new pred / David Wiltberger on 2025-12-02 13:46: Waiting for pad to be poured / allucent_notes: 2025-11-04 12:11 - User: Jason Johnston - Date Added: 2025-11-04 12:11 - Note: Need to find better predecessor for equipment set / 2025-11-10 14:11 - User: Jason Johnston - Date Added: 2025-11-10 14:11 - Note: Need updated predecessor / 2025-11-11 15:11
- QTS-2491: allucent_notes_20251014_152335: David Wiltberger on 2025-09-09 14:09: walls delayed / David Wiltberger on 2025-10-07 15:10: need to inspect / allucent_notes: 2025-09-09 14:09 - User: David Wiltberger - Date Added: 2025-09-09 14:09 - Note: walls delayed / 2025-10-07 15:10 - User: David Wiltberger - Date Added: 2025-10-07 15:10 - Note: need to inspect
- QTS-3651: allucent_notes_20251021_145627: David Wiltberger on 2025-10-21 13:10: Changed schedule to address early access / allucent_notes_20251027_224008: David Wiltberger on 2025-10-21 13:10: Changed schedule to address early access / allucent_notes_20251028_163138: David Wiltberger on 2025-10-21 13:10: Changed schedule to address early access / allucent_notes_20251104_160200: David Wiltberger on 2025-10-21 13:10: Changed schedule to address early access / allucent_notes: 2025-10-21 13:10 - User: David Wiltberger - Date Added: 2025-10-21 13:10 - Note: Changed schedule to address early access
- QTS-8561: allucent_notes_20251104_160200: Jason Johnston on 2025-11-04 12:11: Painted early. / allucent_notes: 2025-11-04 12:11 - User: Jason Johnston - Date Added: 2025-11-04 12:11 - Note: Painted early.
- QTS-10181: allucent_notes_20251111_182405: Jason Johnston on 2025-11-10 14:11: will be delayed by SWN / Jason Johnston on 2025-11-11 17:11: SWO / allucent_notes_20251118_192630: Jason Johnston on 2025-11-10 14:11: will be delayed by SWN / Jason Johnston on 2025-11-11 17:11: SWO / David Wiltberger on 2025-11-17 16:11: out of sequence / allucent_notes_20251202_153722: Jason Johnston on 2025-11-10 14:11: will be delayed by SWN / Jason Johnston on 2025-11-11 17:11: SWO / David Wiltberger on 2025-11-17 16:11: out of sequence / allucent_notes: 2025-11-10 14:11 - User: Jason Johnston - Date Added: 2025-11-10 14:11 - Note: will be delayed by SWN / 2025-11-11 17:11 - User: Jason Johnston - Date Added: 2025-11-11 17:11 - Note: SWO / 2025-11-17 16:11 - User: David Wiltberger - Date Added: 2025-11-
- QTS-10171: allucent_notes_20251230_164549: Jason Johnston on 2025-11-10 14:11: will be delayed by SWN / Jason Johnston on 2025-11-11 17:11: SWO / David Wiltberger on 2025-12-02 13:47: priority room completed on 12/17 / David Wiltberger on 2025-12-30 16:06: access to room / allucent_notes_20251111_182405: Jason Johnston on 2025-11-10 14:11: will be delayed by SWN / Jason Johnston on 2025-11-11 17:11: SWO / allucent_notes_20251118_192630: Jason Johnston on 2025-11-10 14:11: will be delayed by SWN / Jason Johnston on 2025-11-11 17:11: SWO / allucent_notes_20251202_153722: Jason Johnston on 2025-11-10 14:11: will be delayed by SWN / Jason Johnston on 2025-11-11 17:11: SWO / David Wiltberger on 2025-12-02 13:47: priority room completed on 12/17 / allucent_notes_20251209_203830: Jason Johnston on 2025-11-10 14:11: will be delayed by SWN / Jason Johnston on 2025-11-11 17:11: SWO / David Wiltberger on 2025-12-02 13:47: priority room completed on 12/17 / allucent_notes_20251216_165335: Jason Johnston on 2025-11-10 14:11: will be delayed by SWN / Jason Johnston on 2025-11-11 17:11: SWO / David Wiltberger on 2025-12-02 13:47: priority room completed on 12/17 / Notes: 1/13/26: Area not started. / allucent_notes: 2025-11-10 14:11 - User: Jason Johnston - Date Added: 2025-11-10 14:11 - Note: will be delayed by SWN / 2025-11-11 17:11 - User: Jason Johnston - Date Added: 2025-11-11 17:11 - Note: SWO / 2025-12-02 13:47 - User: David Wiltberger - Date Added: 2025-12-
- QTS-13281: allucent_notes_20251230_164549: David Wiltberger on 2025-09-24 03:09: Need drywall completed / David Wiltberger on 2025-11-04 14:11: City sent stop order. Waiting for size of pipe needed / David Wiltberger on 2025-11-17 16:11: out of sequence / David Wiltberger on 2025-12-02 06:40: wall built late / allucent_notes_20251021_145627: David Wiltberger on 2025-09-24 03:09: Need drywall completed / allucent_notes_20251027_224008: David Wiltberger on 2025-09-24 03:09: Need drywall completed / allucent_notes_20251028_163138: David Wiltberger on 2025-09-24 03:09: Need drywall completed / allucent_notes_20251104_160200: David Wiltberger on 2025-09-24 03:09: Need drywall completed / David Wiltberger on 2025-11-04 14:11: City sent stop order. Waiting for size of pipe needed / allucent_notes_20251111_182405: David Wiltberger on 2025-09-24 03:09: Need drywall completed / David Wiltberger on 2025-11-04 14:11: City sent stop order. Waiting for size of pipe needed / allucent_notes_20251118_192630: David Wiltberger on 2025-09-24 03:09: Need drywall completed / David Wiltberger on 2025-11-04 14:11: City sent stop order. Waiting for size of pipe needed / David Wiltberger on 2025-11-17 16:11: out of sequence / allucent_notes_20251202_153722: David Wiltberger on 2025-09-24 03:09: Need drywall completed / David Wiltberger on 2025-11-04 14:11: City sent stop order. Waiting for size of pipe needed / David Wiltberger on 2025-11-17 16:11: out of sequence / David Wiltberger on 2025-12-02 06:40: wall built late / allucent_notes_20251209_203830: David Wiltberger on 2025-09-24 03:09: Need drywall completed / David Wiltberger on 2025-11-04 14:11: City sent stop order. Waiting for size of pipe needed / David Wiltberger on 2025-11-17 16:11: out of sequence / David Wiltberger on 2025-12-02 06:40: wall built late / Notes: 1/20/26: BAM delayed this item by not completing domestic water piping. Tied to first floor. / allucent_notes: 2025-09-24 03:09 - User: David Wiltberger - Date Added: 2025-09-24 03:09 - Note: Need drywall completed / 2025-11-04 14:11 - User: David Wiltberger - Date Added: 2025-11-04 14:11 - Note: City sent stop order. Waiting for size of pipe needed / 2025-11-17

| ID | WBS | Activity | Duration | Start | Finish | Predecessors | Complete | Remaining | Planned start | Planned finish | Total float | Free float | Constraint | Calendar | Subcontractor | Notes | Layton Responsible Party | Level | Location | Project Section-1 | Phase-1-1 | Baseline | Project Section | Allucent CSI Group | Phase-1 |
| --- | --- | --- | --- | --- | --- | --- | --- | --- | --- | --- | --- | --- | --- | --- | --- | --- | --- | --- | --- | --- | --- | --- | --- | --- | --- |
|  | 6 | **Fragnet / RFI #741 Redesign for Additional Split Units** |  | 2025-12-11 | 2026-02-11 |  |  |  |  |  |  |  |  |  |  |  |  |  |  |  |  |  |  |  |  |
| QTS-1002960 |  | Design Change Notification Date | 1d | 2025-12-11 A | 2025-12-11 A | QTS-1371 SS | 100% |  |  |  |  |  |  | **GLOBAL - 5 Day Workweek w/ Basic Holidays | Bel-Aire Mechanical, LLC |  |  |  |  |  |  |  |  |  |  |
| QTS-1002970 |  | Redesign Recevied from QTS | 5d | 2025-12-12 A | 2025-12-17 A | QTS-1002960 | 100% |  | 2025-12-11 | 2025-12-17 |  |  |  | **GLOBAL - 5 Day Workweek w/ Basic Holidays | Bel-Aire Mechanical, LLC |  |  |  |  |  |  |  |  |  |  |
| QTS-1002980 |  | Procure Additional Split Units | 11d | 2025-12-18 A | 2026-01-14 | QTS-1002970 | 100% | 0d | 2025-12-18 | 2025-12-31 | 1d | 0d |  | QTS-PHX3 DC1 - 6 day w/ Holidays | Bel-Aire Mechanical, LLC | 1/13/26: Procurement delayed due to holidays. |  |  |  |  |  |  |  |  |  |
| QTS-1003000 |  | Install Piping for Additional Units | 9d | 2025-12-29 A | 2026-01-23 | QTS-1003020 FF+3d | 11% | 8d | 2025-12-29 | 2026-01-08 | 28d | 0d |  | QTS-PHX3 DC1 - 6 day w/ Holidays | Bel-Aire Mechanical, LLC |  |  |  |  |  |  |  |  |  |  |
| QTS-1003010 |  | RFI #783 Submitted | 1d | 2026-01-06 A | 2026-01-06 A | QTS-1371 SS | 100% |  |  |  |  |  |  | **GLOBAL - 5 Day Workweek w/ Basic Holidays | Bel-Aire Mechanical, LLC |  |  |  |  |  |  |  |  |  |  |
| QTS-1002990 |  | Install Split Units in MMR and IDF Rooms | 24d | 2026-01-14 | 2026-02-11 | QTS-1002980 |  |  |  |  | 1d | 0d |  | QTS-PHX3 DC1 - 6 day w/ Holidays | Bel-Aire Mechanical, LLC |  |  |  |  |  |  |  |  |  |  |
| QTS-1003020 |  | RFI #783 Approval | 4d | 2026-01-14 | 2026-01-17 | QTS-1003010 |  |  |  |  | 29d | 1d |  | QTS-PHX3 DC1 - 6 day w/ Holidays | Bel-Aire Mechanical, LLC |  | Chris Perales |  |  |  |  |  |  |  |  |
| QTS-1003030 |  | Pressure Test Piping for Additional Units | 2d | 2026-01-24 | 2026-01-26 | QTS-1003000 |  |  |  |  | 28d | 0d |  | QTS-PHX3 DC1 - 6 day w/ Holidays | Bel-Aire Mechanical, LLC |  |  |  |  |  |  |  |  |  |  |
|  | 2 | **Back of House (BOH)** |  | 2025-10-08 | 2026-06-13 |  |  |  |  |  |  |  |  |  |  |  |  |  |  |  |  |  |  |  |  |
|  | 3 | **Back of House / Mechanical Yard Buildout** |  | 2025-10-20 | 2026-01-23 |  |  |  |  |  |  |  |  |  |  |  |  |  |  |  |  |  |  |  |  |
| QTS-41731 |  | BOH / Mechanical Yard // Form, Reinforce, & Pour Thickened Slab On Grade for Transformer & Generator | 8d | 2025-10-20 A | 2025-11-03 A | QTS-42511 SS, QTS-42521 | 100% |  | 2025-10-20 | 2025-10-29 |  |  |  |  | Suntec Concrete Inc |  | Ron Carroll | Level 1 | Gen Yard | Construction | Phase 1 | IGMP | Construction | 01ADMIN |  |
| QTS-41761 |  | BOH / Mechanical Yard // OFCI - L2 SET IN PLACE - Eq Type # - House Transformer - 1 units | 3d | 2025-11-04 A | 2025-11-04 A | QTS-36141, QTS-6991, QTS-41731 | 100% |  | 2025-11-05 | 2025-11-07 |  |  |  |  | Rosendin Electric, Inc |  | Scott Masterson | Level 1 | Gen Yard | Construction | Phase 1 | IGMP | Construction | 01ADMIN |  |
| QTS-41881 |  | BOH / Mechanical Yard // OFCI - L2 SET IN PLACE - Eq Type # - House Generator - 1 units | 1d | 2025-11-25 A | 2025-11-25 A | QTS-41761, QTS-39741, QTS-39751, QTS-39761, QTS-39771 | 100% |  |  |  |  |  |  |  | Rosendin Electric, Inc |  | Scott Masterson | Level 1 | Gen Yard | Construction | Phase 1 |  | Construction | 01ADMIN |  |
| QTS-41821 |  | BOH / Mechanical Yard // Install Raceway from Generators to SWD | 4d | 2025-11-26 A | 2025-12-03 A | QTS-41881 | 100% |  |  |  |  |  |  |  | Rosendin Electric, Inc |  | Scott Masterson | Level 1 | Gen Yard | Construction | Phase 1 | IGMP | Construction | 01ADMIN |  |
| QTS-41811 |  | BOH / Mechanical Yard // Pull & Terminate from Transformer to UPS | 8d | 2026-01-14 | 2026-01-23 | QTS-41761, QTS-41821 SS, QTS-42081 |  |  |  |  | -2d | 1d |  | QTS-PHX3 DC1 - 6 day w/ Holidays | Rosendin Electric, Inc |  | Scott Masterson | Level 1 | Gen Yard | Construction | Phase 1 | IGMP | Construction | 01ADMIN |  |
| QTS-41831 |  | BOH / Mechanical Yard // Pull & Terminate from Generators to UPS | 8d | 2026-01-14 | 2026-01-23 | QTS-41821, QTS-42081 |  |  |  |  | -2d | 1d |  | QTS-PHX3 DC1 - 6 day w/ Holidays | Rosendin Electric, Inc |  | Scott Masterson | Level 1 | Gen Yard | Construction | Phase 1 | IGMP | Construction | 01ADMIN |  |
|  | 1 | **Level 1 Back of House** |  | 2025-11-07 | 2026-06-13 |  |  |  |  |  |  |  |  |  |  |  |  |  |  |  |  |  |  |  |  |
|  | 3 | **L1 / BOH // Tenant Improvement** |  | 2025-11-12 | 2026-04-11 |  |  |  |  |  |  |  |  |  |  |  |  |  |  |  |  |  |  |  |  |
| QTS-25751 |  | TI Area J & K // Frame Walls | 6d | 2025-11-12 A | 2025-11-26 A | QTS-23281, QTS-99500 | 100% |  | 2025-11-06 | 2025-11-13 |  |  |  |  |  |  | Sean Waisner | Level 1 | BOH | Construction |  | IGMP | Construction | 01ADMIN | Phase 1 |
| QTS-47021 |  | TI Area J & K // Prime & Paint Exposed Structure | 3d | 2025-11-13 A | 2025-11-20 A | QTS-23741, QTS-23281 | 100% |  | 2025-11-11 | 2025-11-13 |  |  |  |  |  |  | Sean Waisner | Level 1 | FOH | Construction | Phase 1 | IGMP | Construction | 01ADMIN |  |
| QTS-25461 |  | TI Area J & K // Layout Walls | 3d | 2025-11-21 A | 2025-11-25 A | QTS-47021 | 100% |  | 2025-11-20 | 2025-11-24 |  |  |  |  |  |  | Sean Waisner | Level 1 | BOH | Construction |  | IGMP | Construction | 01ADMIN | Phase 1 |
| QTS-26091 |  | TI Area J & K // Layout Freight Elevator Front & Install Shaft Wall | 10d | 2025-11-21 A | 2025-12-08 A | QTS-14851, QTS-25461 SS | 100% |  | 2025-11-20 | 2025-12-05 |  |  |  |  |  |  | Sean Waisner | Level 1 | BOH | Construction |  | IGMP | Construction | 01ADMIN | Phase 1 |
| QTS-26061 |  | TI Area J & K // Rough In-Wall Electrical, Security, & Access Controls | 8d | 2025-12-01 A | 2026-01-14 | QTS-9871, QTS-25751 | 100% | 0d | 2025-11-20 | 2025-12-01 | 12d | 4d |  | QTS-PHX3 DC1 - 6 day w/ Holidays | Securitas Technology Corporation |  | Scott Masterson | Level 1 | BOH | Construction |  | IGMP | Construction | 01ADMIN | Phase 1 |
| QTS-26081 |  | TI Area J & K // Rough Overhead Fire Sprinkler | 10d | 2025-12-02 A | 2025-12-17 A | QTS-23281, QTS-99500, QTS-120000 | 100% |  | 2025-11-21 | 2025-12-08 |  |  |  |  | Olympic West Fire Protection |  | Dave Wiltberger | Level 1 | BOH | Construction |  | IGMP | Construction | 01ADMIN | Phase 1 |
| QTS-45591 |  | TI Area J & K // Set HM Frames | 6d | 2025-12-10 A | 2025-12-19 A | QTS-25751 FF, QTS-99620 | 100% |  | 2025-12-10 | 2025-12-17 |  |  |  |  |  |  | Sean Waisner | Level 1 | BOH | Construction | Phase 1 | IGMP | Construction | 01ADMIN |  |
| QTS-26101 |  | TI Area J & K // Rough Overhead Electrical | 10d | 2025-12-16 A | 2026-01-14 | QTS-25751 | 100% | 0d | 2025-12-16 | 2025-12-27 | 14d | 0d |  | QTS-PHX3 DC1 - 6 day w/ Holidays | Rosendin Electric, Inc |  | Scott Masterson | Level 1 | BOH | Construction |  | IGMP | Construction | 01ADMIN | Phase 1 |
| QTS-26071 |  | TI Area J & K // Rough In-Wall Plumbing | 4d | 2026-01-14 | 2026-01-17 | QTS-25751 |  |  |  |  | 8d | 0d | start on or after 2026-01-05 | QTS-PHX3 DC1 - 6 day w/ Holidays | Bel-Aire Mechanical, LLC |  | Dave Wiltberger | Level 1 | BOH | Construction |  | IGMP | Construction | 01ADMIN | Phase 1 |
| QTS-27131 |  | TI Area J & K // Rough Overhead Plumbing & Refrigerant Piping | 8d | 2026-01-14 | 2026-01-23 | QTS-25461, QTS-25751, QTS-26101 |  |  |  |  | 14d | 0d |  | QTS-PHX3 DC1 - 6 day w/ Holidays | Bel-Aire Mechanical, LLC |  | Dave Wiltberger | Level 1 | BOH | Construction |  | IGMP | Construction | 01ADMIN | Phase 1 |
| QTS-26861 |  | TI Area J & K // MEP In Wall Inspection | 1d | 2026-01-20 | 2026-01-20 | QTS-26071, QTS-26061 |  |  |  |  | 8d | 0d |  | QTS-PHX3 DC1 - 6 day w/ Holidays | Bel-Aire Mechanical, LLC |  | Dave Wiltberger | Level 1 | BOH | Construction | Phase 1 | IGMP | Construction | 01ADMIN |  |
| QTS-26981 |  | TI Area J & K // Insulate Walls | 5d | 2026-01-21 | 2026-01-26 | QTS-26861 |  |  |  |  | 8d | 0d |  | QTS-PHX3 DC1 - 6 day w/ Holidays | Performance Contracting, Inc. |  | Sean Waisner | Level 1 | BOH | Construction |  | IGMP | Construction | 01ADMIN | Phase 1 |
| QTS-45601 |  | TI Area J & K // Pressure Test Overhead Plumbing & Refrigerant Piping | 2d | 2026-01-24 | 2026-01-26 | QTS-27131 |  |  |  |  | 14d | 0d |  | QTS-PHX3 DC1 - 6 day w/ Holidays | Bel-Aire Mechanical, LLC |  | Dave Wiltberger | Level 1 | BOH | Construction | Phase 1 | IGMP | Construction |  |  |
| QTS-27781 |  | TI Area J & K // Hang Drywall | 10d | 2026-01-27 | 2026-02-06 | QTS-25751, QTS-26071, QTS-26981, QTS-26091 |  |  |  |  | 8d | 0d |  | QTS-PHX3 DC1 - 6 day w/ Holidays | Performance Contracting, Inc. |  | Sean Waisner | Level 1 | BOH | Construction |  | IGMP | Construction | 01ADMIN | Phase 1 |
| QTS-28201 |  | TI Area J & K // Insulate Piping & Referigerant Lines | 3d | 2026-01-27 | 2026-01-29 | QTS-26071, QTS-27131, QTS-45601 |  |  |  |  | 14d | 0d |  | QTS-PHX3 DC1 - 6 day w/ Holidays | Bel-Aire Mechanical, LLC |  | Dave Wiltberger | Level 1 | BOH | Construction |  | IGMP | Construction |  | Phase 1 |
| QTS-28561 |  | TI Area J & K // Rough Overhead Ductwork Gridline A - D.5 | 8d | 2026-01-30 | 2026-02-07 | QTS-27131, QTS-28201, QTS-26981 |  |  |  |  | 14d | 6d |  | QTS-PHX3 DC1 - 6 day w/ Holidays | Bel-Aire Mechanical, LLC |  | Dave Wiltberger | Level 1 | BOH | Construction |  | IGMP | Construction |  | Phase 1 |
| QTS-28321 |  | TI Area J & K // Tape & Finish Drywall | 10d | 2026-02-02 | 2026-02-12 | QTS-27781 SS+5d, QTS-27781 FF+5d |  |  |  |  | 8d | 0d |  | QTS-PHX3 DC1 - 6 day w/ Holidays | Performance Contracting, Inc. |  | Sean Waisner | Level 1 | BOH | Construction |  | IGMP | Construction |  | Phase 1 |
| QTS-29121 |  | TI Area J & K // Prime & Paints Walls | 2d | 2026-02-13 | 2026-02-14 | QTS-28321 |  |  |  |  | 8d | 0d |  | QTS-PHX3 DC1 - 6 day w/ Holidays | Pennington Painting Company, LLC |  | Sean Waisner | Level 1 | BOH | Construction |  | IGMP | Construction |  | Phase 1 |
| QTS-29241 |  | TI Area J & K // Install Low Voltage Trim | 5d | 2026-02-16 | 2026-02-20 | QTS-29121 |  |  |  |  | 38d | 18d |  | QTS-PHX3 DC1 - 6 day w/ Holidays | Rosendin Electric, Inc |  | Scott Masterson | Level 1 | BOH | Construction |  | IGMP | Construction |  | Phase 1 |
| QTS-29261 |  | TI Area J & K // Rough Overhead Ductwork Gridline D.5 - G | 8d | 2026-02-16 | 2026-02-24 | QTS-27131, QTS-29121, QTS-28201, QTS-28561 |  |  |  |  | 8d | 0d |  | QTS-PHX3 DC1 - 6 day w/ Holidays | Bel-Aire Mechanical, LLC |  | Dave Wiltberger | Level 1 | BOH | Construction | Phase 1 | IGMP | Construction |  |  |
| QTS-30471 |  | TI Area J & K // Install Flooring & Base | 8d | 2026-02-16 | 2026-02-24 | QTS-29121 |  |  |  |  | 34d | 0d |  | QTS-PHX3 DC1 - 6 day w/ Holidays |  |  | Sean Waisner | Level 1 | BOH | Construction |  | IGMP | Construction |  | Phase 1 |
| QTS-29521 |  | TI Area J & K // Insulate HVAC Ductwork | 10d | 2026-02-21 | 2026-03-04 | QTS-29261 SS+5d, QTS-29261 FF+5d |  |  |  |  | 8d | 0d |  | QTS-PHX3 DC1 - 6 day w/ Holidays | Bel-Aire Mechanical, LLC |  | Dave Wiltberger | Level 1 | BOH | Construction |  | IGMP | Construction |  | Phase 1 |
| QTS-30661 |  | TI Area J & K // Set Doors & Hardware | 6d | 2026-02-25 | 2026-03-03 | QTS-30471, QTS-45591, QTS-99650 |  |  |  |  | 34d | 26d |  | QTS-PHX3 DC1 - 6 day w/ Holidays |  |  | Sean Waisner | Level 1 | BOH | Construction |  | IGMP | Construction |  | Phase 1 |
| QTS-29701 |  | TI Area J & K // Install Armstrong Ceiling Grid | 4d | 2026-02-28 | 2026-03-04 | QTS-29121, QTS-29521 FF, QTS-26081 |  |  |  |  | 8d | 0d |  | QTS-PHX3 DC1 - 6 day w/ Holidays | Performance Contracting, Inc. |  | Sean Waisner | Level 1 | BOH | Construction |  | IGMP | Construction |  | Phase 1 |
| QTS-29881 |  | TI Area J & K // Install Light Fixtures | 8d | 2026-03-05 | 2026-03-13 | QTS-29121, QTS-29701 |  |  |  |  | 20d | 0d |  | QTS-PHX3 DC1 - 6 day w/ Holidays | Rosendin Electric, Inc |  | Scott Masterson | Level 1 | BOH | Construction |  | IGMP | Construction |  | Phase 1 |
| QTS-29891 |  | TI Area J & K // Install Mechanical Trim | 8d | 2026-03-05 | 2026-03-13 | QTS-29701 |  |  |  |  | 8d | 0d |  | QTS-PHX3 DC1 - 6 day w/ Holidays | Bel-Aire Mechanical, LLC |  | Dave Wiltberger | Level 1 | BOH | Construction |  | IGMP | Construction |  | Phase 1 |
| QTS-29901 |  | TI Area J & K // Install Fire Sprinkler Trim | 3d | 2026-03-05 | 2026-03-07 | QTS-29701 |  |  |  |  | 13d | 5d |  | QTS-PHX3 DC1 - 6 day w/ Holidays | Olympic West Fire Protection |  | Dave Wiltberger | Level 1 | BOH | Construction |  | IGMP | Construction |  | Phase 1 |
| QTS-30201 |  | TI Area J & K // Install Electrical Wall Trim | 5d | 2026-03-14 | 2026-03-19 | QTS-29121, QTS-29881, QTS-29241 |  |  |  |  | 20d | 12d |  | QTS-PHX3 DC1 - 6 day w/ Holidays | Rosendin Electric, Inc |  | Scott Masterson | Level 1 | BOH | Construction |  | IGMP | Construction |  | Phase 1 |
| QTS-30211 |  | TI Area J & K // MEP Overhead Inspection | 1d | 2026-03-14 | 2026-03-14 | QTS-29891, QTS-29901 |  |  |  |  | 8d | 0d |  | QTS-PHX3 DC1 - 6 day w/ Holidays | Bel-Aire Mechanical, LLC |  | Dave Wiltberger | Level 1 | BOH | Construction | Phase 1 | IGMP | Construction |  |  |
| QTS-30251 |  | TI Area J & K // Drop Ceiling Tiles | 5d | 2026-03-16 | 2026-03-20 | QTS-30211 |  |  |  |  | 8d | 0d |  | QTS-PHX3 DC1 - 6 day w/ Holidays | Performance Contracting, Inc. |  | Sean Waisner | Level 1 | BOH | Construction |  | IGMP | Construction |  | Phase 1 |
| QTS-30401 |  | TI Area J & K // Install Casework | 5d | 2026-03-21 | 2026-03-26 | QTS-30251, QTS-99670 |  |  |  |  | 8d | 0d |  | QTS-PHX3 DC1 - 6 day w/ Holidays |  |  | Sean Waisner | Level 1 | BOH | Construction |  | IGMP | Construction |  | Phase 1 |
| QTS-30551 |  | TI Area J & K // Install Plumbing Finishes | 4d | 2026-03-27 | 2026-03-31 | QTS-30401 |  |  |  |  | 8d | 0d |  | QTS-PHX3 DC1 - 6 day w/ Holidays | Bel-Aire Mechanical, LLC |  | Dave Wiltberger | Level 1 | BOH | Construction |  | IGMP | Construction |  | Phase 1 |
| QTS-30631 |  | TI Area J & K // Install FEC's | 2d | 2026-04-01 | 2026-04-02 | QTS-1004520, QTS-30551 |  |  |  |  | 8d | 0d |  | QTS-PHX3 DC1 - 6 day w/ Holidays |  |  | Sean Waisner | Level 1 | BOH | Construction |  | IGMP | Construction |  | Phase 1 |
| QTS-1004100 |  | TI Area J & K // BOH Test & Balance | 2d | 2026-04-10 | 2026-04-11 | QTS-30791, QTS-1002610, QTS-29511, QTS-29951, QTS-29751, QTS-28981, QTS-27771, QTS-29601, QTS-30001, QTS-29661, QTS-45641, QTS-45631, QTS-1001110, QTS-28531, QTS-28021, QTS-27581 |  |  |  |  | 8d | 10d |  | QTS-PHX3 DC1 - 6 day w/ Holidays | Bel-Aire Mechanical, LLC |  | Sean Waisner | Level 1 | BOH | Construction |  | IGMP | Construction |  | Phase 1 |

Notes:
- QTS-41731: allucent_notes_20251014_152335: Jason Johnston on 2025-10-07 13:10: Waiting on underground MV to be complete. / Jason Johnston on 2025-10-07 13:10: Increasing duration to account for additional equipment needed for BOH power. / Jason Johnston on 2025-10-14 09:10: Area unavailable to Suntec / allucent_notes_20251021_145627: Jason Johnston on 2025-10-07 13:10: Waiting on underground MV to be complete. / Jason Johnston on 2025-10-07 13:10: Increasing duration to account for additional equipment needed for BOH power. / Jason Johnston on 2025-10-14 09:10: Area unavailable to Suntec / allucent_notes_20251027_224008: Jason Johnston on 2025-10-07 13:10: Waiting on underground MV to be complete. / Jason Johnston on 2025-10-07 13:10: Increasing duration to account for additional equipment needed for BOH power. / Jason Johnston on 2025-10-14 09:10: Area unavailable to Suntec / allucent_notes_20251028_163138: Jason Johnston on 2025-10-07 13:10: Waiting on underground MV to be complete. / Jason Johnston on 2025-10-07 13:10: Increasing duration to account for additional equipment needed for BOH power. / Jason Johnston on 2025-10-14 09:10: Area unavailable to Suntec / allucent_notes_20251104_160200: Jason Johnston on 2025-10-07 13:10: Waiting on underground MV to be complete. / Jason Johnston on 2025-10-07 13:10: Increasing duration to account for additional equipment needed for BOH power. / Jason Johnston on 2025-10-14 09:10: Area unavailable to Suntec / Jason Johnston on 2025-11-04 10:11: Poured late / allucent_notes: 2025-10-07 13:10 - User: Jason Johnston - Date Added: 2025-10-07 13:10 - Note: Waiting on underground MV to be complete. / 2025-10-07 13:10 - User: Jason Johnston - Date Added: 2025-10-07 13:10 - Note: Increasing duration to account for additional equip
- QTS-41761: allucent_notes_20251104_160200: Jason Johnston on 2025-11-04 10:11: Early set / Jason Johnston on 2025-11-04 10:11: early set / allucent_notes: 2025-11-04 10:11 - User: Jason Johnston - Date Added: 2025-11-04 10:11 - Note: Early set / 2025-11-04 10:11 - User: Jason Johnston - Date Added: 2025-11-04 10:11 - Note: early set
- QTS-41811: allucent_notes_20251230_164549: Jason Johnston on 2025-12-09 20:35: Need update from team / allucent_notes_20251209_203830: Jason Johnston on 2025-12-09 20:35: Need update from team / allucent_notes: 2025-12-09 20:35 - User: Jason Johnston - Date Added: 2025-12-09 20:35 - Note: Need update from team
- QTS-25751: allucent_notes_20251111_182405: Zack Goertz on 2025-11-11T18:24:11.283Z: PCI is being told level 1 BOH is not priority. green mile is priority / Jason Johnston on 2025-11-11 15:11: Starting pending Wednesday. / allucent_notes_20251118_192630: Zack Goertz on 2025-11-11T18:24:11.283Z: PCI is being told level 1 BOH is not priority. green mile is priority / Jason Johnston on 2025-11-11 15:11: Starting pending Wednesday. / allucent_notes_20251202_153722: Zack Goertz on 2025-11-11T18:24:11.283Z: PCI is being told level 1 BOH is not priority. green mile is priority / Jason Johnston on 2025-11-11 15:11: Starting pending Wednesday. / Zack Goertz on 2025-11-25 09:11: FOH and zone 1 took priority / allucent_notes: 2025-11-11T18:24:11.283Z - User: Zack Goertz - Date Added: 2025-11-11T18:24:11.283Z - Note: PCI is being told level 1 BOH is not priority. green mile is priority / 2025-11-11 15:11 - User: Jason Johnston - Date Added: 2025-11-11 15:11 - Note: Starting pe
- QTS-47021: allucent_notes_20251104_160200: Zack Goertz on 2025-10-31T19:51:20.893Z: Area J was just poured Wednseday. Area K to be poured on Monday night. / Zack Goertz on 2025-11-03T16:54:58.875Z: Paint to start 11/4 on the south side, and then wait 1 week to start on the north side. / Jason Johnston on 2025-11-04 12:11: Delayed by concrete cure. / allucent_notes_20251111_182405: Zack Goertz on 2025-10-31T19:51:20.893Z: Area J was just poured Wednseday. Area K to be poured on Monday night. / Zack Goertz on 2025-11-03T16:54:58.875Z: Paint to start 11/4 on the south side, and then wait 1 week to start on the north side. / Jason Johnston on 2025-11-04 12:11: Delayed by concrete cure. / Zack Goertz on 2025-11-11T18:25:43.339Z: delayed. priorities are elsewhere / Jason Johnston on 2025-11-11 15:11: starting thursday / allucent_notes_20251118_192630: Zack Goertz on 2025-10-31T19:51:20.893Z: Area J was just poured Wednseday. Area K to be poured on Monday night. / Zack Goertz on 2025-11-03T16:54:58.875Z: Paint to start 11/4 on the south side, and then wait 1 week to start on the north side. / Jason Johnston on 2025-11-04 12:11: Delayed by concrete cure. / Zack Goertz on 2025-11-11T18:25:43.339Z: delayed. priorities are elsewhere / Jason Johnston on 2025-11-11 15:11: starting thursday / Zack Goertz on 2025-11-17 13:11: Coordination efforts slowed their work, plus BOH labor was pulled to FOH / allucent_notes_20251202_153722: Zack Goertz on 2025-10-31T19:51:20.893Z: Area J was just poured Wednseday. Area K to be poured on Monday night. / Zack Goertz on 2025-11-03T16:54:58.875Z: Paint to start 11/4 on the south side, and then wait 1 week to start on the north side. / Jason Johnston on 2025-11-04 12:11: Delayed by concrete cure. / Zack Goertz on 2025-11-11T18:25:43.339Z: delayed. priorities are elsewhere / Jason Johnston on 2025-11-11 15:11: starting thursday / Zack Goertz on 2025-11-17 13:11: Coordination efforts slowed their work, plus BOH labor was pulled to FOH / Zack Goertz on 2025-11-25 09:11: FOH and zone 1 was taking priority / allucent_notes: 2025-10-31T19:51:20.893Z - User: Zack Goertz - Date Added: 2025-10-31T19:51:20.893Z - Note: Area J was just poured Wednseday. Area K to be poured on Monday night. / 2025-11-03T16:54:58.875Z - User: Zack Goertz - Date Added: 2025-11-03T16:54:58.875Z - No
- QTS-25461: allucent_notes_20251104_160200: Zack Goertz on 2025-11-03T16:55:42.346Z: Paint to start 11/4 on the south side, and then wait 1 week to start on the north side. Layout will follow paint. and should be done in 1 day / Jason Johnston on 2025-11-04 12:11: Layout tomorrow based on first pour cure time complete. / allucent_notes_20251111_182405: Zack Goertz on 2025-11-03T16:55:42.346Z: Paint to start 11/4 on the south side, and then wait 1 week to start on the north side. Layout will follow paint. and should be done in 1 day / Jason Johnston on 2025-11-04 12:11: Layout tomorrow based on first pour cure time complete. / allucent_notes_20251118_192630: Zack Goertz on 2025-11-03T16:55:42.346Z: Paint to start 11/4 on the south side, and then wait 1 week to start on the north side. Layout will follow paint. and should be done in 1 day / Jason Johnston on 2025-11-04 12:11: Layout tomorrow based on first pour cure time complete. / allucent_notes_20251202_153722: Zack Goertz on 2025-11-03T16:55:42.346Z: Paint to start 11/4 on the south side, and then wait 1 week to start on the north side. Layout will follow paint. and should be done in 1 day / Jason Johnston on 2025-11-04 12:11: Layout tomorrow based on first pour cure time complete. / allucent_notes: 2025-11-03T16:55:42.346Z - User: Zack Goertz - Date Added: 2025-11-03T16:55:42.346Z - Note: Paint to start 11/4 on the south side, and then wait 1 week to start on the north side. Layout will follow paint. and should be done in 1 day / 2025-11-04 12:11 -
- QTS-26091: allucent_notes_20251111_182405: Jason Johnston on 2025-11-10 14:11: Shaft walls not ready to be installed yet because they're for the second batch of elevators. / allucent_notes_20251118_192630: Jason Johnston on 2025-11-10 14:11: Shaft walls not ready to be installed yet because they're for the second batch of elevators. / allucent_notes_20251202_153722: Jason Johnston on 2025-11-10 14:11: Shaft walls not ready to be installed yet because they're for the second batch of elevators. / allucent_notes_20251209_203830: Jason Johnston on 2025-11-10 14:11: Shaft walls not ready to be installed yet because they're for the second batch of elevators. / allucent_notes: 2025-11-10 14:11 - User: Jason Johnston - Date Added: 2025-11-10 14:11 - Note: Shaft walls not ready to be installed yet because they're for the second batch of elevators.
- QTS-26061: allucent_notes_20251230_164549: Zach Gioe on 2025-12-16 13:12: This work has not completely started. Only Fire has started but is not complete due to working on priority areas and some areas still not complete such as framing. / allucent_notes_20251216_165335: Zach Gioe on 2025-12-16 13:12: This work has not completely started. Only Fire has started but is not complete due to working on priority areas and some areas still not complete such as framing. / allucent_notes: 2025-12-16 13:12 - User: Zach Gioe - Date Added: 2025-12-16 13:12 - Note: This work has not completely started. Only Fire has started but is not complete due to working on priority areas and some areas still not complete such as framing.
- QTS-26081: allucent_notes_20251230_164549: Zack Goertz on 2025-11-11T18:24:25.182Z: Stop work has been issued / Jason Johnston on 2025-11-11 15:11: SWO / Zack Goertz on 2025-11-25 09:11: North Corridor and DH rework are priorities / Zach Gioe on 2025-12-16 13:14: This task did not start till 12/15. / allucent_notes_20251111_182405: Zack Goertz on 2025-11-11T18:24:25.182Z: Stop work has been issued / Jason Johnston on 2025-11-11 15:11: SWO / allucent_notes_20251118_192630: Zack Goertz on 2025-11-11T18:24:25.182Z: Stop work has been issued / Jason Johnston on 2025-11-11 15:11: SWO / allucent_notes_20251202_153722: Zack Goertz on 2025-11-11T18:24:25.182Z: Stop work has been issued / Jason Johnston on 2025-11-11 15:11: SWO / Zack Goertz on 2025-11-25 09:11: North Corridor and DH rework are priorities / allucent_notes_20251209_203830: Zack Goertz on 2025-11-11T18:24:25.182Z: Stop work has been issued / Jason Johnston on 2025-11-11 15:11: SWO / Zack Goertz on 2025-11-25 09:11: North Corridor and DH rework are priorities / allucent_notes_20251216_165335: Zack Goertz on 2025-11-11T18:24:25.182Z: Stop work has been issued / Jason Johnston on 2025-11-11 15:11: SWO / Zack Goertz on 2025-11-25 09:11: North Corridor and DH rework are priorities / Zach Gioe on 2025-12-16 13:14: This task did not start till 12/15. / allucent_notes: 2025-11-11T18:24:25.182Z - User: Zack Goertz - Date Added: 2025-11-11T18:24:25.182Z - Note: Stop work has been issued / 2025-11-11 15:11 - User: Jason Johnston - Date Added: 2025-11-11 15:11 - Note: SWO / 2025-11-25 09:11 - User: Zack Goertz - Date Add
- QTS-45591: allucent_notes_20251230_164549: Zach Gioe on 2025-12-16 13:15: Work has not been ongoing to completion due to all areas not complete or ready for HM Door frames. / allucent_notes_20251216_165335: Zach Gioe on 2025-12-16 13:15: Work has not been ongoing to completion due to all areas not complete or ready for HM Door frames. / allucent_notes: 2025-12-16 13:15 - User: Zach Gioe - Date Added: 2025-12-16 13:15 - Note: Work has not been ongoing to completion due to all areas not complete or ready for HM Door frames.
- QTS-26101: allucent_notes_20251230_164549: Zack Goertz on 2025-12-01 10:30: Rough in is being done first. / Zack Goertz on 2025-12-09 10:49: Walls arent done being mudded and taped / allucent_notes_20251202_153722: Zack Goertz on 2025-12-01 10:30: Rough in is being done first. / allucent_notes_20251209_203830: Zack Goertz on 2025-12-01 10:30: Rough in is being done first. / Zack Goertz on 2025-12-09 10:49: Walls arent done being mudded and taped / allucent_notes_20251216_165335: Zack Goertz on 2025-12-01 10:30: Rough in is being done first. / Zack Goertz on 2025-12-09 10:49: Walls arent done being mudded and taped / allucent_notes: 2025-12-01 10:30 - User: Zack Goertz - Date Added: 2025-12-01 10:30 - Note: Rough in is being done first. / 2025-12-09 10:49 - User: Zack Goertz - Date Added: 2025-12-09 10:49 - Note: Walls arent done being mudded and taped
- QTS-26071: allucent_notes_20251230_164549: Zack Goertz on 2025-12-01 10:29: Bel-aire does not have labor in BOH level 1. Labor is in BOH Level 2. Not from Layton direction. / Zack Goertz on 2025-12-09 10:49: BAM missed the wall, waiting for RFI answer. / Zach Gioe on 2025-12-16 13:16: Walls in areas not complete. / Zach Gioe on 2025-12-16 13:16: Walls in areas not complete. / allucent_notes_20251202_153722: Zack Goertz on 2025-12-01 10:29: Bel-aire does not have labor in BOH level 1. Labor is in BOH Level 2. Not from Layton direction. / allucent_notes_20251209_203830: Zack Goertz on 2025-12-01 10:29: Bel-aire does not have labor in BOH level 1. Labor is in BOH Level 2. Not from Layton direction. / Zack Goertz on 2025-12-09 10:49: BAM missed the wall, waiting for RFI answer. / allucent_notes_20251216_165335: Zack Goertz on 2025-12-01 10:29: Bel-aire does not have labor in BOH level 1. Labor is in BOH Level 2. Not from Layton direction. / Zack Goertz on 2025-12-09 10:49: BAM missed the wall, waiting for RFI answer. / Zach Gioe on 2025-12-16 13:16: Walls in areas not complete. / Zach Gioe on 2025-12-16 13:16: Walls in areas not complete. / allucent_notes: 2025-12-01 10:29 - User: Zack Goertz - Date Added: 2025-12-01 10:29 - Note: Bel-aire does not have labor in BOH level 1. Labor is in BOH Level 2. Not from Layton direction. / 2025-12-09 10:49 - User: Zack Goertz - Date Added: 2025-12-09 10:49 - Note: BA

| ID | WBS | Activity | Duration | Start | Finish | Predecessors | Complete | Planned start | Planned finish | Total float | Free float | Constraint | Calendar | Level | Location | Baseline | Layton Responsible Party | Phase-1 | Project Section | Allucent CSI Group | Subcontractor | Project Section-1 | Phase-1-1 |
| --- | --- | --- | --- | --- | --- | --- | --- | --- | --- | --- | --- | --- | --- | --- | --- | --- | --- | --- | --- | --- | --- | --- | --- |
|  | 7 | **L1 / BOH // IDF #1064 (Early Access)** |  | 2025-11-24 | 2026-02-06 |  |  |  |  |  |  |  |  |  |  |  |  |  |  |  |  |  |  |
| QTS-26251 |  | IDF Room #1064 // Frame Walls | 2d | 2025-11-24 A | 2025-12-12 A | QTS-25751 | 100% | 2025-11-24 | 2025-11-25 |  |  |  |  | Level 1 | BOH | IGMP | Sean Waisner | Phase 1 | Construction | 01ADMIN |  |  |  |
| QTS-26361 |  | IDF Room #1064 // Rough In Wall Electrical | 10d | 2025-11-26 A | 2025-12-16 A | QTS-26251 FF+1d | 100% | 2025-11-26 | 2025-12-11 |  |  |  |  | Level 1 | BOH | IGMP | Scott Masterson | Phase 1 | Construction | 01ADMIN | Rosendin Electric, Inc |  |  |
| QTS-26691 |  | IDF Room #1064 // Hang Drywall | 1d | 2025-12-05 A | 2025-12-18 A | QTS-26481 FF+1d | 100% | 2025-12-05 | 2025-12-05 |  |  |  |  | Level 1 | BOH | IGMP | Sean Waisner | Phase 1 | Construction | 01ADMIN |  |  |  |
| QTS-26371 |  | IDF Room #1064 // Set HM Frame | 1d | 2025-12-12 A | 2025-12-12 A | QTS-26251 FF, QTS-99620 | 100% | 2025-12-10 | 2025-12-10 |  |  |  |  | Level 1 | BOH | IGMP | Sean Waisner | Phase 1 | Construction | 01ADMIN |  |  |  |
| QTS-26481 |  | IDF Room #1064 // In Wall Inspection | 1d | 2025-12-17 A | 2025-12-17 A | QTS-26361 | 100% |  |  |  |  |  |  | Level 1 | BOH | IGMP | Dave Wiltberger | Phase 1 | Construction | 01ADMIN | Bel-Aire Mechanical, LLC |  |  |
| QTS-26381 |  | IDF Room #1064 // Rough Overhead Fire Sprinkler | 2d | 2025-12-18 A | 2025-12-19 A | QTS-26081 | 100% |  |  |  |  |  |  | Level 1 | BOH | IGMP | Dave Wiltberger | Phase 1 | Construction | 01ADMIN | Olympic West Fire Protection |  |  |
| QTS-26771 |  | IDF Room #1064 // Tape & Finish Drywall | 3d | 2025-12-29 A | 2026-01-07 A | QTS-26691, QTS-27571 | 100% | 2025-12-29 | 2025-12-31 |  |  |  | QTS-PHX3 DC1 - 6 day w/ Holidays | Level 1 | BOH | IGMP | Sean Waisner | Phase 1 | Construction | 01ADMIN | Performance Contracting, Inc. |  |  |
| QTS-27211 |  | IDF Room #1064 // Prime & Paint | 2d | 2026-01-09 A | 2026-01-10 A | QTS-26771 | 100% |  |  |  |  |  | QTS-PHX3 DC1 - 6 day w/ Holidays | Level 1 | BOH | IGMP | Sean Waisner | Phase 1 | Construction | 01ADMIN | Pennington Painting Company, LLC |  |  |
| QTS-1002890 |  | IDF Room #1064 // Frame Hard Lid | 2d | 2026-01-14 | 2026-01-15 | QTS-27211 |  |  |  | 45d | 0d |  | QTS-PHX3 DC1 - 6 day w/ Holidays | Level 1 | BOH | IGMP | Sean Waisner | Phase 1 | Construction | 01ADMIN | Performance Contracting, Inc. |  |  |
| QTS-27521 |  | IDF Room #1064 // Plywood Install | 1d | 2026-01-14 | 2026-01-14 | QTS-26771 |  |  |  | 55d | 10d |  | QTS-PHX3 DC1 - 6 day w/ Holidays | Level 1 | BOH | IGMP | Sean Waisner | Phase 1 | Construction | 01ADMIN | Performance Contracting, Inc. |  |  |
| QTS-1002900 |  | IDF Room #1064 // Hang Drywall Hard Lid | 2d | 2026-01-16 | 2026-01-17 | QTS-1002890 |  |  |  | 45d | 0d |  | QTS-PHX3 DC1 - 6 day w/ Holidays | Level 1 | BOH | IGMP | Sean Waisner | Phase 1 | Construction | 01ADMIN | Performance Contracting, Inc. |  |  |
| QTS-1002910 |  | IDF Room #1064 // Tape & Finish Hard Lid | 2d | 2026-01-20 | 2026-01-21 | QTS-1002900 |  |  |  | 45d | 0d |  | QTS-PHX3 DC1 - 6 day w/ Holidays | Level 1 | BOH | IGMP | Sean Waisner | Phase 1 | Construction | 01ADMIN | Performance Contracting, Inc. |  |  |
| QTS-1002920 |  | IDF Room #1064 // Paint Hard Lid | 2d | 2026-01-22 | 2026-01-23 | QTS-1002910 |  |  |  | 45d | 0d |  | QTS-PHX3 DC1 - 6 day w/ Holidays | Level 1 | BOH | IGMP | Sean Waisner | Phase 1 | Construction | 01ADMIN | Pennington Painting Company, LLC |  |  |
| QTS-1000660 |  | IDF Room #1064 // Rough In Overhead Electrical | 5d | 2026-01-24 | 2026-01-29 | QTS-1002920, QTS-27211 |  |  |  | 55d | 0d |  | QTS-PHX3 DC1 - 6 day w/ Holidays |  |  |  |  |  |  | 01ADMIN | Rosendin Electric, Inc |  |  |
| QTS-26391 |  | IDF Room #1064 // Rough Overhead Linesets | 3d | 2026-01-24 | 2026-01-27 | QTS-1002920, QTS-26251 |  |  |  | 45d | 0d | start on or after 2026-01-01 | QTS-PHX3 DC1 - 6 day w/ Holidays | Level 1 | BOH | IGMP | Dave Wiltberger | Phase 1 | Construction | 01ADMIN | Bel-Aire Mechanical, LLC |  |  |
| QTS-27581 |  | IDF Room #1064 // Install AC Unit | 2d | 2026-01-28 | 2026-01-29 | QTS-27211, QTS-27521, QTS-26391 |  |  |  | 45d | 0d |  | QTS-PHX3 DC1 - 6 day w/ Holidays | Level 1 | BOH | IGMP | Dave Wiltberger | Phase 1 | Construction | 01ADMIN | Bel-Aire Mechanical, LLC |  |  |
| QTS-27951 |  | IDF Room #1064 // Install Light Fixtures | 2d | 2026-01-30 | 2026-01-31 | QTS-27581, QTS-1000660 |  |  |  | 55d | 0d |  | QTS-PHX3 DC1 - 6 day w/ Holidays | Level 1 | BOH | IGMP | Scott Masterson | Phase 1 | Construction |  | Rosendin Electric, Inc |  |  |
| QTS-1001060 |  | IDF Room #1064 // Finish Flooring | 1d | 2026-02-02 | 2026-02-02 | QTS-27951 |  |  |  | 57d | 0d |  | QTS-PHX3 DC1 - 6 day w/ Holidays | Level 1 | BOH | IGMP | Scott Masterson | Phase 1 | Construction |  | Rosendin Electric, Inc |  |  |
| QTS-38571 |  | IDF Room #1064 // Install Cable Racks | 5d | 2026-02-02 | 2026-02-06 | QTS-27951, QTS-45611 FF |  |  |  | 55d | 47d |  | QTS-PHX3 DC1 - 6 day w/ Holidays | Level 1 | BOH | IGMP | Scott Masterson |  | Construction |  | E2 Optics, LLC | Construction | Phase 1 |
| QTS-1001050 |  | IDF Room #1064 // Install Wall Base | 1d | 2026-02-03 | 2026-02-03 | QTS-1001060 |  |  |  | 57d | 2d |  | QTS-PHX3 DC1 - 6 day w/ Holidays | Level 1 | BOH | IGMP | Scott Masterson | Phase 1 | Construction |  | Rosendin Electric, Inc |  |  |
| QTS-45611 |  | IDF Room #1064 // Set Door & Hardware | 1d | 2026-02-06 | 2026-02-06 | QTS-26371, QTS-99650, QTS-99630, QTS-1001050 |  |  |  | 55d | 0d | as late as possible | QTS-PHX3 DC1 - 6 day w/ Holidays | Level 1 | BOH | IGMP | Sean Waisner |  | Construction |  |  | Construction | Phase 1 |
|  | 10 | **L1 / BOH // Electrical Room #1081/1066 (Early Access)** |  | 2025-11-07 | 2026-01-28 |  |  |  |  |  |  |  |  |  |  |  |  |  |  |  |  |  |  |
| QTS-26401 |  | Electrical Room #1066/1081 // Frame Walls | 2d | 2025-11-07 A | 2025-11-10 A | QTS-25751 | 100% |  |  |  |  |  |  | Level 1 | BOH | IGMP | Sean Waisner | Phase 1 | Construction | 01ADMIN |  |  |  |
| QTS-26501 |  | Electrical Room #1066/1081 // Rough In Wall Electrical | 10d | 2025-11-26 A | 2025-12-02 A | QTS-26401 | 100% | 2025-11-26 | 2025-12-11 |  |  |  |  | Level 1 | BOH | IGMP | Scott Masterson | Phase 1 | Construction |  | Rosendin Electric, Inc |  |  |
| QTS-26831 |  | Electrical Room #1066/1081 // In Wall Inspection | 1d | 2025-12-02 A | 2025-12-02 A | QTS-26501 | 100% |  |  |  |  |  |  | Level 1 | BOH | IGMP | Dave Wiltberger | Phase 1 | Construction |  | Bel-Aire Mechanical, LLC |  |  |
| QTS-26891 |  | Electrical Room #1066/1081 // Hang Drywall | 3d | 2025-12-19 A | 2025-12-23 A | QTS-26831, QTS-99550 | 100% |  |  |  |  |  |  | Level 1 | BOH | IGMP | Sean Waisner | Phase 1 | Construction | 01ADMIN |  |  |  |
| QTS-26521 |  | Electrical Room #1066/1081 // Rough Overhead Fire Sprinkler | 2d | 2025-12-22 A | 2025-12-23 A | QTS-26381 | 100% |  |  |  |  |  |  | Level 1 | BOH | IGMP | Dave Wiltberger | Phase 1 | Construction | 01ADMIN | Olympic West Fire Protection |  |  |
| QTS-99550 |  | Electrical Room #1066/1081 // Set Door Frame | 1d | 2025-12-22 A | 2025-12-22 A | QTS-26401 | 100% |  |  |  |  |  |  | Level 1 | BOH | IGMP | Sean Waisner | Phase 1 | Construction | 01ADMIN |  |  |  |
| QTS-27091 |  | Electrical Room #1066/1081 // Tape & Finish Drywall | 3d | 2025-12-29 A | 2025-12-30 A | QTS-26891, QTS-27571 | 100% | 2025-12-29 | 2025-12-31 |  |  |  |  | Level 1 | BOH | IGMP | Sean Waisner | Phase 1 | Construction | 01ADMIN |  |  |  |
| QTS-1001140 |  | Electrical Room #1066/1081 // Pour Equipment Pads | 2d | 2026-01-05 A | 2026-01-06 A | QTS-27091 | 100% |  |  |  |  |  |  | Level 2 | BOH | IGMP | Sean Waisner | Phase 1 | Construction | 01ADMIN |  |  |  |
| QTS-27541 |  | Electrical Room #1066/1081 // Prime & Paint | 2d | 2026-01-05 A | 2026-01-06 A | QTS-27091 | 100% |  |  |  |  |  |  | Level 1 | BOH | IGMP | Sean Waisner | Phase 1 | Construction | 01ADMIN |  |  |  |
| QTS-42081 |  | Electrical Room #1066/1081 // Set House Switchboard | 1d | 2026-01-05 A | 2026-01-06 A | QTS-27541, QTS-36151, QTS-24581 SS | 100% | 2026-01-05 | 2026-01-05 |  |  |  |  | Level 1 | BOH | IGMP | Scott Masterson |  | Construction | 01ADMIN | Rosendin Electric, Inc | Construction | Phase 1 |
| QTS-1000670 |  | Electrical Room #1066/1081 // Rough Overhead Electrical | 5d | 2026-01-14 | 2026-01-20 | QTS-27541 |  |  |  | 47d | 0d |  | QTS-PHX3 DC1 - 6 day w/ Holidays | Level 1 | BOH | IGMP | Scott Masterson | Phase 1 | Construction | 01ADMIN | Bel-Aire Mechanical, LLC |  |  |
| QTS-26531 |  | Electrical Room #1066/1081 // Rough Overhead Linesets | 3d | 2026-01-14 | 2026-01-16 | QTS-27541, QTS-26401 |  |  |  | 48d | 0d |  | QTS-PHX3 DC1 - 6 day w/ Holidays | Level 1 | BOH | IGMP | Dave Wiltberger | Phase 1 | Construction | 01ADMIN | Bel-Aire Mechanical, LLC |  |  |
| QTS-28021 |  | Electrical Room #1066/1081 // Install AC Unit | 2d | 2026-01-17 | 2026-01-20 | QTS-27541, QTS-26531 |  |  |  | 55d | 0d |  | QTS-PHX3 DC1 - 6 day w/ Holidays | Level 1 | BOH | IGMP | Dave Wiltberger | Phase 1 | Construction | 01ADMIN | Bel-Aire Mechanical, LLC |  |  |
| QTS-1001090 |  | Electrical Room #1066/1081 // Install Wall Base | 1d | 2026-01-20 | 2026-01-20 | QTS-27541 |  |  |  | 47d | 0d | as late as possible | QTS-PHX3 DC1 - 6 day w/ Holidays | Level 1 | BOH | IGMP | Scott Masterson | Phase 1 | Construction | 01ADMIN | Rosendin Electric, Inc |  |  |
| QTS-27921 |  | Electrical Room #1066/1081 // Set Static Transfer Switch | 1d | 2026-01-21 | 2026-01-21 | QTS-1000670, QTS-27821, QTS-27541, QTS-24581, QTS-1001090, QTS-1001140 |  |  |  | 48d | 0d |  | QTS-PHX3 DC1 - 6 day w/ Holidays | Level 1 | BOH | IGMP | Scott Masterson |  | Construction | 01ADMIN | Rosendin Electric, Inc | Construction | Phase 1 |
| QTS-27931 |  | Electrical Room #1066/1081 // Set UPS | 1d | 2026-01-21 | 2026-01-21 | QTS-1000670, QTS-27831, QTS-27541, QTS-36131, QTS-24581, QTS-1001090, QTS-1001140 |  |  |  | 47d | 1d |  | QTS-PHX3 DC1 - 6 day w/ Holidays | Level 1 | BOH | IGMP | Scott Masterson |  | Construction | 01ADMIN | Rosendin Electric, Inc | Construction | Phase 1 |
| QTS-28171 |  | Electrical Room #1066/1081 // Install Light Fixtures | 2d | 2026-01-21 | 2026-01-22 | QTS-28021, QTS-1000670 |  |  |  | 63d | 0d |  | QTS-PHX3 DC1 - 6 day w/ Holidays | Level 1 | BOH | IGMP | Scott Masterson | Phase 1 | Construction |  | Rosendin Electric, Inc |  |  |
| QTS-1001070 |  | Electrical Room #1066/1081 // Install MEP Trim | 2d | 2026-01-22 | 2026-01-23 | QTS-27921 |  |  |  | 65d | 0d |  | QTS-PHX3 DC1 - 6 day w/ Holidays | Level 1 | BOH | IGMP | Scott Masterson | Phase 1 | Construction |  | E2 Optics, LLC |  |  |
| QTS-28371 |  | Electrical Room #1066/1081 // Install Cable Racks | 5d | 2026-01-23 | 2026-01-28 | QTS-28171, QTS-26511 FF |  |  |  | 63d | 55d |  | QTS-PHX3 DC1 - 6 day w/ Holidays | Level 1 | BOH | IGMP | Scott Masterson | Phase 1 | Construction |  | E2 Optics, LLC |  |  |
| QTS-1001080 |  | Electrical Room #1066/1081 // Finish Flooring | 1d | 2026-01-24 | 2026-01-24 | QTS-28171, QTS-1001070 |  |  |  | 65d | 2d |  | QTS-PHX3 DC1 - 6 day w/ Holidays | Level 1 | BOH | IGMP | Scott Masterson | Phase 1 | Construction |  | Rosendin Electric, Inc |  |  |
| QTS-26511 |  | Electrical Room #1066/1081 // Set Door & Hardware | 1d | 2026-01-28 | 2026-01-28 | QTS-26401, QTS-15231, QTS-99550, QTS-1001080 |  |  |  | 63d | 0d | as late as possible | QTS-PHX3 DC1 - 6 day w/ Holidays | Level 1 | BOH | IGMP | Sean Waisner | Phase 1 | Construction |  |  |  |  |

Notes:
- QTS-26251: allucent_notes_20251216_165335: Zach Gioe on 2025-12-16 13:17: RFI Design change for door wall. / Zach Gioe on 2025-12-16 13:18: RFI for design change. / allucent_notes: 2025-12-16 13:17 - User: Zach Gioe - Date Added: 2025-12-16 13:17 - Note: RFI Design change for door wall. / 2025-12-16 13:18 - User: Zach Gioe - Date Added: 2025-12-16 13:18 - Note: RFI for design change.
- QTS-26361: allucent_notes_20251216_165335: Zach Gioe on 2025-12-16 13:19: Wall change from RFI. / allucent_notes: 2025-12-16 13:19 - User: Zach Gioe - Date Added: 2025-12-16 13:19 - Note: Wall change from RFI.
- QTS-26391: allucent_notes_20251230_164549: Zach Gioe on 2025-12-16 13:34: Will start after Prime/Paint. / allucent_notes_20251216_165335: Zach Gioe on 2025-12-16 13:34: Will start after Prime/Paint. / allucent_notes: 2025-12-16 13:34 - User: Zach Gioe - Date Added: 2025-12-16 13:34 - Note: Will start after Prime/Paint.
- QTS-99550: allucent_notes_20251230_164549: Zack Goertz on 2025-12-09 10:50: Walls arent done being mudded and taped / Sean Waisner on 2025-12-30 15:13: Door frame arrived today 12-30 / allucent_notes_20251209_203830: Zack Goertz on 2025-12-09 10:50: Walls arent done being mudded and taped / allucent_notes_20251216_165335: Zack Goertz on 2025-12-09 10:50: Walls arent done being mudded and taped / allucent_notes: 2025-12-09 10:50 - User: Zack Goertz - Date Added: 2025-12-09 10:50 - Note: Walls arent done being mudded and taped / 2025-12-30 15:13 - User: Sean Waisner - Date Added: 2025-12-30 15:13 - Note: Door frame arrived today 12-30

| ID | WBS | Activity | Duration | Start | Finish | Predecessors | Complete | Planned start | Planned finish | Total float | Free float | Constraint | Calendar | Level | Location | Baseline | Layton Responsible Party | Phase-1 | Project Section | Subcontractor | Allucent CSI Group | Project Section-1 | Phase-1-1 |
| --- | --- | --- | --- | --- | --- | --- | --- | --- | --- | --- | --- | --- | --- | --- | --- | --- | --- | --- | --- | --- | --- | --- | --- |
|  | 2 | **L1 / BOH // MMR #1068 (Early Access)** |  | 2025-12-02 | 2026-02-14 |  |  |  |  |  |  |  |  |  |  |  |  |  |  |  |  |  |  |
| QTS-26931 |  | MMR B Room #1068 // Frame Walls | 2d | 2025-12-02 A | 2025-12-03 A | QTS-25751 | 100% |  |  |  |  |  |  | Level 1 | BOH | IGMP | Sean Waisner | Phase 1 | Construction |  |  |  |  |
| QTS-27251 |  | MMR B Room #1068 // Rough In Electrical | 10d | 2025-12-04 A | 2025-12-05 A | QTS-26931 | 100% | 2025-12-04 | 2025-12-17 |  |  |  |  | Level 1 | BOH | IGMP | Scott Masterson | Phase 1 | Construction | Rosendin Electric, Inc |  |  |  |
| QTS-27551 |  | MMR B Room #1068 // In Wall Inspection | 1d | 2025-12-08 A | 2025-12-08 A | QTS-27251 | 100% |  |  |  |  |  |  | Level 1 | BOH | IGMP | Dave Wiltberger | Phase 1 | Construction | Bel-Aire Mechanical, LLC |  |  |  |
| QTS-27701 |  | MMR B Room #1068 // Hang Drywall | 1d | 2025-12-09 A | 2025-12-11 A | QTS-27551 | 100% | 2025-12-09 | 2025-12-09 |  |  |  |  | Level 1 | BOH | IGMP | Sean Waisner | Phase 1 | Construction |  | 01ADMIN |  |  |
| QTS-27261 |  | MMR B Room #1068 // Set HM Frame | 1d | 2025-12-10 A | 2025-12-10 A | QTS-26931 FF, QTS-99620 | 100% |  |  |  |  |  |  | Level 1 | BOH | IGMP | Sean Waisner | Phase 1 | Construction |  | 01ADMIN |  |  |
| QTS-27871 |  | MMR B Room #1068 // Tape & Finish Drywall | 3d | 2025-12-15 A | 2025-12-23 A | QTS-27701, QTS-27571 FF | 100% | 2025-12-15 | 2025-12-17 |  |  |  |  | Level 1 | BOH | IGMP | Sean Waisner | Phase 1 | Construction |  | 01ADMIN |  |  |
| QTS-27271 |  | MMR B Room #1068 // Rough Overhead Fire Sprinkler | 2d | 2025-12-29 A | 2025-12-30 A | QTS-26521 | 100% |  |  |  |  |  |  | Level 1 | BOH | IGMP | Dave Wiltberger | Phase 1 | Construction | Olympic West Fire Protection | 01ADMIN |  |  |
| QTS-28531 |  | MMR B Room #1068 // Install AC Unit | 2d | 2026-01-05 A | 2026-01-06 A | QTS-27871 | 100% |  |  |  |  |  |  | Level 1 | BOH | IGMP | Dave Wiltberger | Phase 1 | Construction | Bel-Aire Mechanical, LLC | 01ADMIN |  |  |
| QTS-28181 |  | MMR B Room #1068 // Prime & Paint | 2d | 2026-01-08 A | 2026-01-09 A | QTS-27871 | 100% |  |  |  |  |  | QTS-PHX3 DC1 - 6 day w/ Holidays | Level 1 | BOH | IGMP | Sean Waisner | Phase 1 | Construction | Pennington Painting Company, LLC | 01ADMIN |  |  |
| QTS-28391 |  | MMR B Room #1068 // Plywood Install | 1d | 2026-01-14 | 2026-01-14 | QTS-27871 |  |  |  | 74d | 26d |  | QTS-PHX3 DC1 - 6 day w/ Holidays | Level 1 | BOH | IGMP | Sean Waisner | Phase 1 | Construction | Performance Contracting, Inc. | 01ADMIN |  |  |
| QTS-27281 |  | MMR B Room #1068 // Rough Overhead Linesets | 5d | 2026-01-17 | 2026-01-23 | QTS-26931, QTS-26531 |  |  |  | 48d | 0d |  | QTS-PHX3 DC1 - 6 day w/ Holidays | Level 1 | BOH | IGMP | Dave Wiltberger | Phase 1 | Construction | Bel-Aire Mechanical, LLC | 01ADMIN |  |  |
| QTS-1000680 |  | MMR B Room #1068 // Rough In Overhead Busway | 5d | 2026-01-24 | 2026-01-29 | QTS-27281 FF, QTS-27281, QTS-28181, QTS-28531 |  |  |  | 48d | 0d |  | QTS-PHX3 DC1 - 6 day w/ Holidays |  |  |  |  |  |  | Rosendin Electric, Inc | 01ADMIN |  |  |
| QTS-28781 |  | MMR B Room #1068 // Install Light Fixtures | 2d | 2026-01-30 | 2026-01-31 | QTS-28531, QTS-1000680 |  |  |  | 48d | 0d |  | QTS-PHX3 DC1 - 6 day w/ Holidays | Level 1 | BOH | IGMP | Scott Masterson | Phase 1 | Construction | Rosendin Electric, Inc |  |  |  |
| QTS-28891 |  | MMR B Room #1068 // Install Cable Racks | 5d | 2026-02-02 | 2026-02-06 | QTS-28781 |  |  |  | 48d | 0d |  | QTS-PHX3 DC1 - 6 day w/ Holidays | Level 1 | BOH | IGMP | Scott Masterson | Phase 1 | Construction | E2 Optics, LLC |  |  |  |
| QTS-1001120 |  | MMR B Room #1068 // Install MEP Trim | 2d | 2026-02-07 | 2026-02-09 | QTS-28891 |  |  |  | 48d | 0d |  | QTS-PHX3 DC1 - 6 day w/ Holidays | Level 1 | BOH | IGMP | Scott Masterson | Phase 1 | Construction | Rosendin Electric, Inc |  |  |  |
| QTS-1001110 |  | MMR B Room #1068 // Finish Flooring | 2d | 2026-02-10 | 2026-02-11 | QTS-28781, QTS-1001120 |  |  |  | 48d | 0d |  | QTS-PHX3 DC1 - 6 day w/ Holidays | Level 1 | BOH | IGMP | Scott Masterson | Phase 1 | Construction | Wholesale Floors, LLC -AZ |  |  |  |
| QTS-1001100 |  | MMR B Room #1068 // Install Wall Base | 2d | 2026-02-12 | 2026-02-13 | QTS-1001110 |  |  |  | 48d | 0d |  | QTS-PHX3 DC1 - 6 day w/ Holidays | Level 1 | BOH | IGMP | Scott Masterson | Phase 1 | Construction | Wholesale Floors, LLC -AZ |  |  |  |
| QTS-45621 |  | MMR B Room #1068 // Set Door & Hardware | 1d | 2026-02-14 | 2026-02-14 | QTS-28391 SS, QTS-99650, QTS-27261, QTS-1001100 |  |  |  | 48d | 40d |  | QTS-PHX3 DC1 - 6 day w/ Holidays | Level 1 | BOH | IGMP | Sean Waisner |  | Construction | ISEC Incorporated | 01ADMIN | Construction | Phase 1 |
|  | 5 | **L1 / BOH // Telecom Riser #1069 (Early Access)** |  | 2025-12-02 | 2026-02-02 |  |  |  |  |  |  |  |  |  |  |  |  |  |  |  |  |  |  |
| QTS-42151 |  | Telecom Riser #1069 // Frame Walls | 2d | 2025-12-02 A | 2025-12-03 A | QTS-25751 | 100% |  |  |  |  |  |  | Level 1 | BOH | IGMP | Sean Waisner |  | Construction |  |  | Construction | Phase 1 |
| QTS-42161 |  | Telecom Riser #1069 // Rough In Electrical | 10d | 2025-12-04 A | 2025-12-05 A | QTS-42151 | 100% | 2025-12-04 | 2025-12-17 |  |  |  |  | Level 1 | BOH | IGMP | Scott Masterson |  | Construction | Rosendin Electric, Inc |  | Construction | Phase 1 |
| QTS-42171 |  | Telecom Riser #1069 // In Wall Inspection | 1d | 2025-12-08 A | 2025-12-08 A | QTS-42161 | 100% |  |  |  |  |  |  | Level 1 | BOH | IGMP | Dave Wiltberger |  | Construction | Bel-Aire Mechanical, LLC |  | Construction | Phase 1 |
| QTS-42181 |  | Telecom Riser #1069 // Hang Drywall | 1d | 2025-12-09 A | 2025-12-09 A | QTS-42171 | 100% |  |  |  |  |  |  | Level 1 | BOH | IGMP | Sean Waisner |  | Construction |  | 01ADMIN | Construction | Phase 1 |
| QTS-42211 |  | Telecom Riser #1069 // Set HM Frame | 1d | 2025-12-10 A | 2025-12-10 A | QTS-42151, QTS-99620 | 100% |  |  |  |  |  |  | Level 1 | BOH | IGMP | Sean Waisner |  | Construction |  | 01ADMIN | Construction | Phase 1 |
| QTS-42231 |  | Telecom Riser #1069 // Rough Overhead Linesets | 5d | 2025-12-10 A | 2025-12-16 A | QTS-42151 | 100% |  |  |  |  |  |  | Level 1 | BOH | IGMP | Dave Wiltberger |  | Construction | Bel-Aire Mechanical, LLC | 01ADMIN | Construction | Phase 1 |
| QTS-42191 |  | Telecom Riser #1069 // Tape & Finish Drywall | 3d | 2025-12-15 A | 2025-12-23 A | QTS-42181, QTS-27571 FF | 100% | 2025-12-15 | 2025-12-17 |  |  |  |  | Level 1 | BOH | IGMP | Sean Waisner |  | Construction |  | 01ADMIN | Construction | Phase 1 |
| QTS-42201 |  | Telecom Riser #1069 // Prime & Paint | 2d | 2025-12-29 A | 2025-12-30 A | QTS-42191 | 100% |  |  |  |  |  |  | Level 1 | BOH | IGMP | Sean Waisner |  | Construction |  | 01ADMIN | Construction | Phase 1 |
| QTS-42221 |  | Telecom Riser #1069 // Rough Overhead Fire Sprinkler | 2d | 2025-12-30 A | 2026-01-05 A | QTS-27271 | 100% | 2025-12-31 | 2026-01-05 |  |  |  |  | Level 1 | BOH | IGMP | Dave Wiltberger |  | Construction | Olympic West Fire Protection | 01ADMIN | Construction | Phase 1 |
| QTS-1000690 |  | Telecom Riser #1069 // Rough In Overhead Electrical | 5d | 2026-01-14 | 2026-01-20 | QTS-42231, QTS-42201 |  |  |  | 63d | 0d | start on or after 2026-01-12 | QTS-PHX3 DC1 - 6 day w/ Holidays |  |  |  |  |  |  | Rosendin Electric, Inc | 01ADMIN |  |  |
| QTS-42241 |  | Telecom Riser #1069 // Install Light Fixtures | 2d | 2026-01-21 | 2026-01-22 | QTS-42201, QTS-1000690 |  |  |  | 63d | 0d |  | QTS-PHX3 DC1 - 6 day w/ Holidays | Level 1 | BOH | IGMP | Scott Masterson |  | Construction | Rosendin Electric, Inc | 01ADMIN | Construction | Phase 1 |
| QTS-42251 |  | Telecom Riser #1069 // Install Cable Racks | 5d | 2026-01-23 | 2026-01-28 | QTS-42241 |  |  |  | 63d | 55d |  | QTS-PHX3 DC1 - 6 day w/ Holidays | Level 1 | BOH | IGMP | Scott Masterson |  | Construction | E2 Optics, LLC |  | Construction | Phase 1 |
| QTS-45631 |  | Telecom Riser #1069 // Set Door & Hardware | 1d | 2026-02-02 | 2026-02-02 | QTS-42191, QTS-99650, QTS-42211, QTS-99630 |  |  |  | 59d | 51d | start on or after 2026-02-02 | QTS-PHX3 DC1 - 6 day w/ Holidays | Level 1 | BOH | IGMP | Sean Waisner |  | Construction | ISEC Incorporated | 01ADMIN | Construction | Phase 1 |

Notes:
- QTS-28391: allucent_notes_20251230_164549: Sean Waisner on 2025-12-30 15:14: Man power issues / allucent_notes: 2025-12-30 15:14 - User: Sean Waisner - Date Added: 2025-12-30 15:14 - Note: Man power issues
- QTS-42231: allucent_notes_20251209_203830: Zack Goertz on 2025-12-09 10:50: Walls arent done being mudded and taped / allucent_notes_20251216_165335: Zack Goertz on 2025-12-09 10:50: Walls arent done being mudded and taped / allucent_notes: 2025-12-09 10:50 - User: Zack Goertz - Date Added: 2025-12-09 10:50 - Note: Walls arent done being mudded and taped

| ID | WBS | Activity | Duration | Start | Finish | Predecessors | Complete | Remaining | Planned start | Planned finish | Total float | Free float | Constraint | Calendar | Level | Location | Baseline | Layton Responsible Party | Phase-1 | Project Section | Subcontractor | Allucent CSI Group | Project Section-1 | Phase-1-1 | Last Period Finish | Last Period Start |
| --- | --- | --- | --- | --- | --- | --- | --- | --- | --- | --- | --- | --- | --- | --- | --- | --- | --- | --- | --- | --- | --- | --- | --- | --- | --- | --- |
|  | 8 | **L1 / BOH // Fire Riser Room #1063** |  | 2025-12-01 | 2026-02-02 |  |  |  |  |  |  |  |  |  |  |  |  |  |  |  |  |  |  |  |  |  |
| QTS-25931 |  | Fire Pump Room #1063 // Frame Walls | 2d | 2025-12-01 A | 2025-12-02 A | QTS-25751 | 100% |  |  |  |  |  |  |  | Level 1 | BOH | IGMP | Sean Waisner | Phase 1 | Construction |  |  |  |  |  |  |
| QTS-26221 |  | Fire Pump Room #1063 // Rough In Electrical | 10d | 2025-12-03 A | 2025-12-05 A | QTS-25931 | 100% |  | 2025-12-03 | 2025-12-16 |  |  |  |  | Level 1 | BOH | IGMP | Scott Masterson | Phase 1 | Construction | Rosendin Electric, Inc |  |  |  |  |  |
| QTS-26231 |  | Fire Pump Room #1063 // In Wall Rough Plumbing | 5d | 2025-12-03 A | 2025-12-09 A | QTS-25931 | 100% |  |  |  |  |  |  |  | Level 1 | BOH | IGMP | Dave Wiltberger | Phase 1 | Construction | Bel-Aire Mechanical, LLC | 01ADMIN |  |  |  |  |
| QTS-26681 |  | Fire Pump Room #1063 // In Wall Inspection | 5d | 2025-12-08 A | 2025-12-08 A | QTS-26231, QTS-26221 | 100% |  | 2025-12-08 | 2025-12-12 |  |  |  |  | Level 1 | BOH | IGMP | Dave Wiltberger | Phase 1 | Construction | Bel-Aire Mechanical, LLC |  |  |  |  |  |
| QTS-27381 |  | Fire Pump Room #1063 // Hang Drywall | 5d | 2025-12-08 A | 2025-12-19 A | QTS-26681 | 100% |  | 2025-12-08 | 2025-12-12 |  |  |  |  | Level 1 | BOH | IGMP | Sean Waisner | Phase 1 | Construction |  | 01ADMIN |  |  |  |  |
| QTS-26241 |  | Fire Pump Room #1063 // Set HM Frame | 1d | 2025-12-10 A | 2025-12-10 A | QTS-25931 FF, QTS-99620 | 100% |  |  |  |  |  |  |  | Level 1 | BOH | IGMP | Sean Waisner | Phase 1 | Construction |  | 01ADMIN |  |  |  |  |
| QTS-28091 |  | Fire Pump Room #1063 // Tape & Finish Drywall | 5d | 2025-12-29 A | 2025-12-31 A | QTS-27381, QTS-27571 | 100% |  | 2025-12-29 | 2026-01-06 |  |  |  |  | Level 1 | BOH | IGMP | Sean Waisner | Phase 1 | Construction |  | 01ADMIN |  |  |  |  |
| QTS-28681 |  | Fire Pump Room #1063 // Prime & Paint | 5d | 2026-01-05 A | 2026-01-06 A | QTS-28091 | 100% |  | 2026-01-05 | 2026-01-09 |  |  |  |  | Level 1 | BOH | IGMP | Sean Waisner | Phase 1 | Construction |  | 01ADMIN |  |  |  |  |
| QTS-29001 |  | Fire Pump Room #1063 // Install OH Electrical | 5d | 2026-01-14 | 2026-01-20 | QTS-28681 |  |  |  |  | 70d | 62d |  | QTS-PHX3 DC1 - 6 day w/ Holidays | Level 1 | BOH | IGMP | Scott Masterson | Phase 1 | Construction | Rosendin Electric, Inc |  |  |  |  |  |
| QTS-29301 |  | Fire Pump Room #1063 // Rough Overhead Fire Sprinkler | 6d | 2026-01-14 A | 2026-01-14 | QTS-42221 | 100% | 0d | 2026-01-14 | 2026-01-22 | 49d | 0d |  |  | Level 1 | BOH | IGMP | Dave Wiltberger | Phase 1 | Construction | Olympic West Fire Protection | 01ADMIN |  |  |  |  |
| QTS-29681 |  | Fire Pump Room #1063 // Build Fire Risers | 10d | 2026-01-14 | 2026-01-26 | QTS-29301 |  |  |  |  | 59d | 0d |  | QTS-PHX3 DC1 - 6 day w/ Holidays | Level 1 | BOH | IGMP | Dave Wiltberger | Phase 1 | Construction | Olympic West Fire Protection |  |  |  |  |  |
| QTS-30281 |  | Fire Pump Room #1063 // Install Heater | 5d | 2026-01-14 | 2026-01-20 | QTS-27381 |  |  |  |  | 70d | 62d |  | QTS-PHX3 DC1 - 6 day w/ Holidays | Level 1 | BOH | IGMP | Dave Wiltberger | Phase 1 | Construction | Bel-Aire Mechanical, LLC |  |  |  |  |  |
| QTS-30101 |  | Fire Pump Room #1063 // Air Test System | 2d | 2026-01-27 | 2026-01-28 | QTS-29681, QTS-26381, QTS-26521, QTS-27271 |  |  |  |  | 59d | 0d |  | QTS-PHX3 DC1 - 6 day w/ Holidays | Level 1 | BOH | IGMP | Dave Wiltberger | Phase 1 | Construction | Olympic West Fire Protection |  |  |  |  |  |
| QTS-1004010 |  | Fire Pump Room #1063 // Water Test System | 2d | 2026-01-29 | 2026-01-30 | QTS-30101 |  |  |  |  | 59d | 0d |  | QTS-PHX3 DC1 - 6 day w/ Holidays | Level 1 | BOH | IGMP | Dave Wiltberger | Phase 1 | Construction | Olympic West Fire Protection |  |  |  |  |  |
| QTS-1004000 |  | Fire Pump Room #1063 // City Inspection of Fire Pump/System | 2d | 2026-01-31 | 2026-02-02 | QTS-1004010 |  |  |  |  | 59d | 51d |  | QTS-PHX3 DC1 - 6 day w/ Holidays | Level 1 | FOH | IGMP | Dave Wiltberger | Phase 1 | Construction | Olympic West Fire Protection | 01ADMIN |  |  |  |  |
| QTS-45641 |  | Fire Pump Room #1063 // Set Door & Hardware | 1d | 2026-02-02 | 2026-02-02 | QTS-28091, QTS-99650, QTS-26241, QTS-99630 |  |  |  |  | 59d | 51d | start on or after 2026-02-02 | QTS-PHX3 DC1 - 6 day w/ Holidays | Level 1 | BOH | IGMP | Sean Waisner |  | Construction | ISEC Incorporated | 01ADMIN | Construction | Phase 1 |  |  |
|  | 4 | **L1 / BOH // Restrooms #1077/1078** |  | 2025-12-01 | 2026-03-24 |  |  |  |  |  |  |  |  |  |  |  |  |  |  |  |  |  |  |  |  |  |
| QTS-26631 |  | Restrooms #1078/1077 // Layout | 1d | 2025-12-01 A | 2025-12-01 A | QTS-25751 | 100% |  | 2025-11-20 | 2025-11-20 |  |  |  |  | Level 1 | BOH | IGMP | Sean Waisner | Phase 1 | Construction |  | 01ADMIN |  |  | 2023-01-05 | 2023-01-05 |
| QTS-28311 |  | Restrooms #1078/1077 // Rough Overhead Fire Sprinkler | 1d | 2025-12-30 A | 2025-12-30 A | QTS-42221 SS | 100% |  |  |  |  |  |  | QTS-PHX3 DC1 - 6 day w/ Holidays | Level 1 | BOH | IGMP | Dave Wiltberger | Phase 1 | Construction | Olympic West Fire Protection |  |  |  | 2023-01-17 | 2023-01-13 |
|  | 1 | **Fragnet / RFI #817** |  | 2026-01-14 | 2026-01-28 |  |  |  |  |  |  |  |  |  |  |  |  |  |  |  |  |  |  |  |  |  |
| QTS-1004540 |  | Fragnet / Corgan Site Visit | 1d | 2026-01-14 | 2026-01-14 | QTS-1371 SS |  |  |  |  | 16d | 0d |  | QTS-PHX3 DC1 - 6 day w/ Holidays | Level 1 | BOH | IGMP | Sean Waisner |  | Construction | Performance Contracting, Inc. |  | Construction | Phase 1 | 2023-04-21 | 2023-04-20 |
| QTS-1004550 |  | Fragnet / Submission of RFI #817 for Restroom Walls | 4d | 2026-01-15 | 2026-01-20 | QTS-1004540 |  |  |  |  | 16d | 0d |  | QTS-PHX3 DC1 - 6 day w/ Holidays | Level 1 | BOH | IGMP | Sean Waisner |  | Construction | Performance Contracting, Inc. |  | Construction | Phase 1 | 2023-04-21 | 2023-04-20 |
| QTS-1004560 |  | Fragnet / Design Response on RFI #817 for Restroom Walls | 8d | 2026-01-27 A | 2026-01-28 | QTS-1004550 | 12% | 7d | 2026-01-27 | 2026-02-04 | 16d | 0d |  | QTS-PHX3 DC1 - 6 day w/ Holidays | Level 1 | BOH | IGMP | Sean Waisner |  | Construction | Performance Contracting, Inc. |  | Construction | Phase 1 | 2023-04-21 | 2023-04-20 |

Notes:
- QTS-27381: allucent_notes_20251230_164549: Zach Gioe on 2025-12-16 13:41: Work has been intermittent due to exterior framing completion. / allucent_notes_20251216_165335: Zach Gioe on 2025-12-16 13:41: Work has been intermittent due to exterior framing completion. / allucent_notes: 2025-12-16 13:41 - User: Zach Gioe - Date Added: 2025-12-16 13:41 - Note: Work has been intermittent due to exterior framing completion.

| ID | WBS | Activity | Duration | Start | Finish | Predecessors | Total float | Free float | Constraint | Calendar | Last Period Finish | Last Period Start | Subcontractor | Level | Location | Baseline | Layton Responsible Party | Phase-1 | Project Section | Project Section-1 | Phase-1-1 |
| --- | --- | --- | --- | --- | --- | --- | --- | --- | --- | --- | --- | --- | --- | --- | --- | --- | --- | --- | --- | --- | --- |
|  | 2 | **Remaining Scope** |  | 2026-01-29 | 2026-03-24 |  |  |  |  |  |  |  |  |  |  |  |  |  |  |  |  |
| QTS-26711 |  | Restrooms #1078/1077 // Frame Walls | 2d | 2026-01-29 | 2026-01-30 | QTS-1004560, QTS-26631, QTS-26401, QTS-28311 | 16d | 0d | start on or after 2026-01-26 | QTS-PHX3 DC1 - 6 day w/ Holidays | 2023-01-09 | 2023-01-06 | Performance Contracting, Inc. | Level 1 | BOH | IGMP | Sean Waisner | Phase 1 | Construction |  |  |
| QTS-45661 |  | Restrooms #1078/1077 // Set HM Frame | 2d | 2026-01-29 | 2026-01-30 | QTS-26711 SS, QTS-99620 | 59d | 41d |  | QTS-PHX3 DC1 - 6 day w/ Holidays | 2023-04-21 | 2023-04-20 | Performance Contracting, Inc. | Level 1 | BOH | IGMP | Sean Waisner |  | Construction | Construction | Phase 1 |
| QTS-1004060 |  | Restrooms #1078/1077 // Top Out Interior Walls | 1d | 2026-01-31 | 2026-01-31 | QTS-26711 | 16d | 0d |  | QTS-PHX3 DC1 - 6 day w/ Holidays | 2023-01-09 | 2023-01-06 | Performance Contracting, Inc. | Level 1 | BOH | IGMP | Sean Waisner | Phase 1 | Construction |  |  |
| QTS-26961 |  | Restrooms #1078/1077 // Rough In-Wall Electrical, Security, & Access Controls | 2d | 2026-01-31 | 2026-02-02 | QTS-9871, QTS-26711 | 31d | 3d |  | QTS-PHX3 DC1 - 6 day w/ Holidays | 2023-01-12 | 2023-01-10 | Securitas Technology Corporation | Level 1 | BOH | IGMP | Scott Masterson | Phase 1 | Construction |  |  |
| QTS-26971 |  | Restrooms #1078/1077 // Rough In-Wall Plumbing | 5d | 2026-01-31 | 2026-02-05 | QTS-26711 | 28d | 0d |  | QTS-PHX3 DC1 - 6 day w/ Holidays | 2023-01-13 | 2023-01-11 | Bel-Aire Mechanical, LLC | Level 1 | BOH | IGMP | Dave Wiltberger | Phase 1 | Construction |  |  |
| QTS-1004070 |  | Restrooms #1078/1077 // Tape & Finish Interior Walls - Top Out | 4d | 2026-02-02 | 2026-02-05 | QTS-1004060 | 16d | 0d |  | QTS-PHX3 DC1 - 6 day w/ Holidays | 2023-01-09 | 2023-01-06 | Performance Contracting, Inc. | Level 1 | BOH | IGMP | Sean Waisner | Phase 1 | Construction |  |  |
| QTS-1004080 |  | Restrooms #1078/1077 // Prime & Paint Interior Walls - Top Out | 1d | 2026-02-06 | 2026-02-06 | QTS-1004070 | 16d | 0d |  | QTS-PHX3 DC1 - 6 day w/ Holidays | 2023-01-09 | 2023-01-06 | Performance Contracting, Inc. | Level 1 | BOH | IGMP | Sean Waisner | Phase 1 | Construction |  |  |
| QTS-27751 |  | Restrooms #1078/1077 // In Wall Inspection | 1d | 2026-02-06 | 2026-02-06 | QTS-26971, QTS-26961 | 28d | 0d |  | QTS-PHX3 DC1 - 6 day w/ Holidays | 2023-01-17 | 2023-01-17 | Bel-Aire Mechanical, LLC | Level 1 | BOH | IGMP | Dave Wiltberger | Phase 1 | Construction |  |  |
| QTS-27771 |  | Restrooms #1078/1077 // Install Backing for Restroom Specialties | 1d | 2026-02-06 | 2026-02-06 | QTS-26971 | 28d | 0d |  | QTS-PHX3 DC1 - 6 day w/ Holidays | 2023-02-27 | 2023-02-27 | Performance Contracting, Inc. | Level 1 | BOH | IGMP | Sean Waisner | Phase 1 | Construction |  |  |
| QTS-26951 |  | Restrooms #1078/1077 // Rough Overhead Mechanical | 5d | 2026-02-07 | 2026-02-12 | QTS-1004080, QTS-26711 | 16d | 0d |  | QTS-PHX3 DC1 - 6 day w/ Holidays | 2023-01-26 | 2023-01-23 | Bel-Aire Mechanical, LLC | Level 1 | BOH | IGMP | Dave Wiltberger | Phase 1 | Construction |  |  |
| QTS-27901 |  | Restrooms #1078/1077 // Insulate Walls | 1d | 2026-02-07 | 2026-02-07 | QTS-27751, QTS-27771 | 28d | 0d |  | QTS-PHX3 DC1 - 6 day w/ Holidays | 2023-02-24 | 2023-02-24 | Performance Contracting, Inc. | Level 1 | BOH | IGMP | Sean Waisner | Phase 1 | Construction |  |  |
| QTS-28431 |  | Restrooms #1078/1077 // Hang Drywall Walls | 1d | 2026-02-09 | 2026-02-09 | QTS-28311, QTS-27901, QTS-27751 | 28d | 12d |  | QTS-PHX3 DC1 - 6 day w/ Holidays | 2023-03-01 | 2023-02-28 | Performance Contracting, Inc. | Level 1 | BOH | IGMP | Sean Waisner | Phase 1 | Construction |  |  |
| QTS-27741 |  | Restrooms #1078/1077 // Rough Overhead Plumbing | 5d | 2026-02-13 | 2026-02-18 | QTS-26951, QTS-26711 | 16d | 0d |  | QTS-PHX3 DC1 - 6 day w/ Holidays | 2023-01-12 | 2023-01-10 | Bel-Aire Mechanical, LLC | Level 1 | BOH | IGMP | Dave Wiltberger | Phase 1 | Construction |  |  |
| QTS-27761 |  | Restrooms #1078/1077 // Rough Overhead Electrical/ Light Fixtures Install | 2d | 2026-02-13 | 2026-02-14 | QTS-26951, QTS-26711 | 21d | 5d |  | QTS-PHX3 DC1 - 6 day w/ Holidays | 2023-03-08 | 2023-03-07 | Rosendin Electric, Inc | Level 1 | BOH | IGMP | Scott Masterson | Phase 1 | Construction |  |  |
| QTS-45651 |  | Restrooms #1078/1077 // Frame Ceilings | 2d | 2026-02-19 | 2026-02-20 | QTS-27741 | 16d | 0d |  | QTS-PHX3 DC1 - 6 day w/ Holidays | 2023-01-09 | 2023-01-06 | Performance Contracting, Inc. | Level 1 | BOH | IGMP | Sean Waisner |  | Construction | Construction | Phase 1 |
| QTS-28441 |  | Restrooms #1078/1077 // Above Ceiling Inspection | 1d | 2026-02-21 | 2026-02-21 | QTS-28311, QTS-27761, QTS-27741, QTS-45651 | 16d | 0d |  | QTS-PHX3 DC1 - 6 day w/ Holidays | 2023-03-09 | 2023-03-09 | Bel-Aire Mechanical, LLC | Level 1 | BOH | IGMP | Dave Wiltberger | Phase 1 | Construction |  |  |
| QTS-28551 |  | Restrooms #1078/1077 // Hang Drywall on Hard Lids | 1d | 2026-02-23 | 2026-02-23 | QTS-28431 FF, QTS-28441 | 16d | 0d |  | QTS-PHX3 DC1 - 6 day w/ Holidays | 2023-03-13 | 2023-03-10 | Performance Contracting, Inc. | Level 1 | BOH | IGMP | Sean Waisner | Phase 1 | Construction |  |  |
| QTS-28711 |  | Restrooms #1078/1077 // Tape & Finish Drywall | 3d | 2026-02-24 | 2026-02-26 | QTS-28431, QTS-28551 | 16d | 0d |  | QTS-PHX3 DC1 - 6 day w/ Holidays | 2023-03-20 | 2023-03-14 | Performance Contracting, Inc. | Level 1 | BOH | IGMP | Sean Waisner | Phase 1 | Construction |  |  |
| QTS-28911 |  | Restrooms #1078/1077 // Prime & Paint | 1d | 2026-02-27 | 2026-02-27 | QTS-28711 | 16d | 0d |  | QTS-PHX3 DC1 - 6 day w/ Holidays | 2023-04-12 | 2023-04-11 | Pennington Painting Company, LLC | Level 1 | BOH | IGMP | Sean Waisner | Phase 1 | Construction |  |  |
| QTS-28981 |  | Restrooms #1078/1077 // Install Wall & Floor Tile | 10d | 2026-02-28 | 2026-03-11 | QTS-28711, QTS-28911 | 16d | 0d |  | QTS-PHX3 DC1 - 6 day w/ Holidays | 2023-04-10 | 2023-04-06 | Wholesale Floors, LLC -AZ | Level 1 | BOH | IGMP | Sean Waisner | Phase 1 | Construction |  |  |
| QTS-29501 |  | Restrooms #1078/1077 // Field Measure for Countertops | 1d | 2026-03-07 | 2026-03-07 | QTS-28711, QTS-28981 SS+6d | 16d | 0d |  | QTS-PHX3 DC1 - 6 day w/ Holidays |  |  | ISEC Incorporated | Level 1 | BOH | IGMP | Sean Waisner | Phase 1 | Construction |  |  |
| QTS-29551 |  | Restrooms #1078/1077 // Fabricate & Delivery Countertops | 10d | 2026-03-09 | 2026-03-19 | QTS-29501 | 16d | 0d |  | QTS-PHX3 DC1 - 6 day w/ Holidays |  |  | ISEC Incorporated | Level 1 | BOH | IGMP | Sean Waisner | Phase 1 | Construction | Construction |  |
| QTS-29481 |  | Restrooms #1078/1077 // Plumbing Fixtures Install | 5d | 2026-03-12 | 2026-03-17 | QTS-28981, QTS-28911 | 18d | 0d |  | QTS-PHX3 DC1 - 6 day w/ Holidays | 2023-04-14 | 2023-04-13 | Bel-Aire Mechanical, LLC | Level 1 | BOH | IGMP | Dave Wiltberger | Phase 1 | Construction |  |  |
| QTS-29491 |  | Restrooms #1078/1077 // Electrical Trim | 1d | 2026-03-12 | 2026-03-12 | QTS-28981, QTS-28911 | 21d | 0d |  | QTS-PHX3 DC1 - 6 day w/ Holidays | 2023-04-14 | 2023-04-13 | Specified Electrical Contractors, Inc | Level 1 | BOH | IGMP | Scott Masterson | Phase 1 | Construction |  |  |
| QTS-29511 |  | Restrooms #1078/1077 // Set Lockers | 2d | 2026-03-12 | 2026-03-13 | QTS-28981 | 23d | 5d |  | QTS-PHX3 DC1 - 6 day w/ Holidays |  |  | Inter-Co Restroom and Locker Supply, Inc | Level 1 | BOH | IGMP | Sean Waisner | Phase 1 | Construction | Construction |  |
| QTS-29541 |  | Restrooms #1078/1077 // Final Coat of Paint | 1d | 2026-03-13 | 2026-03-13 | QTS-29491 | 21d | 0d |  | QTS-PHX3 DC1 - 6 day w/ Holidays |  |  | Pennington Painting Company, LLC | Level 1 | BOH | IGMP | Sean Waisner | Phase 1 | Construction |  |  |
| QTS-29601 |  | Restrooms #1078/1077 // Install Mechanical Trim | 1d | 2026-03-14 | 2026-03-14 | QTS-29541, QTS-28911 | 22d | 4d |  | QTS-PHX3 DC1 - 6 day w/ Holidays | 2023-04-14 | 2023-04-13 | Bel-Aire Mechanical, LLC | Level 1 | BOH | IGMP | Dave Wiltberger | Phase 1 | Construction |  |  |
| QTS-29661 |  | Restrooms #1078/1077 // Install Restroom Specialties/ ADA Trim | 2d | 2026-03-18 | 2026-03-19 | QTS-29541, QTS-29481 | 18d | 0d |  | QTS-PHX3 DC1 - 6 day w/ Holidays | 2023-04-21 | 2023-04-20 | Inter-Co Restroom and Locker Supply, Inc | Level 1 | BOH | IGMP | Sean Waisner | Phase 1 | Construction |  |  |
| QTS-29751 |  | Restrooms #1078/1077 // Set Doors & Hardware | 2d | 2026-03-20 | 2026-03-21 | QTS-29601, QTS-29661, QTS-29511, QTS-45661, QTS-99650 | 18d | 10d |  | QTS-PHX3 DC1 - 6 day w/ Holidays | 2023-04-21 | 2023-04-20 | ISEC Incorporated | Level 1 | BOH | IGMP | Sean Waisner | Phase 1 | Construction |  |  |
| QTS-29951 |  | Restrooms #1078/1077 // Set Countertops | 2d | 2026-03-20 | 2026-03-21 | QTS-29551 | 16d | 0d |  | QTS-PHX3 DC1 - 6 day w/ Holidays |  |  | ISEC Incorporated | Level 1 | BOH | IGMP | Sean Waisner | Phase 1 | Construction | Construction |  |
| QTS-30001 |  | Restrooms #1078/1077 // Install Plumbing Trim at Countertops | 2d | 2026-03-23 | 2026-03-24 | QTS-29951 | 16d | 8d |  | QTS-PHX3 DC1 - 6 day w/ Holidays |  |  | Bel-Aire Mechanical, LLC | Level 1 | BOH | IGMP | Dave Wiltberger | Phase 1 | Construction | Construction |  |

| ID | WBS | Activity | Duration | Start | Finish | Predecessors | Complete | Planned start | Planned finish | Total float | Free float | Constraint | Calendar | Subcontractor | Level | Location | Project Section-1 | Phase-1-1 | Baseline | Layton Responsible Party | Project Section | Allucent CSI Group | Phase-1 |
| --- | --- | --- | --- | --- | --- | --- | --- | --- | --- | --- | --- | --- | --- | --- | --- | --- | --- | --- | --- | --- | --- | --- | --- |
|  | 11 | **L1 / BOH // Elevator #E4** |  | 2025-12-09 | 2026-06-13 |  |  |  |  |  |  |  |  |  |  |  |  |  |  |  |  |  |  |
| QTS-27151 |  | Freight Elevator E4 // Safety Barricade Install & Netting | 4d | 2025-12-09 A | 2026-01-08 A | QTS-26091 | 100% | 2025-12-09 | 2025-12-12 |  |  |  | QTS-PHX3 DC1 - 6 day w/ Holidays | Otis Elevator Company | Level 1 | BOH | Construction | Phase 1 | IGMP | Sean Waisner | Construction | 01ADMIN |  |
| QTS-27801 |  | Freight Elevator E4 // Provide Temp Power Box at Level 1 Elevator Entry | 2d | 2026-01-14 | 2026-01-15 | QTS-27151 |  |  |  | 41d | 9d |  | QTS-PHX3 DC1 - 6 day w/ Holidays | Otis Elevator Company | Level 1 | BOH | Construction | Phase 1 | IGMP | Sean Waisner | Construction | 01ADMIN |  |
| QTS-28061 |  | Freight Elevator E4 // Temp Roof Above Elevator Shaft | 5d | 2026-01-28 | 2026-02-02 | QTS-27801 |  |  |  | 32d | 34d | start on or after 2026-01-28 | QTS-PHX3 DC1 - 6 day w/ Holidays | Otis Elevator Company | Level 1 | BOH | Construction | Phase 1 | IGMP | Sean Waisner | Construction | 01ADMIN |  |
| QTS-30731 |  | Freight Elevator E4 // Install Rails | 10d | 2026-03-14 | 2026-03-25 | QTS-28061, QTS-26091, QTS-18861, QTS-30751 FS+1d |  |  |  | -2d | 0d |  | QTS-PHX3 DC1 - 6 day w/ Holidays | Otis Elevator Company | Level 1 | BOH |  |  | IGMP | Sean Waisner | Construction |  | Phase 1 |
| QTS-30781 |  | Freight Elevator E4 // Install Machine & Controller | 8d | 2026-03-26 | 2026-04-03 | QTS-1002840, QTS-1002860, QTS-1002880, QTS-27151, QTS-30731 |  |  |  | -2d | 0d |  | QTS-PHX3 DC1 - 6 day w/ Holidays | Otis Elevator Company | Level 1 | BOH |  |  | IGMP | Sean Waisner | Construction |  | Phase 1 |
| QTS-30841 |  | Freight Elevator E4 // Install Elevator Floor & Walls | 8d | 2026-04-04 | 2026-04-13 | QTS-30781 |  |  |  | -2d | 0d |  | QTS-PHX3 DC1 - 6 day w/ Holidays | Otis Elevator Company | Level 1 | BOH |  |  | IGMP | Sean Waisner | Construction |  | Phase 1 |
| QTS-30871 |  | Freight Elevator E4 // Hoistway Equipment, Conduit & Wire | 7d | 2026-04-14 | 2026-04-21 | QTS-30841 |  |  |  | -2d | 0d |  | QTS-PHX3 DC1 - 6 day w/ Holidays | Otis Elevator Company | Level 1 | BOH |  |  | IGMP | Sean Waisner | Construction |  | Phase 1 |
| QTS-30901 |  | Freight Elevator E4 // Install Elevator Thresholds & Grout | 5d | 2026-04-22 | 2026-04-27 | QTS-30871 |  |  |  | 42d | 0d |  | QTS-PHX3 DC1 - 6 day w/ Holidays | Otis Elevator Company | Level 1 | BOH | Construction | Phase 1 | IGMP | Sean Waisner | Construction |  |  |
| QTS-30921 |  | Freight Elevator E4 // Install Conduit for Heat & Smoke Sensors Elevator Shaft | 5d | 2026-04-28 | 2026-05-02 | QTS-30901 |  |  |  | 42d | 0d |  | QTS-PHX3 DC1 - 6 day w/ Holidays | Otis Elevator Company | Level 1 | BOH | Construction | Phase 1 | IGMP | Sean Waisner | Construction |  |  |
| QTS-30931 |  | Freight Elevator E4 // Install Entrances, Doors, Hardware | 10d | 2026-05-04 | 2026-05-14 | QTS-30921, QTS-30901, QTS-30841, QTS-30871 |  |  |  | 42d | 0d |  | QTS-PHX3 DC1 - 6 day w/ Holidays | Otis Elevator Company | Level 1 | BOH |  |  | IGMP | Sean Waisner | Construction |  | Phase 1 |
| QTS-30941 |  | Freight Elevator E4 // Pre-Adjustment Checklist | 5d | 2026-05-15 | 2026-05-20 | QTS-30871 FF, QTS-30931 |  |  |  | 42d | 0d |  | QTS-PHX3 DC1 - 6 day w/ Holidays | Otis Elevator Company | Level 1 | BOH |  |  | IGMP | Sean Waisner | Construction |  | Phase 1 |
| QTS-30951 |  | Freight Elevator E4 // Adjust Freight Elevator E4 | 10d | 2026-05-21 | 2026-06-02 | QTS-30941 |  |  |  | 42d | 0d |  | QTS-PHX3 DC1 - 6 day w/ Holidays | Otis Elevator Company | Level 1 | BOH |  |  | IGMP | Sean Waisner | Construction |  | Phase 1 |
| QTS-30961 |  | Freight Elevator E4 // State Elevator Inspection | 5d | 2026-06-03 | 2026-06-08 | QTS-30951 |  |  |  | 42d | 0d |  | QTS-PHX3 DC1 - 6 day w/ Holidays | Otis Elevator Company | Level 1 | BOH |  |  | IGMP | Sean Waisner | Construction |  | Phase 1 |
| QTS-30971 |  | Freight Elevator E4 // City Inspection | 5d | 2026-06-09 | 2026-06-13 | QTS-30961, QTS-30951 |  |  |  | 42d | 38d |  | QTS-PHX3 DC1 - 6 day w/ Holidays | Otis Elevator Company | Level 1 | BOH |  |  | IGMP | Sean Waisner | Construction |  | Phase 1 |
|  | 1 | **L1 / BOH // Elevator Machine Room** |  | 2026-01-14 | 2026-01-31 |  |  |  |  |  |  |  |  |  |  |  |  |  |  |  |  |  |  |
| QTS-1002680 |  | Elevator Machine Room #1062 // Frame Walls | 2d | 2026-01-14 | 2026-01-15 | QTS-28311 |  |  |  | 43d | 0d |  | QTS-PHX3 DC1 - 6 day w/ Holidays | Performance Contracting, Inc. | Level 1 | BOH | Construction | Phase 1 | IGMP | Sean Waisner | Construction |  |  |
| QTS-1002830 |  | Elevator Machine Room #1062 // Insulate Walls | 1d | 2026-01-15 | 2026-01-15 | QTS-1002680 FF |  |  |  | 43d | 0d |  | QTS-PHX3 DC1 - 6 day w/ Holidays | Performance Contracting, Inc. | Level 1 | BOH | Construction | Phase 1 | IGMP | Sean Waisner | Construction |  |  |
| QTS-1002690 |  | Elevator Machine Room #1062 // Rough In Wall Electrical | 2d | 2026-01-16 | 2026-01-17 | QTS-1002680 |  |  |  | 46d | 0d |  | QTS-PHX3 DC1 - 6 day w/ Holidays | Rosendin Electric, Inc | Level 1 | BOH | Construction | Phase 1 | IGMP | Scott Masterson | Construction |  |  |
| QTS-1002710 |  | Elevator Machine Room #1062 // Hang Drywall | 2d | 2026-01-16 | 2026-01-17 | QTS-1002830 |  |  |  | 43d | 0d |  | QTS-PHX3 DC1 - 6 day w/ Holidays | Performance Contracting, Inc. | Level 1 | BOH | Construction | Phase 1 | IGMP | Sean Waisner | Construction | 01ADMIN |  |
| QTS-1002720 |  | Elevator Machine Room #1062 // Set HM Frame | 1d | 2026-01-16 | 2026-01-16 | QTS-1002680 |  |  |  | 48d | 5d |  | QTS-PHX3 DC1 - 6 day w/ Holidays | Performance Contracting, Inc. | Level 1 | BOH | Construction | Phase 1 | IGMP | Sean Waisner | Construction | 01ADMIN |  |
| QTS-1002700 |  | Elevator Machine Room #1062 // In Wall Inspection | 1d | 2026-01-20 | 2026-01-20 | QTS-1002690 |  |  |  | 46d | 3d |  | QTS-PHX3 DC1 - 6 day w/ Holidays | Rosendin Electric, Inc | Level 1 | BOH | Construction | Phase 1 | IGMP | Scott Masterson | Construction |  |  |
| QTS-1002740 |  | Elevator Machine Room #1062 // Tape & Finish Drywall | 4d | 2026-01-20 | 2026-01-23 | QTS-1002710 |  |  |  | 43d | 0d |  | QTS-PHX3 DC1 - 6 day w/ Holidays | Performance Contracting, Inc. | Level 1 | BOH | Construction | Phase 1 | IGMP | Sean Waisner | Construction | 01ADMIN |  |
| QTS-1002750 |  | Elevator Machine Room #1062 // Prime & Paint | 2d | 2026-01-24 | 2026-01-26 | QTS-1002700, QTS-1002720, QTS-1002740 |  |  |  | 43d | 0d |  | QTS-PHX3 DC1 - 6 day w/ Holidays | Pennington Painting Company, LLC | Level 1 | BOH | Construction | Phase 1 | IGMP | Sean Waisner | Construction | 01ADMIN |  |
| QTS-1002730 |  | Elevator Machine Room #1062 // Rough Overhead Linesets | 3d | 2026-01-27 | 2026-01-29 | QTS-1002750, QTS-1002680 |  |  |  | 43d | 0d |  | QTS-PHX3 DC1 - 6 day w/ Holidays | Bel-Aire Mechanical, LLC | Level 1 | BOH | Construction | Phase 1 | IGMP | Dave Wiltberger | Construction | 01ADMIN |  |
| QTS-1002840 |  | Elevator Machine Room #1062 // Install Wall Base | 1d | 2026-01-27 | 2026-01-27 | QTS-1002750 |  |  |  | 47d | 49d |  | QTS-PHX3 DC1 - 6 day w/ Holidays | Wholesale Floors, LLC -AZ | Level 1 | BOH | Construction | Phase 1 | IGMP | Sean Waisner | Construction | 01ADMIN |  |
| QTS-1002850 |  | Elevator Machine Room #1062 // Rough OH Electrical | 2d | 2026-01-27 | 2026-01-28 | QTS-1002750 |  |  |  | 44d | 0d |  | QTS-PHX3 DC1 - 6 day w/ Holidays | Rosendin Electric, Inc | Level 1 | BOH | Construction | Phase 1 | IGMP | Sean Waisner | Construction | 01ADMIN |  |
| QTS-1002860 |  | Elevator Machine Room #1062 // Install Light Fixtures / Electrical Trim / Disconnects | 2d | 2026-01-29 | 2026-01-30 | QTS-1002850 |  |  |  | 44d | 46d |  | QTS-PHX3 DC1 - 6 day w/ Holidays | Rosendin Electric, Inc | Level 1 | BOH | Construction | Phase 1 | IGMP | Sean Waisner | Construction | 01ADMIN |  |
| QTS-1002880 |  | Elevator Machine Room #1062 // Install AC Unit | 2d | 2026-01-30 | 2026-01-31 | QTS-1002730, QTS-1002850, QTS-1002750 |  |  |  | 43d | 45d |  | QTS-PHX3 DC1 - 6 day w/ Holidays | Bel-Aire Mechanical, LLC | Level 1 | BOH | Construction | Phase 1 | IGMP | Sean Waisner | Construction | 01ADMIN |  |

Notes:
- QTS-1002730: allucent_notes_20251209_203830: Zack Goertz on 2025-12-09 10:50: Walls arent done being mudded and taped / allucent_notes_20251216_165335: Zack Goertz on 2025-12-09 10:50: Walls arent done being mudded and taped / allucent_notes: 2025-12-09 10:50 - User: Zack Goertz - Date Added: 2025-12-09 10:50 - Note: Walls arent done being mudded and taped

| ID | WBS | Activity | Duration | Start | Finish | Predecessors | Complete | Planned start | Planned finish | Total float | Free float | Constraint | Calendar | Subcontractor | Project Section-1 | Phase-1-1 | Baseline | Layton Responsible Party | Project Section | Allucent CSI Group | Level | Location |
| --- | --- | --- | --- | --- | --- | --- | --- | --- | --- | --- | --- | --- | --- | --- | --- | --- | --- | --- | --- | --- | --- | --- |
|  | 6 | **L1 / BOH // Loading Dock** |  | 2026-01-14 | 2026-02-17 |  |  |  |  |  |  |  |  |  |  |  |  |  |  |  |  |  |
| QTS-1002670 |  | BOH Loading Dock // Install CIP Stairs | 5d | 2026-01-14 | 2026-01-20 | QTS-12581 |  |  |  | 70d | 62d |  | QTS-PHX3 DC1 - 6 day w/ Holidays | Suntec Concrete Inc | Construction | Phase 2 | IGMP | Ron Carroll | Construction | 01ADMIN |  |  |
| QTS-1002770 |  | BOH Loading Dock // Frame Walls | 2d | 2026-01-16 | 2026-01-17 | QTS-1002680 |  |  |  | 46d | 0d |  | QTS-PHX3 DC1 - 6 day w/ Holidays | Performance Contracting, Inc. | Construction | Phase 1 | IGMP | Sean Waisner | Construction |  | Level 1 | BOH |
| QTS-1002780 |  | BOH Loading Dock // Rough In Wall Electrical | 10d | 2026-01-20 | 2026-01-30 | QTS-1002770 |  |  |  | 46d | 0d |  | QTS-PHX3 DC1 - 6 day w/ Holidays | Rosendin Electric, Inc | Construction | Phase 1 | IGMP | Scott Masterson | Construction |  | Level 1 | BOH |
| QTS-1002790 |  | BOH Loading Dock // In Wall Inspection | 1d | 2026-01-31 | 2026-01-31 | QTS-1002780 |  |  |  | 46d | 0d |  | QTS-PHX3 DC1 - 6 day w/ Holidays | Rosendin Electric, Inc | Construction | Phase 1 | IGMP | Dave Wiltberger | Construction |  | Level 1 | BOH |
| QTS-1002800 |  | BOH Loading Dock // Hang Drywall | 1d | 2026-02-02 | 2026-02-02 | QTS-1002790 |  |  |  | 46d | 0d |  | QTS-PHX3 DC1 - 6 day w/ Holidays | Performance Contracting, Inc. | Construction | Phase 1 | IGMP | Sean Waisner | Construction | 01ADMIN | Level 1 | BOH |
| QTS-1002810 |  | BOH Loading Dock // Tape & Finish Drywall | 3d | 2026-02-03 | 2026-02-05 | QTS-1002800 |  |  |  | 46d | 0d |  | QTS-PHX3 DC1 - 6 day w/ Holidays | Performance Contracting, Inc. | Construction | Phase 1 | IGMP | Sean Waisner | Construction | 01ADMIN | Level 1 | BOH |
| QTS-1002820 |  | BOH Loading Dock // Prime & Paint | 2d | 2026-02-06 | 2026-02-07 | QTS-1002810 |  |  |  | 46d | 0d |  | QTS-PHX3 DC1 - 6 day w/ Holidays | Pennington Painting Company, LLC | Construction | Phase 1 | IGMP | Sean Waisner | Construction | 01ADMIN | Level 1 | BOH |
| QTS-1002610 |  | BOH Loading Dock // Hang OH Doors | 6d | 2026-02-09 | 2026-02-14 | QTS-1002820 |  |  |  | 54d | 46d |  | QTS-PHX3 DC1 - 6 day w/ Holidays | D.H. Pace Company, Inc. | Construction | Phase 2 | IGMP | Ron Carroll | Construction | 01ADMIN |  |  |
| QTS-1002630 |  | BOH Loading Dock // Install Dock Levelers | 2d | 2026-02-09 | 2026-02-10 | QTS-1002820 |  |  |  | 46d | 0d |  | QTS-PHX3 DC1 - 6 day w/ Holidays | D.H. Pace Company, Inc. | Construction | Phase 2 | IGMP | Ron Carroll | Construction | 01ADMIN |  |  |
| QTS-1002640 |  | BOH Loading Dock // Install Dock Scissor Lift | 3d | 2026-02-09 | 2026-02-11 | QTS-1002820 |  |  |  | 46d | 0d |  | QTS-PHX3 DC1 - 6 day w/ Holidays | D.H. Pace Company, Inc. | Construction | Phase 2 | IGMP | Ron Carroll | Construction | 01ADMIN |  |  |
| QTS-1002650 |  | BOH Loading Dock // Install Dock Bumpers | 1d | 2026-02-11 | 2026-02-11 | QTS-1002630 |  |  |  | 46d | 0d |  | QTS-PHX3 DC1 - 6 day w/ Holidays | D.H. Pace Company, Inc. | Construction | Phase 2 | IGMP | Ron Carroll | Construction | 01ADMIN |  |  |
| QTS-1002660 |  | BOH Loading Dock // Tie In Electrical Connections to Dock Equipment | 5d | 2026-02-12 | 2026-02-17 | QTS-1002640, QTS-1002650 |  |  |  | 46d | 38d |  | QTS-PHX3 DC1 - 6 day w/ Holidays | D.H. Pace Company, Inc. | Construction | Phase 2 | IGMP | Ron Carroll | Construction | 01ADMIN |  |  |
|  | 2 | **Level 2 Back of House** |  | 2025-10-08 | 2026-03-03 |  |  |  |  |  |  |  |  |  |  |  |  |  |  |  |  |  |
|  | 6 | **L2/ BOH // Tenant Improvement** |  | 2025-10-08 | 2026-03-03 |  |  |  |  |  |  |  |  |  |  |  |  |  |  |  |  |  |
| QTS-47031 |  | TI Area J & K // Prime & Paint Exposed Structure | 5d | 2025-10-08 A | 2025-10-15 A | QTS-23381, QTS-2081 | 100% | 2025-10-08 | 2025-10-14 |  |  |  |  |  | Construction | Phase 1 | IGMP | Doug Hayes | Construction | 01ADMIN | Level 1 | FOH |
| QTS-23471 |  | TI Area J & K // Layout Walls | 3d | 2025-10-16 A | 2025-10-20 A | QTS-47031 | 100% |  |  |  |  |  |  |  | Construction | Phase 1 | IGMP | Doug Hayes | Construction | 01ADMIN | Level 2 | BOH |
| QTS-26651 |  | TI Area J & K // Rough Overhead Fire Sprinkler | 7d | 2025-10-16 A | 2025-10-17 A | QTS-23471 SS | 100% | 2025-10-16 | 2025-10-24 |  |  |  |  | Olympic West Fire Protection | Construction | Phase 1 | IGMP | Dave Wiltberger | Construction | 01ADMIN | Level 2 | BOH |
| QTS-26111 |  | TI Area J & K // Frame Walls | 6d | 2025-10-27 A | 2025-11-03 A | QTS-26651 | 100% |  |  |  |  |  |  |  | Construction | Phase 1 | IGMP | Doug Hayes | Construction | 01ADMIN | Level 2 | BOH |
| QTS-26641 |  | TI Area J & K // Rough In-Wall Electrical, Security, & Access Controls | 8d | 2025-11-04 A | 2025-12-01 A | QTS-9871, QTS-26111 | 100% | 2025-11-07 | 2025-11-18 |  |  |  |  | Securitas Technology Corporation | Construction | Phase 1 | IGMP | Scott Masterson | Construction | 01ADMIN | Level 2 | BOH |
| QTS-26661 |  | TI Area J & K // Rough Overhead Electrical | 10d | 2026-01-14 | 2026-01-26 | QTS-26111 |  |  |  | 34d | 0d |  | QTS-PHX3 DC1 - 6 day w/ Holidays | Rosendin Electric, Inc | Construction | Phase 1 | IGMP | Scott Masterson | Construction | 01ADMIN | Level 2 | BOH |
| QTS-27791 |  | TI Area J & K // MEP In Wall Inspection | 1d | 2026-01-14 | 2026-01-14 | QTS-26641 |  |  |  | 38d | 0d | start on or after 2026-01-08 | QTS-PHX3 DC1 - 6 day w/ Holidays | Bel-Aire Mechanical, LLC | Construction | Phase 1 | IGMP | Scott Masterson | Construction | 01ADMIN | Level 2 | BOH |
| QTS-27911 |  | TI Area J & K // Insulate Walls | 5d | 2026-01-15 | 2026-01-21 | QTS-27791 |  |  |  | 38d | 0d |  | QTS-PHX3 DC1 - 6 day w/ Holidays | Performance Contracting, Inc. | Construction | Phase 1 | IGMP | Sean Waisner | Construction | 01ADMIN | Level 2 | BOH |
| QTS-28451 |  | TI Area J & K // Hang Drywall | 5d | 2026-01-22 | 2026-01-27 | QTS-26111, QTS-27911 |  |  |  | 39d | 0d |  | QTS-PHX3 DC1 - 6 day w/ Holidays | Performance Contracting, Inc. | Construction | Phase 1 | IGMP | Sean Waisner | Construction | 01ADMIN | Level 2 | BOH |
| QTS-28461 |  | TI Area J & K // Rough Overhead Ductwork Gridline A - E | 8d | 2026-01-27 | 2026-02-04 | QTS-23471, QTS-26111, QTS-26661, QTS-27911 |  |  |  | 34d | 0d |  | QTS-PHX3 DC1 - 6 day w/ Holidays | Bel-Aire Mechanical, LLC | Construction | Phase 1 | IGMP | Dave Wiltberger | Construction | 01ADMIN | Level 2 | BOH |
| QTS-28921 |  | TI Area J & K // Tape & Finish Drywall | 6d | 2026-01-28 | 2026-02-03 | QTS-28451 |  |  |  | 39d | 0d |  | QTS-PHX3 DC1 - 6 day w/ Holidays | Performance Contracting, Inc. | Construction | Phase 1 | IGMP | Sean Waisner | Construction |  | Level 2 | BOH |
| QTS-29251 |  | TI Area J & K // Prime & Paints Walls | 4d | 2026-02-04 | 2026-02-07 | QTS-28921 |  |  |  | 39d | 0d |  | QTS-PHX3 DC1 - 6 day w/ Holidays | Pennington Painting Company, LLC | Construction | Phase 1 | IGMP | Sean Waisner | Construction |  | Level 2 | BOH |
| QTS-29071 |  | TI Area J & K // Rough Overhead Ductwork Gridline E - H | 8d | 2026-02-05 | 2026-02-13 | QTS-23471, QTS-26111, QTS-26661, QTS-28461 |  |  |  | 34d | 0d |  | QTS-PHX3 DC1 - 6 day w/ Holidays | Bel-Aire Mechanical, LLC | Construction | Phase 1 | IGMP | Dave Wiltberger | Construction |  | Level 2 | BOH |
| QTS-29421 |  | TI Area J & K // Install Light Fixtures | 4d | 2026-02-09 | 2026-02-12 | QTS-29251 |  |  |  | 42d | 0d |  | QTS-PHX3 DC1 - 6 day w/ Holidays | Rosendin Electric, Inc | Construction | Phase 1 | IGMP | Scott Masterson | Construction |  | Level 2 | BOH |
| QTS-30091 |  | TI Area J & K // Install Flooring & Base | 10d | 2026-02-09 | 2026-02-19 | QTS-29251 |  |  |  | 39d | 0d |  | QTS-PHX3 DC1 - 6 day w/ Holidays | Wholesale Floors, LLC -AZ | Construction | Phase 1 | IGMP | Sean Waisner | Construction |  | Level 2 | BOH |
| QTS-29361 |  | TI Area J & K // Insulate HVAC Ductwork | 10d | 2026-02-11 | 2026-02-21 | QTS-29071 SS+5d, QTS-29071 FF+5d |  |  |  | 34d | 0d |  | QTS-PHX3 DC1 - 6 day w/ Holidays | Bel-Aire Mechanical, LLC | Construction | Phase 1 | IGMP | Dave Wiltberger | Construction |  | Level 2 | BOH |
| QTS-29631 |  | TI Area J & K // Install Wall Electrical Trim | 5d | 2026-02-13 | 2026-02-18 | QTS-29251, QTS-29421 |  |  |  | 42d | 8d |  | QTS-PHX3 DC1 - 6 day w/ Holidays | Rosendin Electric, Inc | Construction | Phase 1 | IGMP | Scott Masterson | Construction |  | Level 2 | BOH |
| QTS-30431 |  | TI Area J & K // Set Doors & Hardware | 3d | 2026-02-20 | 2026-02-23 | QTS-30091, QTS-99650 |  |  |  | 39d | 0d |  | QTS-PHX3 DC1 - 6 day w/ Holidays | ISEC Incorporated | Construction | Phase 1 | IGMP | Sean Waisner | Construction |  | Level 2 | BOH |
| QTS-29761 |  | TI Area J & K // Install Mechanical Trim | 5d | 2026-02-23 | 2026-02-27 | QTS-29251, QTS-29361, QTS-26651 |  |  |  | 34d | 0d |  | QTS-PHX3 DC1 - 6 day w/ Holidays | Bel-Aire Mechanical, LLC | Construction | Phase 1 | IGMP | Dave Wiltberger | Construction |  | Level 2 | BOH |
| QTS-29771 |  | TI Area J & K // Install Fire Sprinkler Trim | 3d | 2026-02-23 | 2026-02-25 | QTS-29251, QTS-29361, QTS-26651 |  |  |  | 36d | 2d |  | QTS-PHX3 DC1 - 6 day w/ Holidays | Olympic West Fire Protection | Construction | Phase 1 | IGMP | Dave Wiltberger | Construction |  | Level 2 | BOH |
| QTS-30521 |  | TI Area J & K // Install Window Treatments | 2d | 2026-02-24 | 2026-02-25 | QTS-30431 |  |  |  | 39d | 31d |  | QTS-PHX3 DC1 - 6 day w/ Holidays | Giroux Glass, Inc | Construction | Phase 1 | IGMP | Sean Waisner | Construction |  | Level 2 | BOH |
| QTS-29971 |  | TI Area J & K // MEP Overhead Inspection | 1d | 2026-02-28 | 2026-02-28 | QTS-29761, QTS-29771, QTS-29631 |  |  |  | 34d | 0d |  | QTS-PHX3 DC1 - 6 day w/ Holidays | Bel-Aire Mechanical, LLC | Construction | Phase 1 | IGMP | Dave Wiltberger | Construction |  | Level 2 | BOH |
| QTS-30011 |  | TI Area J & K // Install FEC's | 2d | 2026-03-02 | 2026-03-03 | QTS-1004520, QTS-29971 |  |  |  | 34d | 26d |  | QTS-PHX3 DC1 - 6 day w/ Holidays |  | Construction | Phase 1 | IGMP | Sean Waisner | Construction |  | Level 2 | BOH |

Notes:
- QTS-1002610: allucent_notes_20251230_164549: Ron Carroll on 2025-12-15T21:05:46.525Z: This activity belongs to Luis Vea / allucent_notes_20251216_165335: Ron Carroll on 2025-12-15T21:05:46.525Z: This activity belongs to Luis Vea / allucent_notes: 2025-12-15T21:05:46.525Z - User: Ron Carroll - Date Added: 2025-12-15T21:05:46.525Z - Note: This activity belongs to Luis Vea
- QTS-47031: allucent_notes_20251014_152335: Zack Goertz on 2025-09-30T21:45:30.556Z: Painting out Zone 3 exposed deck. Should get to BOH exposed deck next week / Zack Goertz on 2025-10-14T14:52:33.333Z: Started, Rain delayed finishing. SHould be done tomorrow. / -ZG 10/14 / Zack Goertz on 2025-10-14 07:10: Rain Delay / allucent_notes_20251021_145627: Zack Goertz on 2025-09-30T21:45:30.556Z: Painting out Zone 3 exposed deck. Should get to BOH exposed deck next week / Zack Goertz on 2025-10-14T14:52:33.333Z: Started, Rain delayed finishing. SHould be done tomorrow. / -ZG 10/14 / Zack Goertz on 2025-10-14 07:10: Rain Delay / allucent_notes: 2025-09-30T21:45:30.556Z - User: Zack Goertz - Date Added: 2025-09-30T21:45:30.556Z - Note: Painting out Zone 3 exposed deck. Should get to BOH exposed deck next week / 2025-10-14T14:52:33.333Z - User: Zack Goertz - Date Added: 2025-10-14T14:52:33.333Z -
- QTS-26651: allucent_notes_20251027_224008: Scott Masterson on 2025-10-27 16:10: STOP WORK ISSUED!!! / allucent_notes_20251028_163138: Scott Masterson on 2025-10-27 16:10: STOP WORK ISSUED!!! / allucent_notes_20251104_160200: Scott Masterson on 2025-10-27 16:10: STOP WORK ISSUED!!! / Jason Johnston on 2025-11-04 12:11: finished on time. / allucent_notes: 2025-10-27 16:10 - User: Scott Masterson - Date Added: 2025-10-27 16:10 - Note: STOP WORK ISSUED!!! / 2025-11-04 12:11 - User: Jason Johnston - Date Added: 2025-11-04 12:11 - Note: finished on time.
- QTS-26641: allucent_notes_20251118_192630: Zack Goertz on 2025-11-17 13:11: BOH is behind. All labor has been pulled to FOH level 1 and level 2. REI has yet to move back to BOH / allucent_notes_20251202_153722: Zack Goertz on 2025-11-17 13:11: BOH is behind. All labor has been pulled to FOH level 1 and level 2. REI has yet to move back to BOH / allucent_notes: 2025-11-17 13:11 - User: Zack Goertz - Date Added: 2025-11-17 13:11 - Note: BOH is behind. All labor has been pulled to FOH level 1 and level 2. REI has yet to move back to BOH
- QTS-26661: allucent_notes_20251230_164549: Zack Goertz on 2025-11-17 13:11: BOH is behind. All labor has been pulled to FOH level 1 and level 2. BAM has had between 2-4 people working in the BOH for the last few weeks. / Zack Goertz on 2025-12-01 10:31: Working on Rough in first / Zack Goertz on 2025-12-09 10:51: Walls arent done being mudded and taped / Sean Waisner on 2025-12-30 15:40: Should not have been started / allucent_notes_20251118_192630: Zack Goertz on 2025-11-17 13:11: BOH is behind. All labor has been pulled to FOH level 1 and level 2. BAM has had between 2-4 people working in the BOH for the last few weeks. / allucent_notes_20251202_153722: Zack Goertz on 2025-11-17 13:11: BOH is behind. All labor has been pulled to FOH level 1 and level 2. BAM has had between 2-4 people working in the BOH for the last few weeks. / Zack Goertz on 2025-12-01 10:31: Working on Rough in first / allucent_notes_20251209_203830: Zack Goertz on 2025-11-17 13:11: BOH is behind. All labor has been pulled to FOH level 1 and level 2. BAM has had between 2-4 people working in the BOH for the last few weeks. / Zack Goertz on 2025-12-01 10:31: Working on Rough in first / Zack Goertz on 2025-12-09 10:51: Walls arent done being mudded and taped / allucent_notes_20251216_165335: Zack Goertz on 2025-11-17 13:11: BOH is behind. All labor has been pulled to FOH level 1 and level 2. BAM has had between 2-4 people working in the BOH for the last few weeks. / Zack Goertz on 2025-12-01 10:31: Working on Rough in first / Zack Goertz on 2025-12-09 10:51: Walls arent done being mudded and taped / allucent_notes: 2025-11-17 13:11 - User: Zack Goertz - Date Added: 2025-11-17 13:11 - Note: BOH is behind. All labor has been pulled to FOH level 1 and level 2. BAM has had between 2-4 people working in the BOH for the last few weeks. / 2025-12-01 10:31 - User: Zack Go
- QTS-27791: allucent_notes_20251230_164549: David Wiltberger on 2025-12-02 06:41: wall built late / Sean Waisner on 2025-12-30 15:41: No rough in has begun / allucent_notes_20251202_153722: David Wiltberger on 2025-12-02 06:41: wall built late / allucent_notes_20251209_203830: David Wiltberger on 2025-12-02 06:41: wall built late / allucent_notes_20251216_165335: David Wiltberger on 2025-12-02 06:41: wall built late / allucent_notes: 2025-12-02 06:41 - User: David Wiltberger - Date Added: 2025-12-02 06:41 - Note: wall built late / 2025-12-30 15:41 - User: Sean Waisner - Date Added: 2025-12-30 15:41 - Note: No rough in has begun

| ID | WBS | Activity | Duration | Start | Finish | Predecessors | Complete | Planned start | Planned finish | Total float | Free float | Constraint | Calendar | Subcontractor | Level | Location | Baseline | Layton Responsible Party | Phase-1 | Project Section | Allucent CSI Group | Project Section-1 | Phase-1-1 |
| --- | --- | --- | --- | --- | --- | --- | --- | --- | --- | --- | --- | --- | --- | --- | --- | --- | --- | --- | --- | --- | --- | --- | --- |
|  | 7 | **L2 / BOH // IDF Room #2064 (Early Access)** |  | 2025-10-29 | 2026-02-03 |  |  |  |  |  |  |  |  |  |  |  |  |  |  |  |  |  |  |
| QTS-27011 |  | IDF Room #2064 // Rough Overhead Fire Sprinkler | 2d | 2025-10-29 A | 2025-10-30 A | QTS-26651 | 100% | 2025-11-03 | 2025-11-04 |  |  |  |  | Olympic West Fire Protection | Level 2 | BOH | IGMP | Dave Wiltberger | Phase 1 | Construction | 01ADMIN |  |  |
| QTS-26761 |  | IDF Room #2064 // Frame Walls | 2d | 2025-11-04 A | 2025-11-05 A | QTS-26111, QTS-27011 | 100% | 2025-11-07 | 2025-11-10 |  |  |  |  |  | Level 2 | BOH | IGMP | Doug Hayes | Phase 1 | Construction | 01ADMIN |  |  |
| QTS-26991 |  | IDF Room #2064 // Rough In Electrical | 10d | 2025-11-26 A | 2025-12-02 A | QTS-26761 | 100% | 2025-11-26 | 2025-12-11 |  |  |  |  | Rosendin Electric, Inc | Level 2 | BOH | IGMP | Scott Masterson | Phase 1 | Construction | 01ADMIN |  |  |
| QTS-27021 |  | IDF Room #2064 // Rough Overhead Linesets | 5d | 2025-11-26 A | 2025-12-04 A | QTS-26761 | 100% |  |  |  |  |  |  | Bel-Aire Mechanical, LLC | Level 2 | BOH | IGMP | Dave Wiltberger | Phase 1 | Construction | 01ADMIN |  |  |
| QTS-27371 |  | IDF Room #2064 // In Wall Inspection | 1d | 2025-12-02 A | 2025-12-02 A | QTS-26991 | 100% |  |  |  |  |  |  | Bel-Aire Mechanical, LLC | Level 2 | BOH | IGMP | Dave Wiltberger | Phase 1 | Construction | 01ADMIN |  |  |
| QTS-27511 |  | IDF Room #2064 // Hang Drywall | 1d | 2025-12-02 A | 2025-12-02 A | QTS-27371 | 100% |  |  |  |  |  |  |  | Level 2 | BOH | IGMP | Sean Waisner | Phase 1 | Construction | 01ADMIN |  |  |
|  | 1 | **Fragnet / IDF Room Wall Fire Rating Redesign** |  | 2025-12-03 | 2026-01-13 |  |  |  |  |  |  |  |  |  |  |  |  |  |  |  |  |  |  |
| QTS-1000740 |  | Fragnet / IDF Room #2064 // Submission of RFI 732 | 1d | 2025-12-03 A | 2025-12-03 A | QTS-1030 SS | 100% |  |  |  |  |  |  |  | Level 2 | BOH | IGMP | Sean Waisner | Phase 1 | Construction | 01ADMIN |  |  |
| QTS-1000750 |  | Fragnet / IDF Room #2064 // Design Response Received RFI 732 | 2d | 2025-12-04 A | 2025-12-05 A | QTS-1000740 | 100% |  |  |  |  |  |  |  | Level 2 | BOH | IGMP | Sean Waisner | Phase 1 | Construction | 01ADMIN |  |  |
| QTS-1000830 |  | Fragnet / IDF Room #2064 // Demo North IDF Wall | 3d | 2025-12-08 A | 2025-12-09 A | QTS-1000750 | 100% | 2025-12-08 | 2025-12-10 |  |  |  |  |  | Level 2 | BOH | IGMP | Sean Waisner | Phase 1 | Construction | 01ADMIN |  |  |
| QTS-1000770 |  | Fragnet / IDF Room #2064 // Frame North IDF Wall | 1d | 2025-12-12 A | 2025-12-15 A | QTS-1000830 | 100% | 2025-12-10 | 2025-12-10 |  |  |  |  |  | Level 2 | BOH | IGMP | Sean Waisner | Phase 1 | Construction | 01ADMIN |  |  |
| QTS-1000760 |  | Fragnet / IDF Room #2064 // In Wall Electrical Rough In North IDF Wall | 1d | 2025-12-16 A | 2025-12-16 A | QTS-1000770 | 100% | 2025-12-11 | 2025-12-11 |  |  |  |  |  | Level 2 | BOH | IGMP | Sean Waisner | Phase 1 | Construction | 01ADMIN |  |  |
| QTS-1000820 |  | Fragnet / IDF Room #2064 // In Wall Electrical Inspection for North IDF Wall | 1d | 2025-12-17 A | 2025-12-17 A | QTS-1000760 | 100% |  |  |  |  |  |  |  | Level 2 | BOH | IGMP | Sean Waisner | Phase 1 | Construction | 01ADMIN |  |  |
| QTS-1000780 |  | Fragnet / IDF Room #2064 // Hang Drywall for North IDF Wall | 1d | 2025-12-18 A | 2025-12-18 A | QTS-1000820 | 100% |  |  |  |  |  |  |  | Level 2 | BOH | IGMP | Sean Waisner | Phase 1 | Construction | 01ADMIN |  |  |
| QTS-1000790 |  | Fragnet / IDF Room #2064 // Tape & Finish for North IDF Wall | 5d | 2025-12-19 A | 2025-12-30 A | QTS-1000760, QTS-1000780 | 100% |  |  |  |  |  |  |  | Level 2 | BOH | IGMP | Sean Waisner | Phase 1 | Construction | 01ADMIN |  |  |
| QTS-1000800 |  | Fragnet / IDF Room #2064 // Fire Caulking for North IDF Wall | 1d | 2026-01-07 A | 2026-01-07 A | QTS-1000790 | 100% |  |  |  |  |  | QTS-PHX3 DC1 - 6 day w/ Holidays | Alpha Insulation & Waterproofing, Inc. | Level 2 | BOH | IGMP | Sean Waisner | Phase 1 | Construction | 01ADMIN |  |  |
| QTS-1000810 |  | Fragnet / IDF Room #2064 // Prime & Paint for North IDF Wall | 1d | 2026-01-13 A | 2026-01-13 A | QTS-1000800 | 100% |  |  |  |  |  | QTS-PHX3 DC1 - 6 day w/ Holidays | Pennington Painting Company, LLC | Level 2 | BOH | IGMP | Sean Waisner | Phase 1 | Construction | 01ADMIN |  |  |
|  | 2 | **Remaining Work** |  | 2025-12-03 | 2026-02-03 |  |  |  |  |  |  |  |  |  |  |  |  |  |  |  |  |  |  |
| QTS-27571 |  | IDF Room #2064 // Tape & Finish Drywall | 3d | 2025-12-03 A | 2025-12-23 A | QTS-27511 | 100% | 2025-12-03 | 2025-12-05 |  |  |  |  |  | Level 2 | BOH | IGMP | Sean Waisner | Phase 1 | Construction | 01ADMIN |  |  |
| QTS-27001 |  | IDF Room #2064 // Set HM Frame | 1d | 2025-12-10 A | 2025-12-10 A | QTS-26761 FF, QTS-99620 | 100% |  |  |  |  |  |  |  | Level 2 | BOH | IGMP | Sean Waisner | Phase 1 | Construction | 01ADMIN |  |  |
| QTS-28081 |  | IDF Room #2064 // Prime & Paint | 2d | 2026-01-14 | 2026-01-15 | QTS-27571 |  |  |  | 53d | 0d |  | QTS-PHX3 DC1 - 6 day w/ Holidays | Pennington Painting Company, LLC | Level 2 | BOH | IGMP | Sean Waisner | Phase 1 | Construction | 01ADMIN |  |  |
| QTS-28251 |  | IDF Room #2064 // Plywood Install Interior | 1d | 2026-01-16 | 2026-01-16 | QTS-28081, QTS-27571 |  |  |  | 53d | 0d |  | QTS-PHX3 DC1 - 6 day w/ Holidays | Performance Contracting, Inc. | Level 2 | BOH | IGMP | Sean Waisner | Phase 1 | Construction | 01ADMIN |  |  |
| QTS-45521 |  | IDF Room #2064 // Rough Overhead Electrical | 2d | 2026-01-16 | 2026-01-17 | QTS-26761, QTS-28081 |  |  |  | 63d | 0d |  | QTS-PHX3 DC1 - 6 day w/ Holidays | Rosendin Electric, Inc | Level 2 | BOH | IGMP | Scott Masterson |  | Construction | 01ADMIN | Construction | Phase 1 |
| QTS-28331 |  | IDF Room #2064 // Install AC Unit Interior | 2d | 2026-01-17 | 2026-01-20 | QTS-28081, QTS-28251, QTS-27021, QTS-1000810 |  |  |  | 53d | 0d |  | QTS-PHX3 DC1 - 6 day w/ Holidays | Bel-Aire Mechanical, LLC | Level 2 | BOH | IGMP | Dave Wiltberger | Phase 1 | Construction | 01ADMIN |  |  |
| QTS-46951 |  | IDF Room #2064 // MEP Overhead Inspection | 1d | 2026-01-20 | 2026-01-20 | QTS-45521 |  |  |  | 63d | 0d |  | QTS-PHX3 DC1 - 6 day w/ Holidays | Bel-Aire Mechanical, LLC | Level 2 | BOH | IGMP | Scott Masterson |  | Construction | 01ADMIN | Construction | Phase 1 |
| QTS-28671 |  | IDF Room #2064 // Install Light Fixtures | 2d | 2026-01-21 | 2026-01-22 | QTS-28331, QTS-45521, QTS-46951 |  |  |  | 63d | 0d |  | QTS-PHX3 DC1 - 6 day w/ Holidays | Rosendin Electric, Inc | Level 2 | BOH | IGMP | Scott Masterson | Phase 1 | Construction | 01ADMIN |  |  |
| QTS-28821 |  | IDF Room #2064 // Install Cable Racks | 5d | 2026-01-23 | 2026-01-28 | QTS-28671 |  |  |  | 63d | 55d |  | QTS-PHX3 DC1 - 6 day w/ Holidays | E2 Optics, LLC | Level 2 | BOH | IGMP | Scott Masterson | Phase 1 | Construction | 01ADMIN |  |  |
| QTS-45531 |  | IDF Room #2064 // Install Door & Hardware | 2d | 2026-02-02 | 2026-02-03 | QTS-27511, QTS-99650, QTS-27001, QTS-99630 |  |  |  | 58d | 50d | start on or after 2026-02-02 | QTS-PHX3 DC1 - 6 day w/ Holidays | ISEC Incorporated | Level 2 | BOH | IGMP | Sean Waisner |  | Construction | 01ADMIN | Construction | Phase 1 |

Notes:
- QTS-26991: allucent_notes_20251111_182405: Zack Goertz on 2025-11-11T18:26:57.952Z: REI is behind / Jason Johnston on 2025-11-11 15:11: REI Won't be there because we haven't sent them a schedule. / allucent_notes_20251118_192630: Zack Goertz on 2025-11-11T18:26:57.952Z: REI is behind / Jason Johnston on 2025-11-11 15:11: REI Won't be there because we haven't sent them a schedule. / Zack Goertz on 2025-11-17 13:11: BOH is behind. All labor has been pulled to FOH level 1 and level 2. REI has yet to have anyone working in the BOH / allucent_notes_20251202_153722: Zack Goertz on 2025-11-11T18:26:57.952Z: REI is behind / Jason Johnston on 2025-11-11 15:11: REI Won't be there because we haven't sent them a schedule. / Zack Goertz on 2025-11-17 13:11: BOH is behind. All labor has been pulled to FOH level 1 and level 2. REI has yet to have anyone working in the BOH / allucent_notes: 2025-11-11T18:26:57.952Z - User: Zack Goertz - Date Added: 2025-11-11T18:26:57.952Z - Note: REI is behind / 2025-11-11 15:11 - User: Jason Johnston - Date Added: 2025-11-11 15:11 - Note: REI Won't be there because we haven't sent them a schedule. / 2025
- QTS-27021: allucent_notes_20251111_182405: Zack Goertz on 2025-11-11T18:26:46.011Z: Bel-aire is behind / Jason Johnston on 2025-11-11 15:11: BOH is ready for overhead. / allucent_notes_20251118_192630: Zack Goertz on 2025-11-11T18:26:46.011Z: Bel-aire is behind / Jason Johnston on 2025-11-11 15:11: BOH is ready for overhead. / Zack Goertz on 2025-11-17 13:11: BOH is behind. All labor has been pulled to FOH level 1 and level 2. BAM has had between 2-4 people working in the BOH for the last few weeks. / allucent_notes_20251202_153722: Zack Goertz on 2025-11-11T18:26:46.011Z: Bel-aire is behind / Jason Johnston on 2025-11-11 15:11: BOH is ready for overhead. / Zack Goertz on 2025-11-17 13:11: BOH is behind. All labor has been pulled to FOH level 1 and level 2. BAM has had between 2-4 people working in the BOH for the last few weeks. / allucent_notes: 2025-11-11T18:26:46.011Z - User: Zack Goertz - Date Added: 2025-11-11T18:26:46.011Z - Note: Bel-aire is behind / 2025-11-11 15:11 - User: Jason Johnston - Date Added: 2025-11-11 15:11 - Note: BOH is ready for overhead. / 2025-11-17 13:11 - User: Zack Go
- QTS-27571: allucent_notes_20251230_164549: Zach Gioe on 2025-12-16 13:44: Drywall was held up due to RFI for the design change of the door wall and its rating. / allucent_notes_20251216_165335: Zach Gioe on 2025-12-16 13:44: Drywall was held up due to RFI for the design change of the door wall and its rating. / allucent_notes: 2025-12-16 13:44 - User: Zach Gioe - Date Added: 2025-12-16 13:44 - Note: Drywall was held up due to RFI for the design change of the door wall and its rating.
- QTS-28251: allucent_notes_20251230_164549: Sean Waisner on 2025-12-30 15:39: Man power issues / allucent_notes: 2025-12-30 15:39 - User: Sean Waisner - Date Added: 2025-12-30 15:39 - Note: Man power issues
- QTS-45521: allucent_notes_20251230_164549: Zack Goertz on 2025-11-11T18:26:27.539Z: REI is behind / Jason Johnston on 2025-11-11 15:11: REI says the schedule doesn't require them to be there because we haven't sent a schedule in over a month / Zack Goertz on 2025-11-17 13:11: BOH is behind. All labor has been pulled to FOH level 1 and level 2. REI has yet to move to BOH / Zack Goertz on 2025-12-01 10:35: REI is behind / allucent_notes_20251111_182405: Zack Goertz on 2025-11-11T18:26:27.539Z: REI is behind / Jason Johnston on 2025-11-11 15:11: REI says the schedule doesn't require them to be there because we haven't sent a schedule in over a month / allucent_notes_20251118_192630: Zack Goertz on 2025-11-11T18:26:27.539Z: REI is behind / Jason Johnston on 2025-11-11 15:11: REI says the schedule doesn't require them to be there because we haven't sent a schedule in over a month / Zack Goertz on 2025-11-17 13:11: BOH is behind. All labor has been pulled to FOH level 1 and level 2. REI has yet to move to BOH / allucent_notes_20251202_153722: Zack Goertz on 2025-11-11T18:26:27.539Z: REI is behind / Jason Johnston on 2025-11-11 15:11: REI says the schedule doesn't require them to be there because we haven't sent a schedule in over a month / Zack Goertz on 2025-11-17 13:11: BOH is behind. All labor has been pulled to FOH level 1 and level 2. REI has yet to move to BOH / Zack Goertz on 2025-12-01 10:35: REI is behind / allucent_notes_20251209_203830: Zack Goertz on 2025-11-11T18:26:27.539Z: REI is behind / Jason Johnston on 2025-11-11 15:11: REI says the schedule doesn't require them to be there because we haven't sent a schedule in over a month / Zack Goertz on 2025-11-17 13:11: BOH is behind. All labor has been pulled to FOH level 1 and level 2. REI has yet to move to BOH / Zack Goertz on 2025-12-01 10:35: REI is behind / allucent_notes_20251216_165335: Zack Goertz on 2025-11-11T18:26:27.539Z: REI is behind / Jason Johnston on 2025-11-11 15:11: REI says the schedule doesn't require them to be there because we haven't sent a schedule in over a month / Zack Goertz on 2025-11-17 13:11: BOH is behind. All labor has been pulled to FOH level 1 and level 2. REI has yet to move to BOH / Zack Goertz on 2025-12-01 10:35: REI is behind / allucent_notes: 2025-11-11T18:26:27.539Z - User: Zack Goertz - Date Added: 2025-11-11T18:26:27.539Z - Note: REI is behind / 2025-11-11 15:11 - User: Jason Johnston - Date Added: 2025-11-11 15:11 - Note: REI says the schedule doesn't require them to be there because we h

| ID | WBS | Activity | Duration | Start | Finish | Predecessors | Complete | Planned start | Planned finish | Total float | Free float | Calendar | Subcontractor | Level | Location | Baseline | Layton Responsible Party | Phase-1 | Project Section | Allucent CSI Group | Project Section-1 | Phase-1-1 |
| --- | --- | --- | --- | --- | --- | --- | --- | --- | --- | --- | --- | --- | --- | --- | --- | --- | --- | --- | --- | --- | --- | --- |
|  | 3 | **L2 / BOH // Electrical Room #2085 (Early Access)** |  | 2025-10-31 | 2026-01-29 |  |  |  |  |  |  |  |  |  |  |  |  |  |  |  |  |  |
| QTS-27431 |  | Electrical Room #2085 // Rough Overhead Fire Sprinkler | 2d | 2025-10-31 A | 2025-11-03 A | QTS-27011 | 100% | 2025-11-05 | 2025-11-06 |  |  |  | Olympic West Fire Protection | Level 2 | BOH | IGMP | Dave Wiltberger | Phase 1 | Construction | 01ADMIN |  |  |
| QTS-27041 |  | Electrical Room #2085 // Frame Walls | 2d | 2025-11-04 A | 2025-11-05 A | QTS-26111, QTS-27431 | 100% | 2025-11-07 | 2025-11-10 |  |  |  |  | Level 2 | BOH | IGMP | Doug Hayes | Phase 1 | Construction | 01ADMIN |  |  |
| QTS-27411 |  | Electrical Room #2085 // Rough In Electrical | 10d | 2025-11-26 A | 2025-12-09 A | QTS-27041 | 100% | 2025-11-26 | 2025-12-11 |  |  |  | Rosendin Electric, Inc | Level 2 | BOH | IGMP | Scott Masterson | Phase 1 | Construction | 01ADMIN |  |  |
| QTS-27441 |  | Electrical Room #2085 // Rough Overhead Linesets | 5d | 2025-11-26 A | 2025-12-04 A | QTS-27041 | 100% |  |  |  |  |  | Bel-Aire Mechanical, LLC | Level 2 | BOH | IGMP | Dave Wiltberger | Phase 1 | Construction | 01ADMIN |  |  |
| QTS-27641 |  | Electrical Room #2085 // In Wall Inspection | 1d | 2025-12-02 A | 2025-12-02 A | QTS-27411 | 100% |  |  |  |  |  | Bel-Aire Mechanical, LLC | Level 2 | BOH | IGMP | Dave Wiltberger | Phase 1 | Construction | 01ADMIN |  |  |
| QTS-27851 |  | Electrical Room #2085 // Hang Drywall | 1d | 2025-12-02 A | 2025-12-02 A | QTS-27641 | 100% |  |  |  |  |  |  | Level 2 | BOH | IGMP | Sean Waisner | Phase 1 | Construction | 01ADMIN |  |  |
| QTS-28011 |  | Electrical Room #2085 // Tape & Finish Drywall | 3d | 2025-12-03 A | 2025-12-24 A | QTS-27851 | 100% | 2025-12-03 | 2025-12-05 |  |  |  |  | Level 2 | BOH | IGMP | Sean Waisner | Phase 1 | Construction | 01ADMIN |  |  |
| QTS-27421 |  | Electrical Room #2085 // Set HM Frame | 1d | 2025-12-10 A | 2025-12-10 A | QTS-27041 FF, QTS-99620 | 100% |  |  |  |  |  |  | Level 2 | BOH | IGMP | Sean Waisner | Phase 1 | Construction | 01ADMIN |  |  |
| QTS-1000730 |  | Electrical Room #2085 // Fire Caulking | 1d | 2025-12-22 A | 2025-12-22 A | QTS-1000720 | 100% |  |  |  |  | QTS-PHX3 DC1 - 6 day w/ Holidays | Alpha Insulation & Waterproofing, Inc. | Level 2 | BOH | IGMP | Sean Waisner | Phase 1 | Construction | 01ADMIN |  |  |
| QTS-28271 |  | Electrical Room #2085 // Prime & Paint | 2d | 2025-12-23 A | 2025-12-24 A | QTS-28011, QTS-1000720, QTS-1000730 | 100% |  |  |  |  | QTS-PHX3 DC1 - 6 day w/ Holidays | Pennington Painting Company, LLC | Level 2 | BOH | IGMP | Sean Waisner | Phase 1 | Construction | 01ADMIN |  |  |
| QTS-1000720 |  | Electrical Room #2085 // Pour Equipment Pads | 2d | 2025-12-29 A | 2025-12-30 A | QTS-28011 | 100% |  |  |  |  |  |  | Level 2 | BOH | IGMP | Sean Waisner | Phase 1 | Construction | 01ADMIN |  |  |
| QTS-28691 |  | Electrical Room #2085 // Install AC Unit | 2d | 2025-12-29 A | 2025-12-30 A | QTS-28271, QTS-27441 | 100% |  |  |  |  | QTS-PHX3 DC1 - 6 day w/ Holidays | Bel-Aire Mechanical, LLC | Level 2 | BOH | IGMP | Dave Wiltberger | Phase 1 | Construction | 01ADMIN |  |  |
| QTS-1000840 |  | Electrical Room #2085 // Rough OH Electrical | 5d | 2026-01-14 | 2026-01-20 | QTS-28691 |  |  |  | 62d | 0d | QTS-PHX3 DC1 - 6 day w/ Holidays | Rosendin Electric, Inc | Level 2 | BOH | IGMP | Scott Masterson | Phase 1 | Construction | 01ADMIN |  |  |
| QTS-28591 |  | Electrical Room #2085 // Set Static Transfer Switch | 1d | 2026-01-14 | 2026-01-14 | QTS-28471, QTS-28271, QTS-1000720, QTS-24581 |  |  |  | 56d | 4d | QTS-PHX3 DC1 - 6 day w/ Holidays | Rosendin Electric, Inc | Level 2 | BOH | IGMP | Scott Masterson |  | Construction |  | Construction | Phase 1 |
| QTS-28601 |  | Electrical Room #2085 // Set UPS | 1d | 2026-01-14 | 2026-01-14 | QTS-28481, QTS-28271, QTS-1000720, QTS-24581 |  |  |  | 54d | 4d | QTS-PHX3 DC1 - 6 day w/ Holidays | Rosendin Electric, Inc | Level 2 | BOH | IGMP | Scott Masterson |  | Construction |  | Construction | Phase 1 |
| QTS-28841 |  | Electrical Room #2085 // Install MEP Trim | 2d | 2026-01-21 | 2026-01-22 | QTS-28691, QTS-28601, QTS-28591, QTS-1000840 |  |  |  | 62d | 0d | QTS-PHX3 DC1 - 6 day w/ Holidays | Rosendin Electric, Inc | Level 2 | BOH | IGMP | Scott Masterson | Phase 1 | Construction |  |  |  |
| QTS-1000880 |  | Electrical Room #2085 // Finish Flooring | 1d | 2026-01-23 | 2026-01-23 | QTS-28841 |  |  |  | 62d | 0d | QTS-PHX3 DC1 - 6 day w/ Holidays | E2 Optics, LLC | Level 2 | BOH | IGMP | Scott Masterson | Phase 1 | Construction |  |  |  |
| QTS-1000860 |  | Electrical Room #2085 // Install Wall Base | 5d | 2026-01-24 | 2026-01-29 | QTS-1000880, QTS-28591, QTS-28601, QTS-28271 |  |  |  | 62d | 54d | QTS-PHX3 DC1 - 6 day w/ Holidays | E2 Optics, LLC | Level 2 | BOH | IGMP | Scott Masterson | Phase 1 | Construction | 01ADMIN |  |  |
| QTS-45541 |  | Electrical Room #2085 // Set Door & Hardware | 1d | 2026-01-24 | 2026-01-24 | QTS-28011, QTS-99650, QTS-27421, QTS-99630, QTS-1000880 |  |  |  | 66d | 58d | QTS-PHX3 DC1 - 6 day w/ Holidays | ISEC Incorporated | Level 2 | BOH | IGMP | Sean Waisner |  | Construction | 01ADMIN | Construction | Phase 1 |
|  | 4 | **L2 / BOH // MMR #2068 (Early Access)** |  | 2025-11-03 | 2026-01-26 |  |  |  |  |  |  |  |  |  |  |  |  |  |  |  |  |  |
| QTS-27401 |  | MMR B Room #2068 // Frame Walls | 2d | 2025-11-03 A | 2025-11-04 A | QTS-26111, QTS-27611 | 100% | 2025-11-11 | 2025-11-12 |  |  |  | Performance Contracting, Inc. | Level 2 | BOH | IGMP | Doug Hayes | Phase 1 | Construction | 01ADMIN |  |  |
| QTS-27611 |  | MMR B Room #2068 // Rough Overhead Fire Sprinkler | 2d | 2025-11-03 A | 2025-11-04 A | QTS-27431 | 100% | 2025-11-07 | 2025-11-10 |  |  |  | Olympic West Fire Protection | Level 2 | BOH | IGMP | Dave Wiltberger | Phase 1 | Construction | 01ADMIN |  |  |
| QTS-27591 |  | MMR B Room #2068 // Rough In Electrical | 10d | 2025-11-26 A | 2025-12-02 A | QTS-27401 | 100% | 2025-11-26 | 2025-12-11 |  |  |  | Rosendin Electric, Inc | Level 2 | BOH | IGMP | Scott Masterson | Phase 1 | Construction | 01ADMIN |  |  |
| QTS-27621 |  | MMR B Room #2068 // Rough Overhead Linesets | 5d | 2025-11-26 A | 2025-12-04 A | QTS-27401 | 100% |  |  |  |  |  | Bel-Aire Mechanical, LLC | Level 2 | BOH | IGMP | Dave Wiltberger | Phase 1 | Construction | 01ADMIN |  |  |
| QTS-27961 |  | MMR B Room #2068 // In Wall Inspection | 1d | 2025-12-02 A | 2025-12-02 A | QTS-27591 | 100% |  |  |  |  |  | Bel-Aire Mechanical, LLC | Level 2 | BOH | IGMP | Dave Wiltberger | Phase 1 | Construction | 01ADMIN |  |  |
| QTS-28111 |  | MMR B Room #2068 // Hang Drywall | 1d | 2025-12-02 A | 2025-12-02 A | QTS-27961 | 100% |  |  |  |  |  | Performance Contracting, Inc. | Level 2 | BOH | IGMP | Sean Waisner | Phase 1 | Construction | 01ADMIN |  |  |
| QTS-28151 |  | MMR B Room #2068 // Tape & Finish Drywall | 3d | 2025-12-03 A | 2025-12-12 A | QTS-28111 | 100% | 2025-12-03 | 2025-12-05 |  |  |  | Performance Contracting, Inc. | Level 2 | BOH | IGMP | Sean Waisner | Phase 1 | Construction | 01ADMIN |  |  |
| QTS-27601 |  | MMR B Room #2068 // Set HM Frame | 1d | 2025-12-10 A | 2025-12-10 A | QTS-27401 FF, QTS-99620 | 100% |  |  |  |  |  | ISEC Incorporated | Level 2 | BOH | IGMP | Sean Waisner | Phase 1 | Construction | 01ADMIN |  |  |
| QTS-1000890 |  | MMR B Room #2068 // Install Fire Caulking | 1d | 2025-12-15 A | 2025-12-15 A | QTS-28151 | 100% |  |  |  |  |  |  | Level 2 | BOH | IGMP | Sean Waisner | Phase 1 | Construction | 01ADMIN |  |  |
| QTS-28511 |  | MMR B Room #2068 // Prime & Paint | 2d | 2025-12-22 A | 2025-12-23 A | QTS-28151 | 100% |  |  |  |  |  |  | Level 2 | BOH | IGMP | Sean Waisner | Phase 1 | Construction | 01ADMIN |  |  |
| QTS-28831 |  | MMR B Room #2068 // Install AC Unit | 2d | 2025-12-29 A | 2025-12-30 A | QTS-28511, QTS-27621 | 100% |  |  |  |  |  | Bel-Aire Mechanical, LLC | Level 2 | BOH | IGMP | Dave Wiltberger | Phase 1 | Construction | 01ADMIN |  |  |
| QTS-28951 |  | MMR B Room #2068 // Install Light Fixtures | 2d | 2026-01-05 A | 2026-01-06 A | QTS-28831 | 100% |  |  |  |  | QTS-PHX3 DC1 - 6 day w/ Holidays | Rosendin Electric, Inc | Level 2 | BOH | IGMP | Scott Masterson | Phase 1 | Construction | 01ADMIN |  |  |
| QTS-1000900 |  | MMR B Room #2068 // Install OH Busway | 4d | 2026-01-14 | 2026-01-17 | QTS-28831 |  |  |  | 68d | 3d | QTS-PHX3 DC1 - 6 day w/ Holidays | Bel-Aire Mechanical, LLC | Level 2 | BOH | IGMP | Scott Masterson | Phase 1 | Construction | 01ADMIN |  |  |
| QTS-28751 |  | MMR B Room #2068 // Plywood Install | 1d | 2026-01-14 | 2026-01-14 | QTS-28511, QTS-28151, QTS-1000890 |  |  |  | 69d | 4d | QTS-PHX3 DC1 - 6 day w/ Holidays | Performance Contracting, Inc. | Level 2 | BOH | IGMP | Sean Waisner | Phase 1 | Construction | 01ADMIN |  |  |
| QTS-29041 |  | MMR B Room #2068 // Install Cable Racks | 5d | 2026-01-14 | 2026-01-20 | QTS-28951 |  |  |  | 65d | 0d | QTS-PHX3 DC1 - 6 day w/ Holidays | E2 Optics, LLC | Level 2 | BOH | IGMP | Scott Masterson | Phase 1 | Construction | 01ADMIN |  |  |
| QTS-1000910 |  | MMR B Room #2068 // Finish Flooring | 1d | 2026-01-21 | 2026-01-21 | QTS-28751, QTS-29041, QTS-28951 |  |  |  | 65d | 0d | QTS-PHX3 DC1 - 6 day w/ Holidays | Bel-Aire Mechanical, LLC | Level 2 | BOH | IGMP | Sean Waisner | Phase 1 | Construction | 01ADMIN |  |  |
| QTS-1000920 |  | MMR B Room #2068 // Install Wall Base | 1d | 2026-01-22 | 2026-01-22 | QTS-1000910 |  |  |  | 65d | 0d | QTS-PHX3 DC1 - 6 day w/ Holidays | Bel-Aire Mechanical, LLC | Level 2 | BOH | IGMP | Dave Wiltberger | Phase 1 | Construction | 01ADMIN |  |  |
| QTS-1000930 |  | MMR B Room #2068 // Install MEP Trim | 2d | 2026-01-23 | 2026-01-24 | QTS-1000900, QTS-29041, QTS-1000920 |  |  |  | 65d | 0d | QTS-PHX3 DC1 - 6 day w/ Holidays | E2 Optics, LLC | Level 2 | BOH | IGMP | Scott Masterson | Phase 1 | Construction | 01ADMIN |  |  |
| QTS-45551 |  | MMR B Room #2068 // Set Door & Hardware | 1d | 2026-01-26 | 2026-01-26 | QTS-28151, QTS-28951 FF, QTS-99650, QTS-27601, QTS-99630, QTS-1000930 |  |  |  | 65d | 57d | QTS-PHX3 DC1 - 6 day w/ Holidays | ISEC Incorporated | Level 2 | BOH | IGMP | Sean Waisner |  | Construction | 01ADMIN | Construction | Phase 1 |

Notes:
- QTS-27411: allucent_notes_20251111_182405: Zack Goertz on 2025-11-11T18:27:38.820Z: MEP is behind / Jason Johnston on 2025-11-11 15:11: REI doesn't have a schedule that says to do work in BOH / allucent_notes_20251118_192630: Zack Goertz on 2025-11-11T18:27:38.820Z: MEP is behind / Jason Johnston on 2025-11-11 15:11: REI doesn't have a schedule that says to do work in BOH / Zack Goertz on 2025-11-17 13:11: BOH is behind. All labor has been pulled to FOH level 1 and level 2. REI has yet to move to BOH / allucent_notes_20251202_153722: Zack Goertz on 2025-11-11T18:27:38.820Z: MEP is behind / Jason Johnston on 2025-11-11 15:11: REI doesn't have a schedule that says to do work in BOH / Zack Goertz on 2025-11-17 13:11: BOH is behind. All labor has been pulled to FOH level 1 and level 2. REI has yet to move to BOH / allucent_notes_20251209_203830: Zack Goertz on 2025-11-11T18:27:38.820Z: MEP is behind / Jason Johnston on 2025-11-11 15:11: REI doesn't have a schedule that says to do work in BOH / Zack Goertz on 2025-11-17 13:11: BOH is behind. All labor has been pulled to FOH level 1 and level 2. REI has yet to move to BOH / allucent_notes: 2025-11-11T18:27:38.820Z - User: Zack Goertz - Date Added: 2025-11-11T18:27:38.820Z - Note: MEP is behind / 2025-11-11 15:11 - User: Jason Johnston - Date Added: 2025-11-11 15:11 - Note: REI doesn't have a schedule that says to do work in BOH / 2025-11-
- QTS-27441: allucent_notes_20251111_182405: Zack Goertz on 2025-11-11T18:27:25.343Z: MEP trades are behind / Jason Johnston on 2025-11-11 15:11: BAM has no man power. / allucent_notes_20251118_192630: Zack Goertz on 2025-11-11T18:27:25.343Z: MEP trades are behind / Jason Johnston on 2025-11-11 15:11: BAM has no man power. / Zack Goertz on 2025-11-17 13:11: BOH is behind. All labor has been pulled to FOH level 1 and level 2. BAM has had between 2-4 people working in the BOH for the last few weeks. / allucent_notes_20251202_153722: Zack Goertz on 2025-11-11T18:27:25.343Z: MEP trades are behind / Jason Johnston on 2025-11-11 15:11: BAM has no man power. / Zack Goertz on 2025-11-17 13:11: BOH is behind. All labor has been pulled to FOH level 1 and level 2. BAM has had between 2-4 people working in the BOH for the last few weeks. / allucent_notes: 2025-11-11T18:27:25.343Z - User: Zack Goertz - Date Added: 2025-11-11T18:27:25.343Z - Note: MEP trades are behind / 2025-11-11 15:11 - User: Jason Johnston - Date Added: 2025-11-11 15:11 - Note: BAM has no man power. / 2025-11-17 13:11 - User: Zack Goer
- QTS-28011: allucent_notes_20251230_164549: Zach Gioe on 2025-12-16 13:45: Drywall not complete in areas around elevator shaft walls. / allucent_notes_20251216_165335: Zach Gioe on 2025-12-16 13:45: Drywall not complete in areas around elevator shaft walls. / allucent_notes: 2025-12-16 13:45 - User: Zach Gioe - Date Added: 2025-12-16 13:45 - Note: Drywall not complete in areas around elevator shaft walls.
- QTS-27401: allucent_notes_20251104_160200: Jason Johnston on 2025-11-04 12:11: finished early / allucent_notes: 2025-11-04 12:11 - User: Jason Johnston - Date Added: 2025-11-04 12:11 - Note: finished early
- QTS-27611: allucent_notes_20251104_160200: Jason Johnston on 2025-11-04 12:11: finished early / allucent_notes: 2025-11-04 12:11 - User: Jason Johnston - Date Added: 2025-11-04 12:11 - Note: finished early
- QTS-27591: allucent_notes_20251111_182405: Zack Goertz on 2025-11-11T18:28:03.555Z: MEP is behind / Jason Johnston on 2025-11-11 15:11: REI doesn't have a schedule that says to do work in BOH / allucent_notes_20251118_192630: Zack Goertz on 2025-11-11T18:28:03.555Z: MEP is behind / Jason Johnston on 2025-11-11 15:11: REI doesn't have a schedule that says to do work in BOH / Zack Goertz on 2025-11-17 13:11: BOH is behind. All labor has been pulled to FOH level 1 and level 2. REI has yet to be in BOH / allucent_notes_20251202_153722: Zack Goertz on 2025-11-11T18:28:03.555Z: MEP is behind / Jason Johnston on 2025-11-11 15:11: REI doesn't have a schedule that says to do work in BOH / Zack Goertz on 2025-11-17 13:11: BOH is behind. All labor has been pulled to FOH level 1 and level 2. REI has yet to be in BOH / allucent_notes: 2025-11-11T18:28:03.555Z - User: Zack Goertz - Date Added: 2025-11-11T18:28:03.555Z - Note: MEP is behind / 2025-11-11 15:11 - User: Jason Johnston - Date Added: 2025-11-11 15:11 - Note: REI doesn't have a schedule that says to do work in BOH / 2025-11-
- QTS-27621: allucent_notes_20251111_182405: Zack Goertz on 2025-11-11T18:27:53.909Z: MEP is behind / Jason Johnston on 2025-11-11 15:11: REI doesn't have a schedule that says to do work in BOH / allucent_notes_20251118_192630: Zack Goertz on 2025-11-11T18:27:53.909Z: MEP is behind / Jason Johnston on 2025-11-11 15:11: REI doesn't have a schedule that says to do work in BOH / Zack Goertz on 2025-11-17 13:11: BOH is behind. All labor has been pulled to FOH level 1 and level 2. BAM has had between 2-4 people working in the BOH for the last few weeks. / allucent_notes_20251202_153722: Zack Goertz on 2025-11-11T18:27:53.909Z: MEP is behind / Jason Johnston on 2025-11-11 15:11: REI doesn't have a schedule that says to do work in BOH / Zack Goertz on 2025-11-17 13:11: BOH is behind. All labor has been pulled to FOH level 1 and level 2. BAM has had between 2-4 people working in the BOH for the last few weeks. / allucent_notes: 2025-11-11T18:27:53.909Z - User: Zack Goertz - Date Added: 2025-11-11T18:27:53.909Z - Note: MEP is behind / 2025-11-11 15:11 - User: Jason Johnston - Date Added: 2025-11-11 15:11 - Note: REI doesn't have a schedule that says to do work in BOH / 2025-11-
- QTS-28751: allucent_notes_20251230_164549: Zach Gioe on 2025-12-16 13:47: PCI does not have the material. / Sean Waisner on 2025-12-30 15:29: Man power issues / allucent_notes_20251216_165335: Zach Gioe on 2025-12-16 13:47: PCI does not have the material. / allucent_notes: 2025-12-16 13:47 - User: Zach Gioe - Date Added: 2025-12-16 13:47 - Note: PCI does not have the material. / 2025-12-30 15:29 - User: Sean Waisner - Date Added: 2025-12-30 15:29 - Note: Man power issues

| ID | WBS | Activity | Duration | Start | Finish | Predecessors | Complete | Remaining | Planned start | Planned finish | Total float | Free float | Constraint | Calendar | Subcontractor | Level | Location | Baseline | Layton Responsible Party | Phase-1 | Project Section | Allucent CSI Group | Project Section-1 | Phase-1-1 |
| --- | --- | --- | --- | --- | --- | --- | --- | --- | --- | --- | --- | --- | --- | --- | --- | --- | --- | --- | --- | --- | --- | --- | --- | --- |
|  | 5 | **L2 / BOH // Telecom Riser #2069 (Early Access)** |  | 2025-11-05 | 2026-01-29 |  |  |  |  |  |  |  |  |  |  |  |  |  |  |  |  |  |  |  |
| QTS-27991 |  | Telecom Riser #2069 // Rough Overhead Fire Sprinkler | 2d | 2025-11-05 A | 2025-11-06 A | QTS-27611 | 100% |  |  |  |  |  |  |  | Olympic West Fire Protection | Level 2 | BOH | IGMP | Dave Wiltberger | Phase 1 | Construction | 01ADMIN |  |  |
| QTS-27631 |  | Telecom Riser #2069 // Frame Walls | 2d | 2025-11-07 A | 2025-11-10 A | QTS-26111, QTS-27991 | 100% |  |  |  |  |  |  |  | Performance Contracting, Inc. | Level 2 | BOH | IGMP | Doug Hayes | Phase 1 | Construction | 01ADMIN |  |  |
| QTS-27971 |  | Telecom Riser #2069 // Rough In Electrical | 10d | 2025-11-26 A | 2025-12-01 A | QTS-27631 | 100% |  | 2025-11-26 | 2025-12-11 |  |  |  |  | Rosendin Electric, Inc | Level 2 | BOH | IGMP | Scott Masterson | Phase 1 | Construction | 01ADMIN |  |  |
| QTS-28001 |  | Telecom Riser #2069 // Rough Overhead Linesets | 5d | 2025-11-26 A | 2025-12-04 A | QTS-27631 | 100% |  |  |  |  |  |  |  | Bel-Aire Mechanical, LLC | Level 2 | BOH | IGMP | Dave Wiltberger | Phase 1 | Construction | 01ADMIN |  |  |
| QTS-28161 |  | Telecom Riser #2069 // In Wall Inspection | 1d | 2025-12-02 A | 2025-12-02 A | QTS-27971 | 100% |  |  |  |  |  |  |  | Bel-Aire Mechanical, LLC | Level 2 | BOH | IGMP | Dave Wiltberger | Phase 1 | Construction | 01ADMIN |  |  |
| QTS-28261 |  | Telecom Riser #2069 // Hang Drywall | 1d | 2025-12-02 A | 2025-12-02 A | QTS-28161 | 100% |  |  |  |  |  |  |  | Performance Contracting, Inc. | Level 2 | BOH | IGMP | Sean Waisner | Phase 1 | Construction | 01ADMIN |  |  |
| QTS-28351 |  | Telecom Riser #2069 // Tape & Finish Drywall | 3d | 2025-12-03 A | 2025-12-12 A | QTS-28261 | 100% |  | 2025-12-03 | 2025-12-05 |  |  |  |  | Performance Contracting, Inc. | Level 2 | BOH | IGMP | Sean Waisner | Phase 1 | Construction | 01ADMIN |  |  |
| QTS-27981 |  | Telecom Riser #2069 // Set HM Frame | 1d | 2025-12-10 A | 2025-12-10 A | QTS-27631 FF, QTS-99620 | 100% |  |  |  |  |  |  |  | ISEC Incorporated | Level 2 | BOH | IGMP | Sean Waisner | Phase 1 | Construction | 01ADMIN |  |  |
| QTS-28761 |  | Telecom Riser #2069 // Prime & Paint | 2d | 2026-01-14 | 2026-01-15 | QTS-28351 |  |  |  |  | 52d | 0d |  |  | Performance Contracting, Inc. | Level 2 | BOH | IGMP | Sean Waisner | Phase 1 | Construction | 01ADMIN |  |  |
| QTS-1004090 |  | Telecom Riser #2069 // Install Plywood | 2d | 2026-01-16 | 2026-01-20 | QTS-28761, QTS-28351 |  |  |  |  | 52d | 0d |  |  | Performance Contracting, Inc. | Level 2 | BOH | IGMP | Sean Waisner | Phase 1 | Construction | 01ADMIN |  |  |
| QTS-29021 |  | Telecom Riser #2069 // Install OH Electrical | 3d | 2026-01-21 | 2026-01-23 | QTS-1004090, QTS-28001, QTS-28761 |  |  |  |  | 62d | 0d | start on or after 2026-01-07 | QTS-PHX3 DC1 - 6 day w/ Holidays | Rosendin Electric, Inc | Level 2 | BOH | IGMP | Scott Masterson | Phase 1 | Construction | 01ADMIN |  |  |
| QTS-45561 |  | Telecom Riser #2069 // Set Door & Hardware | 1d | 2026-01-23 | 2026-01-23 | QTS-29021 FF, QTS-99650, QTS-27981, QTS-99630 |  |  |  |  | 67d | 59d |  | QTS-PHX3 DC1 - 6 day w/ Holidays | ISEC Incorporated | Level 2 | BOH | IGMP | Sean Waisner |  | Construction | 01ADMIN | Construction | Phase 1 |
| QTS-29081 |  | Telecom Riser #2069 // Install Cable Racks | 5d | 2026-01-24 | 2026-01-29 | QTS-29021 |  |  |  |  | 62d | 54d |  | QTS-PHX3 DC1 - 6 day w/ Holidays | E2 Optics, LLC | Level 2 | BOH | IGMP | Scott Masterson | Phase 1 | Construction | 01ADMIN |  |  |
|  | 1 | **L2 / BOH // Fire Room #2063** |  | 2025-11-07 | 2026-01-27 |  |  |  |  |  |  |  |  |  |  |  |  |  |  |  |  |  |  |  |
| QTS-29571 |  | Fire Pump Room #2063 // Rough Overhead Fire Sprinkler | 10d | 2025-11-07 A | 2025-11-20 A | QTS-27991 | 100% |  |  |  |  |  |  |  | Olympic West Fire Protection | Level 2 | BOH | IGMP | Dave Wiltberger | Phase 1 | Construction | 01ADMIN |  |  |
| QTS-26461 |  | Fire Pump Room #2063 // Frame Walls | 2d | 2025-11-21 A | 2025-11-24 A | QTS-26111, QTS-29571 | 100% |  |  |  |  |  |  |  |  | Level 2 | BOH | IGMP | Sean Waisner | Phase 1 | Construction | 01ADMIN |  |  |
| QTS-26731 |  | Fire Pump Room #2063 // Rough In Electrical | 10d | 2025-11-25 A | 2025-12-01 A | QTS-26461 | 100% |  | 2025-11-25 | 2025-12-10 |  |  |  |  | Rosendin Electric, Inc | Level 2 | BOH | IGMP | Scott Masterson | Phase 1 | Construction | 01ADMIN |  |  |
| QTS-26741 |  | Fire Pump Room #2063 // In Wall Rough Plumbing | 5d | 2025-12-01 A | 2025-12-01 A | QTS-26461 | 100% |  | 2025-12-05 | 2025-12-11 |  |  |  |  | Bel-Aire Mechanical, LLC | Level 2 | BOH | IGMP | Dave Wiltberger | Phase 1 | Construction | 01ADMIN |  |  |
| QTS-27501 |  | Fire Pump Room #2063 // In Wall Inspection | 1d | 2025-12-02 A | 2025-12-02 A | QTS-26741, QTS-26731 | 100% |  |  |  |  |  |  |  | Bel-Aire Mechanical, LLC | Level 2 | BOH | IGMP | Dave Wiltberger | Phase 1 | Construction | 01ADMIN |  |  |
| QTS-28131 |  | Fire Pump Room #2063 // Hang Drywall | 1d | 2025-12-02 A | 2025-12-02 A | QTS-27501 | 100% |  |  |  |  |  |  |  |  | Level 2 | BOH | IGMP | Sean Waisner | Phase 1 | Construction |  |  |  |
| QTS-28741 |  | Fire Pump Room #2063 // Tape & Finish Drywall | 5d | 2025-12-03 A | 2026-01-05 A | QTS-28131 | 100% |  | 2025-12-03 | 2025-12-08 |  |  |  | QTS-PHX3 DC1 - 6 day w/ Holidays | Performance Contracting, Inc. | Level 2 | BOH | IGMP | Sean Waisner | Phase 1 | Construction | 01ADMIN |  |  |
| QTS-29961 |  | Fire Pump Room #2063 // Build Fire Risers | 10d | 2025-12-15 A | 2026-01-14 | QTS-29571 | 90% | 1d | 2025-12-15 | 2025-12-26 | 68d | 4d |  | QTS-PHX3 DC1 - 6 day w/ Holidays | Olympic West Fire Protection | Level 2 | BOH | IGMP | Dave Wiltberger | Phase 1 | Construction | 01ADMIN |  |  |
| QTS-26751 |  | Fire Pump Room #2063 // Set HM Frame | 1d | 2025-12-19 A | 2025-12-19 A | QTS-26461 FF, QTS-99620 | 100% |  |  |  |  |  |  |  |  | Level 2 | BOH | IGMP | Sean Waisner | Phase 1 | Construction | 01ADMIN |  |  |
| QTS-29031 |  | Fire Pump Room #2063 // Prime & Paint | 5d | 2026-01-14 | 2026-01-20 | QTS-28741 |  |  |  |  | 64d | 0d |  | QTS-PHX3 DC1 - 6 day w/ Holidays | Pennington Painting Company, LLC | Level 2 | BOH | IGMP | Sean Waisner | Phase 1 | Construction | 01ADMIN |  |  |
| QTS-30441 |  | Fire Pump Room #2063 // Install Heater | 5d | 2026-01-14 | 2026-01-20 | QTS-29031 FF |  |  |  |  | 64d | 0d |  | QTS-PHX3 DC1 - 6 day w/ Holidays | Bel-Aire Mechanical, LLC | Level 2 | BOH | IGMP | Dave Wiltberger | Phase 1 | Construction | 01ADMIN |  |  |
| QTS-29321 |  | Fire Pump Room #2063 // Install Light Fixtures | 5d | 2026-01-21 | 2026-01-26 | QTS-29031 |  |  |  |  | 64d | 0d |  | QTS-PHX3 DC1 - 6 day w/ Holidays | Rosendin Electric, Inc | Level 2 | BOH | IGMP | Scott Masterson | Phase 1 | Construction | 01ADMIN |  |  |
| QTS-30341 |  | Fire Pump Room #2063 // Air Test System | 2d | 2026-01-21 | 2026-01-22 | QTS-30441, QTS-29961, QTS-27071, QTS-27011, QTS-27611, QTS-27991, QTS-27431 |  |  |  |  | 64d | 0d |  | QTS-PHX3 DC1 - 6 day w/ Holidays | Olympic West Fire Protection | Level 2 | BOH | IGMP | Dave Wiltberger | Phase 1 | Construction | 01ADMIN |  |  |
| QTS-1004020 |  | Fire Pump Room #2063 // Water Test System | 2d | 2026-01-23 | 2026-01-24 | QTS-30341, QTS-30441 |  |  |  |  | 64d | 0d |  | QTS-PHX3 DC1 - 6 day w/ Holidays | Olympic West Fire Protection | Level 1 | BOH | IGMP | Dave Wiltberger | Phase 1 | Construction |  |  |  |
| QTS-1004030 |  | Fire Pump Room #2063 // City Inspection of Fire Pump/System | 2d | 2026-01-26 | 2026-01-27 | QTS-1004020 |  |  |  |  | 64d | 56d |  | QTS-PHX3 DC1 - 6 day w/ Holidays | Olympic West Fire Protection | Level 1 | FOH | IGMP | Dave Wiltberger | Phase 1 | Construction | 01ADMIN |  |  |
| QTS-45571 |  | Fire Pump Room #2063 // Set Door & Frame | 1d | 2026-01-27 | 2026-01-27 | QTS-29321, QTS-26751 |  |  |  |  | 64d | 56d |  | QTS-PHX3 DC1 - 6 day w/ Holidays | ISEC Incorporated | Level 2 | BOH | IGMP | Sean Waisner |  | Construction |  | Construction | Phase 1 |

Notes:
- QTS-27971: allucent_notes_20251111_182405: Zack Goertz on 2025-11-11T18:28:57.339Z: MEP is behind / Jason Johnston on 2025-11-11 15:11: REI doesn't have a schedule that says to do work in BOH / allucent_notes_20251118_192630: Zack Goertz on 2025-11-11T18:28:57.339Z: MEP is behind / Jason Johnston on 2025-11-11 15:11: REI doesn't have a schedule that says to do work in BOH / Zack Goertz on 2025-11-17 13:11: BOH is behind. All labor has been pulled to FOH level 1 and level 2. REI has yet to begin in BOH / allucent_notes_20251202_153722: Zack Goertz on 2025-11-11T18:28:57.339Z: MEP is behind / Jason Johnston on 2025-11-11 15:11: REI doesn't have a schedule that says to do work in BOH / Zack Goertz on 2025-11-17 13:11: BOH is behind. All labor has been pulled to FOH level 1 and level 2. REI has yet to begin in BOH / allucent_notes_20251209_203830: Zack Goertz on 2025-11-11T18:28:57.339Z: MEP is behind / Jason Johnston on 2025-11-11 15:11: REI doesn't have a schedule that says to do work in BOH / Zack Goertz on 2025-11-17 13:11: BOH is behind. All labor has been pulled to FOH level 1 and level 2. REI has yet to begin in BOH / allucent_notes: 2025-11-11T18:28:57.339Z - User: Zack Goertz - Date Added: 2025-11-11T18:28:57.339Z - Note: MEP is behind / 2025-11-11 15:11 - User: Jason Johnston - Date Added: 2025-11-11 15:11 - Note: REI doesn't have a schedule that says to do work in BOH / 2025-11-
- QTS-28001: allucent_notes_20251111_182405: Zack Goertz on 2025-11-11T18:28:45.787Z: MEP is behind / Jason Johnston on 2025-11-11 15:11: REI doesn't have a schedule that says to do work in BOH / allucent_notes_20251118_192630: Zack Goertz on 2025-11-11T18:28:45.787Z: MEP is behind / Jason Johnston on 2025-11-11 15:11: REI doesn't have a schedule that says to do work in BOH / Zack Goertz on 2025-11-17 13:11: BOH is behind. All labor has been pulled to FOH level 1 and level 2. / allucent_notes_20251202_153722: Zack Goertz on 2025-11-11T18:28:45.787Z: MEP is behind / Jason Johnston on 2025-11-11 15:11: REI doesn't have a schedule that says to do work in BOH / Zack Goertz on 2025-11-17 13:11: BOH is behind. All labor has been pulled to FOH level 1 and level 2. / allucent_notes_20251209_203830: Zack Goertz on 2025-11-11T18:28:45.787Z: MEP is behind / Jason Johnston on 2025-11-11 15:11: REI doesn't have a schedule that says to do work in BOH / Zack Goertz on 2025-11-17 13:11: BOH is behind. All labor has been pulled to FOH level 1 and level 2. / allucent_notes: 2025-11-11T18:28:45.787Z - User: Zack Goertz - Date Added: 2025-11-11T18:28:45.787Z - Note: MEP is behind / 2025-11-11 15:11 - User: Jason Johnston - Date Added: 2025-11-11 15:11 - Note: REI doesn't have a schedule that says to do work in BOH / 2025-11-
- QTS-29021: allucent_notes_20251230_164549: Sean Waisner on 2025-12-30 15:37: Need overhead electrical / allucent_notes: 2025-12-30 15:37 - User: Sean Waisner - Date Added: 2025-12-30 15:37 - Note: Need overhead electrical
- QTS-26741: allucent_notes_20251202_153722: David Wiltberger on 2025-12-02 06:41: wall built late / allucent_notes_20251209_203830: David Wiltberger on 2025-12-02 06:41: wall built late / allucent_notes: 2025-12-02 06:41 - User: David Wiltberger - Date Added: 2025-12-02 06:41 - Note: wall built late
- QTS-28741: allucent_notes_20251230_164549: Zach Gioe on 2025-12-16 13:47: Drywall not complete due to exterior wall not having spray foam insulation, drywall still not complete on exterior wall. / Sean Waisner on 2025-12-30 15:38: Exterior wall not insulated / allucent_notes_20251216_165335: Zach Gioe on 2025-12-16 13:47: Drywall not complete due to exterior wall not having spray foam insulation, drywall still not complete on exterior wall. / allucent_notes: 2025-12-16 13:47 - User: Zach Gioe - Date Added: 2025-12-16 13:47 - Note: Drywall not complete due to exterior wall not having spray foam insulation, drywall still not complete on exterior wall. / 2025-12-30 15:38 - User: Sean Waisner - Date Added: 2025-
- QTS-29961: allucent_notes_20251230_164549: Zack Goertz on 2025-12-01 10:33: Stop work has been recently released. Olympic is working on "other priority areas" / allucent_notes_20251202_153722: Zack Goertz on 2025-12-01 10:33: Stop work has been recently released. Olympic is working on "other priority areas" / allucent_notes_20251209_203830: Zack Goertz on 2025-12-01 10:33: Stop work has been recently released. Olympic is working on "other priority areas" / allucent_notes_20251216_165335: Zack Goertz on 2025-12-01 10:33: Stop work has been recently released. Olympic is working on "other priority areas" / allucent_notes: 2025-12-01 10:33 - User: Zack Goertz - Date Added: 2025-12-01 10:33 - Note: Stop work has been recently released. Olympic is working on "other priority areas"
- QTS-26751: allucent_notes_20251230_164549: Zach Gioe on 2025-12-16 13:48: Area not done due to exterior wall in room. / allucent_notes_20251216_165335: Zach Gioe on 2025-12-16 13:48: Area not done due to exterior wall in room. / allucent_notes: 2025-12-16 13:48 - User: Zach Gioe - Date Added: 2025-12-16 13:48 - Note: Area not done due to exterior wall in room.

| ID | WBS | Activity | Duration | Start | Finish | Predecessors | Complete | Remaining | Planned start | Planned finish | Total float | Free float | Constraint | Calendar | Last Period Finish | Last Period Start | Subcontractor | Level | Location | Project Section-1 | Phase-1-1 | Baseline | Layton Responsible Party | Project Section | Allucent CSI Group |
| --- | --- | --- | --- | --- | --- | --- | --- | --- | --- | --- | --- | --- | --- | --- | --- | --- | --- | --- | --- | --- | --- | --- | --- | --- | --- |
|  | 8 | **L2 / BOH // Restrooms #2071** |  | 2025-11-21 | 2026-02-21 |  |  |  |  |  |  |  |  |  |  |  |  |  |  |  |  |  |  |  |  |
| QTS-5751 |  | Restrooms #2071 // Rough Overhead Fire Sprinkler | 1d | 2025-11-21 A | 2025-11-21 A | QTS-29571 | 100% |  |  |  |  |  |  |  | 2023-01-17 | 2023-01-13 | Olympic West Fire Protection | Level 2 | BOH | Construction | Phase 1 | IGMP | Dave Wiltberger | Construction | 01ADMIN |
| QTS-1561 |  | Restrooms #2071 // Layout | 1d | 2025-11-24 A | 2025-11-24 A | QTS-26111, QTS-5751 | 100% |  |  |  |  |  |  |  | 2023-01-05 | 2023-01-05 |  | Level 2 | BOH | Construction | Phase 1 | IGMP | Sean Waisner | Construction | 01ADMIN |
| QTS-2311 |  | Restrooms #2071 // Frame Walls | 2d | 2025-11-24 A | 2025-11-25 A | QTS-1561 SS | 100% |  |  |  |  |  |  |  | 2023-01-09 | 2023-01-06 |  | Level 2 | BOH | Construction | Phase 1 | IGMP | Sean Waisner | Construction | 01ADMIN |
| QTS-2671 |  | Restrooms #2071 // Rough In-Wall Electrical, Security, & Access Controls | 2d | 2025-11-26 A | 2026-01-14 | QTS-2311 | 100% | 0d | 2025-11-26 | 2025-11-29 | 42d | 0d |  | QTS-PHX3 DC1 - 6 day w/ Holidays | 2023-01-12 | 2023-01-10 | Securitas Technology Corporation | Level 2 | BOH | Construction | Phase 1 | IGMP | Scott Masterson | Construction | 01ADMIN |
| QTS-2681 |  | Restrooms #2071 // Rough In-Wall Plumbing | 5d | 2025-11-26 A | 2025-12-04 A | QTS-2311 | 100% |  |  |  |  |  |  |  | 2023-01-13 | 2023-01-11 | Bel-Aire Mechanical, LLC | Level 2 | BOH | Construction | Phase 1 | IGMP | Dave Wiltberger | Construction | 01ADMIN |
| QTS-3761 |  | Restrooms #2071 // Rough Overhead Plumbing | 5d | 2025-12-29 A | 2026-01-03 A | QTS-2311 | 100% |  |  |  |  |  |  | QTS-PHX3 DC1 - 6 day w/ Holidays | 2023-01-12 | 2023-01-10 | Bel-Aire Mechanical, LLC | Level 2 | BOH | Construction | Phase 1 | IGMP | Dave Wiltberger | Construction | 01ADMIN |
| QTS-3771 |  | Restrooms #2071 // In Wall Inspection | 1d | 2026-01-14 | 2026-01-14 | QTS-2681, QTS-2671 |  |  |  |  | 43d | 0d |  | QTS-PHX3 DC1 - 6 day w/ Holidays | 2023-01-17 | 2023-01-17 | Bel-Aire Mechanical, LLC | Level 2 | BOH | Construction | Phase 1 | IGMP | Scott Masterson | Construction | 01ADMIN |
| QTS-3781 |  | Restrooms #2071 // Rough Overhead Electrical/ Light Fixtures Install | 1d | 2026-01-14 | 2026-01-14 | QTS-2661, QTS-2311 |  |  |  |  | 42d | 0d |  | QTS-PHX3 DC1 - 6 day w/ Holidays | 2023-03-08 | 2023-03-07 | Specified Electrical Contractors, Inc | Level 2 | BOH | Construction | Phase 1 | IGMP | Scott Masterson | Construction | 01ADMIN |
| QTS-3791 |  | Restrooms #2071 // Install Backing for Restroom Specialties | 1d | 2026-01-14 A | 2026-01-14 | QTS-2681 | 100% | 0d |  |  | 44d | 1d |  | QTS-PHX3 DC1 - 6 day w/ Holidays | 2023-02-27 | 2023-02-27 | Performance Contracting, Inc. | Level 2 | BOH | Construction | Phase 1 | IGMP | Sean Waisner | Construction | 01ADMIN |
| QTS-2661 |  | Restrooms #2071 // Rough Overhead Mechanical | 5d | 2026-01-15 A | 2026-01-14 | QTS-2671 FF, QTS-2311 | 100% | 0d | 2026-01-15 | 2026-01-21 | 42d | 0d |  | QTS-PHX3 DC1 - 6 day w/ Holidays | 2023-01-26 | 2023-01-23 | Bel-Aire Mechanical, LLC | Level 2 | BOH | Construction | Phase 1 | IGMP | Dave Wiltberger | Construction | 01ADMIN |
| QTS-4411 |  | Restrooms #2071 // Insulate Walls | 1d | 2026-01-15 | 2026-01-15 | QTS-3771, QTS-3791 |  |  |  |  | 43d | 0d |  | QTS-PHX3 DC1 - 6 day w/ Holidays | 2023-02-24 | 2023-02-24 | Alpha Insulation & Waterproofing, Inc. | Level 2 | BOH | Construction | Phase 1 | IGMP | Sean Waisner | Construction | 01ADMIN |
| QTS-45581 |  | Restrooms #2071 // Frame Ceilings | 2d | 2026-01-15 | 2026-01-16 | QTS-3781 |  |  |  |  | 42d | 0d | start on or after 2026-01-08 | QTS-PHX3 DC1 - 6 day w/ Holidays | 2023-01-09 | 2023-01-06 | Performance Contracting, Inc. | Level 2 | BOH | Construction | Phase 1 | IGMP | Sean Waisner | Construction | 01ADMIN |
| QTS-6171 |  | Restrooms #2071 // Above Ceiling Inspection | 1d | 2026-01-15 | 2026-01-15 | QTS-5751, QTS-3781, QTS-3761 |  |  |  |  | 43d | 1d |  | QTS-PHX3 DC1 - 6 day w/ Holidays | 2023-03-09 | 2023-03-09 | Bel-Aire Mechanical, LLC | Level 2 | BOH | Construction | Phase 1 | IGMP | Dave Wiltberger | Construction | 01ADMIN |
| QTS-6161 |  | Restrooms #2071 // Hang Drywall Walls | 1d | 2026-01-16 | 2026-01-16 | QTS-5751, QTS-4411, QTS-3771 |  |  |  |  | 43d | 1d |  | QTS-PHX3 DC1 - 6 day w/ Holidays | 2023-03-01 | 2023-02-28 | Performance Contracting, Inc. | Level 2 | BOH | Construction | Phase 1 | IGMP | Sean Waisner | Construction | 01ADMIN |
| QTS-6331 |  | Restrooms #2071 // Hang Drywall on Hard Lids | 1d | 2026-01-17 | 2026-01-17 | QTS-6161 FF, QTS-6171, QTS-45581 |  |  |  |  | 42d | 0d |  | QTS-PHX3 DC1 - 6 day w/ Holidays | 2023-03-13 | 2023-03-10 | Performance Contracting, Inc. | Level 2 | BOH | Construction | Phase 1 | IGMP | Sean Waisner | Construction | 01ADMIN |
| QTS-6781 |  | Restrooms #2071 // Tape & Finish Drywall | 3d | 2026-01-20 | 2026-01-22 | QTS-6161, QTS-6331 |  |  |  |  | 42d | 0d |  | QTS-PHX3 DC1 - 6 day w/ Holidays | 2023-03-20 | 2023-03-14 | Performance Contracting, Inc. | Level 2 | BOH | Construction | Phase 1 | IGMP | Sean Waisner | Construction | 01ADMIN |
| QTS-7351 |  | Restrooms #2071 // Prime & Paint | 1d | 2026-01-23 | 2026-01-23 | QTS-6781 |  |  |  |  | 42d | 0d |  | QTS-PHX3 DC1 - 6 day w/ Holidays | 2023-04-12 | 2023-04-11 | Pennington Painting Company, LLC | Level 2 | BOH | Construction | Phase 1 | IGMP | Sean Waisner | Construction |  |
| QTS-7811 |  | Restrooms #2071 // Install Wall & Floor Tile | 10d | 2026-01-24 | 2026-02-04 | QTS-6781, QTS-7351 |  |  |  |  | 42d | 0d |  | QTS-PHX3 DC1 - 6 day w/ Holidays | 2023-04-10 | 2023-04-06 | Wholesale Floors, LLC -AZ | Level 2 | BOH | Construction | Phase 1 | IGMP | Sean Waisner | Construction |  |
| QTS-11051 |  | Restrooms #2071 // Plumbing Fixtures Install | 5d | 2026-02-05 | 2026-02-10 | QTS-7811, QTS-7351 |  |  |  |  | 48d | 0d |  | QTS-PHX3 DC1 - 6 day w/ Holidays | 2023-04-14 | 2023-04-13 | Bel-Aire Mechanical, LLC | Level 2 | BOH | Construction | Phase 1 | IGMP | Dave Wiltberger | Construction |  |
| QTS-11061 |  | Restrooms #2071 // Electrical Trim | 1d | 2026-02-05 | 2026-02-05 | QTS-7811, QTS-7351 |  |  |  |  | 51d | 0d |  | QTS-PHX3 DC1 - 6 day w/ Holidays | 2023-04-14 | 2023-04-13 | Specified Electrical Contractors, Inc | Level 2 | BOH | Construction | Phase 1 | IGMP | Scott Masterson | Construction |  |
| QTS-11071 |  | Restrooms #2071 // Field Measure for Countertops | 1d | 2026-02-05 | 2026-02-05 | QTS-6781, QTS-7811 |  |  |  |  | 42d | 0d |  | QTS-PHX3 DC1 - 6 day w/ Holidays |  |  | ISEC Incorporated | Level 2 | BOH | Construction | Phase 1 | IGMP | Sean Waisner | Construction |  |
| QTS-11081 |  | Restrooms #2071 // Set Lockers | 2d | 2026-02-05 | 2026-02-06 | QTS-7811 |  |  |  |  | 53d | 5d |  | QTS-PHX3 DC1 - 6 day w/ Holidays |  |  | Inter-Co Restroom and Locker Supply, Inc | Level 2 | BOH | Construction | Phase 1 | IGMP | Sean Waisner | Construction |  |
| QTS-11441 |  | Restrooms #2071 // Final Coat of Paint | 1d | 2026-02-06 | 2026-02-06 | QTS-11061 |  |  |  |  | 51d | 0d |  | QTS-PHX3 DC1 - 6 day w/ Holidays |  |  | Pennington Painting Company, LLC | Level 2 | BOH | Construction | Phase 1 | IGMP | Sean Waisner | Construction |  |
| QTS-11451 |  | Restrooms #2071 // Fabricate & Delivery Countertops | 10d | 2026-02-06 | 2026-02-17 | QTS-11071 |  |  |  |  | 42d | 0d |  | QTS-PHX3 DC1 - 6 day w/ Holidays |  |  | ISEC Incorporated | Level 2 | BOH | Construction | Phase 1 | IGMP | Sean Waisner | Construction |  |
| QTS-11501 |  | Restrooms #2071 // Install Mechanical Trim | 1d | 2026-02-07 | 2026-02-07 | QTS-11441, QTS-7351 |  |  |  |  | 52d | 4d |  | QTS-PHX3 DC1 - 6 day w/ Holidays | 2023-04-14 | 2023-04-13 | Bel-Aire Mechanical, LLC | Level 2 | BOH | Construction | Phase 1 | IGMP | Dave Wiltberger | Construction |  |
| QTS-12131 |  | Restrooms #2071 // Install Restroom Specialties/ ADA Trim | 2d | 2026-02-11 | 2026-02-12 | QTS-11441, QTS-11051 |  |  |  |  | 48d | 0d |  | QTS-PHX3 DC1 - 6 day w/ Holidays | 2023-04-21 | 2023-04-20 | Inter-Co Restroom and Locker Supply, Inc | Level 2 | BOH | Construction | Phase 1 | IGMP | Sean Waisner | Construction |  |
| QTS-12511 |  | Restrooms #2071 // Set Doors & Hardware | 2d | 2026-02-13 | 2026-02-14 | QTS-11501, QTS-12131, QTS-11081, QTS-99650 |  |  |  |  | 48d | 40d |  | QTS-PHX3 DC1 - 6 day w/ Holidays | 2023-04-21 | 2023-04-20 | ISEC Incorporated | Level 2 | BOH | Construction | Phase 1 | IGMP | Sean Waisner | Construction |  |
| QTS-13181 |  | Restrooms #2071 // Set Countertops | 2d | 2026-02-18 | 2026-02-19 | QTS-11451 |  |  |  |  | 42d | 0d |  | QTS-PHX3 DC1 - 6 day w/ Holidays |  |  | ISEC Incorporated | Level 2 | BOH | Construction | Phase 1 | IGMP | Sean Waisner | Construction |  |
| QTS-13311 |  | Restrooms #2071 // Install Plumbing Trim at Countertops | 2d | 2026-02-20 | 2026-02-21 | QTS-13181 |  |  |  |  | 42d | 34d |  | QTS-PHX3 DC1 - 6 day w/ Holidays |  |  | Bel-Aire Mechanical, LLC | Level 2 | BOH | Construction | Phase 1 | IGMP | Dave Wiltberger | Construction |  |

Notes:
- QTS-2671: allucent_notes_20251230_164549: Zack Goertz on 2025-12-01 10:34: Had to do some rework for missed layout / Zack Goertz on 2025-12-09 10:52: Not a priority / Sean Waisner on 2025-12-30 15:33: Needs to be not started / allucent_notes_20251202_153722: Zack Goertz on 2025-12-01 10:34: Had to do some rework for missed layout / allucent_notes_20251209_203830: Zack Goertz on 2025-12-01 10:34: Had to do some rework for missed layout / Zack Goertz on 2025-12-09 10:52: Not a priority / allucent_notes_20251216_165335: Zack Goertz on 2025-12-01 10:34: Had to do some rework for missed layout / Zack Goertz on 2025-12-09 10:52: Not a priority / allucent_notes: 2025-12-01 10:34 - User: Zack Goertz - Date Added: 2025-12-01 10:34 - Note: Had to do some rework for missed layout / 2025-12-09 10:52 - User: Zack Goertz - Date Added: 2025-12-09 10:52 - Note: Not a priority / 2025-12-30 15:33 - User: Sean Waisner - Da
- QTS-3791: allucent_notes_20251230_164549: Zack Goertz on 2025-12-09 10:52: Not a priority / Zack Goertz on 2025-12-09 10:52: Not a priority / Sean Waisner on 2025-12-16 15:04: Not priority due to sequencing / Sean Waisner on 2025-12-30 15:34: Framer has not started / allucent_notes_20251209_203830: Zack Goertz on 2025-12-09 10:52: Not a priority / Zack Goertz on 2025-12-09 10:52: Not a priority / allucent_notes_20251216_165335: Zack Goertz on 2025-12-09 10:52: Not a priority / Zack Goertz on 2025-12-09 10:52: Not a priority / Sean Waisner on 2025-12-16 15:04: Not priority due to sequencing / allucent_notes: 2025-12-09 10:52 - User: Zack Goertz - Date Added: 2025-12-09 10:52 - Note: Not a priority / 2025-12-09 10:52 - User: Zack Goertz - Date Added: 2025-12-09 10:52 - Note: Not a priority / 2025-12-16 15:04 - User: Sean Waisner - Date Added: 2025-12-16 15:0
- QTS-2661: allucent_notes_20251230_164549: Zack Goertz on 2025-12-01 10:36: Bel-aire is behind. / Zack Goertz on 2025-12-09 10:52: Not a priority / Sean Waisner on 2025-12-30 15:35: Not actually started / allucent_notes_20251202_153722: Zack Goertz on 2025-12-01 10:36: Bel-aire is behind. / allucent_notes_20251209_203830: Zack Goertz on 2025-12-01 10:36: Bel-aire is behind. / Zack Goertz on 2025-12-09 10:52: Not a priority / allucent_notes_20251216_165335: Zack Goertz on 2025-12-01 10:36: Bel-aire is behind. / Zack Goertz on 2025-12-09 10:52: Not a priority / Notes: 1/20/26: Corridor wall is incomplete holding up completion of this line item. / allucent_notes: 2025-12-01 10:36 - User: Zack Goertz - Date Added: 2025-12-01 10:36 - Note: Bel-aire is behind. / 2025-12-09 10:52 - User: Zack Goertz - Date Added: 2025-12-09 10:52 - Note: Not a priority / 2025-12-30 15:35 - User: Sean Waisner - Date Added: 2025-12-3
- QTS-45581: allucent_notes_20251230_164549: Sean Waisner on 2025-12-30 15:34: Awaiting Mechanical / allucent_notes: 2025-12-30 15:34 - User: Sean Waisner - Date Added: 2025-12-30 15:34 - Note: Awaiting Mechanical

| ID | WBS | Activity | Duration | Start | Finish | Predecessors | Complete | Remaining | Planned start | Planned finish | Total float | Free float | Calendar | Level | Baseline | Layton Responsible Party | Project Section | Allucent CSI Group | Subcontractor | Project Section-1 |
| --- | --- | --- | --- | --- | --- | --- | --- | --- | --- | --- | --- | --- | --- | --- | --- | --- | --- | --- | --- | --- |
|  | 10 | **BOH / Commissioning** |  |  |  |  |  |  |  |  |  |  |  |  |  |  |  |  |  |  |
|  | 2 | **Energization & Prefunctional Testing** |  |  |  |  |  |  |  |  |  |  |  |  |  |  |  |  |  |  |
|  | 1 | **Electrical** |  |  |  |  |  |  |  |  |  |  |  |  |  |  |  |  |  |  |
|  | 2 | **Mechanical** |  |  |  |  |  |  |  |  |  |  |  |  |  |  |  |  |  |  |
|  | 4 | **Functional Testing** |  |  |  |  |  |  |  |  |  |  |  |  |  |  |  |  |  |  |
|  | 3 | **Final Commissioning** |  |  |  |  |  |  |  |  |  |  |  |  |  |  |  |  |  |  |
|  | 5 | **Corridors/ Common Areas** |  | 2025-09-02 | 2026-03-31 |  |  |  |  |  |  |  |  |  |  |  |  |  |  |  |
|  | 1 | **Level 1 Corridors** |  | 2025-09-12 | 2026-02-19 |  |  |  |  |  |  |  |  |  |  |  |  |  |  |  |
|  | 1 | **Zone 1 Corridor 1011** |  | 2025-09-12 | 2026-01-26 |  |  |  |  |  |  |  |  |  |  |  |  |  |  |  |
| QTS-19801 |  | Zone 1 Gridlines 10-21 / Corridor 1011 // Frame Corridor & Exterior Wall | 2d | 2025-09-12 A | 2025-09-15 A | QTS-19261, QTS-6881, QTS-19631, QTS-8571 | 100% |  |  |  |  |  |  | Level 1 | IGMP | Doug Hayes | Construction | 01ADMIN |  |  |
| QTS-20361 |  | Zone 1 Gridlines 10-21 / Corridor 1011 // In Wall Rough Electrical | 10d | 2025-09-24 A | 2025-10-07 A | QTS-19801, QTS-39041 | 100% |  |  |  |  |  |  | Level 1 | IGMP | Scott Masterson | Construction | 01ADMIN | Rosendin Electric, Inc |  |
| QTS-20371 |  | Zone 1 Gridlines 10-21 / Corridor 1011 // In Wall Rough Plumbing | 10d | 2025-09-24 A | 2025-10-24 A | QTS-19801 | 100% |  | 2025-09-24 | 2025-10-07 |  |  |  | Level 1 | IGMP | Dave Wiltberger | Construction | 01ADMIN | Bel-Aire Mechanical, LLC |  |
| QTS-20801 |  | Zone 1 Gridlines 10-21 / Corridor 1011 // In Wall Inspections | 1d | 2025-10-27 A | 2025-10-27 A | QTS-20371, QTS-20371 FF, QTS-20361 | 100% |  |  |  |  |  |  | Level 1 | IGMP | Dave Wiltberger | Construction | 01ADMIN | Bel-Aire Mechanical, LLC |  |
| QTS-20931 |  | Zone 1 Gridlines 10-21 / Corridor 1011 // Insulate Corridor Walls | 2d | 2025-10-30 A | 2025-10-31 A | QTS-20801 | 100% |  |  |  |  |  |  | Level 1 | IGMP | Doug Hayes | Construction | 01ADMIN |  |  |
| QTS-21011 |  | Zone 1 Gridlines 10-21 / Corridor 1011 // Hang Drywall | 7d | 2025-11-03 A | 2025-11-11 A | QTS-20931 | 100% |  |  |  |  |  |  | Level 1 | IGMP | Doug Hayes | Construction | 01ADMIN |  |  |
| QTS-21671 |  | Zone 1 Gridlines 10-21 / Corridor 1011 // Tape & Finish Drywall Corridor Exterior Wall | 7d | 2025-11-12 A | 2026-01-06 A | QTS-21011 | 100% |  | 2025-11-12 | 2025-11-19 |  |  | QTS-PHX3 DC1 - 6 day w/ Holidays | Level 1 | IGMP | Sean Waisner | Construction | 01ADMIN | Performance Contracting, Inc. |  |
| QTS-22441 |  | Zone 1 Gridlines 10-21 / Corridor 1011 // Install VESDA | 5d | 2025-12-01 A | 2025-12-05 A | QTS-21011 | 100% |  |  |  |  |  |  | Level 1 | IGMP | Dave Wiltberger | Construction | 01ADMIN |  |  |
| QTS-22591 |  | Zone 1 Gridlines 10-21 / Corridor 1011 // Rough Fire Sprinklers | 5d | 2025-12-04 A | 2025-12-10 A | QTS-22441 SS+3d, QTS-22441 FF+3d | 100% |  |  |  |  |  |  | Level 1 | IGMP | Dave Wiltberger | Construction | 01ADMIN | Olympic West Fire Protection |  |
| QTS-23991 |  | Zone 1 Gridlines 10-21 / Corridor 1011 // HM Door Frame Install | 6d | 2025-12-15 A | 2025-12-22 A | QTS-16151 | 100% |  |  |  |  |  |  | Level 1 | IGMP | Sean Waisner | Construction | 01ADMIN |  |  |
| QTS-25541 |  | Zone 1 Gridlines 10-21 / Corridor 1011 // Rough Overhead Ductwork Gridline 10-15 | 10d | 2025-12-17 A | 2026-01-10 A | QTS-22811 SS+3d, QTS-120000 | 100% |  | 2025-12-17 | 2025-12-29 |  |  | QTS-PHX3 DC1 - 6 day w/ Holidays | Level 1 | IGMP | Dave Wiltberger | Construction | 01ADMIN | Bel-Aire Mechanical, LLC |  |
| QTS-22811 |  | Zone 1 Gridlines 10-21 / Corridor 1011 // Rough Overhead Conduit | 5d | 2025-12-22 A | 2026-01-14 | QTS-22591 SS+3d, QTS-120000 | 100% | 0d | 2025-12-22 | 2025-12-27 | 9d | 0d | QTS-PHX3 DC1 - 6 day w/ Holidays | Level 1 | IGMP | Scott Masterson | Construction | 01ADMIN | Rosendin Electric, Inc |  |
| QTS-24111 |  | Zone 1 Gridlines 10-21 / Corridor 1011 // Rough Electrical & Security to HM Door | 4d | 2025-12-23 A | 2025-12-31 A | QTS-23991 | 100% |  |  |  |  |  |  | Level 1 | IGMP | Scott Masterson | Construction | 01ADMIN | Rosendin Electric, Inc |  |
| QTS-43591 |  | Zone 1 Gridlines 10-21 / Corridor 1011 // Rough Overhead Ductwork Gridline 15-21 | 10d | 2026-01-12 A | 2026-01-14 | QTS-25541 | 100% | 0d | 2026-01-12 | 2026-01-23 | 9d | 0d | QTS-PHX3 DC1 - 6 day w/ Holidays | Level 1 | IGMP | Dave Wiltberger | Construction |  | Bel-Aire Mechanical, LLC | Construction |
| QTS-26121 |  | Zone 1 Gridlines 10-21 / Corridor 1011 // Install Light Fixtures On Walls | 8d | 2026-01-14 | 2026-01-23 | QTS-43591 |  |  |  |  | 67d | 59d | QTS-PHX3 DC1 - 6 day w/ Holidays | Level 1 | IGMP | Scott Masterson | Construction |  | Rosendin Electric, Inc |  |
| QTS-26141 |  | Zone 1 Gridlines 10-21 / Corridor 1011 // Install Basket Tray | 8d | 2026-01-14 | 2026-01-23 | QTS-43591 FF+2d |  |  |  |  | 65d | 0d | QTS-PHX3 DC1 - 6 day w/ Holidays | Level 1 | IGMP | Scott Masterson | Construction |  | E2 Optics, LLC |  |
| QTS-26131 |  | Zone 1 Gridlines 10-21 / Corridor 1011 // Install Fire Alarm Devices | 4d | 2026-01-15 | 2026-01-20 | QTS-22071, QTS-43591 |  |  |  |  | 70d | 62d | QTS-PHX3 DC1 - 6 day w/ Holidays | Level 1 | IGMP | Scott Masterson | Construction |  |  |  |
| QTS-28231 |  | Zone 1 Gridlines 10-21 / Corridor 1011 // Install Wall Base | 2d | 2026-01-24 | 2026-01-26 | QTS-26141, QTS-19801, QTS-22071 |  |  |  |  | 65d | 57d | QTS-PHX3 DC1 - 6 day w/ Holidays | Level 1 | IGMP | Sean Waisner | Construction | 01ADMIN |  |  |
| QTS-22071 |  | Zone 1 Gridlines 10-21 / Corridor 1011 // Prime & Paint Corridor Exterior Wall | 2d | 2026-01-27 A | 2026-01-14 | QTS-21671 | 50% | 1d | 2026-01-27 | 2026-01-28 | 70d | 0d | QTS-PHX3 DC1 - 6 day w/ Holidays | Level 1 | IGMP | Sean Waisner | Construction | 01ADMIN | Pennington Painting Company, LLC |  |

Notes:
- QTS-20371: allucent_notes_20251021_145627: Luis Vea on 2025-10-21T14:46:22.276Z: pushing out due to spray insulation burying penetrations / David Wiltberger on 2025-10-21 13:10: Framing needed to be corrected before completion. PCI took 2 weeks to correct. / allucent_notes_20251027_224008: Luis Vea on 2025-10-21T14:46:22.276Z: pushing out due to spray insulation burying penetrations / David Wiltberger on 2025-10-21 13:10: Framing needed to be corrected before completion. PCI took 2 weeks to correct. / allucent_notes: 2025-10-21T14:46:22.276Z - User: Luis Vea - Date Added: 2025-10-21T14:46:22.276Z - Note: pushing out due to spray insulation burying penetrations / 2025-10-21 13:10 - User: David Wiltberger - Date Added: 2025-10-21 13:10 - Note: Framing needed to be corr
- QTS-20801: allucent_notes_20251021_145627: Luis Vea on 2025-10-21T14:47:29.169Z: needing roughin electricalmc whip, there is an RFI for in process for bulletin 4 on some changes for the rough in / allucent_notes_20251027_224008: Luis Vea on 2025-10-21T14:47:29.169Z: needing roughin electricalmc whip, there is an RFI for in process for bulletin 4 on some changes for the rough in / allucent_notes: 2025-10-21T14:47:29.169Z - User: Luis Vea - Date Added: 2025-10-21T14:47:29.169Z - Note: needing roughin electricalmc whip, there is an RFI for in process for bulletin 4 on some changes for the rough in
- QTS-20931: allucent_notes_20251021_145627: Luis Vea on 2025-10-21T14:48:52.010Z: waiting for electrical inspections and electrical rouhgin / Jason Johnston on 2025-10-21 12:10: Bulletin 4 changes impacting the completion of this work. / allucent_notes_20251027_224008: Luis Vea on 2025-10-21T14:48:52.010Z: waiting for electrical inspections and electrical rouhgin / Jason Johnston on 2025-10-21 12:10: Bulletin 4 changes impacting the completion of this work. / allucent_notes_20251028_163138: Luis Vea on 2025-10-21T14:48:52.010Z: waiting for electrical inspections and electrical rouhgin / Jason Johnston on 2025-10-21 12:10: Bulletin 4 changes impacting the completion of this work. / Jason Johnston on 2025-10-28 15:10: Starting Thursday Evening / allucent_notes_20251104_160200: Luis Vea on 2025-10-21T14:48:52.010Z: waiting for electrical inspections and electrical rouhgin / Jason Johnston on 2025-10-21 12:10: Bulletin 4 changes impacting the completion of this work. / Jason Johnston on 2025-10-28 15:10: Starting Thursday Evening / allucent_notes: 2025-10-21T14:48:52.010Z - User: Luis Vea - Date Added: 2025-10-21T14:48:52.010Z - Note: waiting for electrical inspections and electrical rouhgin / 2025-10-21 12:10 - User: Jason Johnston - Date Added: 2025-10-21 12:10 - Note: Bulletin 4 changes impacti
- QTS-21671: allucent_notes_20251230_164549: Luis Vea on 2025-12-01 09:34: EXT. wall is going to have be demoed due lighting being installed. but it is currently finished without paint. / Jason Johnston on 2025-12-16 07:45: Manpower reallocated to BOH. / Jason Johnston on 2025-12-30 16:39: No update / allucent_notes_20251202_153722: Luis Vea on 2025-12-01 09:34: EXT. wall is going to have be demoed due lighting being installed. but it is currently finished without paint. / allucent_notes_20251209_203830: Luis Vea on 2025-12-01 09:34: EXT. wall is going to have be demoed due lighting being installed. but it is currently finished without paint. / allucent_notes_20251216_165335: Luis Vea on 2025-12-01 09:34: EXT. wall is going to have be demoed due lighting being installed. but it is currently finished without paint. / Jason Johnston on 2025-12-16 07:45: Manpower reallocated to BOH. / allucent_notes: 2025-12-01 09:34 - User: Luis Vea - Date Added: 2025-12-01 09:34 - Note: EXT. wall is going to have be demoed due lighting being installed. but it is currently finished without paint. / 2025-12-16 07:45 - User: Jason Johnston - Date Added: 2025-12-16 07

| ID | WBS | Activity | Duration | Start | Finish | Predecessors | Complete | Remaining | Planned start | Planned finish | Total float | Free float | Constraint | Calendar | Level | Baseline | Layton Responsible Party | Project Section | Subcontractor | Allucent CSI Group | Notes | Project Section-1 |
| --- | --- | --- | --- | --- | --- | --- | --- | --- | --- | --- | --- | --- | --- | --- | --- | --- | --- | --- | --- | --- | --- | --- |
|  | 2 | **Zone 2 Corridor 1013** |  | 2025-09-29 | 2026-02-18 |  |  |  |  |  |  |  |  |  |  |  |  |  |  |  |  |  |
| QTS-20381 |  | Zone 2 Gridline 21-30 / Corridor 1013 // Frame Exterior Walls | 2d | 2025-09-29 A | 2025-09-30 A | QTS-19801 | 100% |  |  |  |  |  |  |  | Level 1 | IGMP | Doug Hayes | Construction |  |  |  |  |
| QTS-20811 |  | Zone 2 Gridline 21-30 / Corridor 1013 // In Wall Rough Electrical (Exterior) | 10d | 2025-10-01 A | 2025-10-24 A | QTS-20381, QTS-39041 | 100% |  | 2025-10-01 | 2025-10-14 |  |  |  |  | Level 1 | IGMP | Scott Masterson | Construction | Rosendin Electric, Inc | 01ADMIN |  |  |
| QTS-20821 |  | Zone 2 Gridline 21-30 / Corridor 1013 // In Wall Rough Plumbing | 10d | 2025-10-27 A | 2025-10-28 A | QTS-20381, QTS-20371 | 100% |  | 2025-10-27 | 2025-11-07 |  |  |  |  | Level 1 | IGMP | Dave Wiltberger | Construction | Bel-Aire Mechanical, LLC | 01ADMIN |  |  |
| QTS-101650 |  | Zone 2 Gridline 21-30 / Corridor 1013 // Frame Corridor Walls | 2d | 2025-11-14 A | 2025-11-21 A | QTS-20381 | 100% |  | 2025-11-05 | 2025-11-06 |  |  |  |  | Level 1 | IGMP | Sean Waisner | Construction |  | 01ADMIN |  |  |
| QTS-22931 |  | Zone 2 Gridline 21-30 / Corridor 1013 // Rough Fire Sprinklers | 5d | 2026-01-05 A | 2026-01-09 A | QTS-101650 | 100% |  |  |  |  |  |  | QTS-PHX3 DC1 - 6 day w/ Holidays | Level 1 | IGMP | Dave Wiltberger | Construction | Olympic West Fire Protection |  |  |  |
| QTS-1003120 |  | Zone 2 Gridline 21-30 / Corridor 1013 // Insulate Corridor Walls - Top Out | 2d | 2026-01-14 | 2026-01-15 | QTS-101650 |  |  |  |  | 5d | 0d |  | QTS-PHX3 DC1 - 6 day w/ Holidays | Level 1 | IGMP | Sean Waisner | Construction | Performance Contracting, Inc. | 01ADMIN |  |  |
| QTS-1003160 |  | Zone 2 Gridline 21-30 / Corridor 1013 // In Wall Rough Electrical (Exterior) | 4d | 2026-01-14 | 2026-01-17 | QTS-20381 |  |  |  |  | 50d | 0d | start on or after 2026-01-05 | QTS-PHX3 DC1 - 6 day w/ Holidays | Level 1 | IGMP | Scott Masterson | Construction | Rosendin Electric, Inc | 01ADMIN |  |  |
| QTS-1003490 |  | Zone 2 Gridline 21-30 / Corridor 1013 // Prime & Paint Corridor Wall - EG Side | 2d | 2026-01-14 A | 2026-01-14 | QTS-101650 | 100% | 0d | 2026-01-14 | 2026-01-15 | 40d | 3d |  | QTS-PHX3 DC1 - 6 day w/ Holidays | Level 1 | IGMP | Sean Waisner | Construction | Pennington Painting Company, LLC |  |  |  |
| QTS-101660 |  | Zone 2 Gridline 21-30 / Corridor 1013 // In Wall Rough Electrical (Corridor) | 4d | 2026-01-14 | 2026-01-17 | QTS-101650 |  |  |  |  | 56d | 0d | start on or after 2026-01-05 | QTS-PHX3 DC1 - 6 day w/ Holidays | Level 1 | IGMP | Scott Masterson | Construction | Rosendin Electric, Inc | 01ADMIN |  |  |
| QTS-23091 |  | Zone 2 Gridline 21-30 / Corridor 1013 // Rough Overhead Conduit | 5d | 2026-01-15 | 2026-01-21 | QTS-22931, QTS-22471, QTS-22931 SS+3d |  |  |  |  | 10d | 5d |  | QTS-PHX3 DC1 - 6 day w/ Holidays | Level 1 | IGMP | Scott Masterson | Construction |  |  |  |  |
| QTS-1003170 |  | Zone 2 Gridline 21-30 / Corridor 1013 // In Wall Inspections Exterior | 1d | 2026-01-20 | 2026-01-20 | QTS-1003160 |  |  |  |  | 50d | 0d |  | QTS-PHX3 DC1 - 6 day w/ Holidays | Level 1 | IGMP | Dave Wiltberger | Construction | Bel-Aire Mechanical, LLC | 01ADMIN | 1/20/26: Inspection schedule from 1/21/26 |  |
| QTS-21261 |  | Zone 2 Gridline 21-30 / Corridor 1013 // In Wall Inspections Corridor | 1d | 2026-01-20 | 2026-01-20 | QTS-20821, QTS-20821 FF, QTS-20811, QTS-101660 |  |  |  |  | 56d | 0d |  | QTS-PHX3 DC1 - 6 day w/ Holidays | Level 1 | IGMP | Dave Wiltberger | Construction | Bel-Aire Mechanical, LLC | 01ADMIN | 1/20/26: Inspection schedule from 1/21/26 |  |
| QTS-21941 |  | Zone 2 Gridline 21-30 / Corridor 1013 // Tape & Finish Drywall - Corridor Side - Top Out | 5d | 2026-01-20 | 2026-01-24 | QTS-21491 |  |  |  |  | 5d | 0d |  | QTS-PHX3 DC1 - 6 day w/ Holidays | Level 1 | IGMP | Sean Waisner | Construction | Performance Contracting, Inc. | 01ADMIN |  |  |
| QTS-1003180 |  | Zone 2 Gridline 21-30 / Corridor 1013 // Hang Drywall - Exterior Wall - Remaining | 3d | 2026-01-21 | 2026-01-23 | QTS-1003170, QTS-1003160 |  |  |  |  | 50d | 0d |  | QTS-PHX3 DC1 - 6 day w/ Holidays | Level 1 | IGMP | Sean Waisner | Construction | Performance Contracting, Inc. | 01ADMIN |  |  |
| QTS-21301 |  | Zone 2 Gridline 21-30 / Corridor 1013 // Insulate Corridor Walls - Remaining | 2d | 2026-01-21 | 2026-01-22 | QTS-21261 |  |  |  |  | 56d | 0d |  | QTS-PHX3 DC1 - 6 day w/ Holidays | Level 1 | IGMP | Sean Waisner | Construction | Performance Contracting, Inc. | 01ADMIN |  |  |
| QTS-1003110 |  | Zone 2 Gridline 21-30 / Corridor 1013 // Hang Drywall - Corridor Side - Remaining | 3d | 2026-01-23 | 2026-01-26 | QTS-21301, QTS-101660 |  |  |  |  | 56d | 0d |  | QTS-PHX3 DC1 - 6 day w/ Holidays | Level 1 | IGMP | Sean Waisner | Construction | Performance Contracting, Inc. | 01ADMIN |  |  |
| QTS-1003190 |  | Zone 2 Gridline 21-30 / Corridor 1013 // Tape & Finish Drywall - Exterior Side - Remaining | 5d | 2026-01-24 | 2026-01-29 | QTS-1003180 |  |  |  |  | 50d | 0d |  | QTS-PHX3 DC1 - 6 day w/ Holidays | Level 1 | IGMP | Sean Waisner | Construction | Performance Contracting, Inc. | 01ADMIN |  |  |
| QTS-1003140 |  | Zone 2 Gridline 21-30 / Corridor 1013 // Paint Wall - Corridor Side - Top Out | 2d | 2026-01-26 | 2026-01-27 | QTS-21941 |  |  |  |  | 5d | 0d |  | QTS-PHX3 DC1 - 6 day w/ Holidays | Level 1 | IGMP | Sean Waisner | Construction | Performance Contracting, Inc. | 01ADMIN |  |  |
| QTS-1003130 |  | Zone 2 Gridline 21-30 / Corridor 1013 // Tape & Finish Drywall - Corridor Side - Remaining | 5d | 2026-01-27 | 2026-01-31 | QTS-1003110 |  |  |  |  | 56d | 0d |  | QTS-PHX3 DC1 - 6 day w/ Holidays | Level 1 | IGMP | Sean Waisner | Construction | Performance Contracting, Inc. | 01ADMIN |  |  |
| QTS-21491 |  | Zone 2 Gridline 21-30 / Corridor 1013 // Hang Drywall - Corridor Side - Top Out | 3d | 2026-01-27 A | 2026-01-17 | QTS-1003120 | 33% | 2d | 2026-01-27 | 2026-01-29 | 5d | 0d |  | QTS-PHX3 DC1 - 6 day w/ Holidays | Level 1 | IGMP | Sean Waisner | Construction | Performance Contracting, Inc. | 01ADMIN |  |  |
| QTS-22471 |  | Zone 2 Gridline 21-30 / Corridor 1013 // Prime & Paint Exterior Wall - Top Out | 2d | 2026-01-27 A | 2026-01-14 | QTS-20381 | 50% | 1d | 2026-01-27 | 2026-01-28 | 10d | 0d |  | QTS-PHX3 DC1 - 6 day w/ Holidays | Level 1 | IGMP | Sean Waisner | Construction | Pennington Painting Company, LLC |  |  |  |
| QTS-25551 |  | Zone 2 Gridline 21-30 / Corridor 1013 // Rough Overhead Ductwork Gridline 21-24 | 4d | 2026-01-28 | 2026-01-31 | QTS-1003140, QTS-22471, QTS-23091 |  |  |  |  | 5d | 0d |  | QTS-PHX3 DC1 - 6 day w/ Holidays | Level 1 | IGMP | Dave Wiltberger | Construction | Bel-Aire Mechanical, LLC |  |  |  |
| QTS-1003200 |  | Zone 2 Gridline 21-30 / Corridor 1013 // Prime & Paint Exterior Wall - Remaining | 2d | 2026-01-30 | 2026-01-31 | QTS-1003190 |  |  |  |  | 50d | 0d |  | QTS-PHX3 DC1 - 6 day w/ Holidays | Level 1 | IGMP | Sean Waisner | Construction | Pennington Painting Company, LLC |  |  |  |
| QTS-1003150 |  | Zone 2 Gridline 21-30 / Corridor 1013 // Paint Wall - Corridor Side - Remaining | 2d | 2026-02-02 | 2026-02-03 | QTS-1003130 |  |  |  |  | 56d | 0d |  | QTS-PHX3 DC1 - 6 day w/ Holidays | Level 1 | IGMP | Sean Waisner | Construction | Performance Contracting, Inc. | 01ADMIN |  |  |
| QTS-24001 |  | Zone 2 Gridline 21-30 / Corridor 1013 // Exterior Door Install | 6d | 2026-02-02 | 2026-02-07 | QTS-1003200 FF, QTS-1003200, QTS-22471, QTS-16151 |  |  |  |  | 50d | 0d |  | QTS-PHX3 DC1 - 6 day w/ Holidays | Level 1 | IGMP | Sean Waisner | Construction |  |  |  |  |
| QTS-43601 |  | Zone 2 Gridline 21-30 / Corridor 1013 // Rough Overhead Ductwork Gridline 24-27 | 4d | 2026-02-02 | 2026-02-05 | QTS-25551 |  |  |  |  | 5d | 0d |  | QTS-PHX3 DC1 - 6 day w/ Holidays | Level 1 | IGMP | Dave Wiltberger | Construction | Bel-Aire Mechanical, LLC |  |  | Construction |
| QTS-26151 |  | Zone 2 Gridline 21-30 / Corridor 1013 // Install Light Fixtures On Walls | 8d | 2026-02-04 | 2026-02-12 | QTS-43611 FF+3d |  |  |  |  | 50d | 42d |  | QTS-PHX3 DC1 - 6 day w/ Holidays | Level 1 | IGMP | Scott Masterson | Construction | Rosendin Electric, Inc |  |  |  |
| QTS-28241 |  | Zone 2 Gridline 21-30 / Corridor 1013 // Install Wall Base | 2d | 2026-02-04 | 2026-02-05 | QTS-1003150, QTS-1003200, QTS-20381, QTS-22471 |  |  |  |  | 56d | 48d |  | QTS-PHX3 DC1 - 6 day w/ Holidays | Level 1 | IGMP | Sean Waisner | Construction |  |  |  |  |
| QTS-43611 |  | Zone 2 Gridline 21-30 / Corridor 1013 // Rough Overhead Ductwork Gridline 27-30 | 3d | 2026-02-06 | 2026-02-09 | QTS-43601 |  |  |  |  | 45d | 0d |  | QTS-PHX3 DC1 - 6 day w/ Holidays | Level 1 | IGMP | Dave Wiltberger | Construction | Bel-Aire Mechanical, LLC |  |  | Construction |
| QTS-24121 |  | Zone 2 Gridline 21-30 / Corridor 1013 // Rough Electrical & Security to Exterior Door | 4d | 2026-02-09 | 2026-02-12 | QTS-24001 |  |  |  |  | 50d | 42d |  | QTS-PHX3 DC1 - 6 day w/ Holidays | Level 1 | IGMP | Scott Masterson | Construction | Rosendin Electric, Inc |  |  |  |
| QTS-26161 |  | Zone 2 Gridline 21-30 / Corridor 1013 // Install Fire Alarm Devices | 4d | 2026-02-10 | 2026-02-13 | QTS-43611 |  |  |  |  | 49d | 41d |  | QTS-PHX3 DC1 - 6 day w/ Holidays | Level 1 | IGMP | Scott Masterson | Construction |  |  |  |  |
| QTS-26181 |  | Zone 2 Gridline 21-30 / Corridor 1013 // Install Basket Tray | 8d | 2026-02-10 | 2026-02-18 | QTS-43611 |  |  |  |  | 45d | 37d |  | QTS-PHX3 DC1 - 6 day w/ Holidays | Level 1 | IGMP | Scott Masterson | Construction | E2 Optics, LLC |  |  |  |

Notes:
- QTS-20811: allucent_notes_20251014_152335: David Wiltberger on 2025-10-14 12:10: walls not completed / allucent_notes_20251021_145627: David Wiltberger on 2025-10-14 12:10: walls not completed / Luis Vea on 2025-10-21T14:50:20.970Z: wall is completed, finishing today / allucent_notes_20251027_224008: David Wiltberger on 2025-10-14 12:10: walls not completed / Luis Vea on 2025-10-21T14:50:20.970Z: wall is completed, finishing today / allucent_notes: 2025-10-14 12:10 - User: David Wiltberger - Date Added: 2025-10-14 12:10 - Note: walls not completed / 2025-10-21T14:50:20.970Z - User: Luis Vea - Date Added: 2025-10-21T14:50:20.970Z - Note: wall is completed, finishing today
- QTS-20821: allucent_notes_20251014_152335: David Wiltberger on 2025-10-07 15:10: No wall has been built / allucent_notes_20251021_145627: David Wiltberger on 2025-10-07 15:10: No wall has been built / Luis Vea on 2025-10-21T14:49:39.380Z: walls have been built, waiting for material to arrive / allucent_notes_20251027_224008: David Wiltberger on 2025-10-07 15:10: No wall has been built / Luis Vea on 2025-10-21T14:49:39.380Z: walls have been built, waiting for material to arrive / Scott Masterson on 2025-10-27 16:10: Minimal inwall rough. BAM only needs to stub out and then install plumbing after wall paint. / allucent_notes_20251028_163138: David Wiltberger on 2025-10-07 15:10: No wall has been built / Luis Vea on 2025-10-21T14:49:39.380Z: walls have been built, waiting for material to arrive / Scott Masterson on 2025-10-27 16:10: Minimal inwall rough. BAM only needs to stub out and then install plumbing after wall paint. / allucent_notes: 2025-10-07 15:10 - User: David Wiltberger - Date Added: 2025-10-07 15:10 - Note: No wall has been built / 2025-10-21T14:49:39.380Z - User: Luis Vea - Date Added: 2025-10-21T14:49:39.380Z - Note: walls have been built, waiting for material to arrive / 20
- QTS-101650: allucent_notes_20251104_160200: Jason Johnston on 2025-11-04 12:11: Not started. Need better update. / allucent_notes_20251111_182405: Jason Johnston on 2025-11-04 12:11: Not started. Need better update. / Jason Johnston on 2025-11-11 15:11: Starting 11/12 with small crew. / Jason Johnston on 2025-11-11 15:11: Duration too short. / allucent_notes_20251118_192630: Jason Johnston on 2025-11-04 12:11: Not started. Need better update. / Jason Johnston on 2025-11-11 15:11: Starting 11/12 with small crew. / Jason Johnston on 2025-11-11 15:11: Duration too short. / allucent_notes_20251202_153722: Jason Johnston on 2025-11-04 12:11: Not started. Need better update. / Jason Johnston on 2025-11-11 15:11: Starting 11/12 with small crew. / Jason Johnston on 2025-11-11 15:11: Duration too short. / allucent_notes: 2025-11-04 12:11 - User: Jason Johnston - Date Added: 2025-11-04 12:11 - Note: Not started. Need better update. / 2025-11-11 15:11 - User: Jason Johnston - Date Added: 2025-11-11 15:11 - Note: Starting 11/12 with small crew. / 2025-11-11 15:11 - User: J
- QTS-1003160: allucent_notes_20251230_164549: Luis Vea on 2025-12-01 09:40: not part of the green mile, this will be pushed. / allucent_notes_20251014_152335: David Wiltberger on 2025-10-14 12:10: walls not completed / allucent_notes_20251021_145627: David Wiltberger on 2025-10-14 12:10: walls not completed / Luis Vea on 2025-10-21T14:50:20.970Z: wall is completed, finishing today / allucent_notes_20251027_224008: David Wiltberger on 2025-10-14 12:10: walls not completed / Luis Vea on 2025-10-21T14:50:20.970Z: wall is completed, finishing today / allucent_notes_20251202_153722: Luis Vea on 2025-12-01 09:40: not part of the green mile, this will be pushed. / allucent_notes_20251209_203830: Luis Vea on 2025-12-01 09:40: not part of the green mile, this will be pushed. / allucent_notes: 2025-12-01 09:40 - User: Luis Vea - Date Added: 2025-12-01 09:40 - Note: not part of the green mile, this will be pushed.
- QTS-101660: allucent_notes_20251230_164549: Luis Vea on 2025-12-01 09:40: not part of the green mile, this will be pushed. / allucent_notes_20251014_152335: David Wiltberger on 2025-10-14 12:10: walls not completed / allucent_notes_20251021_145627: David Wiltberger on 2025-10-14 12:10: walls not completed / Luis Vea on 2025-10-21T14:50:20.970Z: wall is completed, finishing today / allucent_notes_20251027_224008: David Wiltberger on 2025-10-14 12:10: walls not completed / Luis Vea on 2025-10-21T14:50:20.970Z: wall is completed, finishing today / allucent_notes_20251202_153722: Luis Vea on 2025-12-01 09:40: not part of the green mile, this will be pushed. / allucent_notes_20251209_203830: Luis Vea on 2025-12-01 09:40: not part of the green mile, this will be pushed. / allucent_notes: 2025-12-01 09:40 - User: Luis Vea - Date Added: 2025-12-01 09:40 - Note: not part of the green mile, this will be pushed.

| ID | WBS | Activity | Duration | Start | Finish | Predecessors | Complete | Remaining | Planned start | Planned finish | Total float | Free float | Calendar | Level | Baseline | Layton Responsible Party | Project Section | Allucent CSI Group | Subcontractor | Project Section-1 |
| --- | --- | --- | --- | --- | --- | --- | --- | --- | --- | --- | --- | --- | --- | --- | --- | --- | --- | --- | --- | --- |
|  | 3 | **Zone 3 Corridor 1012** |  | 2025-11-18 | 2026-02-19 |  |  |  |  |  |  |  |  |  |  |  |  |  |  |  |
| QTS-20831 |  | Zone 3 Gridlines 30-41 Corridor 1012 // Frame Exterior Wall | 2d | 2025-11-18 A | 2025-11-19 A | QTS-20381, QTS-23261, QTS-23741, QTS-6961 | 100% |  |  |  |  |  |  | Level 1 | IGMP | Sean Waisner | Construction | 01ADMIN |  |  |
| QTS-1000950 |  | Zone 3 Gridlines 30-41 Corridor 1012 // Top Out Exterior Walls | 2d | 2025-12-10 A | 2026-01-14 | QTS-20831 | 100% | 0d | 2025-12-10 | 2025-12-11 | 44d | 0d |  | Level 1 | IGMP | Sean Waisner | Construction | 01ADMIN | Performance Contracting, Inc. |  |
| QTS-23211 |  | Zone 3 Gridlines 30-41 Corridor 1012 // Rough Fire Sprinklers | 5d | 2025-12-22 A | 2025-12-27 A | QTS-20831 | 100% |  |  |  |  |  | QTS-PHX3 DC1 - 6 day w/ Holidays | Level 1 | IGMP | Dave Wiltberger | Construction |  | Olympic West Fire Protection |  |
| QTS-1000940 |  | Zone 3 Gridlines 30-41 Corridor 1012 // Frame Corridor Wall | 4d | 2026-01-14 | 2026-01-17 | QTS-20831 |  |  |  |  | 40d | 0d | QTS-PHX3 DC1 - 6 day w/ Holidays | Level 1 | IGMP | Sean Waisner | Construction | 01ADMIN | Performance Contracting, Inc. |  |
| QTS-1000960 |  | Zone 3 Gridlines 30-41 Corridor 1012 // Tape & Finish Top Out Exterior Wall | 4d | 2026-01-14 A | 2026-01-14 | QTS-1000950 | 100% | 0d | 2026-01-14 | 2026-01-17 | 53d | 0d | QTS-PHX3 DC1 - 6 day w/ Holidays | Level 1 | IGMP | Sean Waisner | Construction | 01ADMIN | Performance Contracting, Inc. |  |
| QTS-1000970 |  | Zone 3 Gridlines 30-41 Corridor 1012 // Prime & Paint Exterior Walls - Top Out | 2d | 2026-01-14 | 2026-01-15 | QTS-1000960 |  |  |  |  | 53d | 0d | QTS-PHX3 DC1 - 6 day w/ Holidays | Level 1 | IGMP | Sean Waisner | Construction | 01ADMIN | Pennington Painting Company, LLC |  |
| QTS-1000980 |  | Zone 3 Gridlines 30-41 Corridor 1012 // Flash Up Wall to Structural Steel Exterior Wall | 1d | 2026-01-16 | 2026-01-16 | QTS-1000970 |  |  |  |  | 55d | 14d | QTS-PHX3 DC1 - 6 day w/ Holidays | Level 1 | IGMP | Sean Waisner | Construction | 01ADMIN | Performance Contracting, Inc. |  |
| QTS-21271 |  | Zone 3 Gridlines 30-41 Corridor 1012 // In Wall Rough Electrical - Exterior | 3d | 2026-01-20 | 2026-01-22 | QTS-20831, QTS-39041, QTS-1000940 |  |  |  |  | 57d | 0d | QTS-PHX3 DC1 - 6 day w/ Holidays | Level 1 | IGMP | Scott Masterson | Construction | 01ADMIN | Rosendin Electric, Inc |  |
| QTS-21831 |  | Zone 3 Gridlines 30-41 Corridor 1012 // Top Out Corridor Wall - Corridor Side | 4d | 2026-01-20 | 2026-01-23 | QTS-1000940 |  |  |  |  | 40d | 0d | QTS-PHX3 DC1 - 6 day w/ Holidays | Level 1 | IGMP | Sean Waisner | Construction |  | Performance Contracting, Inc. |  |
| QTS-21681 |  | Zone 3 Gridlines 30-41 Corridor 1012 // In Wall Inspections - Exterior | 1d | 2026-01-23 | 2026-01-23 | QTS-21271 |  |  |  |  | 57d | 0d | QTS-PHX3 DC1 - 6 day w/ Holidays | Level 1 | IGMP | Dave Wiltberger | Construction | 01ADMIN | Bel-Aire Mechanical, LLC |  |
| QTS-1003290 |  | Zone 3 Gridlines 30-41 Corridor 1012 // In Wall Rough Electrical - Corridor | 3d | 2026-01-24 | 2026-01-27 | QTS-21831 |  |  |  |  | 40d | 0d | QTS-PHX3 DC1 - 6 day w/ Holidays | Level 1 | IGMP | Scott Masterson | Construction | 01ADMIN | Rosendin Electric, Inc |  |
| QTS-1003300 |  | Zone 3 Gridlines 30-41 Corridor 1012 // Insulate Corridor Wall - Top Out | 2d | 2026-01-24 | 2026-01-26 | QTS-21831 |  |  |  |  | 41d | 0d | QTS-PHX3 DC1 - 6 day w/ Holidays | Level 1 | IGMP | Sean Waisner | Construction | 01ADMIN | Performance Contracting, Inc. |  |
| QTS-1003360 |  | Zone 3 Gridlines 30-41 Corridor 1012 // Hang Drywall Exterior Wall - Remaining | 3d | 2026-01-24 | 2026-01-27 | QTS-21681 |  |  |  |  | 57d | 0d | QTS-PHX3 DC1 - 6 day w/ Holidays | Level 1 | IGMP | Sean Waisner | Construction | 01ADMIN | Performance Contracting, Inc. |  |
| QTS-22281 |  | Zone 3 Gridlines 30-41 Corridor 1012 // Tape & Finish Drywall Corridor Wall - Corridor Side - Top Out | 4d | 2026-01-24 | 2026-01-28 | QTS-21831 |  |  |  |  | 41d | 0d | QTS-PHX3 DC1 - 6 day w/ Holidays | Level 1 | IGMP | Sean Waisner | Construction |  | Performance Contracting, Inc. |  |
| QTS-1003220 |  | Zone 3 Gridlines 30-41 Corridor 1012 // Top Out Corridor Wall - EG Side | 3d | 2026-01-27 | 2026-01-29 | QTS-1003300 |  |  |  |  | 41d | 0d | QTS-PHX3 DC1 - 6 day w/ Holidays | Level 1 | IGMP | Sean Waisner | Construction | 01ADMIN | Performance Contracting, Inc. |  |
| QTS-1003370 |  | Zone 3 Gridlines 30-41 Corridor 1012 // Tape & Finish Exterior Wall - Remaining | 4d | 2026-01-28 | 2026-01-31 | QTS-1003360 |  |  |  |  | 57d | 0d | QTS-PHX3 DC1 - 6 day w/ Holidays | Level 1 | IGMP | Sean Waisner | Construction | 01ADMIN | Performance Contracting, Inc. |  |
| QTS-21721 |  | Zone 3 Gridlines 30-41 Corridor 1012 // Insulate Corridor Wall - Remaining | 2d | 2026-01-28 | 2026-01-29 | QTS-1003290 |  |  |  |  | 40d | 0d | QTS-PHX3 DC1 - 6 day w/ Holidays | Level 1 | IGMP | Sean Waisner | Construction | 01ADMIN | Performance Contracting, Inc. |  |
| QTS-22821 |  | Zone 3 Gridlines 30-41 Corridor 1012 // Prime & Paint Corridor Wall - Corridor Side - Top Out | 2d | 2026-01-29 | 2026-01-30 | QTS-22281 |  |  |  |  | 41d | 0d | QTS-PHX3 DC1 - 6 day w/ Holidays | Level 1 | IGMP | Sean Waisner | Construction |  | Pennington Painting Company, LLC |  |
| QTS-1003240 |  | Zone 3 Gridlines 30-41 Corridor 1012 // Tape & Finish Corridor Wall - EG Side - Top Out | 4d | 2026-01-30 | 2026-02-03 | QTS-1003220 |  |  |  |  | 41d | 0d | QTS-PHX3 DC1 - 6 day w/ Holidays | Level 1 | IGMP | Sean Waisner | Construction | 01ADMIN | Performance Contracting, Inc. |  |
| QTS-1003280 |  | Zone 3 Gridlines 30-41 Corridor 1012 // Hang Drywall Corridor Wall - EG Side - Remaining | 3d | 2026-01-30 | 2026-02-02 | QTS-21721 |  |  |  |  | 40d | 0d | QTS-PHX3 DC1 - 6 day w/ Holidays | Level 1 | IGMP | Sean Waisner | Construction | 01ADMIN | Performance Contracting, Inc. |  |
| QTS-23401 |  | Zone 3 Gridlines 30-41 Corridor 1012 // Rough Overhead Conduit | 5d | 2026-01-31 | 2026-02-05 | QTS-22821, QTS-1000970, QTS-23211 SS+3d |  |  |  |  | 41d | 0d | QTS-PHX3 DC1 - 6 day w/ Holidays | Level 1 | IGMP | Scott Masterson | Construction |  | Rosendin Electric, Inc |  |
| QTS-1003330 |  | Zone 3 Gridlines 30-41 Corridor 1012 // Prime & Paint Exterior Walls - Remaining | 2d | 2026-02-02 | 2026-02-03 | QTS-1003370 |  |  |  |  | 57d | 8d | QTS-PHX3 DC1 - 6 day w/ Holidays | Level 1 | IGMP | Sean Waisner | Construction | 01ADMIN | Pennington Painting Company, LLC |  |
| QTS-1003260 |  | Zone 3 Gridlines 30-41 Corridor 1012 // Tape & Finish Corridor Wall - EG Side - Remaining | 4d | 2026-02-03 | 2026-02-06 | QTS-1003280 |  |  |  |  | 40d | 0d | QTS-PHX3 DC1 - 6 day w/ Holidays | Level 1 | IGMP | Sean Waisner | Construction | 01ADMIN | Performance Contracting, Inc. |  |
| QTS-1003270 |  | Zone 3 Gridlines 30-41 Corridor 1012 // Hang Drywall Corridor Wall - Corridor Side - Remaining | 3d | 2026-02-03 | 2026-02-05 | QTS-1003280 |  |  |  |  | 49d | 0d | QTS-PHX3 DC1 - 6 day w/ Holidays | Level 1 | IGMP | Sean Waisner | Construction | 01ADMIN | Performance Contracting, Inc. |  |
| QTS-1003320 |  | Zone 3 Gridlines 30-41 Corridor 1012 // Prime & Paint Corridor Wall - EG Side - Top Out | 2d | 2026-02-04 | 2026-02-05 | QTS-1003240 |  |  |  |  | 41d | 1d | QTS-PHX3 DC1 - 6 day w/ Holidays | Level 1 | IGMP | Sean Waisner | Construction |  | Pennington Painting Company, LLC |  |
| QTS-23651 |  | Zone 3 Gridlines 30-41 Corridor 1012 // Rough Overhead Ductwork Gridline 30-35 | 5d | 2026-02-04 | 2026-02-09 | QTS-1000980, QTS-22821, QTS-23401 SS+3d |  |  |  |  | 41d | 0d | QTS-PHX3 DC1 - 6 day w/ Holidays | Level 1 | IGMP | Dave Wiltberger | Construction |  | Bel-Aire Mechanical, LLC |  |
| QTS-1003250 |  | Zone 3 Gridlines 30-41 Corridor 1012 // Tape & Finish Corridor Wall - Corridor Side - Remaining | 4d | 2026-02-06 | 2026-02-10 | QTS-1003270 |  |  |  |  | 49d | 0d | QTS-PHX3 DC1 - 6 day w/ Holidays | Level 1 | IGMP | Sean Waisner | Construction | 01ADMIN | Performance Contracting, Inc. |  |
| QTS-1003340 |  | Zone 3 Gridlines 30-41 Corridor 1012 // Prime & Paint Corridor Wall - EG Side - Remaining | 2d | 2026-02-07 | 2026-02-09 | QTS-1003320, QTS-1003260 |  |  |  |  | 40d | 16d | QTS-PHX3 DC1 - 6 day w/ Holidays | Level 1 | IGMP | Sean Waisner | Construction |  | Pennington Painting Company, LLC |  |
| QTS-43621 |  | Zone 3 Gridlines 30-41 Corridor 1012 // Rough Overhead Ductwork Gridline 35-41 | 5d | 2026-02-10 | 2026-02-14 | QTS-23651 |  |  |  |  | 44d | 0d | QTS-PHX3 DC1 - 6 day w/ Holidays | Level 1 | IGMP | Dave Wiltberger | Construction |  | Bel-Aire Mechanical, LLC | Construction |
| QTS-1003350 |  | Zone 3 Gridlines 30-41 Corridor 1012 // Prime & Paint Corridor Wall - Corridor Side - Remaining | 2d | 2026-02-11 | 2026-02-12 | QTS-1003250 |  |  |  |  | 49d | 0d | QTS-PHX3 DC1 - 6 day w/ Holidays | Level 1 | IGMP | Sean Waisner | Construction |  | Pennington Painting Company, LLC |  |
| QTS-25801 |  | Zone 3 Gridlines 30-41 Corridor 1012 // Install Wall Base | 1d | 2026-02-13 | 2026-02-13 | QTS-1003350, QTS-1003330, QTS-20831, QTS-22821 |  |  |  |  | 49d | 41d | QTS-PHX3 DC1 - 6 day w/ Holidays | Level 1 | IGMP | Sean Waisner | Construction |  |  |  |
| QTS-24741 |  | Zone 3 Gridlines 30-41 Corridor 1012 // Install Light Fixtures | 4d | 2026-02-16 | 2026-02-19 | QTS-43621 |  |  |  |  | 44d | 36d | QTS-PHX3 DC1 - 6 day w/ Holidays | Level 1 | IGMP | Scott Masterson | Construction |  | Rosendin Electric, Inc |  |
| QTS-24751 |  | Zone 3 Gridlines 30-41 Corridor 1012 // Install Fire Alarm Devices | 4d | 2026-02-16 | 2026-02-19 | QTS-43621 |  |  |  |  | 44d | 36d | QTS-PHX3 DC1 - 6 day w/ Holidays | Level 1 | IGMP | Scott Masterson | Construction |  |  |  |
| QTS-24761 |  | Zone 3 Gridlines 30-41 Corridor 1012 // Install Cable Tray | 4d | 2026-02-16 | 2026-02-19 | QTS-43621 |  |  |  |  | 44d | 36d | QTS-PHX3 DC1 - 6 day w/ Holidays | Level 1 | IGMP | Scott Masterson | Construction |  | E2 Optics, LLC |  |

Notes:
- QTS-20831: allucent_notes_20251209_203830: Zack Goertz on 2025-12-09 10:53: Zone 2 is a priority / allucent_notes: 2025-12-09 10:53 - User: Zack Goertz - Date Added: 2025-12-09 10:53 - Note: Zone 2 is a priority
- QTS-1000940: allucent_notes_20251230_164549: Jason Johnston on 2025-12-16 07:48: man power reallocated to BOH. / Jason Johnston on 2025-12-30 16:39: No update / allucent_notes_20251209_203830: Zack Goertz on 2025-12-09 10:53: Zone 2 is a priority / allucent_notes_20251216_165335: Jason Johnston on 2025-12-16 07:48: man power reallocated to BOH. / allucent_notes: 2025-12-16 07:48 - User: Jason Johnston - Date Added: 2025-12-16 07:48 - Note: man power reallocated to BOH. / 2025-12-30 16:39 - User: Jason Johnston - Date Added: 2025-12-30 16:39 - Note: No update
- QTS-1000960: allucent_notes_20251230_164549: Jason Johnston on 2025-12-16 07:47: man power reallocated to BOH. / Jason Johnston on 2025-12-30 16:40: No update / allucent_notes_20251216_165335: Jason Johnston on 2025-12-16 07:47: man power reallocated to BOH. / allucent_notes: 2025-12-16 07:47 - User: Jason Johnston - Date Added: 2025-12-16 07:47 - Note: man power reallocated to BOH. / 2025-12-30 16:40 - User: Jason Johnston - Date Added: 2025-12-30 16:40 - Note: No update
- QTS-1003360: allucent_notes_20251230_164549: Jason Johnston on 2025-12-16 07:48: man power reallocated to BOH. / Jason Johnston on 2025-12-30 16:39: No update / allucent_notes_20251209_203830: Zack Goertz on 2025-12-09 10:53: Zone 2 is a priority / allucent_notes_20251216_165335: Jason Johnston on 2025-12-16 07:48: man power reallocated to BOH. / allucent_notes: 2025-12-16 07:48 - User: Jason Johnston - Date Added: 2025-12-16 07:48 - Note: man power reallocated to BOH. / 2025-12-30 16:39 - User: Jason Johnston - Date Added: 2025-12-30 16:39 - Note: No update
- QTS-1003220: allucent_notes_20251230_164549: Jason Johnston on 2025-12-16 07:48: man power reallocated to BOH. / Jason Johnston on 2025-12-30 16:39: No update / allucent_notes_20251209_203830: Zack Goertz on 2025-12-09 10:53: Zone 2 is a priority / allucent_notes_20251216_165335: Jason Johnston on 2025-12-16 07:48: man power reallocated to BOH. / allucent_notes: 2025-12-16 07:48 - User: Jason Johnston - Date Added: 2025-12-16 07:48 - Note: man power reallocated to BOH. / 2025-12-30 16:39 - User: Jason Johnston - Date Added: 2025-12-30 16:39 - Note: No update
- QTS-1003370: allucent_notes_20251230_164549: Jason Johnston on 2025-12-16 07:47: man power reallocated to BOH. / Jason Johnston on 2025-12-30 16:40: No update / allucent_notes_20251216_165335: Jason Johnston on 2025-12-16 07:47: man power reallocated to BOH. / allucent_notes: 2025-12-16 07:47 - User: Jason Johnston - Date Added: 2025-12-16 07:47 - Note: man power reallocated to BOH. / 2025-12-30 16:40 - User: Jason Johnston - Date Added: 2025-12-30 16:40 - Note: No update
- QTS-1003240: allucent_notes_20251230_164549: Jason Johnston on 2025-12-16 07:48: man power reallocated to BOH. / Jason Johnston on 2025-12-30 16:39: No update / allucent_notes_20251209_203830: Zack Goertz on 2025-12-09 10:53: Zone 2 is a priority / allucent_notes_20251216_165335: Jason Johnston on 2025-12-16 07:48: man power reallocated to BOH. / allucent_notes: 2025-12-16 07:48 - User: Jason Johnston - Date Added: 2025-12-16 07:48 - Note: man power reallocated to BOH. / 2025-12-30 16:39 - User: Jason Johnston - Date Added: 2025-12-30 16:39 - Note: No update
- QTS-1003280: allucent_notes_20251230_164549: Jason Johnston on 2025-12-16 07:48: man power reallocated to BOH. / Jason Johnston on 2025-12-30 16:39: No update / allucent_notes_20251209_203830: Zack Goertz on 2025-12-09 10:53: Zone 2 is a priority / allucent_notes_20251216_165335: Jason Johnston on 2025-12-16 07:48: man power reallocated to BOH. / allucent_notes: 2025-12-16 07:48 - User: Jason Johnston - Date Added: 2025-12-16 07:48 - Note: man power reallocated to BOH. / 2025-12-30 16:39 - User: Jason Johnston - Date Added: 2025-12-30 16:39 - Note: No update
- QTS-1003260: allucent_notes_20251230_164549: Jason Johnston on 2025-12-16 07:48: man power reallocated to BOH. / Jason Johnston on 2025-12-30 16:39: No update / allucent_notes_20251209_203830: Zack Goertz on 2025-12-09 10:53: Zone 2 is a priority / allucent_notes_20251216_165335: Jason Johnston on 2025-12-16 07:48: man power reallocated to BOH. / allucent_notes: 2025-12-16 07:48 - User: Jason Johnston - Date Added: 2025-12-16 07:48 - Note: man power reallocated to BOH. / 2025-12-30 16:39 - User: Jason Johnston - Date Added: 2025-12-30 16:39 - Note: No update
- QTS-1003270: allucent_notes_20251230_164549: Jason Johnston on 2025-12-16 07:48: man power reallocated to BOH. / Jason Johnston on 2025-12-30 16:39: No update / allucent_notes_20251209_203830: Zack Goertz on 2025-12-09 10:53: Zone 2 is a priority / allucent_notes_20251216_165335: Jason Johnston on 2025-12-16 07:48: man power reallocated to BOH. / allucent_notes: 2025-12-16 07:48 - User: Jason Johnston - Date Added: 2025-12-16 07:48 - Note: man power reallocated to BOH. / 2025-12-30 16:39 - User: Jason Johnston - Date Added: 2025-12-30 16:39 - Note: No update
- QTS-1003250: allucent_notes_20251230_164549: Jason Johnston on 2025-12-16 07:48: man power reallocated to BOH. / Jason Johnston on 2025-12-30 16:39: No update / allucent_notes_20251209_203830: Zack Goertz on 2025-12-09 10:53: Zone 2 is a priority / allucent_notes_20251216_165335: Jason Johnston on 2025-12-16 07:48: man power reallocated to BOH. / allucent_notes: 2025-12-16 07:48 - User: Jason Johnston - Date Added: 2025-12-16 07:48 - Note: man power reallocated to BOH. / 2025-12-30 16:39 - User: Jason Johnston - Date Added: 2025-12-30 16:39 - Note: No update

| ID | WBS | Activity | Duration | Start | Finish | Predecessors | Complete | Remaining | Planned start | Planned finish | Total float | Free float | Constraint | Calendar | Level | Baseline | Layton Responsible Party | Project Section | Allucent CSI Group | Subcontractor | Project Section-1 |
| --- | --- | --- | --- | --- | --- | --- | --- | --- | --- | --- | --- | --- | --- | --- | --- | --- | --- | --- | --- | --- | --- |
|  | 2 | **Level 2 Corridors** |  | 2025-09-02 | 2026-03-31 |  |  |  |  |  |  |  |  |  |  |  |  |  |  |  |  |
|  | 3 | **Zone 1 Corridor 2010** |  | 2025-09-02 | 2026-03-31 |  |  |  |  |  |  |  |  |  |  |  |  |  |  |  |  |
| QTS-19271 |  | Zone 1 Gridlines 10-21 / Corridor 2010 // Frame Corridor Walls | 2d | 2025-09-02 A | 2025-09-24 A | QTS-19021, QTS-21461, QTS-21801 FF+1d | 100% |  | 2025-09-08 | 2025-09-09 |  |  |  |  | Level 2 | IGMP | Doug Hayes | Construction | 01ADMIN |  |  |
| QTS-19591 |  | Zone 1 Gridlines 10-21 / Corridor 2010 // In Wall Rough Electrical | 5d | 2025-09-25 A | 2025-10-20 A | QTS-19271, QTS-38981 | 100% |  | 2025-09-25 | 2025-10-01 |  |  |  |  | Level 2 | IGMP | Scott Masterson | Construction | 01ADMIN | Rosendin Electric, Inc |  |
| QTS-19601 |  | Zone 1 Gridlines 10-21 / Corridor 2010 // In Wall Rough Plumbing | 5d | 2025-09-25 A | 2025-10-01 A | QTS-19271 | 100% |  |  |  |  |  |  |  | Level 2 | IGMP | Dave Wiltberger | Construction | 01ADMIN | Bel-Aire Mechanical, LLC |  |
| QTS-20041 |  | Zone 1 Gridlines 10-21 / Corridor 2010 // Insulate Corridor Walls | 2d | 2025-10-03 A | 2025-10-06 A | QTS-19601 | 100% |  |  |  |  |  |  |  | Level 2 | IGMP | Doug Hayes | Construction | 01ADMIN |  |  |
| QTS-20351 |  | Zone 1 Gridlines 10-21 / Corridor 2010 // Hang Drywall on Exterior and 2010-2102 Walls | 7d | 2025-10-17 A | 2025-10-28 A | QTS-20041, QTS-19991 FF+3d | 100% |  | 2025-10-17 | 2025-10-27 |  |  |  |  | Level 2 | IGMP | Doug Hayes | Construction | 01ADMIN |  |  |
| QTS-19991 |  | Zone 1 Gridlines 10-21 / Corridor 2010 // In Wall Inspections | 1d | 2025-10-23 A | 2025-10-23 A | QTS-19601, QTS-19591 | 100% |  |  |  |  |  |  |  | Level 2 | IGMP | Dave Wiltberger | Construction | 01ADMIN | Bel-Aire Mechanical, LLC |  |
| QTS-20971 |  | Zone 1 Gridlines 10-21 / Corridor 2010 // Tape & Finish Drywall on Exterior and 2010-2102 Walls | 7d | 2025-10-29 A | 2025-11-06 A | QTS-20351 | 100% |  |  |  |  |  |  |  | Level 2 | IGMP | Doug Hayes | Construction | 01ADMIN |  |  |
| QTS-21601 |  | Zone 1 Gridlines 10-21 / Corridor 2010 // Prime & Paint Exterior & Corridor Walls | 4d | 2025-11-05 A | 2025-11-12 A | QTS-20971 FF+2d | 100% |  | 2025-11-05 | 2025-11-10 |  |  |  |  | Level 2 | IGMP | Doug Hayes | Construction | 01ADMIN |  |  |
| QTS-21821 |  | Zone 1 Gridlines 10-21 / Corridor 2010 // Install VESDA | 5d | 2025-11-19 A | 2025-11-25 A | QTS-21601 | 100% |  |  |  |  |  |  |  | Level 2 | IGMP | Dave Wiltberger | Construction | 01ADMIN |  |  |
| QTS-25781 |  | Zone 1 Gridlines 10-21 / Corridor 2010 // Install Wall Base | 2d | 2025-11-26 A | 2025-12-01 A | QTS-19271, QTS-21601 | 100% |  |  |  |  |  |  |  | Level 2 | IGMP | Sean Waisner | Construction | 01ADMIN |  |  |
| QTS-22461 |  | Zone 1 Gridlines 10-21 / Corridor 2010 // Rough Overhead Ductwork Gridlines A-C | 5d | 2025-12-01 A | 2025-12-05 A | QTS-21601, QTS-120000 | 100% |  |  |  |  |  |  |  | Level 2 | IGMP | Dave Wiltberger | Construction | 01ADMIN | Bel-Aire Mechanical, LLC |  |
| QTS-43631 |  | Zone 1 Gridlines 10-21 / Corridor 2010 // Rough Overhead Ductwork Gridlines D-F | 10d | 2025-12-02 A | 2025-12-08 A | QTS-22461 FF | 100% |  | 2025-12-02 | 2025-12-15 |  |  |  |  | Level 2 | IGMP | Dave Wiltberger | Construction |  | Bel-Aire Mechanical, LLC | Construction |
| QTS-22031 |  | Zone 1 Gridlines 10-21 / Corridor 2010 // Rough Fire Sprinklers | 5d | 2025-12-04 A | 2025-12-10 A | QTS-21821 SS+3d, QTS-21821 FF+3d | 100% |  |  |  |  |  |  |  | Level 2 | IGMP | Dave Wiltberger | Construction | 01ADMIN | Olympic West Fire Protection |  |
| QTS-24021 |  | Zone 1 Gridlines 10-21 / Corridor 2010 // Install Exterior Door | 6d | 2026-01-14 | 2026-01-21 | QTS-21601, QTS-16151 |  |  |  |  | 65d | 0d |  | QTS-PHX3 DC1 - 6 day w/ Holidays | Level 2 | IGMP | Sean Waisner | Construction | 01ADMIN |  |  |
| QTS-24661 |  | Zone 1 Gridlines 10-21 / Corridor 2010 // Install Light Fixtures On Walls | 8d | 2026-01-16 | 2026-01-26 | QTS-43631 |  |  |  |  | 65d | 57d | start on or after 2026-01-16 | QTS-PHX3 DC1 - 6 day w/ Holidays | Level 2 | IGMP | Scott Masterson | Construction | 01ADMIN | Rosendin Electric, Inc |  |
| QTS-24141 |  | Zone 1 Gridlines 10-21 / Corridor 2010 // Rough Electrical & Security to Exterior Door | 4d | 2026-01-22 | 2026-01-26 | QTS-24021 |  |  |  |  | 65d | 57d | start on or after 2026-01-16 | QTS-PHX3 DC1 - 6 day w/ Holidays | Level 2 | IGMP | Scott Masterson | Construction | 01ADMIN | Rosendin Electric, Inc |  |
| QTS-22211 |  | Zone 1 Gridlines 10-21 / Corridor 2010 // Rough Overhead Conduit | 5d | 2026-01-30 | 2026-02-04 | QTS-22031 SS+3d, QTS-120000, QTS-43631 |  |  |  |  | 49d | 0d | start on or after 2026-01-30 | QTS-PHX3 DC1 - 6 day w/ Holidays | Level 2 | IGMP | Scott Masterson | Construction | 01ADMIN | Rosendin Electric, Inc |  |
| QTS-24711 |  | Zone 1 Gridlines 10-21 / Corridor 2010 // Install Cable Tray | 8d | 2026-02-05 | 2026-02-13 | QTS-43631, QTS-22211 |  |  |  |  | 49d | 41d |  | QTS-PHX3 DC1 - 6 day w/ Holidays | Level 2 | IGMP | Scott Masterson | Construction | 01ADMIN | E2 Optics, LLC |  |
| QTS-24671 |  | Zone 1 Gridlines 10-21 / Corridor 2010 // Install Fire Alarm Devices | 4d | 2026-03-27 | 2026-03-31 | QTS-43631 |  |  |  |  | 10d | 2d | start on or after 2026-03-27 | QTS-PHX3 DC1 - 6 day w/ Holidays | Level 2 | IGMP | Scott Masterson | Construction | 01ADMIN |  |  |
|  | 2 | **Zone 2 Corridor 2010** |  | 2025-10-09 | 2026-02-07 |  |  |  |  |  |  |  |  |  |  |  |  |  |  |  |  |
| QTS-19611 |  | Zone 2 Gridline 21-30 / Corridor 2010 // Frame Exterior & Corridor Walls | 2d | 2025-10-09 A | 2025-10-10 A | QTS-19271, QTS-6901 | 100% |  |  |  |  |  |  |  | Level 2 | IGMP | Doug Hayes | Construction | 01ADMIN |  |  |
| QTS-20001 |  | Zone 2 Gridline 21-30 / Corridor 2010 // In Wall Rough Electrical | 5d | 2025-10-13 A | 2025-10-24 A | QTS-19611, QTS-38981 | 100% |  | 2025-10-13 | 2025-10-17 |  |  |  |  | Level 2 | IGMP | Scott Masterson | Construction | 01ADMIN | Rosendin Electric, Inc |  |
| QTS-20011 |  | Zone 2 Gridline 21-30 / Corridor 2010 // In Wall Rough Plumbing | 5d | 2025-10-13 A | 2025-11-07 A | QTS-19611 | 100% |  | 2025-10-13 | 2025-10-17 |  |  |  |  | Level 2 | IGMP | Dave Wiltberger | Construction | 01ADMIN | Bel-Aire Mechanical, LLC |  |
| QTS-20531 |  | Zone 2 Gridline 21-30 / Corridor 2010 // Insulate Corridor Wall | 2d | 2025-10-21 A | 2025-11-10 A | QTS-20001 SS+3d | 100% |  | 2025-10-21 | 2025-10-22 |  |  |  |  | Level 2 | IGMP | Doug Hayes | Construction | 01ADMIN |  |  |
| QTS-1002390 |  | Zone 2 Gridline 21-30 / Corridor 2010 // Hang Drywall on Corridor Wall - Corridor Side - Top Out | 4d | 2025-12-08 A | 2025-12-11 A | QTS-19611 | 100% |  |  |  |  |  |  | QTS-PHX3 DC1 - 6 day w/ Holidays | Level 2 | IGMP | Sean Waisner | Construction | 01ADMIN | Performance Contracting, Inc. |  |
| QTS-1000340 |  | Zone 2 Gridline 21-30 / Corridor 2010 // Hang Remaining Drywall on Corridor Wall - Corridor Side | 4d | 2025-12-12 A | 2025-12-16 A | QTS-20531, QTS-1002390 | 100% |  |  |  |  |  |  | QTS-PHX3 DC1 - 6 day w/ Holidays | Level 2 | IGMP | Sean Waisner | Construction | 01ADMIN | Performance Contracting, Inc. |  |
| QTS-1002400 |  | Zone 2 Gridline 21-30 / Corridor 2010 // Tape & Finish Drywall Corridor Wall - Corridor Side - Top Out | 5d | 2025-12-12 A | 2025-12-17 A | QTS-1002390 | 100% |  |  |  |  |  |  | QTS-PHX3 DC1 - 6 day w/ Holidays | Level 2 | IGMP | Sean Waisner | Construction | 01ADMIN | Performance Contracting, Inc. |  |
| QTS-1000380 |  | Zone 2 Gridline 21-30 / Corridor 2010 // Tape & Finish Remaining Drywall on Corridor Wall - Corridor Side | 5d | 2025-12-17 A | 2025-12-22 A | QTS-1000340 | 100% |  |  |  |  |  |  | QTS-PHX3 DC1 - 6 day w/ Holidays | Level 2 | IGMP | Sean Waisner | Construction | 01ADMIN | Performance Contracting, Inc. |  |
| QTS-22431 |  | Zone 2 Gridline 21-30 / Corridor 2010 // Rough Fire Sprinklers | 5d | 2025-12-22 A | 2025-12-27 A | QTS-19611 | 100% |  |  |  |  |  |  | QTS-PHX3 DC1 - 6 day w/ Holidays | Level 2 | IGMP | Dave Wiltberger | Construction |  | Olympic West Fire Protection |  |
| QTS-20791 |  | Zone 2 Gridline 21-30 / Corridor 2010 // Hang Drywall on Exterior Wall - Top Out | 4d | 2025-12-31 A | 2026-01-05 A | QTS-19611 | 100% |  |  |  |  |  |  | QTS-PHX3 DC1 - 6 day w/ Holidays | Level 2 | IGMP | Sean Waisner | Construction | 01ADMIN | Performance Contracting, Inc. |  |
| QTS-1000350 |  | Zone 2 Gridline 21-30 / Corridor 2010 // Paint Corridor Wall - Corridor Side | 2d | 2026-01-14 A | 2026-01-14 | QTS-1000380 | 100% | 0d | 2026-01-14 | 2026-01-15 | 42d | 0d |  | QTS-PHX3 DC1 - 6 day w/ Holidays | Level 2 | IGMP | Sean Waisner | Construction |  | Pennington Painting Company, LLC |  |
| QTS-1000390 |  | Zone 2 Gridline 21-30 / Corridor 2010 // In Wall Rough Electrical - Corridor Wall | 3d | 2026-01-14 | 2026-01-16 | QTS-19611 |  |  |  |  | 12d | 0d | start on or after 2026-01-05 | QTS-PHX3 DC1 - 6 day w/ Holidays | Level 2 | IGMP | Scott Masterson | Construction | 01ADMIN | Bel-Aire Mechanical, LLC |  |
| QTS-1000400 |  | Zone 2 Gridline 21-30 / Corridor 2010 // In Wall Rough Electrical - Exterior Wall | 3d | 2026-01-14 | 2026-01-16 | QTS-19611 |  |  |  |  | 59d | 0d | start on or after 2026-01-05 | QTS-PHX3 DC1 - 6 day w/ Holidays | Level 2 | IGMP | Scott Masterson | Construction | 01ADMIN | Bel-Aire Mechanical, LLC |  |
| QTS-1000990 |  | Zone 2 Gridline 21-30 / Corridor 2010 // Install Hangers for Duct Work | 4d | 2026-01-14 A | 2026-01-14 | QTS-22431 | 100% | 0d | 2026-01-14 | 2026-01-17 | 58d | 4d |  | QTS-PHX3 DC1 - 6 day w/ Holidays | Level 2 | IGMP | Dave Wiltberger | Construction | 01ADMIN | Bel-Aire Mechanical, LLC |  |
| QTS-1002410 |  | Zone 2 Gridline 21-30 / Corridor 2010 // Prime & Paint Corridor Wall - Corridor Side - Top Out | 2d | 2026-01-14 A | 2026-01-14 | QTS-1002420 SS, QTS-1002400 | 100% | 0d | 2026-01-14 | 2026-01-15 | 58d | 4d |  | QTS-PHX3 DC1 - 6 day w/ Holidays | Level 2 | IGMP | Sean Waisner | Construction | 01ADMIN | Pennington Painting Company, LLC |  |
| QTS-1002420 |  | Zone 2 Gridline 21-30 / Corridor 2010 // Fire Caulking Corridor Wall - Corridor Side - Top Out | 1d | 2026-01-14 | 2026-01-14 | QTS-1002390 |  |  |  |  | 57d | 0d |  | QTS-PHX3 DC1 - 6 day w/ Holidays | Level 2 | IGMP | Sean Waisner | Construction | 01ADMIN | Alpha Insulation & Waterproofing, Inc. |  |
| QTS-21411 |  | Zone 2 Gridline 21-30 / Corridor 2010 // Tape & Finish Drywall on Exterior Wall - Top Out | 5d | 2026-01-14 A | 2026-01-14 | QTS-20791 | 100% | 0d | 2026-01-14 | 2026-01-20 | 54d | 0d |  | QTS-PHX3 DC1 - 6 day w/ Holidays | Level 2 | IGMP | Sean Waisner | Construction | 01ADMIN | Performance Contracting, Inc. |  |
| QTS-21861 |  | Zone 2 Gridline 21-30 / Corridor 2010 // Prime & Paint Exterior Walls - Top Out | 4d | 2026-01-14 | 2026-01-17 | QTS-21411 |  |  |  |  | 54d | 0d |  | QTS-PHX3 DC1 - 6 day w/ Holidays | Level 2 | IGMP | Sean Waisner | Construction | 01ADMIN | Pennington Painting Company, LLC |  |
| QTS-24681 |  | Zone 2 Gridline 21-30 / Corridor 2010 // Install Light Fixtures On Walls | 8d | 2026-01-14 | 2026-01-23 | QTS-1000350 |  |  |  |  | 67d | 59d |  | QTS-PHX3 DC1 - 6 day w/ Holidays | Level 2 | IGMP | Scott Masterson | Construction |  | Rosendin Electric, Inc |  |
| QTS-24691 |  | Zone 2 Gridline 21-30 / Corridor 2010 // Install Fire Alarm Devices | 4d | 2026-01-14 | 2026-01-17 | QTS-24151, QTS-1000350 |  |  |  |  | 71d | 63d |  | QTS-PHX3 DC1 - 6 day w/ Holidays | Level 2 | IGMP | Scott Masterson | Construction |  |  |  |
| QTS-1000410 |  | Zone 2 Gridline 21-30 / Corridor 2010 // In Wall Inspections - Exterior Wall | 1d | 2026-01-17 | 2026-01-17 | QTS-1000400 |  |  |  |  | 59d | 0d |  | QTS-PHX3 DC1 - 6 day w/ Holidays | Level 2 | IGMP | Scott Masterson | Construction | 01ADMIN | Bel-Aire Mechanical, LLC |  |
| QTS-20461 |  | Zone 2 Gridline 21-30 / Corridor 2010 // In Wall Inspections - Corridor Wall | 1d | 2026-01-17 | 2026-01-17 | QTS-20011, QTS-20011 FF, QTS-20001, QTS-1000390 |  |  |  |  | 12d | 0d |  | QTS-PHX3 DC1 - 6 day w/ Holidays | Level 2 | IGMP | Scott Masterson | Construction | 01ADMIN | Bel-Aire Mechanical, LLC |  |
| QTS-1000330 |  | Zone 2 Gridline 21-30 / Corridor 2010 // Hang Drywall on Corridor Wall - EG Side | 4d | 2026-01-20 A | 2026-01-21 | QTS-1001000 FF | 100% | 0d | 2026-01-20 | 2026-01-23 | 12d | 0d |  | QTS-PHX3 DC1 - 6 day w/ Holidays | Level 2 | IGMP | Sean Waisner | Construction | 01ADMIN | Performance Contracting, Inc. |  |
| QTS-1001000 |  | Zone 2 Gridline 21-30 / Corridor 2010 // Insulate - Corridor Wall | 1d | 2026-01-20 | 2026-01-20 | QTS-20461 |  |  |  |  | 12d | 0d |  | QTS-PHX3 DC1 - 6 day w/ Holidays | Level 2 | IGMP | Sean Waisner | Construction | 01ADMIN | Bel-Aire Mechanical, LLC |  |
| QTS-1003380 |  | Zone 2 Gridline 21-30 / Corridor 2010 // Hang Drywall on Exterior Wall - Remaining | 4d | 2026-01-20 | 2026-01-23 | QTS-1000410 |  |  |  |  | 59d | 0d |  | QTS-PHX3 DC1 - 6 day w/ Holidays | Level 2 | IGMP | Sean Waisner | Construction | 01ADMIN | Performance Contracting, Inc. |  |
| QTS-1000370 |  | Zone 2 Gridline 21-30 / Corridor 2010 // Tape & Finish Drywall on Corridor Wall - EG Side | 5d | 2026-01-21 | 2026-01-26 | QTS-1000330 |  |  |  |  | 12d | 0d |  | QTS-PHX3 DC1 - 6 day w/ Holidays | Level 2 | IGMP | Sean Waisner | Construction | 01ADMIN | Performance Contracting, Inc. |  |
| QTS-1002430 |  | Zone 2 Gridline 21-30 / Corridor 2010 // Fire Caulking Corridor Wall - EG Side | 1d | 2026-01-21 | 2026-01-21 | QTS-1000330 |  |  |  |  | 16d | 4d |  | QTS-PHX3 DC1 - 6 day w/ Holidays | Level 2 | IGMP | Sean Waisner | Construction | 01ADMIN | Alpha Insulation & Waterproofing, Inc. |  |
| QTS-1003390 |  | Zone 2 Gridline 21-30 / Corridor 2010 // Tape & Finish Drywall on Exterior Wall - Remaining | 5d | 2026-01-24 | 2026-01-29 | QTS-1003380 |  |  |  |  | 59d | 0d |  | QTS-PHX3 DC1 - 6 day w/ Holidays | Level 2 | IGMP | Sean Waisner | Construction | 01ADMIN | Performance Contracting, Inc. |  |
| QTS-22581 |  | Zone 2 Gridline 21-30 / Corridor 2010 // Rough Overhead Conduit | 5d | 2026-01-24 | 2026-01-29 | QTS-22431 SS+3d, QTS-1000350, QTS-23641 |  |  |  |  | 54d | 0d |  | QTS-PHX3 DC1 - 6 day w/ Holidays | Level 2 | IGMP | Scott Masterson | Construction |  | Rosendin Electric, Inc |  |
| QTS-23641 |  | Zone 2 Gridline 21-30 / Corridor 2010 // Rough Overhead Ductwork Gridline 21-30 | 10d | 2026-01-26 A | 2026-01-23 | QTS-1002420, QTS-1002410, QTS-21861, QTS-1000990 | 60% | 4d | 2026-01-26 | 2026-02-05 | 54d | 0d |  | QTS-PHX3 DC1 - 6 day w/ Holidays | Level 2 | IGMP | Dave Wiltberger | Construction |  | Bel-Aire Mechanical, LLC |  |
| QTS-1000360 |  | Zone 2 Gridline 21-30 / Corridor 2010 // Paint Corridor Wall - EG Side | 2d | 2026-01-27 | 2026-01-28 | QTS-1002430, QTS-1000370 |  |  |  |  | 12d | 0d |  | QTS-PHX3 DC1 - 6 day w/ Holidays | Level 2 | IGMP | Sean Waisner | Construction |  | Pennington Painting Company, LLC |  |
| QTS-1003400 |  | Zone 2 Gridline 21-30 / Corridor 2010 // Paint Exterior Wall - Remaining | 2d | 2026-01-30 | 2026-01-31 | QTS-1003390 |  |  |  |  | 59d | 0d |  | QTS-PHX3 DC1 - 6 day w/ Holidays | Level 2 | IGMP | Sean Waisner | Construction |  | Pennington Painting Company, LLC |  |
| QTS-24721 |  | Zone 2 Gridline 21-30 / Corridor 2010 // Install Cable Tray | 8d | 2026-01-30 | 2026-02-07 | QTS-22581 |  |  |  |  | 54d | 46d |  | QTS-PHX3 DC1 - 6 day w/ Holidays | Level 2 | IGMP | Scott Masterson | Construction |  |  |  |
| QTS-25791 |  | Zone 2 Gridline 21-30 / Corridor 2010 // Install Wall Base | 1d | 2026-02-02 | 2026-02-02 | QTS-1003400, QTS-19611, QTS-21861 |  |  |  |  | 59d | 51d |  | QTS-PHX3 DC1 - 6 day w/ Holidays | Level 2 | IGMP | Sean Waisner | Construction |  |  |  |

Notes:
- QTS-19271: allucent_notes: Jason Johnston on 2025-09-02 13:09: Corrected logic / allucent_notes: 2025-09-02 13:09 - User: Jason Johnston - Date Added: 2025-09-02 13:09 - Note: Corrected logic
- QTS-19591: allucent_notes_20251014_152335: David Wiltberger on 2025-09-09 14:09: walls not completed / David Wiltberger on 2025-10-07 16:10: Wall not completed dur to RFI / allucent_notes_20251021_145627: David Wiltberger on 2025-09-09 14:09: walls not completed / David Wiltberger on 2025-10-07 16:10: Wall not completed dur to RFI / Scott Masterson on 2025-10-21 11:10: 80% of the wall is complete. The remaining 20% is the 38' leave out. A fragnet needs to be built into schedule. PCI has the RFI reply to how to build it but are waiting for materials procurement, to get wall started and finished. / Scott Masterson on 2025-10-21 11:10: 80% of the wall is complete. The remaining 20% is the 38' leave out. A fragnet needs to be built into schedule. PCI has the RFI reply to how to build it but are waiting for materials procurement, to get wall started and finished. / allucent_notes: 2025-09-09 14:09 - User: David Wiltberger - Date Added: 2025-09-09 14:09 - Note: walls not completed / 2025-10-07 16:10 - User: David Wiltberger - Date Added: 2025-10-07 16:10 - Note: Wall not completed dur to RFI / 2025-10-21 11:10 - User: Scott Master
- QTS-19991: allucent_notes_20251014_152335: David Wiltberger on 2025-10-07 15:10: Insulation has not been completed / allucent_notes_20251021_145627: David Wiltberger on 2025-10-07 15:10: Insulation has not been completed / allucent_notes_20251027_224008: David Wiltberger on 2025-10-07 15:10: Insulation has not been completed / allucent_notes: 2025-10-07 15:10 - User: David Wiltberger - Date Added: 2025-10-07 15:10 - Note: Insulation has not been completed
- QTS-20971: allucent_notes_20251111_182405: Jason Johnston on 2025-11-10 14:11: Focusing on early access / allucent_notes_20251118_192630: Jason Johnston on 2025-11-10 14:11: Focusing on early access / allucent_notes: 2025-11-10 14:11 - User: Jason Johnston - Date Added: 2025-11-10 14:11 - Note: Focusing on early access
- QTS-21601: allucent_notes_20251111_182405: Jason Johnston on 2025-11-11 15:11: Slow production. / allucent_notes_20251118_192630: Jason Johnston on 2025-11-11 15:11: Slow production. / Jason Johnston on 2025-11-18T20:30:40.532Z: Closing item because of bulletin 4 now requires the lights be put in wall so the drywall needs to be ripped out. / allucent_notes: 2025-11-11 15:11 - User: Jason Johnston - Date Added: 2025-11-11 15:11 - Note: Slow production. / 2025-11-18T20:30:40.532Z - User: Jason Johnston - Date Added: 2025-11-18T20:30:40.532Z - Note: Closing item because of bulletin 4 now requires the lights be
- QTS-21821: allucent_notes_20251118_192630: David Wiltberger on 2025-11-17 16:11: out of sequence / allucent_notes_20251202_153722: David Wiltberger on 2025-11-17 16:11: out of sequence / allucent_notes: 2025-11-17 16:11 - User: David Wiltberger - Date Added: 2025-11-17 16:11 - Note: out of sequence
- QTS-22031: allucent_notes_20251202_153722: David Wiltberger on 2025-12-02 06:42: wall built late acted by Stop Work / allucent_notes_20251209_203830: David Wiltberger on 2025-12-02 06:42: wall built late acted by Stop Work / allucent_notes_20251216_165335: David Wiltberger on 2025-12-02 06:42: wall built late acted by Stop Work / allucent_notes: 2025-12-02 06:42 - User: David Wiltberger - Date Added: 2025-12-02 06:42 - Note: wall built late acted by Stop Work
- QTS-24021: allucent_notes_20251230_164549: Jason Johnston on 2025-12-16 08:23: Door not installed. / Jason Johnston on 2025-12-30 16:40: No update / allucent_notes_20251216_165335: Jason Johnston on 2025-12-16 08:23: Door not installed. / allucent_notes: 2025-12-16 08:23 - User: Jason Johnston - Date Added: 2025-12-16 08:23 - Note: Door not installed. / 2025-12-30 16:40 - User: Jason Johnston - Date Added: 2025-12-30 16:40 - Note: No update
- QTS-24661: allucent_notes_20251230_164549: Jason Johnston on 2025-12-16 08:23: Tie to pod to chiller conduit runs / David Wiltberger on 2025-12-30 16:09: corridor impacted by fire stop work / allucent_notes_20251216_165335: Jason Johnston on 2025-12-16 08:23: Tie to pod to chiller conduit runs / allucent_notes: 2025-12-16 08:23 - User: Jason Johnston - Date Added: 2025-12-16 08:23 - Note: Tie to pod to chiller conduit runs / 2025-12-30 16:09 - User: David Wiltberger - Date Added: 2025-12-30 16:09 - Note: corridor impacted by fire stop work
- QTS-24141: allucent_notes_20251230_164549: David Wiltberger on 2025-12-30 16:09: corridor impacted by fire stop work / allucent_notes: 2025-12-30 16:09 - User: David Wiltberger - Date Added: 2025-12-30 16:09 - Note: corridor impacted by fire stop work
- QTS-22211: allucent_notes_20251230_164549: David Wiltberger on 2025-12-30 16:09: corridor impacted by fire stop work / allucent_notes: 2025-12-30 16:09 - User: David Wiltberger - Date Added: 2025-12-30 16:09 - Note: corridor impacted by fire stop work
- QTS-24671: allucent_notes_20251230_164549: Jason Johnston on 2025-12-16 08:21: Not started / David Wiltberger on 2025-12-30 16:08: Bad tie / allucent_notes_20251216_165335: Jason Johnston on 2025-12-16 08:21: Not started / allucent_notes: 2025-12-16 08:21 - User: Jason Johnston - Date Added: 2025-12-16 08:21 - Note: Not started / 2025-12-30 16:08 - User: David Wiltberger - Date Added: 2025-12-30 16:08 - Note: Bad tie
- QTS-20001: allucent_notes_20251021_145627: Scott Masterson on 2025-10-21 11:10: 80% of the wall is complete. The remaining 20% is the 38' leave out. A fragnet needs to be built into schedule. PCI has the RFI reply to how to build it but are waiting for materials procurement, to get wall started and finished. / allucent_notes_20251027_224008: Scott Masterson on 2025-10-21 11:10: 80% of the wall is complete. The remaining 20% is the 38' leave out. A fragnet needs to be built into schedule. PCI has the RFI reply to how to build it but are waiting for materials procurement, to get wall started and finished. / allucent_notes: 2025-10-21 11:10 - User: Scott Masterson - Date Added: 2025-10-21 11:10 - Note: 80% of the wall is complete. The remaining 20% is the 38' leave out. A fragnet needs to be built into schedule. PCI has the RFI reply to how to build it but are waiting for
- QTS-20011: allucent_notes_20251021_145627: David Wiltberger on 2025-10-21 13:10: Wall needs to be insulated before installing / allucent_notes_20251027_224008: David Wiltberger on 2025-10-21 13:10: Wall needs to be insulated before installing / allucent_notes_20251028_163138: David Wiltberger on 2025-10-21 13:10: Wall needs to be insulated before installing / allucent_notes_20251104_160200: David Wiltberger on 2025-10-21 13:10: Wall needs to be insulated before installing / allucent_notes_20251111_182405: David Wiltberger on 2025-10-21 13:10: Wall needs to be insulated before installing / allucent_notes_20251118_192630: David Wiltberger on 2025-10-21 13:10: Wall needs to be insulated before installing / allucent_notes: 2025-10-21 13:10 - User: David Wiltberger - Date Added: 2025-10-21 13:10 - Note: Wall needs to be insulated before installing
- QTS-1002390: allucent_notes_20251111_182405: Jason Johnston on 2025-11-11 17:11: Need update / allucent_notes_20251118_192630: Jason Johnston on 2025-11-11 17:11: Need update / allucent_notes_20251202_153722: Jason Johnston on 2025-11-11 17:11: Need update / Luis Vea on 2025-12-01 09:54: rough in is needed, manpower got pulled to early access / allucent_notes_20251209_203830: Jason Johnston on 2025-11-11 17:11: Need update / Luis Vea on 2025-12-01 09:54: rough in is needed, manpower got pulled to early access / allucent_notes: 2025-11-11 17:11 - User: Jason Johnston - Date Added: 2025-11-11 17:11 - Note: Need update / 2025-12-01 09:54 - User: Luis Vea - Date Added: 2025-12-01 09:54 - Note: rough in is needed, manpower got pulled to early access
- QTS-20791: allucent_notes_20251111_182405: Jason Johnston on 2025-11-11 17:11: Need update / allucent_notes_20251118_192630: Jason Johnston on 2025-11-11 17:11: Need update / allucent_notes_20251202_153722: Jason Johnston on 2025-11-11 17:11: Need update / Luis Vea on 2025-12-01 09:54: rough in is needed, manpower got pulled to early access / allucent_notes_20251209_203830: Jason Johnston on 2025-11-11 17:11: Need update / Luis Vea on 2025-12-01 09:54: rough in is needed, manpower got pulled to early access / allucent_notes: 2025-11-11 17:11 - User: Jason Johnston - Date Added: 2025-11-11 17:11 - Note: Need update / 2025-12-01 09:54 - User: Luis Vea - Date Added: 2025-12-01 09:54 - Note: rough in is needed, manpower got pulled to early access
- QTS-1000390: allucent_notes_20251230_164549: Jason Johnston on 2025-12-09 20:35: Need update from team / allucent_notes_20251111_182405: Jason Johnston on 2025-11-11 16:11: Focus shifted to early access. / allucent_notes_20251118_192630: Jason Johnston on 2025-11-11 16:11: Focus shifted to early access. / Jason Johnston on 2025-11-18T20:32:37.017Z: Delayed due to bulletin 4 requiring lights to be in wall. / allucent_notes_20251202_153722: Jason Johnston on 2025-11-11 16:11: Focus shifted to early access. / Jason Johnston on 2025-11-18T20:32:37.017Z: Delayed due to bulletin 4 requiring lights to be in wall. / Luis Vea on 2025-12-01 09:53: rough in is not complete. man power got pulled to early access rooms / allucent_notes_20251209_203830: Jason Johnston on 2025-12-09 20:35: Need update from team / allucent_notes: 2025-12-09 20:35 - User: Jason Johnston - Date Added: 2025-12-09 20:35 - Note: Need update from team
- QTS-1000400: allucent_notes_20251230_164549: Jason Johnston on 2025-12-09 20:35: Need update from team / allucent_notes_20251111_182405: Jason Johnston on 2025-11-11 16:11: Focus shifted to early access. / allucent_notes_20251118_192630: Jason Johnston on 2025-11-11 16:11: Focus shifted to early access. / Jason Johnston on 2025-11-18T20:32:37.017Z: Delayed due to bulletin 4 requiring lights to be in wall. / allucent_notes_20251202_153722: Jason Johnston on 2025-11-11 16:11: Focus shifted to early access. / Jason Johnston on 2025-11-18T20:32:37.017Z: Delayed due to bulletin 4 requiring lights to be in wall. / Luis Vea on 2025-12-01 09:53: rough in is not complete. man power got pulled to early access rooms / allucent_notes_20251209_203830: Jason Johnston on 2025-12-09 20:35: Need update from team / allucent_notes: 2025-12-09 20:35 - User: Jason Johnston - Date Added: 2025-12-09 20:35 - Note: Need update from team
- QTS-1000990: allucent_notes_20251111_182405: Jason Johnston on 2025-11-11 17:11: Need update / allucent_notes_20251118_192630: Jason Johnston on 2025-11-11 17:11: Need update / allucent_notes_20251202_153722: Jason Johnston on 2025-11-11 17:11: Need update / Luis Vea on 2025-12-01 09:54: rough in is needed, manpower got pulled to early access / allucent_notes_20251209_203830: Jason Johnston on 2025-11-11 17:11: Need update / Luis Vea on 2025-12-01 09:54: rough in is needed, manpower got pulled to early access / allucent_notes: 2025-11-11 17:11 - User: Jason Johnston - Date Added: 2025-11-11 17:11 - Note: Need update / 2025-12-01 09:54 - User: Luis Vea - Date Added: 2025-12-01 09:54 - Note: rough in is needed, manpower got pulled to early access
- QTS-1000410: allucent_notes_20251111_182405: Jason Johnston on 2025-11-11 16:11: Focus shifted to early access. / allucent_notes_20251118_192630: Jason Johnston on 2025-11-11 16:11: Focus shifted to early access. / Jason Johnston on 2025-11-18T20:32:37.017Z: Delayed due to bulletin 4 requiring lights to be in wall. / allucent_notes_20251202_153722: Jason Johnston on 2025-11-11 16:11: Focus shifted to early access. / Jason Johnston on 2025-11-18T20:32:37.017Z: Delayed due to bulletin 4 requiring lights to be in wall. / Luis Vea on 2025-12-01 09:53: rough in is not complete. man power got pulled to early access rooms / allucent_notes: 2025-11-11 16:11 - User: Jason Johnston - Date Added: 2025-11-11 16:11 - Note: Focus shifted to early access. / 2025-11-18T20:32:37.017Z - User: Jason Johnston - Date Added: 2025-11-18T20:32:37.017Z - Note: Delayed due to bulletin 4 requiring lights to b
- QTS-20461: allucent_notes_20251230_164549: Jason Johnston on 2025-11-11 16:11: Focus shifted to early access. / Jason Johnston on 2025-11-18T20:32:37.017Z: Delayed due to bulletin 4 requiring lights to be in wall. / Luis Vea on 2025-12-01 09:53: rough in is not complete. man power got pulled to early access rooms / allucent_notes_20251111_182405: Jason Johnston on 2025-11-11 16:11: Focus shifted to early access. / allucent_notes_20251118_192630: Jason Johnston on 2025-11-11 16:11: Focus shifted to early access. / Jason Johnston on 2025-11-18T20:32:37.017Z: Delayed due to bulletin 4 requiring lights to be in wall. / allucent_notes_20251202_153722: Jason Johnston on 2025-11-11 16:11: Focus shifted to early access. / Jason Johnston on 2025-11-18T20:32:37.017Z: Delayed due to bulletin 4 requiring lights to be in wall. / Luis Vea on 2025-12-01 09:53: rough in is not complete. man power got pulled to early access rooms / allucent_notes_20251209_203830: Jason Johnston on 2025-11-11 16:11: Focus shifted to early access. / Jason Johnston on 2025-11-18T20:32:37.017Z: Delayed due to bulletin 4 requiring lights to be in wall. / Luis Vea on 2025-12-01 09:53: rough in is not complete. man power got pulled to early access rooms / allucent_notes: 2025-11-11 16:11 - User: Jason Johnston - Date Added: 2025-11-11 16:11 - Note: Focus shifted to early access. / 2025-11-18T20:32:37.017Z - User: Jason Johnston - Date Added: 2025-11-18T20:32:37.017Z - Note: Delayed due to bulletin 4 requiring lights to b
- QTS-1001000: allucent_notes_20251111_182405: Jason Johnston on 2025-11-11 16:11: Focus shifted to early access. / allucent_notes_20251118_192630: Jason Johnston on 2025-11-11 16:11: Focus shifted to early access. / Jason Johnston on 2025-11-18T20:32:37.017Z: Delayed due to bulletin 4 requiring lights to be in wall. / allucent_notes_20251202_153722: Jason Johnston on 2025-11-11 16:11: Focus shifted to early access. / Jason Johnston on 2025-11-18T20:32:37.017Z: Delayed due to bulletin 4 requiring lights to be in wall. / Luis Vea on 2025-12-01 09:53: rough in is not complete. man power got pulled to early access rooms / allucent_notes_20251209_203830: Jason Johnston on 2025-11-11 16:11: Focus shifted to early access. / Jason Johnston on 2025-11-18T20:32:37.017Z: Delayed due to bulletin 4 requiring lights to be in wall. / Luis Vea on 2025-12-01 09:53: rough in is not complete. man power got pulled to early access rooms / allucent_notes: 2025-11-11 16:11 - User: Jason Johnston - Date Added: 2025-11-11 16:11 - Note: Focus shifted to early access. / 2025-11-18T20:32:37.017Z - User: Jason Johnston - Date Added: 2025-11-18T20:32:37.017Z - Note: Delayed due to bulletin 4 requiring lights to b

| ID | WBS | Activity | Duration | Start | Finish | Predecessors | Complete | Remaining | Planned start | Planned finish | Total float | Free float | Constraint | Calendar | Level | Baseline | Layton Responsible Party | Project Section | Allucent CSI Group | Subcontractor |
| --- | --- | --- | --- | --- | --- | --- | --- | --- | --- | --- | --- | --- | --- | --- | --- | --- | --- | --- | --- | --- |
|  | 1 | **Zone 3 Corridor 2307** |  | 2025-10-13 | 2026-03-06 |  |  |  |  |  |  |  |  |  |  |  |  |  |  |  |
| QTS-19981 |  | Zone 3 Gridlines 30-41 Corridor 2307 // Frame Exterior Walls | 2d | 2025-10-13 A | 2025-10-14 A | QTS-19611, QTS-23261, QTS-23381 | 100% |  |  |  |  |  |  |  | Level 2 | IGMP | Doug Hayes | Construction | 01ADMIN |  |
| QTS-102650 |  | Zone 3 Gridlines 30-41 Corridor 2307 // Frame Corridor Walls | 5d | 2025-11-19 A | 2025-11-25 A | QTS-19981 | 100% |  |  |  |  |  |  |  | Level 2 | IGMP | Sean Waisner | Construction | 01ADMIN |  |
| QTS-21251 |  | Zone 3 Gridlines 30-41 Corridor 2307 // Top Out Drywall on Exterior Wall | 7d | 2025-11-19 A | 2025-12-10 A | QTS-19981 | 100% |  | 2025-11-19 | 2025-12-01 |  |  |  |  | Level 2 | IGMP | Sean Waisner | Construction | 01ADMIN | Performance Contracting, Inc. |
| QTS-21761 |  | Zone 3 Gridlines 30-41 Corridor 2307 // Tape & Finish Drywall on Exterior Wall - Top Out | 7d | 2025-12-11 A | 2026-01-14 | QTS-21251 | 100% | 0d | 2025-12-11 | 2025-12-18 | 57d | 0d |  | QTS-PHX3 DC1 - 6 day w/ Holidays | Level 2 | IGMP | Sean Waisner | Construction | 01ADMIN | Performance Contracting, Inc. |
| QTS-1001010 |  | Zone 3 Gridlines 30-41 Corridor 2307 // Install Hangers for Duct Work | 5d | 2026-01-14 | 2026-01-20 | QTS-21251, QTS-22741 |  |  |  |  | 54d | 23d |  | QTS-PHX3 DC1 - 6 day w/ Holidays | Level 2 | IGMP | Dave Wiltberger | Construction |  | Bel-Aire Mechanical, LLC |
| QTS-20441 |  | Zone 3 Gridlines 30-41 Corridor 2307 // In Wall Rough Electrical | 5d | 2026-01-14 | 2026-01-20 | QTS-19981, QTS-38981 |  |  |  |  | 31d | 0d | start on or after 2026-01-05 | QTS-PHX3 DC1 - 6 day w/ Holidays | Level 2 | IGMP | Scott Masterson | Construction | 01ADMIN | Rosendin Electric, Inc |
| QTS-22201 |  | Zone 3 Gridlines 30-41 Corridor 2307 // Prime & Paint Exterior Wall - Top Out | 2d | 2026-01-14 | 2026-01-15 | QTS-21761 |  |  |  |  | 57d | 26d |  | QTS-PHX3 DC1 - 6 day w/ Holidays | Level 2 | IGMP | Sean Waisner | Construction | 01ADMIN | Pennington Painting Company, LLC |
| QTS-22741 |  | Zone 3 Gridlines 30-41 Corridor 2307 // Rough Fire Sprinklers | 5d | 2026-01-14 A | 2026-01-14 | QTS-102650 | 100% | 0d | 2026-01-14 | 2026-01-20 | 54d | 0d |  | QTS-PHX3 DC1 - 6 day w/ Holidays | Level 2 | IGMP | Dave Wiltberger | Construction |  | Olympic West Fire Protection |
| QTS-1001020 |  | Zone 3 Gridlines 30-41 Corridor 2307 // Hang Drywall on Exterior Wall - Remaining | 7d | 2026-01-21 | 2026-01-28 | QTS-20441, QTS-21251 |  |  |  |  | 55d | 0d | start on or after 2026-01-05 | QTS-PHX3 DC1 - 6 day w/ Holidays | Level 2 | IGMP | Sean Waisner | Construction | 01ADMIN | Performance Contracting, Inc. |
| QTS-20961 |  | Zone 3 Gridlines 30-41 Corridor 2307 // In Wall Inspections | 1d | 2026-01-21 | 2026-01-21 | QTS-20441 |  |  |  |  | 31d | 0d |  | QTS-PHX3 DC1 - 6 day w/ Holidays | Level 2 | IGMP | Scott Masterson | Construction | 01ADMIN | Bel-Aire Mechanical, LLC |
| QTS-21001 |  | Zone 3 Gridlines 30-41 Corridor 2307 // Insulate Corridor Wall | 2d | 2026-01-22 | 2026-01-23 | QTS-20961 |  |  |  |  | 31d | 0d |  | QTS-PHX3 DC1 - 6 day w/ Holidays | Level 2 | IGMP | Sean Waisner | Construction | 01ADMIN | Performance Contracting, Inc. |
| QTS-102660 |  | Zone 3 Gridlines 30-41 Corridor 2307 // Top Out on Corridor-2202 Wall - Corridor Side | 7d | 2026-01-24 | 2026-01-31 | QTS-102650, QTS-21001 |  |  |  |  | 31d | 0d |  | QTS-PHX3 DC1 - 6 day w/ Holidays | Level 2 | IGMP | Sean Waisner | Construction | 01ADMIN | Performance Contracting, Inc. |
| QTS-102680 |  | Zone 3 Gridlines 30-41 Corridor 2307 // Hang Drywall on Corridor Wall - EG Side - Remaining | 3d | 2026-01-24 | 2026-01-27 | QTS-21001 |  |  |  |  | 41d | 0d |  | QTS-PHX3 DC1 - 6 day w/ Holidays | Level 2 | IGMP | Sean Waisner | Construction | 01ADMIN | Performance Contracting, Inc. |
| QTS-102690 |  | Zone 3 Gridlines 30-41 Corridor 2307 // Hang Drywall on Corridor Wall - Corridor Side - Remaining | 3d | 2026-01-28 | 2026-01-30 | QTS-102680 |  |  |  |  | 47d | 1d |  | QTS-PHX3 DC1 - 6 day w/ Holidays | Level 2 | IGMP | Sean Waisner | Construction | 01ADMIN | Performance Contracting, Inc. |
| QTS-102700 |  | Zone 3 Gridlines 30-41 Corridor 2307 // Tape & Finish Remaining Drywall on Corridor Wall - EG Side - Remaining | 4d | 2026-01-28 | 2026-01-31 | QTS-102680 |  |  |  |  | 41d | 0d |  | QTS-PHX3 DC1 - 6 day w/ Holidays | Level 2 | IGMP | Sean Waisner | Construction | 01ADMIN | Performance Contracting, Inc. |
| QTS-1003790 |  | Zone 3 Gridlines 30-41 Corridor 2307 // Tape & Finish Drywall on Exterior Wall - Remaining | 4d | 2026-01-29 | 2026-02-02 | QTS-1001020 |  |  |  |  | 55d | 0d |  | QTS-PHX3 DC1 - 6 day w/ Holidays | Level 2 | IGMP | Sean Waisner | Construction | 01ADMIN | Performance Contracting, Inc. |
| QTS-102670 |  | Zone 3 Gridlines 30-41 Corridor 2307 // Top Out on Corridor-2202 Wall - EG Side | 7d | 2026-02-02 | 2026-02-09 | QTS-102660 |  |  |  |  | 31d | 0d |  | QTS-PHX3 DC1 - 6 day w/ Holidays | Level 2 | IGMP | Sean Waisner | Construction | 01ADMIN | Performance Contracting, Inc. |
| QTS-102710 |  | Zone 3 Gridlines 30-41 Corridor 2307 // Tape & Finish Drywall on Corridor Wall - Corridor Side - Remaining | 4d | 2026-02-02 | 2026-02-05 | QTS-102700, QTS-102690 |  |  |  |  | 46d | 0d |  | QTS-PHX3 DC1 - 6 day w/ Holidays | Level 2 | IGMP | Sean Waisner | Construction | 01ADMIN | Performance Contracting, Inc. |
| QTS-102720 |  | Zone 3 Gridlines 30-41 Corridor 2307 // Prime & Paint Corridor Wall - EG Side - Remaining | 2d | 2026-02-02 | 2026-02-03 | QTS-102700 |  |  |  |  | 41d | 9d |  | QTS-PHX3 DC1 - 6 day w/ Holidays | Level 2 | IGMP | Sean Waisner | Construction | 01ADMIN | Pennington Painting Company, LLC |
| QTS-1003780 |  | Zone 3 Gridlines 30-41 Corridor 2307 // Prime & Paint Exterior Wall - Remaining | 2d | 2026-02-03 | 2026-02-04 | QTS-1003790 |  |  |  |  | 55d | 3d |  | QTS-PHX3 DC1 - 6 day w/ Holidays | Level 2 | IGMP | Sean Waisner | Construction | 01ADMIN | Pennington Painting Company, LLC |
| QTS-102730 |  | Zone 3 Gridlines 30-41 Corridor 2307 // Prime & Paint Corridor Walls - Corridor Side - Remaining | 2d | 2026-02-06 | 2026-02-07 | QTS-102710 |  |  |  |  | 46d | 0d |  | QTS-PHX3 DC1 - 6 day w/ Holidays | Level 2 | IGMP | Sean Waisner | Construction | 01ADMIN | Pennington Painting Company, LLC |
| QTS-24641 |  | Zone 3 Gridlines 30-41 Corridor 2307 // Install Light Fixtures On Walls | 8d | 2026-02-09 | 2026-02-17 | QTS-102730 |  |  |  |  | 46d | 38d |  | QTS-PHX3 DC1 - 6 day w/ Holidays | Level 2 | IGMP | Scott Masterson | Construction |  | Rosendin Electric, Inc |
| QTS-24651 |  | Zone 3 Gridlines 30-41 Corridor 2307 // Install Fire Alarm Devices | 4d | 2026-02-09 | 2026-02-12 | QTS-102730 |  |  |  |  | 50d | 42d |  | QTS-PHX3 DC1 - 6 day w/ Holidays | Level 2 | IGMP | Scott Masterson | Construction |  |  |
| QTS-25771 |  | Zone 3 Gridlines 30-41 Corridor 2307 // Install Wall Base | 2d | 2026-02-09 | 2026-02-10 | QTS-1003780, QTS-102730 |  |  |  |  | 52d | 44d |  | QTS-PHX3 DC1 - 6 day w/ Holidays | Level 2 | IGMP | Sean Waisner | Construction | 01ADMIN |  |
| QTS-1003760 |  | Zone 3 Gridlines 30-41 Corridor 2307 // Tape & Finish Drywall on Corridor Wall - EG Side - Top Out | 4d | 2026-02-10 | 2026-02-13 | QTS-102670 |  |  |  |  | 31d | 0d |  | QTS-PHX3 DC1 - 6 day w/ Holidays | Level 2 | IGMP | Sean Waisner | Construction | 01ADMIN | Performance Contracting, Inc. |
| QTS-1003770 |  | Zone 3 Gridlines 30-41 Corridor 2307 // Prime & Paint Corridor Wall - EG Side - Top Out | 2d | 2026-02-14 | 2026-02-16 | QTS-1003760 |  |  |  |  | 31d | 0d |  | QTS-PHX3 DC1 - 6 day w/ Holidays | Level 2 | IGMP | Sean Waisner | Construction | 01ADMIN | Pennington Painting Company, LLC |
| QTS-23631 |  | Zone 3 Gridlines 30-41 Corridor 2307 // Rough Overhead Ductwork Gridlines 30-37 | 7d | 2026-02-17 | 2026-02-24 | QTS-1003770, QTS-22201, QTS-1001010 |  |  |  |  | 31d | 0d |  | QTS-PHX3 DC1 - 6 day w/ Holidays | Level 2 | IGMP | Dave Wiltberger | Construction |  | Bel-Aire Mechanical, LLC |
| QTS-22921 |  | Zone 3 Gridlines 30-41 Corridor 2307 // Rough Overhead Conduit | 5d | 2026-02-25 | 2026-03-02 | QTS-22741 SS+3d, QTS-102720, QTS-22201, QTS-23631 |  |  |  |  | 31d | 0d |  | QTS-PHX3 DC1 - 6 day w/ Holidays | Level 2 | IGMP | Scott Masterson | Construction |  | Rosendin Electric, Inc |
| QTS-24731 |  | Zone 3 Gridlines 30-41 Corridor 2307 // Install Cable Tray | 4d | 2026-03-03 | 2026-03-06 | QTS-22921 |  |  |  |  | 31d | 23d |  | QTS-PHX3 DC1 - 6 day w/ Holidays | Level 2 | IGMP | Scott Masterson | Construction |  | E2 Optics, LLC |

Notes:
- QTS-21251: allucent_notes_20251202_153722: Zack Goertz on 2025-12-01 10:36: Zone 3 is not a priority right now / allucent_notes_20251209_203830: Zack Goertz on 2025-12-01 10:36: Zone 3 is not a priority right now / allucent_notes_20251216_165335: Zack Goertz on 2025-12-01 10:36: Zone 3 is not a priority right now / allucent_notes: 2025-12-01 10:36 - User: Zack Goertz - Date Added: 2025-12-01 10:36 - Note: Zone 3 is not a priority right now
- QTS-21761: allucent_notes_20251230_164549: Jason Johnston on 2025-12-30 16:40: No update / allucent_notes: 2025-12-30 16:40 - User: Jason Johnston - Date Added: 2025-12-30 16:40 - Note: No update
- QTS-20441: allucent_notes_20251230_164549: Scott Masterson on 2025-10-21 11:10: Layton needs to push these areas with REI. REI has had focus on other areas and REI needs to make up some time to get these areas caught up. / Scott Masterson on 2025-10-21 11:10: REI has been focus in Other areas and need to get caught up here. The Fan wall created a bit of shortage and out of sequence. / allucent_notes_20251021_145627: Scott Masterson on 2025-10-21 11:10: Layton needs to push these areas with REI. REI has had focus on other areas and REI needs to make up some time to get these areas caught up. / Scott Masterson on 2025-10-21 11:10: REI has been focus in Other areas and need to get caught up here. The Fan wall created a bit of shortage and out of sequence. / allucent_notes_20251027_224008: Scott Masterson on 2025-10-21 11:10: Layton needs to push these areas with REI. REI has had focus on other areas and REI needs to make up some time to get these areas caught up. / Scott Masterson on 2025-10-21 11:10: REI has been focus in Other areas and need to get caught up here. The Fan wall created a bit of shortage and out of sequence. / allucent_notes: 2025-10-21 11:10 - User: Scott Masterson - Date Added: 2025-10-21 11:10 - Note: Layton needs to push these areas with REI. REI has had focus on other areas and REI needs to make up some time to get these areas caught up. / 2025-10-21 11:10 - User: Scott
- QTS-1001020: allucent_notes_20251230_164549: Jason Johnston on 2025-12-16 07:51: Man power reallocated to BOH. / allucent_notes_20251202_153722: Zack Goertz on 2025-12-01 10:36: Zone 3 is not a priority right now / allucent_notes_20251209_203830: Zack Goertz on 2025-12-01 10:36: Zone 3 is not a priority right now / allucent_notes_20251216_165335: Jason Johnston on 2025-12-16 07:51: Man power reallocated to BOH. / allucent_notes: 2025-12-16 07:51 - User: Jason Johnston - Date Added: 2025-12-16 07:51 - Note: Man power reallocated to BOH.
- QTS-102700: allucent_notes_20251202_153722: Zack Goertz on 2025-12-01 10:37: Zone 3 is not a priority right now / allucent_notes: 2025-12-01 10:37 - User: Zack Goertz - Date Added: 2025-12-01 10:37 - Note: Zone 3 is not a priority right now
- QTS-1003790: allucent_notes_20251230_164549: Jason Johnston on 2025-12-30 16:40: No update / allucent_notes: 2025-12-30 16:40 - User: Jason Johnston - Date Added: 2025-12-30 16:40 - Note: No update
- QTS-102710: allucent_notes_20251202_153722: Zack Goertz on 2025-12-01 10:37: Zone 3 is not a priority right now / allucent_notes: 2025-12-01 10:37 - User: Zack Goertz - Date Added: 2025-12-01 10:37 - Note: Zone 3 is not a priority right now
- QTS-102720: allucent_notes_20251202_153722: Zack Goertz on 2025-12-01 10:37: Zone 3 is not a priority right now / allucent_notes: 2025-12-01 10:37 - User: Zack Goertz - Date Added: 2025-12-01 10:37 - Note: Zone 3 is not a priority right now
- QTS-1003760: allucent_notes_20251202_153722: Zack Goertz on 2025-12-01 10:37: Zone 3 is not a priority right now / allucent_notes: 2025-12-01 10:37 - User: Zack Goertz - Date Added: 2025-12-01 10:37 - Note: Zone 3 is not a priority right now
- QTS-1003770: allucent_notes_20251202_153722: Zack Goertz on 2025-12-01 10:37: Zone 3 is not a priority right now / allucent_notes: 2025-12-01 10:37 - User: Zack Goertz - Date Added: 2025-12-01 10:37 - Note: Zone 3 is not a priority right now

| ID | WBS | Activity | Duration | Start | Finish | Predecessors | Complete | Remaining | Planned start | Planned finish | Total float | Free float | Constraint | Calendar | Level | Location | Project Section-1 | Baseline | Layton Responsible Party | Project Section | Allucent CSI Group | Subcontractor |
| --- | --- | --- | --- | --- | --- | --- | --- | --- | --- | --- | --- | --- | --- | --- | --- | --- | --- | --- | --- | --- | --- | --- |
|  | 3 | **Data Hall 2100 (9MW)** |  | 2025-01-17 | 2026-03-17 |  |  |  |  |  |  |  |  |  |  |  |  |  |  |  |  |  |
| QTS-19841 |  | DH 2100 // Prime & Paint Exposed Structure | 10d | 2025-07-24 A | 2025-08-06 A | QTS-19811 SS+3d, QTS-1033, QTS-46921 | 100% |  |  |  |  |  |  |  | Level 2 | DH2100 | Construction | IGMP | Doug Hayes | Construction | 01ADMIN |  |
| QTS-20921 |  | DH 2100 // Install Fire Sprinkler | 8d | 2025-08-07 A | 2025-08-27 A | QTS-19841 | 100% |  | 2025-08-07 | 2025-08-18 |  |  |  |  | Level 2 | DH2100 | Construction | IGMP | Dave Wiltberger | Construction | 01ADMIN |  |
| QTS-21471 |  | DH 2100 // Install Fire Caulking | 3d | 2025-08-12 A | 2025-08-20 A | QTS-19841 | 100% |  | 2025-08-12 | 2025-08-14 |  |  |  |  | Level 2 | DH2100 | Construction | IGMP | Doug Hayes | Construction | 01ADMIN |  |
| QTS-21461 |  | DH 2100 // Establish Control & Layout Walls | 3d | 2025-08-25 A | 2025-08-27 A | QTS-19841, QTS-21471, QTS-25441 | 100% |  | 2025-08-27 | 2025-08-29 |  |  |  |  | Level 2 | DH2100 | Construction | IGMP | Doug Hayes | Construction | 01ADMIN |  |
| QTS-21801 |  | DH 2100 // Perimeter Insulation | 7d | 2025-08-28 A | 2025-09-05 A | QTS-21471, QTS-21461 | 100% |  | 2025-08-28 | 2025-09-08 |  |  |  |  | Level 2 | DH2100 | Construction | IGMP | Ron Carroll | Construction | 01ADMIN |  |
|  | 3 | **Data Hall 2100** |  | 2025-01-17 | 2026-03-17 |  |  |  |  |  |  |  |  |  |  |  |  |  |  |  |  |  |
| QTS-22101 |  | DH 2100 // Frame Data Hall / Corridor Wall 2010 (West) | 5d | 2025-09-17 A | 2025-09-23 A | QTS-21471, QTS-20771 | 100% |  |  |  |  |  |  |  | Level 2 | DH2100 | Construction | IGMP | Doug Hayes | Construction | 01ADMIN |  |
|  | 1 | **RFI #543** |  | 2025-09-15 | 2025-09-18 |  |  |  |  |  |  |  |  |  |  |  |  |  |  |  |  |  |
| QTS- 255211 |  | RFI #543 Submitted | 2d | 2025-09-15 A | 2025-09-16 A | QTS-1371 SS | 100% |  |  |  |  |  |  |  |  |  |  |  |  |  |  |  |
| QTS- 255221 |  | RFI #543 Resolved | 2d | 2025-09-17 A | 2025-09-18 A | QTS- 255211 | 100% |  |  |  |  |  |  |  |  |  |  |  |  |  |  |  |
|  | 2 | **Remaining Work** |  | 2025-01-17 | 2026-03-17 |  |  |  |  |  |  |  |  |  |  |  |  |  |  |  |  |  |
| QTS-23751 |  | DH 2100 // Install VESDA | 10d | 2025-01-17 A | 2025-01-17 A | QTS-23561 SS+3d | 100% |  | 2025-12-18 | 2026-01-07 |  |  |  |  | Level 2 | DH2100 | Construction | IGMP | Scott Masterson | Construction | 01ADMIN | Rosendin Electric, Inc |
| QTS-22391 |  | DH 2100 // Install Hollow Metal Frames (West) | 1d | 2025-10-27 A | 2025-11-05 A | QTS-22101 | 100% |  | 2025-10-27 | 2025-10-27 |  |  |  |  | Level 2 | DH2100 | Construction | IGMP | Doug Hayes | Construction | 01ADMIN |  |
| QTS-22791 |  | DH 2100 // Hang Drywall (West) - Corridor Side | 2d | 2025-11-06 A | 2025-11-07 A | QTS-22101, QTS-22391, QTS-20771 | 100% |  |  |  |  |  |  |  | Level 2 | DH2100 | Construction | IGMP | Doug Hayes | Construction | 01ADMIN |  |
| QTS-101750 |  | DH 2100 // Tape & Finish Drywall (West) - Corridor Side | 5d | 2025-11-12 A | 2025-12-05 A | QTS-22791 | 100% |  | 2025-11-10 | 2025-11-14 |  |  |  |  | Level 2 | DH2100 | Construction | IGMP | Sean Waisner | Construction | 01ADMIN |  |
| QTS-22091 |  | DH 2100 // Frame Data Hall / Corridor Wall 2017-2018 (East) | 5d | 2025-11-14 A | 2025-11-18 A | QTS-21461, QTS-20921, QTS-21471, QTS-21801, QTS-20771, QTS-22101 | 100% |  | 2025-11-10 | 2025-11-14 |  |  |  |  | Level 2 | DH2100 | Construction | IGMP | Doug Hayes | Construction | 01ADMIN |  |
| QTS-102630 |  | DH 2100 // Paint Walls (West) - Corridor Side | 2d | 2025-12-10 A | 2025-12-11 A | QTS-101750 | 100% |  |  |  |  |  |  |  | Level 2 | DH2100 | Construction | IGMP | Sean Waisner | Construction | 01ADMIN |  |
| QTS-23561 |  | DH 2100 // Install Structural Ceiling Grid - QCool | 10d | 2025-12-15 A | 2025-12-31 A | QTS-22091 | 100% |  | 2025-12-17 | 2026-01-06 |  |  |  |  | Level 2 | DH2100 | Construction | IGMP | Sean Waisner | Construction | 01ADMIN |  |
| QTS-22381 |  | DH 2100 // Rough In-Wall Electrical (West) | 5d | 2026-01-05 A | 2026-01-06 A | QTS-22101, QTS-38981, QTS-39101 | 100% |  | 2026-01-05 | 2026-01-09 |  |  |  | QTS-PHX3 DC1 - 6 day w/ Holidays | Level 2 | DH2100 | Construction | IGMP | Scott Masterson | Construction | 01ADMIN | Rosendin Electric, Inc |
| QTS-101760 |  | DH 2100 // Vapor Barrier & Insulation (West) | 2d | 2026-01-07 A | 2026-01-08 A | QTS-101750, QTS-22381 | 100% |  | 2026-01-10 | 2026-01-12 |  |  |  | QTS-PHX3 DC1 - 6 day w/ Holidays | Level 2 | DH2100 | Construction | IGMP | Sean Waisner | Construction | 01ADMIN | Performance Contracting, Inc. |
| QTS-22411 |  | DH 2100 // Install Hollow Metal Frames (East) - 14x14 Leave Out | 1d | 2026-01-07 A | 2026-01-07 A | QTS-22091, QTS-101780 | 100% |  |  |  |  |  |  | QTS-PHX3 DC1 - 6 day w/ Holidays | Level 2 | DH2100 | Construction | IGMP | Sean Waisner | Construction | 01ADMIN | Performance Contracting, Inc. |
| QTS-101770 |  | DH 2100 // Hang Drywall (West) - Data Hall Side | 2d | 2026-01-09 A | 2026-01-10 A | QTS-101760, QTS-22701 | 100% |  |  |  |  |  |  | QTS-PHX3 DC1 - 6 day w/ Holidays | Level 2 | DH2100 | Construction | IGMP | Sean Waisner | Construction | 01ADMIN | Performance Contracting, Inc. |
| QTS-22901 |  | DH 2100 // Tape, & Finish Drywall (West) - Data Hall Side | 5d | 2026-01-09 A | 2026-01-14 | QTS-22791, QTS-101770 | 100% | 0d |  |  | 19d | 0d |  | QTS-PHX3 DC1 - 6 day w/ Holidays | Level 2 | DH2100 | Construction | IGMP | Sean Waisner | Construction | 01ADMIN | Performance Contracting, Inc. |
| QTS-22401 |  | DH 2100 // Rough In-Wall Electrical (East) | 5d | 2026-01-12 A | 2026-01-14 | QTS-22381 SS | 100% | 0d | 2026-01-12 | 2026-01-16 | 37d | 0d |  | QTS-PHX3 DC1 - 6 day w/ Holidays | Level 2 | DH2100 | Construction | IGMP | Scott Masterson | Construction | 01ADMIN | Rosendin Electric, Inc |
| QTS-22701 |  | DH 2100 // In Wall Inspection for Data Hall Wall (West) | 1d | 2026-01-12 A | 2026-01-12 A | QTS-22381, QTS-22381 FF | 100% |  |  |  |  |  |  | QTS-PHX3 DC1 - 6 day w/ Holidays | Level 2 | DH2100 | Construction | IGMP | Scott Masterson | Construction | 01ADMIN | Bel-Aire Mechanical, LLC |
| QTS-1000530 |  | DH 2100 // Install Overhead Conduit - Electrical | 5d | 2026-01-14 | 2026-01-20 | QTS-120000, QTS-23561 |  |  |  |  | 13d | 0d |  | QTS-PHX3 DC1 - 6 day w/ Holidays | Level 2 | DH2100 | Construction | IGMP | Scott Masterson | Construction | 01ADMIN |  |
| QTS-101790 |  | DH 2100 // Top Out Data Hall / Corridor Wall 2017-2018 (East) | 3d | 2026-01-14 | 2026-01-16 | QTS-22091 |  |  |  |  | 34d | 0d | start on or after 2026-01-05 | QTS-PHX3 DC1 - 6 day w/ Holidays | Level 2 | DH2100 | Construction | IGMP | Sean Waisner | Construction | 01ADMIN | Performance Contracting, Inc. |
| QTS-101860 |  | DH 2100 // Hang Drywall Data Hall / Corridor Wall 2017-2018 (East) - 14x14 Leave Outs | 1d | 2026-01-14 | 2026-01-14 | QTS-101780 |  |  |  |  | 53d | 0d |  | QTS-PHX3 DC1 - 6 day w/ Holidays | Level 2 | DH2100 | Construction | IGMP | Sean Waisner | Construction | 01ADMIN | Performance Contracting, Inc. |
| QTS-23171 |  | DH 2100 // Paint Walls (West) - Data Hall Side | 2d | 2026-01-14 | 2026-01-15 | QTS-22791, QTS-22901 |  |  |  |  | 19d | 0d |  | QTS-PHX3 DC1 - 6 day w/ Holidays | Level 2 | DH2100 | Construction | IGMP | Sean Waisner | Construction | 01ADMIN | Pennington Painting Company, LLC |
| QTS-24171 |  | DH 2100 // Install Overhead Lighting | 10d | 2026-01-14 | 2026-01-26 | QTS-23561, QTS-23751 FF+2d |  |  |  |  | 36d | 0d |  | QTS-PHX3 DC1 - 6 day w/ Holidays | Level 2 | DH2100 | Construction | IGMP | Scott Masterson | Construction | 01ADMIN | Rosendin Electric, Inc |
| QTS-101780 |  | DH 2100 // Frame Data Hall / Corridor Wall 2017-2018 (East) - 14x14 Leave Outs | 1d | 2026-01-15 A | 2026-01-15 A | QTS-23611, QTS-46421, QTS-23831, QTS - 2600 | 100% |  |  |  |  |  |  | QTS-PHX3 DC1 - 6 day w/ Holidays | Level 2 | DH2100 | Construction | IGMP | Sean Waisner | Construction | 01ADMIN | Performance Contracting, Inc. |
| QTS-101870 |  | DH 2100 // Tape & Finish Drywall Data Hall / Corridor Wall 2017-2018 (East) - 14x14 Leave Outs | 5d | 2026-01-15 | 2026-01-21 | QTS-101860 |  |  |  |  | 53d | 0d |  | QTS-PHX3 DC1 - 6 day w/ Holidays | Level 2 | DH2100 | Construction | IGMP | Sean Waisner | Construction | 01ADMIN | Performance Contracting, Inc. |
| QTS-1001270 |  | DH 2100 // In Wall Inspection for Data Hall Wall (East) | 1d | 2026-01-16 A | 2026-01-16 A | QTS-22401 | 100% |  |  |  |  |  |  | QTS-PHX3 DC1 - 6 day w/ Holidays | Level 2 | DH2100 | Construction | IGMP | Scott Masterson | Construction | 01ADMIN | Bel-Aire Mechanical, LLC |
| QTS-23321 |  | DH 2100 // Install Telecom Sleeves | 3d | 2026-01-16 | 2026-01-20 | QTS-102630 FF+1d, QTS-120000, QTS-23171 |  |  |  |  | 37d | 0d |  | QTS-PHX3 DC1 - 6 day w/ Holidays | Level 2 | DH2100 | Construction | IGMP | Scott Masterson | Construction | 01ADMIN | Rosendin Electric, Inc |
| QTS-1002230 |  | DH 2100 // Install Structural Ceiling Grid - Outside of Qcools | 10d | 2026-01-17 | 2026-01-29 | QTS-23351 |  |  |  |  | 32d | 0d |  | QTS-PHX3 DC1 - 6 day w/ Holidays | Level 2 | DH2100 | Construction | IGMP | Sean Waisner | Construction | 01ADMIN | Performance Contracting, Inc. |
| QTS-101800 |  | DH 2100 // One Side Data Hall / Corridor Wall 2017-2018 (East) - Data Hall Side | 3d | 2026-01-17 | 2026-01-21 | QTS-101790, QTS-1001270 |  |  |  |  | 34d | 0d |  | QTS-PHX3 DC1 - 6 day w/ Holidays | Level 2 | DH2100 | Construction | IGMP | Sean Waisner | Construction | 01ADMIN | Performance Contracting, Inc. |
| QTS-1000540 |  | DH 2100 // Install Overhead Conduit - Controls | 5d | 2026-01-21 | 2026-01-26 | QTS-1000530 SS, QTS-120000, QTS-1000530 |  |  |  |  | 13d | 0d |  | QTS-PHX3 DC1 - 6 day w/ Holidays | Level 2 | DH2100 | Construction | IGMP | Sean Waisner | Construction | 01ADMIN |  |
| QTS-24991 |  | DH 2100 // Install Ceiling Tile | 7d | 2026-01-21 | 2026-01-28 | QTS-24171 FF+2d, QTS-23321 |  |  |  |  | 37d | 35d |  | QTS-PHX3 DC1 - 6 day w/ Holidays | Level 2 | DH2100 | Construction | IGMP | Sean Waisner | Construction |  | Performance Contracting, Inc. |
| QTS-101810 |  | DH 2100 // Insulate & Vapor Barrier Data Hall / Corridor Wall 2017-2018 (East) | 2d | 2026-01-22 | 2026-01-23 | QTS-101800 |  |  |  |  | 34d | 0d |  | QTS-PHX3 DC1 - 6 day w/ Holidays | Level 2 | DH2100 | Construction | IGMP | Sean Waisner | Construction | 01ADMIN | Performance Contracting, Inc. |
| QTS-101880 |  | DH 2100 // Paint Data Hall / Corridor Wall 2017-2018 (East) - 14x14 Leave Outs | 1d | 2026-01-22 | 2026-01-22 | QTS-101870 |  |  |  |  | 53d | 46d |  | QTS-PHX3 DC1 - 6 day w/ Holidays | Level 2 | DH2100 | Construction | IGMP | Sean Waisner | Construction | 01ADMIN | Pennington Painting Company, LLC |
| QTS-101820 |  | DH 2100 // Tape, & Finish Drywall (East) - Data Hall Side | 5d | 2026-01-24 | 2026-01-29 | QTS-101810 |  |  |  |  | 34d | 0d |  | QTS-PHX3 DC1 - 6 day w/ Holidays | Level 2 | DH2100 | Construction | IGMP | Sean Waisner | Construction | 01ADMIN | Performance Contracting, Inc. |
| QTS-25001 |  | DH 2100 // Install Fire Sprinkler Heads - Above QCool | 3d | 2026-01-27 | 2026-01-29 | QTS-24171 |  |  |  |  | 36d | 34d |  | QTS-PHX3 DC1 - 6 day w/ Holidays | Level 2 | DH2100 | Construction | IGMP | Dave Wiltberger | Construction |  | Olympic West Fire Protection |
| QTS-1002240 |  | DH 2100 // Install VESDA - Outside of Qcools | 5d | 2026-01-30 | 2026-02-04 | QTS-1002230 |  |  |  |  | 32d | 0d |  | QTS-PHX3 DC1 - 6 day w/ Holidays | Level 2 | DH2100 | Construction | IGMP | Scott Masterson | Construction |  | Rosendin Electric, Inc |
| QTS-22801 |  | DH 2100 // Hang Drywall (East) - Corridor Side | 2d | 2026-01-30 | 2026-01-31 | QTS-22401, QTS-22411, QTS-22701, QTS-20771, QTS-101820 |  |  |  |  | 34d | 0d |  | QTS-PHX3 DC1 - 6 day w/ Holidays | Level 2 | DH2100 | Construction | IGMP | Sean Waisner | Construction | 01ADMIN | Performance Contracting, Inc. |
| QTS-23181 |  | DH 2100 // Paint Walls (East) - Data Hall Side | 1d | 2026-01-30 | 2026-01-30 | QTS-101820 |  |  |  |  | 35d | 33d |  | QTS-PHX3 DC1 - 6 day w/ Holidays | Level 2 | DH2100 | Construction | IGMP | Sean Waisner | Construction | 01ADMIN | Pennington Painting Company, LLC |
| QTS-1002250 |  | DH 2100 // Install Overhead Lighting - Outside of Qcools | 5d | 2026-02-02 | 2026-02-06 | QTS-1002240 FF+2d |  |  |  |  | 32d | 0d |  | QTS-PHX3 DC1 - 6 day w/ Holidays | Level 2 | DH2100 | Construction | IGMP | Scott Masterson | Construction |  | Rosendin Electric, Inc |
| QTS-22911 |  | DH 2100 // Tape, & Finish Drywall (East) - Corridor Side | 5d | 2026-02-02 | 2026-02-06 | QTS-22801 |  |  |  |  | 34d | 0d |  | QTS-PHX3 DC1 - 6 day w/ Holidays | Level 2 | DH2100 | Construction | IGMP | Sean Waisner | Construction | 01ADMIN | Performance Contracting, Inc. |
| QTS-1002260 |  | DH 2100 // Install Fire Sprinkler Heads - Outside of Qcools | 3d | 2026-02-07 | 2026-02-10 | QTS-1002250 |  |  |  |  | 32d | 30d |  | QTS-PHX3 DC1 - 6 day w/ Holidays | Level 2 | DH2100 | Construction | IGMP | Dave Wiltberger | Construction |  | Olympic West Fire Protection |
| QTS-101890 |  | DH 2100 // Paint Walls (East) - Corridor Side | 1d | 2026-02-07 | 2026-02-07 | QTS-22911 |  |  |  |  | 34d | 32d |  | QTS-PHX3 DC1 - 6 day w/ Holidays | Level 2 | DH2100 | Construction | IGMP | Sean Waisner | Construction | 01ADMIN | Pennington Painting Company, LLC |
| QTS-25521 |  | DH 2100 // Install Temporary Hot Aisle Containment (QCool) | 6d | 2026-03-11 | 2026-03-17 | DC1-DH2100-TAB-1000, QTS-24991, QTS-25001, QTS-23181 |  |  |  |  | 2d | 0d |  | QTS-PHX3 DC1 - 6 day w/ Holidays | Level 2 | DH2100 | Construction | IGMP | Sean Waisner | Construction |  | Performance Contracting, Inc. |

Notes:
- QTS-20921: allucent_notes: David Wiltberger on 2025-08-19 09:08: TFO changes impact finishing / allucent_notes: 2025-08-19 09:08 - User: David Wiltberger - Date Added: 2025-08-19 09:08 - Note: TFO changes impact finishing / 2025-08-26 06:08 - User: David Wiltberger - Date Added: 2025-08-26 06:08 - Note: had tpo move piping due to conflicts
- QTS-21471: allucent_notes: Zack Goertz on 2025-08-05T18:31:37.247Z: We are changing the seqence of this task. We will be polishing floors towards the end of the job. / allucent_notes: 2025-08-05T18:31:37.247Z - User: Zack Goertz - Date Added: 2025-08-05T18:31:37.247Z - Note: We are changing the seqence of this task. We will be polishing floors towards the end of the job. / 2025-08-19 14:08 - User: Zack Goertz - Date Added: 2025-08-19
- QTS-21461: allucent_notes: Zack Goertz on 2025-08-19 14:08: Issue in schedule. / allucent_notes: 2025-08-19 14:08 - User: Zack Goertz - Date Added: 2025-08-19 14:08 - Note: Issue in schedule.
- QTS-21801: allucent_notes: Jason Johnston on 2025-09-02 13:09: Pulled in due to increased shift duration for installers. / allucent_notes: 2025-09-02 13:09 - User: Jason Johnston - Date Added: 2025-09-02 13:09 - Note: Pulled in due to increased shift duration for installers.
- QTS-23751: allucent_notes_20251230_164549: David Wiltberger on 2025-12-30 14:58: Need to install ceiling grid first / David Wiltberger on 2025-12-30 15:02: Same As Start / allucent_notes: 2025-12-30 14:58 - User: David Wiltberger - Date Added: 2025-12-30 14:58 - Note: Need to install ceiling grid first / 2025-12-30 15:02 - User: David Wiltberger - Date Added: 2025-12-30 15:02 - Note: Same As Start
- QTS-22391: allucent_notes_20251014_152335: Zack Goertz on 2025-09-30T21:44:03.756Z: We have an issue with the doors. We do not have any HM Door frames for DH / Jason Johnston on 2025-10-08 08:10: not done / Jason Johnston on 2025-10-14 15:10: Move until equipment set in 2100 is complete / allucent_notes_20251021_145627: Zack Goertz on 2025-09-30T21:44:03.756Z: We have an issue with the doors. We do not have any HM Door frames for DH / Jason Johnston on 2025-10-08 08:10: not done / Jason Johnston on 2025-10-14 15:10: Move until equipment set in 2100 is complete / Jake Shimmin on 2025-10-21 08:10: door frames to arrive 10/27 / allucent_notes_20251027_224008: Zack Goertz on 2025-09-30T21:44:03.756Z: We have an issue with the doors. We do not have any HM Door frames for DH / Jason Johnston on 2025-10-08 08:10: not done / Jason Johnston on 2025-10-14 15:10: Move until equipment set in 2100 is complete / Jake Shimmin on 2025-10-21 08:10: door frames to arrive 10/27 / Jake Shimmin on 2025-10-27 10:10: Waiting on door frame delivery. / allucent_notes_20251028_163138: Zack Goertz on 2025-09-30T21:44:03.756Z: We have an issue with the doors. We do not have any HM Door frames for DH / Jason Johnston on 2025-10-08 08:10: not done / Jason Johnston on 2025-10-14 15:10: Move until equipment set in 2100 is complete / Jake Shimmin on 2025-10-21 08:10: door frames to arrive 10/27 / Jake Shimmin on 2025-10-27 10:10: Waiting on door frame delivery. / allucent_notes_20251104_160200: Zack Goertz on 2025-09-30T21:44:03.756Z: We have an issue with the doors. We do not have any HM Door frames for DH / Jason Johnston on 2025-10-08 08:10: not done / Jason Johnston on 2025-10-14 15:10: Move until equipment set in 2100 is complete / Jake Shimmin on 2025-10-21 08:10: door frames to arrive 10/27 / Jake Shimmin on 2025-10-27 10:10: Waiting on door frame delivery. / Jason Johnston on 2025-11-04 12:11: waiting on delivery and installation. / allucent_notes_20251111_182405: Zack Goertz on 2025-09-30T21:44:03.756Z: We have an issue with the doors. We do not have any HM Door frames for DH / Jason Johnston on 2025-10-08 08:10: not done / Jason Johnston on 2025-10-14 15:10: Move until equipment set in 2100 is complete / Jake Shimmin on 2025-10-21 08:10: door frames to arrive 10/27 / Jake Shimmin on 2025-10-27 10:10: Waiting on door frame delivery. / Jason Johnston on 2025-11-04 12:11: waiting on delivery and installation. / allucent_notes_20251118_192630: Zack Goertz on 2025-09-30T21:44:03.756Z: We have an issue with the doors. We do not have any HM Door frames for DH / Jason Johnston on 2025-10-08 08:10: not done / Jason Johnston on 2025-10-14 15:10: Move until equipment set in 2100 is complete / Jake Shimmin on 2025-10-21 08:10: door frames to arrive 10/27 / Jake Shimmin on 2025-10-27 10:10: Waiting on door frame delivery. / Jason Johnston on 2025-11-04 12:11: waiting on delivery and installation. / allucent_notes: 2025-09-30T21:44:03.756Z - User: Zack Goertz - Date Added: 2025-09-30T21:44:03.756Z - Note: We have an issue with the doors. We do not have any HM Door frames for DH / 2025-10-08 08:10 - User: Jason Johnston - Date Added: 2025-10-08 08:10 - Note: not don
- QTS-22791: allucent_notes_20251111_182405: Jason Johnston on 2025-11-10 14:11: Delayed finish / allucent_notes_20251118_192630: Jason Johnston on 2025-11-10 14:11: Delayed finish / allucent_notes: 2025-11-10 14:11 - User: Jason Johnston - Date Added: 2025-11-10 14:11 - Note: Delayed finish
- QTS-101750: allucent_notes_20251111_182405: Jason Johnston on 2025-11-11 16:11: Tapers are behind / allucent_notes_20251118_192630: Jason Johnston on 2025-11-11 16:11: Tapers are behind / allucent_notes_20251202_153722: Jason Johnston on 2025-11-11 16:11: Tapers are behind / Luis Vea on 2025-12-01 09:57: rough in is not complete, manpower for rei is not enough. / allucent_notes_20251209_203830: Jason Johnston on 2025-11-11 16:11: Tapers are behind / Luis Vea on 2025-12-01 09:57: rough in is not complete, manpower for rei is not enough. / allucent_notes: 2025-11-11 16:11 - User: Jason Johnston - Date Added: 2025-11-11 16:11 - Note: Tapers are behind / 2025-12-01 09:57 - User: Luis Vea - Date Added: 2025-12-01 09:57 - Note: rough in is not complete, manpower for rei is not enough.
- QTS-22091: allucent_notes_20251014_152335: Zack Goertz on 2025-09-08T20:45:26.651Z: Not started. PCI has been put on notice that they are behind / Jason Johnston on 2025-10-08 08:10: not done / allucent_notes_20251111_182405: Zack Goertz on 2025-09-08T20:45:26.651Z: Not started. PCI has been put on notice that they are behind / Jason Johnston on 2025-10-08 08:10: not done / Jason Johnston on 2025-11-11 16:11: Need to recover the recovery / allucent_notes_20251118_192630: Zack Goertz on 2025-09-08T20:45:26.651Z: Not started. PCI has been put on notice that they are behind / Jason Johnston on 2025-10-08 08:10: not done / Jason Johnston on 2025-11-11 16:11: Need to recover the recovery / allucent_notes: 2025-09-08T20:45:26.651Z - User: Zack Goertz - Date Added: 2025-09-08T20:45:26.651Z - Note: Not started. PCI has been put on notice that they are behind / 2025-10-08 08:10 - User: Jason Johnston - Date Added: 2025-10-08 08:10 - Note: not done / 2025-11-
- QTS-23561: allucent_notes_20251230_164549: Jason Johnston on 2025-12-16 08:30: Coordination with PCI / allucent_notes_20251216_165335: Jason Johnston on 2025-12-16 08:30: Coordination with PCI / allucent_notes: 2025-12-16 08:30 - User: Jason Johnston - Date Added: 2025-12-16 08:30 - Note: Coordination with PCI
- QTS-22381: allucent_notes_20251230_164549: David Wiltberger on 2025-09-24 03:09: No wall built yet / David Wiltberger on 2025-10-07 16:10: Wall not built / David Wiltberger on 2025-10-14 12:10: no walls / allucent_notes_20251014_152335: David Wiltberger on 2025-09-24 03:09: No wall built yet / David Wiltberger on 2025-10-07 16:10: Wall not built / David Wiltberger on 2025-10-14 12:10: no walls / allucent_notes_20251021_145627: David Wiltberger on 2025-09-24 03:09: No wall built yet / David Wiltberger on 2025-10-07 16:10: Wall not built / David Wiltberger on 2025-10-14 12:10: no walls / allucent_notes: 2025-09-24 03:09 - User: David Wiltberger - Date Added: 2025-09-24 03:09 - Note: No wall built yet / 2025-10-07 16:10 - User: David Wiltberger - Date Added: 2025-10-07 16:10 - Note: Wall not built / 2025-10-14 12:10 - User: David Wiltberger - Date Added
- QTS-22411: allucent_notes_20251014_152335: Jason Johnston on 2025-10-14 15:10: Move until equipment set in 2100 is complete / allucent_notes_20251021_145627: Jason Johnston on 2025-10-14 15:10: Move until equipment set in 2100 is complete / Jake Shimmin on 2025-10-21 08:10: Door frames to arrive 10/27 / allucent_notes_20251027_224008: Jason Johnston on 2025-10-14 15:10: Move until equipment set in 2100 is complete / Jake Shimmin on 2025-10-21 08:10: Door frames to arrive 10/27 / Jake Shimmin on 2025-10-27 10:10: Waiting on door frame delivery / allucent_notes_20251028_163138: Jason Johnston on 2025-10-14 15:10: Move until equipment set in 2100 is complete / Jake Shimmin on 2025-10-21 08:10: Door frames to arrive 10/27 / Jake Shimmin on 2025-10-27 10:10: Waiting on door frame delivery / allucent_notes_20251104_160200: Jason Johnston on 2025-10-14 15:10: Move until equipment set in 2100 is complete / Jake Shimmin on 2025-10-21 08:10: Door frames to arrive 10/27 / Jake Shimmin on 2025-10-27 10:10: Waiting on door frame delivery / Jason Johnston on 2025-11-04 12:11: being used to move equipment into DH. tie to final eq set. / allucent_notes: 2025-10-14 15:10 - User: Jason Johnston - Date Added: 2025-10-14 15:10 - Note: Move until equipment set in 2100 is complete / 2025-10-21 08:10 - User: Jake Shimmin - Date Added: 2025-10-21 08:10 - Note: Door frames to arrive 10/27 / 2025-10-27 10:10 -
- QTS-22401: allucent_notes_20251230_164549: David Wiltberger on 2025-09-24 03:09: No wall built yet / David Wiltberger on 2025-10-07 16:10: Wall not built / David Wiltberger on 2025-10-14 12:10: no walls / allucent_notes_20251014_152335: David Wiltberger on 2025-09-24 03:09: No wall built yet / David Wiltberger on 2025-10-07 16:10: Wall not built / David Wiltberger on 2025-10-14 12:10: no walls / allucent_notes_20251021_145627: David Wiltberger on 2025-09-24 03:09: No wall built yet / David Wiltberger on 2025-10-07 16:10: Wall not built / David Wiltberger on 2025-10-14 12:10: no walls / allucent_notes: 2025-09-24 03:09 - User: David Wiltberger - Date Added: 2025-09-24 03:09 - Note: No wall built yet / 2025-10-07 16:10 - User: David Wiltberger - Date Added: 2025-10-07 16:10 - Note: Wall not built / 2025-10-14 12:10 - User: David Wiltberger - Date Added
- QTS-101790: allucent_notes_20251230_164549: Luis Vea on 2025-12-01 09:58: started 11/21 / Luis Vea on 2025-12-01 09:59: incorrect last comment. wrapping the beams. should be starting next monday to topout / Jason Johnston on 2025-12-09 16:44: No update from team / allucent_notes_20251014_152335: Zack Goertz on 2025-09-08T20:45:26.651Z: Not started. PCI has been put on notice that they are behind / Jason Johnston on 2025-10-08 08:10: not done / allucent_notes_20251202_153722: Luis Vea on 2025-12-01 09:58: started 11/21 / Luis Vea on 2025-12-01 09:59: incorrect last comment. wrapping the beams. should be starting next monday to topout / allucent_notes_20251209_203830: Luis Vea on 2025-12-01 09:58: started 11/21 / Luis Vea on 2025-12-01 09:59: incorrect last comment. wrapping the beams. should be starting next monday to topout / Jason Johnston on 2025-12-09 16:44: No update from team / allucent_notes: 2025-12-01 09:58 - User: Luis Vea - Date Added: 2025-12-01 09:58 - Note: started 11/21 / 2025-12-01 09:59 - User: Luis Vea - Date Added: 2025-12-01 09:59 - Note: incorrect last comment. wrapping the beams. should be starting next monday to topout / 202
- QTS-101860: allucent_notes_20251014_152335: Zack Goertz on 2025-09-08T20:45:26.651Z: Not started. PCI has been put on notice that they are behind / Jason Johnston on 2025-10-08 08:10: not done / allucent_notes: 2025-09-08T20:45:26.651Z - User: Zack Goertz - Date Added: 2025-09-08T20:45:26.651Z - Note: Not started. PCI has been put on notice that they are behind / 2025-10-08 08:10 - User: Jason Johnston - Date Added: 2025-10-08 08:10 - Note: not done
- QTS-101780: allucent_notes_20251014_152335: Zack Goertz on 2025-09-08T20:45:26.651Z: Not started. PCI has been put on notice that they are behind / Jason Johnston on 2025-10-08 08:10: not done / allucent_notes: 2025-09-08T20:45:26.651Z - User: Zack Goertz - Date Added: 2025-09-08T20:45:26.651Z - Note: Not started. PCI has been put on notice that they are behind / 2025-10-08 08:10 - User: Jason Johnston - Date Added: 2025-10-08 08:10 - Note: not done
- QTS-101870: allucent_notes_20251014_152335: Zack Goertz on 2025-09-08T20:45:26.651Z: Not started. PCI has been put on notice that they are behind / Jason Johnston on 2025-10-08 08:10: not done / allucent_notes: 2025-09-08T20:45:26.651Z - User: Zack Goertz - Date Added: 2025-09-08T20:45:26.651Z - Note: Not started. PCI has been put on notice that they are behind / 2025-10-08 08:10 - User: Jason Johnston - Date Added: 2025-10-08 08:10 - Note: not done
- QTS-1002230: allucent_notes_20251216_165335: Jason Johnston on 2025-12-16 08:30: Coordination with PCI / allucent_notes: 2025-12-16 08:30 - User: Jason Johnston - Date Added: 2025-12-16 08:30 - Note: Coordination with PCI
- QTS-101800: allucent_notes_20251014_152335: Zack Goertz on 2025-09-08T20:45:26.651Z: Not started. PCI has been put on notice that they are behind / Jason Johnston on 2025-10-08 08:10: not done / allucent_notes: 2025-09-08T20:45:26.651Z - User: Zack Goertz - Date Added: 2025-09-08T20:45:26.651Z - Note: Not started. PCI has been put on notice that they are behind / 2025-10-08 08:10 - User: Jason Johnston - Date Added: 2025-10-08 08:10 - Note: not done
- QTS-101810: allucent_notes_20251014_152335: Zack Goertz on 2025-09-08T20:45:26.651Z: Not started. PCI has been put on notice that they are behind / Jason Johnston on 2025-10-08 08:10: not done / allucent_notes: 2025-09-08T20:45:26.651Z - User: Zack Goertz - Date Added: 2025-09-08T20:45:26.651Z - Note: Not started. PCI has been put on notice that they are behind / 2025-10-08 08:10 - User: Jason Johnston - Date Added: 2025-10-08 08:10 - Note: not done
- QTS-101880: allucent_notes_20251014_152335: Zack Goertz on 2025-09-08T20:45:26.651Z: Not started. PCI has been put on notice that they are behind / Jason Johnston on 2025-10-08 08:10: not done / allucent_notes: 2025-09-08T20:45:26.651Z - User: Zack Goertz - Date Added: 2025-09-08T20:45:26.651Z - Note: Not started. PCI has been put on notice that they are behind / 2025-10-08 08:10 - User: Jason Johnston - Date Added: 2025-10-08 08:10 - Note: not done

| ID | WBS | Activity | Duration | Start | Finish | Predecessors | Complete | Planned start | Planned finish | Calendar | Subcontractor | Level | Location | Project Section-1 | Baseline | Layton Responsible Party | Project Section | Allucent CSI Group |
| --- | --- | --- | --- | --- | --- | --- | --- | --- | --- | --- | --- | --- | --- | --- | --- | --- | --- | --- |
|  | 2 | **Gallery 2101 Mechanical** |  | 2025-08-07 | 2026-02-11 |  |  |  |  |  |  |  |  |  |  |  |  |  |
| QTS-23331 |  | DH 2100 / Mechanical Gallery 2101 // Install VESDA | 8d | 2025-08-07 A | 2025-09-19 A | QTS-19841 | 100% | 2025-08-07 | 2025-08-18 |  | Rosendin Electric, Inc | Level 2 | DH2100 | Construction | IGMP | Scott Masterson | Construction | 01ADMIN |
| QTS-44371 |  | DH 2100 / Mechanical Gallery 2101 // Install OH Mechanical Hangers | 7d | 2025-08-07 A | 2025-08-15 A | QTS-19841 | 100% |  |  |  | Bel-Aire Mechanical, LLC | Level 2 | DH2100 | Construction | IGMP | Dave Wiltberger | Construction | 01ADMIN |
| QTS-23341 |  | DH 2100 / Mechanical Gallery 2101 // Install OH Mechanical Piping | 10d | 2025-08-18 A | 2025-10-03 A | QTS-44371 | 100% | 2025-08-18 | 2025-08-29 |  | Bel-Aire Mechanical, LLC | Level 2 | DH2100 | Construction | IGMP | Dave Wiltberger | Construction | 01ADMIN |
| QTS-21811 |  | DH 2100 / Mechanical Gallery 2101 // Frame 2101-2102 Wall | 5d | 2025-09-09 A | 2025-09-19 A | QTS-21461, QTS-19271 SS | 100% | 2025-09-09 | 2025-09-15 |  |  | Level 2 | DH2100 | Construction | IGMP | Doug Hayes | Construction | 01ADMIN |
| QTS-22131 |  | DH 2100 / Mechanical Gallery 2101 // In Wall Electrical Rough for 2101-2102 Wall | 2d | 2025-10-01 A | 2025-10-02 A | QTS-38981, QTS-21811 | 100% |  |  |  | Rosendin Electric, Inc | Level 2 | DH2100 | Construction | IGMP | Scott Masterson | Construction | 01ADMIN |
| QTS-22141 |  | DH 2100 / Mechanical Gallery 2101 // Frame Fan Wall | 5d | 2025-10-13 A | 2025-10-17 A | QTS-21801, QTS-21811, QTS-22121 | 100% | 2025-10-09 | 2025-10-15 |  |  | Level 2 | DH2100 | Construction | IGMP | Doug Hayes | Construction | 01ADMIN |
| QTS-24081 |  | DH 2100 / Mechanical Gallery 2101 // Install OH Electrical, FA/ EPMS/BMS Conduit & Grounding | 10d | 2025-10-15 A | 2025-10-28 A | QTS-23341, QTS-120000 | 100% |  |  |  | Rosendin Electric, Inc | Level 2 | DH2100 | Construction | IGMP | Scott Masterson | Construction | 01ADMIN |
| QTS-22421 |  | DH 2100 / Mechanical Gallery 2101 // Hang, Tape, & Finish Drywall for 2101-2102 Wall | 8d | 2025-10-16 A | 2025-10-27 A | QTS-22231 FF | 100% |  |  |  |  | Level 2 | DH2100 | Construction | IGMP | Doug Hayes | Construction | 01ADMIN |
| QTS-22511 |  | DH 2100 / Mechanical Gallery 2101 // In Wall Electrical Rough for Fan Wall | 2d | 2025-10-20 A | 2025-10-24 A | QTS-22141, QTS-22131 | 100% | 2025-10-20 | 2025-10-21 |  | Rosendin Electric, Inc | Level 2 | DH2100 | Construction | IGMP | Scott Masterson | Construction | 01ADMIN |
| QTS-99880 |  | DH 2100 / Mechanical Gallery 2101 // Hang, Tape, & Finish Drywall for Fan Wall - MG Side | 3d | 2025-10-20 A | 2025-10-22 A | QTS-22141 | 100% |  |  |  |  |  |  |  |  |  |  | 01ADMIN |
| QTS-99890 |  | DH 2100 / Mechanical Gallery 2101 // Paint for Fan Walls - MG Side | 3d | 2025-10-22 A | 2025-10-28 A | QTS-99880 FF+2d | 100% | 2025-10-22 | 2025-10-24 |  |  |  |  |  |  |  |  | 01ADMIN |
| QTS-22231 |  | DH 2100 / Mechanical Gallery 2101 // In Wall Inspection for 2101-2102 Wall | 1d | 2025-10-23 A | 2025-10-23 A | QTS-22131 | 100% |  |  |  | Bel-Aire Mechanical, LLC | Level 2 | DH2100 | Construction | IGMP | Dave Wiltberger | Construction | 01ADMIN |
| QTS-22651 |  | DH 2100 / Mechanical Gallery 2101 // In Wall Inspection for Fan Wall | 1d | 2025-10-27 A | 2025-10-27 A | QTS-22511 | 100% |  |  |  | Bel-Aire Mechanical, LLC | Level 2 | DH2100 | Construction | IGMP | Dave Wiltberger | Construction | 01ADMIN |
| QTS-101720 |  | DH 2100 / Mechanical Gallery 2101 // Hang Drywall for 2101-2102 Wall - 12x38 Opening | 10d | 2025-10-28 A | 2025-11-14 A | QTS-22231 | 100% | 2025-10-28 | 2025-11-10 |  |  | Level 2 | DH2100 | Construction | IGMP | Doug Hayes | Construction | 01ADMIN |
| QTS-22731 |  | DH 2100 / Mechanical Gallery 2101 // Hang, Tape, & Finish Drywall for Fan Wall - DH Side | 5d | 2025-10-28 A | 2025-11-03 A | QTS-22651 | 100% |  |  |  |  | Level 2 | DH2100 | Construction | IGMP | Doug Hayes | Construction | 01ADMIN |
| QTS-23051 |  | DH 2100 / Mechanical Gallery 2101 // Paint for 2101-2102 Wall | 3d | 2025-10-28 A | 2025-10-30 A | QTS-22421 | 100% |  |  |  |  | Level 2 | DH2100 | Construction | IGMP | Doug Hayes | Construction | 01ADMIN |
| QTS-23061 |  | DH 2100 / Mechanical Gallery 2101 // Paint for Fan Walls - DH Side | 5d | 2025-11-04 A | 2025-11-12 A | QTS-22731 | 100% | 2025-11-04 | 2025-11-10 |  |  | Level 2 | DH2100 | Construction | IGMP | Doug Hayes | Construction | 01ADMIN |
| QTS-102640 |  | DH 2100 / Mechanical Gallery 2101 // Demo Basket Tray for Pipe Risers | 4d | 2025-11-05 A | 2025-11-10 A | QTS-23341 | 100% |  |  |  | Bel-Aire Mechanical, LLC | Level 2 | DH2100 | Construction | IGMP | Dave Wiltberger | Construction | 01ADMIN |
| QTS-101900 |  | DH 2100 / Mechanical Gallery 2101 // Install Pipe Risers | 10d | 2025-11-11 A | 2025-11-24 A | QTS-23341, QTS-102640 | 100% |  |  |  | Bel-Aire Mechanical, LLC | Level 2 | DH2100 | Construction | IGMP | Dave Wiltberger | Construction | 01ADMIN |
| QTS-101730 |  | DH 2100 / Mechanical Gallery 2101 // Tape and Finish Drywall for 2101-2102 Wall - 12x38 Opening | 5d | 2025-11-19 A | 2025-11-25 A | QTS-101720 | 100% |  |  |  |  | Level 2 | DH2100 | Construction | IGMP | Sean Waisner | Construction | 01ADMIN |
| QTS-101740 |  | DH 2100 / Mechanical Gallery 2101 // Paint for 2101-2102 Wall - 12x38 Opening | 2d | 2025-12-04 A | 2025-12-05 A | QTS-101730 | 100% |  |  |  |  | Level 2 | DH2100 | Construction | IGMP | Sean Waisner | Construction | 01ADMIN |
|  | 1 | **Fragnet / CRAH Assembly** |  |  |  |  |  |  |  |  |  |  |  |  |  |  |  |  |
|  | 3 | **Fragnet / RFI #751** |  | 2025-12-02 | 2025-12-12 |  |  |  |  |  |  |  |  |  |  |  |  |  |
| QTS-1001260 |  | Fragnet / DH 2100 / Mechanical Gallery 2101 // Security Screen Mesh Design Change to Tamper Proof Fasteners | 6d | 2025-12-02 A | 2025-12-09 A | QTS-1030 SS | 100% |  |  |  |  | Level 2 | DH2100 | Construction | IGMP | Sean Waisner | Construction | 01ADMIN |
| QTS-1001240 |  | Fragnet / DH 2100 / Mechanical Gallery 2101 // Confirming RFI #751 for Security Screen Tamper Proof Fasteners Submission | 1d | 2025-12-10 A | 2025-12-10 A | QTS-1001260 | 100% |  |  |  |  | Level 2 | DH2100 | Construction | IGMP | Sean Waisner | Construction | 01ADMIN |
| QTS-1001250 |  | Fragnet / DH 2100 / Mechanical Gallery 2101 // RFI #751 Tamper Proof Fasteners Procurment | 3d | 2025-12-11 A | 2025-12-12 A | QTS-1001240 | 100% | 2025-12-11 | 2025-12-13 | QTS-PHX3 DC1 - 6 day w/ Holidays | Performance Contracting, Inc. | Level 2 | DH2100 | Construction | IGMP | Sean Waisner | Construction | 01ADMIN |

Notes:
- QTS-23331: allucent_notes: David Wiltberger on 2025-08-12T17:01:33.873Z: Started Vesda FA early to get ahead odf schedule / allucent_notes: 2025-08-12T17:01:33.873Z - User: David Wiltberger - Date Added: 2025-08-12T17:01:33.873Z - Note: Started Vesda FA early to get ahead odf schedule / 2025-08-19 09:08 - User: David Wiltberger - Date Added: 2025-08-19 09:08 - Note: TFO layout impact / 2025
- QTS-44371: allucent_notes: David Wiltberger on 2025-08-12T17:00:13.412Z: Starting early access / allucent_notes: 2025-08-12T17:00:13.412Z - User: David Wiltberger - Date Added: 2025-08-12T17:00:13.412Z - Note: Starting early access
- QTS-23341: allucent_notes: David Wiltberger on 2025-09-02 10:09: BAM could not get forklift to 2nd floor when needed. Will attempt to get on 2nd floor 9-3 / allucent_notes: 2025-09-02 10:09 - User: David Wiltberger - Date Added: 2025-09-02 10:09 - Note: BAM could not get forklift to 2nd floor when needed. Will attempt to get on 2nd floor 9-3
- QTS-22141: allucent_notes_20251014_152335: Zack Goertz on 2025-10-07T21:29:11.214Z: Framing fan wall is being postponed per Dave W / Jason Johnston on 2025-10-08 08:10: not done / Jason Johnston on 2025-10-14 15:10: rain delay / allucent_notes_20251021_145627: Zack Goertz on 2025-10-07T21:29:11.214Z: Framing fan wall is being postponed per Dave W / Jason Johnston on 2025-10-08 08:10: not done / Jason Johnston on 2025-10-14 15:10: rain delay / allucent_notes: 2025-10-07T21:29:11.214Z - User: Zack Goertz - Date Added: 2025-10-07T21:29:11.214Z - Note: Framing fan wall is being postponed per Dave W / 2025-10-08 08:10 - User: Jason Johnston - Date Added: 2025-10-08 08:10 - Note: not done / 2025-10-14 15:10 - Use
- QTS-24081: allucent_notes: David Wiltberger on 2025-09-02 10:09: No required walls have been built to start installation / allucent_notes_20251014_152335: David Wiltberger on 2025-09-02 10:09: No required walls have been built to start installation / David Wiltberger on 2025-10-07 16:10: BAM not completed with Overheead and Screen wall needs to be built / allucent_notes_20251021_145627: David Wiltberger on 2025-09-02 10:09: No required walls have been built to start installation / David Wiltberger on 2025-10-07 16:10: BAM not completed with Overheead and Screen wall needs to be built / allucent_notes_20251027_224008: David Wiltberger on 2025-09-02 10:09: No required walls have been built to start installation / David Wiltberger on 2025-10-07 16:10: BAM not completed with Overheead and Screen wall needs to be built / allucent_notes_20251028_163138: David Wiltberger on 2025-09-02 10:09: No required walls have been built to start installation / David Wiltberger on 2025-10-07 16:10: BAM not completed with Overheead and Screen wall needs to be built / allucent_notes: 2025-09-02 10:09 - User: David Wiltberger - Date Added: 2025-09-02 10:09 - Note: No required walls have been built to start installation / 2025-10-07 16:10 - User: David Wiltberger - Date Added: 2025-10-07 16:10 - Note: BAM not completed with Overheead
- QTS-22421: allucent_notes_20251014_152335: Jason Johnston on 2025-10-08 08:10: not done / Jason Johnston on 2025-10-08 08:10: not done / allucent_notes_20251021_145627: Jason Johnston on 2025-10-08 08:10: not done / Jason Johnston on 2025-10-08 08:10: not done / allucent_notes_20251027_224008: Jason Johnston on 2025-10-08 08:10: not done / Jason Johnston on 2025-10-08 08:10: not done / allucent_notes: 2025-10-08 08:10 - User: Jason Johnston - Date Added: 2025-10-08 08:10 - Note: not done / 2025-10-08 08:10 - User: Jason Johnston - Date Added: 2025-10-08 08:10 - Note: not done
- QTS-22511: allucent_notes_20251021_145627: Scott Masterson on 2025-10-21 11:10: The fan walls are taking a bit longer than expected. REI will be making up for this time. / allucent_notes_20251027_224008: Scott Masterson on 2025-10-21 11:10: The fan walls are taking a bit longer than expected. REI will be making up for this time. / allucent_notes: 2025-10-21 11:10 - User: Scott Masterson - Date Added: 2025-10-21 11:10 - Note: The fan walls are taking a bit longer than expected. REI will be making up for this time.
- QTS-99890: allucent_notes_20251027_224008: Jake Shimmin on 2025-10-27 09:10: Paint delayed due to Electrical rough. / allucent_notes_20251028_163138: Jake Shimmin on 2025-10-27 09:10: Paint delayed due to Electrical rough. / allucent_notes: 2025-10-27 09:10 - User: Jake Shimmin - Date Added: 2025-10-27 09:10 - Note: Paint delayed due to Electrical rough.
- QTS-22231: allucent_notes_20251014_152335: David Wiltberger on 2025-10-07 16:10: only schedules T,TH / David Wiltberger on 2025-10-14 12:10: inspection only happens tues, thurs / allucent_notes_20251021_145627: David Wiltberger on 2025-10-07 16:10: only schedules T,TH / David Wiltberger on 2025-10-14 12:10: inspection only happens tues, thurs / David Wiltberger on 2025-10-21 13:10: Waiting on RFI #542 to correctly build the wall first / allucent_notes_20251027_224008: David Wiltberger on 2025-10-07 16:10: only schedules T,TH / David Wiltberger on 2025-10-14 12:10: inspection only happens tues, thurs / David Wiltberger on 2025-10-21 13:10: Waiting on RFI #542 to correctly build the wall first / allucent_notes: 2025-10-07 16:10 - User: David Wiltberger - Date Added: 2025-10-07 16:10 - Note: only schedules T,TH / 2025-10-14 12:10 - User: David Wiltberger - Date Added: 2025-10-14 12:10 - Note: inspection only happens tues, thurs / 2025-10-21 13:10 - User: David
- QTS-101720: allucent_notes_20251111_182405: Jason Johnston on 2025-11-11 16:11: Failed / allucent_notes_20251118_192630: Jason Johnston on 2025-11-11 16:11: Failed / allucent_notes: 2025-11-11 16:11 - User: Jason Johnston - Date Added: 2025-11-11 16:11 - Note: Failed
- QTS-23061: allucent_notes_20251111_182405: Jason Johnston on 2025-11-11 16:11: painting walls currently. / allucent_notes_20251118_192630: Jason Johnston on 2025-11-11 16:11: painting walls currently. / allucent_notes: 2025-11-11 16:11 - User: Jason Johnston - Date Added: 2025-11-11 16:11 - Note: painting walls currently.
- QTS-101900: allucent_notes_20251202_153722: Joseph Gyurko on 2025-11-25T21:28:09.670Z: Tue 11/25/2025 / All risers installed in north gallery / allucent_notes: 2025-11-25T21:28:09.670Z - User: Joseph Gyurko - Date Added: 2025-11-25T21:28:09.670Z - Note: Tue 11/25/2025All risers installed in north gallery
- QTS-101740: allucent_notes_20251202_153722: Luis Vea on 2025-12-01 10:03: starting on the 12/4 / allucent_notes_20251209_203830: Luis Vea on 2025-12-01 10:03: starting on the 12/4 / allucent_notes: 2025-12-01 10:03 - User: Luis Vea - Date Added: 2025-12-01 10:03 - Note: starting on the 12/4
- QTS-1001260: allucent_notes_20251104_160200: Jason Johnston on 2025-11-04 15:11: pushed by 12x38 / allucent_notes_20251111_182405: Jason Johnston on 2025-11-04 15:11: pushed by 12x38 / Jason Johnston on 2025-11-10 15:11: not started. / allucent_notes_20251118_192630: Jason Johnston on 2025-11-04 15:11: pushed by 12x38 / Jason Johnston on 2025-11-10 15:11: not started. / allucent_notes_20251202_153722: Jason Johnston on 2025-11-04 15:11: pushed by 12x38 / Jason Johnston on 2025-11-10 15:11: not started. / allucent_notes_20251209_203830: Jason Johnston on 2025-11-04 15:11: pushed by 12x38 / Jason Johnston on 2025-11-10 15:11: not started. / Jason Johnston on 2025-12-09 18:21: Need update from team / allucent_notes: 2025-11-04 15:11 - User: Jason Johnston - Date Added: 2025-11-04 15:11 - Note: pushed by 12x38 / 2025-11-10 15:11 - User: Jason Johnston - Date Added: 2025-11-10 15:11 - Note: not started. / 2025-12-09 18:21 - User: Jason Johnston - Date Added: 2025-12-
- QTS-1001240: allucent_notes_20251104_160200: Jason Johnston on 2025-11-04 15:11: pushed by 12x38 / allucent_notes_20251111_182405: Jason Johnston on 2025-11-04 15:11: pushed by 12x38 / Jason Johnston on 2025-11-10 15:11: not started. / allucent_notes_20251118_192630: Jason Johnston on 2025-11-04 15:11: pushed by 12x38 / Jason Johnston on 2025-11-10 15:11: not started. / allucent_notes_20251202_153722: Jason Johnston on 2025-11-04 15:11: pushed by 12x38 / Jason Johnston on 2025-11-10 15:11: not started. / allucent_notes_20251209_203830: Jason Johnston on 2025-11-04 15:11: pushed by 12x38 / Jason Johnston on 2025-11-10 15:11: not started. / Jason Johnston on 2025-12-09 18:21: Need update from team / allucent_notes: 2025-11-04 15:11 - User: Jason Johnston - Date Added: 2025-11-04 15:11 - Note: pushed by 12x38 / 2025-11-10 15:11 - User: Jason Johnston - Date Added: 2025-11-10 15:11 - Note: not started. / 2025-12-09 18:21 - User: Jason Johnston - Date Added: 2025-12-
- QTS-1001250: allucent_notes_20251230_164549: Scott Masterson on 2025-12-16 16:49: I need to verify if they have the screws but I know they are not install 100% yet. / Jason Johnston on 2025-12-30 16:41: No update / allucent_notes_20251104_160200: Jason Johnston on 2025-11-04 15:11: pushed by 12x38 / allucent_notes_20251111_182405: Jason Johnston on 2025-11-04 15:11: pushed by 12x38 / Jason Johnston on 2025-11-10 15:11: not started. / allucent_notes_20251118_192630: Jason Johnston on 2025-11-04 15:11: pushed by 12x38 / Jason Johnston on 2025-11-10 15:11: not started. / allucent_notes_20251202_153722: Jason Johnston on 2025-11-04 15:11: pushed by 12x38 / Jason Johnston on 2025-11-10 15:11: not started. / allucent_notes_20251209_203830: Jason Johnston on 2025-11-04 15:11: pushed by 12x38 / Jason Johnston on 2025-11-10 15:11: not started. / Jason Johnston on 2025-12-09 18:21: Need update from team / allucent_notes_20251216_165335: Scott Masterson on 2025-12-16 16:49: I need to verify if they have the screws but I know they are not install 100% yet. / allucent_notes: 2025-12-16 16:49 - User: Scott Masterson - Date Added: 2025-12-16 16:49 - Note: I need to verify if they have the screws but I know they are not install 100% yet. / 2025-12-30 16:41 - User: Jason Johnston - Date Added: 2025-12-30 16:41 - Note: No update

| ID | WBS | Activity | Duration | Start | Finish | Predecessors | Complete | Remaining | Planned start | Planned finish | Total float | Free float | Calendar | Subcontractor | Level | Location | Project Section-1 | Baseline | Layton Responsible Party | Project Section | Allucent CSI Group | Phase-1-1 | Notes |
| --- | --- | --- | --- | --- | --- | --- | --- | --- | --- | --- | --- | --- | --- | --- | --- | --- | --- | --- | --- | --- | --- | --- | --- |
|  | 2 | **Remaining Work** |  | 2025-11-19 | 2026-02-11 |  |  |  |  |  |  |  |  |  |  |  |  |  |  |  |  |  |  |
| QTS-46441 |  | DH 2100 / Mechanical Gallery 2101 // Set EPMS/BMS Panels | 4d | 2025-11-19 A | 2025-12-12 A | QTS-23051 | 100% |  | 2025-11-19 | 2025-11-24 |  |  |  | Rosendin Electric, Inc | Level 2 | DH2100 | Construction | IGMP | Scott Masterson | Construction | 01ADMIN |  |  |
| QTS-23611 |  | DH 2100 / Mechanical Gallery 2101 // OFCI - L2 SET IN PLACE - Eq Type # - DH CRAH - 14 units | 6d | 2025-12-04 A | 2025-12-08 A | QTS-33891, QTS-33901, QTS-33911, QTS-33921, QTS-33931, QTS-33941, QTS-33951, QTS-33961, QTS-33971, QTS-33981, QTS-33991, QTS-34001, QTS-34011, QTS-34021, QTS-23341, QTS-99890 | 100% |  | 2025-11-20 | 2025-11-26 |  |  | QTS-PHX3 DC1 - 6 day w/ Holidays | Bel-Aire Mechanical, LLC | Level 2 | DH2100 | Construction | IGMP | Dave Wiltberger | Construction | 01ADMIN |  |  |
| QTS-46421 |  | DH 2100 / Mechanical Gallery 2101 // OFCI - L2 SET IN PLACE - Eq Type # - EG CRAH - 4 units | 6d | 2025-12-04 A | 2025-12-08 A | QTS-23051, QTS-34201, QTS-34191, QTS-34181, QTS-34171 | 100% |  | 2025-11-20 | 2025-11-26 |  |  | QTS-PHX3 DC1 - 6 day w/ Holidays | Bel-Aire Mechanical, LLC | Level 2 | DH2100 | Construction | IGMP | Dave Wiltberger | Construction | 01ADMIN |  |  |
| QTS-23191 |  | DH 2100 / Mechanical Gallery 2101 // Top of Wall Fire Stop for 2101-2102 Wall | 2d | 2025-12-10 A | 2025-12-11 A | QTS-23051, QTS-101740 | 100% |  |  |  |  |  |  |  | Level 2 | DH2100 | Construction | IGMP | Sean Waisner | Construction | 01ADMIN |  |  |
| QTS-101910 |  | DH 2100 / Mechanical Gallery 2101 // POC Rough In for CRAH Unit Mechanical Connections | 5d | 2025-12-22 A | 2026-01-14 | QTS-101900 FF+1d, QTS-120000 | 100% | 0d | 2025-12-22 | 2025-12-27 | 15d | 0d | QTS-PHX3 DC1 - 6 day w/ Holidays | Bel-Aire Mechanical, LLC | Level 2 | DH2100 | Construction | IGMP | Dave Wiltberger | Construction | 01ADMIN |  |  |
| QTS-43741 |  | DH 2100 / Mechanical Gallery 2101 // OFCI - L2 SET IN PLACE - Eq Type # - MOD-03 - 7 units | 10d | 2026-01-12 A | 2026-01-12 A | QTS-31441, QTS-36211, QTS-36281, QTS-36351, QTS-36421, QTS-36491, QTS-31681, QTS-23051 | 100% |  | 2025-12-17 | 2025-12-29 |  |  | QTS-PHX3 DC1 - 6 day w/ Holidays | Rosendin Electric, Inc | Level 1 | DH1100 | Construction | IGMP | Scott Masterson | Construction | 01ADMIN | Phase 1 |  |
| QTS-43891 |  | DH 2100 / Mechanical Gallery 2101 // OFCI - L2 SET IN PLACE - Eq Type # - MOD-02 - 7 units | 10d | 2026-01-12 A | 2026-01-12 A | QTS-25011, QTS-36201, QTS-36271, QTS-36341, QTS-36411, QTS-36481, QTS-31781, QTS-23051 | 100% |  | 2025-12-17 | 2025-12-29 |  |  | QTS-PHX3 DC1 - 6 day w/ Holidays | Rosendin Electric, Inc | Level 1 | DH1100 | Construction | IGMP | Scott Masterson | Construction | 01ADMIN | Phase 1 |  |
| QTS-24271 |  | DH 2100 / Mechanical Gallery 2101 // Install Raceway from UPS Pod to MOD-02/03 Boards | 10d | 2026-01-13 A | 2026-01-15 | QTS-23671, QTS-43741 SS+3d, QTS-43891 SS+3d, QTS-23931, QTS-23191 | 100% | 0d | 2026-01-13 | 2026-01-24 | 16d | 0d | QTS-PHX3 DC1 - 6 day w/ Holidays | Performance Contracting, Inc. | Level 2 | DH2100 |  | IGMP | Scott Masterson | Construction | 01ADMIN |  |  |
| QTS-23351 |  | DH 2100 / Mechanical Gallery 2101 // Install Security Screen Above Fan Wall | 3d | 2026-01-14 | 2026-01-16 | QTS-22141, QTS-99680, QTS-1001250 |  |  |  |  | 32d | 0d | QTS-PHX3 DC1 - 6 day w/ Holidays | Performance Contracting, Inc. | Level 2 | DH2100 | Construction | IGMP | Sean Waisner | Construction | 01ADMIN |  |  |
| QTS-23981 |  | DH 2100 / Mechanical Gallery 2101 // Install Angle Seal Around Units | 2d | 2026-01-14 | 2026-01-15 | QTS-23611 |  |  |  |  | 50d | 8d | QTS-PHX3 DC1 - 6 day w/ Holidays | Performance Contracting, Inc. | Level 2 | DH2100 | Construction | IGMP | Sean Waisner | Construction | 01ADMIN |  | 1/20/26: Material needs to be procured. |
| QTS-24071 |  | DH 2100 / Mechanical Gallery 2101 // Install Electrical Tray | 5d | 2026-01-15 A | 2026-01-15 | QTS-23341, QTS-24271 FF, QTS-23061 | 100% | 0d | 2026-01-15 | 2026-01-21 | 20d | 8d | QTS-PHX3 DC1 - 6 day w/ Holidays | Rosendin Electric, Inc | Level 2 | DH2100 | Construction | IGMP | Scott Masterson | Construction |  |  |  |
| QTS-43681 |  | DH 2100 / Mechanical Gallery 2101 // Pull & Terminate from UPS Pod to MOD-02/03 Boards | 5d | 2026-01-15 | 2026-01-21 | QTS-24271 |  |  |  |  | 16d | 0d | QTS-PHX3 DC1 - 6 day w/ Holidays | Rosendin Electric, Inc | Level 2 | DH2100 | Construction | IGMP | Scott Masterson | Construction | 01ADMIN |  |  |
| QTS-24771 |  | DH 2100 / Mechanical Gallery 2101 // Set Humidifiers | 4d | 2026-01-17 | 2026-01-22 | QTS-46431, QTS-19481, QTS-43891 |  |  |  |  | 53d | 0d | QTS-PHX3 DC1 - 6 day w/ Holidays | Bel-Aire Mechanical, LLC | Level 2 | DH2100 | Construction | IGMP | Dave Wiltberger | Construction | 01ADMIN |  |  |
| QTS-99510 |  | DH 2100 / Mechanical Gallery 2101 // Final Connection of Raceway from UPS Pod to MOD-02/03 Boards | 4d | 2026-01-17 | 2026-01-22 | QTS-23971, QTS-46431 |  |  |  |  | 12d | 0d | QTS-PHX3 DC1 - 6 day w/ Holidays | Rosendin Electric, Inc | Level 2 | DH2100 |  | IGMP | Scott Masterson | Construction |  |  |  |
| QTS-23971 |  | DH 2100 / Mechanical Gallery 2101 // DH CRAH Unit Mechanical Connections | 5d | 2026-01-20 A | 2026-01-14 | QTS-101910, QTS-23611 SS+4d, QTS-101900 | 100% | 0d | 2026-01-20 | 2026-01-24 | 15d | 3d | QTS-PHX3 DC1 - 6 day w/ Holidays | Bel-Aire Mechanical, LLC | Level 2 | DH2100 | Construction | IGMP | Dave Wiltberger | Construction | 01ADMIN |  |  |
| QTS-44381 |  | DH 2100 / Mechanical Gallery 2101 // Install Lighting, Security, and Devices | 5d | 2026-01-22 | 2026-01-27 | QTS-43681 |  |  |  |  | 55d | 48d | QTS-PHX3 DC1 - 6 day w/ Holidays | Securitas Technology Corporation | Level 2 | DH2100 | Construction | IGMP | Scott Masterson | Construction |  |  |  |
| QTS-45721 |  | DH 2100 / Mechanical Gallery 2101 // Pull & Terminate from MOD-02 to CRAHs | 4d | 2026-01-22 | 2026-01-26 | QTS-43681 |  |  |  |  | 38d | 0d | QTS-PHX3 DC1 - 6 day w/ Holidays | Rosendin Electric, Inc | Level 2 | DH2100 | Construction | IGMP | Scott Masterson | Construction |  |  |  |
| QTS-24811 |  | DH 2100 / Mechanical Gallery 2101 // Tie-In MEP to Humidifiers | 6d | 2026-01-23 | 2026-01-29 | QTS-24771, QTS-23341 FF |  |  |  |  | 53d |  | QTS-PHX3 DC1 - 6 day w/ Holidays | Bel-Aire Mechanical, LLC | Level 2 | DH2100 | Construction | IGMP | Dave Wiltberger | Construction | 01ADMIN |  |  |
| QTS-99520 |  | DH 2100 / Mechanical Gallery 2101 // Final Connection of Electrical Tray | 2d | 2026-01-23 | 2026-01-24 | QTS-99510 |  |  |  |  | 12d | 0d | QTS-PHX3 DC1 - 6 day w/ Holidays | Rosendin Electric, Inc | Level 2 | DH2100 | Construction | IGMP | Scott Masterson | Construction |  |  |  |
| QTS-24371 |  | DH 2100 / Mechanical Gallery 2101 // Install Basket Tray for LV | 5d | 2026-01-26 | 2026-01-30 | QTS-24071, QTS-46441, QTS-99520, QTS-24081 |  |  |  |  | 12d | 0d | QTS-PHX3 DC1 - 6 day w/ Holidays | Performance Contracting, Inc. | Level 2 | DH2100 | Construction | IGMP | Scott Masterson | Construction |  |  |  |
| QTS-46431 |  | DH 2100 / Mechanical Gallery 2101 // EG CRAH Unit Mechanical Connections | 5d | 2026-01-26 A | 2026-01-16 | QTS-23971 FF, QTS-46421, QTS-101900 | 40% | 3d | 2026-01-26 | 2026-01-30 | 12d | 0d | QTS-PHX3 DC1 - 6 day w/ Holidays | Bel-Aire Mechanical, LLC | Level 2 | DH2100 | Construction | IGMP | Dave Wiltberger | Construction | 01ADMIN |  |  |
| QTS-45711 |  | DH 2100 / Mechanical Gallery 2101 // Pull & Terminate from MOD-02 to DOAS | 4d | 2026-01-27 | 2026-01-30 | QTS-45721 |  |  |  |  | 38d | 4d | QTS-PHX3 DC1 - 6 day w/ Holidays | Rosendin Electric, Inc | Level 2 | DH2100 | Construction | IGMP | Scott Masterson | Construction |  |  |  |
| QTS-44391 |  | DH 2100 / Mechanical Gallery 2101 // Install BMS & EPMS Cable and Terminations | 10d | 2026-01-31 | 2026-02-11 | QTS-24371, QTS-46441 |  |  |  |  | 12d | 0d | QTS-PHX3 DC1 - 6 day w/ Holidays | Rosendin Electric, Inc | Level 2 | DH2100 | Construction | IGMP | Scott Masterson | Construction |  |  |  |

Notes:
- QTS-46441: allucent_notes_20251104_160200: Scott Masterson on 2025-11-04 14:11: Walls were not painted for electrical to start. / allucent_notes_20251111_182405: Scott Masterson on 2025-11-04 14:11: Walls were not painted for electrical to start. / Jason Johnston on 2025-11-11 16:11: need update / allucent_notes_20251118_192630: Scott Masterson on 2025-11-04 14:11: Walls were not painted for electrical to start. / Jason Johnston on 2025-11-11 16:11: need update / allucent_notes_20251202_153722: Scott Masterson on 2025-11-04 14:11: Walls were not painted for electrical to start. / Jason Johnston on 2025-11-11 16:11: need update / David Wiltberger on 2025-12-02 13:48: waiting for paint / allucent_notes_20251209_203830: Scott Masterson on 2025-11-04 14:11: Walls were not painted for electrical to start. / Jason Johnston on 2025-11-11 16:11: need update / David Wiltberger on 2025-12-02 13:48: waiting for paint / allucent_notes_20251216_165335: Scott Masterson on 2025-11-04 14:11: Walls were not painted for electrical to start. / Jason Johnston on 2025-11-11 16:11: need update / David Wiltberger on 2025-12-02 13:48: waiting for paint / allucent_notes: 2025-11-04 14:11 - User: Scott Masterson - Date Added: 2025-11-04 14:11 - Note: Walls were not painted for electrical to start. / 2025-11-11 16:11 - User: Jason Johnston - Date Added: 2025-11-11 16:11 - Note: need update / 2025-12-02 13:48 - User: David
- QTS-23191: allucent_notes_20251104_160200: Jason Johnston on 2025-11-04 15:11: pushed by 12x38 / allucent_notes_20251111_182405: Jason Johnston on 2025-11-04 15:11: pushed by 12x38 / Jason Johnston on 2025-11-10 15:11: not started. / allucent_notes_20251118_192630: Jason Johnston on 2025-11-04 15:11: pushed by 12x38 / Jason Johnston on 2025-11-10 15:11: not started. / allucent_notes_20251202_153722: Jason Johnston on 2025-11-04 15:11: pushed by 12x38 / Jason Johnston on 2025-11-10 15:11: not started. / allucent_notes_20251209_203830: Jason Johnston on 2025-11-04 15:11: pushed by 12x38 / Jason Johnston on 2025-11-10 15:11: not started. / Jason Johnston on 2025-12-09 18:21: Need update from team / allucent_notes_20251216_165335: Jason Johnston on 2025-11-04 15:11: pushed by 12x38 / Jason Johnston on 2025-11-10 15:11: not started. / Jason Johnston on 2025-12-09 18:21: Need update from team / allucent_notes: 2025-11-04 15:11 - User: Jason Johnston - Date Added: 2025-11-04 15:11 - Note: pushed by 12x38 / 2025-11-10 15:11 - User: Jason Johnston - Date Added: 2025-11-10 15:11 - Note: not started. / 2025-12-09 18:21 - User: Jason Johnston - Date Added: 2025-12-
- QTS-101910: allucent_notes_20251230_164549: David Wiltberger on 2025-12-02 06:43: CRAHs delivered Late / Jason Johnston on 2025-12-09 20:29: Need update from team / Jason Johnston on 2025-12-16 08:37: POC pieces are being detailed and fabricated. / allucent_notes_20251202_153722: David Wiltberger on 2025-12-02 06:43: CRAHs delivered Late / allucent_notes_20251209_203830: David Wiltberger on 2025-12-02 06:43: CRAHs delivered Late / Jason Johnston on 2025-12-09 20:29: Need update from team / allucent_notes_20251216_165335: David Wiltberger on 2025-12-02 06:43: CRAHs delivered Late / Jason Johnston on 2025-12-09 20:29: Need update from team / Jason Johnston on 2025-12-16 08:37: POC pieces are being detailed and fabricated. / allucent_notes: 2025-12-02 06:43 - User: David Wiltberger - Date Added: 2025-12-02 06:43 - Note: CRAHs delivered Late / 2025-12-09 20:29 - User: Jason Johnston - Date Added: 2025-12-09 20:29 - Note: Need update from team / 2025-12-16 08:37 - User: Jason Johnston - Date
- QTS-43741: allucent_notes_20251230_164549: Scott Masterson on 2025-11-04 14:11: Walls were not painted for electrical to start. / Jason Johnston on 2025-11-11 16:11: need update / David Wiltberger on 2025-12-02 13:50: change sequence for build / Jason Johnston on 2025-12-09 20:29: Need update from team / Jason Johnston on 2025-12-16 08:39: Coordinating delivery and set with other OFCI items / allucent_notes_20251104_160200: Scott Masterson on 2025-11-04 14:11: Walls were not painted for electrical to start. / allucent_notes_20251111_182405: Scott Masterson on 2025-11-04 14:11: Walls were not painted for electrical to start. / Jason Johnston on 2025-11-11 16:11: need update / allucent_notes_20251118_192630: Scott Masterson on 2025-11-04 14:11: Walls were not painted for electrical to start. / Jason Johnston on 2025-11-11 16:11: need update / allucent_notes_20251202_153722: Scott Masterson on 2025-11-04 14:11: Walls were not painted for electrical to start. / Jason Johnston on 2025-11-11 16:11: need update / David Wiltberger on 2025-12-02 13:50: change sequence for build / allucent_notes_20251209_203830: Scott Masterson on 2025-11-04 14:11: Walls were not painted for electrical to start. / Jason Johnston on 2025-11-11 16:11: need update / David Wiltberger on 2025-12-02 13:50: change sequence for build / Jason Johnston on 2025-12-09 20:29: Need update from team / allucent_notes_20251216_165335: Scott Masterson on 2025-11-04 14:11: Walls were not painted for electrical to start. / Jason Johnston on 2025-11-11 16:11: need update / David Wiltberger on 2025-12-02 13:50: change sequence for build / Jason Johnston on 2025-12-09 20:29: Need update from team / Jason Johnston on 2025-12-16 08:39: Coordinating delivery and set with other OFCI items / allucent_notes: 2025-11-04 14:11 - User: Scott Masterson - Date Added: 2025-11-04 14:11 - Note: Walls were not painted for electrical to start. / 2025-11-11 16:11 - User: Jason Johnston - Date Added: 2025-11-11 16:11 - Note: need update / 2025-12-02 13:50 - User: David
- QTS-43891: allucent_notes_20251230_164549: Scott Masterson on 2025-11-04 14:11: Walls were not painted for electrical to start. / Jason Johnston on 2025-11-11 16:11: need update / David Wiltberger on 2025-12-02 13:51: change sequence for build / Jason Johnston on 2025-12-09 20:29: Need update from team / Jason Johnston on 2025-12-16 08:39: Coordinating delivery and set with other OFCI items / allucent_notes_20251104_160200: Scott Masterson on 2025-11-04 14:11: Walls were not painted for electrical to start. / allucent_notes_20251111_182405: Scott Masterson on 2025-11-04 14:11: Walls were not painted for electrical to start. / Jason Johnston on 2025-11-11 16:11: need update / allucent_notes_20251118_192630: Scott Masterson on 2025-11-04 14:11: Walls were not painted for electrical to start. / Jason Johnston on 2025-11-11 16:11: need update / allucent_notes_20251202_153722: Scott Masterson on 2025-11-04 14:11: Walls were not painted for electrical to start. / Jason Johnston on 2025-11-11 16:11: need update / David Wiltberger on 2025-12-02 13:51: change sequence for build / allucent_notes_20251209_203830: Scott Masterson on 2025-11-04 14:11: Walls were not painted for electrical to start. / Jason Johnston on 2025-11-11 16:11: need update / David Wiltberger on 2025-12-02 13:51: change sequence for build / Jason Johnston on 2025-12-09 20:29: Need update from team / allucent_notes_20251216_165335: Scott Masterson on 2025-11-04 14:11: Walls were not painted for electrical to start. / Jason Johnston on 2025-11-11 16:11: need update / David Wiltberger on 2025-12-02 13:51: change sequence for build / Jason Johnston on 2025-12-09 20:29: Need update from team / Jason Johnston on 2025-12-16 08:39: Coordinating delivery and set with other OFCI items / allucent_notes: 2025-11-04 14:11 - User: Scott Masterson - Date Added: 2025-11-04 14:11 - Note: Walls were not painted for electrical to start. / 2025-11-11 16:11 - User: Jason Johnston - Date Added: 2025-11-11 16:11 - Note: need update / 2025-12-02 13:51 - User: David
- QTS-23351: allucent_notes_20251230_164549: Jason Johnston on 2025-12-09 16:47: RFI changed clips and procurement will delay install of security screen. / allucent_notes_20251209_203830: Jason Johnston on 2025-12-09 16:47: RFI changed clips and procurement will delay install of security screen. / allucent_notes_20251216_165335: Jason Johnston on 2025-12-09 16:47: RFI changed clips and procurement will delay install of security screen. / allucent_notes: 2025-12-09 16:47 - User: Jason Johnston - Date Added: 2025-12-09 16:47 - Note: RFI changed clips and procurement will delay install of security screen.

| ID | WBS | Activity | Duration | Start | Finish | Predecessors | Complete | Remaining | Planned start | Planned finish | Total float | Free float | Calendar | Subcontractor | Level | Location | Project Section-1 | Baseline | Layton Responsible Party | Project Section | Allucent CSI Group | Notes |
| --- | --- | --- | --- | --- | --- | --- | --- | --- | --- | --- | --- | --- | --- | --- | --- | --- | --- | --- | --- | --- | --- | --- |
|  | 7 | **Gallery 2103 Mechanical** |  | 2025-08-07 | 2026-02-04 |  |  |  |  |  |  |  |  |  |  |  |  |  |  |  |  |  |
| QTS-44401 |  | DH 2100 / Mechanical Gallery 2103 // Install OH Mechanical Hangers | 7d | 2025-08-07 A | 2025-08-15 A | QTS-44371 SS | 100% |  |  |  |  |  |  | Bel-Aire Mechanical, LLC | Level 2 | DH2100 | Construction | IGMP | Dave Wiltberger | Construction | 01ADMIN |  |
| QTS-23691 |  | DH 2100 / Mechanical Gallery 2103 // Install OH Mechanical Piping | 10d | 2025-08-19 A | 2025-10-06 A | QTS-44401 | 100% |  | 2025-08-18 | 2025-08-29 |  |  |  | Bel-Aire Mechanical, LLC | Level 2 | DH2100 | Construction | IGMP | Dave Wiltberger | Construction | 01ADMIN |  |
| QTS-23681 |  | DH 2100 / Mechanical Gallery 2103 // Install VESDA | 8d | 2025-09-22 A | 2025-10-01 A | QTS-23331, QTS-23671 SS | 100% |  |  |  |  |  |  | Rosendin Electric, Inc | Level 2 | DH2100 | Construction | IGMP | Scott Masterson | Construction | 01ADMIN |  |
| QTS-22121 |  | DH 2100 / Mechanical Gallery 2103 // Frame 2103 Exterior Wall | 3d | 2025-09-24 A | 2025-09-26 A | QTS-21461, QTS-20921, QTS-21471, QTS-21801, QTS-21811 | 100% |  |  |  |  |  |  |  | Level 2 | DH2100 | Construction | IGMP | Doug Hayes | Construction | 01ADMIN |  |
| QTS-24361 |  | DH 2100 / Mechanical Gallery 2103 // Install OH Electrical, FA/ EPMS/BMS Conduit & Grounding | 10d | 2025-10-07 A | 2025-11-14 A | QTS-23691, QTS-120000 | 100% |  | 2025-10-07 | 2025-10-20 |  |  |  | Rosendin Electric, Inc | Level 2 | DH2100 | Construction | IGMP | Scott Masterson | Construction | 01ADMIN |  |
| QTS-22721 |  | DH 2100 / Mechanical Gallery 2103 // Hang, Tape, & Finish Drywall for Exterior Wall | 10d | 2025-10-09 A | 2025-10-22 A | QTS-22121, QTS-38981 | 100% |  |  |  |  |  |  |  | Level 2 | DH2100 | Construction | IGMP | Doug Hayes | Construction | 01ADMIN |  |
| QTS-22501 |  | DH 2100 / Mechanical Gallery 2103 // Frame Fan Wall | 5d | 2025-10-13 A | 2025-10-17 A | QTS-21811, QTS-22121 | 100% |  | 2025-10-09 | 2025-10-15 |  |  |  |  | Level 2 | DH2100 | Construction | IGMP | Doug Hayes | Construction | 01ADMIN |  |
| QTS-101920 |  | DH 2100 / Mechanical Gallery 2103 // Install Pipe Risers | 10d | 2025-10-20 A | 2025-10-28 A | QTS-23691, QTS-23681 | 100% |  | 2025-11-03 | 2025-11-14 |  |  |  | Bel-Aire Mechanical, LLC | Level 2 | DH2100 | Construction | IGMP | Dave Wiltberger | Construction | 01ADMIN |  |
| QTS-22851 |  | DH 2100 / Mechanical Gallery 2103 // In Wall Electrical Rough for Fan Wall | 3d | 2025-10-20 A | 2025-10-24 A | QTS-22501 FF+2d | 100% |  | 2025-10-17 | 2025-10-21 |  |  |  | Rosendin Electric, Inc | Level 2 | DH2100 | Construction | IGMP | Scott Masterson | Construction | 01ADMIN |  |
| QTS-24351 |  | DH 2100 / Mechanical Gallery 2103 // Install Electrical Tray | 5d | 2025-10-20 A | 2025-11-14 A | QTS-23691 | 100% |  | 2025-10-15 | 2025-10-21 |  |  |  | Rosendin Electric, Inc | Level 2 | DH2100 | Construction | IGMP | Scott Masterson | Construction | 01ADMIN |  |
| QTS-99900 |  | DH 2100 / Mechanical Gallery 2103 // Hang, Tape, & Finish Fan Drywall - MG Side | 3d | 2025-10-20 A | 2025-10-24 A | QTS-22501 | 100% |  | 2025-10-20 | 2025-10-22 |  |  |  |  |  |  |  |  |  |  | 01ADMIN |  |
| QTS-101930 |  | DH 2100 / Mechanical Gallery 2103 // POC Rough In for CRAH Unit Mechanical Connections | 5d | 2025-10-23 A | 2025-10-29 A | QTS-101920 FF+1d, QTS-120000 | 100% |  |  |  |  |  |  | Bel-Aire Mechanical, LLC | Level 2 | DH2100 | Construction | IGMP | Dave Wiltberger | Construction | 01ADMIN |  |
| QTS-23301 |  | DH 2100 / Mechanical Gallery 2103 // Paint Walls | 3d | 2025-10-23 A | 2025-10-27 A | QTS-22721 | 100% |  |  |  |  |  |  |  | Level 2 | DH2100 | Construction | IGMP | Doug Hayes | Construction | 01ADMIN |  |
| QTS-99910 |  | DH 2100 / Mechanical Gallery 2103 // Paint Fan Walls - MG Side | 3d | 2025-10-24 A | 2025-10-28 A | QTS-99900 FF+2d | 100% |  |  |  |  |  |  |  |  |  |  |  |  |  | 01ADMIN |  |
| QTS-22991 |  | DH 2100 / Mechanical Gallery 2103 // In Wall Inspection for Fan Wall | 2d | 2025-10-27 A | 2025-10-28 A | QTS-22851 | 100% |  |  |  |  |  |  | Rosendin Electric, Inc | Level 2 | DH2100 | Construction | IGMP | Scott Masterson | Construction | 01ADMIN |  |
| QTS-23041 |  | DH 2100 / Mechanical Gallery 2103 // Hang, Tape, & Finish Fan Drywall - DH Side | 5d | 2025-10-29 A | 2025-11-04 A | QTS-22991 | 100% |  |  |  |  |  |  |  | Level 2 | DH2100 | Construction | IGMP | Doug Hayes | Construction | 01ADMIN |  |
| QTS-23311 |  | DH 2100 / Mechanical Gallery 2103 // Paint Fan Wall - DH Side | 5d | 2025-11-05 A | 2025-11-11 A | QTS-23041 | 100% |  |  |  |  |  |  |  | Level 2 | DH2100 | Construction | IGMP | Doug Hayes | Construction | 01ADMIN |  |
| QTS-46481 |  | DH 2100 / Mechanical Gallery 2103 // Set EPMS/BMS Panels | 4d | 2025-12-08 A | 2026-01-14 | QTS-23311 | 100% | 0d | 2025-12-08 | 2025-12-11 | 26d | 8d | QTS-PHX3 DC1 - 6 day w/ Holidays | Rosendin Electric, Inc | Level 2 | DH2100 | Construction | IGMP | Scott Masterson | Construction | 01ADMIN |  |
| QTS-1001040 |  | DH 2100 / Mechanical Gallery 2103 // Install Cap for Security Screen on Fan Wall | 3d | 2025-12-09 A | 2025-12-11 A | QTS-23311 | 100% |  |  |  |  |  |  |  | Level 2 | DH2100 | Construction | IGMP | Sean Waisner | Construction | 01ADMIN |  |
| QTS-23831 |  | DH 2100 / Mechanical Gallery 2103 // OFCI - L2 SET IN PLACE - Eq Type # - CRAH - 14 units | 6d | 2025-12-09 A | 2025-12-15 A | QTS-34031, QTS-34041, QTS-34051, QTS-34061, QTS-34071, QTS-34081, QTS-34091, QTS-34101, QTS-34111, QTS-34121, QTS-34131, QTS-34141, QTS-34151, QTS-34161, QTS-23691, QTS-23611, QTS-99910, QTS-101930 | 100% |  |  |  |  |  | QTS-PHX3 DC1 - 6 day w/ Holidays | Bel-Aire Mechanical, LLC | Level 2 | DH2100 | Construction | IGMP | Dave Wiltberger | Construction | 01ADMIN |  |
| QTS-23701 |  | DH 2100 / Mechanical Gallery 2103 // Install Security Screen Above Fan Wall | 3d | 2025-12-15 A | 2025-12-24 A | QTS-22501, QTS-99680, QTS-1001040, QTS-1001250 | 100% |  | 2025-12-16 | 2025-12-18 |  |  | QTS-PHX3 DC1 - 6 day w/ Holidays | Performance Contracting, Inc. | Level 2 | DH2100 | Construction | IGMP | Sean Waisner | Construction | 01ADMIN |  |
| QTS-24321 |  | DH 2100 / Mechanical Gallery 2103 // Install Angle Seal Around Units | 2d | 2026-01-14 | 2026-01-15 | QTS-23831 |  |  |  |  | 50d | 8d | QTS-PHX3 DC1 - 6 day w/ Holidays | Performance Contracting, Inc. | Level 2 | DH2100 | Construction | IGMP | Sean Waisner | Construction |  | 1/20/26: Material needs to be procured. |
| QTS-24801 |  | DH 2100 / Mechanical Gallery 2103 // Install Basket Tray for LV | 5d | 2026-01-17 | 2026-01-23 | QTS-24351, QTS-120000, QTS-24311, QTS-24361 |  |  |  |  | 18d | 0d | QTS-PHX3 DC1 - 6 day w/ Holidays | Rosendin Electric, Inc | Level 2 | DH2100 | Construction | IGMP | Scott Masterson | Construction | 01ADMIN |  |
| QTS-24311 |  | DH 2100 / Mechanical Gallery 2103 // CRAH Unit Mechanical Connections | 10d | 2026-01-20 A | 2026-01-16 | QTS-23831 FF+5d | 70% | 3d | 2026-01-20 | 2026-01-30 | 12d | 0d | QTS-PHX3 DC1 - 6 day w/ Holidays | Bel-Aire Mechanical, LLC | Level 2 | DH2100 | Construction | IGMP | Dave Wiltberger | Construction | 01ADMIN |  |
| QTS-25171 |  | DH 2100 / Mechanical Gallery 2103 // Install BMS & EPMS Cable and Terminations | 10d | 2026-01-24 | 2026-02-04 | QTS-24801, QTS-46481 |  |  |  |  | 18d | 6d | QTS-PHX3 DC1 - 6 day w/ Holidays | Rosendin Electric, Inc | Level 2 | DH2100 | Construction | IGMP | Scott Masterson | Construction | 01ADMIN |  |

Notes:
- QTS-23691: allucent_notes: David Wiltberger on 2025-08-19 09:08: Access from Chiller activity / allucent_notes: 2025-08-19 09:08 - User: David Wiltberger - Date Added: 2025-08-19 09:08 - Note: Access from Chiller activity / 2025-09-02 10:09 - User: David Wiltberger - Date Added: 2025-09-02 10:09 - Note: BAM could not get required fork lift to 2nd floor
- QTS-24361: allucent_notes_20251021_145627: Scott Masterson on 2025-10-21 11:10: Walls are not 100% complete. REI is requiring additional time to bounce around a bit to compencate for this activity. Esspencially at the 38' leave out area. / allucent_notes_20251027_224008: Scott Masterson on 2025-10-21 11:10: Walls are not 100% complete. REI is requiring additional time to bounce around a bit to compencate for this activity. Esspencially at the 38' leave out area. / Scott Masterson on 2025-10-27 16:10: Need walls topped out so the Overhead can start. / allucent_notes_20251028_163138: Scott Masterson on 2025-10-21 11:10: Walls are not 100% complete. REI is requiring additional time to bounce around a bit to compencate for this activity. Esspencially at the 38' leave out area. / Scott Masterson on 2025-10-27 16:10: Need walls topped out so the Overhead can start. / allucent_notes_20251104_160200: Scott Masterson on 2025-10-21 11:10: Walls are not 100% complete. REI is requiring additional time to bounce around a bit to compencate for this activity. Esspencially at the 38' leave out area. / Scott Masterson on 2025-10-27 16:10: Need walls topped out so the Overhead can start. / Scott Masterson on 2025-11-04 14:11: Need CRAHs set (higher work activities completed) before electrical can start. Need to get estimated date of set. / allucent_notes_20251111_182405: Scott Masterson on 2025-10-21 11:10: Walls are not 100% complete. REI is requiring additional time to bounce around a bit to compencate for this activity. Esspencially at the 38' leave out area. / Scott Masterson on 2025-10-27 16:10: Need walls topped out so the Overhead can start. / Scott Masterson on 2025-11-04 14:11: Need CRAHs set (higher work activities completed) before electrical can start. Need to get estimated date of set. / allucent_notes_20251118_192630: Scott Masterson on 2025-10-21 11:10: Walls are not 100% complete. REI is requiring additional time to bounce around a bit to compencate for this activity. Esspencially at the 38' leave out area. / Scott Masterson on 2025-10-27 16:10: Need walls topped out so the Overhead can start. / Scott Masterson on 2025-11-04 14:11: Need CRAHs set (higher work activities completed) before electrical can start. Need to get estimated date of set. / Jason Johnston on 2025-11-19T02:23:31.757Z: undo / allucent_notes: 2025-10-21 11:10 - User: Scott Masterson - Date Added: 2025-10-21 11:10 - Note: Walls are not 100% complete. REI is requiring additional time to bounce around a bit to compencate for this activity. Esspencially at the 38' leave out area. / 2025-10-27 16
- QTS-22721: allucent_notes_20251014_152335: Jason Johnston on 2025-10-08 08:10: not done / allucent_notes_20251021_145627: Jason Johnston on 2025-10-08 08:10: not done / allucent_notes_20251027_224008: Jason Johnston on 2025-10-08 08:10: not done / allucent_notes: 2025-10-08 08:10 - User: Jason Johnston - Date Added: 2025-10-08 08:10 - Note: not done
- QTS-22501: allucent_notes_20251014_152335: Jason Johnston on 2025-10-08 08:10: not done / Jason Johnston on 2025-10-14 15:10: rain delay / allucent_notes_20251021_145627: Jason Johnston on 2025-10-08 08:10: not done / Jason Johnston on 2025-10-14 15:10: rain delay / allucent_notes: 2025-10-08 08:10 - User: Jason Johnston - Date Added: 2025-10-08 08:10 - Note: not done / 2025-10-14 15:10 - User: Jason Johnston - Date Added: 2025-10-14 15:10 - Note: rain delay
- QTS-22851: allucent_notes_20251021_145627: Scott Masterson on 2025-10-21 11:10: The fan walls released out of sequence. REI is working on getting them completed. / Scott Masterson on 2025-10-21 11:10: Fan walls weere released out of sequence so REI is getting a late start / allucent_notes_20251027_224008: Scott Masterson on 2025-10-21 11:10: The fan walls released out of sequence. REI is working on getting them completed. / Scott Masterson on 2025-10-21 11:10: Fan walls weere released out of sequence so REI is getting a late start / allucent_notes: 2025-10-21 11:10 - User: Scott Masterson - Date Added: 2025-10-21 11:10 - Note: The fan walls released out of sequence. REI is working on getting them completed. / 2025-10-21 11:10 - User: Scott Masterson - Date Added: 2025-10-21 11:10 - Note: Fan walls
- QTS-24351: allucent_notes_20251021_145627: Scott Masterson on 2025-10-21 11:10: The fan walls were released out of sequence. REI is working on getting the caoght up. / Scott Masterson on 2025-10-21 11:10: Fan walls were released out of sequence so REI is getting a late start / allucent_notes_20251027_224008: Scott Masterson on 2025-10-21 11:10: The fan walls were released out of sequence. REI is working on getting the caoght up. / Scott Masterson on 2025-10-21 11:10: Fan walls were released out of sequence so REI is getting a late start / Scott Masterson on 2025-10-27 16:10: Need walls topped out so the Overhead can start. / allucent_notes_20251028_163138: Scott Masterson on 2025-10-21 11:10: The fan walls were released out of sequence. REI is working on getting the caoght up. / Scott Masterson on 2025-10-21 11:10: Fan walls were released out of sequence so REI is getting a late start / Scott Masterson on 2025-10-27 16:10: Need walls topped out so the Overhead can start. / allucent_notes_20251104_160200: Scott Masterson on 2025-10-21 11:10: The fan walls were released out of sequence. REI is working on getting the caoght up. / Scott Masterson on 2025-10-21 11:10: Fan walls were released out of sequence so REI is getting a late start / Scott Masterson on 2025-10-27 16:10: Need walls topped out so the Overhead can start. / Scott Masterson on 2025-11-04 14:11: Need CRAHs set (higher work activities completed) before electrical can start. Need to get estimated date of set. / allucent_notes_20251111_182405: Scott Masterson on 2025-10-21 11:10: The fan walls were released out of sequence. REI is working on getting the caoght up. / Scott Masterson on 2025-10-21 11:10: Fan walls were released out of sequence so REI is getting a late start / Scott Masterson on 2025-10-27 16:10: Need walls topped out so the Overhead can start. / Scott Masterson on 2025-11-04 14:11: Need CRAHs set (higher work activities completed) before electrical can start. Need to get estimated date of set. / allucent_notes_20251118_192630: Scott Masterson on 2025-10-21 11:10: The fan walls were released out of sequence. REI is working on getting the caoght up. / Scott Masterson on 2025-10-21 11:10: Fan walls were released out of sequence so REI is getting a late start / Scott Masterson on 2025-10-27 16:10: Need walls topped out so the Overhead can start. / Scott Masterson on 2025-11-04 14:11: Need CRAHs set (higher work activities completed) before electrical can start. Need to get estimated date of set. / Jason Johnston on 2025-11-19T02:23:35.424Z: undo / allucent_notes: 2025-10-21 11:10 - User: Scott Masterson - Date Added: 2025-10-21 11:10 - Note: The fan walls were released out of sequence. REI is working on getting the caoght up. / 2025-10-21 11:10 - User: Scott Masterson - Date Added: 2025-10-21 11:10 - Note: Fan wa
- QTS-99900: allucent_notes_20251021_145627: Jake Shimmin on 2025-10-21 09:10: Man power issues / allucent_notes_20251027_224008: Jake Shimmin on 2025-10-21 09:10: Man power issues / allucent_notes: 2025-10-21 09:10 - User: Jake Shimmin - Date Added: 2025-10-21 09:10 - Note: Man power issues
- QTS-46481: allucent_notes_20251230_164549: David Wiltberger on 2025-12-02 13:53: Change sequence for build / Jason Johnston on 2025-12-16 08:43: not started / David Wiltberger on 2025-12-30 15:08: Corridor impacted by fire stop work / allucent_notes_20251202_153722: David Wiltberger on 2025-12-02 13:53: Change sequence for build / allucent_notes_20251209_203830: David Wiltberger on 2025-12-02 13:53: Change sequence for build / allucent_notes_20251216_165335: David Wiltberger on 2025-12-02 13:53: Change sequence for build / Jason Johnston on 2025-12-16 08:43: not started / allucent_notes: 2025-12-02 13:53 - User: David Wiltberger - Date Added: 2025-12-02 13:53 - Note: Change sequence for build / 2025-12-16 08:43 - User: Jason Johnston - Date Added: 2025-12-16 08:43 - Note: not started / 2025-12-30 15:08 - User: David Wiltberger - Date Ad
- QTS-1001040: allucent_notes_20251209_203830: Jason Johnston on 2025-12-09 16:48: RFI changed clips and procurement will delay install of security screen. / allucent_notes: 2025-12-09 16:48 - User: Jason Johnston - Date Added: 2025-12-09 16:48 - Note: RFI changed clips and procurement will delay install of security screen.
- QTS-23701: allucent_notes_20251230_164549: Jason Johnston on 2025-12-09 16:48: RFI changed clips and procurement will delay install of security screen. / Jason Johnston on 2025-12-16 08:41: Started early / Jason Johnston on 2025-12-16 08:41: Taking longer than expected. / Jason Johnston on 2025-12-30 16:41: No update / allucent_notes_20251209_203830: Jason Johnston on 2025-12-09 16:48: RFI changed clips and procurement will delay install of security screen. / allucent_notes_20251216_165335: Jason Johnston on 2025-12-09 16:48: RFI changed clips and procurement will delay install of security screen. / Jason Johnston on 2025-12-16 08:41: Started early / Jason Johnston on 2025-12-16 08:41: Taking longer than expected. / allucent_notes: 2025-12-09 16:48 - User: Jason Johnston - Date Added: 2025-12-09 16:48 - Note: RFI changed clips and procurement will delay install of security screen. / 2025-12-16 08:41 - User: Jason Johnston - Date Added: 2025-12-16 08:41 - Note: Started early / 2025
- QTS-24801: allucent_notes_20251104_160200: Scott Masterson on 2025-11-04 14:11: Need CRAHs set (higher work activities completed) before electrical can start. Need to get estimated date of set. / allucent_notes_20251111_182405: Scott Masterson on 2025-11-04 14:11: Need CRAHs set (higher work activities completed) before electrical can start. Need to get estimated date of set. / Jason Johnston on 2025-11-11 16:11: delayed by SWO / allucent_notes_20251118_192630: Scott Masterson on 2025-11-04 14:11: Need CRAHs set (higher work activities completed) before electrical can start. Need to get estimated date of set. / Jason Johnston on 2025-11-11 16:11: delayed by SWO / allucent_notes_20251202_153722: Scott Masterson on 2025-11-04 14:11: Need CRAHs set (higher work activities completed) before electrical can start. Need to get estimated date of set. / Jason Johnston on 2025-11-11 16:11: delayed by SWO / David Wiltberger on 2025-12-02 13:53: Change sequence for build / allucent_notes_20251209_203830: Scott Masterson on 2025-11-04 14:11: Need CRAHs set (higher work activities completed) before electrical can start. Need to get estimated date of set. / Jason Johnston on 2025-11-11 16:11: delayed by SWO / David Wiltberger on 2025-12-02 13:53: Change sequence for build / allucent_notes: 2025-11-04 14:11 - User: Scott Masterson - Date Added: 2025-11-04 14:11 - Note: Need CRAHs set (higher work activities completed) before electrical can start. Need to get estimated date of set. / 2025-11-11 16:11 - User: Jason Johnston - Date Added: 202

| ID | WBS | Activity | Duration | Start | Finish | Predecessors | Complete | Remaining | Planned start | Planned finish | Total float | Free float | Constraint | Calendar | Subcontractor | Level | Location | Project Section-1 | Baseline | Layton Responsible Party | Project Section | Allucent CSI Group | Phase-1-1 |
| --- | --- | --- | --- | --- | --- | --- | --- | --- | --- | --- | --- | --- | --- | --- | --- | --- | --- | --- | --- | --- | --- | --- | --- |
|  | 1 | **Gallery 2102 Electrical** |  | 2025-08-19 | 2026-03-05 |  |  |  |  |  |  |  |  |  |  |  |  |  |  |  |  |  |  |
| QTS-23671 |  | DH 2100 / Electrical Gallery 2102 // Install VESDA | 8d | 2025-08-19 A | 2025-09-30 A | QTS-23331 SS | 100% |  | 2025-08-19 | 2025-08-28 |  |  |  |  | Rosendin Electric, Inc | Level 2 | DH2100 | Construction | IGMP | Scott Masterson | Construction | 01ADMIN |  |
| QTS-45671 |  | DH 2100 / Electrical Gallery 2102 // Install OH Electrical, FA/ EPMS/BMS Conduit & Grounding | 10d | 2025-10-01 A | 2025-11-07 A | QTS-23671 | 100% |  | 2025-10-01 | 2025-10-14 |  |  |  |  | Rosendin Electric, Inc | Level 2 | DH2100 | Construction | IGMP | Scott Masterson | Construction | 01ADMIN |  |
| QTS-23591 |  | DH 2100 / Electrical Gallery 2102 // Install Electrical Tray | 5d | 2025-11-21 A | 2025-12-01 A | QTS-45671, QTS-120000 | 100% |  |  |  |  |  |  |  | Rosendin Electric, Inc | Level 2 | DH2100 | Construction | IGMP | Scott Masterson | Construction | 01ADMIN |  |
| QTS-23821 |  | DH 2100 / Electrical Gallery 2102 // Install Basket Tray for LV | 5d | 2025-12-10 A | 2026-01-14 | QTS-23591 | 100% | 0d | 2025-12-10 | 2025-12-15 | 26d | 2d |  | QTS-PHX3 DC1 - 6 day w/ Holidays | Rosendin Electric, Inc | Level 2 | DH2100 | Construction | IGMP | Scott Masterson | Construction | 01ADMIN |  |
| QTS-39742 |  | DH 2100 / Electrical Gallery 2102 // Install Conduit from UPS Pod to Chillers Lineup A-D | 6d | 2026-01-10 A | 2026-01-17 | QTS-120000 | 33% | 4d | 2025-12-29 | 2026-01-05 | 5d | 0d |  | QTS-PHX3 DC1 - 6 day w/ Holidays | Rosendin Electric, Inc | Level 2 | DH2100 | Construction | IGMP | Scott Masterson | Construction | 01ADMIN |  |
| QTS-24561 |  | DH 2100 / Electrical Gallery 2102 // House Panels | 2d | 2026-01-14 A | 2026-01-14 | QTS-23761 SS, QTS-24091, QTS-23051 | 100% | 0d | 2026-01-14 | 2026-01-15 | 25d | 0d |  | QTS-PHX3 DC1 - 6 day w/ Holidays | Rosendin Electric, Inc | Level 2 | DH2100 | Construction | IGMP | Scott Masterson | Construction | 01ADMIN |  |
| QTS-25341 |  | DH 2100 / Electrical Gallery 2102 // Pull LV Cables Branch Circuits | 5d | 2026-01-14 | 2026-01-20 | QTS-24561 |  |  |  |  | 25d | 0d |  | QTS-PHX3 DC1 - 6 day w/ Holidays | Rosendin Electric, Inc | Level 2 | DH2100 | Construction | IGMP | Scott Masterson | Construction | 01ADMIN |  |
| QTS-39762 |  | DH 2100 / Electrical Gallery 2102 // Install Conduit from UPS Pod to Pumps Line Up A-D | 6d | 2026-01-14 | 2026-01-21 | QTS-39742 SS+2d, QTS-120000 |  |  |  |  | 8d | 0d |  | QTS-PHX3 DC1 - 6 day w/ Holidays | Rosendin Electric, Inc | Level 2 | DH2100 | Construction | IGMP | Scott Masterson | Construction | 01ADMIN |  |
| QTS-24181 |  | DH 2100 / Electrical Gallery 2102 // Install BMS & EPMS Cable and Terminations | 10d | 2026-01-16 | 2026-01-28 | QTS-23821 |  |  |  |  | 24d | 12d | start on or after 2026-01-16 | QTS-PHX3 DC1 - 6 day w/ Holidays | Rosendin Electric, Inc | Level 2 | DH2100 | Construction | IGMP | Scott Masterson | Construction | 01ADMIN |  |
| QTS-25671 |  | DH 2100 / Electrical Gallery 2102 // Install Conduit from UPS Pod to Chillers Line Up E-R | 6d | 2026-01-20 | 2026-01-26 | QTS-43591, QTS-39742, QTS-25541, QTS-20761, QTS-23671, QTS-21601, QTS-120000 |  |  |  |  | 5d | 0d |  | QTS-PHX3 DC1 - 6 day w/ Holidays | Rosendin Electric, Inc | Level 2 | DH2100 |  | IGMP | Scott Masterson | Construction | 01ADMIN |  |
| QTS-39752 |  | DH 2100 / Electrical Gallery 2102 // Pull & Terminate from UPS Pod to Chillers Lineup A-D | 3d | 2026-01-20 | 2026-01-22 | QTS-39742 |  |  |  |  | 16d | 0d |  |  | Rosendin Electric, Inc | Level 2 | DH2100 | Construction | IGMP | Scott Masterson | Construction | 01ADMIN |  |
| QTS-25651 |  | DH 2100 / Electrical Gallery 2102 // Terminate Panels | 6d | 2026-01-21 | 2026-01-27 | QTS-25341 |  |  |  |  | 25d | 13d |  | QTS-PHX3 DC1 - 6 day w/ Holidays | Rosendin Electric, Inc | Level 2 | DH2100 | Construction | IGMP | Scott Masterson | Construction | 01ADMIN |  |
| QTS-26201 |  | DH 2100 / Electrical Gallery 2102 // Install Conduit from UPS Pod to Pumps Line Up E-R | 6d | 2026-01-22 | 2026-01-29 | QTS-25671 SS+2d, QTS-120000 |  |  |  |  | 4d | 0d |  |  | Rosendin Electric, Inc | Level 2 | DH2100 |  | IGMP | Scott Masterson | Construction | 01ADMIN |  |
| QTS-39772 |  | DH 2100 / Electrical Gallery 2102 // Pull & Terminate from UPS Pod to Pumps Line Up A-D | 3d | 2026-01-22 | 2026-01-24 | QTS-39762 |  |  |  |  | 8d | 0d |  | QTS-PHX3 DC1 - 6 day w/ Holidays | Rosendin Electric, Inc | Level 2 | DH2100 | Construction | IGMP | Scott Masterson | Construction |  |  |
| QTS-26191 |  | DH 2100 / Electrical Gallery 2102 // Pull & Terminate from UPS Pod to Chillers Line Up E-R | 3d | 2026-01-27 | 2026-01-29 | QTS-25671, QTS-23931 |  |  |  |  | 8d | 0d |  | QTS-PHX3 DC1 - 6 day w/ Holidays | Rosendin Electric, Inc | Level 2 | DH2100 |  | IGMP | Scott Masterson | Construction | 01ADMIN |  |
| QTS-27361 |  | DH 2100 / Electrical Gallery 2102 // Pull & Terminate from UPS Pod to Pumps Line Up E-R | 3d | 2026-01-30 | 2026-02-02 | QTS-26201, QTS-26191 FF, QTS-23931 |  |  |  |  | 5d | 0d |  | QTS-PHX3 DC1 - 6 day w/ Holidays | Rosendin Electric, Inc | Level 2 | DH2100 |  | IGMP | Scott Masterson | Construction | 01ADMIN |  |
|  | 1 | **Electrical** |  | 2025-11-06 | 2026-03-05 |  |  |  |  |  |  |  |  |  |  |  |  |  |  |  |  |  |  |
|  | 8 | **DH 2100 IDF Cabinets** |  | 2026-01-14 | 2026-01-16 |  |  |  |  |  |  |  |  |  |  |  |  |  |  |  |  |  |  |
| QTS-43461 |  | DH 2100 / Electrical Gallery 2101/2102 // Install Fire Rated Plywood | 1d | 2026-01-14 A | 2026-01-14 | QTS-23191, QTS-23301 | 100% | 0d |  |  | 1d | 0d |  | QTS-PHX3 DC1 - 6 day w/ Holidays |  |  | DH2300 | Construction | GMP | Sean Waisner | Construction | 01ADMIN | Phase 3 |
| QTS-43471 |  | DH 2100 / Electrical Gallery 2101/2102 // Set IDF Cabinet | 1d | 2026-01-14 | 2026-01-14 | QTS-43461 |  |  |  |  | 1d | 0d |  | QTS-PHX3 DC1 - 6 day w/ Holidays | Rosendin Electric, Inc |  | DH2300 | Construction | GMP | Scott Masterson | Construction | 01ADMIN | Phase 3 |
| QTS-43481 |  | DH 2100 / Electrical Gallery 2101/2102 // Set IDF Conduit | 2d | 2026-01-15 | 2026-01-16 | QTS-43471 |  |  |  |  | 1d | 0d |  | QTS-PHX3 DC1 - 6 day w/ Holidays | Rosendin Electric, Inc |  | DH2300 | Construction | GMP | Scott Masterson | Construction | 01ADMIN | Phase 3 |
|  | 1 | **A2100 Lineup** |  | 2025-11-06 | 2026-02-05 |  |  |  |  |  |  |  |  |  |  |  |  |  |  |  |  |  |  |
| QTS-23571 |  | Gallery 2102 / Lineup A2100 // Install Hangers & Supports | 3d | 2025-11-06 A | 2025-11-10 A | QTS-23051 | 100% |  |  |  |  |  |  |  | Rosendin Electric, Inc | Level 2 | DH2100 | Construction | IGMP | Scott Masterson | Construction | 01ADMIN | Phase 1 |
| QTS-24091 |  | Gallery 2102 / Lineup A2100 // OFCI - L2 SET IN PLACE - Eq Type # - COD/ATS-210-A - Skid 1-3 | 1d | 2025-12-01 A | 2025-12-01 A | QTS-32751 | 100% |  |  |  |  |  |  |  | Rosendin Electric, Inc | Level 2 | DH2100 | Construction | IGMP | Scott Masterson | Construction | 01ADMIN | Phase 1 |
| QTS-45691 |  | Gallery 2102 / Lineup A2100 // OFCI - L2 SET IN PLACE - Eq Type # - COD/ATS-210-A - Skid 4-6 | 1d | 2025-12-02 A | 2025-12-02 A | QTS-24091 | 100% |  |  |  |  |  |  |  | Rosendin Electric, Inc | Level 2 | DH2100 | Construction | IGMP | Scott Masterson | Construction | 01ADMIN | Phase 1 |
| QTS-23761 |  | Gallery 2102 / Lineup A2100 // Install Raceways from LV POD to COD | 7d | 2026-01-13 A | 2026-01-14 | QTS-23571, QTS-120000 | 86% | 1d | 2025-12-22 | 2025-12-30 | 0d |  |  | QTS-PHX3 DC1 - 6 day w/ Holidays | Rosendin Electric, Inc | Level 2 | DH2100 | Construction | IGMP | Scott Masterson | Construction | 01ADMIN | Phase 1 |
| QTS-24301 |  | Gallery 2102 / Lineup A2100 // Set Reserve Busway Segment | 2d | 2026-01-14 A | 2026-01-14 | QTS-24091, QTS-23761 SS, QTS-49611 | 100% | 0d | 2026-01-14 | 2026-01-15 | 29d | 1d |  | QTS-PHX3 DC1 - 6 day w/ Holidays | Rosendin Electric, Inc | Level 2 | DH2100 | Construction | IGMP | Scott Masterson | Construction | 01ADMIN | Phase 1 |
| QTS-24571 |  | Gallery 2102 / Lineup A2100 // Pull LV Cables from POD to ATS | 4d | 2026-01-15 | 2026-01-20 | QTS-24091, QTS-23761, QTS-23931, QTS-45691 FF+1d |  |  |  |  | 26d | 0d |  | QTS-PHX3 DC1 - 6 day w/ Holidays | Rosendin Electric, Inc | Level 2 | DH2100 | Construction | IGMP | Scott Masterson | Construction | 01ADMIN | Phase 1 |
| QTS-25111 |  | Gallery 2102 / Lineup A2100 // Pull LV Cables from Reserve Bus to ATS | 2d | 2026-01-15 | 2026-01-16 | QTS-23761, QTS-24301 |  |  |  |  | 28d | 2d |  | QTS-PHX3 DC1 - 6 day w/ Holidays | Rosendin Electric, Inc | Level 2 | DH2100 | Construction | IGMP | Scott Masterson | Construction | 01ADMIN | Phase 1 |
| QTS-43941 |  | Gallery 2102 / Lineup A2100 // Terminate & Torque ATS | 7d | 2026-01-21 | 2026-01-28 | QTS-25111, QTS-24571 |  |  |  |  | 26d | 0d |  | QTS-PHX3 DC1 - 6 day w/ Holidays | Rosendin Electric, Inc | Level 2 | DH2100 | Construction | IGMP | Scott Masterson | Construction | 01ADMIN | Phase 1 |
| QTS-25231 |  | Gallery 2102 / Lineup A2100 // Terminate & Torque COD | 7d | 2026-01-29 | 2026-02-05 | QTS-43941 |  |  |  |  | 26d | 2d |  | QTS-PHX3 DC1 - 6 day w/ Holidays | Rosendin Electric, Inc | Level 2 | DH2100 | Construction | IGMP | Scott Masterson | Construction |  | Phase 1 |

Notes:
- QTS-23671: allucent_notes: David Wiltberger on 2025-09-02 10:09: Moved to due clashes with ceiling grid / allucent_notes: 2025-09-02 10:09 - User: David Wiltberger - Date Added: 2025-09-02 10:09 - Note: Moved to due clashes with ceiling grid
- QTS-45671: allucent_notes: David Wiltberger on 2025-09-02 10:09: Could not start installation due to no wall being built. Installation would impede wall build / allucent_notes_20251014_152335: David Wiltberger on 2025-09-02 10:09: Could not start installation due to no wall being built. Installation would impede wall build / David Wiltberger on 2025-09-24 04:09: Walls are not completed due to electrical rough / David Wiltberger on 2025-10-14 12:10: walls not complete / allucent_notes_20251021_145627: David Wiltberger on 2025-09-02 10:09: Could not start installation due to no wall being built. Installation would impede wall build / David Wiltberger on 2025-09-24 04:09: Walls are not completed due to electrical rough / David Wiltberger on 2025-10-14 12:10: walls not complete / allucent_notes_20251027_224008: David Wiltberger on 2025-09-02 10:09: Could not start installation due to no wall being built. Installation would impede wall build / David Wiltberger on 2025-09-24 04:09: Walls are not completed due to electrical rough / David Wiltberger on 2025-10-14 12:10: walls not complete / allucent_notes_20251028_163138: David Wiltberger on 2025-09-02 10:09: Could not start installation due to no wall being built. Installation would impede wall build / David Wiltberger on 2025-09-24 04:09: Walls are not completed due to electrical rough / David Wiltberger on 2025-10-14 12:10: walls not complete / allucent_notes_20251104_160200: David Wiltberger on 2025-09-02 10:09: Could not start installation due to no wall being built. Installation would impede wall build / David Wiltberger on 2025-09-24 04:09: Walls are not completed due to electrical rough / David Wiltberger on 2025-10-14 12:10: walls not complete / Scott Masterson on 2025-11-04 14:11: Installing the cable buss which it the higher activity. This will completed by eow so this task can be completed. / allucent_notes_20251111_182405: David Wiltberger on 2025-09-02 10:09: Could not start installation due to no wall being built. Installation would impede wall build / David Wiltberger on 2025-09-24 04:09: Walls are not completed due to electrical rough / David Wiltberger on 2025-10-14 12:10: walls not complete / Scott Masterson on 2025-11-04 14:11: Installing the cable buss which it the higher activity. This will completed by eow so this task can be completed. / Jason Johnston on 2025-11-11T23:15:40.847Z: SWO / allucent_notes_20251118_192630: David Wiltberger on 2025-09-02 10:09: Could not start installation due to no wall being built. Installation would impede wall build / David Wiltberger on 2025-09-24 04:09: Walls are not completed due to electrical rough / David Wiltberger on 2025-10-14 12:10: walls not complete / Scott Masterson on 2025-11-04 14:11: Installing the cable buss which it the higher activity. This will completed by eow so this task can be completed. / Jason Johnston on 2025-11-11T23:15:40.847Z: SWO / allucent_notes: 2025-09-02 10:09 - User: David Wiltberger - Date Added: 2025-09-02 10:09 - Note: Could not start installation due to no wall being built. Installation would impede wall build / 2025-09-24 04:09 - User: David Wiltberger - Date Added: 2025-09-24 04:09 - No
- QTS-23591: allucent_notes_20251111_182405: Jason Johnston on 2025-11-11 16:11: SWO / allucent_notes_20251118_192630: Jason Johnston on 2025-11-11 16:11: SWO / allucent_notes_20251202_153722: Jason Johnston on 2025-11-11 16:11: SWO / allucent_notes: 2025-11-11 16:11 - User: Jason Johnston - Date Added: 2025-11-11 16:11 - Note: SWO
- QTS-23821: allucent_notes_20251230_164549: Sean Waisner on 2025-12-02 15:36: Awaiting for ceiling strong backing / Jason Johnston on 2025-12-09 18:21: Need update from team / Jason Johnston on 2025-12-16 08:45: late completion / Jason Johnston on 2025-12-30 16:41: No update / allucent_notes_20251202_153722: Sean Waisner on 2025-12-02 15:36: Awaiting for ceiling strong backing / allucent_notes_20251209_203830: Sean Waisner on 2025-12-02 15:36: Awaiting for ceiling strong backing / Jason Johnston on 2025-12-09 18:21: Need update from team / allucent_notes_20251216_165335: Sean Waisner on 2025-12-02 15:36: Awaiting for ceiling strong backing / Jason Johnston on 2025-12-09 18:21: Need update from team / Jason Johnston on 2025-12-16 08:45: late completion / allucent_notes: 2025-12-02 15:36 - User: Sean Waisner - Date Added: 2025-12-02 15:36 - Note: Awaiting for ceiling strong backing / 2025-12-09 18:21 - User: Jason Johnston - Date Added: 2025-12-09 18:21 - Note: Need update from team / 2025-12-16 08:45 - User: Jason Joh
- QTS-39742: allucent_notes_20251230_164549: David Wiltberger on 2025-12-30 15:05: Corridor impacted by fire stop work / David Wiltberger on 2025-12-30 15:07: Corridor impacted by fire stop work / allucent_notes: 2025-12-30 15:05 - User: David Wiltberger - Date Added: 2025-12-30 15:05 - Note: Corridor impacted by fire stop work / 2025-12-30 15:07 - User: David Wiltberger - Date Added: 2025-12-30 15:07 - Note: Corridor impacted by fire stop work
- QTS-39762: allucent_notes_20251230_164549: David Wiltberger on 2025-12-30 15:08: Corridor impacted by fire stop work / allucent_notes: 2025-12-30 15:08 - User: David Wiltberger - Date Added: 2025-12-30 15:08 - Note: Corridor impacted by fire stop work
- QTS-24181: allucent_notes_20251230_164549: David Wiltberger on 2025-12-30 15:07: Corridor impacted by fire stop work / allucent_notes: 2025-12-30 15:07 - User: David Wiltberger - Date Added: 2025-12-30 15:07 - Note: Corridor impacted by fire stop work
- QTS-25671: allucent_notes_20251230_164549: Jason Johnston on 2025-11-19T02:23:38.897Z: undo / David Wiltberger on 2025-12-02 13:54: Impacted by stop work / David Wiltberger on 2025-12-30 15:03: Corridor impacted by fire stop work / allucent_notes_20251118_192630: Jason Johnston on 2025-11-19T02:23:38.897Z: undo / allucent_notes_20251202_153722: Jason Johnston on 2025-11-19T02:23:38.897Z: undo / David Wiltberger on 2025-12-02 13:54: Impacted by stop work / allucent_notes_20251209_203830: Jason Johnston on 2025-11-19T02:23:38.897Z: undo / David Wiltberger on 2025-12-02 13:54: Impacted by stop work / allucent_notes_20251216_165335: Jason Johnston on 2025-11-19T02:23:38.897Z: undo / David Wiltberger on 2025-12-02 13:54: Impacted by stop work / allucent_notes: 2025-11-19T02:23:38.897Z - User: Jason Johnston - Date Added: 2025-11-19T02:23:38.897Z - Note: undo / 2025-12-02 13:54 - User: David Wiltberger - Date Added: 2025-12-02 13:54 - Note: Impacted by stop work / 2025-12-30 15:03 - User: David Wiltberger - D
- QTS-39752: allucent_notes_20251230_164549: David Wiltberger on 2025-12-30 15:05: Corridor impacted by fire stop work / David Wiltberger on 2025-12-30 15:06: Corridor impacted by fire stop work / allucent_notes: 2025-12-30 15:05 - User: David Wiltberger - Date Added: 2025-12-30 15:05 - Note: Corridor impacted by fire stop work / 2025-12-30 15:06 - User: David Wiltberger - Date Added: 2025-12-30 15:06 - Note: Corridor impacted by fire stop work
- QTS-26201: allucent_notes_20251230_164549: David Wiltberger on 2025-12-30 15:06: Corridor impacted by fire stop work / allucent_notes: 2025-12-30 15:06 - User: David Wiltberger - Date Added: 2025-12-30 15:06 - Note: Corridor impacted by fire stop work
- QTS-26191: allucent_notes_20251230_164549: David Wiltberger on 2025-12-30 15:04: corridor impacted by fire stop work / David Wiltberger on 2025-12-30 15:07: Corridor impacted by fire stop work / allucent_notes: 2025-12-30 15:04 - User: David Wiltberger - Date Added: 2025-12-30 15:04 - Note: corridor impacted by fire stop work / 2025-12-30 15:07 - User: David Wiltberger - Date Added: 2025-12-30 15:07 - Note: Corridor impacted by fire stop work
- QTS-43461: allucent_notes_20251230_164549: Jason Johnston on 2025-12-16 08:48: Need to review line item and identify what is means / Jason Johnston on 2025-12-30 16:41: No update / allucent_notes_20251216_165335: Jason Johnston on 2025-12-16 08:48: Need to review line item and identify what is means / allucent_notes: 2025-12-16 08:48 - User: Jason Johnston - Date Added: 2025-12-16 08:48 - Note: Need to review line item and identify what is means / 2025-12-30 16:41 - User: Jason Johnston - Date Added: 2025-12-30 16:41 - Note: No update
- QTS-43471: allucent_notes_20251230_164549: David Wiltberger on 2025-12-30 15:09: delayed for TFO / allucent_notes: 2025-12-30 15:09 - User: David Wiltberger - Date Added: 2025-12-30 15:09 - Note: delayed for TFO
- QTS-23571: allucent_notes_20251104_160200: Scott Masterson on 2025-11-04 14:11: The wall is not painted yet to start installing hangers. Wall is supposed to be painted by tomorrow. / allucent_notes_20251111_182405: Scott Masterson on 2025-11-04 14:11: The wall is not painted yet to start installing hangers. Wall is supposed to be painted by tomorrow. / allucent_notes_20251118_192630: Scott Masterson on 2025-11-04 14:11: The wall is not painted yet to start installing hangers. Wall is supposed to be painted by tomorrow. / allucent_notes: 2025-11-04 14:11 - User: Scott Masterson - Date Added: 2025-11-04 14:11 - Note: The wall is not painted yet to start installing hangers. Wall is supposed to be painted by tomorrow.
- QTS-24091: allucent_notes_20251118_192630: Jason Johnston on 2025-11-19T02:23:42.768Z: undo / allucent_notes_20251202_153722: Jason Johnston on 2025-11-19T02:23:42.768Z: undo / allucent_notes: 2025-11-19T02:23:42.768Z - User: Jason Johnston - Date Added: 2025-11-19T02:23:42.768Z - Note: undo
- QTS-45691: allucent_notes_20251118_192630: Jason Johnston on 2025-11-19T02:23:46.667Z: undo / allucent_notes_20251202_153722: Jason Johnston on 2025-11-19T02:23:46.667Z: undo / allucent_notes: 2025-11-19T02:23:46.667Z - User: Jason Johnston - Date Added: 2025-11-19T02:23:46.667Z - Note: undo
- QTS-23761: allucent_notes_20251230_164549: Jason Johnston on 2025-11-11 16:11: SWO / David Wiltberger on 2025-12-02 13:55: impacted by Stop work / Jason Johnston on 2025-12-16 08:49: Not started yet / allucent_notes_20251111_182405: Jason Johnston on 2025-11-11 16:11: SWO / allucent_notes_20251118_192630: Jason Johnston on 2025-11-11 16:11: SWO / allucent_notes_20251202_153722: Jason Johnston on 2025-11-11 16:11: SWO / David Wiltberger on 2025-12-02 13:55: impacted by Stop work / allucent_notes_20251209_203830: Jason Johnston on 2025-11-11 16:11: SWO / David Wiltberger on 2025-12-02 13:55: impacted by Stop work / allucent_notes_20251216_165335: Jason Johnston on 2025-11-11 16:11: SWO / David Wiltberger on 2025-12-02 13:55: impacted by Stop work / Jason Johnston on 2025-12-16 08:49: Not started yet / allucent_notes: 2025-11-11 16:11 - User: Jason Johnston - Date Added: 2025-11-11 16:11 - Note: SWO / 2025-12-02 13:55 - User: David Wiltberger - Date Added: 2025-12-02 13:55 - Note: impacted by Stop work / 2025-12-16 08:49 - User: Jason Johnston - Date Added: 2025-12-1

| ID | WBS | Activity | Duration | Start | Finish | Predecessors | Complete | Total float | Free float | Calendar | Subcontractor | Level | Location | Project Section-1 | Phase-1-1 | Baseline | Layton Responsible Party | Project Section | Allucent CSI Group |
| --- | --- | --- | --- | --- | --- | --- | --- | --- | --- | --- | --- | --- | --- | --- | --- | --- | --- | --- | --- |
|  | 2 | **B2100 Lineup** |  | 2025-11-06 | 2026-02-12 |  |  |  |  |  |  |  |  |  |  |  |  |  |  |
| QTS-1581 |  | Gallery 2102 / Lineup B2100 // Install Hangers & Supports | 3d | 2025-11-06 A | 2025-11-10 A | QTS-23571 SS | 100% |  |  |  | Rosendin Electric, Inc | Level 2 | DH2100 | Construction | Phase 1 | IGMP | Scott Masterson | Construction | 01ADMIN |
| QTS-3831 |  | Gallery 2102 / Lineup B2100 // OFCI - L2 SET IN PLACE - Eq Type # - COD/ATS-210-A - Skid 1-3 | 1d | 2025-12-10 A | 2025-12-10 A | QTS-36221, QTS-45691 | 100% |  |  |  | Rosendin Electric, Inc | Level 2 | DH2100 | Construction | Phase 1 | IGMP | Scott Masterson | Construction | 01ADMIN |
| QTS-45731 |  | Gallery 2102 / Lineup B2100 // OFCI - L2 SET IN PLACE - Eq Type # - COD/ATS-210-A - Skid 4-6 | 1d | 2025-12-11 A | 2025-12-11 A | QTS-3831 | 100% |  |  |  | Rosendin Electric, Inc | Level 2 | DH2100 | Construction | Phase 1 | IGMP | Scott Masterson | Construction | 01ADMIN |
| QTS-2701 |  | Gallery 2102 / Lineup B2100 // Install Raceways from LV POD to COD | 7d | 2026-01-14 | 2026-01-22 | QTS-1581, QTS-23761 SS |  | 0d |  | QTS-PHX3 DC1 - 6 day w/ Holidays | Rosendin Electric, Inc | Level 2 | DH2100 | Construction | Phase 1 | IGMP | Scott Masterson | Construction | 01ADMIN |
| QTS-4851 |  | Gallery 2102 / Lineup B2100 // Set Reserve Busway Segment | 2d | 2026-01-23 | 2026-01-24 | QTS-3831, QTS-2701, QTS-49611 |  | 20d | 0d | QTS-PHX3 DC1 - 6 day w/ Holidays | Rosendin Electric, Inc | Level 2 | DH2100 | Construction | Phase 1 | IGMP | Scott Masterson | Construction | 01ADMIN |
| QTS-7921 |  | Gallery 2102 / Lineup B2100 // Pull LV Cables from POD to ATS | 2d | 2026-01-23 | 2026-01-24 | QTS-2701, QTS-3831, QTS-23931, QTS-45731 FF+1d |  | 22d | 2d | QTS-PHX3 DC1 - 6 day w/ Holidays | Rosendin Electric, Inc | Level 2 | DH2100 | Construction | Phase 1 | IGMP | Scott Masterson | Construction | 01ADMIN |
| QTS-7931 |  | Gallery 2102 / Lineup B2100 // Pull LV Cables from Reserve Bus to ATS | 2d | 2026-01-26 | 2026-01-27 | QTS-2701, QTS-4851 |  | 20d | 0d | QTS-PHX3 DC1 - 6 day w/ Holidays | Rosendin Electric, Inc | Level 2 | DH2100 | Construction | Phase 1 | IGMP | Scott Masterson | Construction | 01ADMIN |
| QTS-8761 |  | Gallery 2102 / Lineup B2100 // Terminate & Torque ATS | 7d | 2026-01-28 | 2026-02-04 | QTS-7921, QTS-7931 |  | 20d | 0d | QTS-PHX3 DC1 - 6 day w/ Holidays | Rosendin Electric, Inc | Level 2 | DH2100 | Construction | Phase 1 | IGMP | Scott Masterson | Construction | 01ADMIN |
| QTS-8751 |  | Gallery 2102 / Lineup B2100 // Terminate & Torque COD | 7d | 2026-02-05 | 2026-02-12 | QTS-7931, QTS-8761 |  | 20d | 0d | QTS-PHX3 DC1 - 6 day w/ Holidays | Rosendin Electric, Inc | Level 2 | DH2100 | Construction | Phase 1 | IGMP | Scott Masterson | Construction |  |
|  | 3 | **C2100 Lineup** |  | 2025-11-11 | 2026-02-23 |  |  |  |  |  |  |  |  |  |  |  |  |  |  |
| QTS-1591 |  | Gallery 2102 / Lineup C2100 // Install Hangers & Supports | 3d | 2025-11-11 A | 2025-11-13 A | QTS-1581 | 100% |  |  |  | Rosendin Electric, Inc | Level 2 | DH2100 | Construction | Phase 1 | IGMP | Scott Masterson | Construction | 01ADMIN |
| QTS-3841 |  | Gallery 2102 / Lineup C2100 // OFCI - L2 SET IN PLACE - Eq Type # - COD/ATS-210-A - Skid 1-3 | 1d | 2025-12-12 A | 2025-12-12 A | QTS-36291, QTS-45731 | 100% |  |  |  | Rosendin Electric, Inc | Level 2 | DH2100 | Construction | Phase 1 | IGMP | Scott Masterson | Construction | 01ADMIN |
| QTS-45741 |  | Gallery 2102 / Lineup C2100 // OFCI - L2 SET IN PLACE - Eq Type # - COD/ATS-210-A - Skid 4-6 | 1d | 2025-12-15 A | 2025-12-15 A | QTS-3841 | 100% |  |  |  | Rosendin Electric, Inc | Level 2 | DH2100 | Construction | Phase 1 | IGMP | Scott Masterson | Construction | 01ADMIN |
| QTS-2711 |  | Gallery 2102 / Lineup C2100 // Install Raceways from LV POD to COD | 7d | 2026-01-23 | 2026-01-30 | QTS-1591, QTS-2701 |  | 0d |  | QTS-PHX3 DC1 - 6 day w/ Holidays | Rosendin Electric, Inc | Level 2 | DH2100 | Construction | Phase 1 | IGMP | Scott Masterson | Construction | 01ADMIN |
| QTS-4871 |  | Gallery 2102 / Lineup C2100 // Set Reserve Busway Segment | 2d | 2026-01-31 | 2026-02-02 | QTS-3841, QTS-2711, QTS-49611 |  | 13d | 2d | QTS-PHX3 DC1 - 6 day w/ Holidays | Rosendin Electric, Inc | Level 2 | DH2100 | Construction | Phase 1 | IGMP | Scott Masterson | Construction | 01ADMIN |
| QTS-6351 |  | Gallery 2102 / Lineup C2100 // Pull LV Cables from POD to ATS | 4d | 2026-01-31 | 2026-02-04 | QTS-3841, QTS-2711, QTS-23931, QTS-45741 FF+1d |  | 11d | 0d | QTS-PHX3 DC1 - 6 day w/ Holidays | Rosendin Electric, Inc | Level 2 | DH2100 | Construction | Phase 1 | IGMP | Scott Masterson | Construction | 01ADMIN |
| QTS-7951 |  | Gallery 2102 / Lineup C2100 // Pull LV Cables from Reserve Bus to ATS | 2d | 2026-02-05 | 2026-02-06 | QTS-2711, QTS-6351, QTS-4871 |  | 11d | 0d | QTS-PHX3 DC1 - 6 day w/ Holidays | Rosendin Electric, Inc | Level 2 | DH2100 | Construction | Phase 1 | IGMP | Scott Masterson | Construction |  |
| QTS-8791 |  | Gallery 2102 / Lineup C2100 // Terminate & Torque ATS | 7d | 2026-02-07 | 2026-02-14 | QTS-6351, QTS-7951 |  | 11d | 0d | QTS-PHX3 DC1 - 6 day w/ Holidays | Rosendin Electric, Inc | Level 2 | DH2100 | Construction | Phase 1 | IGMP | Scott Masterson | Construction |  |
| QTS-8781 |  | Gallery 2102 / Lineup C2100 // Terminate & Torque COD | 7d | 2026-02-16 | 2026-02-23 | QTS-8791 |  | 11d | 0d | QTS-PHX3 DC1 - 6 day w/ Holidays | Rosendin Electric, Inc | Level 2 | DH2100 | Construction | Phase 1 | IGMP | Scott Masterson | Construction |  |
|  | 4 | **D2100 Lineup** |  | 2025-11-11 | 2026-02-23 |  |  |  |  |  |  |  |  |  |  |  |  |  |  |
| QTS-1601 |  | Gallery 2102 / Lineup D2100 // Install Hangers & Supports | 3d | 2025-11-11 A | 2025-11-13 A | QTS-1591 SS | 100% |  |  |  | Rosendin Electric, Inc | Level 2 | DH2100 | Construction | Phase 1 | IGMP | Scott Masterson | Construction | 01ADMIN |
| QTS-3851 |  | Gallery 2102 / Lineup D2100 // OFCI - L2 SET IN PLACE - Eq Type # - COD/ATS-210-A - Skid 1-3 | 1d | 2025-12-16 A | 2025-12-16 A | QTS-36361, QTS-45741 | 100% |  |  |  | Rosendin Electric, Inc | Level 2 | DH2100 | Construction | Phase 1 | IGMP | Scott Masterson | Construction | 01ADMIN |
| QTS-45751 |  | Gallery 2102 / Lineup D2100 // OFCI - L2 SET IN PLACE - Eq Type # - COD/ATS-210-A - Skid 4-6 | 1d | 2025-12-17 A | 2025-12-17 A | QTS-3851 | 100% |  |  |  | Rosendin Electric, Inc | Level 2 | DH2100 | Construction | Phase 1 | IGMP | Scott Masterson | Construction | 01ADMIN |
| QTS-2721 |  | Gallery 2102 / Lineup D2100 // Install Raceways from LV POD to COD | 7d | 2026-01-23 | 2026-01-30 | QTS-1601, QTS-2711 SS |  | 0d |  | QTS-PHX3 DC1 - 6 day w/ Holidays | Rosendin Electric, Inc | Level 2 | DH2100 | Construction | Phase 1 | IGMP | Scott Masterson | Construction | 01ADMIN |
| QTS-4891 |  | Gallery 2102 / Lineup D2100 // Set Reserve Busway Segment | 2d | 2026-01-31 | 2026-02-02 | QTS-3851, QTS-2721, QTS-49611 |  | 13d | 2d | QTS-PHX3 DC1 - 6 day w/ Holidays | Rosendin Electric, Inc | Level 2 | DH2100 | Construction | Phase 1 | IGMP | Scott Masterson | Construction | 01ADMIN |
| QTS-6361 |  | Gallery 2102 / Lineup D2100 // Pull LV Cables from POD to ATS | 4d | 2026-01-31 | 2026-02-04 | QTS-3851, QTS-2721, QTS-23931, QTS-45751 FF+1d |  | 11d | 0d | QTS-PHX3 DC1 - 6 day w/ Holidays | Rosendin Electric, Inc | Level 2 | DH2100 | Construction | Phase 1 | IGMP | Scott Masterson | Construction | 01ADMIN |
| QTS-7971 |  | Gallery 2102 / Lineup D2100 // Pull LV Cables from Reserve Bus to ATS | 2d | 2026-02-05 | 2026-02-06 | QTS-2721, QTS-6361, QTS-4891 |  | 11d | 0d | QTS-PHX3 DC1 - 6 day w/ Holidays | Rosendin Electric, Inc | Level 2 | DH2100 | Construction | Phase 1 | IGMP | Scott Masterson | Construction |  |
| QTS-8811 |  | Gallery 2102 / Lineup D2100 // Terminate & Torque ATS | 7d | 2026-02-07 | 2026-02-14 | QTS-7971, QTS-6361 |  | 11d | 0d | QTS-PHX3 DC1 - 6 day w/ Holidays | Rosendin Electric, Inc | Level 2 | DH2100 | Construction | Phase 1 | IGMP | Scott Masterson | Construction |  |
| QTS-8821 |  | Gallery 2102 / Lineup D2100 // Terminate & Torque COD | 7d | 2026-02-16 | 2026-02-23 | QTS-8811 |  | 11d | 0d | QTS-PHX3 DC1 - 6 day w/ Holidays | Rosendin Electric, Inc | Level 2 | DH2100 | Construction | Phase 1 | IGMP | Scott Masterson | Construction |  |

Notes:
- QTS-3831: allucent_notes_20251209_203830: Jason Johnston on 2025-12-09 20:30: Need update from team / allucent_notes_20251216_165335: Jason Johnston on 2025-12-09 20:30: Need update from team / allucent_notes: 2025-12-09 20:30 - User: Jason Johnston - Date Added: 2025-12-09 20:30 - Note: Need update from team
- QTS-2701: allucent_notes_20251230_164549: David Wiltberger on 2025-12-30 15:37: corridor impacted by fire stop work / allucent_notes: 2025-12-30 15:37 - User: David Wiltberger - Date Added: 2025-12-30 15:37 - Note: corridor impacted by fire stop work

| ID | WBS | Activity | Duration | Start | Finish | Predecessors | Complete | Total float | Free float | Calendar | Subcontractor | Level | Location | Project Section-1 | Phase-1-1 | Baseline | Layton Responsible Party | Project Section | Allucent CSI Group |
| --- | --- | --- | --- | --- | --- | --- | --- | --- | --- | --- | --- | --- | --- | --- | --- | --- | --- | --- | --- |
|  | 5 | **E2100 Lineup** |  | 2025-11-14 | 2026-02-23 |  |  |  |  |  |  |  |  |  |  |  |  |  |  |
| QTS-1611 |  | Gallery 2102 / Lineup E2100 // Install Hangers & Supports | 3d | 2025-11-14 A | 2025-11-18 A | QTS-1601 | 100% |  |  |  | Rosendin Electric, Inc | Level 2 | DH2100 | Construction | Phase 1 | IGMP | Scott Masterson | Construction | 01ADMIN |
| QTS-3861 |  | Gallery 2102 / Lineup E2100 // OFCI - L2 SET IN PLACE - Eq Type # - COD/ATS-210-A - Skid 1-3 | 1d | 2025-12-18 A | 2025-12-18 A | QTS-36431, QTS-45751 | 100% |  |  |  | Rosendin Electric, Inc | Level 2 | DH2100 | Construction | Phase 1 | IGMP | Scott Masterson | Construction | 01ADMIN |
| QTS-45761 |  | Gallery 2102 / Lineup E2100 // OFCI - L2 SET IN PLACE - Eq Type # - COD/ATS-210-A - Skid 4-6 | 1d | 2025-12-19 A | 2025-12-19 A | QTS-3861 | 100% |  |  |  | Rosendin Electric, Inc | Level 2 | DH2100 | Construction | Phase 1 | IGMP | Scott Masterson | Construction | 01ADMIN |
| QTS-2731 |  | Gallery 2102 / Lineup E2100 // Install Raceways from LV POD to COD | 7d | 2026-01-31 | 2026-02-07 | QTS-1611, QTS-2721 |  | 0d |  | QTS-PHX3 DC1 - 6 day w/ Holidays | Rosendin Electric, Inc | Level 2 | DH2100 | Construction | Phase 1 | IGMP | Scott Masterson | Construction | 01ADMIN |
| QTS-4911 |  | Gallery 2102 / Lineup E2100 // Set Reserve Busway Segment | 2d | 2026-02-09 | 2026-02-10 | QTS-3861, QTS-2731, QTS-49611 |  | 11d | 2d | QTS-PHX3 DC1 - 6 day w/ Holidays | Rosendin Electric, Inc | Level 2 | DH2100 | Construction | Phase 1 | IGMP | Scott Masterson | Construction |  |
| QTS-6371 |  | Gallery 2102 / Lineup E2100 // Pull LV Cables from POD to ATS | 4d | 2026-02-09 | 2026-02-12 | QTS-3861, QTS-2731, QTS-23931, QTS-45761 FF+1d |  | 9d | 0d | QTS-PHX3 DC1 - 6 day w/ Holidays | Rosendin Electric, Inc | Level 2 | DH2100 | Construction | Phase 1 | IGMP | Scott Masterson | Construction |  |
| QTS-7991 |  | Gallery 2102 / Lineup E2100 // Pull LV Cables from Reserve Bus to ATS | 2d | 2026-02-13 | 2026-02-14 | QTS-2731, QTS-6371, QTS-4911 |  | 9d | 0d | QTS-PHX3 DC1 - 6 day w/ Holidays | Rosendin Electric, Inc | Level 2 | DH2100 | Construction | Phase 1 | IGMP | Scott Masterson | Construction |  |
| QTS-8851 |  | Gallery 2102 / Lineup E2100 // Terminate & Torque COD | 7d | 2026-02-13 | 2026-02-20 | QTS-6371 |  | 13d | 1d | QTS-PHX3 DC1 - 6 day w/ Holidays | Rosendin Electric, Inc | Level 2 | DH2100 | Construction | Phase 1 | IGMP | Scott Masterson | Construction |  |
| QTS-8841 |  | Gallery 2102 / Lineup E2100 // Terminate & Torque ATS | 7d | 2026-02-16 | 2026-02-23 | QTS-7991, QTS-6371 |  | 9d | 0d | QTS-PHX3 DC1 - 6 day w/ Holidays | Rosendin Electric, Inc | Level 2 | DH2100 | Construction | Phase 1 | IGMP | Scott Masterson | Construction |  |
|  | 6 | **F2100 Lineup** |  | 2025-11-14 | 2026-02-21 |  |  |  |  |  |  |  |  |  |  |  |  |  |  |
| QTS-1621 |  | Gallery 2102 / Lineup F2100 // Install Hangers & Supports | 3d | 2025-11-14 A | 2025-11-18 A | QTS-1611 SS | 100% |  |  |  | Rosendin Electric, Inc | Level 2 | DH2100 | Construction | Phase 1 | IGMP | Scott Masterson | Construction | 01ADMIN |
| QTS-3871 |  | Gallery 2102 / Lineup F2100 // OFCI - L2 SET IN PLACE - Eq Type # - COD/ATS-210-A - Skid 1-3 | 1d | 2025-12-22 A | 2025-12-22 A | QTS-36501, QTS-45761 | 100% |  |  |  | Rosendin Electric, Inc | Level 2 | DH2100 | Construction | Phase 1 | IGMP | Scott Masterson | Construction | 01ADMIN |
| QTS-45771 |  | Gallery 2102 / Lineup F2100 // OFCI - L2 SET IN PLACE - Eq Type # - COD/ATS-210-A - Skid 4-6 | 1d | 2025-12-23 A | 2025-12-23 A | QTS-3871 | 100% |  |  |  | Rosendin Electric, Inc | Level 2 | DH2100 | Construction | Phase 1 | IGMP | Scott Masterson | Construction | 01ADMIN |
| QTS-2741 |  | Gallery 2102 / Lineup F2100 // Install Raceways from LV POD to COD | 7d | 2026-01-31 | 2026-02-07 | QTS-1621, QTS-2731 SS |  | 0d |  | QTS-PHX3 DC1 - 6 day w/ Holidays | Rosendin Electric, Inc | Level 2 | DH2100 | Construction | Phase 1 | IGMP | Scott Masterson | Construction | 01ADMIN |
| QTS-4931 |  | Gallery 2102 / Lineup F2100 // Set Reserve Busway Segment | 2d | 2026-02-09 | 2026-02-10 | QTS-3871, QTS-2741, QTS-49611 |  | 12d | 2d | QTS-PHX3 DC1 - 6 day w/ Holidays | Rosendin Electric, Inc | Level 2 | DH2100 | Construction | Phase 1 | IGMP | Scott Masterson | Construction |  |
| QTS-6381 |  | Gallery 2102 / Lineup F2100 // Pull LV Cables from POD to ATS | 4d | 2026-02-09 | 2026-02-12 | QTS-2741, QTS-23931, QTS-45771 FF+1d |  | 10d | 0d | QTS-PHX3 DC1 - 6 day w/ Holidays | Rosendin Electric, Inc | Level 2 | DH2100 | Construction | Phase 1 | IGMP | Scott Masterson | Construction |  |
| QTS-8011 |  | Gallery 2102 / Lineup F2100 // Pull LV Cables from Reserve Bus to ATS | 2d | 2026-02-13 | 2026-02-14 | QTS-2741, QTS-6381, QTS-4931 |  | 10d | 0d | QTS-PHX3 DC1 - 6 day w/ Holidays | Rosendin Electric, Inc | Level 2 | DH2100 | Construction | Phase 1 | IGMP | Scott Masterson | Construction |  |
| QTS-8871 |  | Gallery 2102 / Lineup F2100 // Terminate & Torque ATS | 6d | 2026-02-16 | 2026-02-21 | QTS-8011, QTS-6381 |  | 10d | 0d | QTS-PHX3 DC1 - 6 day w/ Holidays | Rosendin Electric, Inc | Level 2 | DH2100 | Construction | Phase 1 | IGMP | Scott Masterson | Construction |  |
| QTS-8881 |  | Gallery 2102 / Lineup F2100 // Terminate & Torque COD | 2d | 2026-02-20 | 2026-02-21 | QTS-6381, QTS-8871 SS+4d |  | 12d | 0d | QTS-PHX3 DC1 - 6 day w/ Holidays | Rosendin Electric, Inc | Level 2 | DH2100 | Construction | Phase 1 | IGMP | Scott Masterson | Construction |  |
|  | 9 | **R2100 Lineup** |  | 2025-11-19 | 2026-03-05 |  |  |  |  |  |  |  |  |  |  |  |  |  |  |
| QTS-1571 |  | Gallery 2102 / Lineup R2100 // Install Hangers & Supports | 3d | 2025-11-19 A | 2025-11-21 A | QTS-1621 | 100% |  |  |  | Rosendin Electric, Inc | Level 2 | DH2100 | Construction | Phase 1 | IGMP | Scott Masterson | Construction | 01ADMIN |
| QTS-2691 |  | Gallery 2102 / Lineup R2100 // Install Raceways from LV POD to Reserve Busway | 5d | 2026-02-09 | 2026-02-13 | QTS-1571, QTS-2741 |  | 0d |  | QTS-PHX3 DC1 - 6 day w/ Holidays | Rosendin Electric, Inc | Level 2 | DH2100 | Construction | Phase 1 | IGMP | Scott Masterson | Construction |  |
| QTS-3811 |  | Gallery 2102 / Lineup R2100 // OFCI - L2 SET IN PLACE - Eq Type # - TIE SWD - 1 unit | 1d | 2026-02-14 | 2026-02-14 | QTS-2691 |  | 3d |  | QTS-PHX3 DC1 - 6 day w/ Holidays | Rosendin Electric, Inc | Level 2 | DH2100 | Construction | Phase 1 | IGMP | Scott Masterson | Construction |  |
| QTS-3821 |  | Gallery 2102 / Lineup R2100 // Set Reserve Busway Segment | 4d | 2026-02-14 | 2026-02-18 | QTS-1571, QTS-2691, QTS-49611 |  | 0d |  | QTS-PHX3 DC1 - 6 day w/ Holidays | Rosendin Electric, Inc | Level 2 | DH2100 | Construction | Phase 1 | IGMP | Scott Masterson | Construction |  |
| QTS-5541 |  | Gallery 2102 / Lineup R2100 // Pull LV Cables from TIE SWD to Reserve Busway | 2d | 2026-02-19 | 2026-02-20 | QTS-2691, QTS-3811, QTS-3821, QTS-23931 |  | 0d |  | QTS-PHX3 DC1 - 6 day w/ Holidays | Rosendin Electric, Inc | Level 2 | DH2100 | Construction | Phase 1 | IGMP | Scott Masterson | Construction |  |
| QTS-6181 |  | Gallery 2102 / Lineup R2100 // Pull LV Cables from POD to Reserve Busway | 4d | 2026-02-21 | 2026-02-25 | QTS-2691, QTS-5541, QTS-3821 |  | 0d |  | QTS-PHX3 DC1 - 6 day w/ Holidays | Rosendin Electric, Inc | Level 2 | DH2100 | Construction | Phase 1 | IGMP | Scott Masterson | Construction |  |
| QTS-7021 |  | Gallery 2102 / Lineup R2100 // Pull LV Cables from TIE SWD to TIE SWD adjacent # | 5d | 2026-02-26 | 2026-03-03 | QTS-2691, QTS-6181 |  | 0d |  | QTS-PHX3 DC1 - 6 day w/ Holidays | Rosendin Electric, Inc | Level 2 | DH2100 | Construction | Phase 1 | IGMP | Scott Masterson | Construction |  |
| QTS-7031 |  | Gallery 2102 / Lineup R2100 // Terminate Reserve Busway | 2d | 2026-02-26 | 2026-02-27 | QTS-6181, QTS-5541 |  | 4d |  | QTS-PHX3 DC1 - 6 day w/ Holidays | Rosendin Electric, Inc | Level 2 | DH2100 | Construction | Phase 1 | IGMP | Scott Masterson | Construction |  |
| QTS-8731 |  | Gallery 2102 / Lineup R2100 // Terminate TIE SWD | 2d | 2026-03-04 | 2026-03-05 | QTS-5541, QTS-7021 |  | 0d |  | QTS-PHX3 DC1 - 6 day w/ Holidays | Rosendin Electric, Inc | Level 2 | DH2100 | Construction | Phase 1 | IGMP | Scott Masterson | Construction |  |

| ID | WBS | Activity | Duration | Start | Finish | Predecessors | Complete | Remaining | Planned start | Planned finish | Total float | Free float | Constraint | Calendar | Subcontractor | Level | Location | Baseline | Layton Responsible Party | Phase-1 | Project Section | Allucent CSI Group | Project Section-1 | Phase-1-1 |
| --- | --- | --- | --- | --- | --- | --- | --- | --- | --- | --- | --- | --- | --- | --- | --- | --- | --- | --- | --- | --- | --- | --- | --- | --- |
|  | 4 | **DH 2100 / Rooftop Mechanical** |  | 2025-08-11 | 2026-02-12 |  |  |  |  |  |  |  |  |  |  |  |  |  |  |  |  |  |  |  |
| QTS-20761 |  | DH 2100 / Rooftop Mechanical // OFCI - L2 SET IN PLACE - Eq Type # - Chiller #1RT40 - 7 units | 5d | 2025-08-11 A | 2025-08-12 A | QTS-20691, QTS-20751, QTS-19811 FF+2d, QTS-36161, QTS-36231, QTS-36301, QTS-36371, QTS-36441 | 100% |  | 2025-08-11 | 2025-08-15 |  |  |  |  | Bel-Aire Mechanical, LLC | Level 2 | DH2100 | IGMP | Dave Wiltberger | Phase 1 | Construction | 01ADMIN |  |  |
| QTS-21701 |  | DH 2100 / Rooftop Mechanical // Set Doghouse Curbs | 8d | 2025-09-04 A | 2025-09-08 A | QTS-20771 | 100% |  | 2025-09-04 | 2025-09-15 |  |  |  |  | Rosendin Electric, Inc | Level 2 | DH2100 | IGMP | Scott Masterson |  | Construction | 01ADMIN | Construction | Phase 1 |
| QTS-25191 |  | DH 2100 / Rooftop Mechanical // Set Doghouses | 5d | 2025-09-09 A | 2025-09-16 A | QTS-19911, QTS-19561, QTS-21701 | 100% |  | 2025-09-16 | 2025-09-22 |  |  |  |  | Rosendin Electric, Inc | Level 2 | DH2100 | IGMP | Scott Masterson | Phase 1 | Construction |  |  |  |
| QTS-100110 |  | DH 2100 / Rooftop Mechanical // Install Roof Protection | 2d | 2025-10-22 A | 2025-10-23 A | QTS-42661 | 100% |  |  |  |  |  |  |  | Bel-Aire Mechanical, LLC | Level 2 | DH2100 | IGMP | Dave Wiltberger | Phase 1 | Construction | 01ADMIN |  |  |
| QTS-100130 |  | DH 2100 / Rooftop Mechanical // Install 12" CHWS/R Run-Outs to RPH Vaults | 13d | 2025-10-24 A | 2025-11-11 A | QTS-100110 | 100% |  |  |  |  |  |  |  | Bel-Aire Mechanical, LLC | Level 2 | DH2100 | IGMP | Dave Wiltberger | Phase 1 | Construction | 01ADMIN |  |  |
| QTS-100140 |  | DH 2100 / Rooftop Mechanical // Assemble & Install CHWS/R Piping from Mainline Piping to ACC Deck | 23d | 2025-10-24 A | 2026-01-14 | QTS-100130 SS | 100% | 0d | 2025-10-24 | 2025-11-19 | 15d | 0d |  | QTS-PHX3 DC1 - 6 day w/ Holidays | Bel-Aire Mechanical, LLC | Level 2 | DH2100 | IGMP | Dave Wiltberger | Phase 1 | Construction | 01ADMIN |  |  |
| QTS-100150 |  | DH 2100 / Rooftop Mechanical // Assemble & Install CHW Pump Assemblies at ACC Deck to Chillers | 28d | 2025-10-24 A | 2025-12-10 A | QTS-100140 SS | 100% |  | 2025-10-24 | 2025-12-04 |  |  |  |  | Bel-Aire Mechanical, LLC | Level 2 | DH2100 | IGMP | Dave Wiltberger | Phase 1 | Construction | 01ADMIN |  |  |
| QTS-21241 |  | DH 2100 / Rooftop Mechanical // Set Vertical Inline Centrifugal Pumps | 5d | 2025-10-24 A | 2025-12-22 A | QTS-20761, QTS-100150 SS | 100% |  | 2025-10-24 | 2025-10-29 |  |  |  | QTS-PHX3 DC1 - 6 day w/ Holidays | Bel-Aire Mechanical, LLC | Level 2 | DH2100 | IGMP | Dave Wiltberger | Phase 1 | Construction | 01ADMIN |  |  |
| QTS-100160 |  | DH 2100 / Rooftop Mechanical // Install Mainline Piping from RPH Vaults to Galleries (Risers) L2 / L1 | 10d | 2025-11-05 A | 2025-11-19 A | QTS-100150 SS+8d | 100% |  | 2025-11-05 | 2025-11-18 |  |  |  |  | Bel-Aire Mechanical, LLC | Level 2 | DH2100 | IGMP | Dave Wiltberger | Phase 1 | Construction | 01ADMIN |  |  |
| QTS-100190 |  | DH 2100 / Rooftop Mechanical // Install Grating, Toe Kicks, Hand Rails for TES Tanks | 4d | 2025-11-17 A | 2025-12-19 A | QTS-100330 | 100% |  | 2025-11-17 | 2025-11-20 |  |  |  | QTS-PHX3 DC1 - 6 day w/ Holidays | SteelFab Texas, Inc | Level 2 | DH2100 | IGMP | Dave Wiltberger | Phase 1 | Construction | 01ADMIN |  |  |
| QTS-100120 |  | DH 2100 / Rooftop Mechanical // Set RPH Vault Housings | 5d | 2025-11-19 A | 2025-11-25 A | QTS-100160 FF+2d | 100% |  |  |  |  |  |  |  | Bel-Aire Mechanical, LLC | Level 2 | DH2100 | IGMP | Dave Wiltberger | Phase 1 | Construction | 01ADMIN |  |  |
| QTS-100200 |  | DH 2100 / Rooftop Mechanical // OFCI - ROOF SET IN PLACE - Eq Type # - TES Tanks - 7 units | 1d | 2025-12-22 A | 2025-12-22 A | QTS-100190 | 100% |  |  |  |  |  |  |  | Bel-Aire Mechanical, LLC | Level 2 | DH2100 | IGMP | Dave Wiltberger | Phase 1 | Construction | 01ADMIN |  |  |
| QTS-22371 |  | DH 2100 / Rooftop Mechanical // OFCI - L2 SET IN PLACE - Eq Type # - DOAS-RT2100 - 2 units | 1d | 2026-01-12 A | 2026-01-12 A | QTS-21651, QTS-20771, QTS-22241, QTS-22251, QTS-100150 SS+5d | 100% |  |  |  |  |  |  | QTS-PHX3 DC1 - 6 day w/ Holidays | Bel-Aire Mechanical, LLC | Level 2 | DH2100 | IGMP | Dave Wiltberger |  | Construction | 01ADMIN | Construction | Phase 1 |
| QTS-100230 |  | DH 2100 / Rooftop Mechanical // Pressure Test (Air) Industrial Loop (L1) | 1d | 2026-01-20 | 2026-01-20 | QTS-100160, QTS-100480 FF, QTS-23971, QTS-46431, QTS-24311 |  |  |  |  | 11d | 0d |  | QTS-PHX3 DC1 - 6 day w/ Holidays | Bel-Aire Mechanical, LLC | Level 2 | DH2100 | IGMP | Dave Wiltberger | Phase 1 | Construction | 01ADMIN |  |  |
| QTS-100210 |  | DH 2100 / Rooftop Mechanical // Finalize Detailing for TES Tank CHW Piping/ Fabrication | 7d | 2026-01-21 A | 2026-01-22 | QTS-100200 |  | 7d | 2026-01-21 | 2026-01-28 | 11d | 0d |  | QTS-PHX3 DC1 - 6 day w/ Holidays | Bel-Aire Mechanical, LLC | Level 2 | DH2100 | IGMP | Dave Wiltberger | Phase 1 | Construction | 01ADMIN |  |  |
| QTS-100240 |  | DH 2100 / Rooftop Mechanical // Pressure Test (Air) Industrial Loop (L2) | 1d | 2026-01-21 | 2026-01-21 | QTS-100230 |  |  |  |  | 11d | 0d |  | QTS-PHX3 DC1 - 6 day w/ Holidays | Bel-Aire Mechanical, LLC | Level 2 | DH2100 | IGMP | Dave Wiltberger | Phase 1 | Construction | 01ADMIN |  |  |
| QTS-49411 |  | DH 2100 / Rooftop Mechanical // Rough In Power from to DOAS | 3d | 2026-01-21 A | 2026-01-16 | QTS-22371 |  | 3d | 2026-01-21 | 2026-01-23 | 46d | 12d |  | QTS-PHX3 DC1 - 6 day w/ Holidays | Bel-Aire Mechanical, LLC |  |  |  | Dave Wiltberger |  |  | 01ADMIN |  |  |
| QTS-100250 |  | DH 2100 / Rooftop Mechanical // Pressure Test (Air) Industrial Loop (Roof) | 1d | 2026-01-22 | 2026-01-22 | QTS-100240 |  |  |  |  | 11d | 0d |  | QTS-PHX3 DC1 - 6 day w/ Holidays | Bel-Aire Mechanical, LLC | Level 2 | DH2100 | IGMP | Dave Wiltberger | Phase 1 | Construction | 01ADMIN |  |  |
| QTS-100260 |  | DH 2100 / Rooftop Mechanical // Install Temp Flush Pump, Power Source for Pump & Other Associated Components | 5d | 2026-01-22 | 2026-01-27 | QTS-100250 SS |  |  |  |  | 11d | 0d |  | QTS-PHX3 DC1 - 6 day w/ Holidays | Bel-Aire Mechanical, LLC | Level 2 | DH2100 | IGMP | Dave Wiltberger | Phase 1 | Construction | 01ADMIN |  |  |
| QTS-100220 |  | DH 2100 / Rooftop Mechanical // Install TES Tank CHW Piping - 7 Units | 10d | 2026-01-23 | 2026-02-03 | QTS-100210, QTS-100120 |  |  |  |  | 11d | 0d |  | QTS-PHX3 DC1 - 6 day w/ Holidays | Bel-Aire Mechanical, LLC | Level 2 | DH2100 | IGMP | Dave Wiltberger | Phase 1 | Construction | 01ADMIN |  |  |
| QTS-100270 |  | DH 2100 / Rooftop Mechanical // Hydro-Test (Water) Industrial Loop (L1) | 1d | 2026-01-28 | 2026-01-28 | QTS-100260 |  |  |  |  | 11d | 0d |  | QTS-PHX3 DC1 - 6 day w/ Holidays | Bel-Aire Mechanical, LLC | Level 2 | DH2100 | IGMP | Dave Wiltberger | Phase 1 | Construction | 01ADMIN |  |  |
| QTS-100280 |  | DH 2100 / Rooftop Mechanical // Hydro-Test (Water) Industrial Loop (L2) | 1d | 2026-01-29 | 2026-01-29 | QTS-100270 |  |  |  |  | 11d | 0d |  | QTS-PHX3 DC1 - 6 day w/ Holidays | Bel-Aire Mechanical, LLC | Level 2 | DH2100 | IGMP | Dave Wiltberger | Phase 1 | Construction | 01ADMIN |  |  |
| QTS-100290 |  | DH 2100 / Rooftop Mechanical // Hydro-Test (Water) Industrial Loop (Roof) | 1d | 2026-01-30 | 2026-01-30 | QTS-100280 |  |  |  |  | 11d | 0d |  | QTS-PHX3 DC1 - 6 day w/ Holidays | Bel-Aire Mechanical, LLC | Level 2 | DH2100 | IGMP | Dave Wiltberger | Phase 1 | Construction | 01ADMIN |  |  |
| QTS-100300 |  | DH 2100 / Rooftop Mechanical // Fill and Flush Industrial Loop (Zone 1 - All Levels) | 10d | 2026-01-31 | 2026-02-09 | QTS-100290 |  |  |  |  | 13d | 10d |  | QTS-PHX3 DC1 - 7 day No Holidays | Bel-Aire Mechanical, LLC | Level 2 | DH2100 | IGMP | Dave Wiltberger | Phase 1 | Construction | 01ADMIN |  |  |
| QTS-100170 |  | DH 2100 / Rooftop Mechanical // Rough In Condensate Drain from DOAS | 2d | 2026-02-02 | 2026-02-03 | QTS-22371, QTS-49411 |  |  |  |  | 34d | 0d | start on or after 2026-02-02 | QTS-PHX3 DC1 - 6 day w/ Holidays | Bel-Aire Mechanical, LLC | Level 2 | DH2100 | IGMP | Dave Wiltberger | Phase 1 | Construction | 01ADMIN |  |  |
| QTS-100180 |  | DH 2100 / Rooftop Mechanical // Pre Energization Inspection DOAS | 1d | 2026-02-04 | 2026-02-04 | QTS-100170 |  |  |  |  | 34d | 0d |  | QTS-PHX3 DC1 - 6 day w/ Holidays | Bel-Aire Mechanical, LLC | Level 2 | DH2100 | IGMP | Dave Wiltberger | Phase 1 | Construction | 01ADMIN |  |  |
| QTS-100610 |  | DH 2100 / Rooftop Mechanical // Pressure Test (Air) Industrial Loop (TES Tank) | 1d | 2026-02-04 | 2026-02-04 | QTS-100220 |  |  |  |  | 11d | 0d |  | QTS-PHX3 DC1 - 6 day w/ Holidays | Bel-Aire Mechanical, LLC | Level 2 | DH2100 | IGMP | Dave Wiltberger | Phase 1 | Construction | 01ADMIN |  |  |
| QTS-100620 |  | DH 2100 / Rooftop Mechanical // Hydro-Test (Water) Industrial Loop (TES Tank) | 1d | 2026-02-05 | 2026-02-05 | QTS-100610 |  |  |  |  | 11d | 0d |  | QTS-PHX3 DC1 - 6 day w/ Holidays | Bel-Aire Mechanical, LLC | Level 2 | DH2100 | IGMP | Dave Wiltberger | Phase 1 | Construction | 01ADMIN |  |  |
| QTS-100630 |  | DH 2100 / Rooftop Mechanical // Fill and Flush Industrial Loop (TES Tank) | 7d | 2026-02-06 | 2026-02-12 | QTS-100620 |  |  |  |  | 13d | 12d |  | QTS-PHX3 DC1 - 7 day No Holidays | Bel-Aire Mechanical, LLC | Level 2 | DH2100 | IGMP | Dave Wiltberger | Phase 1 | Construction | 01ADMIN |  |  |

Notes:
- QTS-20761: allucent_notes: David Wiltberger on 2025-07-31T11:10:41.432Z: Crane will not be on site until 8-5 with some assembly required / allucent_notes: 2025-07-31T11:10:41.432Z - User: David Wiltberger - Date Added: 2025-07-31T11:10:41.432Z - Note: Crane will not be on site until 8-5 with some assembly required / 2025-08-12 10:08 - User: David Wiltberger - Date Added: 2025-08-12 10:08 - Note: Started ea
- QTS-100110: allucent_notes: David Wiltberger on 2025-08-19 09:08: changed pick order / allucent_notes_20251014_152335: David Wiltberger on 2025-08-19 09:08: changed pick order / David Wiltberger on 2025-09-02 10:09: Moving to accommodate roofing in Zone 1 / David Wiltberger on 2025-09-24 04:09: BAM not completed Potential Delay / David Wiltberger on 2025-09-30 12:09: BAM did not complete / David Wiltberger on 2025-10-14 10:10: set on recovery schedule / allucent_notes: 2025-08-19 09:08 - User: David Wiltberger - Date Added: 2025-08-19 09:08 - Note: changed pick order / 2025-09-02 10:09 - User: David Wiltberger - Date Added: 2025-09-02 10:09 - Note: Moving to accommodate roofing in Zone 1 / 2025-09-24 04:09 - User: Dav
- QTS-100130: allucent_notes: David Wiltberger on 2025-08-19 09:08: changed pick order / allucent_notes_20251014_152335: David Wiltberger on 2025-08-19 09:08: changed pick order / David Wiltberger on 2025-09-02 10:09: Moving to accommodate roofing in Zone 1 / David Wiltberger on 2025-09-24 04:09: BAM not completed Potential Delay / David Wiltberger on 2025-09-30 12:09: BAM did not complete / David Wiltberger on 2025-10-14 10:10: set on recovery schedule / allucent_notes: 2025-08-19 09:08 - User: David Wiltberger - Date Added: 2025-08-19 09:08 - Note: changed pick order / 2025-09-02 10:09 - User: David Wiltberger - Date Added: 2025-09-02 10:09 - Note: Moving to accommodate roofing in Zone 1 / 2025-09-24 04:09 - User: Dav
- QTS-100140: allucent_notes_20251230_164549: David Wiltberger on 2025-12-02 06:44: BAM install impacted by TES tank TFO / David Wiltberger on 2025-12-30 15:24: roof install impacted time / allucent_notes: David Wiltberger on 2025-08-19 09:08: changed pick order / allucent_notes_20251014_152335: David Wiltberger on 2025-08-19 09:08: changed pick order / David Wiltberger on 2025-09-02 10:09: Moving to accommodate roofing in Zone 1 / David Wiltberger on 2025-09-24 04:09: BAM not completed Potential Delay / David Wiltberger on 2025-09-30 12:09: BAM did not complete / David Wiltberger on 2025-10-14 10:10: set on recovery schedule / allucent_notes_20251202_153722: David Wiltberger on 2025-12-02 06:44: BAM install impacted by TES tank TFO / allucent_notes_20251209_203830: David Wiltberger on 2025-12-02 06:44: BAM install impacted by TES tank TFO / allucent_notes_20251216_165335: David Wiltberger on 2025-12-02 06:44: BAM install impacted by TES tank TFO / allucent_notes: 2025-12-02 06:44 - User: David Wiltberger - Date Added: 2025-12-02 06:44 - Note: BAM install impacted by TES tank TFO / 2025-12-30 15:24 - User: David Wiltberger - Date Added: 2025-12-30 15:24 - Note: roof install impacted time
- QTS-100150: allucent_notes: David Wiltberger on 2025-08-19 09:08: changed pick order / allucent_notes_20251014_152335: David Wiltberger on 2025-08-19 09:08: changed pick order / David Wiltberger on 2025-09-02 10:09: Moving to accommodate roofing in Zone 1 / David Wiltberger on 2025-09-24 04:09: BAM not completed Potential Delay / David Wiltberger on 2025-09-30 12:09: BAM did not complete / David Wiltberger on 2025-10-14 10:10: set on recovery schedule / allucent_notes_20251209_203830: Jason Johnston on 2025-12-09 20:30: Need update from team / allucent_notes_20251216_165335: Jason Johnston on 2025-12-09 20:30: Need update from team / allucent_notes: 2025-12-09 20:30 - User: Jason Johnston - Date Added: 2025-12-09 20:30 - Note: Need update from team
- QTS-21241: allucent_notes_20251230_164549: David Wiltberger on 2025-08-19 09:08: changed pick order / David Wiltberger on 2025-09-02 10:09: Moving to accommodate roofing in Zone 1 / David Wiltberger on 2025-09-24 04:09: BAM not completed Potential Delay / David Wiltberger on 2025-09-30 12:09: BAM did not complete / David Wiltberger on 2025-10-14 10:10: set on recovery schedule / David Wiltberger on 2025-11-04 14:11: impacted by lack of roof protection / Jason Johnston on 2025-11-11 16:11: tie to acc deck assemble and install. / David Wiltberger on 2025-12-02 06:44: BAM timing with crane pick impacted by TES tanks / David Wiltberger on 2025-12-30 15:24: roof install impacted time / allucent_notes: David Wiltberger on 2025-08-19 09:08: changed pick order / allucent_notes_20251014_152335: David Wiltberger on 2025-08-19 09:08: changed pick order / David Wiltberger on 2025-09-02 10:09: Moving to accommodate roofing in Zone 1 / David Wiltberger on 2025-09-24 04:09: BAM not completed Potential Delay / David Wiltberger on 2025-09-30 12:09: BAM did not complete / David Wiltberger on 2025-10-14 10:10: set on recovery schedule / allucent_notes_20251021_145627: David Wiltberger on 2025-08-19 09:08: changed pick order / David Wiltberger on 2025-09-02 10:09: Moving to accommodate roofing in Zone 1 / David Wiltberger on 2025-09-24 04:09: BAM not completed Potential Delay / David Wiltberger on 2025-09-30 12:09: BAM did not complete / David Wiltberger on 2025-10-14 10:10: set on recovery schedule / allucent_notes_20251027_224008: David Wiltberger on 2025-08-19 09:08: changed pick order / David Wiltberger on 2025-09-02 10:09: Moving to accommodate roofing in Zone 1 / David Wiltberger on 2025-09-24 04:09: BAM not completed Potential Delay / David Wiltberger on 2025-09-30 12:09: BAM did not complete / David Wiltberger on 2025-10-14 10:10: set on recovery schedule / allucent_notes_20251028_163138: David Wiltberger on 2025-08-19 09:08: changed pick order / David Wiltberger on 2025-09-02 10:09: Moving to accommodate roofing in Zone 1 / David Wiltberger on 2025-09-24 04:09: BAM not completed Potential Delay / David Wiltberger on 2025-09-30 12:09: BAM did not complete / David Wiltberger on 2025-10-14 10:10: set on recovery schedule / allucent_notes_20251104_160200: David Wiltberger on 2025-08-19 09:08: changed pick order / David Wiltberger on 2025-09-02 10:09: Moving to accommodate roofing in Zone 1 / David Wiltberger on 2025-09-24 04:09: BAM not completed Potential Delay / David Wiltberger on 2025-09-30 12:09: BAM did not complete / David Wiltberger on 2025-10-14 10:10: set on recovery schedule / David Wiltberger on 2025-11-04 14:11: impacted by lack of roof protection / allucent_notes_20251111_182405: David Wiltberger on 2025-08-19 09:08: changed pick order / David Wiltberger on 2025-09-02 10:09: Moving to accommodate roofing in Zone 1 / David Wiltberger on 2025-09-24 04:09: BAM not completed Potential Delay / David Wiltberger on 2025-09-30 12:09: BAM did not complete / David Wiltberger on 2025-10-14 10:10: set on recovery schedule / David Wiltberger on 2025-11-04 14:11: impacted by lack of roof protection / Jason Johnston on 2025-11-11 16:11: tie to acc deck assemble and install. / allucent_notes_20251118_192630: David Wiltberger on 2025-08-19 09:08: changed pick order / David Wiltberger on 2025-09-02 10:09: Moving to accommodate roofing in Zone 1 / David Wiltberger on 2025-09-24 04:09: BAM not completed Potential Delay / David Wiltberger on 2025-09-30 12:09: BAM did not complete / David Wiltberger on 2025-10-14 10:10: set on recovery schedule / David Wiltberger on 2025-11-04 14:11: impacted by lack of roof protection / Jason Johnston on 2025-11-11 16:11: tie to acc deck assemble and install. / allucent_notes_20251202_153722: David Wiltberger on 2025-08-19 09:08: changed pick order / David Wiltberger on 2025-09-02 10:09: Moving to accommodate roofing in Zone 1 / David Wiltberger on 2025-09-24 04:09: BAM not completed Potential Delay / David Wiltberger on 2025-09-30 12:09: BAM did not complete / David Wiltberger on 2025-10-14 10:10: set on recovery schedule / David Wiltberger on 2025-11-04 14:11: impacted by lack of roof protection / Jason Johnston on 2025-11-11 16:11: tie to acc deck assemble and install. / David Wiltberger on 2025-12-02 06:44: BAM timing with crane pick impacted by TES tanks / allucent_notes_20251209_203830: David Wiltberger on 2025-08-19 09:08: changed pick order / David Wiltberger on 2025-09-02 10:09: Moving to accommodate roofing in Zone 1 / David Wiltberger on 2025-09-24 04:09: BAM not completed Potential Delay / David Wiltberger on 2025-09-30 12:09: BAM did not complete / David Wiltberger on 2025-10-14 10:10: set on recovery schedule / David Wiltberger on 2025-11-04 14:11: impacted by lack of roof protection / Jason Johnston on 2025-11-11 16:11: tie to acc deck assemble and install. / David Wiltberger on 2025-12-02 06:44: BAM timing with crane pick impacted by TES tanks / allucent_notes_20251216_165335: David Wiltberger on 2025-08-19 09:08: changed pick order / David Wiltberger on 2025-09-02 10:09: Moving to accommodate roofing in Zone 1 / David Wiltberger on 2025-09-24 04:09: BAM not completed Potential Delay / David Wiltberger on 2025-09-30 12:09: BAM did not complete / David Wiltberger on 2025-10-14 10:10: set on recovery schedule / David Wiltberger on 2025-11-04 14:11: impacted by lack of roof protection / Jason Johnston on 2025-11-11 16:11: tie to acc deck assemble and install. / David Wiltberger on 2025-12-02 06:44: BAM timing with crane pick impacted by TES tanks / allucent_notes: 2025-08-19 09:08 - User: David Wiltberger - Date Added: 2025-08-19 09:08 - Note: changed pick order / 2025-09-02 10:09 - User: David Wiltberger - Date Added: 2025-09-02 10:09 - Note: Moving to accommodate roofing in Zone 1 / 2025-09-24 04:09 - User: Dav
- QTS-100160: allucent_notes: David Wiltberger on 2025-08-19 09:08: changed pick order / allucent_notes_20251014_152335: David Wiltberger on 2025-08-19 09:08: changed pick order / David Wiltberger on 2025-09-02 10:09: Moving to accommodate roofing in Zone 1 / David Wiltberger on 2025-09-24 04:09: BAM not completed Potential Delay / David Wiltberger on 2025-09-30 12:09: BAM did not complete / David Wiltberger on 2025-10-14 10:10: set on recovery schedule / allucent_notes: 2025-08-19 09:08 - User: David Wiltberger - Date Added: 2025-08-19 09:08 - Note: changed pick order / 2025-09-02 10:09 - User: David Wiltberger - Date Added: 2025-09-02 10:09 - Note: Moving to accommodate roofing in Zone 1 / 2025-09-24 04:09 - User: Dav
- QTS-100190: allucent_notes_20251230_164549: David Wiltberger on 2025-12-02 06:45: Grating install not complete for installation / David Wiltberger on 2025-12-30 15:39: TES tanks put on backwards / allucent_notes: David Wiltberger on 2025-08-19 09:08: changed pick order / allucent_notes_20251014_152335: David Wiltberger on 2025-08-19 09:08: changed pick order / David Wiltberger on 2025-09-02 10:09: Moving to accommodate roofing in Zone 1 / David Wiltberger on 2025-09-24 04:09: BAM not completed Potential Delay / David Wiltberger on 2025-09-30 12:09: BAM did not complete / David Wiltberger on 2025-10-14 10:10: set on recovery schedule / allucent_notes_20251202_153722: David Wiltberger on 2025-12-02 06:45: Grating install not complete for installation / allucent_notes_20251209_203830: David Wiltberger on 2025-12-02 06:45: Grating install not complete for installation / allucent_notes_20251216_165335: David Wiltberger on 2025-12-02 06:45: Grating install not complete for installation / allucent_notes: 2025-12-02 06:45 - User: David Wiltberger - Date Added: 2025-12-02 06:45 - Note: Grating install not complete for installation / 2025-12-30 15:39 - User: David Wiltberger - Date Added: 2025-12-30 15:39 - Note: TES tanks put on backwards
- QTS-100120: allucent_notes: David Wiltberger on 2025-08-19 09:08: changed pick order / allucent_notes_20251014_152335: David Wiltberger on 2025-08-19 09:08: changed pick order / David Wiltberger on 2025-09-02 10:09: Moving to accommodate roofing in Zone 1 / David Wiltberger on 2025-09-24 04:09: BAM not completed Potential Delay / David Wiltberger on 2025-09-30 12:09: BAM did not complete / David Wiltberger on 2025-10-14 10:10: set on recovery schedule / allucent_notes_20251118_192630: David Wiltberger on 2025-11-17 16:11: out of sequence / allucent_notes_20251202_153722: David Wiltberger on 2025-11-17 16:11: out of sequence / allucent_notes: 2025-11-17 16:11 - User: David Wiltberger - Date Added: 2025-11-17 16:11 - Note: out of sequence
- QTS-100200: allucent_notes: David Wiltberger on 2025-08-19 09:08: changed pick order / allucent_notes_20251014_152335: David Wiltberger on 2025-08-19 09:08: changed pick order / David Wiltberger on 2025-09-02 10:09: Moving to accommodate roofing in Zone 1 / David Wiltberger on 2025-09-24 04:09: BAM not completed Potential Delay / David Wiltberger on 2025-09-30 12:09: BAM did not complete / David Wiltberger on 2025-10-14 10:10: set on recovery schedule / allucent_notes: 2025-08-19 09:08 - User: David Wiltberger - Date Added: 2025-08-19 09:08 - Note: changed pick order / 2025-09-02 10:09 - User: David Wiltberger - Date Added: 2025-09-02 10:09 - Note: Moving to accommodate roofing in Zone 1 / 2025-09-24 04:09 - User: Dav
- QTS-22371: allucent_notes_20251230_164549: David Wiltberger on 2025-11-17 16:11: out of sequence / David Wiltberger on 2025-12-30 15:23: Ability to set with Crane restricted Task does not impact Data Hall work / allucent_notes_20251118_192630: David Wiltberger on 2025-11-17 16:11: out of sequence / allucent_notes_20251202_153722: David Wiltberger on 2025-11-17 16:11: out of sequence / allucent_notes_20251209_203830: David Wiltberger on 2025-11-17 16:11: out of sequence / allucent_notes_20251216_165335: David Wiltberger on 2025-11-17 16:11: out of sequence / allucent_notes: 2025-11-17 16:11 - User: David Wiltberger - Date Added: 2025-11-17 16:11 - Note: out of sequence / 2025-12-30 15:23 - User: David Wiltberger - Date Added: 2025-12-30 15:23 - Note: Ability to set with Crane restricted Task does not impact Data Hall work
- QTS-100230: allucent_notes: David Wiltberger on 2025-08-19 09:08: changed pick order / allucent_notes_20251014_152335: David Wiltberger on 2025-08-19 09:08: changed pick order / David Wiltberger on 2025-09-02 10:09: Moving to accommodate roofing in Zone 1 / David Wiltberger on 2025-09-24 04:09: BAM not completed Potential Delay / David Wiltberger on 2025-09-30 12:09: BAM did not complete / David Wiltberger on 2025-10-14 10:10: set on recovery schedule / allucent_notes: 2025-08-19 09:08 - User: David Wiltberger - Date Added: 2025-08-19 09:08 - Note: changed pick order / 2025-09-02 10:09 - User: David Wiltberger - Date Added: 2025-09-02 10:09 - Note: Moving to accommodate roofing in Zone 1 / 2025-09-24 04:09 - User: Dav
- QTS-100210: allucent_notes_20251230_164549: David Wiltberger on 2025-12-30 15:25: delayed for improper tes install / allucent_notes: David Wiltberger on 2025-08-19 09:08: changed pick order / allucent_notes_20251014_152335: David Wiltberger on 2025-08-19 09:08: changed pick order / David Wiltberger on 2025-09-02 10:09: Moving to accommodate roofing in Zone 1 / David Wiltberger on 2025-09-24 04:09: BAM not completed Potential Delay / David Wiltberger on 2025-09-30 12:09: BAM did not complete / David Wiltberger on 2025-10-14 10:10: set on recovery schedule / allucent_notes: 2025-12-30 15:25 - User: David Wiltberger - Date Added: 2025-12-30 15:25 - Note: delayed for improper tes install
- QTS-100240: allucent_notes: David Wiltberger on 2025-08-19 09:08: changed pick order / allucent_notes_20251014_152335: David Wiltberger on 2025-08-19 09:08: changed pick order / David Wiltberger on 2025-09-02 10:09: Moving to accommodate roofing in Zone 1 / David Wiltberger on 2025-09-24 04:09: BAM not completed Potential Delay / David Wiltberger on 2025-09-30 12:09: BAM did not complete / David Wiltberger on 2025-10-14 10:10: set on recovery schedule / allucent_notes: 2025-08-19 09:08 - User: David Wiltberger - Date Added: 2025-08-19 09:08 - Note: changed pick order / 2025-09-02 10:09 - User: David Wiltberger - Date Added: 2025-09-02 10:09 - Note: Moving to accommodate roofing in Zone 1 / 2025-09-24 04:09 - User: Dav
- QTS-100250: allucent_notes: David Wiltberger on 2025-08-19 09:08: changed pick order / allucent_notes_20251014_152335: David Wiltberger on 2025-08-19 09:08: changed pick order / David Wiltberger on 2025-09-02 10:09: Moving to accommodate roofing in Zone 1 / David Wiltberger on 2025-09-24 04:09: BAM not completed Potential Delay / David Wiltberger on 2025-09-30 12:09: BAM did not complete / David Wiltberger on 2025-10-14 10:10: set on recovery schedule / allucent_notes: 2025-08-19 09:08 - User: David Wiltberger - Date Added: 2025-08-19 09:08 - Note: changed pick order / 2025-09-02 10:09 - User: David Wiltberger - Date Added: 2025-09-02 10:09 - Note: Moving to accommodate roofing in Zone 1 / 2025-09-24 04:09 - User: Dav
- QTS-100260: allucent_notes: David Wiltberger on 2025-08-19 09:08: changed pick order / allucent_notes_20251014_152335: David Wiltberger on 2025-08-19 09:08: changed pick order / David Wiltberger on 2025-09-02 10:09: Moving to accommodate roofing in Zone 1 / David Wiltberger on 2025-09-24 04:09: BAM not completed Potential Delay / David Wiltberger on 2025-09-30 12:09: BAM did not complete / David Wiltberger on 2025-10-14 10:10: set on recovery schedule / allucent_notes: 2025-08-19 09:08 - User: David Wiltberger - Date Added: 2025-08-19 09:08 - Note: changed pick order / 2025-09-02 10:09 - User: David Wiltberger - Date Added: 2025-09-02 10:09 - Note: Moving to accommodate roofing in Zone 1 / 2025-09-24 04:09 - User: Dav
- QTS-100220: allucent_notes: David Wiltberger on 2025-08-19 09:08: changed pick order / allucent_notes_20251014_152335: David Wiltberger on 2025-08-19 09:08: changed pick order / David Wiltberger on 2025-09-02 10:09: Moving to accommodate roofing in Zone 1 / David Wiltberger on 2025-09-24 04:09: BAM not completed Potential Delay / David Wiltberger on 2025-09-30 12:09: BAM did not complete / David Wiltberger on 2025-10-14 10:10: set on recovery schedule / allucent_notes: 2025-08-19 09:08 - User: David Wiltberger - Date Added: 2025-08-19 09:08 - Note: changed pick order / 2025-09-02 10:09 - User: David Wiltberger - Date Added: 2025-09-02 10:09 - Note: Moving to accommodate roofing in Zone 1 / 2025-09-24 04:09 - User: Dav
- QTS-100270: allucent_notes: David Wiltberger on 2025-08-19 09:08: changed pick order / allucent_notes_20251014_152335: David Wiltberger on 2025-08-19 09:08: changed pick order / David Wiltberger on 2025-09-02 10:09: Moving to accommodate roofing in Zone 1 / David Wiltberger on 2025-09-24 04:09: BAM not completed Potential Delay / David Wiltberger on 2025-09-30 12:09: BAM did not complete / David Wiltberger on 2025-10-14 10:10: set on recovery schedule / allucent_notes: 2025-08-19 09:08 - User: David Wiltberger - Date Added: 2025-08-19 09:08 - Note: changed pick order / 2025-09-02 10:09 - User: David Wiltberger - Date Added: 2025-09-02 10:09 - Note: Moving to accommodate roofing in Zone 1 / 2025-09-24 04:09 - User: Dav
- QTS-100280: allucent_notes: David Wiltberger on 2025-08-19 09:08: changed pick order / allucent_notes_20251014_152335: David Wiltberger on 2025-08-19 09:08: changed pick order / David Wiltberger on 2025-09-02 10:09: Moving to accommodate roofing in Zone 1 / David Wiltberger on 2025-09-24 04:09: BAM not completed Potential Delay / David Wiltberger on 2025-09-30 12:09: BAM did not complete / David Wiltberger on 2025-10-14 10:10: set on recovery schedule / allucent_notes: 2025-08-19 09:08 - User: David Wiltberger - Date Added: 2025-08-19 09:08 - Note: changed pick order / 2025-09-02 10:09 - User: David Wiltberger - Date Added: 2025-09-02 10:09 - Note: Moving to accommodate roofing in Zone 1 / 2025-09-24 04:09 - User: Dav
- QTS-100290: allucent_notes: David Wiltberger on 2025-08-19 09:08: changed pick order / allucent_notes_20251014_152335: David Wiltberger on 2025-08-19 09:08: changed pick order / David Wiltberger on 2025-09-02 10:09: Moving to accommodate roofing in Zone 1 / David Wiltberger on 2025-09-24 04:09: BAM not completed Potential Delay / David Wiltberger on 2025-09-30 12:09: BAM did not complete / David Wiltberger on 2025-10-14 10:10: set on recovery schedule / allucent_notes: 2025-08-19 09:08 - User: David Wiltberger - Date Added: 2025-08-19 09:08 - Note: changed pick order / 2025-09-02 10:09 - User: David Wiltberger - Date Added: 2025-09-02 10:09 - Note: Moving to accommodate roofing in Zone 1 / 2025-09-24 04:09 - User: Dav
- QTS-100300: allucent_notes: David Wiltberger on 2025-08-19 09:08: changed pick order / allucent_notes_20251014_152335: David Wiltberger on 2025-08-19 09:08: changed pick order / David Wiltberger on 2025-09-02 10:09: Moving to accommodate roofing in Zone 1 / David Wiltberger on 2025-09-24 04:09: BAM not completed Potential Delay / David Wiltberger on 2025-09-30 12:09: BAM did not complete / David Wiltberger on 2025-10-14 10:10: set on recovery schedule / allucent_notes: 2025-08-19 09:08 - User: David Wiltberger - Date Added: 2025-08-19 09:08 - Note: changed pick order / 2025-09-02 10:09 - User: David Wiltberger - Date Added: 2025-09-02 10:09 - Note: Moving to accommodate roofing in Zone 1 / 2025-09-24 04:09 - User: Dav
- QTS-100170: allucent_notes: David Wiltberger on 2025-08-19 09:08: changed pick order / allucent_notes_20251014_152335: David Wiltberger on 2025-08-19 09:08: changed pick order / David Wiltberger on 2025-09-02 10:09: Moving to accommodate roofing in Zone 1 / David Wiltberger on 2025-09-24 04:09: BAM not completed Potential Delay / David Wiltberger on 2025-09-30 12:09: BAM did not complete / David Wiltberger on 2025-10-14 10:10: set on recovery schedule / allucent_notes: 2025-08-19 09:08 - User: David Wiltberger - Date Added: 2025-08-19 09:08 - Note: changed pick order / 2025-09-02 10:09 - User: David Wiltberger - Date Added: 2025-09-02 10:09 - Note: Moving to accommodate roofing in Zone 1 / 2025-09-24 04:09 - User: Dav
- QTS-100180: allucent_notes: David Wiltberger on 2025-08-19 09:08: changed pick order / allucent_notes_20251014_152335: David Wiltberger on 2025-08-19 09:08: changed pick order / David Wiltberger on 2025-09-02 10:09: Moving to accommodate roofing in Zone 1 / David Wiltberger on 2025-09-24 04:09: BAM not completed Potential Delay / David Wiltberger on 2025-09-30 12:09: BAM did not complete / David Wiltberger on 2025-10-14 10:10: set on recovery schedule / allucent_notes: 2025-08-19 09:08 - User: David Wiltberger - Date Added: 2025-08-19 09:08 - Note: changed pick order / 2025-09-02 10:09 - User: David Wiltberger - Date Added: 2025-09-02 10:09 - Note: Moving to accommodate roofing in Zone 1 / 2025-09-24 04:09 - User: Dav
- QTS-100610: allucent_notes: David Wiltberger on 2025-08-19 09:08: changed pick order / allucent_notes_20251014_152335: David Wiltberger on 2025-08-19 09:08: changed pick order / David Wiltberger on 2025-09-02 10:09: Moving to accommodate roofing in Zone 1 / David Wiltberger on 2025-09-24 04:09: BAM not completed Potential Delay / David Wiltberger on 2025-09-30 12:09: BAM did not complete / David Wiltberger on 2025-10-14 10:10: set on recovery schedule / allucent_notes: 2025-08-19 09:08 - User: David Wiltberger - Date Added: 2025-08-19 09:08 - Note: changed pick order / 2025-09-02 10:09 - User: David Wiltberger - Date Added: 2025-09-02 10:09 - Note: Moving to accommodate roofing in Zone 1 / 2025-09-24 04:09 - User: Dav
- QTS-100620: allucent_notes: David Wiltberger on 2025-08-19 09:08: changed pick order / allucent_notes_20251014_152335: David Wiltberger on 2025-08-19 09:08: changed pick order / David Wiltberger on 2025-09-02 10:09: Moving to accommodate roofing in Zone 1 / David Wiltberger on 2025-09-24 04:09: BAM not completed Potential Delay / David Wiltberger on 2025-09-30 12:09: BAM did not complete / David Wiltberger on 2025-10-14 10:10: set on recovery schedule / allucent_notes: 2025-08-19 09:08 - User: David Wiltberger - Date Added: 2025-08-19 09:08 - Note: changed pick order / 2025-09-02 10:09 - User: David Wiltberger - Date Added: 2025-09-02 10:09 - Note: Moving to accommodate roofing in Zone 1 / 2025-09-24 04:09 - User: Dav
- QTS-100630: allucent_notes: David Wiltberger on 2025-08-19 09:08: changed pick order / allucent_notes_20251014_152335: David Wiltberger on 2025-08-19 09:08: changed pick order / David Wiltberger on 2025-09-02 10:09: Moving to accommodate roofing in Zone 1 / David Wiltberger on 2025-09-24 04:09: BAM not completed Potential Delay / David Wiltberger on 2025-09-30 12:09: BAM did not complete / David Wiltberger on 2025-10-14 10:10: set on recovery schedule / allucent_notes: 2025-08-19 09:08 - User: David Wiltberger - Date Added: 2025-08-19 09:08 - Note: changed pick order / 2025-09-02 10:09 - User: David Wiltberger - Date Added: 2025-09-02 10:09 - Note: Moving to accommodate roofing in Zone 1 / 2025-09-24 04:09 - User: Dav

| ID | WBS | Activity | Duration | Start | Finish | Predecessors | Complete | Remaining | Planned start | Planned finish | Total float | Free float | Subcontractor | Level | Location | Baseline | Layton Responsible Party | Phase-1 | Project Section | Allucent CSI Group | Project Section-1 | Phase-1-1 |
| --- | --- | --- | --- | --- | --- | --- | --- | --- | --- | --- | --- | --- | --- | --- | --- | --- | --- | --- | --- | --- | --- | --- |
|  | 1 | **Fragnet Bulletin 4 Grating** |  | 2025-10-10 | 2026-01-28 |  |  |  |  |  |  |  |  |  |  |  |  |  |  |  |  |  |
| QTS-1001650 |  | Fragnet / DH 2100 / Rooftop Mechanical // Bulletin 4 Received by Layton | 1d | 2025-10-10 A | 2025-10-10 A | QTS-1371 SS | 100% |  |  |  |  |  | Bel-Aire Mechanical, LLC | Level 2 | DH2100 | IGMP | Dave Wiltberger | Phase 1 | Construction | 01ADMIN |  |  |
| QTS-1001670 |  | Fragnet / DH 2100 / Rooftop Mechanical // Updated Bulletin 4 Received by Layton | 3d | 2025-10-13 A | 2025-10-15 A | QTS-1001650 | 100% |  | 2025-10-10 | 2025-10-14 |  |  | Bel-Aire Mechanical, LLC | Level 2 | DH2100 | IGMP | Dave Wiltberger | Phase 1 | Construction | 01ADMIN |  |  |
| QTS-1001680 |  | Fragnet / DH 2100 / Rooftop Mechanical // Layton Submitting Shop Drawings to QTS Design (DLB) | 23d | 2025-10-16 A | 2025-11-17 A | QTS-1001670 | 100% |  | 2025-10-10 | 2025-11-11 |  |  | Bel-Aire Mechanical, LLC | Level 2 | DH2100 | IGMP | Dave Wiltberger | Phase 1 | Construction | 01ADMIN |  |  |
| QTS-1001690 |  | Fragnet / DH 2100 / Rooftop Mechanical // Layton Submitting Shop Drawings to QTS Design (Corgan) | 23d | 2025-11-18 A | 2025-12-09 A | QTS-1001680 | 100% |  | 2025-10-10 | 2025-11-11 |  |  | Bel-Aire Mechanical, LLC | Level 2 | DH2100 | IGMP | Dave Wiltberger | Phase 1 | Construction | 01ADMIN |  |  |
| QTS-1001700 |  | Fragnet / DH 2100 / Rooftop Mechanical // QTS Design Response for Grating | 10d | 2025-12-10 A | 2026-01-14 | QTS-1001690 | 100% | 0d | 2025-10-10 | 2025-10-23 | 67d | 0d | Bel-Aire Mechanical, LLC | Level 2 | DH2100 | IGMP | Ron Carroll | Phase 1 | Construction | 01ADMIN |  |  |
| QTS-1001660 |  | Fragnet / DH 2100 / Rooftop Mechanical // Install Grating, Toe Kicks, Hand Rails to Complete Chiller Deck | 10d | 2026-01-14 | 2026-01-28 | QTS-1001700 |  |  |  |  | 67d | 69d | Bel-Aire Mechanical, LLC | Level 2 | DH2100 | IGMP | Ron Carroll | Phase 1 | Construction | 01ADMIN |  |  |
|  | 2 | **Remaining Scope** |  |  |  |  |  |  |  |  |  |  |  |  |  |  |  |  |  |  |  |  |
|  | 5 | **DH 2100 / Mechanical Yard Buildout** |  | 2025-09-05 | 2026-02-04 |  |  |  |  |  |  |  |  |  |  |  |  |  |  |  |  |  |
| QTS-42271 |  | DH 2100 / Mechanical Yard // Excavate for MV Conduits | 5d | 2025-09-05 A | 2025-09-11 A | QTS-19811, QTS-49441, QTS-42681 SS+7d | 100% |  |  |  |  |  | Oregon Electric Group | Level 2 | Gen Yard | IGMP | Ron Carroll |  | Construction | 01ADMIN | Construction | Phase 1 |
| QTS-20781 |  | DH 2100 / Mechanical Yard // Prep for Pier Footings | 3d | 2025-09-09 A | 2025-09-11 A | QTS-19811 | 100% |  |  |  |  |  | Suntec Concrete Inc | Level 2 | Gen Yard | IGMP | Ron Carroll | Phase 1 | Construction |  |  |  |
| QTS-21481 |  | DH 2100 / Mechanical Yard // Form, Reinforce, & Pour 24" Diameter Piers #1 | 6d | 2025-09-12 A | 2025-09-19 A | QTS-20781 | 100% |  |  |  |  |  | Suntec Concrete Inc | Level 2 | Gen Yard | IGMP | Ron Carroll | Phase 1 | Construction |  |  |  |
| QTS-42281 |  | DH 2100 / Mechanical Yard // Install Conduit for MV Cables | 7d | 2025-09-12 A | 2025-09-24 A | QTS-42271 | 100% |  | 2025-09-12 | 2025-09-22 |  |  | Oregon Electric Group | Level 2 | Gen Yard | IGMP | Ron Carroll |  | Construction | 01ADMIN | Construction | Phase 1 |
| QTS-42791 |  | DH 2100 / Mechanical Yard // Form, Reinforce, & Pour 24" Diameter Piers #2 | 5d | 2025-09-22 A | 2025-10-07 A | QTS-21481 | 100% |  | 2025-09-22 | 2025-09-26 |  |  | Suntec Concrete Inc | Level 2 | Gen Yard | IGMP | Ron Carroll |  | Construction |  | Construction | Phase 1 |
| QTS-23001 |  | DH 2100 / Mechanical Yard // Form, Reinforce, & Pour Thickened Slab On Grade for Transformers | 9d | 2025-09-23 A | 2025-10-13 A | QTS-42791 SS+1d | 100% |  | 2025-09-23 | 2025-10-03 |  |  | Suntec Concrete Inc | Level 2 | Gen Yard | IGMP | Ron Carroll | Phase 1 | Construction | 01ADMIN |  |  |
| QTS-42291 |  | DH 2100 / Mechanical Yard // Slurry for MV Conduits | 5d | 2025-09-24 A | 2025-09-30 A | QTS-42281 FF+3d | 100% |  |  |  |  |  | Oregon Electric Group | Level 2 | Gen Yard | IGMP | Ron Carroll |  | Construction | 01ADMIN | Construction | Phase 1 |
| QTS-42301 |  | DH 2100 / Mechanical Yard // Backfill Conduit for MV Cables | 5d | 2025-09-25 A | 2025-10-01 A | QTS-42291 FF+1d | 100% |  |  |  |  |  | Oregon Electric Group | Level 2 | Gen Yard | IGMP | Ron Carroll |  | Construction |  | Construction | Phase 1 |
| QTS-99360 |  | DH 2100 / Mechanical Yard // Form, Reinforce, & Pour Thickened Slab On Grade for MVGs | 5d | 2025-09-29 A | 2025-10-17 A | QTS-23001 FF | 100% |  | 2025-09-29 | 2025-10-03 |  |  | Suntec Concrete Inc | Level 2 | Gen Yard | IGMP | Ron Carroll | Phase 1 | Construction | 01ADMIN |  |  |
| QTS-22691 |  | DH 2100 / Mechanical Yard // Form, Reinforce, & Pour Thickened Slab On Grade for UPS Pods | 5d | 2025-10-06 A | 2025-10-10 A | QTS-42791 FF+3d, QTS-23001 FF+1d | 100% |  |  |  |  |  | Suntec Concrete Inc | Level 2 | Gen Yard | IGMP | Ron Carroll |  | Construction | 01ADMIN | Construction | Phase 1 |
| QTS-23391 |  | DH 2100 / Mechanical Yard // Form, Reinforce, & Pour Thickened Slab On Grade for Generators | 10d | 2025-10-14 A | 2025-10-17 A | QTS-23001, QTS-22691 | 100% |  | 2025-10-13 | 2025-10-24 |  |  | Suntec Concrete Inc | Level 2 | Gen Yard | IGMP | Ron Carroll | Phase 1 | Construction | 01ADMIN |  |  |
| QTS-22011 |  | DH 2100 / Mechanical Yard // Place Gen Yard Gravel | 5d | 2025-10-15 A | 2025-10-21 A | QTS-42791, QTS-22691, QTS-23001 | 100% |  |  |  |  |  | Redpoint Contracting | Level 2 | Gen Yard | IGMP | Ron Carroll |  | Construction | 01ADMIN | Construction | Phase 1 |
| QTS-99370 |  | DH 2100 / Mechanical Yard // OFCI - L2 SET IN PLACE - Eq Type # - DC1-MVG-A1 - 1 unit | 1d | 2025-10-20 A | 2025-10-20 A | QTS-99360, QTS-99300 | 100% |  |  |  |  |  | Rosendin Electric, Inc | Level 2 | Gen Yard | IGMP | Scott Masterson | Phase 1 | Construction | 01ADMIN |  |  |
| QTS-99380 |  | DH 2100 / Mechanical Yard // OFCI - L2 SET IN PLACE - Eq Type # - DC1-MVG-B1 - 1 unit | 1d | 2025-10-21 A | 2025-10-21 A | QTS-99370, QTS-99310 | 100% |  | 2025-10-22 | 2025-10-22 |  |  | Rosendin Electric, Inc | Level 2 | Gen Yard | IGMP | Scott Masterson | Phase 1 | Construction | 01ADMIN |  |  |
| QTS-49961 |  | DH 2100 / Mechanical Yard // Install Cable Bus | 10d | 2025-10-22 A | 2025-11-04 A | QTS-22011, QTS-49651 | 100% |  |  |  |  |  | Oregon Electric Group | Level 2 | Gen Yard | IGMP | Ron Carroll |  | Construction | 01ADMIN | Construction | Phase 1 |
| QTS-23931 |  | DH 2100 / Mechanical Yard // OFCI - L2 SET IN PLACE - Eq Type # - 3000A UPS Pods - 7 units | 5d | 2025-10-27 A | 2025-10-31 A | QTS-23841 FF, QTS-23901 SS, QTS-23391 SS+4d, QTS-36171 FF, QTS-36241 FF, QTS-36311 FF, QTS-36381 SS, QTS-36451 SS, QTS-22691 | 100% |  |  |  |  |  | Rosendin Electric, Inc | Level 2 | Gen Yard | IGMP | Scott Masterson | Phase 1 | Construction | 01ADMIN |  |  |
| QTS-24281 |  | DH 2100 / Mechanical Yard // OFCI - L2 SET IN PLACE - Eq Type # - 2500KVA Transformers - 7 units | 3d | 2025-10-28 A | 2025-10-30 A | QTS-23391, QTS-24201, QTS-24261, QTS-36181, QTS-36251, QTS-36321, QTS-36391, QTS-36461, QTS-99380 FF | 100% |  | 2025-10-29 | 2025-10-31 |  |  | Rosendin Electric, Inc | Level 2 | Gen Yard | IGMP | Scott Masterson | Phase 1 | Construction | 01ADMIN |  |  |
| QTS-25021 |  | DH 2100 / Mechanical Yard // OFCI - L2 SET IN PLACE - Eq Type # - 2500KW Generator #A-21 - 1 unit | 1d | 2025-11-10 A | 2025-11-10 A | QTS-24431, QTS-24441, QTS-24461, QTS-24281 | 100% |  |  |  |  |  | Rosendin Electric, Inc | Level 2 | Gen Yard |  | Scott Masterson |  | Construction | 01ADMIN | Construction | Phase 1 |
| QTS-25031 |  | DH 2100 / Mechanical Yard // OFCI - L2 SET IN PLACE - Eq Type # - 2500KW Generator #B-21 - 1 unit | 1d | 2025-11-11 A | 2025-11-11 A | QTS-39411, QTS-39421, QTS-39441, QTS-25021 | 100% |  |  |  |  |  | Rosendin Electric, Inc | Level 2 | Gen Yard |  | Scott Masterson |  | Construction | 01ADMIN | Construction | Phase 1 |
| QTS-24931 |  | DH 2100 / Mechanical Yard // Measure for FRP Platforms | 1d | 2025-11-12 A | 2025-11-12 A | QTS-39471 | 100% |  |  |  |  |  | Advantic Building Group, LLC | Level 2 | Gen Yard | IGMP | Ron Carroll |  | Construction | 01ADMIN | Construction | Phase 1 |
| QTS-39461 |  | DH 2100 / Mechanical Yard // OFCI - L2 SET IN PLACE - Eq Type # - 2500KW Generator #C-21 - 1 unit | 1d | 2025-11-12 A | 2025-11-12 A | QTS-25031 SS, QTS-39501, QTS-39511, QTS-39521, QTS-39531 | 100% |  |  |  |  |  | Rosendin Electric, Inc | Level 2 | Gen Yard |  | Scott Masterson |  | Construction | 01ADMIN | Construction | Phase 1 |
| QTS-39471 |  | DH 2100 / Mechanical Yard // OFCI - L2 SET IN PLACE - Eq Type # - 2500KW Generator #R-21 - 1 unit | 1d | 2025-11-12 A | 2025-11-12 A | QTS-39491 SS, QTS-39661, QTS-39671, QTS-39691 | 100% |  |  |  |  |  | Rosendin Electric, Inc | Level 2 | Gen Yard |  | Scott Masterson |  | Construction | 01ADMIN | Construction | Phase 1 |
| QTS-39481 |  | DH 2100 / Mechanical Yard // OFCI - L2 SET IN PLACE - Eq Type # - 2500KW Generator #E-21 - 1 unit | 1d | 2025-11-12 A | 2025-11-12 A | QTS-39451, QTS-39581, QTS-39591, QTS-39611, QTS-39461 SS | 100% |  |  |  |  |  | Rosendin Electric, Inc | Level 2 | Gen Yard |  | Scott Masterson |  | Construction | 01ADMIN | Construction | Phase 1 |
| QTS-39491 |  | DH 2100 / Mechanical Yard // OFCI - L2 SET IN PLACE - Eq Type # - 2500KW Generator #F-21 - 1 unit | 1d | 2025-11-12 A | 2025-11-12 A | QTS-39481 SS, QTS-39621, QTS-39631, QTS-39651 | 100% |  |  |  |  |  | Rosendin Electric, Inc | Level 2 | Gen Yard |  | Scott Masterson |  | Construction | 01ADMIN | Construction | Phase 1 |
| QTS-39451 |  | DH 2100 / Mechanical Yard // OFCI - L2 SET IN PLACE - Eq Type # - 2500KW Generator #D-21 - 1 unit | 1d | 2025-11-20 A | 2025-11-20 A | QTS-39541, QTS-39551, QTS-39571 | 100% |  |  |  |  |  | Rosendin Electric, Inc | Level 2 | Gen Yard |  | Scott Masterson |  | Construction | 01ADMIN | Construction | Phase 1 |

Notes:
- QTS-1001650: allucent_notes: David Wiltberger on 2025-08-19 09:08: changed pick order / allucent_notes_20251014_152335: David Wiltberger on 2025-08-19 09:08: changed pick order / David Wiltberger on 2025-09-02 10:09: Moving to accommodate roofing in Zone 1 / David Wiltberger on 2025-09-24 04:09: BAM not completed Potential Delay / David Wiltberger on 2025-09-30 12:09: BAM did not complete / David Wiltberger on 2025-10-14 10:10: set on recovery schedule / allucent_notes_20251202_153722: David Wiltberger on 2025-12-02 06:45: Grating install not complete for installation / allucent_notes_20251209_203830: David Wiltberger on 2025-12-02 06:45: Grating install not complete for installation / allucent_notes_20251216_165335: David Wiltberger on 2025-12-02 06:45: Grating install not complete for installation / allucent_notes: 2025-12-02 06:45 - User: David Wiltberger - Date Added: 2025-12-02 06:45 - Note: Grating install not complete for installation
- QTS-1001670: allucent_notes: David Wiltberger on 2025-08-19 09:08: changed pick order / allucent_notes_20251014_152335: David Wiltberger on 2025-08-19 09:08: changed pick order / David Wiltberger on 2025-09-02 10:09: Moving to accommodate roofing in Zone 1 / David Wiltberger on 2025-09-24 04:09: BAM not completed Potential Delay / David Wiltberger on 2025-09-30 12:09: BAM did not complete / David Wiltberger on 2025-10-14 10:10: set on recovery schedule / allucent_notes_20251202_153722: David Wiltberger on 2025-12-02 06:45: Grating install not complete for installation / allucent_notes_20251209_203830: David Wiltberger on 2025-12-02 06:45: Grating install not complete for installation / allucent_notes_20251216_165335: David Wiltberger on 2025-12-02 06:45: Grating install not complete for installation / allucent_notes: 2025-12-02 06:45 - User: David Wiltberger - Date Added: 2025-12-02 06:45 - Note: Grating install not complete for installation
- QTS-1001680: allucent_notes: David Wiltberger on 2025-08-19 09:08: changed pick order / allucent_notes_20251014_152335: David Wiltberger on 2025-08-19 09:08: changed pick order / David Wiltberger on 2025-09-02 10:09: Moving to accommodate roofing in Zone 1 / David Wiltberger on 2025-09-24 04:09: BAM not completed Potential Delay / David Wiltberger on 2025-09-30 12:09: BAM did not complete / David Wiltberger on 2025-10-14 10:10: set on recovery schedule / allucent_notes_20251202_153722: David Wiltberger on 2025-12-02 06:45: Grating install not complete for installation / allucent_notes_20251209_203830: David Wiltberger on 2025-12-02 06:45: Grating install not complete for installation / allucent_notes_20251216_165335: David Wiltberger on 2025-12-02 06:45: Grating install not complete for installation / allucent_notes: 2025-12-02 06:45 - User: David Wiltberger - Date Added: 2025-12-02 06:45 - Note: Grating install not complete for installation
- QTS-1001690: allucent_notes: David Wiltberger on 2025-08-19 09:08: changed pick order / allucent_notes_20251014_152335: David Wiltberger on 2025-08-19 09:08: changed pick order / David Wiltberger on 2025-09-02 10:09: Moving to accommodate roofing in Zone 1 / David Wiltberger on 2025-09-24 04:09: BAM not completed Potential Delay / David Wiltberger on 2025-09-30 12:09: BAM did not complete / David Wiltberger on 2025-10-14 10:10: set on recovery schedule / allucent_notes_20251202_153722: David Wiltberger on 2025-12-02 06:45: Grating install not complete for installation / allucent_notes_20251209_203830: David Wiltberger on 2025-12-02 06:45: Grating install not complete for installation / allucent_notes_20251216_165335: David Wiltberger on 2025-12-02 06:45: Grating install not complete for installation / allucent_notes: 2025-12-02 06:45 - User: David Wiltberger - Date Added: 2025-12-02 06:45 - Note: Grating install not complete for installation
- QTS-1001700: allucent_notes: David Wiltberger on 2025-08-19 09:08: changed pick order / allucent_notes_20251014_152335: David Wiltberger on 2025-08-19 09:08: changed pick order / David Wiltberger on 2025-09-02 10:09: Moving to accommodate roofing in Zone 1 / David Wiltberger on 2025-09-24 04:09: BAM not completed Potential Delay / David Wiltberger on 2025-09-30 12:09: BAM did not complete / David Wiltberger on 2025-10-14 10:10: set on recovery schedule / allucent_notes_20251202_153722: David Wiltberger on 2025-12-02 06:45: Grating install not complete for installation / allucent_notes_20251209_203830: David Wiltberger on 2025-12-02 06:45: Grating install not complete for installation / allucent_notes_20251216_165335: David Wiltberger on 2025-12-02 06:45: Grating install not complete for installation / allucent_notes: 2025-12-02 06:45 - User: David Wiltberger - Date Added: 2025-12-02 06:45 - Note: Grating install not complete for installation
- QTS-1001660: allucent_notes: David Wiltberger on 2025-08-19 09:08: changed pick order / allucent_notes_20251014_152335: David Wiltberger on 2025-08-19 09:08: changed pick order / David Wiltberger on 2025-09-02 10:09: Moving to accommodate roofing in Zone 1 / David Wiltberger on 2025-09-24 04:09: BAM not completed Potential Delay / David Wiltberger on 2025-09-30 12:09: BAM did not complete / David Wiltberger on 2025-10-14 10:10: set on recovery schedule / allucent_notes_20251202_153722: David Wiltberger on 2025-12-02 06:45: Grating install not complete for installation / allucent_notes_20251209_203830: David Wiltberger on 2025-12-02 06:45: Grating install not complete for installation / allucent_notes_20251216_165335: David Wiltberger on 2025-12-02 06:45: Grating install not complete for installation / allucent_notes: 2025-12-02 06:45 - User: David Wiltberger - Date Added: 2025-12-02 06:45 - Note: Grating install not complete for installation
- QTS-23001: allucent_notes_20251014_152335: Jason Johnston on 2025-09-30 12:09: Delays in MV work / Jason Johnston on 2025-10-14 09:10: Rain delayed pours / allucent_notes: 2025-09-30 12:09 - User: Jason Johnston - Date Added: 2025-09-30 12:09 - Note: Delays in MV work / 2025-10-14 09:10 - User: Jason Johnston - Date Added: 2025-10-14 09:10 - Note: Rain delayed pours
- QTS-99360: allucent_notes_20251014_152335: Jason Johnston on 2025-10-14 09:10: Rain delays. / allucent_notes_20251021_145627: Jason Johnston on 2025-10-14 09:10: Rain delays. / allucent_notes: 2025-10-14 09:10 - User: Jason Johnston - Date Added: 2025-10-14 09:10 - Note: Rain delays.
- QTS-22691: allucent_notes_20251014_152335: Jason Johnston on 2025-10-14 09:10: Poured out early. / allucent_notes: 2025-10-14 09:10 - User: Jason Johnston - Date Added: 2025-10-14 09:10 - Note: Poured out early.
- QTS-23391: allucent_notes_20251014_152335: Jason Johnston on 2025-10-14 09:10: rearranged pour dates / Jason Johnston on 2025-10-14 09:10: First half of generator pads pouring / allucent_notes_20251021_145627: Jason Johnston on 2025-10-14 09:10: rearranged pour dates / Jason Johnston on 2025-10-14 09:10: First half of generator pads pouring / allucent_notes: 2025-10-14 09:10 - User: Jason Johnston - Date Added: 2025-10-14 09:10 - Note: rearranged pour dates / 2025-10-14 09:10 - User: Jason Johnston - Date Added: 2025-10-14 09:10 - Note: First half of generator pads pouring
- QTS-22011: allucent_notes_20251014_152335: Jason Johnston on 2025-10-14 09:10: Rain delays / allucent_notes_20251021_145627: Jason Johnston on 2025-10-14 09:10: Rain delays / allucent_notes: 2025-10-14 09:10 - User: Jason Johnston - Date Added: 2025-10-14 09:10 - Note: Rain delays
- QTS-99380: allucent_notes_20251027_224008: Jason Johnston on 2025-10-27 09:10: Set early / Jason Johnston on 2025-10-27 09:10: Set early / allucent_notes: 2025-10-27 09:10 - User: Jason Johnston - Date Added: 2025-10-27 09:10 - Note: Set early / 2025-10-27 09:10 - User: Jason Johnston - Date Added: 2025-10-27 09:10 - Note: Set early
- QTS-25021: allucent_notes_20251104_160200: Jason Johnston on 2025-11-04 10:11: Setting begins 11/10 / allucent_notes_20251111_182405: Jason Johnston on 2025-11-04 10:11: Setting begins 11/10 / allucent_notes_20251118_192630: Jason Johnston on 2025-11-04 10:11: Setting begins 11/10 / allucent_notes: 2025-11-04 10:11 - User: Jason Johnston - Date Added: 2025-11-04 10:11 - Note: Setting begins 11/10

| ID | WBS | Activity | Duration | Start | Finish | Predecessors | Complete | Remaining | Planned start | Planned finish | Total float | Free float | Calendar | Subcontractor | Level | Location | Baseline | Layton Responsible Party | Phase-1 | Project Section | Allucent CSI Group | Project Section-1 | Phase-1-1 |
| --- | --- | --- | --- | --- | --- | --- | --- | --- | --- | --- | --- | --- | --- | --- | --- | --- | --- | --- | --- | --- | --- | --- | --- |
|  | 1 | **Fragnet Install of Top Hats in PODs** |  | 2025-11-03 | 2026-01-09 |  |  |  |  |  |  |  |  |  |  |  |  |  |  |  |  |  |  |
| QTS-1001380 |  | Received Pods Without Top Hats Installed or Present | 1d | 2025-11-03 A | 2025-11-03 A | QTS-23931 | 100% |  |  |  |  |  |  | Rosendin Electric, Inc | Level 2 | Gen Yard | IGMP | Scott Masterson | Phase 1 | Construction | 01ADMIN |  |  |
| QTS-1001390 |  | Procure Missing Top Hats | 26d | 2025-11-04 A | 2025-12-11 A | QTS-1001380 | 100% |  |  |  |  |  |  | Rosendin Electric, Inc | Level 2 | Gen Yard | IGMP | Scott Masterson | Phase 1 | Construction | 01ADMIN |  |  |
| QTS-1001620 |  | Pull Wire from Generator to POD | 5d | 2025-11-20 A | 2026-01-07 A | QTS-1001610 | 100% |  | 2025-11-20 | 2025-11-26 |  |  |  | Rosendin Electric, Inc | Level 2 | Gen Yard | IGMP | Scott Masterson | Phase 1 | Construction | 01ADMIN |  |  |
| QTS-1001610 |  | Pull Wire from Transformer to POD | 5d | 2025-11-26 A | 2025-12-04 A | QTS-23931 | 100% |  |  |  |  |  |  | Rosendin Electric, Inc | Level 2 | Gen Yard | IGMP | Scott Masterson | Phase 1 | Construction | 01ADMIN |  |  |
| QTS-1001400 |  | Vendor On Site to Install Top Hats | 11d | 2025-12-12 A | 2026-01-02 A | QTS-1001390 | 100% |  | 2025-12-12 | 2025-12-31 |  |  |  | Rosendin Electric, Inc | Level 2 | Gen Yard | IGMP | Scott Masterson | Phase 1 | Construction | 01ADMIN |  |  |
| QTS-1001410 |  | Install Top Hats | 5d | 2026-01-05 A | 2026-01-09 A | QTS-1001400 | 100% |  |  |  |  |  |  | Rosendin Electric, Inc | Level 2 | Gen Yard | IGMP | Scott Masterson | Phase 1 | Construction | 01ADMIN |  |  |
|  | 3 | **Fragnet MOD-01 Breaker Swap** |  | 2025-11-03 | 2026-02-04 |  |  |  |  |  |  |  |  |  |  |  |  |  |  |  |  |  |  |
| QTS-1001560 |  | Received MOD-01 Onsite | 1d | 2025-11-03 A | 2025-11-03 A | QTS-1030 SS | 100% |  |  |  |  |  |  | Rosendin Electric, Inc | Level 2 | Gen Yard | IGMP | Scott Masterson | Phase 1 | Construction | 01ADMIN |  |  |
| QTS-1001570 |  | MOD-01 Identified to Have Incorrect Breakers Per Submittal | 5d | 2025-11-04 A | 2025-11-10 A | QTS-1001560 | 100% |  |  |  |  |  |  | Rosendin Electric, Inc | Level 2 | Gen Yard | IGMP | Scott Masterson | Phase 1 | Construction | 01ADMIN |  |  |
| QTS-1001580 |  | QTS to Provide PO to Procure and Swap Breakers in MOD-01 | 25d | 2025-11-11 A | 2026-01-14 | QTS-1001570 | 100% | 0d | 2025-11-11 | 2025-12-17 | 6d | 0d |  | Rosendin Electric, Inc | Level 2 | Gen Yard | IGMP | Scott Masterson | Phase 1 | Construction | 01ADMIN |  |  |
| QTS-1001590 |  | Vendor to Procure Breakers for MOD-01 | 10d | 2026-01-14 | 2026-01-28 | QTS-1001580 |  |  |  |  | 6d | 0d |  | Rosendin Electric, Inc | Level 2 | Gen Yard | IGMP | Scott Masterson | Phase 1 | Construction | 01ADMIN |  |  |
| QTS-1001600 |  | Install Breakers for MOD-01 | 5d | 2026-01-29 | 2026-02-04 | QTS-1001590 |  |  |  |  | 6d | 5d |  | Rosendin Electric, Inc | Level 2 | Gen Yard | IGMP | Scott Masterson | Phase 1 | Construction | 01ADMIN |  |  |
|  | 4 | **Fragnet / Short Circuit Coordination Study** |  | 2026-01-08 | 2026-01-16 |  |  |  |  |  |  |  |  |  |  |  |  |  |  |  |  |  |  |
| QTS-1004470 |  | Fragnet / Layton Requested Short Circuit Study from QTS | 1d | 2026-01-08 A | 2026-01-08 A | QTS-1371 SS | 100% |  |  |  |  |  |  | Rosendin Electric, Inc | Level 2 | Gen Yard | IGMP | Scott Masterson | Phase 1 | Construction | 01ADMIN |  |  |
| QTS-1004480 |  | Fragnet / QTS Supplies Short Circuit Study to Layton | 15d | 2026-01-09 A | 2026-01-16 | QTS-1004470 | 80% | 3d | 2026-01-09 | 2026-01-30 | 2d | 0d |  | Rosendin Electric, Inc | Level 2 | Gen Yard | IGMP | Scott Masterson | Phase 1 | Construction | 01ADMIN |  |  |
|  | 2 | **Remaining Scope** |  | 2025-11-12 | 2026-02-04 |  |  |  |  |  |  |  |  |  |  |  |  |  |  |  |  |  |  |
| QTS-24921 |  | DH 2100 / Mechanical Yard // Install Raceway from Generators to UPS Pods | 5d | 2025-11-12 A | 2025-11-19 A | QTS-25021, QTS-25031, QTS-39471, QTS-49961, QTS-39451 FF | 100% |  | 2025-11-12 | 2025-11-17 |  |  | QTS-PHX3 DC1 - 6 day w/ Holidays | Bel-Aire Mechanical, LLC | Level 2 | Gen Yard | IGMP | Scott Masterson | Phase 1 | Construction | 01ADMIN |  |  |
| QTS-44341 |  | DH 2100 / Mechanical Yard // Install Exterior Stairs | 10d | 2025-11-24 A | 2025-12-06 A | QTS-43291 | 100% |  |  |  |  |  | QTS-PHX3 DC1 - 6 day w/ Holidays | SteelFab Texas, Inc | Level 2 | Gen Yard | IGMP | Ron Carroll |  | Construction |  | Construction | Phase 1 |
| QTS-27331 |  | DH 2100 / Mechanical Yard // Install FRP Platforms | 10d | 2025-12-08 A | 2026-01-07 A | QTS-44341, QTS-24981, QTS-23931, QTS-24931 | 100% |  | 2025-12-08 | 2025-12-18 |  |  | QTS-PHX3 DC1 - 6 day w/ Holidays | Advantic Building Group, LLC | Level 2 | Gen Yard | IGMP | Ron Carroll |  | Construction | 01ADMIN | Construction | Phase 1 |
| QTS-42311 |  | DH 2100 / Mechanical Yard // Wire Pull for MV | 6d | 2025-12-10 A | 2025-12-17 A | QTS-42301, QTS-39471 | 100% |  |  |  |  |  |  | Oregon Electric Group | Level 2 | Gen Yard | IGMP | Scott Masterson |  | Construction | 01ADMIN | Construction | Phase 1 |
| QTS-24511 |  | DH 2100 / Mechanical Yard // Install Raceway from Transformers to UPS Pods | 5d | 2025-12-12 A | 2025-12-18 A | QTS-24281 | 100% |  |  |  |  |  |  | Rosendin Electric, Inc | Level 2 | Gen Yard | IGMP | Scott Masterson | Phase 1 | Construction | 01ADMIN |  |  |
| QTS-42801 |  | DH 2100 / Mechanical Yard // Terminate MV at Transformers | 10d | 2025-12-18 A | 2026-01-14 | QTS-42311 | 100% | 0d | 2025-12-18 | 2025-12-30 | 15d | 1d | QTS-PHX3 DC1 - 6 day w/ Holidays | Oregon Electric Group | Level 2 | Gen Yard | IGMP | Scott Masterson |  | Construction | 01ADMIN | Construction | Phase 1 |
| QTS-24911 |  | DH 2100 / Mechanical Yard // Terminate from Transformers to UPS Pods | 10d | 2026-01-14 A | 2026-01-14 | QTS-1001410, QTS-24511, QTS-1001610 | 100% | 0d | 2026-01-14 | 2026-01-26 | 15d | 1d | QTS-PHX3 DC1 - 6 day w/ Holidays | Performance Contracting, Inc. | Level 2 | Gen Yard | IGMP | Scott Masterson | Phase 1 | Construction | 01ADMIN |  |  |
| QTS-25591 |  | DH 2100 / Mechanical Yard // Terminate from Generators to UPS Pods | 10d | 2026-01-14 A | 2026-01-14 | QTS-24921, QTS-1001620 | 100% | 0d | 2026-01-14 | 2026-01-26 | 17d | 4d | QTS-PHX3 DC1 - 6 day w/ Holidays | Rosendin Electric, Inc | Level 2 | Gen Yard | IGMP | Scott Masterson | Phase 1 | Construction | 01ADMIN |  |  |
| QTS-1000270 |  | DH 2100 / Mechanical Yard // OFCI - L2 SET IN PLACE - Eq Type # - 2500KW Generator SCR - 7 units | 5d | 2026-01-30 | 2026-02-04 | QTS-39681, QTS-39641, QTS-39601, QTS-39561, QTS-39521, QTS-39431, QTS-24451 |  |  |  |  | 18d | 0d | QTS-PHX3 DC1 - 6 day w/ Holidays | Rosendin Electric, Inc | Level 2 | Gen Yard |  | Scott Masterson |  | Construction | 01ADMIN | Construction | Phase 1 |
| QTS-1001180 |  | DH 2100 / Mechanical Yard // Pressure Test Generator Tanks | 2d | 2026-01-30 | 2026-01-31 | QTS-1000270 SS |  |  |  |  | 21d | 14d | QTS-PHX3 DC1 - 6 day w/ Holidays | Rosendin Electric, Inc | Level 2 | Gen Yard | IGMP | Dave Wiltberger | Phase 1 | Construction | 01ADMIN |  |  |

Notes:
- QTS-1001380: allucent_notes_20251209_203830: Jason Johnston on 2025-12-09 20:30: Need update from team / allucent_notes: 2025-12-09 20:30 - User: Jason Johnston - Date Added: 2025-12-09 20:30 - Note: Need update from team
- QTS-1001390: allucent_notes_20251209_203830: Jason Johnston on 2025-12-09 20:30: Need update from team / allucent_notes: 2025-12-09 20:30 - User: Jason Johnston - Date Added: 2025-12-09 20:30 - Note: Need update from team
- QTS-1001620: allucent_notes_20251209_203830: Jason Johnston on 2025-12-09 20:30: Need update from team / allucent_notes: 2025-12-09 20:30 - User: Jason Johnston - Date Added: 2025-12-09 20:30 - Note: Need update from team
- QTS-1001610: allucent_notes_20251209_203830: Jason Johnston on 2025-12-09 20:30: Need update from team / allucent_notes: 2025-12-09 20:30 - User: Jason Johnston - Date Added: 2025-12-09 20:30 - Note: Need update from team
- QTS-1001400: allucent_notes_20251209_203830: Jason Johnston on 2025-12-09 20:30: Need update from team / allucent_notes: 2025-12-09 20:30 - User: Jason Johnston - Date Added: 2025-12-09 20:30 - Note: Need update from team
- QTS-1001410: allucent_notes_20251209_203830: Jason Johnston on 2025-12-09 20:30: Need update from team / allucent_notes: 2025-12-09 20:30 - User: Jason Johnston - Date Added: 2025-12-09 20:30 - Note: Need update from team
- QTS-1001560: allucent_notes_20251209_203830: Jason Johnston on 2025-12-09 20:30: Need update from team / allucent_notes: 2025-12-09 20:30 - User: Jason Johnston - Date Added: 2025-12-09 20:30 - Note: Need update from team
- QTS-1001570: allucent_notes_20251209_203830: Jason Johnston on 2025-12-09 20:30: Need update from team / allucent_notes: 2025-12-09 20:30 - User: Jason Johnston - Date Added: 2025-12-09 20:30 - Note: Need update from team
- QTS-1001580: allucent_notes_20251230_164549: David Wiltberger on 2025-12-30 15:40: not done / allucent_notes_20251209_203830: Jason Johnston on 2025-12-09 20:30: Need update from team / allucent_notes: 2025-12-30 15:40 - User: David Wiltberger - Date Added: 2025-12-30 15:40 - Note: not done
- QTS-1001590: allucent_notes_20251230_164549: David Wiltberger on 2025-12-30 15:39: not ready / allucent_notes_20251209_203830: Jason Johnston on 2025-12-09 20:30: Need update from team / allucent_notes: 2025-12-30 15:39 - User: David Wiltberger - Date Added: 2025-12-30 15:39 - Note: not ready
- QTS-1001600: allucent_notes_20251209_203830: Jason Johnston on 2025-12-09 20:30: Need update from team / allucent_notes: 2025-12-09 20:30 - User: Jason Johnston - Date Added: 2025-12-09 20:30 - Note: Need update from team
- QTS-1004470: allucent_notes_20251209_203830: Jason Johnston on 2025-12-09 20:30: Need update from team / allucent_notes: 2025-12-09 20:30 - User: Jason Johnston - Date Added: 2025-12-09 20:30 - Note: Need update from team
- QTS-1004480: allucent_notes_20251209_203830: Jason Johnston on 2025-12-09 20:30: Need update from team / allucent_notes: 2025-12-09 20:30 - User: Jason Johnston - Date Added: 2025-12-09 20:30 - Note: Need update from team
- QTS-24921: allucent_notes_20251230_164549: Jason Johnston on 2025-12-09 20:30: Need update from team / Scott Masterson on 2025-12-16 16:51: I need to get dates for this. / David Wiltberger on 2025-12-30 15:41: raceway need to install / allucent_notes_20251209_203830: Jason Johnston on 2025-12-09 20:30: Need update from team / allucent_notes_20251216_165335: Jason Johnston on 2025-12-09 20:30: Need update from team / Scott Masterson on 2025-12-16 16:51: I need to get dates for this. / allucent_notes: 2025-12-09 20:30 - User: Jason Johnston - Date Added: 2025-12-09 20:30 - Note: Need update from team / 2025-12-16 16:51 - User: Scott Masterson - Date Added: 2025-12-16 16:51 - Note: I need to get dates for this. / 2025-12-30 15:41 - User: David Wiltber
- QTS-27331: allucent_notes_20251230_164549: Jason Johnston on 2025-12-30 16:41: No update / allucent_notes: 2025-12-30 16:41 - User: Jason Johnston - Date Added: 2025-12-30 16:41 - Note: No update
- QTS-42311: allucent_notes_20251230_164549: Jason Johnston on 2025-12-09 20:30: Need update from team / allucent_notes_20251209_203830: Jason Johnston on 2025-12-09 20:30: Need update from team / allucent_notes_20251216_165335: Jason Johnston on 2025-12-09 20:30: Need update from team / allucent_notes: 2025-12-09 20:30 - User: Jason Johnston - Date Added: 2025-12-09 20:30 - Note: Need update from team

| ID | WBS | Activity | Duration | Start | Finish | Predecessors | Complete | Remaining | Planned start | Planned finish | Total float | Free float | Constraint | Calendar | Level | Location | Project Section-1 | Phase-1-1 | Baseline | Layton Responsible Party | Project Section | Allucent CSI Group | Subcontractor |
| --- | --- | --- | --- | --- | --- | --- | --- | --- | --- | --- | --- | --- | --- | --- | --- | --- | --- | --- | --- | --- | --- | --- | --- |
|  | 6 | **DH 2100 / Commissioning** |  |  |  |  |  |  |  |  |  |  |  |  |  |  |  |  |  |  |  |  |  |
|  | 2 | **Level 3 Energization & Prefunctional Testing** |  |  |  |  |  |  |  |  |  |  |  |  |  |  |  |  |  |  |  |  |  |
|  | 1 | **Electrical** |  |  |  |  |  |  |  |  |  |  |  |  |  |  |  |  |  |  |  |  |  |
|  | 2 | **Mechanical** |  |  |  |  |  |  |  |  |  |  |  |  |  |  |  |  |  |  |  |  |  |
|  | 4 | **Level 4 Functional Testing** |  |  |  |  |  |  |  |  |  |  |  |  |  |  |  |  |  |  |  |  |  |
|  | 3 | **Level 5 Integrated Systems Testing** |  |  |  |  |  |  |  |  |  |  |  |  |  |  |  |  |  |  |  |  |  |
|  | 4 | **Data Hall 1100 (9MW)** |  | 2025-07-14 | 2026-03-10 |  |  |  |  |  |  |  |  |  |  |  |  |  |  |  |  |  |  |
| QTS-1691 |  | DH 1100 // Prime & Paint Exposed Structure | 10d | 2025-07-14 A | 2025-07-22 A | QTS-15031 | 100% |  | 2025-07-07 | 2025-07-18 |  |  |  |  | Level 1 | DH1100 | Construction | Phase 1 | IGMP | Doug Hayes | Construction |  |  |
| QTS-6891 |  | DH 1100 // Install Fire Caulking | 3d | 2025-08-21 A | 2025-08-25 A | QTS-1691 | 100% |  | 2025-09-04 | 2025-09-08 |  |  |  |  | Level 1 | DH1100 | Construction | Phase 1 | IGMP | Doug Hayes | Construction | 01ADMIN |  |
| QTS-6881 |  | DH 1100 // Establish Control & Layout Walls | 3d | 2025-09-03 A | 2025-09-05 A | QTS-1691, QTS-1015, QTS-6891 | 100% |  |  |  |  |  |  |  | Level 1 | DH1100 | Construction | Phase 1 | IGMP | Doug Hayes | Construction | 01ADMIN |  |
| QTS-8571 |  | DH 1100 // Perimeter Insulation | 7d | 2025-09-08 A | 2025-09-11 A | QTS-6891, QTS-6881 | 100% |  | 2025-09-08 | 2025-09-16 |  |  |  |  | Level 1 | DH1100 | Construction | Phase 1 | IGMP | Ron Carroll | Construction | 01ADMIN |  |
| QTS-4541 |  | DH 1100 // Install Fire Sprinkler | 8d | 2025-09-24 A | 2025-10-03 A | QTS-1691, QTS-19631, QTS-99030 | 100% |  |  |  |  |  |  |  | Level 1 | DH1100 | Construction | Phase 1 | IGMP | Dave Wiltberger | Construction | 01ADMIN | Olympic West Fire Protection |
|  | 3 | **Data Hall 1100** |  | 2025-11-10 | 2026-03-10 |  |  |  |  |  |  |  |  |  |  |  |  |  |  |  |  |  |  |
| QTS-10251 |  | DH 1100 // Frame Data Hall / Corridor Wall 1011 (West) | 5d | 2025-11-10 A | 2025-11-14 A | QTS-6891, QTS-11531, QTS-10291 | 100% |  |  |  |  |  |  |  | Level 1 | DH1100 | Construction | Phase 1 | IGMP | Doug Hayes | Construction | 01ADMIN |  |
| QTS-10241 |  | DH 1100 // Frame Data Hall / Corridor Wall 1017-1018 (East) | 7d | 2025-11-12 A | 2025-12-10 A | QTS-6881, QTS-4541, QTS-6891, QTS-8571, QTS-20771, QTS-10251 | 100% |  | 2025-11-17 | 2025-11-25 |  |  |  |  | Level 1 | DH1100 | Construction | Phase 1 | IGMP | Sean Waisner | Construction | 01ADMIN |  |
| QTS-11111 |  | DH 1100 // Install Hollow Metal Frames (West) | 1d | 2025-11-14 A | 2025-11-14 A | QTS-10251 | 100% |  | 2025-11-17 | 2025-11-17 |  |  |  |  | Level 1 | DH1100 | Construction | Phase 1 | IGMP | Doug Hayes | Construction | 01ADMIN |  |
| QTS-14681 |  | DH 1100 // Install Security Screen Above Fan Wall - South | 3d | 2025-12-16 A | 2026-01-14 | QTS-11531, QTS-99680, QTS-14661, QTS-1001250 | 100% | 0d | 2025-12-16 | 2025-12-18 | 19d | 0d |  | QTS-PHX3 DC1 - 6 day w/ Holidays | Level 1 | DH1100 | Construction | Phase 1 | IGMP | Sean Waisner | Construction | 01ADMIN | Performance Contracting, Inc. |
| QTS-1000560 |  | DH 1100 // Install Overhead Conduit - Electrical | 5d | 2025-12-22 A | 2025-12-31 A | QTS-120000 | 100% |  |  |  |  |  |  |  | Level 2 | DH2100 | Construction |  | IGMP | Sean Waisner | Construction | 01ADMIN |  |
| QTS-1000570 |  | DH 1100 // Install Overhead Conduit - Controls | 5d | 2025-12-22 A | 2025-12-31 A | QTS-1000560 SS, QTS-120000 | 100% |  |  |  |  |  |  |  | Level 2 | DH2100 | Construction |  | IGMP | Sean Waisner | Construction | 01ADMIN |  |
| QTS-101980 |  | DH 1100 // Hang Drywall (West) - Corridor Side | 2d | 2026-01-05 A | 2026-01-06 A | QTS-12381, QTS-11101 | 100% |  |  |  |  |  |  | QTS-PHX3 DC1 - 6 day w/ Holidays | Level 2 | DH2100 | Construction |  | IGMP | Sean Waisner | Construction | 01ADMIN | Performance Contracting, Inc. |
| QTS-11101 |  | DH 1100 // Rough In-Wall Electrical (West) | 2d | 2026-01-05 A | 2026-01-06 A | QTS-10251, QTS-39041 | 100% |  |  |  |  |  |  |  | Level 1 | DH1100 | Construction | Phase 1 | IGMP | Scott Masterson | Construction | 01ADMIN | Rosendin Electric, Inc |
| QTS-14081 |  | DH 1100 // Install Structural Ceiling Grid - Inner | 10d | 2026-01-05 A | 2026-01-14 | QTS-120000, QTS-1000560, QTS-1000570 | 100% | 0d | 2026-01-05 | 2026-01-15 | 23d | 0d |  | QTS-PHX3 DC1 - 6 day w/ Holidays | Level 1 | DH1100 | Construction | Phase 1 | IGMP | Sean Waisner | Construction | 01ADMIN | Performance Contracting, Inc. |
| QTS-101990 |  | DH 1100 // Tape & Finish Drywall (West) - Corridor Side | 5d | 2026-01-07 A | 2026-01-12 A | QTS-101980 | 100% |  |  |  |  |  |  | QTS-PHX3 DC1 - 6 day w/ Holidays | Level 2 | DH2100 | Construction |  | IGMP | Sean Waisner | Construction | 01ADMIN | Performance Contracting, Inc. |
| QTS-12141 |  | DH 1100 // In Wall Inspection (West) | 1d | 2026-01-12 A | 2026-01-12 A | QTS-11101 | 100% |  |  |  |  |  |  | QTS-PHX3 DC1 - 6 day w/ Holidays | Level 1 | DH1100 | Construction | Phase 1 | IGMP | Scott Masterson | Construction | 01ADMIN | Bel-Aire Mechanical, LLC |
| QTS-102060 |  | DH 1100 // Frame Data Hall / Corridor Wall 1017-1018 (East) - 14x14 Leave Outs | 1d | 2026-01-14 | 2026-01-14 | QTS-14131, QTS-46491, QTS-15261, QTS - 2600 |  |  |  |  | 65d | 0d |  | QTS-PHX3 DC1 - 6 day w/ Holidays | Level 2 | DH2100 | Construction |  | IGMP | Sean Waisner | Construction | 01ADMIN | Performance Contracting, Inc. |
| QTS-11121 |  | DH 1100 // Rough In-Wall Electrical (East) | 5d | 2026-01-14 | 2026-01-20 | QTS-10241 |  |  |  |  | 27d | 0d | start on or after 2026-01-05 | QTS-PHX3 DC1 - 6 day w/ Holidays | Level 1 | DH1100 | Construction | Phase 1 | IGMP | Scott Masterson | Construction | 01ADMIN | Rosendin Electric, Inc |
| QTS-11131 |  | DH 1100 // Install Hollow Metal Frames (East) - 14x14 Leave Out | 1d | 2026-01-14 A | 2026-01-15 | QTS-10241, QTS-102060 FF | 100% | 0d | 2026-01-14 | 2026-01-14 | 65d | 0d |  | QTS-PHX3 DC1 - 6 day w/ Holidays | Level 1 | DH1100 | Construction | Phase 1 | IGMP | Sean Waisner | Construction | 01ADMIN | Performance Contracting, Inc. |
| QTS-12381 |  | DH 1100 // Hang Drywall (West) - Data Hall Side | 2d | 2026-01-14 | 2026-01-15 | QTS-11101, QTS-10251, QTS-11111, QTS-12141 |  |  |  |  | 8d | 0d |  | QTS-PHX3 DC1 - 6 day w/ Holidays | Level 1 | DH1100 | Construction | Phase 1 | IGMP | Sean Waisner | Construction | 01ADMIN | Performance Contracting, Inc. |
| QTS-13691 |  | DH 1100 // Install Security Screen Above Fan Wall - North | 3d | 2026-01-14 | 2026-01-16 | QTS-14681, QTS-10291, QTS-99680, QTS-15591, QTS-1001250 |  |  |  |  | 19d | 11d |  | QTS-PHX3 DC1 - 6 day w/ Holidays | Level 1 | DH1100 | Construction | Phase 1 | IGMP | Sean Waisner | Construction | 01ADMIN | Performance Contracting, Inc. |
| QTS-14921 |  | DH 1100 // Install VESDA | 8d | 2026-01-14 A | 2026-01-16 | QTS-14081 FF | 62% | 3d | 2026-01-14 | 2026-01-23 | 30d | 22d |  | QTS-PHX3 DC1 - 6 day w/ Holidays | Level 1 | DH1100 | Construction | Phase 1 | IGMP | Scott Masterson | Construction | 01ADMIN | Rosendin Electric, Inc |
| QTS-17531 |  | DH 1100 // Install Fire Sprinkler Heads | 3d | 2026-01-14 | 2026-01-16 | QTS-14081 |  |  |  |  | 23d | 0d |  | QTS-PHX3 DC1 - 6 day w/ Holidays | Level 1 | DH1100 | Construction | Phase 1 | IGMP | Dave Wiltberger | Construction |  | Olympic West Fire Protection |
| QTS-102080 |  | DH 1100 // Hang Drywall Data Hall / Corridor Wall 2017-2018 (East) - 14x14 Leave Outs | 1d | 2026-01-15 | 2026-01-15 | QTS-102060, QTS-11131 |  |  |  |  | 65d | 0d |  | QTS-PHX3 DC1 - 6 day w/ Holidays | Level 2 | DH2100 | Construction |  | IGMP | Sean Waisner | Construction | 01ADMIN | Performance Contracting, Inc. |
| QTS-102000 |  | DH 1100 // Vapor Barrier & Insulation (West) | 2d | 2026-01-16 | 2026-01-17 | QTS-101990 |  |  |  |  | 42d | 14d |  | QTS-PHX3 DC1 - 6 day w/ Holidays | Level 2 | DH2100 | Construction |  | IGMP | Sean Waisner | Construction | 01ADMIN | Performance Contracting, Inc. |
| QTS-102090 |  | DH 1100 // Tape & Finish Drywall Data Hall / Corridor Wall 2017-2018 (East) - 14x14 Leave Outs | 5d | 2026-01-16 | 2026-01-22 | QTS-102080 |  |  |  |  | 65d | 0d |  | QTS-PHX3 DC1 - 6 day w/ Holidays | Level 2 | DH2100 | Construction |  | IGMP | Sean Waisner | Construction | 01ADMIN | Performance Contracting, Inc. |
| QTS-102620 |  | DH 1100 // Paint Wall (West) - Corridor Side | 2d | 2026-01-16 | 2026-01-17 | QTS-101990 |  |  |  |  | 44d | 16d |  | QTS-PHX3 DC1 - 6 day w/ Holidays | Level 2 | DH2100 | Construction |  | IGMP | Sean Waisner | Construction | 01ADMIN | Pennington Painting Company, LLC |
| QTS-12661 |  | DH 1100 // Tape, & Finish Drywall (West) - Data Hall Side | 5d | 2026-01-16 | 2026-01-22 | QTS-12381 |  |  |  |  | 8d | 0d |  | QTS-PHX3 DC1 - 6 day w/ Holidays | Level 1 | DH1100 | Construction | Phase 1 | IGMP | Sean Waisner | Construction | 01ADMIN | Performance Contracting, Inc. |
| QTS-1002350 |  | DH 1100 // Pressure Test Fire Sprinkler System | 2d | 2026-01-17 | 2026-01-20 | QTS-17531 |  |  |  |  | 27d | 19d |  | QTS-PHX3 DC1 - 6 day w/ Holidays | Level 1 | DH1100 | Construction | Phase 1 | IGMP | Dave Wiltberger | Construction |  | Olympic West Fire Protection |
| QTS-1002360 |  | DH 1100 // Install Fire Alarm Devices | 3d | 2026-01-17 | 2026-01-21 | QTS-17531 |  |  |  |  | 49d | 41d |  | QTS-PHX3 DC1 - 6 day w/ Holidays | Level 1 | DH1100 | Construction | Phase 1 | IGMP | Dave Wiltberger | Construction |  | Olympic West Fire Protection |
| QTS-120420 |  | DH 1100 // In Wall Inspection (East) | 1d | 2026-01-21 | 2026-01-21 | QTS-11121 |  |  |  |  | 27d | 0d |  | QTS-PHX3 DC1 - 6 day w/ Holidays | Level 1 | DH1100 | Construction | Phase 1 | IGMP | Scott Masterson | Construction | 01ADMIN | Bel-Aire Mechanical, LLC |
| QTS-102010 |  | DH 1100 // Top Out / Corridor Wall 1017-1018 (East) - Data Hall Side | 3d | 2026-01-22 | 2026-01-24 | QTS-11121, QTS-120420 |  |  |  |  | 27d | 0d |  | QTS-PHX3 DC1 - 6 day w/ Holidays | Level 2 | DH2100 | Construction |  | IGMP | Sean Waisner | Construction | 01ADMIN | Performance Contracting, Inc. |
| QTS-102100 |  | DH 1100 // Paint Data Hall / Corridor Wall 2017-2018 (East) - 14x14 Leave Outs | 1d | 2026-01-23 | 2026-01-23 | QTS-102090 |  |  |  |  | 65d | 57d |  | QTS-PHX3 DC1 - 6 day w/ Holidays | Level 2 | DH2100 | Construction |  | IGMP | Sean Waisner | Construction | 01ADMIN | Pennington Painting Company, LLC |
| QTS-13321 |  | DH 1100 // Paint Walls (West) - Data Hall Side | 2d | 2026-01-23 | 2026-01-24 | QTS-12381, QTS-12661 |  |  |  |  | 8d | 0d |  | QTS-PHX3 DC1 - 6 day w/ Holidays | Level 1 | DH1100 | Construction | Phase 1 | IGMP | Sean Waisner | Construction | 01ADMIN | Pennington Painting Company, LLC |
| QTS-102020 |  | DH 1100 // One Side Data Hall / Corridor Wall 1017-1018 (East) - Data Hall Side | 3d | 2026-01-26 | 2026-01-28 | QTS-102010 |  |  |  |  | 27d | 0d |  | QTS-PHX3 DC1 - 6 day w/ Holidays | Level 2 | DH2100 | Construction |  | IGMP | Sean Waisner | Construction | 01ADMIN | Performance Contracting, Inc. |
| QTS-102040 |  | DH 1100 // Tape, & Finish Drywall (East) - Data Hall Side | 5d | 2026-01-29 | 2026-02-03 | QTS-102020 |  |  |  |  | 27d | 0d |  | QTS-PHX3 DC1 - 6 day w/ Holidays | Level 2 | DH2100 | Construction |  | IGMP | Sean Waisner | Construction | 01ADMIN | Performance Contracting, Inc. |
| QTS-1004530 |  | DH 1100 // Install Structural Ceiling Grid - Outer | 4d | 2026-01-31 | 2026-02-04 | QTS-13691, QTS - 3720 |  |  |  |  | 8d | 0d |  | QTS-PHX3 DC1 - 6 day w/ Holidays | Level 1 | DH1100 | Construction | Phase 1 | IGMP | Sean Waisner | Construction | 01ADMIN | Performance Contracting, Inc. |
| QTS-102030 |  | DH 1100 // Insulate & Vapor Barrier Data Hall / Corridor Wall 1017-1018 (East) | 2d | 2026-02-04 | 2026-02-05 | QTS-102020, QTS-102040 |  |  |  |  | 27d | 0d |  | QTS-PHX3 DC1 - 6 day w/ Holidays | Level 2 | DH2100 | Construction |  | IGMP | Sean Waisner | Construction | 01ADMIN | Performance Contracting, Inc. |
| QTS-102050 |  | DH 1100 // Paint Walls (East) - Data Hall Side | 1d | 2026-02-04 | 2026-02-04 | QTS-102040 |  |  |  |  | 28d | 0d |  | QTS-PHX3 DC1 - 6 day w/ Holidays | Level 2 | DH2100 | Construction |  | IGMP | Sean Waisner | Construction | 01ADMIN | Pennington Painting Company, LLC |
| QTS-13661 |  | DH 1100 // Install Telecom Sleeves | 3d | 2026-02-05 | 2026-02-07 | QTS-102000, QTS-102620 FF+1d, QTS-120000, QTS-13321, QTS-102050 |  |  |  |  | 28d | 27d |  | QTS-PHX3 DC1 - 6 day w/ Holidays | Level 1 | DH1100 | Construction | Phase 1 | IGMP | Scott Masterson | Construction | 01ADMIN | Rosendin Electric, Inc |
| QTS-16041 |  | DH 1100 // Install Overhead Lighting | 6d | 2026-02-05 | 2026-02-11 | QTS-1004530, QTS-17531, QTS-14081 FF+5d |  |  |  |  | 8d | 0d |  | QTS-PHX3 DC1 - 6 day w/ Holidays | Level 1 | DH1100 | Construction | Phase 1 | IGMP | Scott Masterson | Construction | 01ADMIN | Rosendin Electric, Inc |
| QTS-12391 |  | DH 1100 // Hang Drywall (East) - Corridor Side | 2d | 2026-02-06 | 2026-02-07 | QTS-102030 |  |  |  |  | 27d | 0d |  | QTS-PHX3 DC1 - 6 day w/ Holidays | Level 1 | DH1100 | Construction | Phase 1 | IGMP | Sean Waisner | Construction | 01ADMIN | Performance Contracting, Inc. |
| QTS-12671 |  | DH 1100 // Tape, & Finish Drywall (East) - Corridor Side | 5d | 2026-02-09 | 2026-02-13 | QTS-12391 |  |  |  |  | 27d | 0d |  | QTS-PHX3 DC1 - 6 day w/ Holidays | Level 1 | DH1100 | Construction | Phase 1 | IGMP | Sean Waisner | Construction | 01ADMIN | Performance Contracting, Inc. |
| QTS-1002370 |  | DH 1100 // Inspect Overhead Grid | 1d | 2026-02-12 | 2026-02-12 | QTS-16041, QTS-1002350 |  |  |  |  | 8d | 0d |  | QTS-PHX3 DC1 - 6 day w/ Holidays | Level 1 | DH1100 | Construction | Phase 1 | IGMP | Dave Wiltberger | Construction |  | Olympic West Fire Protection |
| QTS-17521 |  | DH 1100 // Install Ceiling Tile | 7d | 2026-02-13 | 2026-02-20 | QTS-14921, QTS-1002370, QTS-1002350, QTS-17531, QTS-16041 |  |  |  |  | 8d | 0d |  | QTS-PHX3 DC1 - 6 day w/ Holidays | Level 1 | DH1100 | Construction | Phase 1 | IGMP | Sean Waisner | Construction |  | Performance Contracting, Inc. |
| QTS-13331 |  | DH 1100 // Paint Walls (East) - Corridor Side | 2d | 2026-02-14 | 2026-02-16 | QTS-12671 |  |  |  |  | 27d | 19d |  | QTS-PHX3 DC1 - 6 day w/ Holidays | Level 1 | DH1100 | Construction | Phase 1 | IGMP | Sean Waisner | Construction | 01ADMIN | Pennington Painting Company, LLC |
| QTS-18381 |  | DH 1100 // Install Temporary Hot Aisle Containment (Air Cooled) | 10d | 2026-02-27 | 2026-03-10 | QTS - 15000, QTS-17521 SS+2d, QTS-17531 |  |  |  |  | 8d | 0d |  | QTS-PHX3 DC1 - 6 day w/ Holidays | Level 1 | DH1100 | Construction | Phase 1 | IGMP | Sean Waisner | Construction |  |  |

Notes:
- QTS-6891: allucent_notes: Jason Johnston on 2025-08-26 15:08: Area was available earlier than expected and sub took advantage to complete work. / allucent_notes: 2025-08-26 15:08 - User: Jason Johnston - Date Added: 2025-08-26 15:08 - Note: Area was available earlier than expected and sub took advantage to complete work.
- QTS-6881: allucent_notes: Zack Goertz on 2025-09-02 12:09: PCI is falling behind. Build out team has requested PCI to work 10's and on Saturday. PCI did not have proper material and placed track down in the wrong spot / allucent_notes: 2025-09-02 12:09 - User: Zack Goertz - Date Added: 2025-09-02 12:09 - Note: PCI is falling behind. Build out team has requested PCI to work 10's and on Saturday. PCI did not have proper material and placed track down in the wrong spot
- QTS-10251: allucent_notes_20251111_182405: Jason Johnston on 2025-11-11 16:11: early access / allucent_notes_20251118_192630: Jason Johnston on 2025-11-11 16:11: early access / allucent_notes: 2025-11-11 16:11 - User: Jason Johnston - Date Added: 2025-11-11 16:11 - Note: early access
- QTS-10241: allucent_notes_20251014_152335: Jason Johnston on 2025-10-08 08:10: not done / allucent_notes_20251021_145627: Jason Johnston on 2025-10-08 08:10: not done / Luis Vea on 2025-10-21T14:53:53.683Z: there was an RFI in process due to PCI missing in their bid the beam wraps, they are proceeding with this scope for the beam wraps / Jason Johnston on 2025-10-21 12:10: Awaiting for RFI response that would require additional work. / allucent_notes_20251027_224008: Jason Johnston on 2025-10-08 08:10: not done / Luis Vea on 2025-10-21T14:53:53.683Z: there was an RFI in process due to PCI missing in their bid the beam wraps, they are proceeding with this scope for the beam wraps / Jason Johnston on 2025-10-21 12:10: Awaiting for RFI response that would require additional work. / allucent_notes_20251028_163138: Jason Johnston on 2025-10-08 08:10: not done / Luis Vea on 2025-10-21T14:53:53.683Z: there was an RFI in process due to PCI missing in their bid the beam wraps, they are proceeding with this scope for the beam wraps / Jason Johnston on 2025-10-21 12:10: Awaiting for RFI response that would require additional work. / allucent_notes_20251104_160200: Jason Johnston on 2025-10-08 08:10: not done / Luis Vea on 2025-10-21T14:53:53.683Z: there was an RFI in process due to PCI missing in their bid the beam wraps, they are proceeding with this scope for the beam wraps / Jason Johnston on 2025-10-21 12:10: Awaiting for RFI response that would require additional work. / Jason Johnston on 2025-11-04 15:11: Update needed / allucent_notes_20251111_182405: Jason Johnston on 2025-10-08 08:10: not done / Luis Vea on 2025-10-21T14:53:53.683Z: there was an RFI in process due to PCI missing in their bid the beam wraps, they are proceeding with this scope for the beam wraps / Jason Johnston on 2025-10-21 12:10: Awaiting for RFI response that would require additional work. / Jason Johnston on 2025-11-04 15:11: Update needed / Luis Vea on 2025-11-10 11:11: starting 11/10, had to first wrap top beam for fire rating completion / allucent_notes_20251118_192630: Jason Johnston on 2025-10-08 08:10: not done / Luis Vea on 2025-10-21T14:53:53.683Z: there was an RFI in process due to PCI missing in their bid the beam wraps, they are proceeding with this scope for the beam wraps / Jason Johnston on 2025-10-21 12:10: Awaiting for RFI response that would require additional work. / Jason Johnston on 2025-11-04 15:11: Update needed / Luis Vea on 2025-11-10 11:11: starting 11/10, had to first wrap top beam for fire rating completion / allucent_notes_20251202_153722: Jason Johnston on 2025-10-08 08:10: not done / Luis Vea on 2025-10-21T14:53:53.683Z: there was an RFI in process due to PCI missing in their bid the beam wraps, they are proceeding with this scope for the beam wraps / Jason Johnston on 2025-10-21 12:10: Awaiting for RFI response that would require additional work. / Jason Johnston on 2025-11-04 15:11: Update needed / Luis Vea on 2025-11-10 11:11: starting 11/10, had to first wrap top beam for fire rating completion / Luis Vea on 2025-12-01 10:07: needing leave outs tilt and closure pour backs to be poured to be able to complete wall / allucent_notes_20251209_203830: Jason Johnston on 2025-10-08 08:10: not done / Luis Vea on 2025-10-21T14:53:53.683Z: there was an RFI in process due to PCI missing in their bid the beam wraps, they are proceeding with this scope for the beam wraps / Jason Johnston on 2025-10-21 12:10: Awaiting for RFI response that would require additional work. / Jason Johnston on 2025-11-04 15:11: Update needed / Luis Vea on 2025-11-10 11:11: starting 11/10, had to first wrap top beam for fire rating completion / Luis Vea on 2025-12-01 10:07: needing leave outs tilt and closure pour backs to be poured to be able to complete wall / Jason Johnston on 2025-12-09 18:22: Need update from team / allucent_notes_20251216_165335: Jason Johnston on 2025-10-08 08:10: not done / Luis Vea on 2025-10-21T14:53:53.683Z: there was an RFI in process due to PCI missing in their bid the beam wraps, they are proceeding with this scope for the beam wraps / Jason Johnston on 2025-10-21 12:10: Awaiting for RFI response that would require additional work. / Jason Johnston on 2025-11-04 15:11: Update needed / Luis Vea on 2025-11-10 11:11: starting 11/10, had to first wrap top beam for fire rating completion / Luis Vea on 2025-12-01 10:07: needing leave outs tilt and closure pour backs to be poured to be able to complete wall / Jason Johnston on 2025-12-09 18:22: Need update from team / allucent_notes: 2025-10-08 08:10 - User: Jason Johnston - Date Added: 2025-10-08 08:10 - Note: not done / 2025-10-21T14:53:53.683Z - User: Luis Vea - Date Added: 2025-10-21T14:53:53.683Z - Note: there was an RFI in process due to PCI missing in their bid the beam wraps,
- QTS-14681: allucent_notes_20251230_164549: Jason Johnston on 2025-12-09 18:23: RFI for tamper proof clips needed / Jason Johnston on 2025-12-30 16:42: No update / allucent_notes_20251209_203830: Jason Johnston on 2025-12-09 18:23: RFI for tamper proof clips needed / allucent_notes_20251216_165335: Jason Johnston on 2025-12-09 18:23: RFI for tamper proof clips needed / allucent_notes: 2025-12-09 18:23 - User: Jason Johnston - Date Added: 2025-12-09 18:23 - Note: RFI for tamper proof clips needed / 2025-12-30 16:42 - User: Jason Johnston - Date Added: 2025-12-30 16:42 - Note: No update
- QTS-1000560: allucent_notes_20251230_164549: Jason Johnston on 2025-12-30 16:42: No update / allucent_notes: 2025-12-30 16:42 - User: Jason Johnston - Date Added: 2025-12-30 16:42 - Note: No update
- QTS-11101: allucent_notes_20251230_164549: Jason Johnston on 2025-11-19T02:23:58.637Z: undo / Luis Vea on 2025-12-01 10:10: no man power, REI is in early access rooms and priority rooms for FOH / allucent_notes_20251118_192630: Jason Johnston on 2025-11-19T02:23:58.637Z: undo / allucent_notes_20251202_153722: Jason Johnston on 2025-11-19T02:23:58.637Z: undo / Luis Vea on 2025-12-01 10:10: no man power, REI is in early access rooms and priority rooms for FOH / allucent_notes_20251209_203830: Jason Johnston on 2025-11-19T02:23:58.637Z: undo / Luis Vea on 2025-12-01 10:10: no man power, REI is in early access rooms and priority rooms for FOH / allucent_notes: 2025-11-19T02:23:58.637Z - User: Jason Johnston - Date Added: 2025-11-19T02:23:58.637Z - Note: undo / 2025-12-01 10:10 - User: Luis Vea - Date Added: 2025-12-01 10:10 - Note: no man power, REI is in early access rooms and priority rooms for FOH
- QTS-14081: allucent_notes_20251230_164549: Jason Johnston on 2025-12-16 08:54: adding new sequence to start ceiling grid earlier / allucent_notes_20251216_165335: Jason Johnston on 2025-12-16 08:54: adding new sequence to start ceiling grid earlier / allucent_notes: 2025-12-16 08:54 - User: Jason Johnston - Date Added: 2025-12-16 08:54 - Note: adding new sequence to start ceiling grid earlier
- QTS-102060: allucent_notes_20251230_164549: Jason Johnston on 2025-12-30 16:42: No update / allucent_notes_20251014_152335: Zack Goertz on 2025-09-08T20:45:26.651Z: Not started. PCI has been put on notice that they are behind / Jason Johnston on 2025-10-08 08:10: not done / allucent_notes: 2025-12-30 16:42 - User: Jason Johnston - Date Added: 2025-12-30 16:42 - Note: No update
- QTS-11121: allucent_notes_20251230_164549: Scott Masterson on 2025-10-21 11:10: Walls are not built yet I will work with Area Managers to get this work caught up. / Scott Masterson on 2025-11-04 14:11: Walls are not complete. / Luis Vea on 2025-11-10 11:11: walls are needed to be completed / allucent_notes_20251021_145627: Scott Masterson on 2025-10-21 11:10: Walls are not built yet I will work with Area Managers to get this work caught up. / allucent_notes_20251027_224008: Scott Masterson on 2025-10-21 11:10: Walls are not built yet I will work with Area Managers to get this work caught up. / allucent_notes_20251028_163138: Scott Masterson on 2025-10-21 11:10: Walls are not built yet I will work with Area Managers to get this work caught up. / allucent_notes_20251104_160200: Scott Masterson on 2025-10-21 11:10: Walls are not built yet I will work with Area Managers to get this work caught up. / Scott Masterson on 2025-11-04 14:11: Walls are not complete. / allucent_notes_20251111_182405: Scott Masterson on 2025-10-21 11:10: Walls are not built yet I will work with Area Managers to get this work caught up. / Scott Masterson on 2025-11-04 14:11: Walls are not complete. / Luis Vea on 2025-11-10 11:11: walls are needed to be completed / allucent_notes_20251118_192630: Scott Masterson on 2025-10-21 11:10: Walls are not built yet I will work with Area Managers to get this work caught up. / Scott Masterson on 2025-11-04 14:11: Walls are not complete. / Luis Vea on 2025-11-10 11:11: walls are needed to be completed / allucent_notes_20251202_153722: Scott Masterson on 2025-10-21 11:10: Walls are not built yet I will work with Area Managers to get this work caught up. / Scott Masterson on 2025-11-04 14:11: Walls are not complete. / Luis Vea on 2025-11-10 11:11: walls are needed to be completed / allucent_notes_20251209_203830: Scott Masterson on 2025-10-21 11:10: Walls are not built yet I will work with Area Managers to get this work caught up. / Scott Masterson on 2025-11-04 14:11: Walls are not complete. / Luis Vea on 2025-11-10 11:11: walls are needed to be completed / allucent_notes: 2025-10-21 11:10 - User: Scott Masterson - Date Added: 2025-10-21 11:10 - Note: Walls are not built yet I will work with Area Managers to get this work caught up. / 2025-11-04 14:11 - User: Scott Masterson - Date Added: 2025-11-04 14:11 - Note: Walls ar
- QTS-11131: allucent_notes_20251230_164549: Luis Vea on 2025-10-21T14:54:50.408Z: arriving on oct. 27 / allucent_notes_20251021_145627: Luis Vea on 2025-10-21T14:54:50.408Z: arriving on oct. 27 / allucent_notes_20251027_224008: Luis Vea on 2025-10-21T14:54:50.408Z: arriving on oct. 27 / allucent_notes_20251028_163138: Luis Vea on 2025-10-21T14:54:50.408Z: arriving on oct. 27 / allucent_notes_20251104_160200: Luis Vea on 2025-10-21T14:54:50.408Z: arriving on oct. 27 / allucent_notes_20251202_153722: Luis Vea on 2025-10-21T14:54:50.408Z: arriving on oct. 27 / allucent_notes_20251209_203830: Luis Vea on 2025-10-21T14:54:50.408Z: arriving on oct. 27 / allucent_notes_20251216_165335: Luis Vea on 2025-10-21T14:54:50.408Z: arriving on oct. 27 / allucent_notes: 2025-10-21T14:54:50.408Z - User: Luis Vea - Date Added: 2025-10-21T14:54:50.408Z - Note: arriving on oct. 27
- QTS-13691: allucent_notes_20251230_164549: Sean Waisner on 2025-12-02 15:29: Materials arrived / Jason Johnston on 2025-12-09 18:22: Need info on RFI for tamper proof clips / Jason Johnston on 2025-12-30 16:42: No update / allucent_notes_20251202_153722: Sean Waisner on 2025-12-02 15:29: Materials arrived / allucent_notes_20251209_203830: Sean Waisner on 2025-12-02 15:29: Materials arrived / Jason Johnston on 2025-12-09 18:22: Need info on RFI for tamper proof clips / allucent_notes_20251216_165335: Sean Waisner on 2025-12-02 15:29: Materials arrived / Jason Johnston on 2025-12-09 18:22: Need info on RFI for tamper proof clips / allucent_notes: 2025-12-02 15:29 - User: Sean Waisner - Date Added: 2025-12-02 15:29 - Note: Materials arrived / 2025-12-09 18:22 - User: Jason Johnston - Date Added: 2025-12-09 18:22 - Note: Need info on RFI for tamper proof clips / 2025-12-30 16:42 - User: Jason Joh
- QTS-102080: allucent_notes_20251014_152335: Zack Goertz on 2025-09-08T20:45:26.651Z: Not started. PCI has been put on notice that they are behind / Jason Johnston on 2025-10-08 08:10: not done / allucent_notes: 2025-09-08T20:45:26.651Z - User: Zack Goertz - Date Added: 2025-09-08T20:45:26.651Z - Note: Not started. PCI has been put on notice that they are behind / 2025-10-08 08:10 - User: Jason Johnston - Date Added: 2025-10-08 08:10 - Note: not done
- QTS-102090: allucent_notes_20251014_152335: Zack Goertz on 2025-09-08T20:45:26.651Z: Not started. PCI has been put on notice that they are behind / Jason Johnston on 2025-10-08 08:10: not done / allucent_notes: 2025-09-08T20:45:26.651Z - User: Zack Goertz - Date Added: 2025-09-08T20:45:26.651Z - Note: Not started. PCI has been put on notice that they are behind / 2025-10-08 08:10 - User: Jason Johnston - Date Added: 2025-10-08 08:10 - Note: not done
- QTS-102010: allucent_notes_20251014_152335: Zack Goertz on 2025-09-08T20:45:26.651Z: Not started. PCI has been put on notice that they are behind / Jason Johnston on 2025-10-08 08:10: not done / allucent_notes: 2025-09-08T20:45:26.651Z - User: Zack Goertz - Date Added: 2025-09-08T20:45:26.651Z - Note: Not started. PCI has been put on notice that they are behind / 2025-10-08 08:10 - User: Jason Johnston - Date Added: 2025-10-08 08:10 - Note: not done
- QTS-102100: allucent_notes_20251014_152335: Zack Goertz on 2025-09-08T20:45:26.651Z: Not started. PCI has been put on notice that they are behind / Jason Johnston on 2025-10-08 08:10: not done / allucent_notes: 2025-09-08T20:45:26.651Z - User: Zack Goertz - Date Added: 2025-09-08T20:45:26.651Z - Note: Not started. PCI has been put on notice that they are behind / 2025-10-08 08:10 - User: Jason Johnston - Date Added: 2025-10-08 08:10 - Note: not done
- QTS-102020: allucent_notes_20251014_152335: Zack Goertz on 2025-09-08T20:45:26.651Z: Not started. PCI has been put on notice that they are behind / Jason Johnston on 2025-10-08 08:10: not done / allucent_notes: 2025-09-08T20:45:26.651Z - User: Zack Goertz - Date Added: 2025-09-08T20:45:26.651Z - Note: Not started. PCI has been put on notice that they are behind / 2025-10-08 08:10 - User: Jason Johnston - Date Added: 2025-10-08 08:10 - Note: not done
- QTS-1004530: allucent_notes_20251230_164549: Jason Johnston on 2025-12-16 08:54: adding new sequence to start ceiling grid earlier / allucent_notes_20251216_165335: Jason Johnston on 2025-12-16 08:54: adding new sequence to start ceiling grid earlier / allucent_notes: 2025-12-16 08:54 - User: Jason Johnston - Date Added: 2025-12-16 08:54 - Note: adding new sequence to start ceiling grid earlier
- QTS-102030: allucent_notes_20251014_152335: Zack Goertz on 2025-09-08T20:45:26.651Z: Not started. PCI has been put on notice that they are behind / Jason Johnston on 2025-10-08 08:10: not done / allucent_notes: 2025-09-08T20:45:26.651Z - User: Zack Goertz - Date Added: 2025-09-08T20:45:26.651Z - Note: Not started. PCI has been put on notice that they are behind / 2025-10-08 08:10 - User: Jason Johnston - Date Added: 2025-10-08 08:10 - Note: not done

| ID | WBS | Activity | Duration | Start | Finish | Predecessors | Complete | Remaining | Planned start | Planned finish | Total float | Free float | Constraint | Calendar | Subcontractor | Level | Location | Project Section-1 | Baseline | Layton Responsible Party | Project Section | Allucent CSI Group | Phase-1-1 |
| --- | --- | --- | --- | --- | --- | --- | --- | --- | --- | --- | --- | --- | --- | --- | --- | --- | --- | --- | --- | --- | --- | --- | --- |
|  | 2 | **Gallery 1101 Mechanical** |  | 2025-09-04 | 2026-02-17 |  |  |  |  |  |  |  |  |  |  |  |  |  |  |  |  |  |  |
| QTS-44431 |  | DH 1100 / Mechanical Gallery 1101 // Install OH Mechanical Hangers | 7d | 2025-09-04 A | 2025-09-12 A | QTS-1691, QTS-19631, QTS-99030 | 100% |  |  |  |  |  |  |  | Bel-Aire Mechanical, LLC | Level 2 | DH2100 | Construction | IGMP | Dave Wiltberger | Construction | 01ADMIN |  |
| QTS-13671 |  | DH 1100 / Mechanical Gallery 1101 // Install VESDA | 8d | 2025-09-15 A | 2025-09-30 A | QTS-1691, QTS-19631, QTS-99030 | 100% |  | 2025-09-15 | 2025-09-24 |  |  |  |  | Rosendin Electric, Inc | Level 1 | DH1100 | Construction | IGMP | Scott Masterson | Construction | 01ADMIN | Phase 1 |
| QTS-13681 |  | DH 1100 / Mechanical Gallery 1101 // Install OH Mechanical Piping | 10d | 2025-09-15 A | 2025-09-26 A | QTS-44431 | 100% |  |  |  |  |  |  |  | Bel-Aire Mechanical, LLC | Level 1 | DH1100 | Construction | IGMP | Dave Wiltberger | Construction | 01ADMIN | Phase 1 |
| QTS-10281 |  | DH 1100 / Mechanical Gallery 1101 // In Wall Electrical Rough for 1101-1102 Wall | 2d | 2025-09-16 A | 2025-09-17 A | QTS-8581 | 100% |  |  |  |  |  |  |  | Rosendin Electric, Inc | Level 1 | DH1100 | Construction | IGMP | Scott Masterson | Construction |  | Phase 1 |
| QTS-11141 |  | DH 1100 / Mechanical Gallery 1101 // Hang, Tape, & Finish Drywall for 1101-1102 Wall | 10d | 2025-09-19 A | 2025-11-20 A | QTS-10881 FF+3d | 100% |  | 2025-09-19 | 2025-10-02 |  |  |  |  |  | Level 1 | DH1100 | Construction | IGMP | Sean Waisner | Construction | 01ADMIN | Phase 1 |
| QTS-8581 |  | DH 1100 / Mechanical Gallery 1101 // Frame for 1101-1102 Wall | 5d | 2025-09-19 A | 2025-09-23 A | QTS-6881, QTS-19801 | 100% |  | 2025-09-19 | 2025-09-25 |  |  |  |  |  | Level 1 | DH1100 | Construction | IGMP | Doug Hayes | Construction | 01ADMIN | Phase 1 |
| QTS-15591 |  | DH 1100 / Mechanical Gallery 1101 // Install OH Electrical, FA/EPMS/BMS Conduit & Grounding | 10d | 2025-09-29 A | 2025-11-12 A | QTS-13681 | 100% |  | 2025-09-29 | 2025-10-10 |  |  |  |  | Rosendin Electric, Inc | Level 1 | DH1100 | Construction | IGMP | Scott Masterson | Construction | 01ADMIN | Phase 1 |
| QTS-10291 |  | DH 1100 / Mechanical Gallery 1101 // Frame Fan Wall | 5d | 2025-10-08 A | 2025-10-15 A | QTS-8581 SS, QTS-10271 | 100% |  | 2025-10-08 | 2025-10-14 |  |  |  |  |  | Level 1 | DH1100 | Construction | IGMP | Doug Hayes | Construction | 01ADMIN | Phase 1 |
| QTS-12971 |  | DH 1100 / Mechanical Gallery 1101 // Paint for 1101-1102 Wall | 3d | 2025-10-13 A | 2025-12-15 A | QTS-11141 FF+1d | 100% |  | 2025-10-13 | 2025-10-15 |  |  |  | QTS-PHX3 DC1 - 6 day w/ Holidays | Pennington Painting Company, LLC | Level 1 | DH1100 | Construction | IGMP | Sean Waisner | Construction | 01ADMIN | Phase 1 |
| QTS-99920 |  | DH 1100 / Mechanical Gallery 1101 // Hang, Tape, & Finish Drywall for Fan Wall - MG Side | 3d | 2025-10-16 A | 2025-10-20 A | QTS-10291 | 100% |  |  |  |  |  |  |  |  |  |  |  |  |  |  | 01ADMIN |  |
| QTS-101940 |  | DH 1100 / Mechanical Gallery 1101 // Install Pipe Risers | 10d | 2025-10-20 A | 2025-10-28 A | QTS-13681 | 100% |  | 2025-11-03 | 2025-11-14 |  |  |  |  | Bel-Aire Mechanical, LLC | Level 2 | DH2100 | Construction | IGMP | Dave Wiltberger | Construction | 01ADMIN |  |
| QTS-11541 |  | DH 1100 / Mechanical Gallery 1101 // In Wall Electrical Rough for Fan Wall | 2d | 2025-10-20 A | 2025-10-23 A | QTS-10291 | 100% |  | 2025-10-16 | 2025-10-17 |  |  |  |  | Rosendin Electric, Inc | Level 1 | DH1100 | Construction | IGMP | Scott Masterson | Construction | 01ADMIN | Phase 1 |
| QTS-101950 |  | DH 1100 / Mechanical Gallery 1101 // POC Rough In for CRAH Unit Mechanical Connections | 5d | 2025-10-23 A | 2025-10-29 A | QTS-101940 FF+1d, QTS-120000 | 100% |  |  |  |  |  |  |  | Bel-Aire Mechanical, LLC | Level 2 | DH2100 | Construction | IGMP | Dave Wiltberger | Construction | 01ADMIN |  |
| QTS-11941 |  | DH 1100 / Mechanical Gallery 1101 // In Wall Inspection for Fan Wall | 1d | 2025-10-28 A | 2025-10-28 A | QTS-11541 | 100% |  |  |  |  |  |  |  | Bel-Aire Mechanical, LLC | Level 1 | DH1100 | Construction | IGMP | Dave Wiltberger | Construction | 01ADMIN | Phase 1 |
| QTS-99930 |  | DH 1100 / Mechanical Gallery 1101 // Paint for Fan Wall - MG Side | 3d | 2025-11-05 A | 2025-11-12 A | QTS-99920 FF+2d | 100% |  | 2025-11-05 | 2025-11-07 |  |  |  |  |  |  |  |  |  | Doug Hayes |  | 01ADMIN |  |
| QTS-10881 |  | DH 1100 / Mechanical Gallery 1101 // In Wall Inspection for 1101-1102 Wall | 1d | 2025-11-07 A | 2025-11-07 A | QTS-10281 | 100% |  |  |  |  |  |  |  | Bel-Aire Mechanical, LLC | Level 1 | DH1100 | Construction | IGMP | Dave Wiltberger | Construction | 01ADMIN | Phase 1 |
| QTS-12171 |  | DH 1100 / Mechanical Gallery 1101 // Hang, Tape, & Finish Fan Drywall - DH Side | 5d | 2025-11-19 A | 2025-11-25 A | QTS-11941 | 100% |  |  |  |  |  |  |  |  | Level 1 | DH1100 | Construction | IGMP | Sean Waisner | Construction | 01ADMIN | Phase 1 |
| QTS-14131 |  | DH 1100 / Mechanical Gallery 1101 // OFCI - L2 SET IN PLACE - Eq Type # - DH CRAH - 14 units | 6d | 2025-11-20 A | 2025-12-01 A | QTS-34251, QTS-34261, QTS-34271, QTS-34281, QTS-34291, QTS-34301, QTS-34311, QTS-34321, QTS-34331, QTS-34341, QTS-34351, QTS-34361, QTS-34371, QTS-34381, QTS-13681, QTS-99930, QTS-101950 | 100% |  | 2025-11-21 | 2025-12-02 |  |  |  |  | Bel-Aire Mechanical, LLC | Level 1 | DH1100 | Construction | IGMP | Dave Wiltberger | Construction | 01ADMIN | Phase 1 |
| QTS-15441 |  | DH 1100 / Mechanical Gallery 1101 // DH CRAH Unit Mechanical Connections | 10d | 2025-12-02 A | 2026-01-14 | QTS-14131 | 100% | 0d | 2025-12-03 | 2025-12-13 | 15d | 0d |  | QTS-PHX3 DC1 - 6 day w/ Holidays | Bel-Aire Mechanical, LLC | Level 1 | DH1100 | Construction | IGMP | Dave Wiltberger | Construction | 01ADMIN | Phase 1 |
| QTS-12981 |  | DH 1100 / Mechanical Gallery 1101 // Paint for Fan Wall - DH Side | 2d | 2025-12-08 A | 2025-12-09 A | QTS-12171 | 100% |  |  |  |  |  |  |  |  | Level 1 | DH1100 | Construction | IGMP | Sean Waisner | Construction | 01ADMIN | Phase 1 |
| QTS-13341 |  | DH 1100 / Mechanical Gallery 1101 // Top of Wall Fire Stop for 1101-1102 Wall | 2d | 2025-12-11 A | 2025-12-12 A | QTS-8581 | 100% |  |  |  |  |  |  |  |  | Level 1 | DH1100 | Construction | IGMP | Sean Waisner | Construction | 01ADMIN | Phase 1 |
| QTS-46501 |  | DH 1100 / Mechanical Gallery 1101 // Set EPMS/BMS Panels | 4d | 2025-12-11 A | 2025-12-16 A | QTS-12171 | 100% |  |  |  |  |  |  |  | Rosendin Electric, Inc | Level 1 | DH1100 | Construction | IGMP | Scott Masterson | Construction | 01ADMIN | Phase 1 |
| QTS-46491 |  | DH 1100 / Mechanical Gallery 1101 // OFCI - L2 SET IN PLACE - Eq Type # - EG CRAH - 4 units | 6d | 2026-01-09 A | 2026-01-09 A | QTS-34531, QTS-34541, QTS-34551, QTS-34561, QTS-12971, QTS-101950 | 100% |  | 2026-01-09 | 2026-01-15 |  |  |  | QTS-PHX3 DC1 - 6 day w/ Holidays | Bel-Aire Mechanical, LLC | Level 1 | DH1100 | Construction | IGMP | Dave Wiltberger | Construction | 01ADMIN | Phase 1 |
| QTS-16201 |  | DH 1100 / Mechanical Gallery 1101 // OFCI - L2 SET IN PLACE - Eq Type # - MOD-03 - 7 units | 10d | 2026-01-12 A | 2026-01-12 A | QTS-13671, QTS-31501, QTS-31511, QTS-31521, QTS-31531, QTS-31541, QTS-31551, QTS-31691, QTS-46491 SS | 100% |  | 2026-01-12 | 2026-01-23 |  |  | start on or after 2026-01-07 | QTS-PHX3 DC1 - 6 day w/ Holidays | Rosendin Electric, Inc | Level 1 | DH1100 | Construction | IGMP | Scott Masterson | Construction | 01ADMIN | Phase 1 |
| QTS-43911 |  | DH 1100 / Mechanical Gallery 1101 // OFCI - L2 SET IN PLACE - Eq Type # - MOD-02 - 7 units | 10d | 2026-01-12 A | 2026-01-12 A | QTS-13671, QTS-31261, QTS-31271, QTS-31281, QTS-31291, QTS-31301, QTS-31311, QTS-31761, QTS-13681, QTS-46491 SS | 100% |  | 2026-01-12 | 2026-01-23 |  |  | start on or after 2026-01-07 | QTS-PHX3 DC1 - 6 day w/ Holidays | Rosendin Electric, Inc | Level 1 | DH1100 | Construction | IGMP | Scott Masterson | Construction | 01ADMIN | Phase 1 |
| QTS-14471 |  | DH 1100 / Mechanical Gallery 1101 // Install Raceway from UPS Pod to MOD-02/03 | 10d | 2026-01-13 A | 2026-01-14 | QTS-13671, QTS-13341, QTS-13541 | 100% | 0d | 2026-01-13 | 2026-01-24 | 20d | 0d |  | QTS-PHX3 DC1 - 6 day w/ Holidays | Rosendin Electric, Inc | Level 1 | DH1100 | Construction | IGMP | Scott Masterson | Construction | 01ADMIN | Phase 1 |
| QTS-15451 |  | DH 1100 / Mechanical Gallery 1101 // Install Angle Seal Around Units | 2d | 2026-01-14 | 2026-01-15 | QTS-15441, QTS-14131 |  |  |  |  | 44d | 0d |  | QTS-PHX3 DC1 - 6 day w/ Holidays | Performance Contracting, Inc. | Level 1 | DH1100 | Construction | IGMP | Sean Waisner | Construction | 01ADMIN | Phase 1 |
| QTS-16981 |  | DH 1100 / Mechanical Gallery 1101 // Set Humidifier | 1d | 2026-01-14 | 2026-01-14 | QTS-15441, QTS-19491 |  |  |  |  | 45d | 1d |  | QTS-PHX3 DC1 - 6 day w/ Holidays | Bel-Aire Mechanical, LLC | Level 1 | DH1100 | Construction | IGMP | Dave Wiltberger | Construction | 01ADMIN | Phase 1 |
| QTS-43691 |  | DH 1100 / Mechanical Gallery 1101 // Pull & Terminate from UPS Pod to MOD-02/03 | 10d | 2026-01-14 | 2026-01-26 | QTS-16201, QTS-14471 |  |  |  |  | 20d | 0d |  | QTS-PHX3 DC1 - 6 day w/ Holidays | Rosendin Electric, Inc | Level 1 | DH1100 | Construction | IGMP | Scott Masterson | Construction | 01ADMIN | Phase 1 |
| QTS-17081 |  | DH 1100 / Mechanical Gallery 1101 // Tie-In MEP to Humidifiers | 6d | 2026-01-16 | 2026-01-23 | QTS-16981, QTS-14131, QTS-13681 FF, QTS-15451 |  |  |  |  | 44d | 7d |  | QTS-PHX3 DC1 - 6 day w/ Holidays | Bel-Aire Mechanical, LLC | Level 1 | DH1100 | Construction | IGMP | Dave Wiltberger | Construction | 01ADMIN | Phase 1 |
| QTS-1002310 |  | DH 1100 / Mechanical Gallery 1101 // Install Duct Work | 5d | 2026-01-20 | 2026-01-24 | QTS-12971 |  |  |  |  | 11d | 0d | start on or after 2026-01-20 | QTS-PHX3 DC1 - 6 day w/ Holidays | Rosendin Electric, Inc | Level 1 | DH1100 | Construction | IGMP | Dave Wiltberger | Construction |  | Phase 1 |
| QTS-99530 |  | DH 1100 / Mechanical Gallery 1101 // Final Connection of Raceway from UPS Pod to MOD-02/03 Boards | 6d | 2026-01-20 | 2026-01-26 | QTS-15441, QTS-46511 |  |  |  |  | 13d | 0d |  | QTS-PHX3 DC1 - 6 day w/ Holidays | Rosendin Electric, Inc | Level 2 | DH2100 |  | IGMP | Scott Masterson | Construction |  |  |
| QTS-46511 |  | DH 1100 / Mechanical Gallery 1101 // EG CRAH Unit Mechanical Connections | 10d | 2026-01-21 A | 2026-01-17 | QTS-46491 | 60% | 4d | 2026-01-21 | 2026-01-31 | 11d | 0d |  | QTS-PHX3 DC1 - 6 day w/ Holidays | Bel-Aire Mechanical, LLC | Level 1 | DH1100 | Construction | IGMP | Dave Wiltberger | Construction | 01ADMIN | Phase 1 |
| QTS-15581 |  | DH 1100 / Mechanical Gallery 1101 // Install Electrical Tray | 5d | 2026-01-26 | 2026-01-30 | QTS-1002310, QTS-13681, QTS-14471 |  |  |  |  | 11d | 0d |  | QTS-PHX3 DC1 - 6 day w/ Holidays | Rosendin Electric, Inc | Level 1 | DH1100 | Construction | IGMP | Scott Masterson | Construction | 01ADMIN | Phase 1 |
| QTS-44451 |  | DH 1100 / Mechanical Gallery 1101 // Install Lighting, Security, and Devices | 5d | 2026-01-27 | 2026-01-31 | QTS-43691 |  |  |  |  | 51d | 42d |  | QTS-PHX3 DC1 - 6 day w/ Holidays | Securitas Technology Corporation | Level 2 | DH2100 | Construction | IGMP | Scott Masterson | Construction |  |  |
| QTS-46521 |  | DH 1100 / Mechanical Gallery 1101 // Pull & Terminate from MOD-02 to CRAHs | 4d | 2026-01-27 | 2026-01-30 | QTS-43911, QTS-43691 |  |  |  |  | 34d | 0d |  | QTS-PHX3 DC1 - 6 day w/ Holidays | Rosendin Electric, Inc | Level 1 | DH1100 | Construction | IGMP | Scott Masterson | Construction |  | Phase 1 |
| QTS-99540 |  | DH 1100 / Mechanical Gallery 1101 // Final Connection of Electrical Tray | 2d | 2026-01-27 | 2026-01-28 | QTS-99530, QTS-15441 |  |  |  |  | 13d | 2d |  | QTS-PHX3 DC1 - 6 day w/ Holidays | Rosendin Electric, Inc | Level 2 | DH2100 | Construction | IGMP | Scott Masterson | Construction |  |  |
| QTS-16501 |  | DH 1100 / Mechanical Gallery 1101 // Install Basket Tray for LV | 5d | 2026-01-31 | 2026-02-05 | QTS-15581, QTS-99540, QTS-12981 |  |  |  |  | 11d | 0d |  | QTS-PHX3 DC1 - 6 day w/ Holidays | Rosendin Electric, Inc | Level 1 | DH1100 | Construction | IGMP | Scott Masterson | Construction |  | Phase 1 |
| QTS-46531 |  | DH 1100 / Mechanical Gallery 1101 // Pull & Terminate from MOD-02 to DOAS | 4d | 2026-01-31 | 2026-02-04 | QTS-46521 |  |  |  |  | 34d | 0d |  | QTS-PHX3 DC1 - 6 day w/ Holidays | Rosendin Electric, Inc | Level 1 | DH1100 | Construction | IGMP | Scott Masterson | Construction |  | Phase 1 |
| QTS-44441 |  | DH 1100 / Mechanical Gallery 1101 // Install BMS & EPMS Cable and Terminations | 10d | 2026-02-06 | 2026-02-17 | QTS-16501, QTS-46501 |  |  |  |  | 11d | 0d |  | QTS-PHX3 DC1 - 6 day w/ Holidays | Rosendin Electric, Inc | Level 2 | DH2100 | Construction | IGMP | Scott Masterson | Construction |  |  |

Notes:
- QTS-11141: allucent_notes_20251014_152335: Zack Goertz on 2025-10-14T16:40:30.150Z: It is delayed. Pushing until End of Week / -ZG 10/14 / Zack Goertz on 2025-10-14 09:10: It is delayed. Pushing until End of Week. PCI is behind / allucent_notes_20251021_145627: Zack Goertz on 2025-10-14T16:40:30.150Z: It is delayed. Pushing until End of Week / -ZG 10/14 / Zack Goertz on 2025-10-14 09:10: It is delayed. Pushing until End of Week. PCI is behind / Luis Vea on 2025-10-21T14:56:52.017Z: delayed, needing rough in and insulation to close up the walls / allucent_notes_20251027_224008: Zack Goertz on 2025-10-14T16:40:30.150Z: It is delayed. Pushing until End of Week / -ZG 10/14 / Zack Goertz on 2025-10-14 09:10: It is delayed. Pushing until End of Week. PCI is behind / Luis Vea on 2025-10-21T14:56:52.017Z: delayed, needing rough in and insulation to close up the walls / allucent_notes_20251028_163138: Zack Goertz on 2025-10-14T16:40:30.150Z: It is delayed. Pushing until End of Week / -ZG 10/14 / Zack Goertz on 2025-10-14 09:10: It is delayed. Pushing until End of Week. PCI is behind / Luis Vea on 2025-10-21T14:56:52.017Z: delayed, needing rough in and insulation to close up the walls / allucent_notes_20251104_160200: Zack Goertz on 2025-10-14T16:40:30.150Z: It is delayed. Pushing until End of Week / -ZG 10/14 / Zack Goertz on 2025-10-14 09:10: It is delayed. Pushing until End of Week. PCI is behind / Luis Vea on 2025-10-21T14:56:52.017Z: delayed, needing rough in and insulation to close up the walls / allucent_notes_20251111_182405: Zack Goertz on 2025-10-14T16:40:30.150Z: It is delayed. Pushing until End of Week / -ZG 10/14 / Zack Goertz on 2025-10-14 09:10: It is delayed. Pushing until End of Week. PCI is behind / Luis Vea on 2025-10-21T14:56:52.017Z: delayed, needing rough in and insulation to close up the walls / allucent_notes_20251118_192630: Zack Goertz on 2025-10-14T16:40:30.150Z: It is delayed. Pushing until End of Week / -ZG 10/14 / Zack Goertz on 2025-10-14 09:10: It is delayed. Pushing until End of Week. PCI is behind / Luis Vea on 2025-10-21T14:56:52.017Z: delayed, needing rough in and insulation to close up the walls / allucent_notes_20251202_153722: Zack Goertz on 2025-10-14T16:40:30.150Z: It is delayed. Pushing until End of Week / -ZG 10/14 / Zack Goertz on 2025-10-14 09:10: It is delayed. Pushing until End of Week. PCI is behind / Luis Vea on 2025-10-21T14:56:52.017Z: delayed, needing rough in and insulation to close up the walls / allucent_notes: 2025-10-14T16:40:30.150Z - User: Zack Goertz - Date Added: 2025-10-14T16:40:30.150Z - Note: It is delayed. Pushing until End of Week -ZG 10/14 / 2025-10-14 09:10 - User: Zack Goertz - Date Added: 2025-10-14 09:10 - Note: It is delayed. Pushing until End
- QTS-15591: allucent_notes_20251014_152335: David Wiltberger on 2025-10-14 12:10: pushede out from framing / allucent_notes_20251021_145627: David Wiltberger on 2025-10-14 12:10: pushede out from framing / allucent_notes_20251027_224008: David Wiltberger on 2025-10-14 12:10: pushede out from framing / allucent_notes_20251028_163138: David Wiltberger on 2025-10-14 12:10: pushede out from framing / allucent_notes_20251104_160200: David Wiltberger on 2025-10-14 12:10: pushede out from framing / Scott Masterson on 2025-11-04 14:11: Need CRAHs set (higher work activities completed) before electrical can start. Need to get estimated date of set. / allucent_notes_20251111_182405: David Wiltberger on 2025-10-14 12:10: pushede out from framing / Scott Masterson on 2025-11-04 14:11: Need CRAHs set (higher work activities completed) before electrical can start. Need to get estimated date of set. / Jason Johnston on 2025-11-11 16:11: SWO / allucent_notes_20251118_192630: David Wiltberger on 2025-10-14 12:10: pushede out from framing / Scott Masterson on 2025-11-04 14:11: Need CRAHs set (higher work activities completed) before electrical can start. Need to get estimated date of set. / Jason Johnston on 2025-11-11 16:11: SWO / Jason Johnston on 2025-11-19T02:24:08.433Z: undo / allucent_notes: 2025-10-14 12:10 - User: David Wiltberger - Date Added: 2025-10-14 12:10 - Note: pushede out from framing / 2025-11-04 14:11 - User: Scott Masterson - Date Added: 2025-11-04 14:11 - Note: Need CRAHs set (higher work activities completed) before electrica
- QTS-10291: allucent_notes_20251014_152335: Jason Johnston on 2025-10-08 08:10: not done / Zack Goertz on 2025-10-14 09:10: It is delayed. Pushing until End of Week. PCI is behind / allucent_notes_20251021_145627: Jason Johnston on 2025-10-08 08:10: not done / Zack Goertz on 2025-10-14 09:10: It is delayed. Pushing until End of Week. PCI is behind / Luis Vea on 2025-10-21T14:57:47.802Z: finished Thursday the 16th. / allucent_notes: 2025-10-08 08:10 - User: Jason Johnston - Date Added: 2025-10-08 08:10 - Note: not done / 2025-10-14 09:10 - User: Zack Goertz - Date Added: 2025-10-14 09:10 - Note: It is delayed. Pushing until End of Week. PCI is behind / 2025-10-21T14:57:47.802Z - Us
- QTS-12971: allucent_notes_20251202_153722: Luis Vea on 2025-12-01 10:14: starting 12/04 / allucent_notes_20251209_203830: Luis Vea on 2025-12-01 10:14: starting 12/04 / Jason Johnston on 2025-12-09 18:22: Need update from team / allucent_notes_20251216_165335: Luis Vea on 2025-12-01 10:14: starting 12/04 / Jason Johnston on 2025-12-09 18:22: Need update from team / allucent_notes: 2025-12-01 10:14 - User: Luis Vea - Date Added: 2025-12-01 10:14 - Note: starting 12/04 / 2025-12-09 18:22 - User: Jason Johnston - Date Added: 2025-12-09 18:22 - Note: Need update from team
- QTS-99920: allucent_notes_20251021_145627: Luis Vea on 2025-10-21T15:04:17.174Z: electricians are delaying the second side, the rough in is going slow / allucent_notes: 2025-10-21T15:04:17.174Z - User: Luis Vea - Date Added: 2025-10-21T15:04:17.174Z - Note: electricians are delaying the second side, the rough in is going slow
- QTS-11541: allucent_notes_20251021_145627: Luis Vea on 2025-10-21T15:03:33.710Z: still on going / Scott Masterson on 2025-10-21 11:10: Walls are not built yet I will work with Area Managers to get this work caught up. / Scott Masterson on 2025-10-21 11:10: The fan was released out of sequence, REI is working on getting them caught up. additional the 20% remaining to complet from the 38' issue. RFI is answered so PCI know how to build but the material are not onsite yet. / allucent_notes_20251027_224008: Luis Vea on 2025-10-21T15:03:33.710Z: still on going / Scott Masterson on 2025-10-21 11:10: Walls are not built yet I will work with Area Managers to get this work caught up. / Scott Masterson on 2025-10-21 11:10: The fan was released out of sequence, REI is working on getting them caught up. additional the 20% remaining to complet from the 38' issue. RFI is answered so PCI know how to build but the material are not onsite yet. / allucent_notes: 2025-10-21T15:03:33.710Z - User: Luis Vea - Date Added: 2025-10-21T15:03:33.710Z - Note: still on going / 2025-10-21 11:10 - User: Scott Masterson - Date Added: 2025-10-21 11:10 - Note: Walls are not built yet I will work with Area Managers to get this
- QTS-11941: allucent_notes_20251021_145627: Luis Vea on 2025-10-21T15:05:22.366Z: not ready / allucent_notes_20251027_224008: Luis Vea on 2025-10-21T15:05:22.366Z: not ready / Jason Johnston on 2025-10-27 09:10: Wall inspection scheduled for 10/28 / allucent_notes_20251028_163138: Luis Vea on 2025-10-21T15:05:22.366Z: not ready / Jason Johnston on 2025-10-27 09:10: Wall inspection scheduled for 10/28 / allucent_notes: 2025-10-21T15:05:22.366Z - User: Luis Vea - Date Added: 2025-10-21T15:05:22.366Z - Note: not ready / 2025-10-27 09:10 - User: Jason Johnston - Date Added: 2025-10-27 09:10 - Note: Wall inspection scheduled for 10/28
- QTS-99930: allucent_notes_20251021_145627: Luis Vea on 2025-10-21T15:04:52.920Z: will be painted Friday, if not it will be delayed by the rough in / Jason Johnston on 2025-10-21 12:10: Trade stacking delaying the completion of this work / allucent_notes_20251027_224008: Luis Vea on 2025-10-21T15:04:52.920Z: will be painted Friday, if not it will be delayed by the rough in / Jason Johnston on 2025-10-21 12:10: Trade stacking delaying the completion of this work / Jason Johnston on 2025-10-27 09:10: Moving to accommodate inspection time. / allucent_notes_20251028_163138: Luis Vea on 2025-10-21T15:04:52.920Z: will be painted Friday, if not it will be delayed by the rough in / Jason Johnston on 2025-10-21 12:10: Trade stacking delaying the completion of this work / Jason Johnston on 2025-10-27 09:10: Moving to accommodate inspection time. / allucent_notes_20251104_160200: Luis Vea on 2025-10-21T15:04:52.920Z: will be painted Friday, if not it will be delayed by the rough in / Jason Johnston on 2025-10-21 12:10: Trade stacking delaying the completion of this work / Jason Johnston on 2025-10-27 09:10: Moving to accommodate inspection time. / Jason Johnston on 2025-11-04 15:11: Update needed / allucent_notes_20251111_182405: Luis Vea on 2025-10-21T15:04:52.920Z: will be painted Friday, if not it will be delayed by the rough in / Jason Johnston on 2025-10-21 12:10: Trade stacking delaying the completion of this work / Jason Johnston on 2025-10-27 09:10: Moving to accommodate inspection time. / Jason Johnston on 2025-11-04 15:11: Update needed / Luis Vea on 2025-11-10 11:11: completed 11/10 / Jason Johnston on 2025-11-11 16:11: slow / allucent_notes_20251118_192630: Luis Vea on 2025-10-21T15:04:52.920Z: will be painted Friday, if not it will be delayed by the rough in / Jason Johnston on 2025-10-21 12:10: Trade stacking delaying the completion of this work / Jason Johnston on 2025-10-27 09:10: Moving to accommodate inspection time. / Jason Johnston on 2025-11-04 15:11: Update needed / Luis Vea on 2025-11-10 11:11: completed 11/10 / Jason Johnston on 2025-11-11 16:11: slow / allucent_notes: 2025-10-21T15:04:52.920Z - User: Luis Vea - Date Added: 2025-10-21T15:04:52.920Z - Note: will be painted Friday, if not it will be delayed by the rough in / 2025-10-21 12:10 - User: Jason Johnston - Date Added: 2025-10-21 12:10 - Note: Trade stacking de
- QTS-10881: allucent_notes_20251014_152335: David Wiltberger on 2025-09-30 12:09: no ready / David Wiltberger on 2025-10-07 16:10: No putty packs / David Wiltberger on 2025-10-14 12:10: no walls / allucent_notes_20251021_145627: David Wiltberger on 2025-09-30 12:09: no ready / David Wiltberger on 2025-10-07 16:10: No putty packs / David Wiltberger on 2025-10-14 12:10: no walls / Luis Vea on 2025-10-21T15:05:08.408Z: not ready / David Wiltberger on 2025-10-21 13:10: Waiting on RFI#542 to complete wall / allucent_notes_20251027_224008: David Wiltberger on 2025-09-30 12:09: no ready / David Wiltberger on 2025-10-07 16:10: No putty packs / David Wiltberger on 2025-10-14 12:10: no walls / Luis Vea on 2025-10-21T15:05:08.408Z: not ready / David Wiltberger on 2025-10-21 13:10: Waiting on RFI#542 to complete wall / allucent_notes_20251028_163138: David Wiltberger on 2025-09-30 12:09: no ready / David Wiltberger on 2025-10-07 16:10: No putty packs / David Wiltberger on 2025-10-14 12:10: no walls / Luis Vea on 2025-10-21T15:05:08.408Z: not ready / David Wiltberger on 2025-10-21 13:10: Waiting on RFI#542 to complete wall / allucent_notes_20251104_160200: David Wiltberger on 2025-09-30 12:09: no ready / David Wiltberger on 2025-10-07 16:10: No putty packs / David Wiltberger on 2025-10-14 12:10: no walls / Luis Vea on 2025-10-21T15:05:08.408Z: not ready / David Wiltberger on 2025-10-21 13:10: Waiting on RFI#542 to complete wall / allucent_notes_20251111_182405: David Wiltberger on 2025-09-30 12:09: no ready / David Wiltberger on 2025-10-07 16:10: No putty packs / David Wiltberger on 2025-10-14 12:10: no walls / Luis Vea on 2025-10-21T15:05:08.408Z: not ready / David Wiltberger on 2025-10-21 13:10: Waiting on RFI#542 to complete wall / allucent_notes_20251118_192630: David Wiltberger on 2025-09-30 12:09: no ready / David Wiltberger on 2025-10-07 16:10: No putty packs / David Wiltberger on 2025-10-14 12:10: no walls / Luis Vea on 2025-10-21T15:05:08.408Z: not ready / David Wiltberger on 2025-10-21 13:10: Waiting on RFI#542 to complete wall / allucent_notes: 2025-09-30 12:09 - User: David Wiltberger - Date Added: 2025-09-30 12:09 - Note: no ready / 2025-10-07 16:10 - User: David Wiltberger - Date Added: 2025-10-07 16:10 - Note: No putty packs / 2025-10-14 12:10 - User: David Wiltberger - Date Added: 2025-10
- QTS-12171: allucent_notes_20251104_160200: Jason Johnston on 2025-11-04 15:11: Update needed / allucent_notes_20251111_182405: Jason Johnston on 2025-11-04 15:11: Update needed / Jason Johnston on 2025-11-11 16:11: not done / allucent_notes_20251118_192630: Jason Johnston on 2025-11-04 15:11: Update needed / Jason Johnston on 2025-11-11 16:11: not done / allucent_notes_20251202_153722: Jason Johnston on 2025-11-04 15:11: Update needed / Jason Johnston on 2025-11-11 16:11: not done / allucent_notes: 2025-11-04 15:11 - User: Jason Johnston - Date Added: 2025-11-04 15:11 - Note: Update needed / 2025-11-11 16:11 - User: Jason Johnston - Date Added: 2025-11-11 16:11 - Note: not done
- QTS-14131: allucent_notes_20251118_192630: David Wiltberger on 2025-11-17 16:11: out of sequence / allucent_notes_20251202_153722: David Wiltberger on 2025-11-17 16:11: out of sequence / allucent_notes: 2025-11-17 16:11 - User: David Wiltberger - Date Added: 2025-11-17 16:11 - Note: out of sequence
- QTS-15441: allucent_notes_20251230_164549: Jason Johnston on 2025-12-16 08:59: Need update / David Wiltberger on 2025-12-30 15:42: holiday delayed / allucent_notes_20251216_165335: Jason Johnston on 2025-12-16 08:59: Need update / allucent_notes: 2025-12-16 08:59 - User: Jason Johnston - Date Added: 2025-12-16 08:59 - Note: Need update / 2025-12-30 15:42 - User: David Wiltberger - Date Added: 2025-12-30 15:42 - Note: holiday delayed
- QTS-12981: allucent_notes_20251202_153722: Luis Vea on 2025-12-01 10:14: not in the green mile / allucent_notes_20251209_203830: Luis Vea on 2025-12-01 10:14: not in the green mile / allucent_notes: 2025-12-01 10:14 - User: Luis Vea - Date Added: 2025-12-01 10:14 - Note: not in the green mile
- QTS-46491: allucent_notes_20251230_164549: David Wiltberger on 2025-11-17 16:11: out of sequence / allucent_notes_20251118_192630: David Wiltberger on 2025-11-17 16:11: out of sequence / allucent_notes_20251202_153722: David Wiltberger on 2025-11-17 16:11: out of sequence / allucent_notes_20251209_203830: David Wiltberger on 2025-11-17 16:11: out of sequence / allucent_notes_20251216_165335: David Wiltberger on 2025-11-17 16:11: out of sequence / allucent_notes: 2025-11-17 16:11 - User: David Wiltberger - Date Added: 2025-11-17 16:11 - Note: out of sequence
- QTS-14471: allucent_notes_20251230_164549: David Wiltberger on 2025-12-30 15:44: corridor impacted by fire stop work / allucent_notes: 2025-12-30 15:44 - User: David Wiltberger - Date Added: 2025-12-30 15:44 - Note: corridor impacted by fire stop work
- QTS-15451: allucent_notes_20251230_164549: Sean Waisner on 2025-12-02 15:28: Will install after security screen / Jason Johnston on 2025-12-16 09:00: non-critical item / Jason Johnston on 2025-12-30 16:42: No update / allucent_notes_20251202_153722: Sean Waisner on 2025-12-02 15:28: Will install after security screen / allucent_notes_20251209_203830: Sean Waisner on 2025-12-02 15:28: Will install after security screen / allucent_notes_20251216_165335: Sean Waisner on 2025-12-02 15:28: Will install after security screen / Jason Johnston on 2025-12-16 09:00: non-critical item / allucent_notes: 2025-12-02 15:28 - User: Sean Waisner - Date Added: 2025-12-02 15:28 - Note: Will install after security screen / 2025-12-16 09:00 - User: Jason Johnston - Date Added: 2025-12-16 09:00 - Note: non-critical item / 2025-12-30 16:42 - User: Jason Johnston
- QTS-46511: allucent_notes_20251230_164549: David Wiltberger on 2025-12-30 15:45: units not set / allucent_notes: 2025-12-30 15:45 - User: David Wiltberger - Date Added: 2025-12-30 15:45 - Note: units not set

| ID | WBS | Activity | Duration | Start | Finish | Predecessors | Complete | Remaining | Planned start | Planned finish | Total float | Free float | Calendar | Subcontractor | Level | Location | Project Section-1 | Baseline | Layton Responsible Party | Project Section | Allucent CSI Group | Phase-1-1 |
| --- | --- | --- | --- | --- | --- | --- | --- | --- | --- | --- | --- | --- | --- | --- | --- | --- | --- | --- | --- | --- | --- | --- |
|  | 7 | **Gallery 1103 Mechanical** |  | 2025-09-03 | 2026-01-31 |  |  |  |  |  |  |  |  |  |  |  |  |  |  |  |  |  |
| QTS-44581 |  | DH 1100 / Mechanical Gallery 1103 // Install OH Mechanical Hangers | 7d | 2025-09-03 A | 2025-09-12 A | QTS-44431 SS | 100% |  | 2025-09-03 | 2025-09-11 |  |  |  | Bel-Aire Mechanical, LLC | Level 2 | DH2100 | Construction | IGMP | Doug Hayes | Construction | 01ADMIN |  |
| QTS-14671 |  | DH 1100 / Mechanical Gallery 1103 // OH Mechanical Piping | 10d | 2025-09-15 A | 2025-10-07 A | QTS-44581 | 100% |  | 2025-09-15 | 2025-09-26 |  |  |  | Bel-Aire Mechanical, LLC | Level 1 | DH1100 | Construction | IGMP | Dave Wiltberger | Construction | 01ADMIN | Phase 1 |
| QTS-10271 |  | DH 1100 / Mechanical Gallery 1103 // Frame for 1103 Exterior Wall | 5d | 2025-09-24 A | 2025-09-30 A | QTS-6881, QTS-4541 SS, QTS-6891, QTS-8571, QTS-8581 | 100% |  |  |  |  |  |  |  | Level 1 | DH1100 | Construction | IGMP | Doug Hayes | Construction |  | Phase 1 |
| QTS-11531 |  | DH 1100 / Mechanical Gallery 1103 // Frame Fan Wall | 5d | 2025-10-08 A | 2025-10-17 A | QTS-10271 | 100% |  | 2025-10-08 | 2025-10-14 |  |  |  |  | Level 1 | DH1100 | Construction | IGMP | Doug Hayes | Construction | 01ADMIN | Phase 1 |
| QTS-12161 |  | DH 1100 / Mechanical Gallery 1103 // Hang, Tape, & Finish Drywall 1103 Exterior Wall | 10d | 2025-10-08 A | 2025-10-29 A | QTS-10271, QTS-39041 | 100% |  | 2025-10-08 | 2025-10-21 |  |  |  |  | Level 1 | DH1100 | Construction | IGMP | Doug Hayes | Construction | 01ADMIN | Phase 1 |
| QTS-14661 |  | DH 1100 / Mechanical Gallery 1103 // Install VESDA | 8d | 2025-10-13 A | 2025-10-22 A | QTS-14651 | 100% |  |  |  |  |  |  | Rosendin Electric, Inc | Level 1 | DH1100 | Construction | IGMP | Scott Masterson | Construction | 01ADMIN | Phase 1 |
| QTS-101960 |  | DH 1100 / Mechanical Gallery 1103 // Install Pipe Risers | 10d | 2025-10-20 A | 2025-10-28 A | QTS-14671 | 100% |  | 2025-11-03 | 2025-11-14 |  |  |  | Bel-Aire Mechanical, LLC | Level 2 | DH2100 | Construction | IGMP | Dave Wiltberger | Construction | 01ADMIN |  |
| QTS-12531 |  | DH 1100 / Mechanical Gallery 1103 // In Wall Electrical Rough for Fan Wall | 2d | 2025-10-20 A | 2025-10-23 A | QTS-11531 | 100% |  | 2025-10-20 | 2025-10-21 |  |  |  | Rosendin Electric, Inc | Level 1 | DH1100 | Construction | IGMP | Scott Masterson | Construction | 01ADMIN | Phase 1 |
| QTS-101970 |  | DH 1100 / Mechanical Gallery 1103 // POC Rough In for CRAH Unit Mechanical Connections | 5d | 2025-10-23 A | 2025-10-29 A | QTS-101960 FF+1d, QTS-120000 | 100% |  | 2025-11-11 | 2025-11-17 |  |  |  | Bel-Aire Mechanical, LLC | Level 2 | DH2100 | Construction | IGMP | Dave Wiltberger | Construction | 01ADMIN |  |
| QTS-12831 |  | DH 1100 / Mechanical Gallery 1103 // In Wall Inspection for Fan Wall | 1d | 2025-10-24 A | 2025-10-24 A | QTS-12531 | 100% |  |  |  |  |  |  | Rosendin Electric, Inc | Level 1 | DH1100 | Construction | IGMP | Scott Masterson | Construction | 01ADMIN | Phase 1 |
| QTS-12961 |  | DH 1100 / Mechanical Gallery 1103 // Hang, Tape, & Finish Fan Drywall - DH Side | 5d | 2025-10-27 A | 2025-10-31 A | QTS-12831 | 100% |  |  |  |  |  |  |  | Level 1 | DH1100 | Construction | IGMP | Doug Hayes | Construction | 01ADMIN | Phase 1 |
| QTS-99940 |  | DH 1100 / Mechanical Gallery 1103 // Hang, Tape, & Finish Fan Drywall - MG Side | 3d | 2025-10-29 A | 2025-10-31 A | QTS-11531 | 100% |  |  |  |  |  |  |  |  |  |  |  | Doug Hayes |  | 01ADMIN |  |
| QTS-13651 |  | DH 1100 / Mechanical Gallery 1103 // Paint Fan Walls - DH Side | 5d | 2025-12-08 A | 2025-12-09 A | QTS-12961 | 100% |  | 2025-12-08 | 2025-12-12 |  |  |  |  | Level 1 | DH1100 | Construction | IGMP | Sean Waisner | Construction | 01ADMIN | Phase 1 |
| QTS-13641 |  | DH 1100 / Mechanical Gallery 1103 // Paint 1103 Exterior Wall | 1d | 2025-12-10 A | 2026-01-14 | QTS-12161 | 100% | 0d | 2025-12-10 | 2025-12-10 | 30d | 0d | QTS-PHX3 DC1 - 6 day w/ Holidays | Pennington Painting Company, LLC | Level 1 | DH1100 | Construction | IGMP | Sean Waisner | Construction | 01ADMIN | Phase 1 |
| QTS-99950 |  | DH 1100 / Mechanical Gallery 1103 // Paint Fan Walls - MG Side | 3d | 2025-12-10 A | 2026-01-14 | QTS-99940 FF+2d | 100% | 0d | 2025-12-10 | 2025-12-12 | 15d | 0d | QTS-PHX3 DC1 - 6 day w/ Holidays | Pennington Painting Company, LLC |  |  |  |  | Sean Waisner |  | 01ADMIN |  |
| QTS-46541 |  | DH 1100 / Mechanical Gallery 1103 // Set BMS & EPMS Panels | 4d | 2025-12-11 A | 2025-12-18 A | QTS-13641 SS | 100% |  | 2025-12-11 | 2025-12-16 |  |  |  | Rosendin Electric, Inc | Level 1 | DH1100 | Construction | IGMP | Scott Masterson | Construction | 01ADMIN | Phase 1 |
| QTS-15261 |  | DH 1100 / Mechanical Gallery 1103 // OFCI - L2 SET IN PLACE - Eq Type # - CRAH - 14 units | 6d | 2025-12-15 A | 2025-12-22 A | QTS-34391, QTS-34401, QTS-34411, QTS-34421, QTS-34431, QTS-34441, QTS-34451, QTS-34461, QTS-34471, QTS-34481, QTS-34491, QTS-34501, QTS-34511, QTS-34521, QTS-14671, QTS-14131, QTS-99950 SS, QTS-101970 | 100% |  |  |  |  |  |  | Bel-Aire Mechanical, LLC | Level 1 | DH1100 | Construction | IGMP | Dave Wiltberger | Construction | 01ADMIN | Phase 1 |
| QTS-16231 |  | DH 1100 / Mechanical Gallery 1103 // CRAH Unit Mechanical Connections | 10d | 2025-12-23 A | 2026-01-14 | QTS-15261 | 100% | 0d | 2025-12-23 | 2026-01-05 | 15d | 0d | QTS-PHX3 DC1 - 6 day w/ Holidays | Bel-Aire Mechanical, LLC | Level 1 | DH1100 | Construction | IGMP | Dave Wiltberger | Construction | 01ADMIN | Phase 1 |
| QTS-16491 |  | DH 1100 / Mechanical Gallery 1103 // Install OH Electrical, FA/ EPMS/BMS Conduit & Grounding | 10d | 2025-12-23 A | 2026-01-14 | QTS-14671, QTS-13651, QTS-15261, QTS-120000 | 100% | 0d | 2025-12-23 | 2026-01-05 | 25d | 0d | QTS-PHX3 DC1 - 6 day w/ Holidays | Rosendin Electric, Inc | Level 1 | DH1100 | Construction | IGMP | Scott Masterson | Construction | 01ADMIN | Phase 1 |
| QTS-16241 |  | DH 1100 / Mechanical Gallery 1103 // Install Angle Seal Around Units | 2d | 2026-01-14 | 2026-01-15 | QTS-15261 |  |  |  |  | 50d | 13d | QTS-PHX3 DC1 - 6 day w/ Holidays | Performance Contracting, Inc. | Level 1 | DH1100 | Construction | IGMP | Sean Waisner | Construction | 01ADMIN | Phase 1 |
| QTS-17071 |  | DH 1100 / Mechanical Gallery 1103 // Install Basket Tray for LV | 5d | 2026-01-14 | 2026-01-20 | QTS-16481, QTS-14681 |  |  |  |  | 25d | 0d | QTS-PHX3 DC1 - 6 day w/ Holidays | Rosendin Electric, Inc | Level 1 | DH1100 | Construction | IGMP | Scott Masterson | Construction |  | Phase 1 |
| QTS-16481 |  | DH 1100 / Mechanical Gallery 1103 // Install Electrical Tray | 5d | 2026-01-15 A | 2026-01-14 | QTS-16491 FF, QTS-14671, QTS-16231, QTS-13651 | 100% | 0d | 2026-01-15 | 2026-01-21 | 25d | 0d | QTS-PHX3 DC1 - 6 day w/ Holidays | Rosendin Electric, Inc | Level 1 | DH1100 | Construction | IGMP | Scott Masterson | Construction |  | Phase 1 |
| QTS-17941 |  | DH 1100 / Mechanical Gallery 1103 // Install BMS & EPMS Cable and Terminations | 10d | 2026-01-21 | 2026-01-31 | QTS-17071, QTS-46541 |  |  |  |  | 25d | 14d | QTS-PHX3 DC1 - 6 day w/ Holidays | Rosendin Electric, Inc | Level 1 | DH1100 | Construction | IGMP | Scott Masterson | Construction |  | Phase 1 |

Notes:
- QTS-11531: allucent_notes_20251014_152335: Jason Johnston on 2025-10-08 08:10: not done / Zack Goertz on 2025-10-14T16:35:56.872Z: Had to resequence because of size of fan walls, directed by Dave W to hold off. We got the go ahead now. / -ZG 10/14 / Zack Goertz on 2025-10-14 09:10: It is delayed. Pushing until End of Week. PCI is behind / allucent_notes_20251021_145627: Jason Johnston on 2025-10-08 08:10: not done / Zack Goertz on 2025-10-14T16:35:56.872Z: Had to resequence because of size of fan walls, directed by Dave W to hold off. We got the go ahead now. / -ZG 10/14 / Zack Goertz on 2025-10-14 09:10: It is delayed. Pushing until End of Week. PCI is behind / Luis Vea on 2025-10-21T15:06:07.929Z: finished last Thursday the 16th / allucent_notes: 2025-10-08 08:10 - User: Jason Johnston - Date Added: 2025-10-08 08:10 - Note: not done / 2025-10-14T16:35:56.872Z - User: Zack Goertz - Date Added: 2025-10-14T16:35:56.872Z - Note: Had to resequence because of size of fan walls, directed by Dave W to ho
- QTS-12161: allucent_notes_20251014_152335: Jason Johnston on 2025-10-08 08:10: not done / allucent_notes_20251021_145627: Jason Johnston on 2025-10-08 08:10: not done / Luis Vea on 2025-10-21T15:06:46.796Z: needing rough plumbing need, material is not here yet. / Jason Johnston on 2025-10-21 12:10: Manpower reallocation to the fan walls. / allucent_notes_20251027_224008: Jason Johnston on 2025-10-08 08:10: not done / Luis Vea on 2025-10-21T15:06:46.796Z: needing rough plumbing need, material is not here yet. / Jason Johnston on 2025-10-21 12:10: Manpower reallocation to the fan walls. / allucent_notes_20251028_163138: Jason Johnston on 2025-10-08 08:10: not done / Luis Vea on 2025-10-21T15:06:46.796Z: needing rough plumbing need, material is not here yet. / Jason Johnston on 2025-10-21 12:10: Manpower reallocation to the fan walls. / allucent_notes_20251104_160200: Jason Johnston on 2025-10-08 08:10: not done / Luis Vea on 2025-10-21T15:06:46.796Z: needing rough plumbing need, material is not here yet. / Jason Johnston on 2025-10-21 12:10: Manpower reallocation to the fan walls. / allucent_notes: 2025-10-08 08:10 - User: Jason Johnston - Date Added: 2025-10-08 08:10 - Note: not done / 2025-10-21T15:06:46.796Z - User: Luis Vea - Date Added: 2025-10-21T15:06:46.796Z - Note: needing rough plumbing need, material is not here yet. / 2025-10-21 12:10
- QTS-12531: allucent_notes_20251021_145627: Luis Vea on 2025-10-21T15:07:35.646Z: starting today, installing boxes. / Scott Masterson on 2025-10-21 11:10: The fan was released out of sequence, REI is working on getting them caught up. additional the 20% remaining to complet from the 38' issue. RFI is answered so PCI know how to build but the material are not onsite yet. / allucent_notes_20251027_224008: Luis Vea on 2025-10-21T15:07:35.646Z: starting today, installing boxes. / Scott Masterson on 2025-10-21 11:10: The fan was released out of sequence, REI is working on getting them caught up. additional the 20% remaining to complet from the 38' issue. RFI is answered so PCI know how to build but the material are not onsite yet. / allucent_notes: 2025-10-21T15:07:35.646Z - User: Luis Vea - Date Added: 2025-10-21T15:07:35.646Z - Note: starting today, installing boxes. / 2025-10-21 11:10 - User: Scott Masterson - Date Added: 2025-10-21 11:10 - Note: The fan was released out of sequence, REI is wor
- QTS-99940: allucent_notes_20251021_145627: Luis Vea on 2025-10-21T15:08:09.238Z: need rough in installed, can be delayed, stand by / Jason Johnston on 2025-10-21 12:10: Electrical rough in delayed two days. / allucent_notes_20251027_224008: Luis Vea on 2025-10-21T15:08:09.238Z: need rough in installed, can be delayed, stand by / Jason Johnston on 2025-10-21 12:10: Electrical rough in delayed two days. / Jason Johnston on 2025-10-27 09:10: Starting after 01 fan wall / allucent_notes_20251028_163138: Luis Vea on 2025-10-21T15:08:09.238Z: need rough in installed, can be delayed, stand by / Jason Johnston on 2025-10-21 12:10: Electrical rough in delayed two days. / Jason Johnston on 2025-10-27 09:10: Starting after 01 fan wall / Jason Johnston on 2025-10-28 15:10: Starts tomorrow after inspection / allucent_notes_20251104_160200: Luis Vea on 2025-10-21T15:08:09.238Z: need rough in installed, can be delayed, stand by / Jason Johnston on 2025-10-21 12:10: Electrical rough in delayed two days. / Jason Johnston on 2025-10-27 09:10: Starting after 01 fan wall / Jason Johnston on 2025-10-28 15:10: Starts tomorrow after inspection / allucent_notes: 2025-10-21T15:08:09.238Z - User: Luis Vea - Date Added: 2025-10-21T15:08:09.238Z - Note: need rough in installed, can be delayed, stand by / 2025-10-21 12:10 - User: Jason Johnston - Date Added: 2025-10-21 12:10 - Note: Electrical rough in delayed two d
- QTS-13651: allucent_notes_20251104_160200: Jason Johnston on 2025-11-04 15:11: Update needed / allucent_notes_20251111_182405: Jason Johnston on 2025-11-04 15:11: Update needed / Luis Vea on 2025-11-10 11:11: need more tapers on site. / Jason Johnston on 2025-11-11 16:11: not started / allucent_notes_20251118_192630: Jason Johnston on 2025-11-04 15:11: Update needed / Luis Vea on 2025-11-10 11:11: need more tapers on site. / Jason Johnston on 2025-11-11 16:11: not started / allucent_notes_20251202_153722: Jason Johnston on 2025-11-04 15:11: Update needed / Luis Vea on 2025-11-10 11:11: need more tapers on site. / Jason Johnston on 2025-11-11 16:11: not started / Luis Vea on 2025-12-01 10:25: not in the green mile / allucent_notes_20251209_203830: Jason Johnston on 2025-11-04 15:11: Update needed / Luis Vea on 2025-11-10 11:11: need more tapers on site. / Jason Johnston on 2025-11-11 16:11: not started / Luis Vea on 2025-12-01 10:25: not in the green mile / Jason Johnston on 2025-12-09 18:23: Need update from team / allucent_notes: 2025-11-04 15:11 - User: Jason Johnston - Date Added: 2025-11-04 15:11 - Note: Update needed / 2025-11-10 11:11 - User: Luis Vea - Date Added: 2025-11-10 11:11 - Note: need more tapers on site. / 2025-11-11 16:11 - User: Jason Johnston - Date Added: 20
- QTS-13641: allucent_notes_20251230_164549: Jason Johnston on 2025-11-04 15:11: Update needed / Jason Johnston on 2025-11-04 15:11: Update needed / Luis Vea on 2025-11-10 11:11: need more manpower for tapers, tapers are running behind / Jason Johnston on 2025-11-11 16:11: not started / Jason Johnston on 2025-11-18T20:46:50.004Z: lower priority wall. / Luis Vea on 2025-12-01 10:24: not enough tapers. / Scott Masterson on 2025-12-16 16:45: Need to break this apart. the exterior wall has the triagle shaft rated wall built infront of exterior wall. / Jason Johnston on 2025-12-30 16:42: No update / allucent_notes_20251104_160200: Jason Johnston on 2025-11-04 15:11: Update needed / Jason Johnston on 2025-11-04 15:11: Update needed / allucent_notes_20251111_182405: Jason Johnston on 2025-11-04 15:11: Update needed / Jason Johnston on 2025-11-04 15:11: Update needed / Luis Vea on 2025-11-10 11:11: need more manpower for tapers, tapers are running behind / Jason Johnston on 2025-11-11 16:11: not started / allucent_notes_20251118_192630: Jason Johnston on 2025-11-04 15:11: Update needed / Jason Johnston on 2025-11-04 15:11: Update needed / Luis Vea on 2025-11-10 11:11: need more manpower for tapers, tapers are running behind / Jason Johnston on 2025-11-11 16:11: not started / Jason Johnston on 2025-11-18T20:46:50.004Z: lower priority wall. / allucent_notes_20251202_153722: Jason Johnston on 2025-11-04 15:11: Update needed / Jason Johnston on 2025-11-04 15:11: Update needed / Luis Vea on 2025-11-10 11:11: need more manpower for tapers, tapers are running behind / Jason Johnston on 2025-11-11 16:11: not started / Jason Johnston on 2025-11-18T20:46:50.004Z: lower priority wall. / Luis Vea on 2025-12-01 10:24: not enough tapers. / allucent_notes_20251209_203830: Jason Johnston on 2025-11-04 15:11: Update needed / Jason Johnston on 2025-11-04 15:11: Update needed / Luis Vea on 2025-11-10 11:11: need more manpower for tapers, tapers are running behind / Jason Johnston on 2025-11-11 16:11: not started / Jason Johnston on 2025-11-18T20:46:50.004Z: lower priority wall. / Luis Vea on 2025-12-01 10:24: not enough tapers. / allucent_notes_20251216_165335: Jason Johnston on 2025-11-04 15:11: Update needed / Jason Johnston on 2025-11-04 15:11: Update needed / Luis Vea on 2025-11-10 11:11: need more manpower for tapers, tapers are running behind / Jason Johnston on 2025-11-11 16:11: not started / Jason Johnston on 2025-11-18T20:46:50.004Z: lower priority wall. / Luis Vea on 2025-12-01 10:24: not enough tapers. / Scott Masterson on 2025-12-16 16:45: Need to break this apart. the exterior wall has the triagle shaft rated wall built infront of exterior wall. / allucent_notes: 2025-11-04 15:11 - User: Jason Johnston - Date Added: 2025-11-04 15:11 - Note: Update needed / 2025-11-04 15:11 - User: Jason Johnston - Date Added: 2025-11-04 15:11 - Note: Update needed / 2025-11-10 11:11 - User: Luis Vea - Date Added: 2025-11-10 11:1
- QTS-99950: allucent_notes_20251230_164549: Jason Johnston on 2025-11-04 15:11: Update needed / Luis Vea on 2025-11-10 11:11: needs mud and tape, need more tapers from PCI / Jason Johnston on 2025-11-11 16:11: not started / Luis Vea on 2025-12-01 10:24: not in the green mile / Scott Masterson on 2025-12-16 16:45: Need to break this apart. the exterior wall has the triagle shaft rated wall built infront of exterior wall. / Jason Johnston on 2025-12-30 16:42: No update / allucent_notes_20251104_160200: Jason Johnston on 2025-11-04 15:11: Update needed / allucent_notes_20251111_182405: Jason Johnston on 2025-11-04 15:11: Update needed / Luis Vea on 2025-11-10 11:11: needs mud and tape, need more tapers from PCI / Jason Johnston on 2025-11-11 16:11: not started / allucent_notes_20251118_192630: Jason Johnston on 2025-11-04 15:11: Update needed / Luis Vea on 2025-11-10 11:11: needs mud and tape, need more tapers from PCI / Jason Johnston on 2025-11-11 16:11: not started / allucent_notes_20251202_153722: Jason Johnston on 2025-11-04 15:11: Update needed / Luis Vea on 2025-11-10 11:11: needs mud and tape, need more tapers from PCI / Jason Johnston on 2025-11-11 16:11: not started / Luis Vea on 2025-12-01 10:24: not in the green mile / allucent_notes_20251209_203830: Jason Johnston on 2025-11-04 15:11: Update needed / Luis Vea on 2025-11-10 11:11: needs mud and tape, need more tapers from PCI / Jason Johnston on 2025-11-11 16:11: not started / Luis Vea on 2025-12-01 10:24: not in the green mile / allucent_notes_20251216_165335: Jason Johnston on 2025-11-04 15:11: Update needed / Luis Vea on 2025-11-10 11:11: needs mud and tape, need more tapers from PCI / Jason Johnston on 2025-11-11 16:11: not started / Luis Vea on 2025-12-01 10:24: not in the green mile / Scott Masterson on 2025-12-16 16:45: Need to break this apart. the exterior wall has the triagle shaft rated wall built infront of exterior wall. / allucent_notes: 2025-11-04 15:11 - User: Jason Johnston - Date Added: 2025-11-04 15:11 - Note: Update needed / 2025-11-10 11:11 - User: Luis Vea - Date Added: 2025-11-10 11:11 - Note: needs mud and tape, need more tapers from PCI / 2025-11-11 16:11 - User: Jason Johnst
- QTS-46541: allucent_notes_20251230_164549: Scott Masterson on 2025-11-04 14:11: Walls are not painted so panels can not be installed. / Jason Johnston on 2025-11-11 16:11: walls incomplete. / Scott Masterson on 2025-12-16 16:43: need to finsh bolting in two panels. / allucent_notes_20251104_160200: Scott Masterson on 2025-11-04 14:11: Walls are not painted so panels can not be installed. / allucent_notes_20251111_182405: Scott Masterson on 2025-11-04 14:11: Walls are not painted so panels can not be installed. / Jason Johnston on 2025-11-11 16:11: walls incomplete. / allucent_notes_20251118_192630: Scott Masterson on 2025-11-04 14:11: Walls are not painted so panels can not be installed. / Jason Johnston on 2025-11-11 16:11: walls incomplete. / allucent_notes_20251202_153722: Scott Masterson on 2025-11-04 14:11: Walls are not painted so panels can not be installed. / Jason Johnston on 2025-11-11 16:11: walls incomplete. / allucent_notes_20251209_203830: Scott Masterson on 2025-11-04 14:11: Walls are not painted so panels can not be installed. / Jason Johnston on 2025-11-11 16:11: walls incomplete. / allucent_notes_20251216_165335: Scott Masterson on 2025-11-04 14:11: Walls are not painted so panels can not be installed. / Jason Johnston on 2025-11-11 16:11: walls incomplete. / Scott Masterson on 2025-12-16 16:43: need to finsh bolting in two panels. / allucent_notes: 2025-11-04 14:11 - User: Scott Masterson - Date Added: 2025-11-04 14:11 - Note: Walls are not painted so panels can not be installed. / 2025-11-11 16:11 - User: Jason Johnston - Date Added: 2025-11-11 16:11 - Note: walls incomplete. / 2025-12-16 16:43 -
- QTS-16491: allucent_notes_20251230_164549: Jason Johnston on 2025-10-08 08:10: not done / David Wiltberger on 2025-10-14 12:10: no walls / allucent_notes_20251014_152335: David Wiltberger on 2025-10-14 12:10: no walls / allucent_notes_20251104_160200: Jason Johnston on 2025-10-08 08:10: not done / David Wiltberger on 2025-10-14 12:10: no walls / allucent_notes_20251202_153722: Jason Johnston on 2025-10-08 08:10: not done / David Wiltberger on 2025-10-14 12:10: no walls / allucent_notes_20251209_203830: Jason Johnston on 2025-10-08 08:10: not done / David Wiltberger on 2025-10-14 12:10: no walls / allucent_notes_20251216_165335: Jason Johnston on 2025-10-08 08:10: not done / David Wiltberger on 2025-10-14 12:10: no walls / allucent_notes: 2025-10-08 08:10 - User: Jason Johnston - Date Added: 2025-10-08 08:10 - Note: not done / 2025-10-14 12:10 - User: David Wiltberger - Date Added: 2025-10-14 12:10 - Note: no walls
- QTS-16241: allucent_notes_20251230_164549: Jason Johnston on 2025-12-30 16:42: No update / allucent_notes: 2025-12-30 16:42 - User: Jason Johnston - Date Added: 2025-12-30 16:42 - Note: No update
