# QTS - PHX3 DC1 (54MW) Construction Schedule - Current TFO Baseline

Schedule from Primavera P6, 2024-11-13 to 2026-08-26, data date 2026-01-14, A marks actual dates.

| ID | WBS | Activity | Duration | Start | Finish | Predecessors | Complete | Remaining | Planned start | Planned finish | Total float | Free float | Constraint | Calendar | Subcontractor | Level | Location | Project Section-1 | Phase-1-1 | Baseline | Layton Responsible Party | Project Section | Allucent CSI Group |
| --- | --- | --- | --- | --- | --- | --- | --- | --- | --- | --- | --- | --- | --- | --- | --- | --- | --- | --- | --- | --- | --- | --- | --- |
|  | 1 | **Gallery 1102 Electrical** |  | 2025-10-01 | 2026-02-13 |  |  |  |  |  |  |  |  |  |  |  |  |  |  |  |  |  |  |
| QTS-14651 |  | DH 1100 / Electrical Gallery 1102 // Install VESDA | 8d | 2025-10-01 A | 2025-10-10 A | QTS-13671 | 100% |  |  |  |  |  |  |  | Rosendin Electric, Inc | Level 1 | DH1100 | Construction | Phase 1 | IGMP | Scott Masterson | Construction | 01ADMIN |
| QTS-46551 |  | DH 1100 / Electrical Gallery 1102 // Install OH Electrical, FA/ EPMS/BMS Conduit & Grounding | 10d | 2025-10-22 A | 2025-11-12 A | QTS-14651 | 100% |  | 2025-10-31 | 2025-11-13 |  |  |  |  | Rosendin Electric, Inc | Level 1 | DH1100 | Construction | Phase 1 | IGMP | Scott Masterson | Construction | 01ADMIN |
| QTS-17671 |  | DH 1100 / Electrical Gallery 1102 // Install Conduit from UPS Pod to Chillers R-C | 6d | 2026-01-10 A | 2026-01-14 | QTS-25541, QTS-1631, QTS-14651, QTS-120000 | 100% | 0d | 2026-01-10 | 2026-01-16 | 15d | 0d |  | QTS-PHX3 DC1 - 6 day w/ Holidays | Rosendin Electric, Inc | Level 1 | DH1100 | Construction | Phase 1 | IGMP | Scott Masterson | Construction | 01ADMIN |
| QTS-14111 |  | DH 1100 / Electrical Gallery 1102 // Install Electrical Tray | 5d | 2026-01-14 | 2026-01-20 | QTS-46551, QTS-2761 |  |  |  |  | 28d | 0d | start on or after 2026-01-09 | QTS-PHX3 DC1 - 6 day w/ Holidays | Rosendin Electric, Inc | Level 1 | DH1100 | Construction | Phase 1 | IGMP | Scott Masterson | Construction | 01ADMIN |
| QTS-18621 |  | DH 1100 / Electrical Gallery 1102 // Pull & Terminate from UPS Pod to Chillers R-C | 3d | 2026-01-14 | 2026-01-16 | QTS-17671, QTS-13541 |  |  |  |  | 18d | 1d |  | QTS-PHX3 DC1 - 6 day w/ Holidays | Rosendin Electric, Inc | Level 1 | DH1100 | Construction | Phase 1 | IGMP | Scott Masterson | Construction | 01ADMIN |
| QTS-18631 |  | DH 1100 / Electrical Gallery 1102 // Install Conduit from UPS Pod to Chillers Lineup D-F | 6d | 2026-01-14 | 2026-01-21 | QTS-43591, QTS-3411, QTS-17671 |  |  |  |  | 16d | 0d |  | QTS-PHX3 DC1 - 6 day w/ Holidays | Rosendin Electric, Inc | Level 1 | DH1100 | Construction | Phase 1 | IGMP | Scott Masterson | Construction | 01ADMIN |
| QTS-43701 |  | DH 1100 / Electrical Gallery 1102 // Install Conduit from UPS Pod to Pumps R-C | 6d | 2026-01-14 | 2026-01-21 | QTS-17671 SS+2d, QTS-120000 |  |  |  |  | 15d | 0d |  | QTS-PHX3 DC1 - 6 day w/ Holidays | Rosendin Electric, Inc | Level 1 | DH1100 | Construction | Phase 1 | IGMP | Scott Masterson | Construction | 01ADMIN |
| QTS-15251 |  | DH 1100 / Electrical Gallery 1102 // Install Basket Tray for LV | 5d | 2026-01-21 | 2026-01-26 | QTS-14111 |  |  |  |  | 28d | 0d |  | QTS-PHX3 DC1 - 6 day w/ Holidays | Rosendin Electric, Inc | Level 1 | DH1100 | Construction | Phase 1 | IGMP | Scott Masterson | Construction | 01ADMIN |
| QTS-16811 |  | DH 1100 / Electrical Gallery 1102 // Set House Panels | 2d | 2026-01-21 | 2026-01-22 | QTS-14931, QTS-15741, QTS-12971 |  |  |  |  | 22d | 0d |  | QTS-PHX3 DC1 - 6 day w/ Holidays | Rosendin Electric, Inc | Level 1 | DH1100 | Construction | Phase 1 | IGMP | Scott Masterson | Construction | 01ADMIN |
| QTS-18951 |  | DH 1100 / Electrical Gallery 1102 // Pull & Terminate from UPS Pod to Pumps R-C | 3d | 2026-01-22 | 2026-01-24 | QTS-18621, QTS-13541, QTS-43701 |  |  |  |  | 18d | 0d |  | QTS-PHX3 DC1 - 6 day w/ Holidays | Rosendin Electric, Inc | Level 1 | DH1100 | Construction | Phase 1 | IGMP | Scott Masterson | Construction | 01ADMIN |
| QTS-43711 |  | DH 1100 / Electrical Gallery 1102 // Install Conduit from UPS Pod to Pumps Lineup D-F | 6d | 2026-01-22 | 2026-01-28 | QTS-18631 SS+2d, QTS-43701 |  |  |  |  | 15d | 0d |  | QTS-PHX3 DC1 - 6 day w/ Holidays | Rosendin Electric, Inc | Level 1 | DH1100 | Construction | Phase 1 | IGMP | Scott Masterson | Construction | 01ADMIN |
| QTS-43721 |  | DH 1100 / Electrical Gallery 1102 // Pull & Terminate from UPS Pod to Chillers Lineup D-F | 3d | 2026-01-22 | 2026-01-24 | QTS-18631 |  |  |  |  | 16d | 0d |  | QTS-PHX3 DC1 - 6 day w/ Holidays | Rosendin Electric, Inc | Level 1 | DH1100 | Construction | Phase 1 | IGMP | Scott Masterson | Construction | 01ADMIN |
| QTS-18261 |  | DH 1100 / Electrical Gallery 1102 // Pull LV Cables Branch Circuits | 5d | 2026-01-23 | 2026-01-28 | QTS-16811 |  |  |  |  | 22d | 0d |  | QTS-PHX3 DC1 - 6 day w/ Holidays | Rosendin Electric, Inc | Level 1 | DH1100 | Construction | Phase 1 | IGMP | Scott Masterson | Construction | 01ADMIN |
| QTS-16051 |  | DH 1100 / Electrical Gallery 1102 // Install BMS & EPMS Cable and Terminations | 10d | 2026-01-27 | 2026-02-06 | QTS-15251 |  |  |  |  | 28d | 9d |  | QTS-PHX3 DC1 - 6 day w/ Holidays | Rosendin Electric, Inc | Level 1 | DH1100 | Construction | Phase 1 | IGMP | Scott Masterson | Construction |  |
| QTS-18511 |  | DH 1100 / Electrical Gallery 1102 // Terminate Panels | 6d | 2026-01-29 | 2026-02-04 | QTS-18261 |  |  |  |  | 22d | 11d |  | QTS-PHX3 DC1 - 6 day w/ Holidays | Rosendin Electric, Inc | Level 1 | DH1100 | Construction | Phase 1 | IGMP | Scott Masterson | Construction |  |
| QTS-43731 |  | DH 1100 / Electrical Gallery 1102 // Pull & Terminate from UPS Pod to Pumps Lineup D-F | 3d | 2026-01-29 | 2026-01-31 | QTS-43711 |  |  |  |  | 15d | 0d |  | QTS-PHX3 DC1 - 6 day w/ Holidays | Rosendin Electric, Inc | Level 1 | DH1100 | Construction | Phase 1 | IGMP | Scott Masterson | Construction | 01ADMIN |
|  | 1 | **Electrical** |  | 2025-12-12 | 2026-02-13 |  |  |  |  |  |  |  |  |  |  |  |  |  |  |  |  |  |  |
|  | 8 | **DH 1100 IDF Cabinets** |  | 2026-01-14 | 2026-01-17 |  |  |  |  |  |  |  |  |  |  |  |  |  |  |  |  |  |  |
| QTS-43431 |  | DH 1100 / Electrical Gallery 1102/1101 // Install Fire Rated Plywood | 1d | 2026-01-14 | 2026-01-14 | QTS-13341 |  |  |  |  | 54d | 0d |  | QTS-PHX3 DC1 - 6 day w/ Holidays |  |  | DH2300 | Construction | Phase 3 | GMP | Sean Waisner | Construction | 01ADMIN |
| QTS-43441 |  | DH 1100 / Electrical Gallery 1102/1101 // Set IDF Cabinet | 1d | 2026-01-15 | 2026-01-15 | QTS-43431 |  |  |  |  | 54d | 0d |  | QTS-PHX3 DC1 - 6 day w/ Holidays | Rosendin Electric, Inc |  | DH2300 | Construction | Phase 3 | GMP | Scott Masterson | Construction | 01ADMIN |
| QTS-43451 |  | DH 1100 / Electrical Gallery 1102/1101 // Set IDF Conduit | 2d | 2026-01-16 | 2026-01-17 | QTS-43441 |  |  |  |  | 54d | 0d |  | QTS-PHX3 DC1 - 6 day w/ Holidays | Rosendin Electric, Inc |  | DH2300 | Construction | Phase 3 | GMP | Scott Masterson | Construction | 01ADMIN |
|  | 1 | **A1100 Lineup** |  | 2025-12-15 | 2026-02-03 |  |  |  |  |  |  |  |  |  |  |  |  |  |  |  |  |  |  |
| QTS-14091 |  | Gallery 1102 / Lineup A1100 // Install Hangers & Supports | 3d | 2025-12-15 A | 2025-12-17 A | QTS-13341 | 100% |  |  |  |  |  |  |  | Rosendin Electric, Inc | Level 1 | DH1100 | Construction | Phase 1 | IGMP | Scott Masterson | Construction | 01ADMIN |
| QTS-14931 |  | Gallery 1102 / Lineup A1100 // Install Raceways from LV POD to COD | 7d | 2026-01-14 A | 2026-01-14 | QTS-14091 | 100% | 0d | 2026-01-14 | 2026-01-22 | 27d | 0d | start on or after 2026-01-06 | QTS-PHX3 DC1 - 6 day w/ Holidays | Rosendin Electric, Inc | Level 1 | DH1100 | Construction | Phase 1 | IGMP | Scott Masterson | Construction | 01ADMIN |
| QTS-15741 |  | Gallery 1102 / Lineup A1100 // OFCI - L2 SET IN PLACE - Eq Type # - COD/ATS-210-A - Skid 1-3 | 1d | 2026-01-20 | 2026-01-20 | QTS-32991 |  |  |  |  | 22d | 0d | start on or after 2026-01-20 | QTS-PHX3 DC1 - 6 day w/ Holidays | Rosendin Electric, Inc | Level 1 | DH1100 | Construction | Phase 1 | IGMP | Scott Masterson | Construction | 01ADMIN |
| QTS-16221 |  | Gallery 1102 / Lineup A1100 // Set Reserve Busway Segment | 2d | 2026-01-21 | 2026-01-22 | QTS-14931, QTS-15741, QTS-50021 |  |  |  |  | 42d | 2d |  | QTS-PHX3 DC1 - 6 day w/ Holidays | Rosendin Electric, Inc | Level 1 | DH1100 | Construction | Phase 1 | IGMP | Scott Masterson | Construction | 01ADMIN |
| QTS-16821 |  | Gallery 1102 / Lineup A1100 // Pull LV Cables from POD to ATS | 4d | 2026-01-21 | 2026-01-24 | QTS-15741, QTS-14931, QTS-13541, QTS-45781 FF+1d |  |  |  |  | 40d | 0d |  | QTS-PHX3 DC1 - 6 day w/ Holidays | Rosendin Electric, Inc | Level 1 | DH1100 | Construction | Phase 1 | IGMP | Scott Masterson | Construction | 01ADMIN |
| QTS-45781 |  | Gallery 1102 / Lineup A1100 // OFCI - L2 SET IN PLACE - Eq Type # - COD/ATS-210-A - Skid 4-6 | 1d | 2026-01-21 | 2026-01-21 | QTS-15741 |  |  |  |  | 32d | 0d |  | QTS-PHX3 DC1 - 6 day w/ Holidays | Rosendin Electric, Inc | Level 1 | DH1100 | Construction | Phase 1 | IGMP | Scott Masterson | Construction | 01ADMIN |
| QTS-17691 |  | Gallery 1102 / Lineup A1100 // Pull LV Cables from Reserve Bus to ATS | 2d | 2026-01-26 | 2026-01-27 | QTS-14931, QTS-16821, QTS-16221 |  |  |  |  | 40d | 0d |  | QTS-PHX3 DC1 - 6 day w/ Holidays | Rosendin Electric, Inc | Level 1 | DH1100 | Construction | Phase 1 | IGMP | Scott Masterson | Construction | 01ADMIN |
| QTS-18091 |  | Gallery 1102 / Lineup A1100 // Terminate & Torque ATS | 6d | 2026-01-28 | 2026-02-03 | QTS-17691, QTS-16821 |  |  |  |  | 40d | 0d |  | QTS-PHX3 DC1 - 6 day w/ Holidays | Rosendin Electric, Inc | Level 1 | DH1100 | Construction | Phase 1 | IGMP | Scott Masterson | Construction |  |
| QTS-18101 |  | Gallery 1102 / Lineup A1100 // Terminate & Torque COD | 2d | 2026-02-02 | 2026-02-03 | QTS-16821, QTS-18091 FF |  |  |  |  | 41d | 7d |  | QTS-PHX3 DC1 - 6 day w/ Holidays | Rosendin Electric, Inc | Level 1 | DH1100 | Construction | Phase 1 | IGMP | Scott Masterson | Construction |  |

Notes:
- QTS-46551: allucent_notes_20251014_152335: David Wiltberger on 2025-10-14 12:10: no walls / allucent_notes_20251021_145627: David Wiltberger on 2025-10-14 12:10: no walls / allucent_notes_20251027_224008: David Wiltberger on 2025-10-14 12:10: no walls / allucent_notes_20251028_163138: David Wiltberger on 2025-10-14 12:10: no walls / allucent_notes_20251104_160200: David Wiltberger on 2025-10-14 12:10: no walls / Scott Masterson on 2025-11-04 14:11: Walls, delayed the cable buss installation so the cable buss will be completed this week so this task can be completed afterwards. / allucent_notes_20251111_182405: David Wiltberger on 2025-10-14 12:10: no walls / Scott Masterson on 2025-11-04 14:11: Walls, delayed the cable buss installation so the cable buss will be completed this week so this task can be completed afterwards. / Jason Johnston on 2025-11-11 16:11: SWO / allucent_notes_20251118_192630: David Wiltberger on 2025-10-14 12:10: no walls / Scott Masterson on 2025-11-04 14:11: Walls, delayed the cable buss installation so the cable buss will be completed this week so this task can be completed afterwards. / Jason Johnston on 2025-11-11 16:11: SWO / Jason Johnston on 2025-11-19T02:24:16.915Z: undo / allucent_notes: 2025-10-14 12:10 - User: David Wiltberger - Date Added: 2025-10-14 12:10 - Note: no walls / 2025-11-04 14:11 - User: Scott Masterson - Date Added: 2025-11-04 14:11 - Note: Walls, delayed the cable buss installation so the cable buss will be completed thi
- QTS-17671: allucent_notes: 10/20/25 / Scott removed tie to corridor wall paint. / allucent_notes_20251111_182405: Jason Johnston on 2025-11-11 16:11: swo / allucent_notes_20251118_192630: Jason Johnston on 2025-11-11 16:11: swo / Jason Johnston on 2025-11-19T02:24:13.345Z: undo / allucent_notes_20251202_153722: Jason Johnston on 2025-11-11 16:11: swo / Jason Johnston on 2025-11-19T02:24:13.345Z: undo / David Wiltberger on 2025-12-02 13:58: impacted by Stop work / allucent_notes_20251209_203830: Jason Johnston on 2025-11-11 16:11: swo / Jason Johnston on 2025-11-19T02:24:13.345Z: undo / David Wiltberger on 2025-12-02 13:58: impacted by Stop work / allucent_notes: 2025-11-11 16:11 - User: Jason Johnston - Date Added: 2025-11-11 16:11 - Note: swo / 2025-11-19T02:24:13.345Z - User: Jason Johnston - Date Added: 2025-11-19T02:24:13.345Z - Note: undo / 2025-12-02 13:58 - User: David Wiltberger - Date Added: 2025-12-02
- QTS-14111: allucent_notes_20251230_164549: David Wiltberger on 2025-12-30 15:46: TFO impacting install / allucent_notes: 2025-12-30 15:46 - User: David Wiltberger - Date Added: 2025-12-30 15:46 - Note: TFO impacting install
- QTS-18621: allucent_notes_20251118_192630: Jason Johnston on 2025-11-19T02:24:24.571Z: undo / allucent_notes_20251202_153722: Jason Johnston on 2025-11-19T02:24:24.571Z: undo / allucent_notes: 2025-11-19T02:24:24.571Z - User: Jason Johnston - Date Added: 2025-11-19T02:24:24.571Z - Note: undo
- QTS-43701: allucent_notes_20251118_192630: Jason Johnston on 2025-11-19T02:24:20.394Z: undo / allucent_notes_20251202_153722: Jason Johnston on 2025-11-19T02:24:20.394Z: undo / allucent_notes_20251209_203830: Jason Johnston on 2025-11-19T02:24:20.394Z: undo / allucent_notes: 2025-11-19T02:24:20.394Z - User: Jason Johnston - Date Added: 2025-11-19T02:24:20.394Z - Note: undo
- QTS-18951: allucent_notes_20251118_192630: Jason Johnston on 2025-11-19T02:24:29.365Z: undo / allucent_notes: 2025-11-19T02:24:29.365Z - User: Jason Johnston - Date Added: 2025-11-19T02:24:29.365Z - Note: undo
- QTS-14931: allucent_notes_20251230_164549: David Wiltberger on 2025-12-30 15:47: corridor impacted by fire stop work / allucent_notes: 2025-12-30 15:47 - User: David Wiltberger - Date Added: 2025-12-30 15:47 - Note: corridor impacted by fire stop work
- QTS-15741: allucent_notes_20251230_164549: Scott Masterson on 2025-11-04 14:11: Waiting to install skid due to overhead activities in the same area. These sets are not tied to anything at this time so we should be ok. / Jason Johnston on 2025-11-11 16:11: pushing / Jason Johnston on 2025-11-19T02:24:34.704Z: undo / David Wiltberger on 2025-12-02 13:59: update the ROJ dates / allucent_notes_20251104_160200: Scott Masterson on 2025-11-04 14:11: Waiting to install skid due to overhead activities in the same area. These sets are not tied to anything at this time so we should be ok. / allucent_notes_20251111_182405: Scott Masterson on 2025-11-04 14:11: Waiting to install skid due to overhead activities in the same area. These sets are not tied to anything at this time so we should be ok. / Jason Johnston on 2025-11-11 16:11: pushing / allucent_notes_20251118_192630: Scott Masterson on 2025-11-04 14:11: Waiting to install skid due to overhead activities in the same area. These sets are not tied to anything at this time so we should be ok. / Jason Johnston on 2025-11-11 16:11: pushing / Jason Johnston on 2025-11-19T02:24:34.704Z: undo / allucent_notes_20251202_153722: Scott Masterson on 2025-11-04 14:11: Waiting to install skid due to overhead activities in the same area. These sets are not tied to anything at this time so we should be ok. / Jason Johnston on 2025-11-11 16:11: pushing / Jason Johnston on 2025-11-19T02:24:34.704Z: undo / David Wiltberger on 2025-12-02 13:59: update the ROJ dates / allucent_notes_20251209_203830: Scott Masterson on 2025-11-04 14:11: Waiting to install skid due to overhead activities in the same area. These sets are not tied to anything at this time so we should be ok. / Jason Johnston on 2025-11-11 16:11: pushing / Jason Johnston on 2025-11-19T02:24:34.704Z: undo / David Wiltberger on 2025-12-02 13:59: update the ROJ dates / allucent_notes_20251216_165335: Scott Masterson on 2025-11-04 14:11: Waiting to install skid due to overhead activities in the same area. These sets are not tied to anything at this time so we should be ok. / Jason Johnston on 2025-11-11 16:11: pushing / Jason Johnston on 2025-11-19T02:24:34.704Z: undo / David Wiltberger on 2025-12-02 13:59: update the ROJ dates / allucent_notes: 2025-11-04 14:11 - User: Scott Masterson - Date Added: 2025-11-04 14:11 - Note: Waiting to install skid due to overhead activities in the same area. These sets are not tied to anything at this time so we should be ok. / 2025-11-11 16:11 - User: Jason Jo
- QTS-45781: allucent_notes_20251230_164549: Jason Johnston on 2025-11-19T02:24:39.144Z: undo / allucent_notes_20251118_192630: Jason Johnston on 2025-11-19T02:24:39.144Z: undo / allucent_notes_20251202_153722: Jason Johnston on 2025-11-19T02:24:39.144Z: undo / allucent_notes_20251209_203830: Jason Johnston on 2025-11-19T02:24:39.144Z: undo / allucent_notes_20251216_165335: Jason Johnston on 2025-11-19T02:24:39.144Z: undo / allucent_notes: 2025-11-19T02:24:39.144Z - User: Jason Johnston - Date Added: 2025-11-19T02:24:39.144Z - Note: undo

| ID | WBS | Activity | Duration | Start | Finish | Predecessors | Complete | Remaining | Planned start | Planned finish | Total float | Free float | Calendar | Subcontractor | Level | Location | Project Section-1 | Phase-1-1 | Baseline | Layton Responsible Party | Project Section | Allucent CSI Group |
| --- | --- | --- | --- | --- | --- | --- | --- | --- | --- | --- | --- | --- | --- | --- | --- | --- | --- | --- | --- | --- | --- | --- |
|  | 2 | **B1100 Lineup** |  | 2025-12-15 | 2026-02-05 |  |  |  |  |  |  |  |  |  |  |  |  |  |  |  |  |  |
| QTS-1711 |  | Gallery 1102 / Lineup B1100 // Install Hangers & Supports | 3d | 2025-12-15 A | 2025-12-17 A | QTS-14091 SS | 100% |  |  |  |  |  |  | Rosendin Electric, Inc | Level 1 | DH1100 | Construction | Phase 1 | IGMP | Scott Masterson | Construction | 01ADMIN |
| QTS-2771 |  | Gallery 1102 / Lineup B1100 // Install Raceways from LV POD to COD | 7d | 2026-01-14 A | 2026-01-14 | QTS-1711, QTS-14931 SS | 100% | 0d | 2026-01-14 | 2026-01-22 | 31d | 0d | QTS-PHX3 DC1 - 6 day w/ Holidays | Rosendin Electric, Inc | Level 1 | DH1100 | Construction | Phase 1 | IGMP | Scott Masterson | Construction | 01ADMIN |
| QTS-3921 |  | Gallery 1102 / Lineup B1100 // OFCI - L2 SET IN PLACE - Eq Type # - COD/ATS-210-A - Skid 1-3 | 1d | 2026-01-22 | 2026-01-22 | QTS-33031, QTS-45781 |  |  |  |  | 32d | 0d | QTS-PHX3 DC1 - 6 day w/ Holidays | Rosendin Electric, Inc | Level 1 | DH1100 | Construction | Phase 1 | IGMP | Scott Masterson | Construction | 01ADMIN |
| QTS-45791 |  | Gallery 1102 / Lineup B1100 // OFCI - L2 SET IN PLACE - Eq Type # - COD/ATS-210-A - Skid 4-6 | 1d | 2026-01-23 | 2026-01-23 | QTS-3921 |  |  |  |  | 32d | 1d | QTS-PHX3 DC1 - 6 day w/ Holidays | Rosendin Electric, Inc | Level 1 | DH1100 | Construction | Phase 1 | IGMP | Scott Masterson | Construction | 01ADMIN |
| QTS-4951 |  | Gallery 1102 / Lineup B1100 // Set Reserve Busway Segment | 2d | 2026-01-23 | 2026-01-24 | QTS-3921, QTS-2771, QTS-50021 |  |  |  |  | 40d | 2d | QTS-PHX3 DC1 - 6 day w/ Holidays | Rosendin Electric, Inc | Level 1 | DH1100 | Construction | Phase 1 | IGMP | Scott Masterson | Construction | 01ADMIN |
| QTS-6401 |  | Gallery 1102 / Lineup B1100 // Pull LV Cables from POD to ATS | 4d | 2026-01-23 | 2026-01-27 | QTS-3921, QTS-2771, QTS-13541, QTS-45791 FF+1d |  |  |  |  | 38d | 0d | QTS-PHX3 DC1 - 6 day w/ Holidays | Rosendin Electric, Inc | Level 1 | DH1100 | Construction | Phase 1 | IGMP | Scott Masterson | Construction | 01ADMIN |
| QTS-8031 |  | Gallery 1102 / Lineup B1100 // Pull LV Cables from Reserve Bus to ATS | 2d | 2026-01-28 | 2026-01-29 | QTS-2771, QTS-6401, QTS-4951 |  |  |  |  | 38d | 0d | QTS-PHX3 DC1 - 6 day w/ Holidays | Rosendin Electric, Inc | Level 1 | DH1100 | Construction | Phase 1 | IGMP | Scott Masterson | Construction | 01ADMIN |
| QTS-8911 |  | Gallery 1102 / Lineup B1100 // Terminate & Torque ATS | 6d | 2026-01-30 | 2026-02-05 | QTS-8031, QTS-6401 |  |  |  |  | 38d | 0d | QTS-PHX3 DC1 - 6 day w/ Holidays | Rosendin Electric, Inc | Level 1 | DH1100 | Construction | Phase 1 | IGMP | Scott Masterson | Construction |  |
| QTS-8921 |  | Gallery 1102 / Lineup B1100 // Terminate & Torque COD | 2d | 2026-02-04 | 2026-02-05 | QTS-6401, QTS-8911 FF |  |  |  |  | 39d | 5d | QTS-PHX3 DC1 - 6 day w/ Holidays | Rosendin Electric, Inc | Level 1 | DH1100 | Construction | Phase 1 | IGMP | Scott Masterson | Construction |  |
|  | 3 | **C1100 Lineup** |  | 2025-12-18 | 2026-02-09 |  |  |  |  |  |  |  |  |  |  |  |  |  |  |  |  |  |
| QTS-1721 |  | Gallery 1102 / Lineup C1100 // Install Hangers & Supports | 3d | 2025-12-18 A | 2025-12-22 A | QTS-1711 | 100% |  |  |  |  |  |  | Rosendin Electric, Inc | Level 1 | DH1100 | Construction | Phase 1 | IGMP | Scott Masterson | Construction | 01ADMIN |
| QTS-2781 |  | Gallery 1102 / Lineup C1100 // Install Raceways from LV POD to COD | 7d | 2026-01-14 | 2026-01-22 | QTS-1721, QTS-2771 |  |  |  |  | 31d | 0d | QTS-PHX3 DC1 - 6 day w/ Holidays | Rosendin Electric, Inc | Level 1 | DH1100 | Construction | Phase 1 | IGMP | Scott Masterson | Construction | 01ADMIN |
| QTS-3931 |  | Gallery 1102 / Lineup C1100 // OFCI - L2 SET IN PLACE - Eq Type # - COD/ATS-210-A - Skid 1-3 | 1d | 2026-01-26 | 2026-01-26 | QTS-33071, QTS-45791 |  |  |  |  | 26d | 0d |  | Rosendin Electric, Inc | Level 1 | DH1100 | Construction | Phase 1 | IGMP | Scott Masterson | Construction | 01ADMIN |
| QTS-45801 |  | Gallery 1102 / Lineup C1100 // OFCI - L2 SET IN PLACE - Eq Type # - COD/ATS-210-A - Skid 4-6 | 1d | 2026-01-27 | 2026-01-27 | QTS-3931 |  |  |  |  | 31d | 0d | QTS-PHX3 DC1 - 6 day w/ Holidays | Rosendin Electric, Inc | Level 1 | DH1100 | Construction | Phase 1 | IGMP | Scott Masterson | Construction | 01ADMIN |
| QTS-4971 |  | Gallery 1102 / Lineup C1100 // Set Reserve Busway Segment | 2d | 2026-01-27 | 2026-01-28 | QTS-3931, QTS-2781, QTS-50021 |  |  |  |  | 37d | 2d | QTS-PHX3 DC1 - 6 day w/ Holidays | Rosendin Electric, Inc | Level 1 | DH1100 | Construction | Phase 1 | IGMP | Scott Masterson | Construction |  |
| QTS-6411 |  | Gallery 1102 / Lineup C1100 // Pull LV Cables from POD to ATS | 4d | 2026-01-27 | 2026-01-30 | QTS-3931, QTS-2781, QTS-13541, QTS-45801 FF+1d |  |  |  |  | 35d | 0d | QTS-PHX3 DC1 - 6 day w/ Holidays | Rosendin Electric, Inc | Level 1 | DH1100 | Construction | Phase 1 | IGMP | Scott Masterson | Construction |  |
| QTS-8051 |  | Gallery 1102 / Lineup C1100 // Pull LV Cables from Reserve Bus to ATS | 2d | 2026-01-31 | 2026-02-02 | QTS-2781, QTS-6411, QTS-4971 |  |  |  |  | 35d | 0d | QTS-PHX3 DC1 - 6 day w/ Holidays | Rosendin Electric, Inc | Level 1 | DH1100 | Construction | Phase 1 | IGMP | Scott Masterson | Construction |  |
| QTS-8941 |  | Gallery 1102 / Lineup C1100 // Terminate & Torque ATS | 6d | 2026-02-03 | 2026-02-09 | QTS-8051, QTS-6411 |  |  |  |  | 35d | 0d | QTS-PHX3 DC1 - 6 day w/ Holidays | Rosendin Electric, Inc | Level 1 | DH1100 | Construction | Phase 1 | IGMP | Scott Masterson | Construction |  |
| QTS-8951 |  | Gallery 1102 / Lineup C1100 // Terminate & Torque COD | 2d | 2026-02-07 | 2026-02-09 | QTS-6411, QTS-8941 FF |  |  |  |  | 36d | 0d | QTS-PHX3 DC1 - 6 day w/ Holidays | Rosendin Electric, Inc | Level 1 | DH1100 | Construction | Phase 1 | IGMP | Scott Masterson | Construction |  |
|  | 4 | **D1100 Lineup** |  | 2025-12-23 | 2026-02-11 |  |  |  |  |  |  |  |  |  |  |  |  |  |  |  |  |  |
| QTS-1731 |  | Gallery 1102 / Lineup D1100 // Install Hangers & Supports | 3d | 2025-12-23 A | 2025-12-30 A | QTS-1721 | 100% |  |  |  |  |  |  | Rosendin Electric, Inc | Level 1 | DH1100 | Construction | Phase 1 | IGMP | Scott Masterson | Construction | 01ADMIN |
| QTS-2791 |  | Gallery 1102 / Lineup D1100 // Install Raceways from LV POD to COD | 7d | 2026-01-14 | 2026-01-22 | QTS-1731, QTS-2781 SS |  |  |  |  | 31d | 0d | QTS-PHX3 DC1 - 6 day w/ Holidays | Rosendin Electric, Inc | Level 1 | DH1100 | Construction | Phase 1 | IGMP | Scott Masterson | Construction | 01ADMIN |
| QTS-3941 |  | Gallery 1102 / Lineup D1100 // OFCI - L2 SET IN PLACE - Eq Type # - COD/ATS-210-A - Skid 1-3 | 1d | 2026-01-28 | 2026-01-28 | QTS-33111, QTS-45801 |  |  |  |  | 31d | 0d | QTS-PHX3 DC1 - 6 day w/ Holidays | Rosendin Electric, Inc | Level 1 | DH1100 | Construction | Phase 1 | IGMP | Scott Masterson | Construction | 01ADMIN |
| QTS-45811 |  | Gallery 1102 / Lineup D1100 // OFCI - L2 SET IN PLACE - Eq Type # - COD/ATS-210-A - Skid 4-6 | 1d | 2026-01-29 | 2026-01-29 | QTS-3941 |  |  |  |  | 31d | 0d | QTS-PHX3 DC1 - 6 day w/ Holidays | Rosendin Electric, Inc | Level 1 | DH1100 | Construction | Phase 1 | IGMP | Scott Masterson | Construction | 01ADMIN |
| QTS-4991 |  | Gallery 1102 / Lineup D1100 // Set Reserve Busway Segment | 2d | 2026-01-29 | 2026-01-30 | QTS-3941, QTS-2791, QTS-50021 |  |  |  |  | 35d | 2d | QTS-PHX3 DC1 - 6 day w/ Holidays | Rosendin Electric, Inc | Level 1 | DH1100 | Construction | Phase 1 | IGMP | Scott Masterson | Construction |  |
| QTS-6421 |  | Gallery 1102 / Lineup D1100 // Pull LV Cables from POD to ATS | 4d | 2026-01-29 | 2026-02-02 | QTS-3941, QTS-2791, QTS-13541, QTS-45811 FF+1d |  |  |  |  | 33d | 0d | QTS-PHX3 DC1 - 6 day w/ Holidays | Rosendin Electric, Inc | Level 1 | DH1100 | Construction | Phase 1 | IGMP | Scott Masterson | Construction |  |
| QTS-8071 |  | Gallery 1102 / Lineup D1100 // Pull LV Cables from Reserve Bus to ATS | 2d | 2026-02-03 | 2026-02-04 | QTS-2791, QTS-6421, QTS-4991 |  |  |  |  | 33d | 0d | QTS-PHX3 DC1 - 6 day w/ Holidays | Rosendin Electric, Inc | Level 1 | DH1100 | Construction | Phase 1 | IGMP | Scott Masterson | Construction |  |
| QTS-8971 |  | Gallery 1102 / Lineup D1100 // Terminate & Torque ATS | 6d | 2026-02-05 | 2026-02-11 | QTS-8071, QTS-6421 |  |  |  |  | 33d | 0d | QTS-PHX3 DC1 - 6 day w/ Holidays | Rosendin Electric, Inc | Level 1 | DH1100 | Construction | Phase 1 | IGMP | Scott Masterson | Construction |  |
| QTS-8981 |  | Gallery 1102 / Lineup D1100 // Terminate & Torque COD | 2d | 2026-02-10 | 2026-02-11 | QTS-6421, QTS-8971 FF |  |  |  |  | 34d | 0d | QTS-PHX3 DC1 - 6 day w/ Holidays | Rosendin Electric, Inc | Level 1 | DH1100 | Construction | Phase 1 | IGMP | Scott Masterson | Construction |  |

| ID | WBS | Activity | Duration | Start | Finish | Predecessors | Complete | Remaining | Planned start | Planned finish | Total float | Free float | Constraint | Calendar | Subcontractor | Level | Location | Project Section-1 | Phase-1-1 | Baseline | Layton Responsible Party | Project Section | Allucent CSI Group |
| --- | --- | --- | --- | --- | --- | --- | --- | --- | --- | --- | --- | --- | --- | --- | --- | --- | --- | --- | --- | --- | --- | --- | --- |
|  | 5 | **E1100 Lineup** |  | 2026-01-14 | 2026-02-13 |  |  |  |  |  |  |  |  |  |  |  |  |  |  |  |  |  |  |
| QTS-1741 |  | Gallery 1102 / Lineup E1100 // Install Hangers & Supports | 3d | 2026-01-14 A | 2026-01-14 | QTS-1731 | 100% | 0d | 2026-01-14 | 2026-01-16 | 38d | 0d |  | QTS-PHX3 DC1 - 6 day w/ Holidays | Rosendin Electric, Inc | Level 1 | DH1100 | Construction | Phase 1 | IGMP | Scott Masterson | Construction | 01ADMIN |
| QTS-2801 |  | Gallery 1102 / Lineup E1100 // Install Raceways from LV POD to COD | 7d | 2026-01-23 | 2026-01-30 | QTS-1741, QTS-2791 |  |  |  |  | 31d | 0d |  | QTS-PHX3 DC1 - 6 day w/ Holidays | Rosendin Electric, Inc | Level 1 | DH1100 | Construction | Phase 1 | IGMP | Scott Masterson | Construction |  |
| QTS-3951 |  | Gallery 1102 / Lineup E1100 // OFCI - L2 SET IN PLACE - Eq Type # - COD/ATS-210-A - Skid 1-3 | 1d | 2026-01-30 | 2026-01-30 | QTS-33151, QTS-45811 |  |  |  |  | 31d | 0d |  | QTS-PHX3 DC1 - 6 day w/ Holidays | Rosendin Electric, Inc | Level 1 | DH1100 | Construction | Phase 1 | IGMP | Scott Masterson | Construction | 01ADMIN |
| QTS-45821 |  | Gallery 1102 / Lineup E1100 // OFCI - L2 SET IN PLACE - Eq Type # - COD/ATS-210-A - Skid 4-6 | 1d | 2026-01-31 | 2026-01-31 | QTS-3951 |  |  |  |  | 31d | 0d |  | QTS-PHX3 DC1 - 6 day w/ Holidays | Rosendin Electric, Inc | Level 1 | DH1100 | Construction | Phase 1 | IGMP | Scott Masterson | Construction | 01ADMIN |
| QTS-5011 |  | Gallery 1102 / Lineup E1100 // Set Reserve Busway Segment | 2d | 2026-01-31 | 2026-02-02 | QTS-3951, QTS-2801, QTS-50021 |  |  |  |  | 33d | 2d |  | QTS-PHX3 DC1 - 6 day w/ Holidays | Rosendin Electric, Inc | Level 1 | DH1100 | Construction | Phase 1 | IGMP | Scott Masterson | Construction |  |
| QTS-6431 |  | Gallery 1102 / Lineup E1100 // Pull LV Cables from POD to ATS | 4d | 2026-01-31 | 2026-02-04 | QTS-3951, QTS-2801, QTS-13541, QTS-45821 FF+1d |  |  |  |  | 31d | 0d |  | QTS-PHX3 DC1 - 6 day w/ Holidays | Rosendin Electric, Inc | Level 1 | DH1100 | Construction | Phase 1 | IGMP | Scott Masterson | Construction |  |
| QTS-8091 |  | Gallery 1102 / Lineup E1100 // Pull LV Cables from Reserve Bus to ATS | 2d | 2026-02-05 | 2026-02-06 | QTS-2801, QTS-6431, QTS-5011 |  |  |  |  | 31d | 0d |  | QTS-PHX3 DC1 - 6 day w/ Holidays | Rosendin Electric, Inc | Level 1 | DH1100 | Construction | Phase 1 | IGMP | Scott Masterson | Construction |  |
| QTS-9001 |  | Gallery 1102 / Lineup E1100 // Terminate & Torque ATS | 6d | 2026-02-07 | 2026-02-13 | QTS-8091, QTS-6431 |  |  |  |  | 31d | 0d |  | QTS-PHX3 DC1 - 6 day w/ Holidays | Rosendin Electric, Inc | Level 1 | DH1100 | Construction | Phase 1 | IGMP | Scott Masterson | Construction |  |
| QTS-9011 |  | Gallery 1102 / Lineup E1100 // Terminate & Torque COD | 2d | 2026-02-12 | 2026-02-13 | QTS-6431, QTS-9001 SS+4d |  |  |  |  | 32d | 1d |  | QTS-PHX3 DC1 - 6 day w/ Holidays | Rosendin Electric, Inc | Level 1 | DH1100 | Construction | Phase 1 | IGMP | Scott Masterson | Construction |  |
|  | 6 | **F1100 Lineup** |  | 2026-01-17 | 2026-02-13 |  |  |  |  |  |  |  |  |  |  |  |  |  |  |  |  |  |  |
| QTS-1751 |  | Gallery 1102 / Lineup F1100 // Install Hangers & Supports | 3d | 2026-01-17 A | 2026-01-14 | QTS-1741 | 100% | 0d | 2026-01-17 | 2026-01-21 | 38d | 7d |  | QTS-PHX3 DC1 - 6 day w/ Holidays | Rosendin Electric, Inc | Level 1 | DH1100 | Construction | Phase 1 | IGMP | Scott Masterson | Construction | 01ADMIN |
| QTS-2811 |  | Gallery 1102 / Lineup F1100 // Install Raceways from LV POD to COD | 7d | 2026-01-23 | 2026-01-30 | QTS-1751, QTS-2801 SS |  |  |  |  | 31d | 0d |  | QTS-PHX3 DC1 - 6 day w/ Holidays | Rosendin Electric, Inc | Level 1 | DH1100 | Construction | Phase 1 | IGMP | Scott Masterson | Construction |  |
| QTS-6441 |  | Gallery 1102 / Lineup F1100 // Pull LV Cables from POD to ATS | 4d | 2026-01-31 | 2026-02-04 | QTS-2811, QTS-13541, QTS-45831 FF+1d |  |  |  |  | 31d | 0d |  | QTS-PHX3 DC1 - 6 day w/ Holidays | Rosendin Electric, Inc | Level 1 | DH1100 | Construction | Phase 1 | IGMP | Scott Masterson | Construction |  |
| QTS-3961 |  | Gallery 1102 / Lineup F1100 // OFCI - L2 SET IN PLACE - Eq Type # - COD/ATS-210-A - Skid 1-3 | 1d | 2026-02-02 | 2026-02-02 | QTS-33191, QTS-45821 |  |  |  |  | 31d | 0d |  | QTS-PHX3 DC1 - 6 day w/ Holidays | Rosendin Electric, Inc | Level 1 | DH1100 | Construction | Phase 1 | IGMP | Scott Masterson | Construction | 01ADMIN |
| QTS-45831 |  | Gallery 1102 / Lineup F1100 // OFCI - L2 SET IN PLACE - Eq Type # - COD/ATS-210-A - Skid 4-6 | 1d | 2026-02-03 | 2026-02-03 | QTS-3961 |  |  |  |  | 31d | 0d |  | QTS-PHX3 DC1 - 6 day w/ Holidays | Rosendin Electric, Inc | Level 1 | DH1100 | Construction | Phase 1 | IGMP | Scott Masterson | Construction | 01ADMIN |
| QTS-5031 |  | Gallery 1102 / Lineup F1100 // Set Reserve Busway Segment | 2d | 2026-02-03 | 2026-02-04 | QTS-3961, QTS-2811, QTS-50021 |  |  |  |  | 31d | 0d |  | QTS-PHX3 DC1 - 6 day w/ Holidays | Rosendin Electric, Inc | Level 1 | DH1100 | Construction | Phase 1 | IGMP | Scott Masterson | Construction |  |
| QTS-8111 |  | Gallery 1102 / Lineup F1100 // Pull LV Cables from Reserve Bus to ATS | 2d | 2026-02-05 | 2026-02-06 | QTS-2811, QTS-6441, QTS-5031 |  |  |  |  | 31d | 0d |  | QTS-PHX3 DC1 - 6 day w/ Holidays | Rosendin Electric, Inc | Level 1 | DH1100 | Construction | Phase 1 | IGMP | Scott Masterson | Construction |  |
| QTS-9031 |  | Gallery 1102 / Lineup F1100 // Terminate & Torque ATS | 6d | 2026-02-07 | 2026-02-13 | QTS-8111, QTS-6441 |  |  |  |  | 31d | 0d |  | QTS-PHX3 DC1 - 6 day w/ Holidays | Rosendin Electric, Inc | Level 1 | DH1100 | Construction | Phase 1 | IGMP | Scott Masterson | Construction |  |
| QTS-9041 |  | Gallery 1102 / Lineup F1100 // Terminate & Torque COD | 2d | 2026-02-12 | 2026-02-13 | QTS-6441, QTS-9031 SS+4d |  |  |  |  | 32d | 1d |  | QTS-PHX3 DC1 - 6 day w/ Holidays | Rosendin Electric, Inc | Level 1 | DH1100 | Construction | Phase 1 | IGMP | Scott Masterson | Construction |  |
|  | 9 | **R1100 Lineup** |  | 2025-12-12 | 2026-02-03 |  |  |  |  |  |  |  |  |  |  |  |  |  |  |  |  |  |  |
| QTS-1701 |  | Gallery 1102 / Lineup R1100 // Install Hangers & Supports | 3d | 2025-12-12 A | 2025-12-16 A | QTS-13341 SS+1d | 100% |  |  |  |  |  |  |  | Rosendin Electric, Inc | Level 1 | DH1100 | Construction | Phase 1 | IGMP | Scott Masterson | Construction | 01ADMIN |
| QTS-2761 |  | Gallery 1102 / Lineup R1100 // Install Raceways from LV POD to Reserve Busway | 5d | 2026-01-13 A | 2026-01-14 | QTS-1701 | 100% | 0d | 2026-01-13 | 2026-01-17 | 23d | 0d | start on or after 2026-01-05 | QTS-PHX3 DC1 - 6 day w/ Holidays | Rosendin Electric, Inc | Level 1 | DH1100 | Construction | Phase 1 | IGMP | Scott Masterson | Construction | 01ADMIN |
| QTS-3901 |  | Gallery 1102 / Lineup R1100 // OFCI - L2 SET IN PLACE - Eq Type # - TIE SWD - 1 unit | 1d | 2026-01-14 | 2026-01-14 | QTS-2761 |  |  |  |  | 26d | 3d |  | QTS-PHX3 DC1 - 6 day w/ Holidays | Rosendin Electric, Inc | Level 1 | DH1100 | Construction | Phase 1 | IGMP | Scott Masterson | Construction | 01ADMIN |
| QTS-3911 |  | Gallery 1102 / Lineup R1100 // Set Reserve Busway Segment | 4d | 2026-01-14 | 2026-01-17 | QTS-2761, QTS-50021 |  |  |  |  | 23d | 0d |  | QTS-PHX3 DC1 - 6 day w/ Holidays | Rosendin Electric, Inc | Level 1 | DH1100 | Construction | Phase 1 | IGMP | Scott Masterson | Construction | 01ADMIN |
| QTS-5561 |  | Gallery 1102 / Lineup R1100 // Pull LV Cables from TIE SWD to Reserve Busway | 2d | 2026-01-20 | 2026-01-21 | QTS-2761, QTS-3901, QTS-3911 |  |  |  |  | 23d | 0d |  | QTS-PHX3 DC1 - 6 day w/ Holidays | Rosendin Electric, Inc | Level 1 | DH1100 | Construction | Phase 1 | IGMP | Scott Masterson | Construction | 01ADMIN |
| QTS-6191 |  | Gallery 1102 / Lineup R1100 // Pull LV Cables from POD to Reserve Busway | 4d | 2026-01-22 | 2026-01-26 | QTS-2761, QTS-5561, QTS-3911 |  |  |  |  | 23d | 0d |  | QTS-PHX3 DC1 - 6 day w/ Holidays | Rosendin Electric, Inc | Level 1 | DH1100 | Construction | Phase 1 | IGMP | Scott Masterson | Construction | 01ADMIN |
| QTS-7071 |  | Gallery 1102 / Lineup R1100 // Pull LV Cables from TIE SWD to TIE SWD adjacent # | 5d | 2026-01-27 | 2026-01-31 | QTS-2761, QTS-6191 |  |  |  |  | 23d | 0d |  | QTS-PHX3 DC1 - 6 day w/ Holidays | Rosendin Electric, Inc | Level 1 | DH1100 | Construction | Phase 1 | IGMP | Scott Masterson | Construction |  |
| QTS-7081 |  | Gallery 1102 / Lineup R1100 // Terminate Reserve Busway | 2d | 2026-01-27 | 2026-01-28 | QTS-6191, QTS-5561 |  |  |  |  | 28d | 0d |  | QTS-PHX3 DC1 - 6 day w/ Holidays | Rosendin Electric, Inc | Level 1 | DH1100 | Construction | Phase 1 | IGMP | Scott Masterson | Construction |  |
| QTS-8891 |  | Gallery 1102 / Lineup R1100 // Terminate TIE SWD | 2d | 2026-02-02 | 2026-02-03 | QTS-5561, QTS-7071 |  |  |  |  | 23d | 0d |  | QTS-PHX3 DC1 - 6 day w/ Holidays | Rosendin Electric, Inc | Level 1 | DH1100 | Construction | Phase 1 | IGMP | Scott Masterson | Construction |  |

Notes:
- QTS-2761: allucent_notes_20251230_164549: David Wiltberger on 2025-12-30 15:49: impacted by corridor / allucent_notes: 2025-12-30 15:49 - User: David Wiltberger - Date Added: 2025-12-30 15:49 - Note: impacted by corridor

| ID | WBS | Activity | Duration | Start | Finish | Predecessors | Complete | Remaining | Planned start | Planned finish | Total float | Free float | Constraint | Calendar | Subcontractor | Level | Location | Project Section-1 | Phase-1-1 | Baseline | Layton Responsible Party | Project Section | Allucent CSI Group | Phase-1 |
| --- | --- | --- | --- | --- | --- | --- | --- | --- | --- | --- | --- | --- | --- | --- | --- | --- | --- | --- | --- | --- | --- | --- | --- | --- |
|  | 4 | **DH 1100 / Rooftop Mechanical** |  | 2025-08-12 | 2026-02-12 |  |  |  |  |  |  |  |  |  |  |  |  |  |  |  |  |  |  |  |
| QTS-1631 |  | DH 1100 / Rooftop Mechanical // OFCI - L2 SET IN PLACE - Eq Type # - Chiller #1RT40 - 7 units | 5d | 2025-08-12 A | 2025-08-12 A | QTS-19811, QTS-35331, QTS-35341, QTS-35351, QTS-35361, QTS-35371, QTS-35381, QTS-35391, QTS-20761 | 100% |  | 2025-08-18 | 2025-08-22 |  |  |  |  | Bel-Aire Mechanical, LLC | Level 1 | DH1100 | Construction | Phase 1 | IGMP | Dave Wiltberger | Construction | 01ADMIN |  |
| QTS-1661 |  | DH 1100 / Rooftop Mechanical // Set Doghouse Curbs | 8d | 2025-09-04 A | 2025-09-08 A | QTS-20771 | 100% |  | 2025-09-04 | 2025-09-15 |  |  |  |  | Rosendin Electric, Inc | Level 1 | DH1100 | Construction | Phase 1 | IGMP | Dave Wiltberger | Construction | 01ADMIN |  |
| QTS-1641 |  | DH 1100 / Rooftop Mechanical // Set Doghouses | 5d | 2025-09-09 A | 2025-09-16 A | QTS-1661, QTS-19911 | 100% |  | 2025-09-16 | 2025-09-22 |  |  |  |  | Rosendin Electric, Inc | Level 1 | DH1100 | Construction | Phase 1 | IGMP | Dave Wiltberger | Construction | 01ADMIN |  |
| QTS-100360 |  | DH 1100 / Rooftop Mechanical // Install Roof Protection | 2d | 2025-10-22 A | 2025-10-23 A | QTS-42661 | 100% |  |  |  |  |  |  |  | Bel-Aire Mechanical, LLC | Level 2 | DH2100 |  |  | IGMP | Dave Wiltberger | Construction | 01ADMIN | Phase 1 |
| QTS-100370 |  | DH 1100 / Rooftop Mechanical // Install 12" CHWS/R Run-Outs to RPH Vaults | 13d | 2025-10-24 A | 2025-11-11 A | QTS-100360 | 100% |  |  |  |  |  |  |  | Bel-Aire Mechanical, LLC | Level 2 | DH2100 |  |  | IGMP | Dave Wiltberger | Construction | 01ADMIN | Phase 1 |
| QTS-100380 |  | DH 1100 / Rooftop Mechanical // Assemble & Install CHWS/R Piping from Mainline Piping to ACC Deck | 23d | 2025-10-24 A | 2025-12-19 A | QTS-100370 SS | 100% |  | 2025-10-24 | 2025-11-25 |  |  |  |  | Bel-Aire Mechanical, LLC | Level 2 | DH2100 |  |  | IGMP | Dave Wiltberger | Construction | 01ADMIN | Phase 1 |
| QTS-100390 |  | DH 1100 / Rooftop Mechanical // Assemble & Install CHW Pump Assemblies at ACC Deck to Chillers | 28d | 2025-10-24 A | 2025-12-10 A | QTS-100380 SS | 100% |  | 2025-10-24 | 2025-12-04 |  |  |  |  | Bel-Aire Mechanical, LLC | Level 2 | DH2100 |  |  | IGMP | Dave Wiltberger | Construction | 01ADMIN | Phase 1 |
| QTS-100410 |  | DH 1100 / Rooftop Mechanical // Install Mainline Piping from RPH Vaults to Galleries (Risers) L2 / L1 | 10d | 2025-11-12 A | 2025-11-25 A | QTS-100390 SS+8d | 100% |  | 2025-11-05 | 2025-11-18 |  |  |  |  | Bel-Aire Mechanical, LLC | Level 2 | DH2100 |  |  | IGMP | Dave Wiltberger | Construction | 01ADMIN | Phase 1 |
| QTS-100430 |  | DH 1100 / Rooftop Mechanical // Install Grating, Toe Kicks, Hand Rails for TES Tanks | 4d | 2025-11-17 A | 2025-11-18 A | QTS-100330 | 100% |  | 2025-11-17 | 2025-11-20 |  |  |  |  | Bel-Aire Mechanical, LLC | Level 2 | DH2100 |  |  | IGMP | Dave Wiltberger | Construction | 01ADMIN | Phase 1 |
| QTS-100440 |  | DH 1100 / Rooftop Mechanical // Set RPH Vault Housings | 5d | 2025-11-21 A | 2025-12-01 A | QTS-100410 FF+2d | 100% |  |  |  |  |  |  |  | Bel-Aire Mechanical, LLC | Level 2 | DH2100 |  |  | IGMP | Dave Wiltberger | Construction | 01ADMIN | Phase 1 |
| QTS-100450 |  | DH 1100 / Rooftop Mechanical // OFCI - ROOF SET IN PLACE - Eq Type # - TES Tanks - 7 units | 1d | 2025-12-23 A | 2025-12-23 A | QTS-100430, QTS-100200 | 100% |  |  |  |  |  |  |  | Bel-Aire Mechanical, LLC | Level 2 | DH2100 |  |  | IGMP | Dave Wiltberger | Construction | 01ADMIN | Phase 1 |
| QTS-3411 |  | DH 1100 / Rooftop Mechanical // Set Vertical Inline Centrifugal Pumps | 5d | 2025-12-23 A | 2025-12-23 A | QTS-1631, QTS-21241, QTS-100390 SS | 100% |  | 2026-01-21 | 2026-01-26 |  |  |  | QTS-PHX3 DC1 - 6 day w/ Holidays | Bel-Aire Mechanical, LLC | Level 1 | DH1100 | Construction | Phase 1 | IGMP | Dave Wiltberger | Construction | 01ADMIN |  |
| QTS-1681 |  | DH 1100 / Rooftop Mechanical // OFCI - L2 SET IN PLACE - Eq Type # - DOAS-RT1100 - 2 units | 2d | 2026-01-12 A | 2026-01-13 A | QTS-20771, QTS-22261, QTS-25381, QTS-21651 | 100% |  |  |  |  |  | start on or after 2026-01-12 | QTS-PHX3 DC1 - 6 day w/ Holidays | Bel-Aire Mechanical, LLC | Level 1 | DH1100 | Construction | Phase 1 | IGMP | Dave Wiltberger | Construction | 01ADMIN |  |
| QTS-50131 |  | DH 1100 / Rooftop Mechanical // Rough In Plumbing from to DOAS | 1d | 2026-01-14 | 2026-01-14 | QTS-1681 |  |  |  |  | 47d | 0d |  | QTS-PHX3 DC1 - 6 day w/ Holidays | Bel-Aire Mechanical, LLC | Roof | FOH | Construction | Phase 1 | DC | Dave Wiltberger | Construction | 01ADMIN |  |
| QTS-100400 |  | DH 1100 / Rooftop Mechanical // Rough In Condensate Drain from DOAS | 2d | 2026-01-15 | 2026-01-16 | QTS-1681, QTS-50131 |  |  |  |  | 48d | 1d |  | QTS-PHX3 DC1 - 6 day w/ Holidays | Bel-Aire Mechanical, LLC | Level 2 | DH2100 |  |  | IGMP | Dave Wiltberger | Construction | 01ADMIN | Phase 1 |
| QTS-50141 |  | DH 1100 / Rooftop Mechanical // Rough In Power from to DOAS | 3d | 2026-01-15 | 2026-01-17 | QTS-50131 |  |  |  |  | 47d | 0d |  | QTS-PHX3 DC1 - 6 day w/ Holidays | Bel-Aire Mechanical, LLC | Roof | FOH | Construction | Phase 1 | DC | Dave Wiltberger | Construction | 01ADMIN |  |
| QTS-100420 |  | DH 1100 / Rooftop Mechanical // Pre Energization Inspection DOAS | 1d | 2026-01-20 | 2026-01-20 | QTS-100400, QTS-50141 |  |  |  |  | 47d | 13d |  | QTS-PHX3 DC1 - 6 day w/ Holidays | Bel-Aire Mechanical, LLC | Level 2 | DH2100 |  |  | IGMP | Dave Wiltberger | Construction | 01ADMIN | Phase 1 |
| QTS-100480 |  | DH 1100 / Rooftop Mechanical // Pressure Test (Air) Industrial Loop (L1) | 1d | 2026-01-20 | 2026-01-20 | QTS-100410, QTS-16231, QTS-15441, QTS-46511 |  |  |  |  | 11d | 0d |  | QTS-PHX3 DC1 - 6 day w/ Holidays | Bel-Aire Mechanical, LLC | Level 2 | DH2100 |  |  | IGMP | Dave Wiltberger | Construction | 01ADMIN | Phase 1 |
| QTS-100460 |  | DH 1100 / Rooftop Mechanical // Finalize Detailing for TES Tank CHW Piping/ Fabrication | 7d | 2026-01-21 A | 2026-01-22 | QTS-100450 |  | 7d | 2026-01-21 | 2026-01-28 | 14d | 0d |  | QTS-PHX3 DC1 - 6 day w/ Holidays | Bel-Aire Mechanical, LLC | Level 2 | DH2100 |  |  | IGMP | Dave Wiltberger | Construction | 01ADMIN | Phase 1 |
| QTS-100490 |  | DH 1100 / Rooftop Mechanical // Pressure Test (Air) Industrial Loop (L2) | 1d | 2026-01-21 | 2026-01-21 | QTS-100480 |  |  |  |  | 12d | 0d |  | QTS-PHX3 DC1 - 6 day w/ Holidays | Bel-Aire Mechanical, LLC | Level 2 | DH2100 |  |  | IGMP | Dave Wiltberger | Construction | 01ADMIN | Phase 1 |
| QTS-100500 |  | DH 1100 / Rooftop Mechanical // Pressure Test (Air) Industrial Loop (Roof) | 1d | 2026-01-22 | 2026-01-22 | QTS-100490 |  |  |  |  | 12d | 0d |  | QTS-PHX3 DC1 - 6 day w/ Holidays | Bel-Aire Mechanical, LLC | Level 2 | DH2100 |  |  | IGMP | Dave Wiltberger | Construction | 01ADMIN | Phase 1 |
| QTS-100470 |  | DH 1100 / Rooftop Mechanical // Install TES Tank CHW Piping - 7 Units | 10d | 2026-01-23 | 2026-02-03 | QTS-100460, QTS-100440 |  |  |  |  | 14d | 0d |  | QTS-PHX3 DC1 - 6 day w/ Holidays | Bel-Aire Mechanical, LLC | Level 2 | DH2100 |  |  | IGMP | Dave Wiltberger | Construction | 01ADMIN | Phase 1 |
| QTS-100510 |  | DH 1100 / Rooftop Mechanical // Install Temp Flush Pump, Power Source for Pump & Other Associated Components | 5d | 2026-01-23 | 2026-01-28 | QTS-100500 |  |  |  |  | 12d | 0d |  | QTS-PHX3 DC1 - 6 day w/ Holidays | Bel-Aire Mechanical, LLC | Level 2 | DH2100 |  |  | IGMP | Dave Wiltberger | Construction | 01ADMIN | Phase 1 |
| QTS-100520 |  | DH 1100 / Rooftop Mechanical // Hydro-Test (Water) Industrial Loop (L1) | 1d | 2026-01-29 | 2026-01-29 | QTS-100510 |  |  |  |  | 12d | 0d |  | QTS-PHX3 DC1 - 6 day w/ Holidays | Bel-Aire Mechanical, LLC | Level 2 | DH2100 |  |  | IGMP | Dave Wiltberger | Construction | 01ADMIN | Phase 1 |
| QTS-100530 |  | DH 1100 / Rooftop Mechanical // Hydro-Test (Water) Industrial Loop (L2) | 1d | 2026-01-30 | 2026-01-30 | QTS-100520 |  |  |  |  | 12d | 0d |  | QTS-PHX3 DC1 - 6 day w/ Holidays | Bel-Aire Mechanical, LLC | Level 2 | DH2100 |  |  | IGMP | Dave Wiltberger | Construction | 01ADMIN | Phase 1 |
| QTS-100540 |  | DH 1100 / Rooftop Mechanical // Hydro-Test (Water) Industrial Loop (Roof) | 1d | 2026-01-31 | 2026-01-31 | QTS-100530 |  |  |  |  | 12d | 0d |  | QTS-PHX3 DC1 - 6 day w/ Holidays | Bel-Aire Mechanical, LLC | Level 2 | DH2100 |  |  | IGMP | Dave Wiltberger | Construction | 01ADMIN | Phase 1 |
| QTS-100550 |  | DH 1100 / Rooftop Mechanical // Fill and Flush Industrial Loop (Zone 1 - All Levels) | 10d | 2026-02-01 | 2026-02-10 | QTS-100540 |  |  |  |  | 14d | 7d |  | QTS-PHX3 DC1 - 7 day No Holidays | Bel-Aire Mechanical, LLC | Level 2 | DH2100 |  |  | IGMP | Dave Wiltberger | Construction | 01ADMIN | Phase 1 |
| QTS-100580 |  | DH 1100 / Rooftop Mechanical // Pressure Test (Air) Industrial Loop (TES Tank) | 1d | 2026-02-04 | 2026-02-04 | QTS-100470 |  |  |  |  | 14d | 0d |  | QTS-PHX3 DC1 - 6 day w/ Holidays | Bel-Aire Mechanical, LLC | Level 2 | DH2100 |  |  | IGMP | Dave Wiltberger | Construction | 01ADMIN | Phase 1 |
| QTS-100590 |  | DH 1100 / Rooftop Mechanical // Hydro-Test (Water) Industrial Loop (TES Tank) | 1d | 2026-02-05 | 2026-02-05 | QTS-100580 |  |  |  |  | 14d | 0d |  | QTS-PHX3 DC1 - 6 day w/ Holidays | Bel-Aire Mechanical, LLC | Level 2 | DH2100 |  |  | IGMP | Dave Wiltberger | Construction | 01ADMIN | Phase 1 |
| QTS-100600 |  | DH 1100 / Rooftop Mechanical // Fill and Flush Industrial Loop (TES Tank) | 7d | 2026-02-06 | 2026-02-12 | QTS-100590 |  |  |  |  | 17d | 12d |  | QTS-PHX3 DC1 - 7 day No Holidays | Bel-Aire Mechanical, LLC | Level 2 | DH2100 |  |  | IGMP | Dave Wiltberger | Construction | 01ADMIN | Phase 1 |

Notes:
- QTS-1631: allucent_notes: David Wiltberger on 2025-08-12 10:08: started early / John Capriotti on 2025-08-12 10:08: DH 1100 Chiller sets started 8/12, following DH 2100 sets completing. / John Capriotti on 2025-08-12 10:08: DH 1100 Chillers sets continuing 8/12 and plan to be completed 8/13. / John Capriotti on 2025-08-12 15:08: Chiller set on 8/12. / allucent_notes: 2025-08-12 10:08 - User: David Wiltberger - Date Added: 2025-08-12 10:08 - Note: started early / 2025-08-12 10:08 - User: John Capriotti - Date Added: 2025-08-12 10:08 - Note: DH 1100 Chiller sets started 8/12, following DH 2100 sets completing. / 2025-
- QTS-100360: allucent_notes: David Wiltberger on 2025-08-19 09:08: changed pick order / allucent_notes_20251014_152335: David Wiltberger on 2025-08-19 09:08: changed pick order / David Wiltberger on 2025-09-02 10:09: Moving to accommodate roofing in Zone 1 / David Wiltberger on 2025-09-24 04:09: BAM not completed Potential Delay / David Wiltberger on 2025-09-30 12:09: BAM did not complete / David Wiltberger on 2025-10-14 10:10: set on recovery schedule / allucent_notes: 2025-08-19 09:08 - User: David Wiltberger - Date Added: 2025-08-19 09:08 - Note: changed pick order / 2025-09-02 10:09 - User: David Wiltberger - Date Added: 2025-09-02 10:09 - Note: Moving to accommodate roofing in Zone 1 / 2025-09-24 04:09 - User: Dav
- QTS-100370: allucent_notes: David Wiltberger on 2025-08-19 09:08: changed pick order / allucent_notes_20251014_152335: David Wiltberger on 2025-08-19 09:08: changed pick order / David Wiltberger on 2025-09-02 10:09: Moving to accommodate roofing in Zone 1 / David Wiltberger on 2025-09-24 04:09: BAM not completed Potential Delay / David Wiltberger on 2025-09-30 12:09: BAM did not complete / David Wiltberger on 2025-10-14 10:10: set on recovery schedule / allucent_notes: 2025-08-19 09:08 - User: David Wiltberger - Date Added: 2025-08-19 09:08 - Note: changed pick order / 2025-09-02 10:09 - User: David Wiltberger - Date Added: 2025-09-02 10:09 - Note: Moving to accommodate roofing in Zone 1 / 2025-09-24 04:09 - User: Dav
- QTS-100380: allucent_notes_20251230_164549: David Wiltberger on 2025-12-01 10:14: Having to crane up piping. Area impacted from setting TES tanks / allucent_notes: David Wiltberger on 2025-08-19 09:08: changed pick order / allucent_notes_20251014_152335: David Wiltberger on 2025-08-19 09:08: changed pick order / David Wiltberger on 2025-09-02 10:09: Moving to accommodate roofing in Zone 1 / David Wiltberger on 2025-09-24 04:09: BAM not completed Potential Delay / David Wiltberger on 2025-09-30 12:09: BAM did not complete / David Wiltberger on 2025-10-14 10:10: set on recovery schedule / allucent_notes_20251202_153722: David Wiltberger on 2025-12-01 10:14: Having to crane up piping. Area impacted from setting TES tanks / allucent_notes_20251209_203830: David Wiltberger on 2025-12-01 10:14: Having to crane up piping. Area impacted from setting TES tanks / allucent_notes_20251216_165335: David Wiltberger on 2025-12-01 10:14: Having to crane up piping. Area impacted from setting TES tanks / allucent_notes: 2025-12-01 10:14 - User: David Wiltberger - Date Added: 2025-12-01 10:14 - Note: Having to crane up piping. Area impacted from setting TES tanks
- QTS-100390: allucent_notes: David Wiltberger on 2025-08-19 09:08: changed pick order / allucent_notes_20251014_152335: David Wiltberger on 2025-08-19 09:08: changed pick order / David Wiltberger on 2025-09-02 10:09: Moving to accommodate roofing in Zone 1 / David Wiltberger on 2025-09-24 04:09: BAM not completed Potential Delay / David Wiltberger on 2025-09-30 12:09: BAM did not complete / David Wiltberger on 2025-10-14 10:10: set on recovery schedule / allucent_notes_20251209_203830: Jason Johnston on 2025-12-09 20:30: Need update from team / allucent_notes_20251216_165335: Jason Johnston on 2025-12-09 20:30: Need update from team / allucent_notes: 2025-12-09 20:30 - User: Jason Johnston - Date Added: 2025-12-09 20:30 - Note: Need update from team
- QTS-100410: allucent_notes: David Wiltberger on 2025-08-19 09:08: changed pick order / allucent_notes_20251014_152335: David Wiltberger on 2025-08-19 09:08: changed pick order / David Wiltberger on 2025-09-02 10:09: Moving to accommodate roofing in Zone 1 / David Wiltberger on 2025-09-24 04:09: BAM not completed Potential Delay / David Wiltberger on 2025-09-30 12:09: BAM did not complete / David Wiltberger on 2025-10-14 10:10: set on recovery schedule / allucent_notes_20251111_182405: Jason Johnston on 2025-11-11 16:11: Need update / allucent_notes_20251118_192630: Jason Johnston on 2025-11-11 16:11: Need update / allucent_notes_20251202_153722: Jason Johnston on 2025-11-11 16:11: Need update / allucent_notes: 2025-11-11 16:11 - User: Jason Johnston - Date Added: 2025-11-11 16:11 - Note: Need update
- QTS-100430: allucent_notes: David Wiltberger on 2025-08-19 09:08: changed pick order / allucent_notes_20251014_152335: David Wiltberger on 2025-08-19 09:08: changed pick order / David Wiltberger on 2025-09-02 10:09: Moving to accommodate roofing in Zone 1 / David Wiltberger on 2025-09-24 04:09: BAM not completed Potential Delay / David Wiltberger on 2025-09-30 12:09: BAM did not complete / David Wiltberger on 2025-10-14 10:10: set on recovery schedule / allucent_notes_20251118_192630: David Wiltberger on 2025-11-17 16:11: out of sequence / allucent_notes: 2025-11-17 16:11 - User: David Wiltberger - Date Added: 2025-11-17 16:11 - Note: out of sequence
- QTS-100440: allucent_notes: David Wiltberger on 2025-08-19 09:08: changed pick order / allucent_notes_20251014_152335: David Wiltberger on 2025-08-19 09:08: changed pick order / David Wiltberger on 2025-09-02 10:09: Moving to accommodate roofing in Zone 1 / David Wiltberger on 2025-09-24 04:09: BAM not completed Potential Delay / David Wiltberger on 2025-09-30 12:09: BAM did not complete / David Wiltberger on 2025-10-14 10:10: set on recovery schedule / allucent_notes: 2025-08-19 09:08 - User: David Wiltberger - Date Added: 2025-08-19 09:08 - Note: changed pick order / 2025-09-02 10:09 - User: David Wiltberger - Date Added: 2025-09-02 10:09 - Note: Moving to accommodate roofing in Zone 1 / 2025-09-24 04:09 - User: Dav
- QTS-100450: allucent_notes: David Wiltberger on 2025-08-19 09:08: changed pick order / allucent_notes_20251014_152335: David Wiltberger on 2025-08-19 09:08: changed pick order / David Wiltberger on 2025-09-02 10:09: Moving to accommodate roofing in Zone 1 / David Wiltberger on 2025-09-24 04:09: BAM not completed Potential Delay / David Wiltberger on 2025-09-30 12:09: BAM did not complete / David Wiltberger on 2025-10-14 10:10: set on recovery schedule / allucent_notes: 2025-08-19 09:08 - User: David Wiltberger - Date Added: 2025-08-19 09:08 - Note: changed pick order / 2025-09-02 10:09 - User: David Wiltberger - Date Added: 2025-09-02 10:09 - Note: Moving to accommodate roofing in Zone 1 / 2025-09-24 04:09 - User: Dav
- QTS-3411: allucent_notes_20251230_164549: David Wiltberger on 2025-08-19 09:08: Set different order for lift / David Wiltberger on 2025-08-26 06:08: Need to set sequence to start after 2100 set / David Wiltberger on 2025-09-02 10:09: Moving date to accommodate roofing in Zone 1 / David Wiltberger on 2025-10-14 10:10: Set on recovery schedule / David Wiltberger on 2025-12-01 10:15: Work inpacted by installing TES tanks / allucent_notes: David Wiltberger on 2025-08-19 09:08: Set different order for lift / allucent_notes_20251014_152335: David Wiltberger on 2025-08-19 09:08: Set different order for lift / David Wiltberger on 2025-08-26 06:08: Need to set sequence to start after 2100 set / David Wiltberger on 2025-09-02 10:09: Moving date to accommodate roofing in Zone 1 / David Wiltberger on 2025-10-14 10:10: Set on recovery schedule / allucent_notes_20251021_145627: David Wiltberger on 2025-08-19 09:08: Set different order for lift / David Wiltberger on 2025-08-26 06:08: Need to set sequence to start after 2100 set / David Wiltberger on 2025-09-02 10:09: Moving date to accommodate roofing in Zone 1 / David Wiltberger on 2025-10-14 10:10: Set on recovery schedule / allucent_notes_20251027_224008: David Wiltberger on 2025-08-19 09:08: Set different order for lift / David Wiltberger on 2025-08-26 06:08: Need to set sequence to start after 2100 set / David Wiltberger on 2025-09-02 10:09: Moving date to accommodate roofing in Zone 1 / David Wiltberger on 2025-10-14 10:10: Set on recovery schedule / allucent_notes_20251028_163138: David Wiltberger on 2025-08-19 09:08: Set different order for lift / David Wiltberger on 2025-08-26 06:08: Need to set sequence to start after 2100 set / David Wiltberger on 2025-09-02 10:09: Moving date to accommodate roofing in Zone 1 / David Wiltberger on 2025-10-14 10:10: Set on recovery schedule / allucent_notes_20251104_160200: David Wiltberger on 2025-08-19 09:08: Set different order for lift / David Wiltberger on 2025-08-26 06:08: Need to set sequence to start after 2100 set / David Wiltberger on 2025-09-02 10:09: Moving date to accommodate roofing in Zone 1 / David Wiltberger on 2025-10-14 10:10: Set on recovery schedule / allucent_notes_20251111_182405: David Wiltberger on 2025-08-19 09:08: Set different order for lift / David Wiltberger on 2025-08-26 06:08: Need to set sequence to start after 2100 set / David Wiltberger on 2025-09-02 10:09: Moving date to accommodate roofing in Zone 1 / David Wiltberger on 2025-10-14 10:10: Set on recovery schedule / allucent_notes_20251118_192630: David Wiltberger on 2025-08-19 09:08: Set different order for lift / David Wiltberger on 2025-08-26 06:08: Need to set sequence to start after 2100 set / David Wiltberger on 2025-09-02 10:09: Moving date to accommodate roofing in Zone 1 / David Wiltberger on 2025-10-14 10:10: Set on recovery schedule / allucent_notes_20251202_153722: David Wiltberger on 2025-08-19 09:08: Set different order for lift / David Wiltberger on 2025-08-26 06:08: Need to set sequence to start after 2100 set / David Wiltberger on 2025-09-02 10:09: Moving date to accommodate roofing in Zone 1 / David Wiltberger on 2025-10-14 10:10: Set on recovery schedule / David Wiltberger on 2025-12-01 10:15: Work inpacted by installing TES tanks / allucent_notes_20251209_203830: David Wiltberger on 2025-08-19 09:08: Set different order for lift / David Wiltberger on 2025-08-26 06:08: Need to set sequence to start after 2100 set / David Wiltberger on 2025-09-02 10:09: Moving date to accommodate roofing in Zone 1 / David Wiltberger on 2025-10-14 10:10: Set on recovery schedule / David Wiltberger on 2025-12-01 10:15: Work inpacted by installing TES tanks / allucent_notes_20251216_165335: David Wiltberger on 2025-08-19 09:08: Set different order for lift / David Wiltberger on 2025-08-26 06:08: Need to set sequence to start after 2100 set / David Wiltberger on 2025-09-02 10:09: Moving date to accommodate roofing in Zone 1 / David Wiltberger on 2025-10-14 10:10: Set on recovery schedule / David Wiltberger on 2025-12-01 10:15: Work inpacted by installing TES tanks / allucent_notes: 2025-08-19 09:08 - User: David Wiltberger - Date Added: 2025-08-19 09:08 - Note: Set different order for lift / 2025-08-26 06:08 - User: David Wiltberger - Date Added: 2025-08-26 06:08 - Note: Need to set sequence to start after 2100 set / 2025-09-02 10
- QTS-1681: allucent_notes_20251230_164549: David Wiltberger on 2025-12-30 16:02: crane access limited / allucent_notes: 2025-12-30 16:02 - User: David Wiltberger - Date Added: 2025-12-30 16:02 - Note: crane access limited
- QTS-100400: allucent_notes: David Wiltberger on 2025-08-19 09:08: changed pick order / allucent_notes_20251014_152335: David Wiltberger on 2025-08-19 09:08: changed pick order / David Wiltberger on 2025-09-02 10:09: Moving to accommodate roofing in Zone 1 / David Wiltberger on 2025-09-24 04:09: BAM not completed Potential Delay / David Wiltberger on 2025-09-30 12:09: BAM did not complete / David Wiltberger on 2025-10-14 10:10: set on recovery schedule / allucent_notes: 2025-08-19 09:08 - User: David Wiltberger - Date Added: 2025-08-19 09:08 - Note: changed pick order / 2025-09-02 10:09 - User: David Wiltberger - Date Added: 2025-09-02 10:09 - Note: Moving to accommodate roofing in Zone 1 / 2025-09-24 04:09 - User: Dav
- QTS-100420: allucent_notes: David Wiltberger on 2025-08-19 09:08: changed pick order / allucent_notes_20251014_152335: David Wiltberger on 2025-08-19 09:08: changed pick order / David Wiltberger on 2025-09-02 10:09: Moving to accommodate roofing in Zone 1 / David Wiltberger on 2025-09-24 04:09: BAM not completed Potential Delay / David Wiltberger on 2025-09-30 12:09: BAM did not complete / David Wiltberger on 2025-10-14 10:10: set on recovery schedule / allucent_notes: 2025-08-19 09:08 - User: David Wiltberger - Date Added: 2025-08-19 09:08 - Note: changed pick order / 2025-09-02 10:09 - User: David Wiltberger - Date Added: 2025-09-02 10:09 - Note: Moving to accommodate roofing in Zone 1 / 2025-09-24 04:09 - User: Dav
- QTS-100480: allucent_notes: David Wiltberger on 2025-08-19 09:08: changed pick order / allucent_notes_20251014_152335: David Wiltberger on 2025-08-19 09:08: changed pick order / David Wiltberger on 2025-09-02 10:09: Moving to accommodate roofing in Zone 1 / David Wiltberger on 2025-09-24 04:09: BAM not completed Potential Delay / David Wiltberger on 2025-09-30 12:09: BAM did not complete / David Wiltberger on 2025-10-14 10:10: set on recovery schedule / allucent_notes: 2025-08-19 09:08 - User: David Wiltberger - Date Added: 2025-08-19 09:08 - Note: changed pick order / 2025-09-02 10:09 - User: David Wiltberger - Date Added: 2025-09-02 10:09 - Note: Moving to accommodate roofing in Zone 1 / 2025-09-24 04:09 - User: Dav
- QTS-100460: allucent_notes_20251230_164549: David Wiltberger on 2025-12-30 16:03: put tanks on backwards / allucent_notes: David Wiltberger on 2025-08-19 09:08: changed pick order / allucent_notes_20251014_152335: David Wiltberger on 2025-08-19 09:08: changed pick order / David Wiltberger on 2025-09-02 10:09: Moving to accommodate roofing in Zone 1 / David Wiltberger on 2025-09-24 04:09: BAM not completed Potential Delay / David Wiltberger on 2025-09-30 12:09: BAM did not complete / David Wiltberger on 2025-10-14 10:10: set on recovery schedule / allucent_notes: 2025-12-30 16:03 - User: David Wiltberger - Date Added: 2025-12-30 16:03 - Note: put tanks on backwards
- QTS-100490: allucent_notes: David Wiltberger on 2025-08-19 09:08: changed pick order / allucent_notes_20251014_152335: David Wiltberger on 2025-08-19 09:08: changed pick order / David Wiltberger on 2025-09-02 10:09: Moving to accommodate roofing in Zone 1 / David Wiltberger on 2025-09-24 04:09: BAM not completed Potential Delay / David Wiltberger on 2025-09-30 12:09: BAM did not complete / David Wiltberger on 2025-10-14 10:10: set on recovery schedule / allucent_notes: 2025-08-19 09:08 - User: David Wiltberger - Date Added: 2025-08-19 09:08 - Note: changed pick order / 2025-09-02 10:09 - User: David Wiltberger - Date Added: 2025-09-02 10:09 - Note: Moving to accommodate roofing in Zone 1 / 2025-09-24 04:09 - User: Dav
- QTS-100500: allucent_notes: David Wiltberger on 2025-08-19 09:08: changed pick order / allucent_notes_20251014_152335: David Wiltberger on 2025-08-19 09:08: changed pick order / David Wiltberger on 2025-09-02 10:09: Moving to accommodate roofing in Zone 1 / David Wiltberger on 2025-09-24 04:09: BAM not completed Potential Delay / David Wiltberger on 2025-09-30 12:09: BAM did not complete / David Wiltberger on 2025-10-14 10:10: set on recovery schedule / allucent_notes: 2025-08-19 09:08 - User: David Wiltberger - Date Added: 2025-08-19 09:08 - Note: changed pick order / 2025-09-02 10:09 - User: David Wiltberger - Date Added: 2025-09-02 10:09 - Note: Moving to accommodate roofing in Zone 1 / 2025-09-24 04:09 - User: Dav
- QTS-100470: allucent_notes: David Wiltberger on 2025-08-19 09:08: changed pick order / allucent_notes_20251014_152335: David Wiltberger on 2025-08-19 09:08: changed pick order / David Wiltberger on 2025-09-02 10:09: Moving to accommodate roofing in Zone 1 / David Wiltberger on 2025-09-24 04:09: BAM not completed Potential Delay / David Wiltberger on 2025-09-30 12:09: BAM did not complete / David Wiltberger on 2025-10-14 10:10: set on recovery schedule / allucent_notes: 2025-08-19 09:08 - User: David Wiltberger - Date Added: 2025-08-19 09:08 - Note: changed pick order / 2025-09-02 10:09 - User: David Wiltberger - Date Added: 2025-09-02 10:09 - Note: Moving to accommodate roofing in Zone 1 / 2025-09-24 04:09 - User: Dav
- QTS-100510: allucent_notes: David Wiltberger on 2025-08-19 09:08: changed pick order / allucent_notes_20251014_152335: David Wiltberger on 2025-08-19 09:08: changed pick order / David Wiltberger on 2025-09-02 10:09: Moving to accommodate roofing in Zone 1 / David Wiltberger on 2025-09-24 04:09: BAM not completed Potential Delay / David Wiltberger on 2025-09-30 12:09: BAM did not complete / David Wiltberger on 2025-10-14 10:10: set on recovery schedule / allucent_notes: 2025-08-19 09:08 - User: David Wiltberger - Date Added: 2025-08-19 09:08 - Note: changed pick order / 2025-09-02 10:09 - User: David Wiltberger - Date Added: 2025-09-02 10:09 - Note: Moving to accommodate roofing in Zone 1 / 2025-09-24 04:09 - User: Dav
- QTS-100520: allucent_notes: David Wiltberger on 2025-08-19 09:08: changed pick order / allucent_notes_20251014_152335: David Wiltberger on 2025-08-19 09:08: changed pick order / David Wiltberger on 2025-09-02 10:09: Moving to accommodate roofing in Zone 1 / David Wiltberger on 2025-09-24 04:09: BAM not completed Potential Delay / David Wiltberger on 2025-09-30 12:09: BAM did not complete / David Wiltberger on 2025-10-14 10:10: set on recovery schedule / allucent_notes: 2025-08-19 09:08 - User: David Wiltberger - Date Added: 2025-08-19 09:08 - Note: changed pick order / 2025-09-02 10:09 - User: David Wiltberger - Date Added: 2025-09-02 10:09 - Note: Moving to accommodate roofing in Zone 1 / 2025-09-24 04:09 - User: Dav
- QTS-100530: allucent_notes: David Wiltberger on 2025-08-19 09:08: changed pick order / allucent_notes_20251014_152335: David Wiltberger on 2025-08-19 09:08: changed pick order / David Wiltberger on 2025-09-02 10:09: Moving to accommodate roofing in Zone 1 / David Wiltberger on 2025-09-24 04:09: BAM not completed Potential Delay / David Wiltberger on 2025-09-30 12:09: BAM did not complete / David Wiltberger on 2025-10-14 10:10: set on recovery schedule / allucent_notes: 2025-08-19 09:08 - User: David Wiltberger - Date Added: 2025-08-19 09:08 - Note: changed pick order / 2025-09-02 10:09 - User: David Wiltberger - Date Added: 2025-09-02 10:09 - Note: Moving to accommodate roofing in Zone 1 / 2025-09-24 04:09 - User: Dav
- QTS-100540: allucent_notes: David Wiltberger on 2025-08-19 09:08: changed pick order / allucent_notes_20251014_152335: David Wiltberger on 2025-08-19 09:08: changed pick order / David Wiltberger on 2025-09-02 10:09: Moving to accommodate roofing in Zone 1 / David Wiltberger on 2025-09-24 04:09: BAM not completed Potential Delay / David Wiltberger on 2025-09-30 12:09: BAM did not complete / David Wiltberger on 2025-10-14 10:10: set on recovery schedule / allucent_notes: 2025-08-19 09:08 - User: David Wiltberger - Date Added: 2025-08-19 09:08 - Note: changed pick order / 2025-09-02 10:09 - User: David Wiltberger - Date Added: 2025-09-02 10:09 - Note: Moving to accommodate roofing in Zone 1 / 2025-09-24 04:09 - User: Dav
- QTS-100550: allucent_notes: David Wiltberger on 2025-08-19 09:08: changed pick order / allucent_notes_20251014_152335: David Wiltberger on 2025-08-19 09:08: changed pick order / David Wiltberger on 2025-09-02 10:09: Moving to accommodate roofing in Zone 1 / David Wiltberger on 2025-09-24 04:09: BAM not completed Potential Delay / David Wiltberger on 2025-09-30 12:09: BAM did not complete / David Wiltberger on 2025-10-14 10:10: set on recovery schedule / allucent_notes: 2025-08-19 09:08 - User: David Wiltberger - Date Added: 2025-08-19 09:08 - Note: changed pick order / 2025-09-02 10:09 - User: David Wiltberger - Date Added: 2025-09-02 10:09 - Note: Moving to accommodate roofing in Zone 1 / 2025-09-24 04:09 - User: Dav
- QTS-100580: allucent_notes: David Wiltberger on 2025-08-19 09:08: changed pick order / allucent_notes_20251014_152335: David Wiltberger on 2025-08-19 09:08: changed pick order / David Wiltberger on 2025-09-02 10:09: Moving to accommodate roofing in Zone 1 / David Wiltberger on 2025-09-24 04:09: BAM not completed Potential Delay / David Wiltberger on 2025-09-30 12:09: BAM did not complete / David Wiltberger on 2025-10-14 10:10: set on recovery schedule / allucent_notes: 2025-08-19 09:08 - User: David Wiltberger - Date Added: 2025-08-19 09:08 - Note: changed pick order / 2025-09-02 10:09 - User: David Wiltberger - Date Added: 2025-09-02 10:09 - Note: Moving to accommodate roofing in Zone 1 / 2025-09-24 04:09 - User: Dav
- QTS-100590: allucent_notes: David Wiltberger on 2025-08-19 09:08: changed pick order / allucent_notes_20251014_152335: David Wiltberger on 2025-08-19 09:08: changed pick order / David Wiltberger on 2025-09-02 10:09: Moving to accommodate roofing in Zone 1 / David Wiltberger on 2025-09-24 04:09: BAM not completed Potential Delay / David Wiltberger on 2025-09-30 12:09: BAM did not complete / David Wiltberger on 2025-10-14 10:10: set on recovery schedule / allucent_notes: 2025-08-19 09:08 - User: David Wiltberger - Date Added: 2025-08-19 09:08 - Note: changed pick order / 2025-09-02 10:09 - User: David Wiltberger - Date Added: 2025-09-02 10:09 - Note: Moving to accommodate roofing in Zone 1 / 2025-09-24 04:09 - User: Dav
- QTS-100600: allucent_notes: David Wiltberger on 2025-08-19 09:08: changed pick order / allucent_notes_20251014_152335: David Wiltberger on 2025-08-19 09:08: changed pick order / David Wiltberger on 2025-09-02 10:09: Moving to accommodate roofing in Zone 1 / David Wiltberger on 2025-09-24 04:09: BAM not completed Potential Delay / David Wiltberger on 2025-09-30 12:09: BAM did not complete / David Wiltberger on 2025-10-14 10:10: set on recovery schedule / allucent_notes: 2025-08-19 09:08 - User: David Wiltberger - Date Added: 2025-08-19 09:08 - Note: changed pick order / 2025-09-02 10:09 - User: David Wiltberger - Date Added: 2025-09-02 10:09 - Note: Moving to accommodate roofing in Zone 1 / 2025-09-24 04:09 - User: Dav

| ID | WBS | Activity | Duration | Start | Finish | Predecessors | Complete | Remaining | Planned start | Planned finish | Total float | Free float | Calendar | Subcontractor | Level | Location | Baseline | Layton Responsible Party | Phase-1 | Project Section | Allucent CSI Group | Project Section-1 | Phase-1-1 |
| --- | --- | --- | --- | --- | --- | --- | --- | --- | --- | --- | --- | --- | --- | --- | --- | --- | --- | --- | --- | --- | --- | --- | --- |
|  | 1 | **Fragnet Bulletin 4 Grating** |  | 2025-10-10 | 2026-01-26 |  |  |  |  |  |  |  |  |  |  |  |  |  |  |  |  |  |  |
| QTS-1001710 |  | Fragnet / DH 1100 / Rooftop Mechanical // Bulletin 4 Received by Layton | 1d | 2025-10-10 A | 2025-10-10 A | QTS-1371 SS | 100% |  |  |  |  |  |  | Bel-Aire Mechanical, LLC | Level 2 | DH2100 | IGMP | Dave Wiltberger | Phase 1 | Construction | 01ADMIN |  |  |
| QTS-1001730 |  | Fragnet / DH 1100 / Rooftop Mechanical // Updated Bulletin 4 Received by Layton | 3d | 2025-10-13 A | 2025-10-15 A | QTS-1001710 | 100% |  | 2025-10-10 | 2025-10-14 |  |  |  | Bel-Aire Mechanical, LLC | Level 2 | DH2100 | IGMP | Dave Wiltberger | Phase 1 | Construction | 01ADMIN |  |  |
| QTS-1001740 |  | Fragnet / DH 1100 / Rooftop Mechanical // Layton Submitting Shop Drawings to QTS Design (DLB) | 23d | 2025-10-16 A | 2025-11-17 A | QTS-1001730 | 100% |  | 2025-10-10 | 2025-11-11 |  |  |  | Bel-Aire Mechanical, LLC | Level 2 | DH2100 | IGMP | Dave Wiltberger | Phase 1 | Construction | 01ADMIN |  |  |
| QTS-1001750 |  | Fragnet / DH 1100 / Rooftop Mechanical // Layton Submitting Shop Drawings to QTS Design (Corgan) | 23d | 2025-11-18 A | 2025-12-09 A | QTS-1001740 | 100% |  | 2025-10-10 | 2025-11-11 |  |  |  | Bel-Aire Mechanical, LLC | Level 2 | DH2100 | IGMP | Dave Wiltberger | Phase 1 | Construction | 01ADMIN |  |  |
| QTS-1001760 |  | Fragnet / DH 1100 / Rooftop Mechanical // QTS Design Response for Grating | 10d | 2025-12-10 A | 2026-01-14 | QTS-1001750 | 100% | 0d | 2025-10-10 | 2025-10-23 | 68d | 0d |  | Bel-Aire Mechanical, LLC | Level 2 | DH2100 | IGMP | Dave Wiltberger | Phase 1 | Construction | 01ADMIN |  |  |
| QTS-1001720 |  | Fragnet / DH 1100 / Rooftop Mechanical // Install Grating, Toe Kicks, Hand Rails to Complete Chiller Deck | 10d | 2026-01-14 | 2026-01-26 | QTS-1001760 |  |  |  |  | 82d |  | QTS-PHX3 DC1 - 6 day w/ Holidays | Bel-Aire Mechanical, LLC | Level 2 | DH2100 | IGMP | Dave Wiltberger | Phase 1 | Construction | 01ADMIN |  |  |
|  | 5 | **DH 1100 / Mechanical Yard Buildout** |  | 2025-09-05 | 2026-02-05 |  |  |  |  |  |  |  |  |  |  |  |  |  |  |  |  |  |  |
| QTS-42341 |  | DH 1100 / Mechanical Yard // Excavate for MV Conduits | 5d | 2025-09-05 A | 2025-09-11 A | QTS-19811, QTS-42271 SS | 100% |  |  |  |  |  |  | Oregon Electric Group | Level 2 | Gen Yard | IGMP | Ron Carroll |  | Construction | 01ADMIN | Construction | Phase 1 |
| QTS-1651 |  | DH 1100 / Mechanical Yard // Prep for Pier Footings | 3d | 2025-09-09 A | 2025-09-11 A | QTS-1631 | 100% |  |  |  |  |  |  | Suntec Concrete Inc | Level 1 | Gen Yard | IGMP | Ron Carroll |  | Construction |  | Construction | Phase 1 |
| QTS-3881 |  | DH 1100 / Mechanical Yard // Form, Reinforce, & Pour 24" Diameter Piers #1 | 6d | 2025-09-12 A | 2025-09-19 A | QTS-1651 | 100% |  |  |  |  |  |  | Suntec Concrete Inc | Level 1 | Gen Yard | IGMP | Ron Carroll |  | Construction |  | Construction | Phase 1 |
| QTS-42351 |  | DH 1100 / Mechanical Yard // Install Conduit for MV Cables | 7d | 2025-09-12 A | 2025-09-22 A | QTS-42341 | 100% |  |  |  |  |  |  | Oregon Electric Group | Level 2 | Gen Yard | IGMP | Ron Carroll |  | Construction | 01ADMIN | Construction | Phase 1 |
| QTS-42771 |  | DH 1100 / Mechanical Yard // Form, Reinforce, & Pour 24" Diameter Piers #2 | 5d | 2025-09-22 A | 2025-10-07 A | QTS-3881 | 100% |  | 2025-09-22 | 2025-09-26 |  |  |  | Suntec Concrete Inc | Level 1 | Gen Yard | IGMP | Ron Carroll |  | Construction |  | Construction | Phase 1 |
| QTS-11091 |  | DH 1100 / Mechanical Yard // Form, Reinforce, & Pour Thickened Slab On Grade for Transformer | 9d | 2025-09-23 A | 2025-10-13 A | QTS-42771 SS+1d | 100% |  | 2025-09-23 | 2025-10-03 |  |  |  | Suntec Concrete Inc | Level 1 | Gen Yard | IGMP | Ron Carroll |  | Construction | 01ADMIN | Construction | Phase 1 |
| QTS-42361 |  | DH 1100 / Mechanical Yard // Slurry for MV Conduits | 5d | 2025-09-24 A | 2025-09-30 A | QTS-42351 | 100% |  |  |  |  |  |  | Oregon Electric Group | Level 2 | Gen Yard | IGMP | Ron Carroll |  | Construction |  | Construction | Phase 1 |
| QTS-42371 |  | DH 1100 / Mechanical Yard // Backfill Conduit for MV Cables | 5d | 2025-09-25 A | 2025-10-01 A | QTS-42361 FF+1d | 100% |  |  |  |  |  |  | Oregon Electric Group | Level 2 | Gen Yard | IGMP | Ron Carroll |  | Construction |  | Construction | Phase 1 |
| QTS-9921 |  | DH 1100 / Mechanical Yard // Form, Reinforce, & Pour Thickened Slab On Grade for UPS Pods | 5d | 2025-10-06 A | 2025-10-10 A | QTS-42771 FF, QTS-11091 FF | 100% |  |  |  |  |  |  | Suntec Concrete Inc | Level 1 | Gen Yard | IGMP | Ron Carroll |  | Construction | 01ADMIN | Construction | Phase 1 |
| QTS-12521 |  | DH 1100 / Mechanical Yard // Form, Reinforce, & Pour Thickened Slab On Grade for Generators | 10d | 2025-10-14 A | 2025-10-24 A | QTS-11091, QTS-9921 | 100% |  | 2025-10-13 | 2025-10-24 |  |  |  | Suntec Concrete Inc | Level 1 | Gen Yard | IGMP | Ron Carroll |  | Construction | 01ADMIN | Construction | Phase 1 |
| QTS-6391 |  | DH 1100 / Mechanical Yard // Place Gen Yard Gravel | 5d | 2025-10-15 A | 2025-10-21 A | QTS-42771, QTS-11091, QTS-9921 | 100% |  |  |  |  |  |  | Redpoint Contracting | Level 1 | Gen Yard | IGMP | Ron Carroll |  | Construction | 01ADMIN | Construction | Phase 1 |
| QTS-49971 |  | DH 1100 / Mechanical Yard // Install Cable Bus | 10d | 2025-10-22 A | 2025-11-04 A | QTS-6391, QTS-49691 | 100% |  |  |  |  |  |  | Oregon Electric Group | Level 2 | Gen Yard | IGMP | Ron Carroll |  | Construction | 01ADMIN | Construction | Phase 1 |
| QTS-13541 |  | DH 1100 / Mechanical Yard // OFCI - L2 SET IN PLACE - Eq Type # - 3000A UPS Pods - 7 units | 5d | 2025-10-27 A | 2025-11-06 A | QTS-12521 SS+4d, QTS-33681, QTS-33691, QTS-33701, QTS-33711, QTS-33721 FF, QTS-33731 FF, QTS-33741 FF, QTS-9921 | 100% |  | 2025-10-27 | 2025-10-31 |  |  |  | Rosendin Electric, Inc | Level 1 | Gen Yard | IGMP | Scott Masterson |  | Construction | 01ADMIN | Construction | Phase 1 |
| QTS-14481 |  | DH 1100 / Mechanical Yard // OFCI - L2 SET IN PLACE - Eq Type # - 2500KVA Transformers - 7 units | 3d | 2025-10-31 A | 2025-11-04 A | QTS-12521, QTS-35781, QTS-35791, QTS-35801, QTS-35811, QTS-35821, QTS-35831, QTS-35841, QTS-24281 | 100% |  |  |  |  |  |  | Rosendin Electric, Inc | Level 1 | Gen Yard | IGMP | Scott Masterson |  | Construction | 01ADMIN | Construction | Phase 1 |
| QTS-41241 |  | DH 1100 / Mechanical Yard // OFCI - L2 SET IN PLACE - Eq Type # - 2500KW Generator #R-11 - 1 unit | 1d | 2025-11-10 A | 2025-11-10 A | QTS-40991, QTS-41011, QTS-40981 | 100% |  | 2025-11-14 | 2025-11-14 |  |  |  | Rosendin Electric, Inc | Level 1 | Gen Yard |  | Scott Masterson |  | Construction | 01ADMIN | Construction | Phase 1 |
| QTS-41181 |  | DH 1100 / Mechanical Yard // OFCI - L2 SET IN PLACE - Eq Type # - 2500KW Generator #A-11 - 1 unit | 1d | 2025-11-11 A | 2025-11-11 A | QTS-39791, QTS-39811, QTS-39781, QTS-14481 | 100% |  | 2025-11-06 | 2025-11-06 |  |  |  | Rosendin Electric, Inc | Level 1 | Gen Yard |  | Scott Masterson |  | Construction | 01ADMIN | Construction | Phase 1 |
| QTS-15861 |  | DH 1100 / Mechanical Yard // Measure for FRP Platforms | 1d | 2025-11-12 A | 2025-11-12 A | QTS-41241, QTS-41231 FF | 100% |  | 2025-11-17 | 2025-11-17 |  |  |  | Advantic Building Group, LLC | Level 1 | Gen Yard | IGMP | Ron Carroll |  | Construction | 01ADMIN | Construction | Phase 1 |
| QTS-41191 |  | DH 1100 / Mechanical Yard // OFCI - L2 SET IN PLACE - Eq Type # - 2500KW Generator #B-11 - 1 unit | 1d | 2025-11-12 A | 2025-11-12 A | QTS-41181, QTS-39831, QTS-39851, QTS-39821 | 100% |  |  |  |  |  |  | Rosendin Electric, Inc | Level 1 | Gen Yard |  | Scott Masterson |  | Construction | 01ADMIN | Construction | Phase 1 |
| QTS-41201 |  | DH 1100 / Mechanical Yard // OFCI - L2 SET IN PLACE - Eq Type # - 2500KW Generator #C-11 - 1 unit | 1d | 2025-11-12 A | 2025-11-12 A | QTS-41191 SS, QTS-39871, QTS-39891, QTS-39861 | 100% |  |  |  |  |  |  | Rosendin Electric, Inc | Level 1 | Gen Yard |  | Scott Masterson |  | Construction | 01ADMIN | Construction | Phase 1 |
| QTS-41221 |  | DH 1100 / Mechanical Yard // OFCI - L2 SET IN PLACE - Eq Type # - 2500KW Generator #E-11 - 1 unit | 1d | 2025-11-12 A | 2025-11-12 A | QTS-40591, QTS-40611, QTS-40581, QTS-41201 SS | 100% |  |  |  |  |  |  | Rosendin Electric, Inc | Level 1 | Gen Yard |  | Scott Masterson |  | Construction | 01ADMIN | Construction | Phase 1 |
| QTS-41231 |  | DH 1100 / Mechanical Yard // OFCI - L2 SET IN PLACE - Eq Type # - 2500KW Generator #F-11 - 1 unit | 1d | 2025-11-12 A | 2025-11-12 A | QTS-41221 SS, QTS-40791, QTS-40811, QTS-40781 | 100% |  |  |  |  |  |  | Rosendin Electric, Inc | Level 1 | Gen Yard |  | Scott Masterson |  | Construction | 01ADMIN | Construction | Phase 1 |
| QTS-41211 |  | DH 1100 / Mechanical Yard // OFCI - L2 SET IN PLACE - Eq Type # - 2500KW Generator #D-11 - 1 unit | 1d | 2025-11-20 A | 2025-11-20 A | QTS-41201 SS, QTS-40391, QTS-40411, QTS-40381 | 100% |  |  |  |  |  |  | Rosendin Electric, Inc | Level 1 | Gen Yard |  | Scott Masterson |  | Construction | 01ADMIN | Construction | Phase 1 |

Notes:
- QTS-1001710: allucent_notes: David Wiltberger on 2025-08-19 09:08: changed pick order / allucent_notes_20251014_152335: David Wiltberger on 2025-08-19 09:08: changed pick order / David Wiltberger on 2025-09-02 10:09: Moving to accommodate roofing in Zone 1 / David Wiltberger on 2025-09-24 04:09: BAM not completed Potential Delay / David Wiltberger on 2025-09-30 12:09: BAM did not complete / David Wiltberger on 2025-10-14 10:10: set on recovery schedule / allucent_notes_20251202_153722: David Wiltberger on 2025-12-02 06:45: Grating install not complete for installation / allucent_notes_20251209_203830: David Wiltberger on 2025-12-02 06:45: Grating install not complete for installation / allucent_notes_20251216_165335: David Wiltberger on 2025-12-02 06:45: Grating install not complete for installation / allucent_notes: 2025-12-02 06:45 - User: David Wiltberger - Date Added: 2025-12-02 06:45 - Note: Grating install not complete for installation
- QTS-1001730: allucent_notes: David Wiltberger on 2025-08-19 09:08: changed pick order / allucent_notes_20251014_152335: David Wiltberger on 2025-08-19 09:08: changed pick order / David Wiltberger on 2025-09-02 10:09: Moving to accommodate roofing in Zone 1 / David Wiltberger on 2025-09-24 04:09: BAM not completed Potential Delay / David Wiltberger on 2025-09-30 12:09: BAM did not complete / David Wiltberger on 2025-10-14 10:10: set on recovery schedule / allucent_notes_20251202_153722: David Wiltberger on 2025-12-02 06:45: Grating install not complete for installation / allucent_notes_20251209_203830: David Wiltberger on 2025-12-02 06:45: Grating install not complete for installation / allucent_notes_20251216_165335: David Wiltberger on 2025-12-02 06:45: Grating install not complete for installation / allucent_notes: 2025-12-02 06:45 - User: David Wiltberger - Date Added: 2025-12-02 06:45 - Note: Grating install not complete for installation
- QTS-1001740: allucent_notes: David Wiltberger on 2025-08-19 09:08: changed pick order / allucent_notes_20251014_152335: David Wiltberger on 2025-08-19 09:08: changed pick order / David Wiltberger on 2025-09-02 10:09: Moving to accommodate roofing in Zone 1 / David Wiltberger on 2025-09-24 04:09: BAM not completed Potential Delay / David Wiltberger on 2025-09-30 12:09: BAM did not complete / David Wiltberger on 2025-10-14 10:10: set on recovery schedule / allucent_notes_20251202_153722: David Wiltberger on 2025-12-02 06:45: Grating install not complete for installation / allucent_notes_20251209_203830: David Wiltberger on 2025-12-02 06:45: Grating install not complete for installation / allucent_notes_20251216_165335: David Wiltberger on 2025-12-02 06:45: Grating install not complete for installation / allucent_notes: 2025-12-02 06:45 - User: David Wiltberger - Date Added: 2025-12-02 06:45 - Note: Grating install not complete for installation
- QTS-1001750: allucent_notes: David Wiltberger on 2025-08-19 09:08: changed pick order / allucent_notes_20251014_152335: David Wiltberger on 2025-08-19 09:08: changed pick order / David Wiltberger on 2025-09-02 10:09: Moving to accommodate roofing in Zone 1 / David Wiltberger on 2025-09-24 04:09: BAM not completed Potential Delay / David Wiltberger on 2025-09-30 12:09: BAM did not complete / David Wiltberger on 2025-10-14 10:10: set on recovery schedule / allucent_notes_20251202_153722: David Wiltberger on 2025-12-02 06:45: Grating install not complete for installation / allucent_notes_20251209_203830: David Wiltberger on 2025-12-02 06:45: Grating install not complete for installation / allucent_notes_20251216_165335: David Wiltberger on 2025-12-02 06:45: Grating install not complete for installation / allucent_notes: 2025-12-02 06:45 - User: David Wiltberger - Date Added: 2025-12-02 06:45 - Note: Grating install not complete for installation
- QTS-1001760: allucent_notes: David Wiltberger on 2025-08-19 09:08: changed pick order / allucent_notes_20251014_152335: David Wiltberger on 2025-08-19 09:08: changed pick order / David Wiltberger on 2025-09-02 10:09: Moving to accommodate roofing in Zone 1 / David Wiltberger on 2025-09-24 04:09: BAM not completed Potential Delay / David Wiltberger on 2025-09-30 12:09: BAM did not complete / David Wiltberger on 2025-10-14 10:10: set on recovery schedule / allucent_notes_20251202_153722: David Wiltberger on 2025-12-02 06:45: Grating install not complete for installation / allucent_notes_20251209_203830: David Wiltberger on 2025-12-02 06:45: Grating install not complete for installation / allucent_notes_20251216_165335: David Wiltberger on 2025-12-02 06:45: Grating install not complete for installation / allucent_notes: 2025-12-02 06:45 - User: David Wiltberger - Date Added: 2025-12-02 06:45 - Note: Grating install not complete for installation
- QTS-1001720: allucent_notes: David Wiltberger on 2025-08-19 09:08: changed pick order / allucent_notes_20251014_152335: David Wiltberger on 2025-08-19 09:08: changed pick order / David Wiltberger on 2025-09-02 10:09: Moving to accommodate roofing in Zone 1 / David Wiltberger on 2025-09-24 04:09: BAM not completed Potential Delay / David Wiltberger on 2025-09-30 12:09: BAM did not complete / David Wiltberger on 2025-10-14 10:10: set on recovery schedule / allucent_notes_20251202_153722: David Wiltberger on 2025-12-02 06:45: Grating install not complete for installation / allucent_notes_20251209_203830: David Wiltberger on 2025-12-02 06:45: Grating install not complete for installation / allucent_notes_20251216_165335: David Wiltberger on 2025-12-02 06:45: Grating install not complete for installation / allucent_notes: 2025-12-02 06:45 - User: David Wiltberger - Date Added: 2025-12-02 06:45 - Note: Grating install not complete for installation
- QTS-11091: allucent_notes_20251014_152335: Jason Johnston on 2025-09-30 14:09: Aligning with 2100 / Jason Johnston on 2025-10-14 09:10: Rain delay / allucent_notes: 2025-09-30 14:09 - User: Jason Johnston - Date Added: 2025-09-30 14:09 - Note: Aligning with 2100 / 2025-10-14 09:10 - User: Jason Johnston - Date Added: 2025-10-14 09:10 - Note: Rain delay
- QTS-9921: allucent_notes_20251014_152335: Jason Johnston on 2025-10-14 09:10: Done early / allucent_notes: 2025-10-14 09:10 - User: Jason Johnston - Date Added: 2025-10-14 09:10 - Note: Done early
- QTS-12521: allucent_notes_20251014_152335: Jason Johnston on 2025-10-14 09:10: First half of generator pads pouring / Jason Johnston on 2025-10-14T16:30:46.458Z: Second half of generator pads pouring / allucent_notes_20251021_145627: Jason Johnston on 2025-10-14 09:10: First half of generator pads pouring / Jason Johnston on 2025-10-14T16:30:46.458Z: Second half of generator pads pouring / allucent_notes_20251027_224008: Jason Johnston on 2025-10-14 09:10: First half of generator pads pouring / Jason Johnston on 2025-10-14T16:30:46.458Z: Second half of generator pads pouring / allucent_notes: 2025-10-14 09:10 - User: Jason Johnston - Date Added: 2025-10-14 09:10 - Note: First half of generator pads pouring / 2025-10-14T16:30:46.458Z - User: Jason Johnston - Date Added: 2025-10-14T16:30:46.458Z - Note: Second half of generator pads pouring
- QTS-6391: allucent_notes_20251014_152335: Jason Johnston on 2025-10-14 09:10: rain delay / allucent_notes_20251021_145627: Jason Johnston on 2025-10-14 09:10: rain delay / allucent_notes: 2025-10-14 09:10 - User: Jason Johnston - Date Added: 2025-10-14 09:10 - Note: rain delay
- QTS-13541: allucent_notes_20251104_160200: Jason Johnston on 2025-11-04 10:11: Last 5 PODs to be set 11/5 and 11/6. / allucent_notes_20251111_182405: Jason Johnston on 2025-11-04 10:11: Last 5 PODs to be set 11/5 and 11/6. / allucent_notes_20251118_192630: Jason Johnston on 2025-11-04 10:11: Last 5 PODs to be set 11/5 and 11/6. / allucent_notes: 2025-11-04 10:11 - User: Jason Johnston - Date Added: 2025-11-04 10:11 - Note: Last 5 PODs to be set 11/5 and 11/6.
- QTS-41241: allucent_notes_20251111_182405: Jason Johnston on 2025-11-11 14:11: Set early. / allucent_notes_20251118_192630: Jason Johnston on 2025-11-11 14:11: Set early. / allucent_notes: 2025-11-11 14:11 - User: Jason Johnston - Date Added: 2025-11-11 14:11 - Note: Set early.
- QTS-15861: allucent_notes_20251111_182405: Jason Johnston on 2025-11-11 14:11: Tie to F gen. / allucent_notes_20251118_192630: Jason Johnston on 2025-11-11 14:11: Tie to F gen. / allucent_notes: 2025-11-11 14:11 - User: Jason Johnston - Date Added: 2025-11-11 14:11 - Note: Tie to F gen.

| ID | WBS | Activity | Duration | Start | Finish | Predecessors | Complete | Remaining | Planned start | Planned finish | Total float | Free float | Calendar | Subcontractor | Level | Location | Baseline | Layton Responsible Party | Phase-1 | Project Section | Allucent CSI Group | Project Section-1 | Phase-1-1 |
| --- | --- | --- | --- | --- | --- | --- | --- | --- | --- | --- | --- | --- | --- | --- | --- | --- | --- | --- | --- | --- | --- | --- | --- |
|  | 1 | **Fragnet Install of Top Hats in PODs** |  | 2025-11-03 | 2026-01-21 |  |  |  |  |  |  |  |  |  |  |  |  |  |  |  |  |  |  |
| QTS-1001420 |  | Received Pods Without Top Hats Installed or Present | 1d | 2025-11-03 A | 2025-11-03 A | QTS-1030 SS | 100% |  |  |  |  |  |  | Rosendin Electric, Inc | Level 2 | Gen Yard | IGMP | Scott Masterson | Phase 1 | Construction | 01ADMIN |  |  |
| QTS-1001430 |  | Procure Missing Top Hats | 26d | 2025-11-04 A | 2025-12-11 A | QTS-1001420 | 100% |  |  |  |  |  |  | Rosendin Electric, Inc | Level 2 | Gen Yard | IGMP | Scott Masterson | Phase 1 | Construction | 01ADMIN |  |  |
| QTS-1001630 |  | Pull Wire from Transformer to POD | 5d | 2025-11-19 A | 2025-11-25 A | QTS-1001450 | 100% |  |  |  |  |  |  | Rosendin Electric, Inc | Level 2 | Gen Yard | IGMP | Scott Masterson | Phase 1 | Construction | 01ADMIN |  |  |
| QTS-1001440 |  | Vendor On Site to Install Top Hats | 11d | 2025-12-12 A | 2026-01-02 A | QTS-1001430 | 100% |  | 2025-12-12 | 2025-12-31 |  |  |  | Rosendin Electric, Inc | Level 2 | Gen Yard | IGMP | Scott Masterson | Phase 1 | Construction | 01ADMIN |  |  |
| QTS-1001450 |  | Install Top Hats (Tie to Wire pull) | 5d | 2026-01-05 A | 2026-01-09 A | QTS-1001440 | 100% |  |  |  |  |  |  | Rosendin Electric, Inc | Level 2 | Gen Yard | IGMP | Scott Masterson | Phase 1 | Construction | 01ADMIN |  |  |
| QTS-1001640 |  | Pull Wire from Generator to POD | 5d | 2026-01-14 | 2026-01-21 | QTS-1001630, QTS-1001630 FF |  |  |  |  | 12d | 0d |  | Rosendin Electric, Inc | Level 2 | Gen Yard | IGMP | Scott Masterson | Phase 1 | Construction | 01ADMIN |  |  |
|  | 2 | **Remaining Scope** |  | 2025-12-08 | 2026-02-05 |  |  |  |  |  |  |  |  |  |  |  |  |  |  |  |  |  |  |
| QTS-1671 |  | DH 1100 / Mechanical Yard // Install FRP Platforms | 10d | 2025-12-08 A | 2026-01-07 A | QTS-13541, QTS-15861, QTS-1321 | 100% |  | 2025-12-08 | 2025-12-18 |  |  | QTS-PHX3 DC1 - 6 day w/ Holidays | Advantic Building Group, LLC | Level 1 | Gen Yard | IGMP | Ron Carroll |  | Construction | 01ADMIN | Construction | Phase 1 |
| QTS-42381 |  | DH 1100 / Mechanical Yard // Wire Pull for MV | 6d | 2025-12-10 A | 2025-12-17 A | QTS-42371, QTS-41241, QTS-41231 | 100% |  |  |  |  |  |  | Oregon Electric Group | Level 2 | Gen Yard | IGMP | Scott Masterson |  | Construction | 01ADMIN | Construction | Phase 1 |
| QTS-15111 |  | DH 1100 / Mechanical Yard // Install Raceway from Transformers to UPS Pods | 5d | 2025-12-12 A | 2025-12-18 A | QTS-14481, QTS-41241 | 100% |  |  |  |  |  |  | Rosendin Electric, Inc | Level 1 | Gen Yard | IGMP | Scott Masterson |  | Construction | 01ADMIN | Construction | Phase 1 |
| QTS-42781 |  | DH 1100 / Mechanical Yard // Terminate MV at Transformers | 10d | 2025-12-18 A | 2026-01-10 A | QTS-42381 | 100% |  | 2025-12-18 | 2025-12-30 |  |  | QTS-PHX3 DC1 - 6 day w/ Holidays | Oregon Electric Group | Level 2 | Gen Yard | IGMP | Scott Masterson |  | Construction | 01ADMIN | Construction | Phase 1 |
| QTS-15851 |  | DH 1100 / Mechanical Yard // Install Raceway from Generators to UPS Pods | 5d | 2026-01-09 A | 2026-01-14 | QTS-41241, QTS-49971, QTS-41231, QTS-41211 FF | 100% | 0d |  |  | 20d | 6d | QTS-PHX3 DC1 - 6 day w/ Holidays | Rosendin Electric, Inc | Level 1 | Gen Yard | IGMP | Scott Masterson |  | Construction | 01ADMIN | Construction | Phase 1 |
| QTS-15841 |  | DH 1100 / Mechanical Yard // Terminate from Transformers to UPS Pods | 10d | 2026-01-12 A | 2026-01-14 | QTS-15111, QTS-42381, QTS-1001630 | 100% | 0d | 2026-01-12 | 2026-01-23 | 17d | 1d | QTS-PHX3 DC1 - 6 day w/ Holidays | Rosendin Electric, Inc | Level 1 | Gen Yard | IGMP | Scott Masterson |  | Construction | 01ADMIN | Construction | Phase 1 |
| QTS-17351 |  | DH 1100 / Mechanical Yard // Terminate from Generators to UPS Pods | 10d | 2026-01-22 | 2026-02-02 | QTS-15851, QTS-1001640 |  |  |  |  | 14d | 0d | QTS-PHX3 DC1 - 6 day w/ Holidays | Rosendin Electric, Inc | Level 1 | Gen Yard | IGMP | Scott Masterson |  | Construction | 01ADMIN | Construction | Phase 1 |
| QTS-1000280 |  | DH 1100 / Mechanical Yard // OFCI - L2 SET IN PLACE - Eq Type # - 2500KW Generator SCR - 7 units | 5d | 2026-01-31 | 2026-02-05 | QTS-39801, QTS-39841, QTS-39881, QTS-40401, QTS-40601, QTS-40801, QTS-41001 |  |  |  |  | 34d | 0d | QTS-PHX3 DC1 - 6 day w/ Holidays | Rosendin Electric, Inc | Level 2 | Gen Yard |  | Scott Masterson |  | Construction | 01ADMIN | Construction | Phase 1 |
| QTS-1001190 |  | DH 1100 / Mechanical Yard // Pressure Test Generator Tanks | 2d | 2026-02-04 | 2026-02-05 | QTS-1000280 FF |  |  |  |  | 34d | 10d | QTS-PHX3 DC1 - 6 day w/ Holidays | Rosendin Electric, Inc | Level 2 | Gen Yard | IGMP | Dave Wiltberger | Phase 1 | Construction | 01ADMIN |  |  |
|  | 6 | **DH 1100 / Commissioning** |  |  |  |  |  |  |  |  |  |  |  |  |  |  |  |  |  |  |  |  |  |
|  | 2 | **Level 3 Energization & Prefunctional Testing** |  |  |  |  |  |  |  |  |  |  |  |  |  |  |  |  |  |  |  |  |  |
|  | 1 | **Electrical** |  |  |  |  |  |  |  |  |  |  |  |  |  |  |  |  |  |  |  |  |  |
|  | 2 | **Mechanical** |  |  |  |  |  |  |  |  |  |  |  |  |  |  |  |  |  |  |  |  |  |
|  | 4 | **Level 4 Functional Testing** |  |  |  |  |  |  |  |  |  |  |  |  |  |  |  |  |  |  |  |  |  |
|  | 3 | **Level 5 Integrated Systems Testing** |  |  |  |  |  |  |  |  |  |  |  |  |  |  |  |  |  |  |  |  |  |
|  | 6 | **Data Hall 2200 (9MW)** |  | 2025-08-11 | 2026-03-27 |  |  |  |  |  |  |  |  |  |  |  |  |  |  |  |  |  |  |
| QTS-1821 |  | DH 2200 // Prime & Paint Exposed Structure | 10d | 2025-08-27 A | 2025-09-10 A | QTS-21711, QTS-21521 | 100% |  |  |  |  |  |  |  |  | DH2200 | IGMP | Doug Hayes |  | Construction | 01ADMIN | Construction | Phase 2 |
| QTS-4581 |  | DH 2200 // Install Fire Sprinkler | 8d | 2025-09-24 A | 2025-10-17 A | QTS-1821, QTS-21711 | 100% |  | 2025-09-24 | 2025-10-03 |  |  |  | Olympic West Fire Protection |  | DH2200 | IGMP | Dave Wiltberger |  | Construction | 01ADMIN | Construction | Phase 2 |
| QTS-6911 |  | DH 2200 // Install Fire Caulking | 3d | 2025-09-24 A | 2025-09-26 A | QTS-1821, QTS-4581 SS | 100% |  |  |  |  |  |  |  |  | DH2200 | IGMP | Doug Hayes |  | Construction | 01ADMIN | Construction | Phase 2 |
| QTS-6901 |  | DH 2200 // Establish Control & Layout Walls | 5d | 2025-09-29 A | 2025-10-08 A | QTS-1821, QTS-6911 | 100% |  | 2025-09-29 | 2025-10-03 |  |  |  |  |  | DH2200 | IGMP | Doug Hayes |  | Construction | 01ADMIN | Construction | Phase 2 |
| QTS-8591 |  | DH 2200 // Perimeter Insulation | 6d | 2025-10-13 A | 2025-10-20 A | QTS-6911, QTS-6901 FF, QTS-19611 | 100% |  |  |  |  |  |  |  |  | DH2200 | IGMP | Ron Carroll |  | Construction | 01ADMIN | Construction | Phase 2 |

Notes:
- QTS-1001420: allucent_notes_20251209_203830: Jason Johnston on 2025-12-09 20:30: Need update from team / allucent_notes: 2025-12-09 20:30 - User: Jason Johnston - Date Added: 2025-12-09 20:30 - Note: Need update from team
- QTS-1001430: allucent_notes_20251209_203830: Jason Johnston on 2025-12-09 20:30: Need update from team / allucent_notes: 2025-12-09 20:30 - User: Jason Johnston - Date Added: 2025-12-09 20:30 - Note: Need update from team
- QTS-1001630: allucent_notes_20251209_203830: Jason Johnston on 2025-12-09 20:30: Need update from team / allucent_notes: 2025-12-09 20:30 - User: Jason Johnston - Date Added: 2025-12-09 20:30 - Note: Need update from team
- QTS-1001440: allucent_notes_20251209_203830: Jason Johnston on 2025-12-09 20:30: Need update from team / allucent_notes: 2025-12-09 20:30 - User: Jason Johnston - Date Added: 2025-12-09 20:30 - Note: Need update from team
- QTS-1001450: allucent_notes_20251209_203830: Jason Johnston on 2025-12-09 20:30: Need update from team / allucent_notes: 2025-12-09 20:30 - User: Jason Johnston - Date Added: 2025-12-09 20:30 - Note: Need update from team
- QTS-1001640: allucent_notes_20251209_203830: Jason Johnston on 2025-12-09 20:30: Need update from team / allucent_notes: 2025-12-09 20:30 - User: Jason Johnston - Date Added: 2025-12-09 20:30 - Note: Need update from team
- QTS-1671: allucent_notes_20251230_164549: Jason Johnston on 2025-12-30 16:42: No update / allucent_notes: 2025-12-30 16:42 - User: Jason Johnston - Date Added: 2025-12-30 16:42 - Note: No update
- QTS-42381: allucent_notes_20251230_164549: Jason Johnston on 2025-11-11 14:11: Tie to F gen. / Jason Johnston on 2025-11-19T02:24:46.307Z: undo / Jason Johnston on 2025-12-09 20:30: Need update from team / allucent_notes_20251111_182405: Jason Johnston on 2025-11-11 14:11: Tie to F gen. / allucent_notes_20251118_192630: Jason Johnston on 2025-11-11 14:11: Tie to F gen. / Jason Johnston on 2025-11-19T02:24:46.307Z: undo / allucent_notes_20251202_153722: Jason Johnston on 2025-11-11 14:11: Tie to F gen. / Jason Johnston on 2025-11-19T02:24:46.307Z: undo / allucent_notes_20251209_203830: Jason Johnston on 2025-11-11 14:11: Tie to F gen. / Jason Johnston on 2025-11-19T02:24:46.307Z: undo / Jason Johnston on 2025-12-09 20:30: Need update from team / allucent_notes_20251216_165335: Jason Johnston on 2025-11-11 14:11: Tie to F gen. / Jason Johnston on 2025-11-19T02:24:46.307Z: undo / Jason Johnston on 2025-12-09 20:30: Need update from team / allucent_notes: 2025-11-11 14:11 - User: Jason Johnston - Date Added: 2025-11-11 14:11 - Note: Tie to F gen. / 2025-11-19T02:24:46.307Z - User: Jason Johnston - Date Added: 2025-11-19T02:24:46.307Z - Note: undo / 2025-12-09 20:30 - User: Jason Johnston - Date Added: 20
- QTS-15111: allucent_notes_20251230_164549: Jason Johnston on 2025-11-19T02:24:50.297Z: undo / allucent_notes_20251118_192630: Jason Johnston on 2025-11-19T02:24:50.297Z: undo / allucent_notes_20251209_203830: Jason Johnston on 2025-11-19T02:24:50.297Z: undo / allucent_notes_20251216_165335: Jason Johnston on 2025-11-19T02:24:50.297Z: undo / allucent_notes: 2025-11-19T02:24:50.297Z - User: Jason Johnston - Date Added: 2025-11-19T02:24:50.297Z - Note: undo
- QTS-15851: allucent_notes_20251230_164549: Jason Johnston on 2025-11-11 14:11: Tie to F gen. / Jason Johnston on 2025-11-19T02:24:42.865Z: undo / Jason Johnston on 2025-12-09 20:30: Need update from team / Scott Masterson on 2025-12-16 16:48: Need to identify the number of conduits and the durations. but this has not started yet. Scott owes dates and durations. / David Wiltberger on 2025-12-30 16:04: prefab late / allucent_notes_20251111_182405: Jason Johnston on 2025-11-11 14:11: Tie to F gen. / allucent_notes_20251118_192630: Jason Johnston on 2025-11-11 14:11: Tie to F gen. / Jason Johnston on 2025-11-19T02:24:42.865Z: undo / allucent_notes_20251202_153722: Jason Johnston on 2025-11-11 14:11: Tie to F gen. / Jason Johnston on 2025-11-19T02:24:42.865Z: undo / allucent_notes_20251209_203830: Jason Johnston on 2025-11-11 14:11: Tie to F gen. / Jason Johnston on 2025-11-19T02:24:42.865Z: undo / Jason Johnston on 2025-12-09 20:30: Need update from team / allucent_notes_20251216_165335: Jason Johnston on 2025-11-11 14:11: Tie to F gen. / Jason Johnston on 2025-11-19T02:24:42.865Z: undo / Jason Johnston on 2025-12-09 20:30: Need update from team / Scott Masterson on 2025-12-16 16:48: Need to identify the number of conduits and the durations. but this has not started yet. Scott owes dates and durations. / allucent_notes: 2025-11-11 14:11 - User: Jason Johnston - Date Added: 2025-11-11 14:11 - Note: Tie to F gen. / 2025-11-19T02:24:42.865Z - User: Jason Johnston - Date Added: 2025-11-19T02:24:42.865Z - Note: undo / 2025-12-09 20:30 - User: Jason Johnston - Date Added: 20
- QTS-4581: allucent_notes_20251014_152335: David Wiltberger on 2025-09-24 04:09: Not completed Potential Delay / David Wiltberger on 2025-10-07 15:10: several Clashes need resolution / allucent_notes_20251021_145627: David Wiltberger on 2025-09-24 04:09: Not completed Potential Delay / David Wiltberger on 2025-10-07 15:10: several Clashes need resolution / allucent_notes: 2025-09-24 04:09 - User: David Wiltberger - Date Added: 2025-09-24 04:09 - Note: Not completed Potential Delay / 2025-10-07 15:10 - User: David Wiltberger - Date Added: 2025-10-07 15:10 - Note: several Clashes need resolution

| ID | WBS | Activity | Duration | Start | Finish | Predecessors | Complete | Remaining | Planned start | Planned finish | Total float | Free float | Constraint | Calendar | Location | Project Section-1 | Phase-1-1 | Baseline | Layton Responsible Party | Project Section | Allucent CSI Group | Subcontractor | Level |
| --- | --- | --- | --- | --- | --- | --- | --- | --- | --- | --- | --- | --- | --- | --- | --- | --- | --- | --- | --- | --- | --- | --- | --- |
|  | 3 | **Data Hall 2200** |  | 2025-11-26 | 2026-03-27 |  |  |  |  |  |  |  |  |  |  |  |  |  |  |  |  |  |  |
| QTS-10361 |  | DH 2200 // Frame Data Hall / Corridor Wall 2017-2018 (West) | 7d | 2025-11-26 A | 2025-12-08 A | QTS-6911, QTS-11571 | 100% |  |  |  |  |  |  |  | DH2200 | Construction | Phase 2 | IGMP | Sean Waisner | Construction | 01ADMIN |  |  |
| QTS-102110 |  | DH 2200 // Top Out / Corridor Wall 2015-2016 (East) - Data Hall Side | 3d | 2026-01-20 | 2026-01-22 | QTS-10351 |  |  |  |  | 14d | 0d |  | QTS-PHX3 DC1 - 6 day w/ Holidays | DH2100 | Construction |  | IGMP | Sean Waisner | Construction | 01ADMIN | Performance Contracting, Inc. | Level 2 |
| QTS-11161 |  | DH 2200 // Rough In-Wall Electrical (West) | 5d | 2026-01-20 | 2026-01-24 | QTS-10351, QTS-10361, QTS-38981 |  |  |  |  | 55d | 1d |  | QTS-PHX3 DC1 - 6 day w/ Holidays | DH2200 | Construction | Phase 2 | IGMP | Scott Masterson | Construction | 01ADMIN | Rosendin Electric, Inc |  |
| QTS-11181 |  | DH 2200 // Rough In-Wall Electrical (East) | 5d | 2026-01-20 | 2026-01-24 | QTS-10351 |  |  |  |  | 55d | 1d |  | QTS-PHX3 DC1 - 6 day w/ Holidays | DH2200 | Construction | Phase 2 | IGMP | Scott Masterson | Construction | 01ADMIN | Rosendin Electric, Inc |  |
| QTS-102120 |  | DH 2200 // One Side Data Hall / Corridor Wall 2015-2016 (East) - Data Hall Side | 3d | 2026-01-23 | 2026-01-26 | QTS-102110 |  |  |  |  | 14d | 0d |  | QTS-PHX3 DC1 - 6 day w/ Holidays | DH2100 | Construction |  | IGMP | Sean Waisner | Construction | 01ADMIN | Performance Contracting, Inc. | Level 2 |
| QTS-11171 |  | DH 2200 // Install Hollow Metal Frames (West) | 1d | 2026-01-23 | 2026-01-23 | QTS-10361 |  |  |  |  | 57d | 3d | start on or after 2026-01-23 | QTS-PHX3 DC1 - 6 day w/ Holidays | DH2200 | Construction | Phase 2 | IGMP | Sean Waisner | Construction | 01ADMIN | Performance Contracting, Inc. |  |
| QTS-1000580 |  | DH 2200 // Install Overhead Conduit - Electrical | 5d | 2026-01-27 | 2026-01-31 | QTS-120000, QTS-1000540 |  |  |  |  | 13d | 0d |  | QTS-PHX3 DC1 - 6 day w/ Holidays | DH2100 | Construction |  | IGMP | Sean Waisner | Construction | 01ADMIN |  | Level 2 |
| QTS-1000590 |  | DH 2200 // Install Overhead Conduit - Controls | 5d | 2026-01-27 | 2026-01-31 | QTS-1000580 SS, QTS-120000 |  |  |  |  | 13d | 0d |  | QTS-PHX3 DC1 - 6 day w/ Holidays | DH2100 | Construction |  | IGMP | Sean Waisner | Construction | 01ADMIN |  | Level 2 |
| QTS-10351 |  | DH 2200 // Frame Data Hall / Corridor Wall 2015-2016 (East) | 5d | 2026-01-27 A | 2026-01-17 | QTS-6901, QTS-4581, QTS-6911, QTS-8591, QTS-10361 | 20% | 4d | 2026-01-27 | 2026-01-31 | 6d | 0d |  | QTS-PHX3 DC1 - 6 day w/ Holidays | DH2200 | Construction | Phase 2 | IGMP | Sean Waisner | Construction | 01ADMIN | Performance Contracting, Inc. |  |
| QTS-12181 |  | DH 2200 // In Wall Inspection | 1d | 2026-01-27 | 2026-01-27 | QTS-11161, QTS-11181, QTS-102120 |  |  |  |  | 54d | 0d |  | QTS-PHX3 DC1 - 6 day w/ Holidays | DH2200 | Construction | Phase 2 | IGMP | Dave Wiltberger | Construction | 01ADMIN | Bel-Aire Mechanical, LLC |  |
| QTS-12691 |  | DH 2200 // Tape, & Finish Drywall (East) - Data Hall Side | 5d | 2026-01-27 | 2026-01-31 | QTS-102120 |  |  |  |  | 14d | 0d |  | QTS-PHX3 DC1 - 6 day w/ Holidays | DH2200 | Construction | Phase 2 | IGMP | Sean Waisner | Construction | 01ADMIN | Performance Contracting, Inc. |  |
| QTS-12401 |  | DH 2200 // Hang Drywall (West) - Corridor Side | 2d | 2026-01-28 | 2026-01-29 | QTS-11161, QTS-10351, QTS-10361, QTS-11171, QTS-12181 |  |  |  |  | 54d | 0d |  | QTS-PHX3 DC1 - 6 day w/ Holidays | DH2200 | Construction | Phase 2 | IGMP | Sean Waisner | Construction | 01ADMIN | Performance Contracting, Inc. |  |
| QTS-12681 |  | DH 2200 // Tape & Finish Drywall (West) - Corridor Side | 5d | 2026-01-30 | 2026-02-04 | QTS-12401 |  |  |  |  | 54d | 0d |  | QTS-PHX3 DC1 - 6 day w/ Holidays | DH2200 | Construction | Phase 2 | IGMP | Sean Waisner | Construction |  | Performance Contracting, Inc. |  |
| QTS-102170 |  | DH 2200 // Insulate & Vapor Barrier Data Hall / Corridor Wall 2015-2016 (East) | 2d | 2026-02-02 | 2026-02-03 | QTS-102120, QTS-12691 |  |  |  |  | 50d | 0d |  | QTS-PHX3 DC1 - 6 day w/ Holidays | DH2100 | Construction |  | IGMP | Sean Waisner | Construction | 01ADMIN | Performance Contracting, Inc. | Level 2 |
| QTS-13361 |  | DH 2200 // Paint Walls (East) - Data Hall Side | 2d | 2026-02-02 | 2026-02-03 | QTS-12691 |  |  |  |  | 14d | 0d |  | QTS-PHX3 DC1 - 6 day w/ Holidays | DH2200 | Construction | Phase 2 | IGMP | Sean Waisner | Construction |  | Pennington Painting Company, LLC |  |
| QTS-12411 |  | DH 2200 // Hang Drywall (East) - Corridor Side | 2d | 2026-02-04 | 2026-02-05 | QTS-102170 |  |  |  |  | 50d | 0d |  | QTS-PHX3 DC1 - 6 day w/ Holidays | DH2200 | Construction | Phase 2 | IGMP | Sean Waisner | Construction |  | Performance Contracting, Inc. |  |
| QTS-14141 |  | DH 2200 // Install Structural Ceiling Grid - North | 10d | 2026-02-04 | 2026-02-14 | QTS-13721, QTS-13011, QTS-13361, QTS-1000590, QTS-1000580 |  |  |  |  | 14d | 0d |  | QTS-PHX3 DC1 - 6 day w/ Holidays | DH2200 | Construction | Phase 2 | IGMP | Sean Waisner | Construction | 01ADMIN | Performance Contracting, Inc. |  |
| QTS-102240 |  | DH 2200 // Vapor Barrier & Insulation (West) | 2d | 2026-02-05 | 2026-02-06 | QTS-12681 |  |  |  |  | 54d | 0d |  | QTS-PHX3 DC1 - 6 day w/ Holidays | DH2100 | Construction |  | IGMP | Sean Waisner | Construction | 01ADMIN | Performance Contracting, Inc. | Level 2 |
| QTS-102150 |  | DH 2200 // Tape, & Finish Drywall (East) - Corridor Side | 5d | 2026-02-06 | 2026-02-11 | QTS-12411 |  |  |  |  | 50d | 0d |  | QTS-PHX3 DC1 - 6 day w/ Holidays | DH1100 | Construction | Phase 1 | IGMP | Sean Waisner | Construction | 01ADMIN | Performance Contracting, Inc. | Level 1 |
| QTS-102180 |  | DH 2200 // Frame Data Hall / Corridor Wall 2015-2016 (East) - 14x14 Leave Outs | 1d | 2026-02-07 | 2026-02-07 | QTS-14191, QTS-46561, QTS-15281, QTS - 7540 |  |  |  |  | 66d | 0d |  | QTS-PHX3 DC1 - 6 day w/ Holidays | DH2100 | Construction |  | IGMP | Sean Waisner | Construction | 01ADMIN | Performance Contracting, Inc. | Level 2 |
| QTS-102220 |  | DH 2200 // Hang Drywall (West) - Data Hall Side | 2d | 2026-02-07 | 2026-02-09 | QTS-102240 |  |  |  |  | 54d | 0d |  | QTS-PHX3 DC1 - 6 day w/ Holidays | DH1100 | Construction | Phase 1 | IGMP | Sean Waisner | Construction | 01ADMIN | Performance Contracting, Inc. | Level 1 |
| QTS-11191 |  | DH 2200 // Install Hollow Metal Frames (East) - 14x14 Leave Out | 1d | 2026-02-07 | 2026-02-07 | QTS-10351, QTS-102180 FF |  |  |  |  | 66d | 0d |  | QTS-PHX3 DC1 - 6 day w/ Holidays | DH2200 | Construction | Phase 2 | IGMP | Sean Waisner | Construction | 01ADMIN | Performance Contracting, Inc. |  |
| QTS-102190 |  | DH 2200 // Hang Drywall Data Hall / Corridor Wall 2017-2018 (East) - 14x14 Leave Outs | 1d | 2026-02-09 | 2026-02-09 | QTS-102180, QTS-11191 |  |  |  |  | 66d | 0d |  | QTS-PHX3 DC1 - 6 day w/ Holidays | DH2100 | Construction |  | IGMP | Sean Waisner | Construction | 01ADMIN | Performance Contracting, Inc. | Level 2 |
| QTS-102200 |  | DH 2200 // Tape & Finish Drywall Data Hall / Corridor Wall 2017-2018 (East) - 14x14 Leave Outs | 5d | 2026-02-10 | 2026-02-14 | QTS-102190 |  |  |  |  | 66d | 0d |  | QTS-PHX3 DC1 - 6 day w/ Holidays | DH2100 | Construction |  | IGMP | Sean Waisner | Construction | 01ADMIN | Performance Contracting, Inc. | Level 2 |
| QTS-102230 |  | DH 2200 // Tape, & Finish Drywall (West) - Data Hall Side | 5d | 2026-02-10 | 2026-02-14 | QTS-102220 |  |  |  |  | 54d | 0d |  | QTS-PHX3 DC1 - 6 day w/ Holidays | DH1100 | Construction | Phase 1 | IGMP | Sean Waisner | Construction | 01ADMIN | Performance Contracting, Inc. | Level 1 |
| QTS-1003070 |  | DH 2200 // Install Structural Ceiling Grid - South | 10d | 2026-02-11 | 2026-02-21 | QTS-13361, QTS-14141 FF+6d |  |  |  |  | 14d | 0d |  | QTS-PHX3 DC1 - 6 day w/ Holidays | DH2200 | Construction | Phase 2 | IGMP | Sean Waisner | Construction | 01ADMIN | Performance Contracting, Inc. |  |
| QTS-102160 |  | DH 2200 // Paint Walls (East) - Corridor Side | 2d | 2026-02-12 | 2026-02-13 | QTS-102150 |  |  |  |  | 50d | 37d |  | QTS-PHX3 DC1 - 6 day w/ Holidays | DH1100 | Construction | Phase 1 | IGMP | Sean Waisner | Construction | 01ADMIN | Pennington Painting Company, LLC | Level 1 |
| QTS-102210 |  | DH 2200 // Paint Data Hall / Corridor Wall 2017-2018 (East) - 14x14 Leave Outs | 1d | 2026-02-16 | 2026-02-16 | QTS-102200 |  |  |  |  | 66d | 53d |  | QTS-PHX3 DC1 - 6 day w/ Holidays | DH2100 | Construction |  | IGMP | Sean Waisner | Construction | 01ADMIN | Pennington Painting Company, LLC | Level 2 |
| QTS-13351 |  | DH 2200 // Paint Walls (West) | 2d | 2026-02-16 | 2026-02-17 | QTS-12401, QTS-102230 |  |  |  |  | 54d | 0d |  | QTS-PHX3 DC1 - 6 day w/ Holidays | DH2200 | Construction | Phase 2 | IGMP | Sean Waisner | Construction |  | Pennington Painting Company, LLC |  |
| QTS-13731 |  | DH 2200 // Install Telecom Sleeves | 3d | 2026-02-18 | 2026-02-20 | QTS-13351, QTS-13361 |  |  |  |  | 54d | 24d |  | QTS-PHX3 DC1 - 6 day w/ Holidays | DH2200 | Construction | Phase 2 | IGMP | Scott Masterson | Construction |  | Rosendin Electric, Inc |  |
| QTS-14941 |  | DH 2200 // Install VESDA | 10d | 2026-02-23 | 2026-03-05 | QTS-1003070, QTS-14141 SS+3d, QTS-13361 |  |  |  |  | 14d | 0d |  | QTS-PHX3 DC1 - 6 day w/ Holidays | DH2200 | Construction | Phase 2 | IGMP | Scott Masterson | Construction |  | Rosendin Electric, Inc |  |
| QTS-16061 |  | DH 2200 // Install Overhead Lighting | 10d | 2026-02-25 | 2026-03-07 | QTS-1003070, QTS-14141, QTS-14941 FF+2d |  |  |  |  | 14d | 0d |  | QTS-PHX3 DC1 - 6 day w/ Holidays | DH2200 | Construction | Phase 2 | IGMP | Scott Masterson | Construction |  | Rosendin Electric, Inc |  |
| QTS-17541 |  | DH 2200 // Install Ceiling Tile | 7d | 2026-03-09 | 2026-03-16 | QTS-16061 |  |  |  |  | 14d | 0d |  | QTS-PHX3 DC1 - 6 day w/ Holidays | DH2200 | Construction | Phase 2 | IGMP | Sean Waisner | Construction |  | Performance Contracting, Inc. |  |
| QTS-17551 |  | DH 2200 // Install Fire Sprinkler Heads | 5d | 2026-03-09 | 2026-03-13 | QTS-16061 |  |  |  |  | 16d | 2d |  | QTS-PHX3 DC1 - 6 day w/ Holidays | DH2200 | Construction | Phase 2 | IGMP | Dave Wiltberger | Construction |  | Olympic West Fire Protection |  |
| QTS-18401 |  | DH 2200 // Install Temporary Hot Aisle Containment | 10d | 2026-03-17 | 2026-03-27 | QTS-17541, QTS-17551 |  |  |  |  | 14d | 1d |  | QTS-PHX3 DC1 - 6 day w/ Holidays | DH2200 | Construction | Phase 2 | IGMP | Sean Waisner | Construction |  |  |  |

Notes:
- QTS-102110: allucent_notes_20251014_152335: Zack Goertz on 2025-09-08T20:45:26.651Z: Not started. PCI has been put on notice that they are behind / Jason Johnston on 2025-10-08 08:10: not done / allucent_notes: 2025-09-08T20:45:26.651Z - User: Zack Goertz - Date Added: 2025-09-08T20:45:26.651Z - Note: Not started. PCI has been put on notice that they are behind / 2025-10-08 08:10 - User: Jason Johnston - Date Added: 2025-10-08 08:10 - Note: not done
- QTS-102120: allucent_notes_20251014_152335: Zack Goertz on 2025-09-08T20:45:26.651Z: Not started. PCI has been put on notice that they are behind / Jason Johnston on 2025-10-08 08:10: not done / allucent_notes: 2025-09-08T20:45:26.651Z - User: Zack Goertz - Date Added: 2025-09-08T20:45:26.651Z - Note: Not started. PCI has been put on notice that they are behind / 2025-10-08 08:10 - User: Jason Johnston - Date Added: 2025-10-08 08:10 - Note: not done
- QTS-11171: allucent_notes_20251230_164549: Jason Johnston on 2025-12-09 18:23: Need update from team / Jason Johnston on 2025-12-16 07:54: Pushing to complete this week. / David Wiltberger on 2025-12-30 16:17: no update / allucent_notes_20251209_203830: Jason Johnston on 2025-12-09 18:23: Need update from team / allucent_notes_20251216_165335: Jason Johnston on 2025-12-09 18:23: Need update from team / Jason Johnston on 2025-12-16 07:54: Pushing to complete this week. / allucent_notes: 2025-12-09 18:23 - User: Jason Johnston - Date Added: 2025-12-09 18:23 - Note: Need update from team / 2025-12-16 07:54 - User: Jason Johnston - Date Added: 2025-12-16 07:54 - Note: Pushing to complete this week. / 2025-12-30 16:17 - User: David Wiltber
- QTS-10351: allucent_notes_20251230_164549: Jason Johnston on 2025-10-21 11:10: Reallocated man power to zone 1 / Jason Johnston on 2025-10-27 16:10: Jake owes update / Jason Johnston on 2025-10-28 15:10: Move to after 2200 fan wall framing / Jason Johnston on 2025-12-09 18:24: Need update from team / Jason Johnston on 2025-12-16 07:56: Waiting for beam wrap to be complete. / David Wiltberger on 2025-12-30 16:17: no update / allucent_notes_20251021_145627: Jason Johnston on 2025-10-21 11:10: Reallocated man power to zone 1 / allucent_notes_20251027_224008: Jason Johnston on 2025-10-21 11:10: Reallocated man power to zone 1 / Jason Johnston on 2025-10-27 16:10: Jake owes update / allucent_notes_20251028_163138: Jason Johnston on 2025-10-21 11:10: Reallocated man power to zone 1 / Jason Johnston on 2025-10-27 16:10: Jake owes update / Jason Johnston on 2025-10-28 15:10: Move to after 2200 fan wall framing / allucent_notes_20251104_160200: Jason Johnston on 2025-10-21 11:10: Reallocated man power to zone 1 / Jason Johnston on 2025-10-27 16:10: Jake owes update / Jason Johnston on 2025-10-28 15:10: Move to after 2200 fan wall framing / allucent_notes_20251111_182405: Jason Johnston on 2025-10-21 11:10: Reallocated man power to zone 1 / Jason Johnston on 2025-10-27 16:10: Jake owes update / Jason Johnston on 2025-10-28 15:10: Move to after 2200 fan wall framing / allucent_notes_20251118_192630: Jason Johnston on 2025-10-21 11:10: Reallocated man power to zone 1 / Jason Johnston on 2025-10-27 16:10: Jake owes update / Jason Johnston on 2025-10-28 15:10: Move to after 2200 fan wall framing / allucent_notes_20251209_203830: Jason Johnston on 2025-10-21 11:10: Reallocated man power to zone 1 / Jason Johnston on 2025-10-27 16:10: Jake owes update / Jason Johnston on 2025-10-28 15:10: Move to after 2200 fan wall framing / Jason Johnston on 2025-12-09 18:24: Need update from team / allucent_notes_20251216_165335: Jason Johnston on 2025-10-21 11:10: Reallocated man power to zone 1 / Jason Johnston on 2025-10-27 16:10: Jake owes update / Jason Johnston on 2025-10-28 15:10: Move to after 2200 fan wall framing / Jason Johnston on 2025-12-09 18:24: Need update from team / Jason Johnston on 2025-12-16 07:56: Waiting for beam wrap to be complete. / allucent_notes: 2025-10-21 11:10 - User: Jason Johnston - Date Added: 2025-10-21 11:10 - Note: Reallocated man power to zone 1 / 2025-10-27 16:10 - User: Jason Johnston - Date Added: 2025-10-27 16:10 - Note: Jake owes update / 2025-10-28 15:10 - User: Jason Johnston -
- QTS-102170: allucent_notes_20251014_152335: Zack Goertz on 2025-09-08T20:45:26.651Z: Not started. PCI has been put on notice that they are behind / Jason Johnston on 2025-10-08 08:10: not done / allucent_notes: 2025-09-08T20:45:26.651Z - User: Zack Goertz - Date Added: 2025-09-08T20:45:26.651Z - Note: Not started. PCI has been put on notice that they are behind / 2025-10-08 08:10 - User: Jason Johnston - Date Added: 2025-10-08 08:10 - Note: not done
- QTS-102180: allucent_notes_20251014_152335: Zack Goertz on 2025-09-08T20:45:26.651Z: Not started. PCI has been put on notice that they are behind / Jason Johnston on 2025-10-08 08:10: not done / allucent_notes: 2025-09-08T20:45:26.651Z - User: Zack Goertz - Date Added: 2025-09-08T20:45:26.651Z - Note: Not started. PCI has been put on notice that they are behind / 2025-10-08 08:10 - User: Jason Johnston - Date Added: 2025-10-08 08:10 - Note: not done
- QTS-102190: allucent_notes_20251014_152335: Zack Goertz on 2025-09-08T20:45:26.651Z: Not started. PCI has been put on notice that they are behind / Jason Johnston on 2025-10-08 08:10: not done / allucent_notes: 2025-09-08T20:45:26.651Z - User: Zack Goertz - Date Added: 2025-09-08T20:45:26.651Z - Note: Not started. PCI has been put on notice that they are behind / 2025-10-08 08:10 - User: Jason Johnston - Date Added: 2025-10-08 08:10 - Note: not done
- QTS-102200: allucent_notes_20251014_152335: Zack Goertz on 2025-09-08T20:45:26.651Z: Not started. PCI has been put on notice that they are behind / Jason Johnston on 2025-10-08 08:10: not done / allucent_notes: 2025-09-08T20:45:26.651Z - User: Zack Goertz - Date Added: 2025-09-08T20:45:26.651Z - Note: Not started. PCI has been put on notice that they are behind / 2025-10-08 08:10 - User: Jason Johnston - Date Added: 2025-10-08 08:10 - Note: not done
- QTS-102210: allucent_notes_20251014_152335: Zack Goertz on 2025-09-08T20:45:26.651Z: Not started. PCI has been put on notice that they are behind / Jason Johnston on 2025-10-08 08:10: not done / allucent_notes: 2025-09-08T20:45:26.651Z - User: Zack Goertz - Date Added: 2025-09-08T20:45:26.651Z - Note: Not started. PCI has been put on notice that they are behind / 2025-10-08 08:10 - User: Jason Johnston - Date Added: 2025-10-08 08:10 - Note: not done

| ID | WBS | Activity | Duration | Start | Finish | Predecessors | Complete | Remaining | Planned start | Planned finish | Total float | Free float | Constraint | Calendar | Subcontractor | Location | Project Section-1 | Phase-1-1 | Baseline | Layton Responsible Party | Project Section | Allucent CSI Group | Level |
| --- | --- | --- | --- | --- | --- | --- | --- | --- | --- | --- | --- | --- | --- | --- | --- | --- | --- | --- | --- | --- | --- | --- | --- |
|  | 2 | **Gallery 2201 Mechanical** |  | 2025-10-01 | 2026-03-13 |  |  |  |  |  |  |  |  |  |  |  |  |  |  |  |  |  |  |
| QTS-13741 |  | DH 2200 / Mechanical Gallery 2201 // Install VESDA | 8d | 2025-10-01 A | 2025-10-10 A | QTS-1821 | 100% |  |  |  |  |  |  |  | Rosendin Electric, Inc | DH2200 | Construction | Phase 2 | IGMP | Scott Masterson | Construction | 01ADMIN |  |
| QTS-44461 |  | DH 2200 / Mechanical Gallery 2201 // Install OH Mechanical Hangers | 7d | 2025-10-01 A | 2025-10-09 A | QTS-1821 | 100% |  |  |  |  |  |  |  | Bel-Aire Mechanical, LLC | DH2100 | Construction |  | IGMP | Dave Wiltberger | Construction | 01ADMIN | Level 2 |
| QTS-8601 |  | DH 2200 / Mechanical Gallery 2201 // Frame for 2201-2202 Wall | 5d | 2025-10-13 A | 2025-10-24 A | QTS-6901, QTS-19611 | 100% |  | 2025-10-13 | 2025-10-17 |  |  |  |  |  | DH2200 | Construction | Phase 2 | IGMP | Doug Hayes | Construction | 01ADMIN |  |
| QTS-13751 |  | DH 2200 / Mechanical Gallery 2201 // Install OH Mechanical Piping | 10d | 2025-10-31 A | 2025-11-13 A | QTS-44461 | 100% |  |  |  |  |  |  |  | Bel-Aire Mechanical, LLC | DH2200 | Construction | Phase 2 | IGMP | Dave Wiltberger | Construction | 01ADMIN |  |
| QTS-1002470 |  | DH 2200 / Mechanical Gallery 2201 // Hang Drywall for 2201-2202 Wall - Elec Gallery - Top Out | 10d | 2025-12-31 A | 2026-01-05 A | QTS-8601 | 100% |  | 2025-12-31 | 2026-01-12 |  |  |  | QTS-PHX3 DC1 - 6 day w/ Holidays | Performance Contracting, Inc. | DH2200 | Construction | Phase 2 | IGMP | Sean Waisner | Construction | 01ADMIN |  |
| QTS-1002530 |  | DH 2200 / Mechanical Gallery 2201 // Hang Remaining Drywall for 2201-2202 Wall - Elec Gallery | 10d | 2026-01-05 A | 2026-01-05 A | QTS-8601 | 100% |  | 2026-01-09 | 2026-01-21 |  |  |  | QTS-PHX3 DC1 - 6 day w/ Holidays | Performance Contracting, Inc. | DH2200 | Construction | Phase 2 | IGMP | Sean Waisner | Construction | 01ADMIN |  |
| QTS-1002460 |  | DH 2200 / Mechanical Gallery 2201 // Paint 2201-2202 Wall - Elec Gallery - Top Out | 2d | 2026-01-14 | 2026-01-15 | QTS-8601 |  |  |  |  | 19d | 0d |  | QTS-PHX3 DC1 - 6 day w/ Holidays | Pennington Painting Company, LLC | DH2200 | Construction | Phase 2 | IGMP | Sean Waisner | Construction | 01ADMIN |  |
| QTS-1002560 |  | DH 2200 / Mechanical Gallery 2201 // Insulate Wall for 2201-2202 Wall - Mech Gallery - Remaining | 1d | 2026-01-14 | 2026-01-14 | QTS-8601 |  |  |  |  | 19d | 2d | start on or after 2026-01-08 | QTS-PHX3 DC1 - 6 day w/ Holidays | Bel-Aire Mechanical, LLC | DH2200 | Construction | Phase 2 | IGMP | Sean Waisner | Construction | 01ADMIN |  |
| QTS-1003100 |  | DH 2200 / Mechanical Gallery 2201 // Insulate for 2201-2202 Wall - Mech Gallery - Top Out | 3d | 2026-01-14 A | 2026-01-16 A | QTS-8601 | 100% |  |  |  |  |  | start on or after 2026-01-12 | QTS-PHX3 DC1 - 6 day w/ Holidays | Performance Contracting, Inc. | DH2200 | Construction | Phase 2 | IGMP | Sean Waisner | Construction | 01ADMIN |  |
| QTS-10391 |  | DH 2200 / Mechanical Gallery 2201 // In Wall Electrical Rough for 2201-2202 Wall | 2d | 2026-01-14 | 2026-01-15 | QTS-8601, QTS-38981 |  |  |  |  | 17d | 0d |  | QTS-PHX3 DC1 - 6 day w/ Holidays | Rosendin Electric, Inc | DH2200 | Construction | Phase 2 | IGMP | Scott Masterson | Construction | 01ADMIN |  |
| QTS-10401 |  | DH 2200 / Mechanical Gallery 2201 // Frame for Fan Wall | 2d | 2026-01-14 A | 2026-01-14 | QTS-8601 SS, QTS-10381, QTS-13751 | 100% | 0d | 2026-01-14 | 2026-01-15 | 11d | 0d | start on or after 2026-01-08 | QTS-PHX3 DC1 - 6 day w/ Holidays | Performance Contracting, Inc. | DH2200 | Construction | Phase 2 | IGMP | Sean Waisner | Construction | 01ADMIN |  |
| QTS-11581 |  | DH 2200 / Mechanical Gallery 2201 // In Wall Electrical Rough for Fan Wall | 2d | 2026-01-14 | 2026-01-15 | QTS-10401 |  |  |  |  | 18d | 0d |  | QTS-PHX3 DC1 - 6 day w/ Holidays | Rosendin Electric, Inc | DH2200 | Construction | Phase 2 | IGMP | Scott Masterson | Construction | 01ADMIN |  |
| QTS-1003090 |  | DH 2200 / Mechanical Gallery 2201 // Hang, Tape, & Finish Fan Wall - MG Side | 5d | 2026-01-16 A | 2026-01-17 A | QTS-10401 | 100% |  | 2026-01-16 | 2026-01-22 |  |  |  | QTS-PHX3 DC1 - 6 day w/ Holidays | Performance Contracting, Inc. | DH2200 | Construction | Phase 2 | IGMP | Sean Waisner | Construction | 01ADMIN |  |
| QTS-10891 |  | DH 2200 / Mechanical Gallery 2201 // In Wall Inspection for 2201-2202 Wall | 1d | 2026-01-16 | 2026-01-16 | QTS-10391 |  |  |  |  | 17d | 0d |  | QTS-PHX3 DC1 - 6 day w/ Holidays | Bel-Aire Mechanical, LLC | DH2200 | Construction | Phase 2 | IGMP | Dave Wiltberger | Construction | 01ADMIN |  |
| QTS-11971 |  | DH 2200 / Mechanical Gallery 2201 // In Wall Inspection for Fan Wall | 1d | 2026-01-16 | 2026-01-16 | QTS-11581 |  |  |  |  | 18d | 0d |  | QTS-PHX3 DC1 - 6 day w/ Holidays | Bel-Aire Mechanical, LLC | DH2200 | Construction | Phase 2 | IGMP | Dave Wiltberger | Construction | 01ADMIN |  |
| QTS-13001 |  | DH 2200 / Mechanical Gallery 2201 // Paint 2201-2202 Wall - Elec Gallery - Remaining | 3d | 2026-01-16 | 2026-01-20 | QTS-1002460 |  |  |  |  | 19d | 0d |  | QTS-PHX3 DC1 - 6 day w/ Holidays | Pennington Painting Company, LLC | DH2200 | Construction | Phase 2 | IGMP | Sean Waisner | Construction | 01ADMIN |  |
| QTS-1002440 |  | DH 2200 / Mechanical Gallery 2201 // Tape & Finish Drywall for 2201-2202 Wall - Mech Gallery - Top Out | 5d | 2026-01-17 | 2026-01-23 | QTS-11201 |  |  |  |  | 1d | 0d |  | QTS-PHX3 DC1 - 6 day w/ Holidays | Performance Contracting, Inc. | DH2200 | Construction | Phase 2 | IGMP | Sean Waisner | Construction | 01ADMIN |  |
| QTS-1002570 |  | DH 2200 / Mechanical Gallery 2201 // Hang Remaining Drywall for 2201-2202 Wall - Mech Gallery | 4d | 2026-01-17 | 2026-01-22 | QTS-10891, QTS-1002560 |  |  |  |  | 17d | 0d |  | QTS-PHX3 DC1 - 6 day w/ Holidays | Performance Contracting, Inc. | DH2200 | Construction | Phase 2 | IGMP | Sean Waisner | Construction | 01ADMIN |  |
| QTS-12211 |  | DH 2200 / Mechanical Gallery 2201 // Hang, Tape, & Finish Fan Drywall - DH Side | 5d | 2026-01-17 | 2026-01-23 | QTS-11971 |  |  |  |  | 18d | 0d |  | QTS-PHX3 DC1 - 6 day w/ Holidays | Performance Contracting, Inc. | DH2200 | Construction | Phase 2 | IGMP | Sean Waisner | Construction | 01ADMIN |  |
| QTS-13371 |  | DH 2200 / Mechanical Gallery 2201 // Top of Wall Fire Stop for 2201-2202 Wall | 2d | 2026-01-17 | 2026-01-20 | QTS-11201 |  |  |  |  | 31d | 0d |  | QTS-PHX3 DC1 - 6 day w/ Holidays | Alpha Insulation & Waterproofing, Inc. | DH2200 | Construction | Phase 2 | IGMP | Sean Waisner | Construction | 01ADMIN |  |
| QTS-46581 |  | DH 2200 / Mechanical Gallery 2201 // Set EPMS/BMS Panels | 4d | 2026-01-21 | 2026-01-24 | QTS-13001 |  |  |  |  | 48d | 31d |  | QTS-PHX3 DC1 - 6 day w/ Holidays | Rosendin Electric, Inc | DH2100 | Construction |  | IGMP | Scott Masterson | Construction | 01ADMIN | Level 2 |
| QTS-1002500 |  | DH 2200 / Mechanical Gallery 2201 // Tape & Finish Remaining Drywall for 2201-2202 Wall - Mech Gallery | 5d | 2026-01-23 | 2026-01-28 | QTS-1002530, QTS-1002570 |  |  |  |  | 17d | 0d |  | QTS-PHX3 DC1 - 6 day w/ Holidays | Performance Contracting, Inc. | DH2200 | Construction | Phase 2 | IGMP | Sean Waisner | Construction | 01ADMIN |  |
| QTS-1002450 |  | DH 2200 / Mechanical Gallery 2201 // Paint 2201-2202 Wall - Mech Gallery - Top Out | 2d | 2026-01-24 | 2026-01-26 | QTS-1002440 |  |  |  |  | 1d | 0d |  | QTS-PHX3 DC1 - 6 day w/ Holidays | Pennington Painting Company, LLC | DH2200 | Construction | Phase 2 | IGMP | Sean Waisner | Construction | 01ADMIN |  |
| QTS-13011 |  | DH 2200 / Mechanical Gallery 2201 // Paint Fan Walls | 5d | 2026-01-24 | 2026-01-29 | QTS-1002470, QTS-12211 |  |  |  |  | 18d | 4d |  | QTS-PHX3 DC1 - 6 day w/ Holidays | Pennington Painting Company, LLC | DH2200 | Construction | Phase 2 | IGMP | Sean Waisner | Construction | 01ADMIN |  |
| QTS-14191 |  | DH 2200 / Mechanical Gallery 2201 // OFCI - L2 SET IN PLACE - Eq Type # - DH CRAH - 14 units | 6d | 2026-01-24 | 2026-01-30 | QTS-1003090, QTS-34611, QTS-34621, QTS-34631, QTS-34641, QTS-34651, QTS-34661, QTS-34671, QTS-34681, QTS-34691 FF, QTS-34701 FF, QTS-34711 FF, QTS-34721 FF, QTS-34731 FF, QTS-34741 FF, QTS-13751 |  |  |  |  | 3d | 0d |  | QTS-PHX3 DC1 - 6 day w/ Holidays | Bel-Aire Mechanical, LLC | DH2200 | Construction | Phase 2 | IGMP | Dave Wiltberger | Construction |  |  |
| QTS-15461 |  | DH 2200 / Mechanical Gallery 2201 // DH CRAH Unit Mechanical Connections | 10d | 2026-01-24 | 2026-02-04 | QTS-14191 SS |  |  |  |  | 3d | 2d |  | QTS-PHX3 DC1 - 6 day w/ Holidays | Bel-Aire Mechanical, LLC | DH2200 | Construction | Phase 2 | IGMP | Dave Wiltberger | Construction |  |  |
| QTS-16251 |  | DH 2200 / Mechanical Gallery 2201 // OFCI - L2 SET IN PLACE - Eq Type # - MOD-03 - 7 units | 10d | 2026-01-24 | 2026-02-04 | QTS-1002510 FF, QTS-13741, QTS-31561, QTS-31571, QTS-31581, QTS-31591, QTS-31601, QTS-31611, QTS-31701, QTS-14191 SS |  |  |  |  | 13d | 12d |  | QTS-PHX3 DC1 - 6 day w/ Holidays | Rosendin Electric, Inc | DH2200 | Construction | Phase 2 | IGMP | Scott Masterson | Construction |  |  |
| QTS-43881 |  | DH 2200 / Mechanical Gallery 2201 // OFCI - L2 SET IN PLACE - Eq Type # - MOD-02 - 7 units | 10d | 2026-01-24 | 2026-02-04 | QTS-13741, QTS-31321, QTS-31331, QTS-31341, QTS-31351, QTS-31361, QTS-31371, QTS-31791, QTS-14191 SS, QTS-13751 |  |  |  |  | 13d | 0d |  | QTS-PHX3 DC1 - 6 day w/ Holidays | Rosendin Electric, Inc | DH2200 | Construction | Phase 2 | IGMP | Scott Masterson | Construction |  |  |
| QTS-13761 |  | DH 2200 / Mechanical Gallery 2201 // Install Security Screen Above Fan Wall | 3d | 2026-01-26 A | 2026-01-14 | QTS-10401, QTS-99680, QTS-1001250 | 67% | 1d | 2026-01-26 | 2026-01-28 | 73d | 17d | start on or after 2026-01-26 | QTS-PHX3 DC1 - 6 day w/ Holidays | Performance Contracting, Inc. | DH2200 | Construction | Phase 2 | IGMP | Sean Waisner | Construction | 01ADMIN |  |
| QTS-11201 |  | DH 2200 / Mechanical Gallery 2201 // Hang Drywall for 2201-2202 Wall - Mech Gallery - Top Out | 4d | 2026-01-27 A | 2026-01-16 | QTS-1003100 | 25% | 3d | 2026-01-27 | 2026-01-30 | 1d | 0d |  | QTS-PHX3 DC1 - 6 day w/ Holidays | Performance Contracting, Inc. | DH2200 | Construction | Phase 2 | IGMP | Sean Waisner | Construction | 01ADMIN |  |
| QTS-15611 |  | DH 2200 / Mechanical Gallery 2201 // Install OH Electrical, FA/ EPMS/BMS Conduit & Grounding | 10d | 2026-01-27 | 2026-02-06 | QTS-1002450, QTS-13751 |  |  |  |  | 1d | 0d |  | QTS-PHX3 DC1 - 6 day w/ Holidays | Rosendin Electric, Inc | DH2200 | Construction | Phase 2 | IGMP | Scott Masterson | Construction | 01ADMIN |  |
| QTS-1002510 |  | DH 2200 / Mechanical Gallery 2201 // Paint 2201-2202 Remaining Wall - Mech Gallery | 2d | 2026-01-29 | 2026-01-30 | QTS-1002500 |  |  |  |  | 17d | 0d |  | QTS-PHX3 DC1 - 6 day w/ Holidays | Pennington Painting Company, LLC | DH2200 | Construction | Phase 2 | IGMP | Sean Waisner | Construction | 01ADMIN |  |
| QTS-46561 |  | DH 2200 / Mechanical Gallery 2201 // OFCI - L2 SET IN PLACE - Eq Type # - EG CRAH - 4 units | 6d | 2026-01-31 | 2026-02-06 | QTS-1002510, QTS-13001, QTS-34891, QTS-34901, QTS-34911, QTS-34921 |  |  |  |  | 48d | 0d |  | QTS-PHX3 DC1 - 6 day w/ Holidays | Bel-Aire Mechanical, LLC | DH2200 | Construction | Phase 2 | IGMP | Dave Wiltberger | Construction | 01ADMIN |  |
| QTS-16991 |  | DH 2200 / Mechanical Gallery 2201 // Set Humidifier | 1d | 2026-02-05 | 2026-02-05 | QTS-13761, QTS-19501, QTS-43881 |  |  |  |  | 56d | 3d |  | QTS-PHX3 DC1 - 6 day w/ Holidays | Bel-Aire Mechanical, LLC | DH2200 | Construction | Phase 2 | IGMP | Dave Wiltberger | Construction |  |  |
| QTS-14491 |  | DH 2200 / Mechanical Gallery 2201 // Install Raceway from UPS Pod to MOD-02/03 Boards | 10d | 2026-02-07 | 2026-02-18 | QTS-15611, QTS-13551, QTS-16251 FF, QTS-43881 FF, QTS-15461 |  |  |  |  | 1d | 0d |  | QTS-PHX3 DC1 - 6 day w/ Holidays | Rosendin Electric, Inc | DH2200 | Construction | Phase 2 | IGMP | Scott Masterson | Construction |  |  |
| QTS-15471 |  | DH 2200 / Mechanical Gallery 2201 // Install Angle Seal Around Units | 2d | 2026-02-07 | 2026-02-09 | QTS-14191, QTS-46561 |  |  |  |  | 53d | 0d |  | QTS-PHX3 DC1 - 6 day w/ Holidays | Performance Contracting, Inc. | DH2200 | Construction | Phase 2 | IGMP | Sean Waisner | Construction |  |  |
| QTS-46571 |  | DH 2200 / Mechanical Gallery 2201 // EG CRAH Unit Mechanical Connections | 10d | 2026-02-07 | 2026-02-18 | QTS-46561 |  |  |  |  | 48d | 9d |  | QTS-PHX3 DC1 - 6 day w/ Holidays | Bel-Aire Mechanical, LLC | DH2200 | Construction | Phase 2 | IGMP | Dave Wiltberger | Construction |  |  |
| QTS-17121 |  | DH 2200 / Mechanical Gallery 2201 // Tie-In MEP to Humidifiers | 6d | 2026-02-10 | 2026-02-16 | QTS-16991, QTS-14191, QTS-13751 FF, QTS-15471 |  |  |  |  | 53d | 29d |  | QTS-PHX3 DC1 - 6 day w/ Holidays | Bel-Aire Mechanical, LLC | DH2200 | Construction | Phase 2 | IGMP | Dave Wiltberger | Construction |  |  |
| QTS-43751 |  | DH 2200 / Mechanical Gallery 2201 // Pull & Terminate from UPS Pod to MOD-02/03 Boards | 10d | 2026-02-13 | 2026-02-24 | QTS-14491 SS+5d |  |  |  |  | 1d | 0d |  | QTS-PHX3 DC1 - 6 day w/ Holidays | Rosendin Electric, Inc | DH2200 | Construction | Phase 2 | IGMP | Scott Masterson | Construction |  |  |
| QTS-15601 |  | DH 2200 / Mechanical Gallery 2201 // Install Electrical Tray | 5d | 2026-02-19 | 2026-02-24 | QTS-13751, QTS-15461, QTS-14491 |  |  |  |  | 17d | 0d |  | QTS-PHX3 DC1 - 6 day w/ Holidays | Rosendin Electric, Inc | DH2200 | Construction | Phase 2 | IGMP | Scott Masterson | Construction |  |  |
| QTS-16531 |  | DH 2200 / Mechanical Gallery 2201 // Install Basket Tray for LV | 5d | 2026-02-25 | 2026-03-02 | QTS-15601 |  |  |  |  | 17d | 0d |  | QTS-PHX3 DC1 - 6 day w/ Holidays | Rosendin Electric, Inc | DH2200 | Construction | Phase 2 | IGMP | Scott Masterson | Construction |  |  |
| QTS-44481 |  | DH 2200 / Mechanical Gallery 2201 // Install Lighting, Security, and Devices | 5d | 2026-02-25 | 2026-03-02 | QTS-43751 |  |  |  |  | 50d | 33d |  | QTS-PHX3 DC1 - 6 day w/ Holidays | Securitas Technology Corporation | DH2100 | Construction |  | IGMP | Scott Masterson | Construction |  | Level 2 |
| QTS-46591 |  | DH 2200 / Mechanical Gallery 2201 // Pull & Terminate from MOD-02 to CRAHs | 4d | 2026-02-25 | 2026-02-28 | QTS-43751 |  |  |  |  | 35d | 0d |  | QTS-PHX3 DC1 - 6 day w/ Holidays | Rosendin Electric, Inc | DH2100 | Construction |  | IGMP | Scott Masterson | Construction |  | Level 2 |
| QTS-46601 |  | DH 2200 / Mechanical Gallery 2201 // Pull & Terminate from MOD-02 to DOAS | 4d | 2026-03-02 | 2026-03-05 | QTS-46591 |  |  |  |  | 35d | 0d |  | QTS-PHX3 DC1 - 6 day w/ Holidays | Rosendin Electric, Inc | DH2100 | Construction |  | IGMP | Scott Masterson | Construction |  | Level 2 |
| QTS-44471 |  | DH 2200 / Mechanical Gallery 2201 // Install BMS & EPMS Cable and Terminations | 10d | 2026-03-03 | 2026-03-13 | QTS-16531, QTS-46581 |  |  |  |  | 17d | 1d |  | QTS-PHX3 DC1 - 6 day w/ Holidays | Rosendin Electric, Inc | DH2100 | Construction |  | IGMP | Scott Masterson | Construction |  | Level 2 |

Notes:
- QTS-13741: allucent_notes_20251014_152335: David Wiltberger on 2025-09-24 04:09: access restricted / allucent_notes: 2025-09-24 04:09 - User: David Wiltberger - Date Added: 2025-09-24 04:09 - Note: access restricted
- QTS-8601: allucent_notes_20251021_145627: Jason Johnston on 2025-10-21 11:10: Reallocation of manpower to zone 1 / allucent_notes_20251027_224008: Jason Johnston on 2025-10-21 11:10: Reallocation of manpower to zone 1 / allucent_notes: 2025-10-21 11:10 - User: Jason Johnston - Date Added: 2025-10-21 11:10 - Note: Reallocation of manpower to zone 1
- QTS-13751: allucent_notes_20251014_152335: David Wiltberger on 2025-09-24 04:09: BAM potential Delay / David Wiltberger on 2025-10-14 12:10: on recovery / allucent_notes_20251021_145627: David Wiltberger on 2025-09-24 04:09: BAM potential Delay / David Wiltberger on 2025-10-14 12:10: on recovery / allucent_notes_20251027_224008: David Wiltberger on 2025-09-24 04:09: BAM potential Delay / David Wiltberger on 2025-10-14 12:10: on recovery / allucent_notes_20251028_163138: David Wiltberger on 2025-09-24 04:09: BAM potential Delay / David Wiltberger on 2025-10-14 12:10: on recovery / allucent_notes_20251104_160200: David Wiltberger on 2025-09-24 04:09: BAM potential Delay / David Wiltberger on 2025-10-14 12:10: on recovery / allucent_notes_20251111_182405: David Wiltberger on 2025-09-24 04:09: BAM potential Delay / David Wiltberger on 2025-10-14 12:10: on recovery / allucent_notes_20251118_192630: David Wiltberger on 2025-09-24 04:09: BAM potential Delay / David Wiltberger on 2025-10-14 12:10: on recovery / allucent_notes: 2025-09-24 04:09 - User: David Wiltberger - Date Added: 2025-09-24 04:09 - Note: BAM potential Delay / 2025-10-14 12:10 - User: David Wiltberger - Date Added: 2025-10-14 12:10 - Note: on recovery
- QTS-1002470: allucent_notes_20251230_164549: Zack Goertz on 2025-10-27T19:25:53.887Z: Not started working on recovery plan / Jason Johnston on 2025-10-27 16:10: Jake owes update / allucent_notes_20251027_224008: Zack Goertz on 2025-10-27T19:25:53.887Z: Not started working on recovery plan / Jason Johnston on 2025-10-27 16:10: Jake owes update / allucent_notes_20251028_163138: Zack Goertz on 2025-10-27T19:25:53.887Z: Not started working on recovery plan / Jason Johnston on 2025-10-27 16:10: Jake owes update / allucent_notes_20251104_160200: Zack Goertz on 2025-10-27T19:25:53.887Z: Not started working on recovery plan / Jason Johnston on 2025-10-27 16:10: Jake owes update / allucent_notes_20251111_182405: Zack Goertz on 2025-10-27T19:25:53.887Z: Not started working on recovery plan / Jason Johnston on 2025-10-27 16:10: Jake owes update / allucent_notes_20251118_192630: Zack Goertz on 2025-10-27T19:25:53.887Z: Not started working on recovery plan / Jason Johnston on 2025-10-27 16:10: Jake owes update / allucent_notes_20251202_153722: Zack Goertz on 2025-10-27T19:25:53.887Z: Not started working on recovery plan / Jason Johnston on 2025-10-27 16:10: Jake owes update / allucent_notes_20251209_203830: Zack Goertz on 2025-10-27T19:25:53.887Z: Not started working on recovery plan / Jason Johnston on 2025-10-27 16:10: Jake owes update / allucent_notes_20251216_165335: Zack Goertz on 2025-10-27T19:25:53.887Z: Not started working on recovery plan / Jason Johnston on 2025-10-27 16:10: Jake owes update / allucent_notes: 2025-10-27T19:25:53.887Z - User: Zack Goertz - Date Added: 2025-10-27T19:25:53.887Z - Note: Not started working on recovery plan / 2025-10-27 16:10 - User: Jason Johnston - Date Added: 2025-10-27 16:10 - Note: Jake owes update
- QTS-1002530: allucent_notes_20251230_164549: Zack Goertz on 2025-10-27T19:25:53.887Z: Not started working on recovery plan / Jason Johnston on 2025-10-27 16:10: Jake owes update / allucent_notes_20251027_224008: Zack Goertz on 2025-10-27T19:25:53.887Z: Not started working on recovery plan / Jason Johnston on 2025-10-27 16:10: Jake owes update / allucent_notes_20251028_163138: Zack Goertz on 2025-10-27T19:25:53.887Z: Not started working on recovery plan / Jason Johnston on 2025-10-27 16:10: Jake owes update / allucent_notes_20251104_160200: Zack Goertz on 2025-10-27T19:25:53.887Z: Not started working on recovery plan / Jason Johnston on 2025-10-27 16:10: Jake owes update / allucent_notes_20251111_182405: Zack Goertz on 2025-10-27T19:25:53.887Z: Not started working on recovery plan / Jason Johnston on 2025-10-27 16:10: Jake owes update / allucent_notes_20251118_192630: Zack Goertz on 2025-10-27T19:25:53.887Z: Not started working on recovery plan / Jason Johnston on 2025-10-27 16:10: Jake owes update / allucent_notes_20251202_153722: Zack Goertz on 2025-10-27T19:25:53.887Z: Not started working on recovery plan / Jason Johnston on 2025-10-27 16:10: Jake owes update / allucent_notes_20251209_203830: Zack Goertz on 2025-10-27T19:25:53.887Z: Not started working on recovery plan / Jason Johnston on 2025-10-27 16:10: Jake owes update / allucent_notes_20251216_165335: Zack Goertz on 2025-10-27T19:25:53.887Z: Not started working on recovery plan / Jason Johnston on 2025-10-27 16:10: Jake owes update / allucent_notes: 2025-10-27T19:25:53.887Z - User: Zack Goertz - Date Added: 2025-10-27T19:25:53.887Z - Note: Not started working on recovery plan / 2025-10-27 16:10 - User: Jason Johnston - Date Added: 2025-10-27 16:10 - Note: Jake owes update
- QTS-1002460: allucent_notes_20251230_164549: Zack Goertz on 2025-10-27T19:25:53.887Z: Not started working on recovery plan / Jason Johnston on 2025-10-27 16:10: Jake owes update / allucent_notes_20251027_224008: Zack Goertz on 2025-10-27T19:25:53.887Z: Not started working on recovery plan / Jason Johnston on 2025-10-27 16:10: Jake owes update / allucent_notes_20251028_163138: Zack Goertz on 2025-10-27T19:25:53.887Z: Not started working on recovery plan / Jason Johnston on 2025-10-27 16:10: Jake owes update / allucent_notes_20251104_160200: Zack Goertz on 2025-10-27T19:25:53.887Z: Not started working on recovery plan / Jason Johnston on 2025-10-27 16:10: Jake owes update / allucent_notes_20251111_182405: Zack Goertz on 2025-10-27T19:25:53.887Z: Not started working on recovery plan / Jason Johnston on 2025-10-27 16:10: Jake owes update / allucent_notes_20251118_192630: Zack Goertz on 2025-10-27T19:25:53.887Z: Not started working on recovery plan / Jason Johnston on 2025-10-27 16:10: Jake owes update / allucent_notes_20251202_153722: Zack Goertz on 2025-10-27T19:25:53.887Z: Not started working on recovery plan / Jason Johnston on 2025-10-27 16:10: Jake owes update / allucent_notes_20251209_203830: Zack Goertz on 2025-10-27T19:25:53.887Z: Not started working on recovery plan / Jason Johnston on 2025-10-27 16:10: Jake owes update / allucent_notes_20251216_165335: Zack Goertz on 2025-10-27T19:25:53.887Z: Not started working on recovery plan / Jason Johnston on 2025-10-27 16:10: Jake owes update / allucent_notes: 2025-10-27T19:25:53.887Z - User: Zack Goertz - Date Added: 2025-10-27T19:25:53.887Z - Note: Not started working on recovery plan / 2025-10-27 16:10 - User: Jason Johnston - Date Added: 2025-10-27 16:10 - Note: Jake owes update
- QTS-1002560: allucent_notes_20251230_164549: David Wiltberger on 2025-11-04 14:11: not in sequence right / David Wiltberger on 2025-11-17 16:11: out of sequence / Jason Johnston on 2025-12-01 10:37: Man power reallocated to FOH, BOH, and Zone 1. Rough in is incomplete. / Jason Johnston on 2025-12-16 07:58: Pushing inspection until BOH is complete and in wall can be closed out. / allucent_notes_20251104_160200: David Wiltberger on 2025-11-04 14:11: not in sequence right / allucent_notes_20251111_182405: David Wiltberger on 2025-11-04 14:11: not in sequence right / allucent_notes_20251118_192630: David Wiltberger on 2025-11-04 14:11: not in sequence right / David Wiltberger on 2025-11-17 16:11: out of sequence / allucent_notes_20251202_153722: David Wiltberger on 2025-11-04 14:11: not in sequence right / David Wiltberger on 2025-11-17 16:11: out of sequence / Jason Johnston on 2025-12-01 10:37: Man power reallocated to FOH, BOH, and Zone 1. Rough in is incomplete. / allucent_notes_20251209_203830: David Wiltberger on 2025-11-04 14:11: not in sequence right / David Wiltberger on 2025-11-17 16:11: out of sequence / Jason Johnston on 2025-12-01 10:37: Man power reallocated to FOH, BOH, and Zone 1. Rough in is incomplete. / allucent_notes_20251216_165335: David Wiltberger on 2025-11-04 14:11: not in sequence right / David Wiltberger on 2025-11-17 16:11: out of sequence / Jason Johnston on 2025-12-01 10:37: Man power reallocated to FOH, BOH, and Zone 1. Rough in is incomplete. / Jason Johnston on 2025-12-16 07:58: Pushing inspection until BOH is complete and in wall can be closed out. / allucent_notes: 2025-11-04 14:11 - User: David Wiltberger - Date Added: 2025-11-04 14:11 - Note: not in sequence right / 2025-11-17 16:11 - User: David Wiltberger - Date Added: 2025-11-17 16:11 - Note: out of sequence / 2025-12-01 10:37 - User: Jason Johnston - Date Ad
- QTS-1003100: allucent_notes_20251230_164549: Zack Goertz on 2025-10-27T19:25:53.887Z: Not started working on recovery plan / Jason Johnston on 2025-10-27 16:10: Jake owes update / allucent_notes_20251027_224008: Zack Goertz on 2025-10-27T19:25:53.887Z: Not started working on recovery plan / Jason Johnston on 2025-10-27 16:10: Jake owes update / allucent_notes_20251028_163138: Zack Goertz on 2025-10-27T19:25:53.887Z: Not started working on recovery plan / Jason Johnston on 2025-10-27 16:10: Jake owes update / allucent_notes_20251104_160200: Zack Goertz on 2025-10-27T19:25:53.887Z: Not started working on recovery plan / Jason Johnston on 2025-10-27 16:10: Jake owes update / allucent_notes_20251111_182405: Zack Goertz on 2025-10-27T19:25:53.887Z: Not started working on recovery plan / Jason Johnston on 2025-10-27 16:10: Jake owes update / allucent_notes_20251118_192630: Zack Goertz on 2025-10-27T19:25:53.887Z: Not started working on recovery plan / Jason Johnston on 2025-10-27 16:10: Jake owes update / allucent_notes_20251202_153722: Zack Goertz on 2025-10-27T19:25:53.887Z: Not started working on recovery plan / Jason Johnston on 2025-10-27 16:10: Jake owes update / allucent_notes_20251209_203830: Zack Goertz on 2025-10-27T19:25:53.887Z: Not started working on recovery plan / Jason Johnston on 2025-10-27 16:10: Jake owes update / allucent_notes_20251216_165335: Zack Goertz on 2025-10-27T19:25:53.887Z: Not started working on recovery plan / Jason Johnston on 2025-10-27 16:10: Jake owes update / allucent_notes: 2025-10-27T19:25:53.887Z - User: Zack Goertz - Date Added: 2025-10-27T19:25:53.887Z - Note: Not started working on recovery plan / 2025-10-27 16:10 - User: Jason Johnston - Date Added: 2025-10-27 16:10 - Note: Jake owes update
- QTS-10391: allucent_notes_20251028_163138: Jason Johnston on 2025-10-28 15:10: Unactualize and move the start to 10/30. / allucent_notes_20251104_160200: Jason Johnston on 2025-10-28 15:10: Unactualize and move the start to 10/30. / allucent_notes: 2025-10-28 15:10 - User: Jason Johnston - Date Added: 2025-10-28 15:10 - Note: Unactualize and move the start to 10/30.
- QTS-10401: allucent_notes_20251028_163138: Jason Johnston on 2025-10-28 15:10: Framers moving from 1100 / allucent_notes_20251104_160200: Jason Johnston on 2025-10-28 15:10: Framers moving from 1100 / Zack Goertz on 2025-10-29T19:40:04.004Z: Fan wall framing will be starting Monday / Zack Goertz on 2025-10-31T19:49:37.302Z: Bel-aire is behind. We are waiting for them to install chiller mains. / Zack Goertz on 2025-11-03T16:49:24.308Z: Bel-aire is behind. We are waiting for them to install chiller mains. They are half way done with zone 2 level 1 / Jason Johnston on 2025-11-04 15:11: Update needed / allucent_notes_20251111_182405: Jason Johnston on 2025-10-28 15:10: Framers moving from 1100 / Zack Goertz on 2025-10-29T19:40:04.004Z: Fan wall framing will be starting Monday / Zack Goertz on 2025-10-31T19:49:37.302Z: Bel-aire is behind. We are waiting for them to install chiller mains. / Zack Goertz on 2025-11-03T16:49:24.308Z: Bel-aire is behind. We are waiting for them to install chiller mains. They are half way done with zone 2 level 1 / Jason Johnston on 2025-11-04 15:11: Update needed / Jason Johnston on 2025-11-11 16:11: early access / allucent_notes_20251118_192630: Jason Johnston on 2025-10-28 15:10: Framers moving from 1100 / Zack Goertz on 2025-10-29T19:40:04.004Z: Fan wall framing will be starting Monday / Zack Goertz on 2025-10-31T19:49:37.302Z: Bel-aire is behind. We are waiting for them to install chiller mains. / Zack Goertz on 2025-11-03T16:49:24.308Z: Bel-aire is behind. We are waiting for them to install chiller mains. They are half way done with zone 2 level 1 / Jason Johnston on 2025-11-04 15:11: Update needed / Jason Johnston on 2025-11-11 16:11: early access / Jason Johnston on 2025-11-18T20:49:23.006Z: Not on green mile need new predecessor. / allucent_notes: 2025-10-28 15:10 - User: Jason Johnston - Date Added: 2025-10-28 15:10 - Note: Framers moving from 1100 / 2025-10-29T19:40:04.004Z - User: Zack Goertz - Date Added: 2025-10-29T19:40:04.004Z - Note: Fan wall framing will be starting Monday / 2025-10-31T1
- QTS-10891: allucent_notes_20251230_164549: David Wiltberger on 2025-11-04 14:11: not in sequence right / David Wiltberger on 2025-11-17 16:11: out of sequence / Jason Johnston on 2025-12-01 10:37: Man power reallocated to FOH, BOH, and Zone 1. Rough in is incomplete. / Jason Johnston on 2025-12-16 07:58: Pushing inspection until BOH is complete and in wall can be closed out. / allucent_notes_20251104_160200: David Wiltberger on 2025-11-04 14:11: not in sequence right / allucent_notes_20251111_182405: David Wiltberger on 2025-11-04 14:11: not in sequence right / allucent_notes_20251118_192630: David Wiltberger on 2025-11-04 14:11: not in sequence right / David Wiltberger on 2025-11-17 16:11: out of sequence / allucent_notes_20251202_153722: David Wiltberger on 2025-11-04 14:11: not in sequence right / David Wiltberger on 2025-11-17 16:11: out of sequence / Jason Johnston on 2025-12-01 10:37: Man power reallocated to FOH, BOH, and Zone 1. Rough in is incomplete. / allucent_notes_20251209_203830: David Wiltberger on 2025-11-04 14:11: not in sequence right / David Wiltberger on 2025-11-17 16:11: out of sequence / Jason Johnston on 2025-12-01 10:37: Man power reallocated to FOH, BOH, and Zone 1. Rough in is incomplete. / allucent_notes_20251216_165335: David Wiltberger on 2025-11-04 14:11: not in sequence right / David Wiltberger on 2025-11-17 16:11: out of sequence / Jason Johnston on 2025-12-01 10:37: Man power reallocated to FOH, BOH, and Zone 1. Rough in is incomplete. / Jason Johnston on 2025-12-16 07:58: Pushing inspection until BOH is complete and in wall can be closed out. / allucent_notes: 2025-11-04 14:11 - User: David Wiltberger - Date Added: 2025-11-04 14:11 - Note: not in sequence right / 2025-11-17 16:11 - User: David Wiltberger - Date Added: 2025-11-17 16:11 - Note: out of sequence / 2025-12-01 10:37 - User: Jason Johnston - Date Ad
- QTS-1002440: allucent_notes_20251230_164549: Zack Goertz on 2025-10-27T19:25:53.887Z: Not started working on recovery plan / Jason Johnston on 2025-10-27 16:10: Jake owes update / allucent_notes_20251027_224008: Zack Goertz on 2025-10-27T19:25:53.887Z: Not started working on recovery plan / Jason Johnston on 2025-10-27 16:10: Jake owes update / allucent_notes_20251028_163138: Zack Goertz on 2025-10-27T19:25:53.887Z: Not started working on recovery plan / Jason Johnston on 2025-10-27 16:10: Jake owes update / allucent_notes_20251104_160200: Zack Goertz on 2025-10-27T19:25:53.887Z: Not started working on recovery plan / Jason Johnston on 2025-10-27 16:10: Jake owes update / allucent_notes_20251111_182405: Zack Goertz on 2025-10-27T19:25:53.887Z: Not started working on recovery plan / Jason Johnston on 2025-10-27 16:10: Jake owes update / allucent_notes_20251118_192630: Zack Goertz on 2025-10-27T19:25:53.887Z: Not started working on recovery plan / Jason Johnston on 2025-10-27 16:10: Jake owes update / allucent_notes_20251202_153722: Zack Goertz on 2025-10-27T19:25:53.887Z: Not started working on recovery plan / Jason Johnston on 2025-10-27 16:10: Jake owes update / allucent_notes_20251209_203830: Zack Goertz on 2025-10-27T19:25:53.887Z: Not started working on recovery plan / Jason Johnston on 2025-10-27 16:10: Jake owes update / allucent_notes_20251216_165335: Zack Goertz on 2025-10-27T19:25:53.887Z: Not started working on recovery plan / Jason Johnston on 2025-10-27 16:10: Jake owes update / allucent_notes: 2025-10-27T19:25:53.887Z - User: Zack Goertz - Date Added: 2025-10-27T19:25:53.887Z - Note: Not started working on recovery plan / 2025-10-27 16:10 - User: Jason Johnston - Date Added: 2025-10-27 16:10 - Note: Jake owes update
- QTS-1002570: allucent_notes_20251230_164549: Zack Goertz on 2025-10-27T19:25:53.887Z: Not started working on recovery plan / Jason Johnston on 2025-10-27 16:10: Jake owes update / allucent_notes_20251027_224008: Zack Goertz on 2025-10-27T19:25:53.887Z: Not started working on recovery plan / Jason Johnston on 2025-10-27 16:10: Jake owes update / allucent_notes_20251028_163138: Zack Goertz on 2025-10-27T19:25:53.887Z: Not started working on recovery plan / Jason Johnston on 2025-10-27 16:10: Jake owes update / allucent_notes_20251104_160200: Zack Goertz on 2025-10-27T19:25:53.887Z: Not started working on recovery plan / Jason Johnston on 2025-10-27 16:10: Jake owes update / allucent_notes_20251111_182405: Zack Goertz on 2025-10-27T19:25:53.887Z: Not started working on recovery plan / Jason Johnston on 2025-10-27 16:10: Jake owes update / allucent_notes_20251118_192630: Zack Goertz on 2025-10-27T19:25:53.887Z: Not started working on recovery plan / Jason Johnston on 2025-10-27 16:10: Jake owes update / allucent_notes_20251202_153722: Zack Goertz on 2025-10-27T19:25:53.887Z: Not started working on recovery plan / Jason Johnston on 2025-10-27 16:10: Jake owes update / allucent_notes_20251209_203830: Zack Goertz on 2025-10-27T19:25:53.887Z: Not started working on recovery plan / Jason Johnston on 2025-10-27 16:10: Jake owes update / allucent_notes_20251216_165335: Zack Goertz on 2025-10-27T19:25:53.887Z: Not started working on recovery plan / Jason Johnston on 2025-10-27 16:10: Jake owes update / allucent_notes: 2025-10-27T19:25:53.887Z - User: Zack Goertz - Date Added: 2025-10-27T19:25:53.887Z - Note: Not started working on recovery plan / 2025-10-27 16:10 - User: Jason Johnston - Date Added: 2025-10-27 16:10 - Note: Jake owes update
- QTS-1002500: allucent_notes_20251230_164549: Zack Goertz on 2025-10-27T19:25:53.887Z: Not started working on recovery plan / Jason Johnston on 2025-10-27 16:10: Jake owes update / allucent_notes_20251027_224008: Zack Goertz on 2025-10-27T19:25:53.887Z: Not started working on recovery plan / Jason Johnston on 2025-10-27 16:10: Jake owes update / allucent_notes_20251028_163138: Zack Goertz on 2025-10-27T19:25:53.887Z: Not started working on recovery plan / Jason Johnston on 2025-10-27 16:10: Jake owes update / allucent_notes_20251104_160200: Zack Goertz on 2025-10-27T19:25:53.887Z: Not started working on recovery plan / Jason Johnston on 2025-10-27 16:10: Jake owes update / allucent_notes_20251111_182405: Zack Goertz on 2025-10-27T19:25:53.887Z: Not started working on recovery plan / Jason Johnston on 2025-10-27 16:10: Jake owes update / allucent_notes_20251118_192630: Zack Goertz on 2025-10-27T19:25:53.887Z: Not started working on recovery plan / Jason Johnston on 2025-10-27 16:10: Jake owes update / allucent_notes_20251202_153722: Zack Goertz on 2025-10-27T19:25:53.887Z: Not started working on recovery plan / Jason Johnston on 2025-10-27 16:10: Jake owes update / allucent_notes_20251209_203830: Zack Goertz on 2025-10-27T19:25:53.887Z: Not started working on recovery plan / Jason Johnston on 2025-10-27 16:10: Jake owes update / allucent_notes_20251216_165335: Zack Goertz on 2025-10-27T19:25:53.887Z: Not started working on recovery plan / Jason Johnston on 2025-10-27 16:10: Jake owes update / allucent_notes: 2025-10-27T19:25:53.887Z - User: Zack Goertz - Date Added: 2025-10-27T19:25:53.887Z - Note: Not started working on recovery plan / 2025-10-27 16:10 - User: Jason Johnston - Date Added: 2025-10-27 16:10 - Note: Jake owes update
- QTS-1002450: allucent_notes_20251230_164549: Zack Goertz on 2025-10-27T19:25:53.887Z: Not started working on recovery plan / Jason Johnston on 2025-10-27 16:10: Jake owes update / allucent_notes_20251027_224008: Zack Goertz on 2025-10-27T19:25:53.887Z: Not started working on recovery plan / Jason Johnston on 2025-10-27 16:10: Jake owes update / allucent_notes_20251028_163138: Zack Goertz on 2025-10-27T19:25:53.887Z: Not started working on recovery plan / Jason Johnston on 2025-10-27 16:10: Jake owes update / allucent_notes_20251104_160200: Zack Goertz on 2025-10-27T19:25:53.887Z: Not started working on recovery plan / Jason Johnston on 2025-10-27 16:10: Jake owes update / allucent_notes_20251111_182405: Zack Goertz on 2025-10-27T19:25:53.887Z: Not started working on recovery plan / Jason Johnston on 2025-10-27 16:10: Jake owes update / allucent_notes_20251118_192630: Zack Goertz on 2025-10-27T19:25:53.887Z: Not started working on recovery plan / Jason Johnston on 2025-10-27 16:10: Jake owes update / allucent_notes_20251202_153722: Zack Goertz on 2025-10-27T19:25:53.887Z: Not started working on recovery plan / Jason Johnston on 2025-10-27 16:10: Jake owes update / allucent_notes_20251209_203830: Zack Goertz on 2025-10-27T19:25:53.887Z: Not started working on recovery plan / Jason Johnston on 2025-10-27 16:10: Jake owes update / allucent_notes_20251216_165335: Zack Goertz on 2025-10-27T19:25:53.887Z: Not started working on recovery plan / Jason Johnston on 2025-10-27 16:10: Jake owes update / allucent_notes: 2025-10-27T19:25:53.887Z - User: Zack Goertz - Date Added: 2025-10-27T19:25:53.887Z - Note: Not started working on recovery plan / 2025-10-27 16:10 - User: Jason Johnston - Date Added: 2025-10-27 16:10 - Note: Jake owes update
- QTS-11201: allucent_notes_20251230_164549: Zack Goertz on 2025-10-27T19:25:53.887Z: Not started working on recovery plan / Jason Johnston on 2025-10-27 16:10: Jake owes update / allucent_notes_20251027_224008: Zack Goertz on 2025-10-27T19:25:53.887Z: Not started working on recovery plan / Jason Johnston on 2025-10-27 16:10: Jake owes update / allucent_notes_20251028_163138: Zack Goertz on 2025-10-27T19:25:53.887Z: Not started working on recovery plan / Jason Johnston on 2025-10-27 16:10: Jake owes update / allucent_notes_20251104_160200: Zack Goertz on 2025-10-27T19:25:53.887Z: Not started working on recovery plan / Jason Johnston on 2025-10-27 16:10: Jake owes update / allucent_notes_20251111_182405: Zack Goertz on 2025-10-27T19:25:53.887Z: Not started working on recovery plan / Jason Johnston on 2025-10-27 16:10: Jake owes update / allucent_notes_20251118_192630: Zack Goertz on 2025-10-27T19:25:53.887Z: Not started working on recovery plan / Jason Johnston on 2025-10-27 16:10: Jake owes update / allucent_notes_20251202_153722: Zack Goertz on 2025-10-27T19:25:53.887Z: Not started working on recovery plan / Jason Johnston on 2025-10-27 16:10: Jake owes update / allucent_notes_20251209_203830: Zack Goertz on 2025-10-27T19:25:53.887Z: Not started working on recovery plan / Jason Johnston on 2025-10-27 16:10: Jake owes update / allucent_notes_20251216_165335: Zack Goertz on 2025-10-27T19:25:53.887Z: Not started working on recovery plan / Jason Johnston on 2025-10-27 16:10: Jake owes update / allucent_notes: 2025-10-27T19:25:53.887Z - User: Zack Goertz - Date Added: 2025-10-27T19:25:53.887Z - Note: Not started working on recovery plan / 2025-10-27 16:10 - User: Jason Johnston - Date Added: 2025-10-27 16:10 - Note: Jake owes update
- QTS-15611: allucent_notes_20251230_164549: Jason Johnston on 2025-11-19T02:24:57.009Z: undo / Jason Johnston on 2025-12-09 20:31: Need update from team / Jason Johnston on 2025-12-16 08:25: Not complete. / David Wiltberger on 2025-12-30 16:18: no update / allucent_notes_20251118_192630: Jason Johnston on 2025-11-19T02:24:57.009Z: undo / allucent_notes_20251202_153722: Jason Johnston on 2025-11-19T02:24:57.009Z: undo / allucent_notes_20251209_203830: Jason Johnston on 2025-11-19T02:24:57.009Z: undo / Jason Johnston on 2025-12-09 20:31: Need update from team / allucent_notes_20251216_165335: Jason Johnston on 2025-11-19T02:24:57.009Z: undo / Jason Johnston on 2025-12-09 20:31: Need update from team / Jason Johnston on 2025-12-16 08:25: Not complete. / allucent_notes: 2025-11-19T02:24:57.009Z - User: Jason Johnston - Date Added: 2025-11-19T02:24:57.009Z - Note: undo / 2025-12-09 20:31 - User: Jason Johnston - Date Added: 2025-12-09 20:31 - Note: Need update from team / 2025-12-16 08:25 - User: Jason Johnston - Date A
- QTS-1002510: allucent_notes_20251230_164549: Zack Goertz on 2025-10-27T19:25:53.887Z: Not started working on recovery plan / Jason Johnston on 2025-10-27 16:10: Jake owes update / allucent_notes_20251027_224008: Zack Goertz on 2025-10-27T19:25:53.887Z: Not started working on recovery plan / Jason Johnston on 2025-10-27 16:10: Jake owes update / allucent_notes_20251028_163138: Zack Goertz on 2025-10-27T19:25:53.887Z: Not started working on recovery plan / Jason Johnston on 2025-10-27 16:10: Jake owes update / allucent_notes_20251104_160200: Zack Goertz on 2025-10-27T19:25:53.887Z: Not started working on recovery plan / Jason Johnston on 2025-10-27 16:10: Jake owes update / allucent_notes_20251111_182405: Zack Goertz on 2025-10-27T19:25:53.887Z: Not started working on recovery plan / Jason Johnston on 2025-10-27 16:10: Jake owes update / allucent_notes_20251118_192630: Zack Goertz on 2025-10-27T19:25:53.887Z: Not started working on recovery plan / Jason Johnston on 2025-10-27 16:10: Jake owes update / allucent_notes_20251202_153722: Zack Goertz on 2025-10-27T19:25:53.887Z: Not started working on recovery plan / Jason Johnston on 2025-10-27 16:10: Jake owes update / allucent_notes_20251209_203830: Zack Goertz on 2025-10-27T19:25:53.887Z: Not started working on recovery plan / Jason Johnston on 2025-10-27 16:10: Jake owes update / allucent_notes_20251216_165335: Zack Goertz on 2025-10-27T19:25:53.887Z: Not started working on recovery plan / Jason Johnston on 2025-10-27 16:10: Jake owes update / allucent_notes: 2025-10-27T19:25:53.887Z - User: Zack Goertz - Date Added: 2025-10-27T19:25:53.887Z - Note: Not started working on recovery plan / 2025-10-27 16:10 - User: Jason Johnston - Date Added: 2025-10-27 16:10 - Note: Jake owes update

| ID | WBS | Activity | Duration | Start | Finish | Predecessors | Complete | Remaining | Planned start | Planned finish | Total float | Free float | Calendar | Subcontractor | Level | Location | Project Section-1 | Baseline | Layton Responsible Party | Project Section | Allucent CSI Group | Phase-1-1 |
| --- | --- | --- | --- | --- | --- | --- | --- | --- | --- | --- | --- | --- | --- | --- | --- | --- | --- | --- | --- | --- | --- | --- |
|  | 7 | **Gallery 2203 Mechanical** |  | 2025-10-10 | 2026-03-07 |  |  |  |  |  |  |  |  |  |  |  |  |  |  |  |  |  |
| QTS-44591 |  | DH 2200 / Mechanical Gallery 2203 // Install OH Mechanical Hangers | 7d | 2025-10-10 A | 2025-10-20 A | QTS-44461 | 100% |  |  |  |  |  |  | Bel-Aire Mechanical, LLC | Level 2 | DH2100 | Construction | IGMP | Dave Wiltberger | Construction | 01ADMIN |  |
| QTS-10381 |  | DH 2200 / Mechanical Gallery 2203 // Frame for 2203 Exterior Wall | 5d | 2025-10-21 A | 2025-10-27 A | QTS-6901, QTS-4581, QTS-6911, QTS-8591, QTS-8601 SS | 100% |  |  |  |  |  |  |  |  | DH2200 | Construction | IGMP | Doug Hayes | Construction | 01ADMIN | Phase 2 |
| QTS-14711 |  | DH 2200 / Mechanical Gallery 2203 // OH Mechanical Piping | 10d | 2025-10-21 A | 2025-11-17 A | QTS-44591 | 100% |  | 2025-10-21 | 2025-11-03 |  |  |  | Bel-Aire Mechanical, LLC |  | DH2200 | Construction | IGMP | Dave Wiltberger | Construction | 01ADMIN | Phase 2 |
| QTS-14701 |  | DH 2200 / Mechanical Gallery 2203 // Install VESDA | 8d | 2025-10-23 A | 2025-11-03 A | QTS-14691 | 100% |  |  |  |  |  |  | Rosendin Electric, Inc |  | DH2200 | Construction | IGMP | Scott Masterson | Construction | 01ADMIN | Phase 2 |
| QTS-11571 |  | DH 2200 / Mechanical Gallery 2203 // Frame Fan Wall | 5d | 2025-10-28 A | 2025-11-05 A | QTS-10381, QTS-14711 | 100% |  | 2025-10-28 | 2025-11-03 |  |  |  |  |  | DH2200 | Construction | IGMP | Doug Hayes | Construction | 01ADMIN | Phase 2 |
| QTS-12201 |  | DH 2200 / Mechanical Gallery 2203 // Hang, Tape, & Finish Drywall for 2203 Exterior Wall | 10d | 2025-10-28 A | 2025-11-10 A | QTS-10381 | 100% |  |  |  |  |  |  |  |  | DH2200 | Construction | IGMP | Doug Hayes | Construction | 01ADMIN | Phase 2 |
| QTS-12551 |  | DH 2200 / Mechanical Gallery 2203 // In Wall Electrical Rough for Fan Wall | 2d | 2025-11-04 A | 2025-11-04 A | QTS-11571 FF+1d | 100% |  | 2025-11-04 | 2025-11-05 |  |  |  | Rosendin Electric, Inc |  | DH2200 | Construction | IGMP | Scott Masterson | Construction | 01ADMIN | Phase 2 |
| QTS-16521 |  | DH 2200 / Mechanical Gallery 2203 // Install OH Electrical, FA/ EPMS/BMS Conduit & Grounding | 10d | 2025-11-12 A | 2026-01-14 | QTS-14711 | 100% | 0d | 2025-11-11 | 2025-11-21 | 47d | 25d | QTS-PHX3 DC1 - 6 day w/ Holidays | Rosendin Electric, Inc |  | DH2200 | Construction | IGMP | Scott Masterson | Construction | 01ADMIN | Phase 2 |
| QTS-13711 |  | DH 2200 / Mechanical Gallery 2203 // Paint Walls for 2203 Wall | 3d | 2025-11-19 A | 2025-11-21 A | QTS-12201 | 100% |  |  |  |  |  |  |  |  | DH2200 | Construction | IGMP | Sean Waisner | Construction | 01ADMIN | Phase 2 |
| QTS-14181 |  | DH 2200 / Mechanical Gallery 2203 // Top of Wall Fire Stop for 2203 Wall Exterior Wall | 2d | 2025-11-24 A | 2025-11-25 A | QTS-13711 | 100% |  |  |  |  |  |  |  |  | DH2200 | Construction | IGMP | Sean Waisner | Construction | 01ADMIN | Phase 2 |
| QTS-12841 |  | DH 2200 / Mechanical Gallery 2203 // In Wall Inspection for Fan Wall | 1d | 2026-01-14 | 2026-01-14 | QTS-12551 |  |  |  |  | 22d | 0d | QTS-PHX3 DC1 - 6 day w/ Holidays | Bel-Aire Mechanical, LLC |  | DH2200 | Construction | IGMP | Dave Wiltberger | Construction | 01ADMIN | Phase 2 |
| QTS-13721 |  | DH 2200 / Mechanical Gallery 2203 // Paint Fan Walls | 5d | 2026-01-15 | 2026-01-21 | QTS-12841, QTS-12991 |  |  |  |  | 22d | 0d | QTS-PHX3 DC1 - 6 day w/ Holidays | Pennington Painting Company, LLC |  | DH2200 | Construction | IGMP | Sean Waisner | Construction | 01ADMIN | Phase 2 |
| QTS-12991 |  | DH 2200 / Mechanical Gallery 2203 // Hang, Tape, & Finish Fan Drywall Exterior Wall | 5d | 2026-01-22 A | 2026-01-27 A | QTS-12551 | 100% |  |  |  |  |  | QTS-PHX3 DC1 - 6 day w/ Holidays | Performance Contracting, Inc. |  | DH2200 | Construction | IGMP | Sean Waisner | Construction | 01ADMIN | Phase 2 |
| QTS-14721 |  | DH 2200 / Mechanical Gallery 2203 // Install Security Screen Above Fan Wall | 3d | 2026-01-22 | 2026-01-24 | QTS-13721, QTS-99680, QTS-14701, QTS-1001250 |  |  |  |  | 22d | 0d | QTS-PHX3 DC1 - 6 day w/ Holidays | Performance Contracting, Inc. |  | DH2200 | Construction | IGMP | Sean Waisner | Construction | 01ADMIN | Phase 2 |
| QTS-46611 |  | DH 2200 / Mechanical Gallery 2203 // Set EPMS/BMS Panels | 4d | 2026-01-22 | 2026-01-26 | QTS-13721 |  |  |  |  | 47d | 25d | QTS-PHX3 DC1 - 6 day w/ Holidays | Rosendin Electric, Inc |  | DH2200 | Construction | IGMP | Scott Masterson | Construction | 01ADMIN | Phase 2 |
| QTS-15281 |  | DH 2200 / Mechanical Gallery 2203 // OFCI - L2 SET IN PLACE - Eq Type # - DH CRAH - 14 units | 6d | 2026-01-26 | 2026-01-31 | QTS-13711, QTS-14721, QTS-34751, QTS-34761, QTS-34771, QTS-34781, QTS-34791, QTS-34801, QTS-34811, QTS-34821, QTS-34831, QTS-34841, QTS-34851, QTS-34861, QTS-34871, QTS-34881, QTS-14711, QTS-14191 SS |  |  |  |  | 22d | 0d | QTS-PHX3 DC1 - 6 day w/ Holidays | Bel-Aire Mechanical, LLC |  | DH2200 | Construction | IGMP | Dave Wiltberger | Construction |  | Phase 2 |
| QTS-16281 |  | DH 2200 / Mechanical Gallery 2203 // CRAH Unit Mechanical Connections | 10d | 2026-02-02 | 2026-02-12 | QTS-15281 |  |  |  |  | 22d | 0d | QTS-PHX3 DC1 - 6 day w/ Holidays | Bel-Aire Mechanical, LLC |  | DH2200 | Construction | IGMP | Dave Wiltberger | Construction |  | Phase 2 |
| QTS-16291 |  | DH 2200 / Mechanical Gallery 2203 // Install Angle Seal Around Units | 2d | 2026-02-02 | 2026-02-03 | QTS-15281 |  |  |  |  | 61d | 22d | QTS-PHX3 DC1 - 6 day w/ Holidays | Performance Contracting, Inc. |  | DH2200 | Construction | IGMP | Sean Waisner | Construction |  | Phase 2 |
| QTS-16511 |  | DH 2200 / Mechanical Gallery 2203 // Install Electrical Tray | 5d | 2026-02-13 | 2026-02-18 | QTS-16521, QTS-14711, QTS-16281 |  |  |  |  | 22d | 0d | QTS-PHX3 DC1 - 6 day w/ Holidays | Rosendin Electric, Inc |  | DH2200 | Construction | IGMP | Scott Masterson | Construction |  | Phase 2 |
| QTS-17111 |  | DH 2200 / Mechanical Gallery 2203 // Install Basket Tray for LV | 5d | 2026-02-19 | 2026-02-24 | QTS-16511 |  |  |  |  | 22d | 0d | QTS-PHX3 DC1 - 6 day w/ Holidays | Rosendin Electric, Inc |  | DH2200 | Construction | IGMP | Scott Masterson | Construction |  | Phase 2 |
| QTS-17961 |  | DH 2200 / Mechanical Gallery 2203 // Install BMS & EPMS Cable and Terminations | 10d | 2026-02-25 | 2026-03-07 | QTS-17111, QTS-46611 |  |  |  |  | 22d | 6d | QTS-PHX3 DC1 - 6 day w/ Holidays | Rosendin Electric, Inc |  | DH2200 | Construction | IGMP | Scott Masterson | Construction |  | Phase 2 |
|  | 1 | **Gallery 2202 Electrical** |  | 2025-10-13 | 2026-03-13 |  |  |  |  |  |  |  |  |  |  |  |  |  |  |  |  |  |
| QTS-14691 |  | DH 2200 / Electrical Gallery 2202 // Install VESDA | 8d | 2025-10-13 A | 2025-10-22 A | QTS-13741 | 100% |  |  |  |  |  |  | Rosendin Electric, Inc |  | DH2200 | Construction | IGMP | Scott Masterson | Construction | 01ADMIN | Phase 2 |
| QTS-46621 |  | DH 2200 / Electrical Gallery 2202 // Install OH Electrical, FA/ EPMS/BMS Conduit & Grounding | 10d | 2025-10-23 A | 2026-01-14 | QTS-14691 | 100% | 0d | 2025-10-23 | 2025-11-03 | 47d | 25d | QTS-PHX3 DC1 - 6 day w/ Holidays | Rosendin Electric, Inc |  | DH2200 | Construction | IGMP | Scott Masterson | Construction | 01ADMIN | Phase 2 |
| QTS-16831 |  | DH 2200 / Electrical Gallery 2202 // House Panels | 2d | 2026-01-31 | 2026-02-02 | QTS-14951, QTS-15751 |  |  |  |  | 40d | 0d | QTS-PHX3 DC1 - 6 day w/ Holidays | Rosendin Electric, Inc |  | DH2200 | Construction | IGMP | Scott Masterson | Construction |  | Phase 2 |
| QTS-18281 |  | DH 2200 / Electrical Gallery 2202 // Pull LV Cables Branch Circuits | 5d | 2026-02-03 | 2026-02-07 | QTS-16831 |  |  |  |  | 40d | 0d | QTS-PHX3 DC1 - 6 day w/ Holidays | Rosendin Electric, Inc |  | DH2200 | Construction | IGMP | Scott Masterson | Construction |  | Phase 2 |
| QTS-17711 |  | DH 2200 / Electrical Gallery 2202 // Install Conduit from UPS Pod to Chillers Line Up A-D | 6d | 2026-02-06 | 2026-02-12 | QTS-43601, QTS-1000360, QTS-1000370, QTS-1761, QTS-14691, QTS-13001 |  |  |  |  | 5d | 0d | QTS-PHX3 DC1 - 6 day w/ Holidays | Rosendin Electric, Inc |  | DH2200 | Construction | IGMP | Scott Masterson | Construction | 01ADMIN | Phase 2 |
| QTS-18521 |  | DH 2200 / Electrical Gallery 2202 // Terminate Panels | 6d | 2026-02-09 | 2026-02-14 | QTS-18281 |  |  |  |  | 40d | 24d | QTS-PHX3 DC1 - 6 day w/ Holidays | Rosendin Electric, Inc |  | DH2200 | Construction | IGMP | Scott Masterson | Construction |  | Phase 2 |
| QTS-18651 |  | DH 2200 / Electrical Gallery 2202 // Install Conduit from UPS Pod to Pumps Line Up A-D | 6d | 2026-02-09 | 2026-02-14 | QTS-3421 FF, QTS-17711 SS+2d |  |  |  |  | 6d | 0d | QTS-PHX3 DC1 - 6 day w/ Holidays | Rosendin Electric, Inc |  | DH2200 | Construction | IGMP | Scott Masterson | Construction |  | Phase 2 |
| QTS-14171 |  | DH 2200 / Electrical Gallery 2202 // Install Electrical Tray | 5d | 2026-02-13 | 2026-02-18 | QTS-17711, QTS-46621 |  |  |  |  | 22d | 0d | QTS-PHX3 DC1 - 6 day w/ Holidays | Rosendin Electric, Inc |  | DH2200 | Construction | IGMP | Scott Masterson | Construction |  | Phase 2 |
| QTS-18641 |  | DH 2200 / Electrical Gallery 2202 // Pull & Terminate from UPS Pod to Chillers Line Up A-D | 3d | 2026-02-13 | 2026-02-16 | QTS-17711, QTS-13551 |  |  |  |  | 5d | 0d | QTS-PHX3 DC1 - 6 day w/ Holidays | Rosendin Electric, Inc |  | DH2200 | Construction | IGMP | Scott Masterson | Construction |  | Phase 2 |
| QTS-39782 |  | DH 2200 / Electrical Gallery 2202 // Install Conduit from UPS Pod to Chillers Lineup E-R | 6d | 2026-02-13 | 2026-02-19 | QTS-17711 |  |  |  |  | 13d | 0d | QTS-PHX3 DC1 - 6 day w/ Holidays | Rosendin Electric, Inc |  | DH2200 | Construction | IGMP | Scott Masterson | Construction |  | Phase 2 |
| QTS-39802 |  | DH 2200 / Electrical Gallery 2202 // Install Conduit from UPS Pod to Pumps Lineup E-R | 6d | 2026-02-16 | 2026-02-21 | QTS-39782 SS+2d, QTS-18651 |  |  |  |  | 15d | 0d | QTS-PHX3 DC1 - 6 day w/ Holidays | Rosendin Electric, Inc |  | DH2200 | Construction | IGMP | Scott Masterson | Construction |  | Phase 2 |
| QTS-18961 |  | DH 2200 / Electrical Gallery 2202 // Pull & Terminate from UPS Pod to Pumps Line Up A-D | 3d | 2026-02-17 | 2026-02-19 | QTS-18651, QTS-18641, QTS-13551 |  |  |  |  | 5d | 0d | QTS-PHX3 DC1 - 6 day w/ Holidays | Rosendin Electric, Inc |  | DH2200 | Construction | IGMP | Scott Masterson | Construction |  | Phase 2 |
| QTS-15271 |  | DH 2200 / Electrical Gallery 2202 // Install Basket Tray for LV | 5d | 2026-02-19 | 2026-02-24 | QTS-14171 |  |  |  |  | 22d | 0d | QTS-PHX3 DC1 - 6 day w/ Holidays | Rosendin Electric, Inc |  | DH2200 | Construction | IGMP | Scott Masterson | Construction |  | Phase 2 |
| QTS-39792 |  | DH 2200 / Electrical Gallery 2202 // Pull & Terminate from UPS Pod to Chillers Lineup E-R | 3d | 2026-02-20 | 2026-02-23 | QTS-39782, QTS-18641 |  |  |  |  | 13d | 0d | QTS-PHX3 DC1 - 6 day w/ Holidays | Rosendin Electric, Inc |  | DH2200 | Construction | IGMP | Scott Masterson | Construction |  | Phase 2 |
| QTS-39812 |  | DH 2200 / Electrical Gallery 2202 // Pull & Terminate from UPS Pod to Pumps Lineup E-R | 3d | 2026-02-23 | 2026-02-25 | QTS-39802, QTS-39792 FF |  |  |  |  | 15d | 0d | QTS-PHX3 DC1 - 6 day w/ Holidays | Rosendin Electric, Inc |  | DH2200 | Construction | IGMP | Scott Masterson | Construction |  | Phase 2 |
| QTS-16071 |  | DH 2200 / Electrical Gallery 2202 // Install BMS & EPMS Cable and Terminations | 10d | 2026-02-25 | 2026-03-07 | QTS-15271 |  |  |  |  | 22d | 6d | QTS-PHX3 DC1 - 6 day w/ Holidays | Rosendin Electric, Inc |  | DH2200 | Construction | IGMP | Scott Masterson | Construction |  | Phase 2 |

Notes:
- QTS-14711: allucent_notes_20251104_160200: David Wiltberger on 2025-11-04 14:11: not in sequence right / allucent_notes_20251111_182405: David Wiltberger on 2025-11-04 14:11: not in sequence right / allucent_notes_20251118_192630: David Wiltberger on 2025-11-04 14:11: not in sequence right / David Wiltberger on 2025-11-17 16:11: out of sequence / allucent_notes: 2025-11-04 14:11 - User: David Wiltberger - Date Added: 2025-11-04 14:11 - Note: not in sequence right / 2025-11-17 16:11 - User: David Wiltberger - Date Added: 2025-11-17 16:11 - Note: out of sequence
- QTS-11571: allucent_notes_20251104_160200: Zack Goertz on 2025-11-03T16:58:22.054Z: Fan wall cannot be framed until bel-aire installs chiller mains. They are currently half way through 1201 mechanical gallery / Jason Johnston on 2025-11-04 16:11: Update needed / allucent_notes_20251111_182405: Zack Goertz on 2025-11-03T16:58:22.054Z: Fan wall cannot be framed until bel-aire installs chiller mains. They are currently half way through 1201 mechanical gallery / Jason Johnston on 2025-11-04 16:11: Update needed / allucent_notes_20251118_192630: Zack Goertz on 2025-11-03T16:58:22.054Z: Fan wall cannot be framed until bel-aire installs chiller mains. They are currently half way through 1201 mechanical gallery / Jason Johnston on 2025-11-04 16:11: Update needed / allucent_notes: 2025-11-03T16:58:22.054Z - User: Zack Goertz - Date Added: 2025-11-03T16:58:22.054Z - Note: Fan wall cannot be framed until bel-aire installs chiller mains. They are currently half way through 1201 mechanical gallery / 2025-11-04 16:11 - User: Jason John
- QTS-12551: allucent_notes_20251230_164549: Jason Johnston on 2025-11-11 16:11: Waiting until after early access / Jason Johnston on 2025-11-19T02:25:03.617Z: undo / David Wiltberger on 2025-12-02 14:01: no wall yet / David Wiltberger on 2025-12-30 16:18: no update / allucent_notes_20251111_182405: Jason Johnston on 2025-11-11 16:11: Waiting until after early access / allucent_notes_20251118_192630: Jason Johnston on 2025-11-11 16:11: Waiting until after early access / Jason Johnston on 2025-11-19T02:25:03.617Z: undo / allucent_notes_20251202_153722: Jason Johnston on 2025-11-11 16:11: Waiting until after early access / Jason Johnston on 2025-11-19T02:25:03.617Z: undo / David Wiltberger on 2025-12-02 14:01: no wall yet / allucent_notes_20251209_203830: Jason Johnston on 2025-11-11 16:11: Waiting until after early access / Jason Johnston on 2025-11-19T02:25:03.617Z: undo / David Wiltberger on 2025-12-02 14:01: no wall yet / allucent_notes_20251216_165335: Jason Johnston on 2025-11-11 16:11: Waiting until after early access / Jason Johnston on 2025-11-19T02:25:03.617Z: undo / David Wiltberger on 2025-12-02 14:01: no wall yet / allucent_notes: 2025-11-11 16:11 - User: Jason Johnston - Date Added: 2025-11-11 16:11 - Note: Waiting until after early access / 2025-11-19T02:25:03.617Z - User: Jason Johnston - Date Added: 2025-11-19T02:25:03.617Z - Note: undo / 2025-12-02 14:01 - User: David Wiltbe
- QTS-16521: allucent_notes_20251230_164549: Scott Masterson on 2025-11-04 14:11: Need CRAHs set (higher work activities completed) before electrical can start. Need to get estimated date of set. / Jason Johnston on 2025-11-11 16:11: Waiting until after early access / Jason Johnston on 2025-11-19T02:25:07.592Z: undo / David Wiltberger on 2025-12-02 14:01: No wall yet / Jason Johnston on 2025-12-16 07:59: won't resume until BOH is complete. / allucent_notes_20251104_160200: Scott Masterson on 2025-11-04 14:11: Need CRAHs set (higher work activities completed) before electrical can start. Need to get estimated date of set. / allucent_notes_20251111_182405: Scott Masterson on 2025-11-04 14:11: Need CRAHs set (higher work activities completed) before electrical can start. Need to get estimated date of set. / Jason Johnston on 2025-11-11 16:11: Waiting until after early access / allucent_notes_20251118_192630: Scott Masterson on 2025-11-04 14:11: Need CRAHs set (higher work activities completed) before electrical can start. Need to get estimated date of set. / Jason Johnston on 2025-11-11 16:11: Waiting until after early access / Jason Johnston on 2025-11-19T02:25:07.592Z: undo / allucent_notes_20251202_153722: Scott Masterson on 2025-11-04 14:11: Need CRAHs set (higher work activities completed) before electrical can start. Need to get estimated date of set. / Jason Johnston on 2025-11-11 16:11: Waiting until after early access / Jason Johnston on 2025-11-19T02:25:07.592Z: undo / David Wiltberger on 2025-12-02 14:01: No wall yet / allucent_notes_20251209_203830: Scott Masterson on 2025-11-04 14:11: Need CRAHs set (higher work activities completed) before electrical can start. Need to get estimated date of set. / Jason Johnston on 2025-11-11 16:11: Waiting until after early access / Jason Johnston on 2025-11-19T02:25:07.592Z: undo / David Wiltberger on 2025-12-02 14:01: No wall yet / allucent_notes_20251216_165335: Scott Masterson on 2025-11-04 14:11: Need CRAHs set (higher work activities completed) before electrical can start. Need to get estimated date of set. / Jason Johnston on 2025-11-11 16:11: Waiting until after early access / Jason Johnston on 2025-11-19T02:25:07.592Z: undo / David Wiltberger on 2025-12-02 14:01: No wall yet / Jason Johnston on 2025-12-16 07:59: won't resume until BOH is complete. / allucent_notes: 2025-11-04 14:11 - User: Scott Masterson - Date Added: 2025-11-04 14:11 - Note: Need CRAHs set (higher work activities completed) before electrical can start. Need to get estimated date of set. / 2025-11-11 16:11 - User: Jason Johnston - Date Added: 2025
- QTS-13711: allucent_notes_20251111_182405: Jason Johnston on 2025-11-11 16:11: Waiting until after early access / allucent_notes_20251118_192630: Jason Johnston on 2025-11-11 16:11: Waiting until after early access / allucent_notes_20251202_153722: Jason Johnston on 2025-11-11 16:11: Waiting until after early access / allucent_notes: 2025-11-11 16:11 - User: Jason Johnston - Date Added: 2025-11-11 16:11 - Note: Waiting until after early access
- QTS-12841: allucent_notes_20251230_164549: David Wiltberger on 2025-12-30 16:18: no update / allucent_notes: 2025-12-30 16:18 - User: David Wiltberger - Date Added: 2025-12-30 16:18 - Note: no update
- QTS-46621: allucent_notes_20251230_164549: Jason Johnston on 2025-11-11 16:11: SWO / Jason Johnston on 2025-11-19T02:25:11.371Z: undo / David Wiltberger on 2025-12-02 14:02: Impacted by stop work / allucent_notes_20251111_182405: Jason Johnston on 2025-11-11 16:11: SWO / allucent_notes_20251118_192630: Jason Johnston on 2025-11-11 16:11: SWO / Jason Johnston on 2025-11-19T02:25:11.371Z: undo / allucent_notes_20251202_153722: Jason Johnston on 2025-11-11 16:11: SWO / Jason Johnston on 2025-11-19T02:25:11.371Z: undo / David Wiltberger on 2025-12-02 14:02: Impacted by stop work / allucent_notes_20251209_203830: Jason Johnston on 2025-11-11 16:11: SWO / Jason Johnston on 2025-11-19T02:25:11.371Z: undo / David Wiltberger on 2025-12-02 14:02: Impacted by stop work / allucent_notes_20251216_165335: Jason Johnston on 2025-11-11 16:11: SWO / Jason Johnston on 2025-11-19T02:25:11.371Z: undo / David Wiltberger on 2025-12-02 14:02: Impacted by stop work / allucent_notes: 2025-11-11 16:11 - User: Jason Johnston - Date Added: 2025-11-11 16:11 - Note: SWO / 2025-11-19T02:25:11.371Z - User: Jason Johnston - Date Added: 2025-11-19T02:25:11.371Z - Note: undo / 2025-12-02 14:02 - User: David Wiltberger - Date Added: 2025-12-02

| ID | WBS | Activity | Duration | Start | Finish | Predecessors | Total float | Free float | Calendar | Location | Project Section-1 | Phase-1-1 | Baseline | Layton Responsible Party | Project Section | Allucent CSI Group | Subcontractor |
| --- | --- | --- | --- | --- | --- | --- | --- | --- | --- | --- | --- | --- | --- | --- | --- | --- | --- |
|  | 1 | **Electrical** |  | 2026-01-20 | 2026-03-13 |  |  |  |  |  |  |  |  |  |  |  |  |
|  | 7 | **DH 2200 IDF Cabinets** |  | 2026-01-21 | 2026-01-24 |  |  |  |  |  |  |  |  |  |  |  |  |
| QTS-6560 |  | DH 2200 / Electrical Gallery 2202/2203 // Install Fire Rated Plywood | 1d | 2026-01-21 | 2026-01-21 | QTS-14181, QTS-13371 | 75d | 0d | QTS-PHX3 DC1 - 6 day w/ Holidays | DH2200 | Construction | Phase 2 | GMP | Sean Waisner | Construction | 01ADMIN |  |
| QTS-38581 |  | DH 2200 / Electrical Gallery 2202/2203 // Set IDF Cabinet | 1d | 2026-01-22 | 2026-01-22 | QTS-6560 | 75d | 0d | QTS-PHX3 DC1 - 6 day w/ Holidays | DH2200 | Construction | Phase 2 | GMP | Scott Masterson | Construction | 01ADMIN | Rosendin Electric, Inc |
| QTS-38591 |  | DH 2200 / Electrical Gallery 2202/2203 // Set IDF Conduit | 2d | 2026-01-23 | 2026-01-24 | QTS-38581 | 75d | 0d | QTS-PHX3 DC1 - 6 day w/ Holidays | DH2200 | Construction | Phase 2 | GMP | Scott Masterson | Construction | 01ADMIN | Rosendin Electric, Inc |
|  | 1 | **A2200 Lineup** |  | 2026-01-20 | 2026-02-23 |  |  |  |  |  |  |  |  |  |  |  |  |
| QTS-14151 |  | Gallery 2202 / Lineup A2200 // Install Hangers & Supports | 3d | 2026-01-20 | 2026-01-22 | QTS-13371 SS+1d | 31d | 0d | QTS-PHX3 DC1 - 6 day w/ Holidays | DH2200 | Construction | Phase 2 | IGMP | Scott Masterson | Construction | 01ADMIN | Rosendin Electric, Inc |
| QTS-14951 |  | Gallery 2202 / Lineup A2200 // Install Raceways from LV POD to COD | 7d | 2026-01-23 | 2026-01-30 | QTS-14151 | 31d | 0d | QTS-PHX3 DC1 - 6 day w/ Holidays | DH2200 | Construction | Phase 2 | IGMP | Scott Masterson | Construction | 01ADMIN | Rosendin Electric, Inc |
| QTS-15751 |  | Gallery 2202 / Lineup A2200 // OFCI - L2 SET IN PLACE - Eq Type # - COD/ATS-210-A - Skid 1-3 | 2d | 2026-01-29 | 2026-01-30 | QTS-1000360, QTS-1000350, QTS-33231, QTS-13001 | 30d | 0d | QTS-PHX3 DC1 - 6 day w/ Holidays | DH2200 | Construction | Phase 2 | IGMP | Scott Masterson | Construction | 01ADMIN | Rosendin Electric, Inc |
| QTS-16271 |  | Gallery 2202 / Lineup A2200 // Set Reserve Busway Segment | 2d | 2026-01-31 | 2026-02-02 | QTS-15751, QTS-14951, QTS-50031 | 52d | 2d | QTS-PHX3 DC1 - 6 day w/ Holidays | DH2200 | Construction | Phase 2 | IGMP | Scott Masterson | Construction |  | Rosendin Electric, Inc |
| QTS-16841 |  | Gallery 2202 / Lineup A2200 // Pull LV Cables from POD to ATS | 4d | 2026-01-31 | 2026-02-04 | QTS-15751, QTS-14951, QTS-13551, QTS-45841 FF+1d | 50d | 0d | QTS-PHX3 DC1 - 6 day w/ Holidays | DH2200 | Construction | Phase 2 | IGMP | Scott Masterson | Construction |  | Rosendin Electric, Inc |
| QTS-45841 |  | Gallery 2202 / Lineup A2200 // OFCI - L2 SET IN PLACE - Eq Type # - COD/ATS-210-A - Skid 4-6 | 2d | 2026-01-31 | 2026-02-02 | QTS-1000360, QTS-1000350, QTS-15751 | 30d | 0d | QTS-PHX3 DC1 - 6 day w/ Holidays | DH2200 | Construction | Phase 2 | IGMP | Scott Masterson | Construction |  | Rosendin Electric, Inc |
| QTS-17731 |  | Gallery 2202 / Lineup A2200 // Pull LV Cables from Reserve Bus to ATS | 2d | 2026-02-05 | 2026-02-06 | QTS-14951, QTS-16841, QTS-16271 | 50d | 0d | QTS-PHX3 DC1 - 6 day w/ Holidays | DH2200 | Construction | Phase 2 | IGMP | Scott Masterson | Construction |  | Rosendin Electric, Inc |
| QTS-18121 |  | Gallery 2202 / Lineup A2200 // Terminate & Torque ATS | 7d | 2026-02-07 | 2026-02-14 | QTS-17731, QTS-16841 | 50d | 0d | QTS-PHX3 DC1 - 6 day w/ Holidays | DH2200 | Construction | Phase 2 | IGMP | Scott Masterson | Construction |  | Rosendin Electric, Inc |
| QTS-18131 |  | Gallery 2202 / Lineup A2200 // Terminate & Torque COD | 7d | 2026-02-16 | 2026-02-23 | QTS-16841, QTS-18121 | 50d | 14d | QTS-PHX3 DC1 - 6 day w/ Holidays | DH2200 | Construction | Phase 2 | IGMP | Scott Masterson | Construction |  | Rosendin Electric, Inc |
|  | 2 | **B2200 Lineup** |  | 2026-01-20 | 2026-02-27 |  |  |  |  |  |  |  |  |  |  |  |  |
| QTS-1841 |  | Gallery 2202 / Lineup B2200 // Install Hangers & Supports | 3d | 2026-01-20 | 2026-01-22 | QTS-14151 SS | 31d | 0d | QTS-PHX3 DC1 - 6 day w/ Holidays | DH2200 | Construction | Phase 2 | IGMP | Scott Masterson | Construction | 01ADMIN | Rosendin Electric, Inc |
| QTS-2841 |  | Gallery 2202 / Lineup B2200 // Install Raceways from LV POD to COD | 7d | 2026-01-23 | 2026-01-30 | QTS-1841, QTS-14951 SS | 31d | 0d | QTS-PHX3 DC1 - 6 day w/ Holidays | DH2200 | Construction | Phase 2 | IGMP | Scott Masterson | Construction | 01ADMIN | Rosendin Electric, Inc |
| QTS-4011 |  | Gallery 2202 / Lineup B2200 // OFCI - L2 SET IN PLACE - Eq Type # - COD/ATS-210-A - Skid 1-3 | 2d | 2026-02-03 | 2026-02-04 | QTS-33271, QTS-45841 | 30d | 0d | QTS-PHX3 DC1 - 6 day w/ Holidays | DH2200 | Construction | Phase 2 | IGMP | Scott Masterson | Construction |  | Rosendin Electric, Inc |
| QTS-45851 |  | Gallery 2202 / Lineup B2200 // OFCI - L2 SET IN PLACE - Eq Type # - COD/ATS-210-A - Skid 4-6 | 2d | 2026-02-05 | 2026-02-06 | QTS-4011 | 30d | 0d | QTS-PHX3 DC1 - 6 day w/ Holidays | DH2200 | Construction | Phase 2 | IGMP | Scott Masterson | Construction |  | Rosendin Electric, Inc |
| QTS-5051 |  | Gallery 2202 / Lineup B2200 // Set Reserve Busway Segment | 2d | 2026-02-05 | 2026-02-06 | QTS-4011, QTS-2841, QTS-50031 | 48d | 2d | QTS-PHX3 DC1 - 6 day w/ Holidays | DH2200 | Construction | Phase 2 | IGMP | Scott Masterson | Construction |  | Rosendin Electric, Inc |
| QTS-6461 |  | Gallery 2202 / Lineup B2200 // Pull LV Cables from POD to ATS | 4d | 2026-02-05 | 2026-02-09 | QTS-4011, QTS-2841, QTS-13551, QTS-45851 FF+1d | 46d | 0d | QTS-PHX3 DC1 - 6 day w/ Holidays | DH2200 | Construction | Phase 2 | IGMP | Scott Masterson | Construction |  | Rosendin Electric, Inc |
| QTS-8131 |  | Gallery 2202 / Lineup B2200 // Pull LV Cables from Reserve Bus to ATS | 2d | 2026-02-10 | 2026-02-11 | QTS-2841, QTS-6461, QTS-5051 | 46d | 0d | QTS-PHX3 DC1 - 6 day w/ Holidays | DH2200 | Construction | Phase 2 | IGMP | Scott Masterson | Construction |  | Rosendin Electric, Inc |
| QTS-9071 |  | Gallery 2202 / Lineup B2200 // Terminate & Torque ATS | 7d | 2026-02-12 | 2026-02-19 | QTS-8131, QTS-6461 | 46d | 0d | QTS-PHX3 DC1 - 6 day w/ Holidays | DH2200 | Construction | Phase 2 | IGMP | Scott Masterson | Construction |  | Rosendin Electric, Inc |
| QTS-9081 |  | Gallery 2202 / Lineup B2200 // Terminate & Torque COD | 7d | 2026-02-20 | 2026-02-27 | QTS-6461, QTS-9071 | 46d | 10d | QTS-PHX3 DC1 - 6 day w/ Holidays | DH2200 | Construction | Phase 2 | IGMP | Scott Masterson | Construction |  | Rosendin Electric, Inc |

| ID | WBS | Activity | Duration | Start | Finish | Predecessors | Total float | Free float | Calendar | Subcontractor | Location | Project Section-1 | Phase-1-1 | Baseline | Layton Responsible Party | Project Section | Allucent CSI Group |
| --- | --- | --- | --- | --- | --- | --- | --- | --- | --- | --- | --- | --- | --- | --- | --- | --- | --- |
|  | 3 | **C2200 Lineup** |  | 2026-01-23 | 2026-03-04 |  |  |  |  |  |  |  |  |  |  |  |  |
| QTS-1851 |  | Gallery 2202 / Lineup C2200 // Install Hangers & Supports | 3d | 2026-01-23 | 2026-01-26 | QTS-1841 | 32d | 0d | QTS-PHX3 DC1 - 6 day w/ Holidays | Rosendin Electric, Inc | DH2200 | Construction | Phase 2 | IGMP | Scott Masterson | Construction | 01ADMIN |
| QTS-2851 |  | Gallery 2202 / Lineup C2200 // Install Raceways from LV POD to COD | 7d | 2026-01-31 | 2026-02-07 | QTS-1851, QTS-2841 | 31d | 0d | QTS-PHX3 DC1 - 6 day w/ Holidays | Rosendin Electric, Inc | DH2200 | Construction | Phase 2 | IGMP | Scott Masterson | Construction |  |
| QTS-4021 |  | Gallery 2202 / Lineup C2200 // OFCI - L2 SET IN PLACE - Eq Type # - COD/ATS-210-A - Skid 1-3 | 2d | 2026-02-07 | 2026-02-09 | QTS-33311, QTS-45851 | 34d | 0d | QTS-PHX3 DC1 - 6 day w/ Holidays | Rosendin Electric, Inc | DH2200 | Construction | Phase 2 | IGMP | Scott Masterson | Construction |  |
| QTS-45861 |  | Gallery 2202 / Lineup C2200 // OFCI - L2 SET IN PLACE - Eq Type # - COD/ATS-210-A - Skid 4-6 | 2d | 2026-02-10 | 2026-02-11 | QTS-4021 | 34d | 0d | QTS-PHX3 DC1 - 6 day w/ Holidays | Rosendin Electric, Inc | DH2200 | Construction | Phase 2 | IGMP | Scott Masterson | Construction |  |
| QTS-5071 |  | Gallery 2202 / Lineup C2200 // Set Reserve Busway Segment | 2d | 2026-02-10 | 2026-02-11 | QTS-4021, QTS-2851, QTS-50031 | 44d | 2d | QTS-PHX3 DC1 - 6 day w/ Holidays | Rosendin Electric, Inc | DH2200 | Construction | Phase 2 | IGMP | Scott Masterson | Construction |  |
| QTS-6471 |  | Gallery 2202 / Lineup C2200 // Pull LV Cables from POD to ATS | 4d | 2026-02-10 | 2026-02-13 | QTS-4021, QTS-2851, QTS-13551, QTS-45861 FF+1d | 42d | 0d | QTS-PHX3 DC1 - 6 day w/ Holidays | Rosendin Electric, Inc | DH2200 | Construction | Phase 2 | IGMP | Scott Masterson | Construction |  |
| QTS-8151 |  | Gallery 2202 / Lineup C2200 // Pull LV Cables from Reserve Bus to ATS | 2d | 2026-02-14 | 2026-02-16 | QTS-2851, QTS-6471, QTS-5071 | 42d | 0d | QTS-PHX3 DC1 - 6 day w/ Holidays | Rosendin Electric, Inc | DH2200 | Construction | Phase 2 | IGMP | Scott Masterson | Construction |  |
| QTS-9101 |  | Gallery 2202 / Lineup C2200 // Terminate & Torque ATS | 7d | 2026-02-17 | 2026-02-24 | QTS-8151, QTS-6471 | 42d | 0d | QTS-PHX3 DC1 - 6 day w/ Holidays | Rosendin Electric, Inc | DH2200 | Construction | Phase 2 | IGMP | Scott Masterson | Construction |  |
| QTS-9111 |  | Gallery 2202 / Lineup C2200 // Terminate & Torque COD | 7d | 2026-02-25 | 2026-03-04 | QTS-6471, QTS-9101 | 42d | 11d | QTS-PHX3 DC1 - 6 day w/ Holidays | Rosendin Electric, Inc | DH2200 | Construction | Phase 2 | IGMP | Scott Masterson | Construction |  |
|  | 4 | **D2200 Lineup** |  | 2026-01-27 | 2026-03-09 |  |  |  |  |  |  |  |  |  |  |  |  |
| QTS-1861 |  | Gallery 2202 / Lineup D2200 // Install Hangers & Supports | 3d | 2026-01-27 | 2026-01-29 | QTS-1851 | 32d | 0d | QTS-PHX3 DC1 - 6 day w/ Holidays | Rosendin Electric, Inc | DH2200 | Construction | Phase 2 | IGMP | Scott Masterson | Construction |  |
| QTS-2861 |  | Gallery 2202 / Lineup D2200 // Install Raceways from LV POD to COD | 7d | 2026-01-31 | 2026-02-07 | QTS-1861, QTS-2851 SS | 31d | 0d | QTS-PHX3 DC1 - 6 day w/ Holidays | Rosendin Electric, Inc | DH2200 | Construction | Phase 2 | IGMP | Scott Masterson | Construction |  |
| QTS-4031 |  | Gallery 2202 / Lineup D2200 // OFCI - L2 SET IN PLACE - Eq Type # - COD/ATS-210-A - Skid 1-3 | 2d | 2026-02-12 | 2026-02-13 | QTS-33351, QTS-45861 | 34d | 0d | QTS-PHX3 DC1 - 6 day w/ Holidays | Rosendin Electric, Inc | DH2200 | Construction | Phase 2 | IGMP | Scott Masterson | Construction |  |
| QTS-45871 |  | Gallery 2202 / Lineup D2200 // OFCI - L2 SET IN PLACE - Eq Type # - COD/ATS-210-A - Skid 4-6 | 2d | 2026-02-14 | 2026-02-16 | QTS-4031 | 34d | 0d | QTS-PHX3 DC1 - 6 day w/ Holidays | Rosendin Electric, Inc | DH2200 | Construction | Phase 2 | IGMP | Scott Masterson | Construction |  |
| QTS-5091 |  | Gallery 2202 / Lineup D2200 // Set Reserve Busway Segment | 2d | 2026-02-14 | 2026-02-16 | QTS-4031, QTS-2861, QTS-50031 | 40d | 2d | QTS-PHX3 DC1 - 6 day w/ Holidays | Rosendin Electric, Inc | DH2200 | Construction | Phase 2 | IGMP | Scott Masterson | Construction |  |
| QTS-6481 |  | Gallery 2202 / Lineup D2200 // Pull LV Cables from POD to ATS | 4d | 2026-02-14 | 2026-02-18 | QTS-4031, QTS-2861, QTS-13551, QTS-45871 FF+1d | 38d | 0d | QTS-PHX3 DC1 - 6 day w/ Holidays | Rosendin Electric, Inc | DH2200 | Construction | Phase 2 | IGMP | Scott Masterson | Construction |  |
| QTS-8171 |  | Gallery 2202 / Lineup D2200 // Pull LV Cables from Reserve Bus to ATS | 2d | 2026-02-19 | 2026-02-20 | QTS-2861, QTS-6481, QTS-5091 | 38d | 0d | QTS-PHX3 DC1 - 6 day w/ Holidays | Rosendin Electric, Inc | DH2200 | Construction | Phase 2 | IGMP | Scott Masterson | Construction |  |
| QTS-9131 |  | Gallery 2202 / Lineup D2200 // Terminate & Torque ATS | 7d | 2026-02-21 | 2026-02-28 | QTS-8171, QTS-6481 | 38d | 0d | QTS-PHX3 DC1 - 6 day w/ Holidays | Rosendin Electric, Inc | DH2200 | Construction | Phase 2 | IGMP | Scott Masterson | Construction |  |
| QTS-9141 |  | Gallery 2202 / Lineup D2200 // Terminate & Torque COD | 7d | 2026-03-02 | 2026-03-09 | QTS-6481, QTS-9131 | 38d | 7d | QTS-PHX3 DC1 - 6 day w/ Holidays | Rosendin Electric, Inc | DH2200 | Construction | Phase 2 | IGMP | Scott Masterson | Construction |  |
|  | 5 | **E2200 Lineup** |  | 2026-01-30 | 2026-03-13 |  |  |  |  |  |  |  |  |  |  |  |  |
| QTS-1871 |  | Gallery 2202 / Lineup E2200 // Install Hangers & Supports | 3d | 2026-01-30 | 2026-02-02 | QTS-1861 | 33d | 0d | QTS-PHX3 DC1 - 6 day w/ Holidays | Rosendin Electric, Inc | DH2200 | Construction | Phase 2 | IGMP | Scott Masterson | Construction |  |
| QTS-2871 |  | Gallery 2202 / Lineup E2200 // Install Raceways from LV POD to COD | 7d | 2026-02-09 | 2026-02-16 | QTS-1871, QTS-2861 | 31d | 0d | QTS-PHX3 DC1 - 6 day w/ Holidays | Rosendin Electric, Inc | DH2200 | Construction | Phase 2 | IGMP | Scott Masterson | Construction |  |
| QTS-4041 |  | Gallery 2202 / Lineup E2200 // OFCI - L2 SET IN PLACE - Eq Type # - COD/ATS-210-A - Skid 1-3 | 2d | 2026-02-17 | 2026-02-18 | QTS-33391, QTS-45871 | 34d | 0d | QTS-PHX3 DC1 - 6 day w/ Holidays | Rosendin Electric, Inc | DH2200 | Construction | Phase 2 | IGMP | Scott Masterson | Construction |  |
| QTS-45881 |  | Gallery 2202 / Lineup E2200 // OFCI - L2 SET IN PLACE - Eq Type # - COD/ATS-210-A - Skid 4-6 | 2d | 2026-02-19 | 2026-02-20 | QTS-4041 | 35d | 0d | QTS-PHX3 DC1 - 6 day w/ Holidays | Rosendin Electric, Inc | DH2200 | Construction | Phase 2 | IGMP | Scott Masterson | Construction |  |
| QTS-5111 |  | Gallery 2202 / Lineup E2200 // Set Reserve Busway Segment | 2d | 2026-02-19 | 2026-02-20 | QTS-4041, QTS-2871, QTS-50031 | 36d | 2d | QTS-PHX3 DC1 - 6 day w/ Holidays | Rosendin Electric, Inc | DH2200 | Construction | Phase 2 | IGMP | Scott Masterson | Construction |  |
| QTS-6491 |  | Gallery 2202 / Lineup E2200 // Pull LV Cables from POD to ATS | 4d | 2026-02-19 | 2026-02-23 | QTS-4041, QTS-2871, QTS-13551, QTS-45881 FF+1d | 34d | 0d | QTS-PHX3 DC1 - 6 day w/ Holidays | Rosendin Electric, Inc | DH2200 | Construction | Phase 2 | IGMP | Scott Masterson | Construction |  |
| QTS-8191 |  | Gallery 2202 / Lineup E2200 // Pull LV Cables from Reserve Bus to ATS | 2d | 2026-02-24 | 2026-02-25 | QTS-2871, QTS-6491, QTS-5111 | 34d | 0d | QTS-PHX3 DC1 - 6 day w/ Holidays | Rosendin Electric, Inc | DH2200 | Construction | Phase 2 | IGMP | Scott Masterson | Construction |  |
| QTS-9161 |  | Gallery 2202 / Lineup E2200 // Terminate & Torque ATS | 7d | 2026-02-26 | 2026-03-05 | QTS-8191, QTS-6491 | 34d | 0d | QTS-PHX3 DC1 - 6 day w/ Holidays | Rosendin Electric, Inc | DH2200 | Construction | Phase 2 | IGMP | Scott Masterson | Construction |  |
| QTS-9171 |  | Gallery 2202 / Lineup E2200 // Terminate & Torque COD | 7d | 2026-03-06 | 2026-03-13 | QTS-6491, QTS-9161 | 34d | 8d | QTS-PHX3 DC1 - 6 day w/ Holidays | Rosendin Electric, Inc | DH2200 | Construction | Phase 2 | IGMP | Scott Masterson | Construction |  |

| ID | WBS | Activity | Duration | Start | Finish | Predecessors | Complete | Remaining | Planned start | Planned finish | Total float | Free float | Constraint | Calendar | Subcontractor | Location | Project Section-1 | Phase-1-1 | Baseline | Layton Responsible Party | Project Section | Allucent CSI Group | Level | Phase-1 |
| --- | --- | --- | --- | --- | --- | --- | --- | --- | --- | --- | --- | --- | --- | --- | --- | --- | --- | --- | --- | --- | --- | --- | --- | --- |
|  | 6 | **F2200 Lineup** |  | 2026-02-03 | 2026-03-10 |  |  |  |  |  |  |  |  |  |  |  |  |  |  |  |  |  |  |  |
| QTS-1881 |  | Gallery 2202 / Lineup F2200 // Install Hangers & Supports | 3d | 2026-02-03 | 2026-02-05 | QTS-1871 |  |  |  |  | 33d | 0d |  | QTS-PHX3 DC1 - 6 day w/ Holidays | Rosendin Electric, Inc | DH2200 | Construction | Phase 2 | IGMP | Scott Masterson | Construction |  |  |  |
| QTS-2881 |  | Gallery 2202 / Lineup F2200 // Install Raceways from LV POD to COD | 7d | 2026-02-09 | 2026-02-16 | QTS-1881, QTS-2871 SS |  |  |  |  | 31d | 0d |  | QTS-PHX3 DC1 - 6 day w/ Holidays | Rosendin Electric, Inc | DH2200 | Construction | Phase 2 | IGMP | Scott Masterson | Construction |  |  |  |
| QTS-4051 |  | Gallery 2202 / Lineup F2200 // OFCI - L2 SET IN PLACE - Eq Type # - COD/ATS-210-A - Skid 1-3 | 2d | 2026-02-21 | 2026-02-23 | QTS-33431, QTS-45881 |  |  |  |  | 37d | 0d |  | QTS-PHX3 DC1 - 6 day w/ Holidays | Rosendin Electric, Inc | DH2200 | Construction | Phase 2 | IGMP | Scott Masterson | Construction |  |  |  |
| QTS-45891 |  | Gallery 2202 / Lineup F2200 // OFCI - L2 SET IN PLACE - Eq Type # - COD/ATS-210-A - Skid 4-6 | 2d | 2026-02-24 | 2026-02-25 | QTS-4051 |  |  |  |  | 38d | 1d |  | QTS-PHX3 DC1 - 6 day w/ Holidays | Rosendin Electric, Inc | DH2200 | Construction | Phase 2 | IGMP | Scott Masterson | Construction |  |  |  |
| QTS-5131 |  | Gallery 2202 / Lineup F2200 // Set Reserve Busway Segment | 2d | 2026-02-24 | 2026-02-25 | QTS-4051, QTS-2881, QTS-50031 |  |  |  |  | 39d | 2d |  | QTS-PHX3 DC1 - 6 day w/ Holidays | Rosendin Electric, Inc | DH2200 | Construction | Phase 2 | IGMP | Scott Masterson | Construction |  |  |  |
| QTS-6501 |  | Gallery 2202 / Lineup F2200 // Pull LV Cables from POD to ATS | 4d | 2026-02-24 | 2026-02-27 | QTS-4051, QTS-2881, QTS-13551, QTS-45891 FF+1d |  |  |  |  | 37d | 0d |  | QTS-PHX3 DC1 - 6 day w/ Holidays | Rosendin Electric, Inc | DH2200 | Construction | Phase 2 | IGMP | Scott Masterson | Construction |  |  |  |
| QTS-8211 |  | Gallery 2202 / Lineup F2200 // Pull LV Cables from Reserve Bus to ATS | 2d | 2026-02-28 | 2026-03-02 | QTS-2881, QTS-6501, QTS-5131 |  |  |  |  | 37d | 0d |  | QTS-PHX3 DC1 - 6 day w/ Holidays | Rosendin Electric, Inc | DH2200 | Construction | Phase 2 | IGMP | Scott Masterson | Construction |  |  |  |
| QTS-9191 |  | Gallery 2202 / Lineup F2200 // Terminate & Torque ATS | 5d | 2026-03-03 | 2026-03-07 | QTS-8211, QTS-6501 |  |  |  |  | 37d | 0d |  | QTS-PHX3 DC1 - 6 day w/ Holidays | Rosendin Electric, Inc | DH2200 | Construction | Phase 2 | IGMP | Scott Masterson | Construction |  |  |  |
| QTS-9201 |  | Gallery 2202 / Lineup F2200 // Terminate & Torque COD | 2d | 2026-03-09 | 2026-03-10 | QTS-6501, QTS-9191 |  |  |  |  | 37d | 11d |  | QTS-PHX3 DC1 - 6 day w/ Holidays | Rosendin Electric, Inc | DH2200 | Construction | Phase 2 | IGMP | Scott Masterson | Construction |  |  |  |
|  | 9 | **R2200 Lineup** |  | 2026-02-06 | 2026-03-13 |  |  |  |  |  |  |  |  |  |  |  |  |  |  |  |  |  |  |  |
| QTS-1831 |  | Gallery 2202 / Lineup R2200 // Install Hangers & Supports | 3d | 2026-02-06 | 2026-02-09 | QTS-1881 |  |  |  |  | 37d | 6d |  | QTS-PHX3 DC1 - 6 day w/ Holidays | Rosendin Electric, Inc | DH2200 | Construction | Phase 2 | IGMP | Scott Masterson | Construction |  |  |  |
| QTS-2831 |  | Gallery 2202 / Lineup R2200 // Install Raceways from LV POD to Reserve Busway | 5d | 2026-02-17 | 2026-02-21 | QTS-1831, QTS-2881 |  |  |  |  | 31d | 0d |  | QTS-PHX3 DC1 - 6 day w/ Holidays | Rosendin Electric, Inc | DH2200 | Construction | Phase 2 | IGMP | Scott Masterson | Construction |  |  |  |
| QTS-3991 |  | Gallery 2202 / Lineup R2200 // OFCI - L2 SET IN PLACE - Eq Type # - TIE SWD - 1 unit | 1d | 2026-02-23 | 2026-02-23 | QTS-2831 |  |  |  |  | 34d | 3d |  | QTS-PHX3 DC1 - 6 day w/ Holidays | Rosendin Electric, Inc | DH2200 | Construction | Phase 2 | IGMP | Scott Masterson | Construction |  |  |  |
| QTS-4001 |  | Gallery 2202 / Lineup R2200 // Set Reserve Busway Segment | 4d | 2026-02-23 | 2026-02-26 | QTS-2831, QTS-50031 |  |  |  |  | 31d | 0d |  | QTS-PHX3 DC1 - 6 day w/ Holidays | Rosendin Electric, Inc | DH2200 | Construction | Phase 2 | IGMP | Scott Masterson | Construction |  |  |  |
| QTS-5581 |  | Gallery 2202 / Lineup R2200 // Pull LV Cables from TIE SWD to Reserve Busway | 2d | 2026-02-27 | 2026-02-28 | QTS-2831, QTS-3991, QTS-4001 |  |  |  |  | 31d | 0d |  | QTS-PHX3 DC1 - 6 day w/ Holidays | Rosendin Electric, Inc | DH2200 | Construction | Phase 2 | IGMP | Scott Masterson | Construction |  |  |  |
| QTS-6201 |  | Gallery 2202 / Lineup R2200 // Pull LV Cables from POD to Reserve Busway | 4d | 2026-03-02 | 2026-03-05 | QTS-2831, QTS-5581, QTS-4001, QTS-13551 |  |  |  |  | 31d | 0d |  | QTS-PHX3 DC1 - 6 day w/ Holidays | Rosendin Electric, Inc | DH2200 | Construction | Phase 2 | IGMP | Scott Masterson | Construction |  |  |  |
| QTS-7121 |  | Gallery 2202 / Lineup R2200 // Pull LV Cables from TIE SWD to TIE SWD adjacent # | 5d | 2026-03-06 | 2026-03-11 | QTS-2831, QTS-6201 |  |  |  |  | 31d | 0d |  | QTS-PHX3 DC1 - 6 day w/ Holidays | Rosendin Electric, Inc | DH2200 | Construction | Phase 2 | IGMP | Scott Masterson | Construction |  |  |  |
| QTS-7131 |  | Gallery 2202 / Lineup R2200 // Terminate Reserve Busway | 2d | 2026-03-06 | 2026-03-07 | QTS-6201, QTS-5581 |  |  |  |  | 36d | 0d |  | QTS-PHX3 DC1 - 6 day w/ Holidays | Rosendin Electric, Inc | DH2200 | Construction | Phase 2 | IGMP | Scott Masterson | Construction |  |  |  |
| QTS-9051 |  | Gallery 2202 / Lineup R2200 // Terminate TIE SWD | 2d | 2026-03-12 | 2026-03-13 | QTS-5581, QTS-7121 |  |  |  |  | 31d | 1d |  | QTS-PHX3 DC1 - 6 day w/ Holidays | Rosendin Electric, Inc | DH2200 | Construction | Phase 2 | IGMP | Scott Masterson | Construction |  |  |  |
|  | 4 | **DH 2200 / Rooftop Mechanical** |  | 2025-08-11 | 2026-02-12 |  |  |  |  |  |  |  |  |  |  |  |  |  |  |  |  |  |  |  |
| QTS-1761 |  | DH 2200 / Rooftop Mechanical // OFCI - L2 SET IN PLACE - Eq Type # - Chiller #1RT40 - 7 units | 5d | 2025-08-11 A | 2025-08-11 A | QTS-21521, QTS-35401, QTS-35411, QTS-35421, QTS-35431, QTS-35441, QTS-35451, QTS-35461 | 100% |  | 2025-08-11 | 2025-08-15 |  |  |  |  | Bel-Aire Mechanical, LLC | DH2200 | Construction | Phase 2 | IGMP | Dave Wiltberger | Construction | 01ADMIN |  |  |
| QTS-1791 |  | DH 2200 / Rooftop Mechanical // Set Doghouse Curbs | 6d | 2025-09-09 A | 2025-09-16 A | QTS-22151 | 100% |  |  |  |  |  |  |  | Rosendin Electric, Inc | DH2200 | Construction | Phase 2 | IGMP | Dave Wiltberger | Construction |  |  |  |
| QTS-1771 |  | DH 2200 / Rooftop Mechanical // Set Doghouses | 5d | 2025-09-17 A | 2025-09-23 A | QTS-1791, QTS-19911 | 100% |  |  |  |  |  |  |  | Rosendin Electric, Inc | DH2200 | Construction | Phase 2 | IGMP | Dave Wiltberger | Construction |  |  |  |
| QTS-100640 |  | DH 2200 / Rooftop Mechanical // Install Roof Protection | 2d | 2025-11-17 A | 2025-11-18 A | QTS-22861 SS | 100% |  |  |  |  |  |  |  | Bel-Aire Mechanical, LLC | DH2100 |  |  | IGMP | Dave Wiltberger | Construction | 01ADMIN | Level 2 | Phase 1 |
| QTS-100710 |  | DH 2200 / Rooftop Mechanical // Install Grating, Toe Kicks, Hand Rails for TES Tanks | 5d | 2025-11-24 A | 2025-12-01 A | QTS-100340, QTS-100640, QTS-100430 | 100% |  |  |  |  |  |  | QTS-PHX3 DC1 - 6 day w/ Holidays | Bel-Aire Mechanical, LLC | DH2100 |  |  | IGMP | Dave Wiltberger | Construction | 01ADMIN | Level 2 | Phase 1 |
| QTS-100720 |  | DH 2200 / Rooftop Mechanical // OFCI - ROOF SET IN PLACE - Eq Type # - TES Tanks - 7 units | 1d | 2025-12-05 A | 2025-12-05 A | QTS-100710 | 100% |  |  |  |  |  |  | QTS-PHX3 DC1 - 6 day w/ Holidays | Bel-Aire Mechanical, LLC | DH2100 |  |  | IGMP | Dave Wiltberger | Construction | 01ADMIN | Level 2 | Phase 1 |
| QTS-100650 |  | DH 2200 / Rooftop Mechanical // Install 12" CHWS/R Run-Outs to RPH Vaults | 13d | 2025-12-10 A | 2026-01-28 A | QTS-100640 | 100% |  | 2025-12-10 | 2025-12-24 |  |  |  | QTS-PHX3 DC1 - 6 day w/ Holidays | Bel-Aire Mechanical, LLC | DH2100 |  |  | IGMP | Dave Wiltberger | Construction | 01ADMIN | Level 2 | Phase 1 |
| QTS-100660 |  | DH 2200 / Rooftop Mechanical // Assemble & Install CHWS/R Piping from Mainline Piping to ACC Deck | 23d | 2025-12-10 A | 2026-01-21 A | QTS-100710, QTS-100650 SS | 100% |  | 2025-12-10 | 2026-01-07 |  |  |  | QTS-PHX3 DC1 - 6 day w/ Holidays | Bel-Aire Mechanical, LLC | DH2100 |  |  | IGMP | Dave Wiltberger | Construction | 01ADMIN | Level 2 | Phase 1 |
| QTS-100670 |  | DH 2200 / Rooftop Mechanical // Assemble & Install CHW Pump Assemblies at ACC Deck to Chillers | 28d | 2025-12-10 A | 2026-01-27 A | QTS-100710, QTS-100660 SS | 100% |  | 2025-12-10 | 2026-01-13 |  |  |  | QTS-PHX3 DC1 - 6 day w/ Holidays | Bel-Aire Mechanical, LLC | DH2100 |  |  | IGMP | Dave Wiltberger | Construction | 01ADMIN | Level 2 | Phase 1 |
| QTS-3421 |  | DH 2200 / Rooftop Mechanical // Set Vertical Inline Centrifugal Pumps | 5d | 2025-12-10 A | 2026-01-07 A | QTS-1761, QTS-22861, QTS-100670 SS | 100% |  | 2025-12-10 | 2025-12-15 |  |  |  | QTS-PHX3 DC1 - 6 day w/ Holidays | Bel-Aire Mechanical, LLC | DH2200 | Construction | Phase 2 | IGMP | Dave Wiltberger | Construction | 01ADMIN |  |  |
| QTS-100680 |  | DH 2200 / Rooftop Mechanical // Install Mainline Piping from RPH Vaults to Galleries (Risers) L2 / L1 | 10d | 2025-12-15 A | 2025-12-26 A | QTS-100670 SS+4d | 100% |  |  |  |  |  |  | QTS-PHX3 DC1 - 6 day w/ Holidays | Bel-Aire Mechanical, LLC | DH2100 |  |  | IGMP | Dave Wiltberger | Construction | 01ADMIN | Level 2 | Phase 1 |
| QTS-1811 |  | DH 2200 / Rooftop Mechanical // OFCI - L2 SET IN PLACE - Eq Type # - DOAS-RT2200 - 2 units | 2d | 2026-01-12 A | 2026-01-13 A | QTS-22151, QTS-23441, QTS-23451, QTS-22861 | 100% |  |  |  |  |  | start on or after 2026-01-12 | QTS-PHX3 DC1 - 6 day w/ Holidays | Bel-Aire Mechanical, LLC | DH2200 | Construction | Phase 2 | IGMP | Dave Wiltberger | Construction | 01ADMIN |  |  |
| QTS-100750 |  | DH 2200 / Rooftop Mechanical // Pressure Test (Air) Industrial Loop (L1) | 1d | 2026-01-14 | 2026-01-14 | QTS-100680, QTS-100990 FF |  |  |  |  | 38d | 0d |  | QTS-PHX3 DC1 - 6 day w/ Holidays | Bel-Aire Mechanical, LLC | DH2100 |  |  | IGMP | Dave Wiltberger | Construction | 01ADMIN | Level 2 | Phase 1 |
| QTS-50171 |  | DH 2200 / Rooftop Mechanical // Rough In Plumbing from to DOAS | 1d | 2026-01-14 | 2026-01-14 | QTS-1811 |  |  |  |  | 73d | 0d |  | QTS-PHX3 DC1 - 6 day w/ Holidays | Bel-Aire Mechanical, LLC | FOH | Construction | Phase 1 | DC | Dave Wiltberger | Construction | 01ADMIN | Roof |  |
| QTS-100690 |  | DH 2200 / Rooftop Mechanical // Rough In Condensate Drain from DOAS | 2d | 2026-01-15 | 2026-01-16 | QTS-1811, QTS-50171 |  |  |  |  | 74d | 1d |  | QTS-PHX3 DC1 - 6 day w/ Holidays | Bel-Aire Mechanical, LLC | DH2100 |  |  | IGMP | Dave Wiltberger | Construction | 01ADMIN | Level 2 | Phase 1 |
| QTS-100760 |  | DH 2200 / Rooftop Mechanical // Pressure Test (Air) Industrial Loop (L2) | 1d | 2026-01-15 | 2026-01-15 | QTS-100750 |  |  |  |  | 38d | 0d |  | QTS-PHX3 DC1 - 6 day w/ Holidays | Bel-Aire Mechanical, LLC | DH2100 |  |  | IGMP | Dave Wiltberger | Construction | 01ADMIN | Level 2 | Phase 1 |
| QTS-50181 |  | DH 2200 / Rooftop Mechanical // Rough In Power from to DOAS | 3d | 2026-01-15 | 2026-01-17 | QTS-50171 |  |  |  |  | 73d | 0d |  | QTS-PHX3 DC1 - 6 day w/ Holidays | Bel-Aire Mechanical, LLC | FOH | Construction | Phase 1 | DC | Dave Wiltberger | Construction | 01ADMIN | Roof |  |
| QTS-100770 |  | DH 2200 / Rooftop Mechanical // Pressure Test (Air) Industrial Loop (Roof) | 1d | 2026-01-16 | 2026-01-16 | QTS-100760, QTS-100700 |  |  |  |  | 38d | 0d |  | QTS-PHX3 DC1 - 6 day w/ Holidays | Bel-Aire Mechanical, LLC | DH2100 |  |  | IGMP | Dave Wiltberger | Construction | 01ADMIN | Level 2 | Phase 1 |
| QTS-100780 |  | DH 2200 / Rooftop Mechanical // Install Temp Flush Pump, Power Source for Pump & Other Associated Components | 5d | 2026-01-17 | 2026-01-23 | QTS-100770 |  |  |  |  | 38d | 0d |  | QTS-PHX3 DC1 - 6 day w/ Holidays | Bel-Aire Mechanical, LLC | DH2100 |  |  | IGMP | Dave Wiltberger | Construction | 01ADMIN | Level 2 | Phase 1 |
| QTS-50191 |  | DH 2200 / Rooftop Mechanical // Rough In Controls from to DOAS | 1d | 2026-01-17 | 2026-01-17 | QTS-50181 FF |  |  |  |  | 73d | 0d |  | QTS-PHX3 DC1 - 6 day w/ Holidays | Bel-Aire Mechanical, LLC | FOH | Construction | Phase 1 | DC | Dave Wiltberger | Construction | 01ADMIN | Roof |  |
| QTS-50201 |  | DH 2200 / Rooftop Mechanical // Pre Energization Inspection DOAS | 1d | 2026-01-20 | 2026-01-20 | QTS-50191, QTS-100690 |  |  |  |  | 73d | 38d |  | QTS-PHX3 DC1 - 6 day w/ Holidays | Bel-Aire Mechanical, LLC | FOH | Construction | Phase 1 | DC | Dave Wiltberger | Construction | 01ADMIN | Roof |  |
| QTS-100700 |  | DH 2200 / Rooftop Mechanical // Set RPH Vault Housings | 5d | 2026-01-21 A | 2026-01-26 A | QTS-100680 FF+2d | 100% |  |  |  |  |  |  | QTS-PHX3 DC1 - 6 day w/ Holidays | Bel-Aire Mechanical, LLC | DH2100 |  |  | IGMP | Dave Wiltberger | Construction | 01ADMIN | Level 2 | Phase 1 |
| QTS-100730 |  | DH 2200 / Rooftop Mechanical // Finalize Detailing for TES Tank CHW Piping/ Fabrication | 7d | 2026-01-21 A | 2026-01-22 | QTS-100720 |  | 7d | 2026-01-21 | 2026-01-28 | 35d | 0d |  | QTS-PHX3 DC1 - 6 day w/ Holidays | Bel-Aire Mechanical, LLC | DH2100 |  |  | IGMP | Dave Wiltberger | Construction | 01ADMIN | Level 2 | Phase 1 |
| QTS-100740 |  | DH 2200 / Rooftop Mechanical // Install TES Tank CHW Piping - 7 Units | 10d | 2026-01-23 | 2026-02-03 | QTS-100730 |  |  |  |  | 35d | 0d |  | QTS-PHX3 DC1 - 6 day w/ Holidays | Bel-Aire Mechanical, LLC | DH2100 |  |  | IGMP | Dave Wiltberger | Construction | 01ADMIN | Level 2 | Phase 1 |
| QTS-100790 |  | DH 2200 / Rooftop Mechanical // Hydro-Test (Water) Industrial Loop (L1) | 1d | 2026-01-24 | 2026-01-24 | QTS-100780 |  |  |  |  | 38d | 0d |  | QTS-PHX3 DC1 - 6 day w/ Holidays | Bel-Aire Mechanical, LLC | DH2100 |  |  | IGMP | Dave Wiltberger | Construction | 01ADMIN | Level 2 | Phase 1 |
| QTS-100800 |  | DH 2200 / Rooftop Mechanical // Hydro-Test (Water) Industrial Loop (L2) | 1d | 2026-01-26 | 2026-01-26 | QTS-100790 |  |  |  |  | 38d | 0d |  | QTS-PHX3 DC1 - 6 day w/ Holidays | Bel-Aire Mechanical, LLC | DH2100 |  |  | IGMP | Dave Wiltberger | Construction | 01ADMIN | Level 2 | Phase 1 |
| QTS-100820 |  | DH 2200 / Rooftop Mechanical // Hydro-Test (Water) Industrial Loop (Roof) | 1d | 2026-01-27 | 2026-01-27 | QTS-100800 |  |  |  |  | 38d | 0d |  | QTS-PHX3 DC1 - 6 day w/ Holidays | Bel-Aire Mechanical, LLC | DH2100 |  |  | IGMP | Dave Wiltberger | Construction | 01ADMIN | Level 2 | Phase 1 |
| QTS-100840 |  | DH 2200 / Rooftop Mechanical // Fill and Flush Industrial Loop (Zone 2 - All Levels) | 10d | 2026-01-28 | 2026-02-06 | QTS-100820 |  |  |  |  | 44d | 30d |  | QTS-PHX3 DC1 - 7 day No Holidays | Bel-Aire Mechanical, LLC | DH2100 |  |  | IGMP | Dave Wiltberger | Construction | 01ADMIN | Level 2 | Phase 1 |
| QTS-100810 |  | DH 2200 / Rooftop Mechanical // Pressure Test (Air) Industrial Loop (TES Tank) | 1d | 2026-02-04 | 2026-02-04 | QTS-100740 |  |  |  |  | 35d | 0d |  | QTS-PHX3 DC1 - 6 day w/ Holidays | Bel-Aire Mechanical, LLC | DH2100 |  |  | IGMP | Dave Wiltberger | Construction | 01ADMIN | Level 2 | Phase 1 |
| QTS-100830 |  | DH 2200 / Rooftop Mechanical // Hydro-Test (Water) Industrial Loop (TES Tank) | 1d | 2026-02-05 | 2026-02-05 | QTS-100810 |  |  |  |  | 35d | 0d |  | QTS-PHX3 DC1 - 6 day w/ Holidays | Bel-Aire Mechanical, LLC | DH2100 |  |  | IGMP | Dave Wiltberger | Construction | 01ADMIN | Level 2 | Phase 1 |
| QTS-100850 |  | DH 2200 / Rooftop Mechanical // Fill and Flush Industrial Loop (TES Tank) | 7d | 2026-02-06 | 2026-02-12 | QTS-100830 |  |  |  |  | 41d | 40d |  | QTS-PHX3 DC1 - 7 day No Holidays | Bel-Aire Mechanical, LLC | DH2100 |  |  | IGMP | Dave Wiltberger | Construction | 01ADMIN | Level 2 | Phase 1 |

Notes:
- QTS-1791: allucent_notes: Brandon Feather on 2025-01-07 08:01: Date moved from 1/3/25 as the roof decking isnt released yet. rough date it is expected is mid to end of feb for Phase 1. BSF-1.7.25
- QTS-100640: allucent_notes: David Wiltberger on 2025-08-19 09:08: changed pick order / allucent_notes_20251014_152335: David Wiltberger on 2025-08-19 09:08: changed pick order / David Wiltberger on 2025-09-02 10:09: Moving to accommodate roofing in Zone 1 / David Wiltberger on 2025-09-24 04:09: BAM not completed Potential Delay / David Wiltberger on 2025-09-30 12:09: BAM did not complete / David Wiltberger on 2025-10-14 10:10: set on recovery schedule / allucent_notes: 2025-08-19 09:08 - User: David Wiltberger - Date Added: 2025-08-19 09:08 - Note: changed pick order / 2025-09-02 10:09 - User: David Wiltberger - Date Added: 2025-09-02 10:09 - Note: Moving to accommodate roofing in Zone 1 / 2025-09-24 04:09 - User: Dav
- QTS-100710: allucent_notes_20251230_164549: David Wiltberger on 2025-12-02 06:46: Grating not complete to install / David Wiltberger on 2025-12-30 16:19: no update / allucent_notes: David Wiltberger on 2025-08-19 09:08: changed pick order / allucent_notes_20251014_152335: David Wiltberger on 2025-08-19 09:08: changed pick order / David Wiltberger on 2025-09-02 10:09: Moving to accommodate roofing in Zone 1 / David Wiltberger on 2025-09-24 04:09: BAM not completed Potential Delay / David Wiltberger on 2025-09-30 12:09: BAM did not complete / David Wiltberger on 2025-10-14 10:10: set on recovery schedule / allucent_notes_20251202_153722: David Wiltberger on 2025-12-02 06:46: Grating not complete to install / allucent_notes_20251209_203830: David Wiltberger on 2025-12-02 06:46: Grating not complete to install / allucent_notes_20251216_165335: David Wiltberger on 2025-12-02 06:46: Grating not complete to install / allucent_notes: 2025-12-02 06:46 - User: David Wiltberger - Date Added: 2025-12-02 06:46 - Note: Grating not complete to install / 2025-12-30 16:19 - User: David Wiltberger - Date Added: 2025-12-30 16:19 - Note: no update
- QTS-100720: allucent_notes: David Wiltberger on 2025-08-19 09:08: changed pick order / allucent_notes_20251014_152335: David Wiltberger on 2025-08-19 09:08: changed pick order / David Wiltberger on 2025-09-02 10:09: Moving to accommodate roofing in Zone 1 / David Wiltberger on 2025-09-24 04:09: BAM not completed Potential Delay / David Wiltberger on 2025-09-30 12:09: BAM did not complete / David Wiltberger on 2025-10-14 10:10: set on recovery schedule / allucent_notes: 2025-08-19 09:08 - User: David Wiltberger - Date Added: 2025-08-19 09:08 - Note: changed pick order / 2025-09-02 10:09 - User: David Wiltberger - Date Added: 2025-09-02 10:09 - Note: Moving to accommodate roofing in Zone 1 / 2025-09-24 04:09 - User: Dav
- QTS-100650: allucent_notes_20251230_164549: David Wiltberger on 2025-12-02 06:47: BAM is behind working to recover / allucent_notes: David Wiltberger on 2025-08-19 09:08: changed pick order / allucent_notes_20251014_152335: David Wiltberger on 2025-08-19 09:08: changed pick order / David Wiltberger on 2025-09-02 10:09: Moving to accommodate roofing in Zone 1 / David Wiltberger on 2025-09-24 04:09: BAM not completed Potential Delay / David Wiltberger on 2025-09-30 12:09: BAM did not complete / David Wiltberger on 2025-10-14 10:10: set on recovery schedule / allucent_notes_20251202_153722: David Wiltberger on 2025-12-02 06:47: BAM is behind working to recover / allucent_notes_20251216_165335: David Wiltberger on 2025-12-02 06:47: BAM is behind working to recover / allucent_notes: 2025-12-02 06:47 - User: David Wiltberger - Date Added: 2025-12-02 06:47 - Note: BAM is behind working to recover
- QTS-100660: allucent_notes: David Wiltberger on 2025-08-19 09:08: changed pick order / allucent_notes_20251014_152335: David Wiltberger on 2025-08-19 09:08: changed pick order / David Wiltberger on 2025-09-02 10:09: Moving to accommodate roofing in Zone 1 / David Wiltberger on 2025-09-24 04:09: BAM not completed Potential Delay / David Wiltberger on 2025-09-30 12:09: BAM did not complete / David Wiltberger on 2025-10-14 10:10: set on recovery schedule / allucent_notes: 2025-08-19 09:08 - User: David Wiltberger - Date Added: 2025-08-19 09:08 - Note: changed pick order / 2025-09-02 10:09 - User: David Wiltberger - Date Added: 2025-09-02 10:09 - Note: Moving to accommodate roofing in Zone 1 / 2025-09-24 04:09 - User: Dav
- QTS-100670: allucent_notes: David Wiltberger on 2025-08-19 09:08: changed pick order / allucent_notes_20251014_152335: David Wiltberger on 2025-08-19 09:08: changed pick order / David Wiltberger on 2025-09-02 10:09: Moving to accommodate roofing in Zone 1 / David Wiltberger on 2025-09-24 04:09: BAM not completed Potential Delay / David Wiltberger on 2025-09-30 12:09: BAM did not complete / David Wiltberger on 2025-10-14 10:10: set on recovery schedule / allucent_notes: 2025-08-19 09:08 - User: David Wiltberger - Date Added: 2025-08-19 09:08 - Note: changed pick order / 2025-09-02 10:09 - User: David Wiltberger - Date Added: 2025-09-02 10:09 - Note: Moving to accommodate roofing in Zone 1 / 2025-09-24 04:09 - User: Dav
- QTS-3421: allucent_notes_20251230_164549: David Wiltberger on 2025-09-02 10:09: Moving installation to accomidate roofing for Zone 1 / David Wiltberger on 2025-09-24 04:09: BAM potential Delay / David Wiltberger on 2025-09-30 12:09: BAM not ready / David Wiltberger on 2025-10-07 15:10: unable to work on roof zone 1 due to TPO insulation / David Wiltberger on 2025-10-21 13:10: Delaying by TPO dry in / Scott Masterson on 2025-12-16 16:08: Still have a couple lefty to fly up. / David Wiltberger on 2025-12-30 16:18: no update / allucent_notes: David Wiltberger on 2025-09-02 10:09: Moving installation to accomidate roofing for Zone 1 / allucent_notes_20251014_152335: David Wiltberger on 2025-09-02 10:09: Moving installation to accomidate roofing for Zone 1 / David Wiltberger on 2025-09-24 04:09: BAM potential Delay / David Wiltberger on 2025-09-30 12:09: BAM not ready / David Wiltberger on 2025-10-07 15:10: unable to work on roof zone 1 due to TPO insulation / allucent_notes_20251021_145627: David Wiltberger on 2025-09-02 10:09: Moving installation to accomidate roofing for Zone 1 / David Wiltberger on 2025-09-24 04:09: BAM potential Delay / David Wiltberger on 2025-09-30 12:09: BAM not ready / David Wiltberger on 2025-10-07 15:10: unable to work on roof zone 1 due to TPO insulation / David Wiltberger on 2025-10-21 13:10: Delaying by TPO dry in / allucent_notes_20251111_182405: David Wiltberger on 2025-09-02 10:09: Moving installation to accomidate roofing for Zone 1 / David Wiltberger on 2025-09-24 04:09: BAM potential Delay / David Wiltberger on 2025-09-30 12:09: BAM not ready / David Wiltberger on 2025-10-07 15:10: unable to work on roof zone 1 due to TPO insulation / David Wiltberger on 2025-10-21 13:10: Delaying by TPO dry in / allucent_notes_20251118_192630: David Wiltberger on 2025-09-02 10:09: Moving installation to accomidate roofing for Zone 1 / David Wiltberger on 2025-09-24 04:09: BAM potential Delay / David Wiltberger on 2025-09-30 12:09: BAM not ready / David Wiltberger on 2025-10-07 15:10: unable to work on roof zone 1 due to TPO insulation / David Wiltberger on 2025-10-21 13:10: Delaying by TPO dry in / allucent_notes_20251202_153722: David Wiltberger on 2025-09-02 10:09: Moving installation to accomidate roofing for Zone 1 / David Wiltberger on 2025-09-24 04:09: BAM potential Delay / David Wiltberger on 2025-09-30 12:09: BAM not ready / David Wiltberger on 2025-10-07 15:10: unable to work on roof zone 1 due to TPO insulation / David Wiltberger on 2025-10-21 13:10: Delaying by TPO dry in / allucent_notes_20251216_165335: David Wiltberger on 2025-09-02 10:09: Moving installation to accomidate roofing for Zone 1 / David Wiltberger on 2025-09-24 04:09: BAM potential Delay / David Wiltberger on 2025-09-30 12:09: BAM not ready / David Wiltberger on 2025-10-07 15:10: unable to work on roof zone 1 due to TPO insulation / David Wiltberger on 2025-10-21 13:10: Delaying by TPO dry in / Scott Masterson on 2025-12-16 16:08: Still have a couple lefty to fly up. / allucent_notes: 2025-09-02 10:09 - User: David Wiltberger - Date Added: 2025-09-02 10:09 - Note: Moving installation to accomidate roofing for Zone 1 / 2025-09-24 04:09 - User: David Wiltberger - Date Added: 2025-09-24 04:09 - Note: BAM potential Delay / 2025-09-30 12:
- QTS-100680: allucent_notes_20251230_164549: David Wiltberger on 2025-12-30 16:19: no update / allucent_notes: David Wiltberger on 2025-08-19 09:08: changed pick order / allucent_notes_20251014_152335: David Wiltberger on 2025-08-19 09:08: changed pick order / David Wiltberger on 2025-09-02 10:09: Moving to accommodate roofing in Zone 1 / David Wiltberger on 2025-09-24 04:09: BAM not completed Potential Delay / David Wiltberger on 2025-09-30 12:09: BAM did not complete / David Wiltberger on 2025-10-14 10:10: set on recovery schedule / allucent_notes: 2025-12-30 16:19 - User: David Wiltberger - Date Added: 2025-12-30 16:19 - Note: no update
- QTS-1811: allucent_notes_20251230_164549: David Wiltberger on 2025-12-30 16:19: no update / allucent_notes: 2025-12-30 16:19 - User: David Wiltberger - Date Added: 2025-12-30 16:19 - Note: no update
- QTS-100750: allucent_notes: David Wiltberger on 2025-08-19 09:08: changed pick order / allucent_notes_20251014_152335: David Wiltberger on 2025-08-19 09:08: changed pick order / David Wiltberger on 2025-09-02 10:09: Moving to accommodate roofing in Zone 1 / David Wiltberger on 2025-09-24 04:09: BAM not completed Potential Delay / David Wiltberger on 2025-09-30 12:09: BAM did not complete / David Wiltberger on 2025-10-14 10:10: set on recovery schedule / allucent_notes: 2025-08-19 09:08 - User: David Wiltberger - Date Added: 2025-08-19 09:08 - Note: changed pick order / 2025-09-02 10:09 - User: David Wiltberger - Date Added: 2025-09-02 10:09 - Note: Moving to accommodate roofing in Zone 1 / 2025-09-24 04:09 - User: Dav
- QTS-100690: allucent_notes: David Wiltberger on 2025-08-19 09:08: changed pick order / allucent_notes_20251014_152335: David Wiltberger on 2025-08-19 09:08: changed pick order / David Wiltberger on 2025-09-02 10:09: Moving to accommodate roofing in Zone 1 / David Wiltberger on 2025-09-24 04:09: BAM not completed Potential Delay / David Wiltberger on 2025-09-30 12:09: BAM did not complete / David Wiltberger on 2025-10-14 10:10: set on recovery schedule / allucent_notes: 2025-08-19 09:08 - User: David Wiltberger - Date Added: 2025-08-19 09:08 - Note: changed pick order / 2025-09-02 10:09 - User: David Wiltberger - Date Added: 2025-09-02 10:09 - Note: Moving to accommodate roofing in Zone 1 / 2025-09-24 04:09 - User: Dav
- QTS-100760: allucent_notes: David Wiltberger on 2025-08-19 09:08: changed pick order / allucent_notes_20251014_152335: David Wiltberger on 2025-08-19 09:08: changed pick order / David Wiltberger on 2025-09-02 10:09: Moving to accommodate roofing in Zone 1 / David Wiltberger on 2025-09-24 04:09: BAM not completed Potential Delay / David Wiltberger on 2025-09-30 12:09: BAM did not complete / David Wiltberger on 2025-10-14 10:10: set on recovery schedule / allucent_notes: 2025-08-19 09:08 - User: David Wiltberger - Date Added: 2025-08-19 09:08 - Note: changed pick order / 2025-09-02 10:09 - User: David Wiltberger - Date Added: 2025-09-02 10:09 - Note: Moving to accommodate roofing in Zone 1 / 2025-09-24 04:09 - User: Dav
- QTS-100770: allucent_notes: David Wiltberger on 2025-08-19 09:08: changed pick order / allucent_notes_20251014_152335: David Wiltberger on 2025-08-19 09:08: changed pick order / David Wiltberger on 2025-09-02 10:09: Moving to accommodate roofing in Zone 1 / David Wiltberger on 2025-09-24 04:09: BAM not completed Potential Delay / David Wiltberger on 2025-09-30 12:09: BAM did not complete / David Wiltberger on 2025-10-14 10:10: set on recovery schedule / allucent_notes: 2025-08-19 09:08 - User: David Wiltberger - Date Added: 2025-08-19 09:08 - Note: changed pick order / 2025-09-02 10:09 - User: David Wiltberger - Date Added: 2025-09-02 10:09 - Note: Moving to accommodate roofing in Zone 1 / 2025-09-24 04:09 - User: Dav
- QTS-100780: allucent_notes: David Wiltberger on 2025-08-19 09:08: changed pick order / allucent_notes_20251014_152335: David Wiltberger on 2025-08-19 09:08: changed pick order / David Wiltberger on 2025-09-02 10:09: Moving to accommodate roofing in Zone 1 / David Wiltberger on 2025-09-24 04:09: BAM not completed Potential Delay / David Wiltberger on 2025-09-30 12:09: BAM did not complete / David Wiltberger on 2025-10-14 10:10: set on recovery schedule / allucent_notes: 2025-08-19 09:08 - User: David Wiltberger - Date Added: 2025-08-19 09:08 - Note: changed pick order / 2025-09-02 10:09 - User: David Wiltberger - Date Added: 2025-09-02 10:09 - Note: Moving to accommodate roofing in Zone 1 / 2025-09-24 04:09 - User: Dav
- QTS-100700: allucent_notes: David Wiltberger on 2025-08-19 09:08: changed pick order / allucent_notes_20251014_152335: David Wiltberger on 2025-08-19 09:08: changed pick order / David Wiltberger on 2025-09-02 10:09: Moving to accommodate roofing in Zone 1 / David Wiltberger on 2025-09-24 04:09: BAM not completed Potential Delay / David Wiltberger on 2025-09-30 12:09: BAM did not complete / David Wiltberger on 2025-10-14 10:10: set on recovery schedule / allucent_notes: 2025-08-19 09:08 - User: David Wiltberger - Date Added: 2025-08-19 09:08 - Note: changed pick order / 2025-09-02 10:09 - User: David Wiltberger - Date Added: 2025-09-02 10:09 - Note: Moving to accommodate roofing in Zone 1 / 2025-09-24 04:09 - User: Dav
- QTS-100730: allucent_notes: David Wiltberger on 2025-08-19 09:08: changed pick order / allucent_notes_20251014_152335: David Wiltberger on 2025-08-19 09:08: changed pick order / David Wiltberger on 2025-09-02 10:09: Moving to accommodate roofing in Zone 1 / David Wiltberger on 2025-09-24 04:09: BAM not completed Potential Delay / David Wiltberger on 2025-09-30 12:09: BAM did not complete / David Wiltberger on 2025-10-14 10:10: set on recovery schedule / allucent_notes: 2025-08-19 09:08 - User: David Wiltberger - Date Added: 2025-08-19 09:08 - Note: changed pick order / 2025-09-02 10:09 - User: David Wiltberger - Date Added: 2025-09-02 10:09 - Note: Moving to accommodate roofing in Zone 1 / 2025-09-24 04:09 - User: Dav
- QTS-100740: allucent_notes: David Wiltberger on 2025-08-19 09:08: changed pick order / allucent_notes_20251014_152335: David Wiltberger on 2025-08-19 09:08: changed pick order / David Wiltberger on 2025-09-02 10:09: Moving to accommodate roofing in Zone 1 / David Wiltberger on 2025-09-24 04:09: BAM not completed Potential Delay / David Wiltberger on 2025-09-30 12:09: BAM did not complete / David Wiltberger on 2025-10-14 10:10: set on recovery schedule / allucent_notes: 2025-08-19 09:08 - User: David Wiltberger - Date Added: 2025-08-19 09:08 - Note: changed pick order / 2025-09-02 10:09 - User: David Wiltberger - Date Added: 2025-09-02 10:09 - Note: Moving to accommodate roofing in Zone 1 / 2025-09-24 04:09 - User: Dav
- QTS-100790: allucent_notes: David Wiltberger on 2025-08-19 09:08: changed pick order / allucent_notes_20251014_152335: David Wiltberger on 2025-08-19 09:08: changed pick order / David Wiltberger on 2025-09-02 10:09: Moving to accommodate roofing in Zone 1 / David Wiltberger on 2025-09-24 04:09: BAM not completed Potential Delay / David Wiltberger on 2025-09-30 12:09: BAM did not complete / David Wiltberger on 2025-10-14 10:10: set on recovery schedule / allucent_notes: 2025-08-19 09:08 - User: David Wiltberger - Date Added: 2025-08-19 09:08 - Note: changed pick order / 2025-09-02 10:09 - User: David Wiltberger - Date Added: 2025-09-02 10:09 - Note: Moving to accommodate roofing in Zone 1 / 2025-09-24 04:09 - User: Dav
- QTS-100800: allucent_notes: David Wiltberger on 2025-08-19 09:08: changed pick order / allucent_notes_20251014_152335: David Wiltberger on 2025-08-19 09:08: changed pick order / David Wiltberger on 2025-09-02 10:09: Moving to accommodate roofing in Zone 1 / David Wiltberger on 2025-09-24 04:09: BAM not completed Potential Delay / David Wiltberger on 2025-09-30 12:09: BAM did not complete / David Wiltberger on 2025-10-14 10:10: set on recovery schedule / allucent_notes: 2025-08-19 09:08 - User: David Wiltberger - Date Added: 2025-08-19 09:08 - Note: changed pick order / 2025-09-02 10:09 - User: David Wiltberger - Date Added: 2025-09-02 10:09 - Note: Moving to accommodate roofing in Zone 1 / 2025-09-24 04:09 - User: Dav
- QTS-100820: allucent_notes: David Wiltberger on 2025-08-19 09:08: changed pick order / allucent_notes_20251014_152335: David Wiltberger on 2025-08-19 09:08: changed pick order / David Wiltberger on 2025-09-02 10:09: Moving to accommodate roofing in Zone 1 / David Wiltberger on 2025-09-24 04:09: BAM not completed Potential Delay / David Wiltberger on 2025-09-30 12:09: BAM did not complete / David Wiltberger on 2025-10-14 10:10: set on recovery schedule / allucent_notes: 2025-08-19 09:08 - User: David Wiltberger - Date Added: 2025-08-19 09:08 - Note: changed pick order / 2025-09-02 10:09 - User: David Wiltberger - Date Added: 2025-09-02 10:09 - Note: Moving to accommodate roofing in Zone 1 / 2025-09-24 04:09 - User: Dav
- QTS-100840: allucent_notes: David Wiltberger on 2025-08-19 09:08: changed pick order / allucent_notes_20251014_152335: David Wiltberger on 2025-08-19 09:08: changed pick order / David Wiltberger on 2025-09-02 10:09: Moving to accommodate roofing in Zone 1 / David Wiltberger on 2025-09-24 04:09: BAM not completed Potential Delay / David Wiltberger on 2025-09-30 12:09: BAM did not complete / David Wiltberger on 2025-10-14 10:10: set on recovery schedule / allucent_notes: 2025-08-19 09:08 - User: David Wiltberger - Date Added: 2025-08-19 09:08 - Note: changed pick order / 2025-09-02 10:09 - User: David Wiltberger - Date Added: 2025-09-02 10:09 - Note: Moving to accommodate roofing in Zone 1 / 2025-09-24 04:09 - User: Dav
- QTS-100810: allucent_notes: David Wiltberger on 2025-08-19 09:08: changed pick order / allucent_notes_20251014_152335: David Wiltberger on 2025-08-19 09:08: changed pick order / David Wiltberger on 2025-09-02 10:09: Moving to accommodate roofing in Zone 1 / David Wiltberger on 2025-09-24 04:09: BAM not completed Potential Delay / David Wiltberger on 2025-09-30 12:09: BAM did not complete / David Wiltberger on 2025-10-14 10:10: set on recovery schedule / allucent_notes: 2025-08-19 09:08 - User: David Wiltberger - Date Added: 2025-08-19 09:08 - Note: changed pick order / 2025-09-02 10:09 - User: David Wiltberger - Date Added: 2025-09-02 10:09 - Note: Moving to accommodate roofing in Zone 1 / 2025-09-24 04:09 - User: Dav
- QTS-100830: allucent_notes: David Wiltberger on 2025-08-19 09:08: changed pick order / allucent_notes_20251014_152335: David Wiltberger on 2025-08-19 09:08: changed pick order / David Wiltberger on 2025-09-02 10:09: Moving to accommodate roofing in Zone 1 / David Wiltberger on 2025-09-24 04:09: BAM not completed Potential Delay / David Wiltberger on 2025-09-30 12:09: BAM did not complete / David Wiltberger on 2025-10-14 10:10: set on recovery schedule / allucent_notes: 2025-08-19 09:08 - User: David Wiltberger - Date Added: 2025-08-19 09:08 - Note: changed pick order / 2025-09-02 10:09 - User: David Wiltberger - Date Added: 2025-09-02 10:09 - Note: Moving to accommodate roofing in Zone 1 / 2025-09-24 04:09 - User: Dav
- QTS-100850: allucent_notes: David Wiltberger on 2025-08-19 09:08: changed pick order / allucent_notes_20251014_152335: David Wiltberger on 2025-08-19 09:08: changed pick order / David Wiltberger on 2025-09-02 10:09: Moving to accommodate roofing in Zone 1 / David Wiltberger on 2025-09-24 04:09: BAM not completed Potential Delay / David Wiltberger on 2025-09-30 12:09: BAM did not complete / David Wiltberger on 2025-10-14 10:10: set on recovery schedule / allucent_notes: 2025-08-19 09:08 - User: David Wiltberger - Date Added: 2025-08-19 09:08 - Note: changed pick order / 2025-09-02 10:09 - User: David Wiltberger - Date Added: 2025-09-02 10:09 - Note: Moving to accommodate roofing in Zone 1 / 2025-09-24 04:09 - User: Dav

| ID | WBS | Activity | Duration | Start | Finish | Predecessors | Complete | Remaining | Planned start | Planned finish | Total float | Free float | Calendar | Subcontractor | Level | Location | Baseline | Layton Responsible Party | Phase-1 | Project Section | Allucent CSI Group | Project Section-1 | Phase-1-1 |
| --- | --- | --- | --- | --- | --- | --- | --- | --- | --- | --- | --- | --- | --- | --- | --- | --- | --- | --- | --- | --- | --- | --- | --- |
|  | 1 | **Fragnet Bulletin 4 Grating** |  | 2025-10-10 | 2026-01-26 |  |  |  |  |  |  |  |  |  |  |  |  |  |  |  |  |  |  |
| QTS-1001770 |  | Fragnet / DH 2200 / Rooftop Mechanical // Bulletin 4 Received by Layton | 1d | 2025-10-10 A | 2025-10-10 A | QTS-1371 SS | 100% |  |  |  |  |  |  | Bel-Aire Mechanical, LLC | Level 2 | DH2100 | IGMP | Dave Wiltberger | Phase 1 | Construction | 01ADMIN |  |  |
| QTS-1001790 |  | Fragnet / DH 2200 / Rooftop Mechanical // Updated Bulletin 4 Received by Layton | 3d | 2025-10-13 A | 2025-10-15 A | QTS-1001770 | 100% |  | 2025-10-10 | 2025-10-14 |  |  |  | Bel-Aire Mechanical, LLC | Level 2 | DH2100 | IGMP | Dave Wiltberger | Phase 1 | Construction | 01ADMIN |  |  |
| QTS-1001800 |  | Fragnet / DH 2200 / Rooftop Mechanical // Layton Submitting Shop Drawings to QTS Design (DLB) | 23d | 2025-10-16 A | 2025-11-17 A | QTS-1001790 | 100% |  | 2025-10-10 | 2025-11-11 |  |  |  | Bel-Aire Mechanical, LLC | Level 2 | DH2100 | IGMP | Dave Wiltberger | Phase 1 | Construction | 01ADMIN |  |  |
| QTS-1001810 |  | Fragnet / DH 2200 / Rooftop Mechanical // Layton Submitting Shop Drawings to QTS Design (Corgan) | 23d | 2025-11-18 A | 2025-12-09 A | QTS-1001800 | 100% |  | 2025-10-10 | 2025-11-11 |  |  |  | Bel-Aire Mechanical, LLC | Level 2 | DH2100 | IGMP | Dave Wiltberger | Phase 1 | Construction | 01ADMIN |  |  |
| QTS-1001820 |  | Fragnet / DH 2200 / Rooftop Mechanical // QTS Design Response for Grating | 10d | 2025-12-10 A | 2026-01-14 | QTS-1001810 | 100% | 0d | 2025-10-10 | 2025-10-23 | 89d | 0d |  | Bel-Aire Mechanical, LLC | Level 2 | DH2100 | IGMP | Dave Wiltberger | Phase 1 | Construction | 01ADMIN |  |  |
| QTS-1001780 |  | Fragnet / DH 2200 / Rooftop Mechanical // Install Grating, Toe Kicks, Hand Rails to Complete Chiller Deck | 10d | 2026-01-14 | 2026-01-26 | QTS-1001820 |  |  |  |  | 107d | 105d | QTS-PHX3 DC1 - 6 day w/ Holidays | Bel-Aire Mechanical, LLC | Level 2 | DH2100 | IGMP | Dave Wiltberger | Phase 1 | Construction | 01ADMIN |  |  |
|  | 5 | **DH 2200 / Mechanical Yard Buildout** |  | 2025-10-20 | 2026-02-14 |  |  |  |  |  |  |  |  |  |  |  |  |  |  |  |  |  |  |
| QTS-42391 |  | DH 2200 / Mechanical Yard // Excavate for MV Conduit | 5d | 2025-10-20 A | 2025-10-24 A | QTS-21521 SS+6d, QTS-42341, QTS-42571 | 100% |  |  |  |  |  |  | Oregon Electric Group | Level 2 | Gen Yard | IGMP | Ron Carroll |  | Construction | 01ADMIN | Construction | Phase 1 |
| QTS-42401 |  | DH 2200 / Mechanical Yard // Install Conduit for MV Cables | 7d | 2025-10-21 A | 2025-10-29 A | QTS-42391 FF+3d | 100% |  |  |  |  |  |  | Oregon Electric Group | Level 2 | Gen Yard | IGMP | Ron Carroll |  | Construction | 01ADMIN | Construction | Phase 1 |
| QTS-42411 |  | DH 2200 / Mechanical Yard // Slurry for MV Conduits | 5d | 2025-10-24 A | 2025-10-30 A | QTS-42401 FF+1d | 100% |  |  |  |  |  |  | Oregon Electric Group | Level 2 | Gen Yard | IGMP | Ron Carroll |  | Construction | 01ADMIN | Construction | Phase 1 |
| QTS-42421 |  | DH 2200 / Mechanical Yard // Backfill Conduit for MV Cables | 5d | 2025-10-27 A | 2025-10-31 A | QTS-42411 FF+1d | 100% |  |  |  |  |  |  | Oregon Electric Group | Level 2 | Gen Yard | IGMP | Ron Carroll |  | Construction | 01ADMIN | Construction | Phase 1 |
| QTS-1781 |  | DH 2200 / Mechanical Yard // Prep for Pier Footings | 3d | 2025-11-03 A | 2025-11-05 A | QTS-42421 | 100% |  |  |  |  |  |  | Suntec Concrete Inc | Level 1 | Gen Yard | IGMP | Ron Carroll |  | Construction | 01ADMIN | Construction | Phase 2 |
| QTS-2821 |  | DH 2200 / Mechanical Yard // Form, Reinforce, & Pour 24" Diameter Piers #1 | 6d | 2025-11-06 A | 2025-11-13 A | QTS-1781 | 100% |  |  |  |  |  |  | Suntec Concrete Inc | Level 1 | Gen Yard | IGMP | Ron Carroll |  | Construction | 01ADMIN | Construction | Phase 2 |
| QTS-3971 |  | DH 2200 / Mechanical Yard // Form, Reinforce, & Pour 24" Diameter Piers #2 | 5d | 2025-11-14 A | 2025-11-20 A | QTS-2821 | 100% |  |  |  |  |  |  | Suntec Concrete Inc | Level 1 | Gen Yard | IGMP | Ron Carroll |  | Construction | 01ADMIN | Construction | Phase 2 |
| QTS-11151 |  | DH 2200 / Mechanical Yard // Form, Reinforce, & Pour Thickened Slab On Grade for Transformers | 9d | 2025-11-17 A | 2025-12-01 A | QTS-3971 SS+1d | 100% |  |  |  |  |  |  | Suntec Concrete Inc | Level 1 | Gen Yard | IGMP | Ron Carroll |  | Construction | 01ADMIN | Construction | Phase 2 |
| QTS-14501 |  | DH 2200 / Mechanical Yard // OFCI - L2 SET IN PLACE - Eq Type # - 2500KVA Transformers - 7 units | 3d | 2025-11-21 A | 2025-11-21 A | QTS-35921 FF, QTS-35931 FF, QTS-35941 FF, QTS-35951 FF, QTS-35961 FF, QTS-35971 FF, QTS-35981 FF | 100% |  | 2025-11-21 | 2025-11-25 |  |  |  | Rosendin Electric, Inc | Level 1 | Gen Yard | IGMP | Scott Masterson |  | Construction | 01ADMIN | Construction | Phase 2 |
| QTS-9951 |  | DH 2200 / Mechanical Yard // Form, Reinforce, & Pour Thickened Slab On Grade for UPS Pods | 5d | 2025-12-02 A | 2025-12-08 A | QTS-11151 | 100% |  |  |  |  |  |  | Suntec Concrete Inc | Level 1 | Gen Yard | IGMP | Ron Carroll |  | Construction | 01ADMIN | Construction | Phase 2 |
| QTS-12541 |  | DH 2200 / Mechanical Yard // Form, Reinforce, & Pour Thickened Slab On Grade for Generators | 10d | 2025-12-03 A | 2025-12-05 A | QTS-11151, QTS-11151 FF, QTS-9951 | 100% |  | 2025-12-09 | 2025-12-22 |  |  |  | Suntec Concrete Inc | Level 1 | Gen Yard | IGMP | Ron Carroll |  | Construction | 01ADMIN | Construction | Phase 2 |
| QTS-6451 |  | DH 2200 / Mechanical Yard // Place Gen Yard Gravel | 5d | 2025-12-09 A | 2025-12-15 A | QTS-3971, QTS-9951, QTS-11151 | 100% |  |  |  |  |  |  | Redpoint Contracting | Level 1 | Gen Yard | IGMP | Ron Carroll |  | Construction | 01ADMIN | Construction | Phase 2 |
| QTS-41251 |  | DH 2200 / Mechanical Yard // OFCI - L2 SET IN PLACE - Eq Type # - 2500KW Generator #A-22 - 1 unit | 1d | 2025-12-10 A | 2025-12-10 A | QTS-40221, QTS-40251, QTS-40231, QTS-14501, QTS-12541 | 100% |  |  |  |  |  |  | Rosendin Electric, Inc | Level 1 | Gen Yard |  | Scott Masterson |  | Construction |  | Construction | Phase 2 |
| QTS-41261 |  | DH 2200 / Mechanical Yard // OFCI - L2 SET IN PLACE - Eq Type # - 2500KW Generator #B-22 - 1 unit | 1d | 2025-12-10 A | 2025-12-10 A | QTS-41251, QTS-40061, QTS-40071, QTS-40091 | 100% |  |  |  |  |  |  | Rosendin Electric, Inc | Level 1 | Gen Yard |  | Scott Masterson |  | Construction |  | Construction | Phase 2 |
| QTS-41271 |  | DH 2200 / Mechanical Yard // OFCI - L2 SET IN PLACE - Eq Type # - 2500KW Generator #C-22 - 1 unit | 1d | 2025-12-15 A | 2025-12-15 A | QTS-41261, QTS-39901, QTS-39911, QTS-39931 | 100% |  |  |  |  |  |  | Rosendin Electric, Inc | Level 1 | Gen Yard |  | Scott Masterson |  | Construction |  | Construction | Phase 2 |
|  | 2 | **Remaining Duration** |  | 2025-12-01 | 2026-02-14 |  |  |  |  |  |  |  |  |  |  |  |  |  |  |  |  |  |  |
| QTS-99390 |  | DH 2200 / Mechanical Yard // Form, Reinforce, & Pour Thickened Slab On Grade for MVGs | 5d | 2025-12-01 A | 2025-12-26 A | QTS-11151 FF | 100% |  | 2025-11-21 | 2025-11-26 |  |  | QTS-PHX3 DC1 - 6 day w/ Holidays | Suntec Concrete Inc | Level 2 | Gen Yard | IGMP | Ron Carroll | Phase 1 | Construction | 01ADMIN |  |  |
| QTS-44351 |  | DH 2200 / Mechanical Yard // Install Exterior Stairs | 10d | 2025-12-08 A | 2025-12-18 A | QTS-43371 | 100% |  |  |  |  |  | QTS-PHX3 DC1 - 6 day w/ Holidays | SteelFab Texas, Inc | Level 2 | Gen Yard | IGMP | Ron Carroll |  | Construction |  | Construction | Phase 1 |
| QTS-13551 |  | DH 2200 / Mechanical Yard // OFCI - L2 SET IN PLACE - Eq Type # - 3000A UPS Pods - 7 units | 5d | 2025-12-19 A | 2026-01-02 A | QTS-33751, QTS-33761 FF, QTS-33771 FF, QTS-33781 FF, QTS-33791 FF, QTS-33801 FF, QTS-33811 FF, QTS-3621, QTS-9951 | 100% |  | 2025-12-19 | 2025-12-24 |  |  | QTS-PHX3 DC1 - 6 day w/ Holidays | Rosendin Electric, Inc | Level 1 | Gen Yard | IGMP | Scott Masterson |  | Construction | 01ADMIN | Construction | Phase 2 |
| QTS-41281 |  | DH 2200 / Mechanical Yard // OFCI - L2 SET IN PLACE - Eq Type # - 2500KW Generator #D-22 - 1 unit | 1d | 2025-12-19 A | 2025-12-19 A | QTS-41271, QTS-40421, QTS-40451, QTS-40431 | 100% |  |  |  |  |  | QTS-PHX3 DC1 - 6 day w/ Holidays | Rosendin Electric, Inc | Level 1 | Gen Yard |  | Scott Masterson |  | Construction | 01ADMIN | Construction | Phase 2 |
| QTS-41291 |  | DH 2200 / Mechanical Yard // OFCI - L2 SET IN PLACE - Eq Type # - 2500KW Generator #E-22 - 1 unit | 1d | 2025-12-19 A | 2025-12-19 A | QTS-41281 FF, QTS-40621, QTS-40631, QTS-40651 | 100% |  |  |  |  |  | QTS-PHX3 DC1 - 6 day w/ Holidays | Rosendin Electric, Inc | Level 1 | Gen Yard |  | Scott Masterson |  | Construction | 01ADMIN | Construction | Phase 2 |
| QTS-41301 |  | DH 2200 / Mechanical Yard // OFCI - L2 SET IN PLACE - Eq Type # - 2500KW Generator #F-22 - 1 unit | 1d | 2025-12-19 A | 2025-12-19 A | QTS-41291 FF, QTS-40821, QTS-40831, QTS-40851 | 100% |  |  |  |  |  | QTS-PHX3 DC1 - 6 day w/ Holidays | Rosendin Electric, Inc | Level 1 | Gen Yard |  | Scott Masterson |  | Construction | 01ADMIN | Construction | Phase 2 |
| QTS-41311 |  | DH 2200 / Mechanical Yard // OFCI - L2 SET IN PLACE - Eq Type # - 2500KW Generator #R-22 - 1 unit | 1d | 2025-12-19 A | 2025-12-19 A | QTS-41301 FF, QTS-41021, QTS-41031, QTS-41051 | 100% |  |  |  |  |  | QTS-PHX3 DC1 - 6 day w/ Holidays | Rosendin Electric, Inc | Level 1 | Gen Yard |  | Scott Masterson |  | Construction | 01ADMIN | Construction | Phase 2 |
| QTS-99400 |  | DH 2200 / Mechanical Yard // OFCI - L2 SET IN PLACE - Eq Type # - DC1-MVG-C1 - 1 unit | 1d | 2025-12-29 A | 2025-12-29 A | QTS-99390, QTS-99320 | 100% |  |  |  |  |  | QTS-PHX3 DC1 - 6 day w/ Holidays | Rosendin Electric, Inc | Level 2 | Gen Yard | IGMP | Scott Masterson | Phase 1 | Construction | 01ADMIN |  |  |
| QTS-99410 |  | DH 2200 / Mechanical Yard // OFCI - L2 SET IN PLACE - Eq Type # - DC1-MVG-D1 - 1 unit | 1d | 2025-12-29 A | 2025-12-29 A | QTS-99400, QTS-99330 | 100% |  |  |  |  |  | QTS-PHX3 DC1 - 6 day w/ Holidays | Rosendin Electric, Inc | Level 2 | Gen Yard | IGMP | Scott Masterson | Phase 1 | Construction | 01ADMIN |  |  |
| QTS-42431 |  | DH 2200 / Mechanical Yard // Wire Pull for MV Cables | 6d | 2026-01-14 | 2026-01-21 | QTS-41311, QTS-99410 |  |  |  |  | 20d | 0d | QTS-PHX3 DC1 - 6 day w/ Holidays | Oregon Electric Group | Level 2 | Gen Yard | IGMP | Scott Masterson |  | Construction | 01ADMIN | Construction | Phase 1 |
| QTS-49981 |  | DH 2200 / Mechanical Yard // Install Cable Bus | 10d | 2026-01-14 | 2026-01-26 | QTS-6451, QTS-49701 |  |  |  |  | 12d | 0d | QTS-PHX3 DC1 - 6 day w/ Holidays | Oregon Electric Group | Level 2 | Gen Yard | IGMP | Scott Masterson |  | Construction | 01ADMIN | Construction | Phase 1 |
| QTS-42821 |  | DH 2200 / Mechanical Yard // Terminate MV at Transformers | 10d | 2026-01-22 | 2026-02-02 | QTS-42431 |  |  |  |  | 20d | 0d | QTS-PHX3 DC1 - 6 day w/ Holidays | Oregon Electric Group | Level 2 | Gen Yard | IGMP | Scott Masterson |  | Construction |  | Construction | Phase 1 |
| QTS-15881 |  | DH 2200 / Mechanical Yard // Install Raceway from Generators to UPS Pods | 5d | 2026-01-27 | 2026-01-31 | QTS-41311, QTS-49981 |  |  |  |  | 12d | 0d | QTS-PHX3 DC1 - 6 day w/ Holidays | Rosendin Electric, Inc | Level 1 | Gen Yard | IGMP | Scott Masterson |  | Construction |  | Construction | Phase 2 |
| QTS-15131 |  | DH 2200 / Mechanical Yard // Install Raceway from Transformers to UPS Pods | 5d | 2026-01-29 | 2026-02-03 | QTS-41311, QTS-15881 SS+2d |  |  |  |  | 12d | 0d | QTS-PHX3 DC1 - 6 day w/ Holidays | Rosendin Electric, Inc | Level 1 | Gen Yard | IGMP | Scott Masterson |  | Construction |  | Construction | Phase 2 |
| QTS-17381 |  | DH 2200 / Mechanical Yard // Pull & Terminate from Generators to UPS Pods | 10d | 2026-02-02 | 2026-02-12 | QTS-15881 |  |  |  |  | 18d | 2d | QTS-PHX3 DC1 - 6 day w/ Holidays | Rosendin Electric, Inc | Level 1 | Gen Yard | IGMP | Scott Masterson |  | Construction |  | Construction | Phase 2 |
| QTS-1801 |  | DH 2200 / Mechanical Yard // Install FRP Platforms | 10d | 2026-02-03 | 2026-02-13 | QTS-44351, QTS-13551, QTS-1331 |  |  |  |  | 61d | 13d | QTS-PHX3 DC1 - 6 day w/ Holidays | Advantic Building Group, LLC | Level 1 | Gen Yard | IGMP | Ron Carroll |  | Construction |  | Construction | Phase 2 |
| QTS-15871 |  | DH 2200 / Mechanical Yard // Pull & Terminate from Transformers to UPS Pods | 10d | 2026-02-04 | 2026-02-14 | QTS-15131 |  |  |  |  | 12d | 0d | QTS-PHX3 DC1 - 6 day w/ Holidays | Rosendin Electric, Inc | Level 1 | Gen Yard | IGMP | Scott Masterson |  | Construction |  | Construction | Phase 2 |
| QTS-1000290 |  | DH 2200 / Mechanical Yard // OFCI - L2 SET IN PLACE - Eq Type # - 2500KW Generator SCR - 7 units | 3d | 2026-02-12 | 2026-02-14 | QTS-40241, QTS-40081, QTS-39921, QTS-40441, QTS-40641, QTS-40841, QTS-41041, QTS-41311 |  |  |  |  | 33d | 0d | QTS-PHX3 DC1 - 6 day w/ Holidays | Rosendin Electric, Inc | Level 2 | Gen Yard |  | Scott Masterson |  | Construction | 01ADMIN | Construction | Phase 1 |
| QTS-1001200 |  | DH 2200 / Mechanical Yard // Pressure Test Generator Tanks | 2d | 2026-02-13 | 2026-02-14 | QTS-1000290 FF |  |  |  |  | 33d | 2d | QTS-PHX3 DC1 - 6 day w/ Holidays | Rosendin Electric, Inc | Level 2 | Gen Yard | IGMP | Dave Wiltberger | Phase 1 | Construction | 01ADMIN |  |  |

Notes:
- QTS-1001770: allucent_notes: David Wiltberger on 2025-08-19 09:08: changed pick order / allucent_notes_20251014_152335: David Wiltberger on 2025-08-19 09:08: changed pick order / David Wiltberger on 2025-09-02 10:09: Moving to accommodate roofing in Zone 1 / David Wiltberger on 2025-09-24 04:09: BAM not completed Potential Delay / David Wiltberger on 2025-09-30 12:09: BAM did not complete / David Wiltberger on 2025-10-14 10:10: set on recovery schedule / allucent_notes_20251202_153722: David Wiltberger on 2025-12-02 06:45: Grating install not complete for installation / allucent_notes_20251209_203830: David Wiltberger on 2025-12-02 06:45: Grating install not complete for installation / allucent_notes_20251216_165335: David Wiltberger on 2025-12-02 06:45: Grating install not complete for installation / allucent_notes: 2025-12-02 06:45 - User: David Wiltberger - Date Added: 2025-12-02 06:45 - Note: Grating install not complete for installation
- QTS-1001790: allucent_notes: David Wiltberger on 2025-08-19 09:08: changed pick order / allucent_notes_20251014_152335: David Wiltberger on 2025-08-19 09:08: changed pick order / David Wiltberger on 2025-09-02 10:09: Moving to accommodate roofing in Zone 1 / David Wiltberger on 2025-09-24 04:09: BAM not completed Potential Delay / David Wiltberger on 2025-09-30 12:09: BAM did not complete / David Wiltberger on 2025-10-14 10:10: set on recovery schedule / allucent_notes_20251202_153722: David Wiltberger on 2025-12-02 06:45: Grating install not complete for installation / allucent_notes_20251209_203830: David Wiltberger on 2025-12-02 06:45: Grating install not complete for installation / allucent_notes_20251216_165335: David Wiltberger on 2025-12-02 06:45: Grating install not complete for installation / allucent_notes: 2025-12-02 06:45 - User: David Wiltberger - Date Added: 2025-12-02 06:45 - Note: Grating install not complete for installation
- QTS-1001800: allucent_notes: David Wiltberger on 2025-08-19 09:08: changed pick order / allucent_notes_20251014_152335: David Wiltberger on 2025-08-19 09:08: changed pick order / David Wiltberger on 2025-09-02 10:09: Moving to accommodate roofing in Zone 1 / David Wiltberger on 2025-09-24 04:09: BAM not completed Potential Delay / David Wiltberger on 2025-09-30 12:09: BAM did not complete / David Wiltberger on 2025-10-14 10:10: set on recovery schedule / allucent_notes_20251202_153722: David Wiltberger on 2025-12-02 06:45: Grating install not complete for installation / allucent_notes_20251209_203830: David Wiltberger on 2025-12-02 06:45: Grating install not complete for installation / allucent_notes_20251216_165335: David Wiltberger on 2025-12-02 06:45: Grating install not complete for installation / allucent_notes: 2025-12-02 06:45 - User: David Wiltberger - Date Added: 2025-12-02 06:45 - Note: Grating install not complete for installation
- QTS-1001810: allucent_notes: David Wiltberger on 2025-08-19 09:08: changed pick order / allucent_notes_20251014_152335: David Wiltberger on 2025-08-19 09:08: changed pick order / David Wiltberger on 2025-09-02 10:09: Moving to accommodate roofing in Zone 1 / David Wiltberger on 2025-09-24 04:09: BAM not completed Potential Delay / David Wiltberger on 2025-09-30 12:09: BAM did not complete / David Wiltberger on 2025-10-14 10:10: set on recovery schedule / allucent_notes_20251202_153722: David Wiltberger on 2025-12-02 06:45: Grating install not complete for installation / allucent_notes_20251209_203830: David Wiltberger on 2025-12-02 06:45: Grating install not complete for installation / allucent_notes_20251216_165335: David Wiltberger on 2025-12-02 06:45: Grating install not complete for installation / allucent_notes: 2025-12-02 06:45 - User: David Wiltberger - Date Added: 2025-12-02 06:45 - Note: Grating install not complete for installation
- QTS-1001820: allucent_notes: David Wiltberger on 2025-08-19 09:08: changed pick order / allucent_notes_20251014_152335: David Wiltberger on 2025-08-19 09:08: changed pick order / David Wiltberger on 2025-09-02 10:09: Moving to accommodate roofing in Zone 1 / David Wiltberger on 2025-09-24 04:09: BAM not completed Potential Delay / David Wiltberger on 2025-09-30 12:09: BAM did not complete / David Wiltberger on 2025-10-14 10:10: set on recovery schedule / allucent_notes_20251202_153722: David Wiltberger on 2025-12-02 06:45: Grating install not complete for installation / allucent_notes_20251209_203830: David Wiltberger on 2025-12-02 06:45: Grating install not complete for installation / allucent_notes_20251216_165335: David Wiltberger on 2025-12-02 06:45: Grating install not complete for installation / allucent_notes: 2025-12-02 06:45 - User: David Wiltberger - Date Added: 2025-12-02 06:45 - Note: Grating install not complete for installation
- QTS-1001780: allucent_notes: David Wiltberger on 2025-08-19 09:08: changed pick order / allucent_notes_20251014_152335: David Wiltberger on 2025-08-19 09:08: changed pick order / David Wiltberger on 2025-09-02 10:09: Moving to accommodate roofing in Zone 1 / David Wiltberger on 2025-09-24 04:09: BAM not completed Potential Delay / David Wiltberger on 2025-09-30 12:09: BAM did not complete / David Wiltberger on 2025-10-14 10:10: set on recovery schedule / allucent_notes_20251202_153722: David Wiltberger on 2025-12-02 06:45: Grating install not complete for installation / allucent_notes_20251209_203830: David Wiltberger on 2025-12-02 06:45: Grating install not complete for installation / allucent_notes_20251216_165335: David Wiltberger on 2025-12-02 06:45: Grating install not complete for installation / allucent_notes: 2025-12-02 06:45 - User: David Wiltberger - Date Added: 2025-12-02 06:45 - Note: Grating install not complete for installation
- QTS-99390: allucent_notes_20251230_164549: enrique perez on 2025-11-24 09:11: these are scheduled to start 12/1 / enrique perez on 2025-11-24 09:11: these are scheduled to pour with final generator pour in zone 2 / Jason Johnston on 2025-12-09 18:25: Need update from team / David Wiltberger on 2025-12-30 16:19: no update / allucent_notes_20251202_153722: enrique perez on 2025-11-24 09:11: these are scheduled to start 12/1 / enrique perez on 2025-11-24 09:11: these are scheduled to pour with final generator pour in zone 2 / allucent_notes_20251209_203830: enrique perez on 2025-11-24 09:11: these are scheduled to start 12/1 / enrique perez on 2025-11-24 09:11: these are scheduled to pour with final generator pour in zone 2 / Jason Johnston on 2025-12-09 18:25: Need update from team / allucent_notes_20251216_165335: enrique perez on 2025-11-24 09:11: these are scheduled to start 12/1 / enrique perez on 2025-11-24 09:11: these are scheduled to pour with final generator pour in zone 2 / Jason Johnston on 2025-12-09 18:25: Need update from team / allucent_notes: 2025-11-24 09:11 - User: enrique perez - Date Added: 2025-11-24 09:11 - Note: these are scheduled to start 12/1 / 2025-11-24 09:11 - User: enrique perez - Date Added: 2025-11-24 09:11 - Note: these are scheduled to pour with final generator pour in zone
- QTS-13551: allucent_notes_20251230_164549: David Wiltberger on 2025-12-30 16:20: no update / allucent_notes: 2025-12-30 16:20 - User: David Wiltberger - Date Added: 2025-12-30 16:20 - Note: no update
- QTS-41281: allucent_notes_20251230_164549: David Wiltberger on 2025-12-30 16:20: no update / allucent_notes: 2025-12-30 16:20 - User: David Wiltberger - Date Added: 2025-12-30 16:20 - Note: no update
- QTS-49981: allucent_notes_20251230_164549: Scott Masterson on 2025-12-16 16:11: We are not setting PODs in zone 3 till next week. the logistic of all three DCs impacted our schedule. / Scott Masterson on 2025-12-16T23:17:10.002Z: We are not setting PODs in zone 2 till next week. the logistic of all three DCs impacted our schedule. sorry zone2 / David Wiltberger on 2025-12-30 16:20: no update / allucent_notes_20251216_165335: Scott Masterson on 2025-12-16 16:11: We are not setting PODs in zone 3 till next week. the logistic of all three DCs impacted our schedule. / Scott Masterson on 2025-12-16T23:17:10.002Z: We are not setting PODs in zone 2 till next week. the logistic of all three DCs impacted our schedule. sorry zone2 / allucent_notes: 2025-12-16 16:11 - User: Scott Masterson - Date Added: 2025-12-16 16:11 - Note: We are not setting PODs in zone 3 till next week. the logistic of all three DCs impacted our schedule. / 2025-12-16T23:17:10.002Z - User: Scott Masterson - Date Added: 2025-

| ID | WBS | Activity | Duration | Start | Finish | Predecessors | Complete | Remaining | Planned start | Planned finish | Total float | Free float | Constraint | Calendar | Location | Project Section-1 | Phase-1-1 | Baseline | Layton Responsible Party | Project Section | Allucent CSI Group | Subcontractor | Level |
| --- | --- | --- | --- | --- | --- | --- | --- | --- | --- | --- | --- | --- | --- | --- | --- | --- | --- | --- | --- | --- | --- | --- | --- |
|  | 6 | **DH 2200 / Commissioning** |  |  |  |  |  |  |  |  |  |  |  |  |  |  |  |  |  |  |  |  |  |
|  | 2 | **Level 3 Energization & Prefunctional Testing** |  |  |  |  |  |  |  |  |  |  |  |  |  |  |  |  |  |  |  |  |  |
|  | 1 | **Electrical** |  |  |  |  |  |  |  |  |  |  |  |  |  |  |  |  |  |  |  |  |  |
|  | 2 | **Mechanical** |  |  |  |  |  |  |  |  |  |  |  |  |  |  |  |  |  |  |  |  |  |
|  | 4 | **Level 4 Functional Testing** |  |  |  |  |  |  |  |  |  |  |  |  |  |  |  |  |  |  |  |  |  |
|  | 3 | **Level 5 Integrated Systems Testing** |  |  |  |  |  |  |  |  |  |  |  |  |  |  |  |  |  |  |  |  |  |
|  | 7 | **Data Hall 1200 (9MW)** |  | 2025-08-12 | 2026-03-18 |  |  |  |  |  |  |  |  |  |  |  |  |  |  |  |  |  |  |
| QTS-1951 |  | DH 1200 // Prime & Paint Exposed Structure | 10d | 2025-09-02 A | 2025-09-15 A | QTS-21521 | 100% |  |  |  |  |  |  |  | DH1200 | Construction | Phase 2 | IGMP | Doug Hayes | Construction |  |  |  |
| QTS-8611 |  | DH 1200 // Perimeter Insulation | 7d | 2025-10-01 A | 2025-10-03 A | QTS-6921 SS, QTS-20381 | 100% |  | 2025-10-01 | 2025-10-09 |  |  |  |  | DH1200 | Construction | Phase 2 | IGMP | Ron Carroll | Construction |  |  |  |
| QTS-6921 |  | DH 1200 // Establish Control & Layout Walls | 3d | 2025-10-03 A | 2025-11-12 A | QTS-1951, QTS-22021 FF | 100% |  | 2025-10-03 | 2025-10-07 |  |  |  |  | DH1200 | Construction | Phase 2 | IGMP | Doug Hayes | Construction | 01ADMIN |  |  |
| QTS-4621 |  | DH 1200 // Install Fire Sprinkler | 8d | 2025-10-08 A | 2025-10-17 A | QTS-22021 | 100% |  |  |  |  |  |  |  | DH1200 | Construction | Phase 2 | IGMP | Dave Wiltberger | Construction | 01ADMIN | Olympic West Fire Protection |  |
|  | 3 | **Data Hall 1200** |  | 2025-11-26 | 2026-03-18 |  |  |  |  |  |  |  |  |  |  |  |  |  |  |  |  |  |  |
| QTS-10471 |  | DH 1200 // Frame Data Hall / Corridor Wall 1017-1018 (West) | 7d | 2025-11-26 A | 2025-12-08 A | QTS-8621 | 100% |  |  |  |  |  |  |  | DH1200 | Construction | Phase 2 | IGMP | Sean Waisner | Construction | 01ADMIN |  |  |
| QTS-11231 |  | DH 1200 // Install Hollow Metal Frames (West) | 1d | 2025-12-10 A | 2025-12-10 A | QTS-10471 | 100% |  |  |  |  |  |  |  | DH1200 | Construction | Phase 2 | IGMP | Sean Waisner | Construction | 01ADMIN |  |  |
| QTS-1000600 |  | DH 1200 // Install Overhead Conduit - Electrical | 5d | 2026-01-14 | 2026-01-20 | QTS-120000, QTS-1000570 |  |  |  |  | 16d | 0d |  | QTS-PHX3 DC1 - 6 day w/ Holidays | DH2100 | Construction |  | IGMP | Scott Masterson | Construction | 01ADMIN |  | Level 2 |
| QTS-1000610 |  | DH 1200 // Install Overhead Conduit - Controls | 5d | 2026-01-14 | 2026-01-20 | QTS-1000600 SS, QTS-120000 |  |  |  |  | 16d | 0d |  | QTS-PHX3 DC1 - 6 day w/ Holidays | DH2100 | Construction |  | IGMP | Scott Masterson | Construction | 01ADMIN |  | Level 2 |
| QTS-10461 |  | DH 1200 // Frame Data Hall / Corridor Wall 1015-1016 (East) | 5d | 2026-01-14 A | 2026-01-20 A | QTS-6921, QTS-4621, QTS-8611, QTS-10471 | 100% |  |  |  |  |  |  | QTS-PHX3 DC1 - 6 day w/ Holidays | DH1200 | Construction | Phase 2 | IGMP | Sean Waisner | Construction | 01ADMIN | Performance Contracting, Inc. |  |
| QTS-11221 |  | DH 1200 // Rough In-Wall Electrical (West) | 5d | 2026-01-14 | 2026-01-20 | QTS-10471, QTS-39041 |  |  |  |  | 51d | 0d | start on or after 2026-01-05 | QTS-PHX3 DC1 - 6 day w/ Holidays | DH1200 | Construction | Phase 2 | IGMP | Scott Masterson | Construction | 01ADMIN | Rosendin Electric, Inc |  |
| QTS-11241 |  | DH 1200 // Rough In-Wall Electrical (East) | 5d | 2026-01-14 | 2026-01-20 | QTS-10461 |  |  |  |  | 51d | 0d |  | QTS-PHX3 DC1 - 6 day w/ Holidays | DH1200 | Construction | Phase 2 | IGMP | Scott Masterson | Construction | 01ADMIN | Rosendin Electric, Inc |  |
| QTS-102360 |  | DH 1200 // Tape, & Finish Drywall (East) - Data Hall Side - Top Out | 5d | 2026-01-16 | 2026-01-22 | QTS-102350 |  |  |  |  | 12d | 0d |  | QTS-PHX3 DC1 - 6 day w/ Holidays | DH2200 | Construction | Phase 2 | IGMP | Sean Waisner | Construction | 01ADMIN | Performance Contracting, Inc. |  |
| QTS-12221 |  | DH 1200 // In Wall Inspection for Fan Wall | 1d | 2026-01-21 | 2026-01-21 | QTS-11221, QTS-11241 |  |  |  |  | 51d | 3d |  | QTS-PHX3 DC1 - 6 day w/ Holidays | DH1200 | Construction | Phase 2 | IGMP | Dave Wiltberger | Construction | 01ADMIN | Bel-Aire Mechanical, LLC |  |
| QTS-102340 |  | DH 1200 // Top Out / Corridor Wall 1015-1016 (East) - Data Hall Side | 3d | 2026-01-22 A | 2026-01-27 A | QTS-10461 | 100% |  | 2026-01-22 | 2026-01-24 |  |  |  | QTS-PHX3 DC1 - 6 day w/ Holidays | DH2100 | Construction |  | IGMP | Sean Waisner | Construction | 01ADMIN | Performance Contracting, Inc. | Level 2 |
| QTS-102370 |  | DH 1200 // Paint Walls (East) - Data Hall Side - Top Out | 2d | 2026-01-23 | 2026-01-24 | QTS-102360 |  |  |  |  | 12d | 0d |  | QTS-PHX3 DC1 - 6 day w/ Holidays | DH2200 | Construction | Phase 2 | IGMP | Sean Waisner | Construction |  | Pennington Painting Company, LLC |  |
| QTS-102380 |  | DH 1200 // Insulate & Vapor Barrier Data Hall / Corridor Wall 1015-1016 (East) | 2d | 2026-01-23 | 2026-01-24 | QTS-102350, QTS-102360 |  |  |  |  | 48d | 0d |  | QTS-PHX3 DC1 - 6 day w/ Holidays | DH2100 | Construction |  | IGMP | Sean Waisner | Construction | 01ADMIN | Performance Contracting, Inc. | Level 2 |
| QTS-102250 |  | DH 1200 // Hang Drywall (West) - Corridor Side | 2d | 2026-01-26 | 2026-01-27 | QTS-11221 |  |  |  |  | 52d | 0d | start on or after 2026-01-26 | QTS-PHX3 DC1 - 6 day w/ Holidays | DH2200 | Construction | Phase 2 | IGMP | Sean Waisner | Construction | 01ADMIN | Performance Contracting, Inc. |  |
| QTS-12431 |  | DH 1200 // Hang Drywall (East) - Corridor Side | 2d | 2026-01-26 | 2026-01-27 | QTS-11241, QTS-11241 FF, QTS-12221, QTS-102380 |  |  |  |  | 48d | 0d |  | QTS-PHX3 DC1 - 6 day w/ Holidays | DH1200 | Construction | Phase 2 | IGMP | Sean Waisner | Construction |  | Performance Contracting, Inc. |  |
| QTS-14201 |  | DH 1200 // Install Structural Ceiling Grid - North | 10d | 2026-01-26 | 2026-02-05 | QTS-102370, QTS-1000600, QTS-1000610 |  |  |  |  | 12d | 0d |  | QTS-PHX3 DC1 - 6 day w/ Holidays | DH1200 | Construction | Phase 2 | IGMP | Sean Waisner | Construction | 01ADMIN | Performance Contracting, Inc. |  |
| QTS-102350 |  | DH 1200 // One Side Data Hall / Corridor Wall 1015-1016 (East) - Corridor Side | 3d | 2026-01-27 A | 2026-01-15 | QTS-102340 | 33% | 2d | 2026-01-27 | 2026-01-29 | 12d | 0d |  | QTS-PHX3 DC1 - 6 day w/ Holidays | DH2100 | Construction |  | IGMP | Sean Waisner | Construction | 01ADMIN | Performance Contracting, Inc. | Level 2 |
| QTS-102260 |  | DH 1200 // Tape & Finish Drywall (West) - Corridor Side | 5d | 2026-01-28 | 2026-02-02 | QTS-102250 |  |  |  |  | 52d | 0d |  | QTS-PHX3 DC1 - 6 day w/ Holidays | DH2200 | Construction | Phase 2 | IGMP | Sean Waisner | Construction | 01ADMIN | Performance Contracting, Inc. |  |
| QTS-12711 |  | DH 1200 // Tape, & Finish Drywall (East) - Corridor Side | 5d | 2026-01-28 | 2026-02-02 | QTS-12431 |  |  |  |  | 48d | 0d |  | QTS-PHX3 DC1 - 6 day w/ Holidays | DH1200 | Construction | Phase 2 | IGMP | Sean Waisner | Construction |  | Performance Contracting, Inc. |  |
| QTS-1003410 |  | DH 1200 // Install Structural Ceiling Grid - South | 10d | 2026-02-02 | 2026-02-12 | QTS-14201 FF+6d |  |  |  |  | 12d | 0d |  | QTS-PHX3 DC1 - 6 day w/ Holidays | DH1200 | Construction | Phase 2 | IGMP | Sean Waisner | Construction | 01ADMIN | Performance Contracting, Inc. |  |
| QTS-102270 |  | DH 1200 // Vapor Barrier & Insulation (West) | 2d | 2026-02-03 | 2026-02-04 | QTS-102260 |  |  |  |  | 52d | 0d |  | QTS-PHX3 DC1 - 6 day w/ Holidays | DH2100 | Construction |  | IGMP | Sean Waisner | Construction | 01ADMIN | Performance Contracting, Inc. | Level 2 |
| QTS-13391 |  | DH 1200 // Paint Walls (East) - Corridor Side | 2d | 2026-02-03 | 2026-02-04 | QTS-12431, QTS-12711 |  |  |  |  | 48d | 36d |  | QTS-PHX3 DC1 - 6 day w/ Holidays | DH1200 | Construction | Phase 2 | IGMP | Sean Waisner | Construction |  | Pennington Painting Company, LLC |  |
| QTS-12421 |  | DH 1200 // Hang Drywall (West) - Data Hall Side | 2d | 2026-02-05 | 2026-02-06 | QTS-11221, QTS-10461, QTS-10471, QTS-11231, QTS-12221, QTS-102270 |  |  |  |  | 52d | 0d |  | QTS-PHX3 DC1 - 6 day w/ Holidays | DH1200 | Construction | Phase 2 | IGMP | Sean Waisner | Construction |  | Performance Contracting, Inc. |  |
| QTS-12701 |  | DH 1200 // Tape, & Finish Drywall (West) - Data Hall Side | 5d | 2026-02-07 | 2026-02-12 | QTS-12421 |  |  |  |  | 52d | 0d |  | QTS-PHX3 DC1 - 6 day w/ Holidays | DH1200 | Construction | Phase 2 | IGMP | Sean Waisner | Construction |  | Performance Contracting, Inc. |  |
| QTS-102400 |  | DH 1200 // Frame Data Hall / Corridor Wall 1015-1016 (East) - 14x14 Leave Outs | 1d | 2026-02-09 | 2026-02-09 | QTS-46631, QTS-14251, QTS-15301, QTS - 7540 |  |  |  |  | 55d | 0d |  | QTS-PHX3 DC1 - 6 day w/ Holidays | DH2100 | Construction |  | IGMP | Sean Waisner | Construction | 01ADMIN | Performance Contracting, Inc. | Level 2 |
| QTS-11251 |  | DH 1200 // Install Hollow Metal Frames (East) - 14x14 Leave Out | 1d | 2026-02-09 | 2026-02-09 | QTS-10461, QTS-102400 FF |  |  |  |  | 55d | 0d |  | QTS-PHX3 DC1 - 6 day w/ Holidays | DH1200 | Construction | Phase 2 | IGMP | Sean Waisner | Construction | 01ADMIN | Performance Contracting, Inc. |  |
| QTS-102410 |  | DH 1200 // Hang Drywall Data Hall / Corridor Wall 1015-1016 (East) - 14x14 Leave Outs | 1d | 2026-02-10 | 2026-02-10 | QTS-102400, QTS-11251 |  |  |  |  | 55d | 0d |  | QTS-PHX3 DC1 - 6 day w/ Holidays | DH2100 | Construction |  | IGMP | Sean Waisner | Construction | 01ADMIN | Performance Contracting, Inc. | Level 2 |
| QTS-102420 |  | DH 1200 // Tape & Finish Drywall Data Hall / Corridor Wall 1015-1016 (East) - 14x14 Leave Outs | 5d | 2026-02-11 | 2026-02-16 | QTS-102410 |  |  |  |  | 55d | 0d |  | QTS-PHX3 DC1 - 6 day w/ Holidays | DH2100 | Construction |  | IGMP | Sean Waisner | Construction | 01ADMIN | Performance Contracting, Inc. | Level 2 |
| QTS-13381 |  | DH 1200 // Paint Walls (West) | 2d | 2026-02-13 | 2026-02-14 | QTS-12421, QTS-12701 |  |  |  |  | 52d | 0d |  | QTS-PHX3 DC1 - 6 day w/ Holidays | DH1200 | Construction | Phase 2 | IGMP | Sean Waisner | Construction |  | Pennington Painting Company, LLC |  |
| QTS-14961 |  | DH 1200 // Install VESDA | 10d | 2026-02-13 | 2026-02-24 | QTS-1003410, QTS-14201 SS+3d, QTS-102370 |  |  |  |  | 12d | 0d |  | QTS-PHX3 DC1 - 6 day w/ Holidays | DH1200 | Construction | Phase 2 | IGMP | Scott Masterson | Construction |  | Rosendin Electric, Inc |  |
| QTS-13801 |  | DH 1200 // Install Telecom Sleeves | 3d | 2026-02-16 | 2026-02-18 | QTS-13381, QTS-102370 |  |  |  |  | 52d | 22d |  | QTS-PHX3 DC1 - 6 day w/ Holidays | DH1200 | Construction | Phase 2 | IGMP | Scott Masterson | Construction |  | Rosendin Electric, Inc |  |
| QTS-16081 |  | DH 1200 // Install Overhead Lighting | 10d | 2026-02-16 | 2026-02-26 | QTS-1003410, QTS-14201, QTS-14961 FF+2d |  |  |  |  | 12d | 0d |  | QTS-PHX3 DC1 - 6 day w/ Holidays | DH1200 | Construction | Phase 2 | IGMP | Scott Masterson | Construction |  | Rosendin Electric, Inc |  |
| QTS-102430 |  | DH 1200 // Paint Data Hall / Corridor Wall 1015-1016 (East) - 14x14 Leave Outs | 1d | 2026-02-17 | 2026-02-17 | QTS-102420 |  |  |  |  | 55d | 43d |  | QTS-PHX3 DC1 - 6 day w/ Holidays | DH2100 | Construction |  | IGMP | Sean Waisner | Construction | 01ADMIN | Pennington Painting Company, LLC | Level 2 |
| QTS-17561 |  | DH 1200 // Install Ceiling Tile | 7d | 2026-02-27 | 2026-03-06 | QTS-16081 |  |  |  |  | 12d | 0d |  | QTS-PHX3 DC1 - 6 day w/ Holidays | DH1200 | Construction | Phase 2 | IGMP | Sean Waisner | Construction |  | Performance Contracting, Inc. |  |
| QTS-17571 |  | DH 1200 // Install Fire Sprinkler Heads | 5d | 2026-02-27 | 2026-03-04 | QTS-16081 |  |  |  |  | 14d | 2d |  | QTS-PHX3 DC1 - 6 day w/ Holidays | DH1200 | Construction | Phase 2 | IGMP | Dave Wiltberger | Construction |  | Olympic West Fire Protection |  |
| QTS-18421 |  | DH 1200 // Install Temporary Hot Aisle Containment | 10d | 2026-03-07 | 2026-03-18 | QTS-17561, QTS-17571 |  |  |  |  | 12d | 0d |  | QTS-PHX3 DC1 - 6 day w/ Holidays | DH1200 | Construction | Phase 2 | IGMP | Sean Waisner | Construction |  |  |  |

Notes:
- QTS-6921: allucent_notes_20251014_152335: Zack Goertz on 2025-10-14T16:38:05.563Z: Needs resequencing zone 3 and BOH are next priorities. / Jason Johnston on 2025-10-14 15:10: Need to resequencing and make sure we are on the right critical path. / allucent_notes_20251021_145627: Zack Goertz on 2025-10-14T16:38:05.563Z: Needs resequencing zone 3 and BOH are next priorities. / Jason Johnston on 2025-10-14 15:10: Need to resequencing and make sure we are on the right critical path. / Luis Vea on 2025-10-21T15:10:01.983Z: manpower got pushed back to zone 1, will be falling back on zone 2 to start getting on these locations, stand by / Jason Johnston on 2025-10-21 12:10: Moving out to reallocate for zone 1 / allucent_notes_20251027_224008: Zack Goertz on 2025-10-14T16:38:05.563Z: Needs resequencing zone 3 and BOH are next priorities. / Jason Johnston on 2025-10-14 15:10: Need to resequencing and make sure we are on the right critical path. / Luis Vea on 2025-10-21T15:10:01.983Z: manpower got pushed back to zone 1, will be falling back on zone 2 to start getting on these locations, stand by / Jason Johnston on 2025-10-21 12:10: Moving out to reallocate for zone 1 / allucent_notes_20251028_163138: Zack Goertz on 2025-10-14T16:38:05.563Z: Needs resequencing zone 3 and BOH are next priorities. / Jason Johnston on 2025-10-14 15:10: Need to resequencing and make sure we are on the right critical path. / Luis Vea on 2025-10-21T15:10:01.983Z: manpower got pushed back to zone 1, will be falling back on zone 2 to start getting on these locations, stand by / Jason Johnston on 2025-10-21 12:10: Moving out to reallocate for zone 1 / allucent_notes_20251104_160200: Zack Goertz on 2025-10-14T16:38:05.563Z: Needs resequencing zone 3 and BOH are next priorities. / Jason Johnston on 2025-10-14 15:10: Need to resequencing and make sure we are on the right critical path. / Luis Vea on 2025-10-21T15:10:01.983Z: manpower got pushed back to zone 1, will be falling back on zone 2 to start getting on these locations, stand by / Jason Johnston on 2025-10-21 12:10: Moving out to reallocate for zone 1 / allucent_notes_20251111_182405: Zack Goertz on 2025-10-14T16:38:05.563Z: Needs resequencing zone 3 and BOH are next priorities. / Jason Johnston on 2025-10-14 15:10: Need to resequencing and make sure we are on the right critical path. / Luis Vea on 2025-10-21T15:10:01.983Z: manpower got pushed back to zone 1, will be falling back on zone 2 to start getting on these locations, stand by / Jason Johnston on 2025-10-21 12:10: Moving out to reallocate for zone 1 / Jason Johnston on 2025-11-11 16:11: early access / allucent_notes_20251118_192630: Zack Goertz on 2025-10-14T16:38:05.563Z: Needs resequencing zone 3 and BOH are next priorities. / Jason Johnston on 2025-10-14 15:10: Need to resequencing and make sure we are on the right critical path. / Luis Vea on 2025-10-21T15:10:01.983Z: manpower got pushed back to zone 1, will be falling back on zone 2 to start getting on these locations, stand by / Jason Johnston on 2025-10-21 12:10: Moving out to reallocate for zone 1 / Jason Johnston on 2025-11-11 16:11: early access / allucent_notes: 2025-10-14T16:38:05.563Z - User: Zack Goertz - Date Added: 2025-10-14T16:38:05.563Z - Note: Needs resequencing zone 3 and BOH are next priorities. / 2025-10-14 15:10 - User: Jason Johnston - Date Added: 2025-10-14 15:10 - Note: Need to resequencing and
- QTS-11231: allucent_notes_20251209_203830: Jason Johnston on 2025-12-09 18:26: Need update from team / allucent_notes_20251216_165335: Jason Johnston on 2025-12-09 18:26: Need update from team / allucent_notes: 2025-12-09 18:26 - User: Jason Johnston - Date Added: 2025-12-09 18:26 - Note: Need update from team
- QTS-1000600: allucent_notes_20251230_164549: David Wiltberger on 2025-12-30 16:21: no update / allucent_notes: 2025-12-30 16:21 - User: David Wiltberger - Date Added: 2025-12-30 16:21 - Note: no update
- QTS-10461: allucent_notes_20251230_164549: Luis Vea on 2025-10-21T15:10:32.270Z: delayed, no manpower necessary form PCI / Jason Johnston on 2025-12-09 18:26: Need update from team / Jason Johnston on 2025-12-16 08:01: Waiting for beam wrap to be completed in 2200 / David Wiltberger on 2025-12-30 16:20: no update / allucent_notes_20251021_145627: Luis Vea on 2025-10-21T15:10:32.270Z: delayed, no manpower necessary form PCI / allucent_notes_20251027_224008: Luis Vea on 2025-10-21T15:10:32.270Z: delayed, no manpower necessary form PCI / allucent_notes_20251028_163138: Luis Vea on 2025-10-21T15:10:32.270Z: delayed, no manpower necessary form PCI / allucent_notes_20251104_160200: Luis Vea on 2025-10-21T15:10:32.270Z: delayed, no manpower necessary form PCI / allucent_notes_20251209_203830: Luis Vea on 2025-10-21T15:10:32.270Z: delayed, no manpower necessary form PCI / Jason Johnston on 2025-12-09 18:26: Need update from team / allucent_notes_20251216_165335: Luis Vea on 2025-10-21T15:10:32.270Z: delayed, no manpower necessary form PCI / Jason Johnston on 2025-12-09 18:26: Need update from team / Jason Johnston on 2025-12-16 08:01: Waiting for beam wrap to be completed in 2200 / allucent_notes: 2025-10-21T15:10:32.270Z - User: Luis Vea - Date Added: 2025-10-21T15:10:32.270Z - Note: delayed, no manpower necessary form PCI / 2025-12-09 18:26 - User: Jason Johnston - Date Added: 2025-12-09 18:26 - Note: Need update from team / 2025-12-16 08:01 -
- QTS-11221: allucent_notes_20251230_164549: Jason Johnston on 2025-12-09 20:32: Need update from team / Jason Johnston on 2025-12-16 08:01: BOH will drive this / allucent_notes_20251209_203830: Jason Johnston on 2025-12-09 20:32: Need update from team / allucent_notes_20251216_165335: Jason Johnston on 2025-12-09 20:32: Need update from team / Jason Johnston on 2025-12-16 08:01: BOH will drive this / allucent_notes: 2025-12-09 20:32 - User: Jason Johnston - Date Added: 2025-12-09 20:32 - Note: Need update from team / 2025-12-16 08:01 - User: Jason Johnston - Date Added: 2025-12-16 08:01 - Note: BOH will drive this
- QTS-102340: allucent_notes_20251014_152335: Zack Goertz on 2025-09-08T20:45:26.651Z: Not started. PCI has been put on notice that they are behind / Jason Johnston on 2025-10-08 08:10: not done / allucent_notes: 2025-09-08T20:45:26.651Z - User: Zack Goertz - Date Added: 2025-09-08T20:45:26.651Z - Note: Not started. PCI has been put on notice that they are behind / 2025-10-08 08:10 - User: Jason Johnston - Date Added: 2025-10-08 08:10 - Note: not done
- QTS-102380: allucent_notes_20251014_152335: Zack Goertz on 2025-09-08T20:45:26.651Z: Not started. PCI has been put on notice that they are behind / Jason Johnston on 2025-10-08 08:10: not done / allucent_notes: 2025-09-08T20:45:26.651Z - User: Zack Goertz - Date Added: 2025-09-08T20:45:26.651Z - Note: Not started. PCI has been put on notice that they are behind / 2025-10-08 08:10 - User: Jason Johnston - Date Added: 2025-10-08 08:10 - Note: not done
- QTS-102350: allucent_notes_20251014_152335: Zack Goertz on 2025-09-08T20:45:26.651Z: Not started. PCI has been put on notice that they are behind / Jason Johnston on 2025-10-08 08:10: not done / allucent_notes: 2025-09-08T20:45:26.651Z - User: Zack Goertz - Date Added: 2025-09-08T20:45:26.651Z - Note: Not started. PCI has been put on notice that they are behind / 2025-10-08 08:10 - User: Jason Johnston - Date Added: 2025-10-08 08:10 - Note: not done
- QTS-102400: allucent_notes_20251014_152335: Zack Goertz on 2025-09-08T20:45:26.651Z: Not started. PCI has been put on notice that they are behind / Jason Johnston on 2025-10-08 08:10: not done / allucent_notes: 2025-09-08T20:45:26.651Z - User: Zack Goertz - Date Added: 2025-09-08T20:45:26.651Z - Note: Not started. PCI has been put on notice that they are behind / 2025-10-08 08:10 - User: Jason Johnston - Date Added: 2025-10-08 08:10 - Note: not done
- QTS-102410: allucent_notes_20251014_152335: Zack Goertz on 2025-09-08T20:45:26.651Z: Not started. PCI has been put on notice that they are behind / Jason Johnston on 2025-10-08 08:10: not done / allucent_notes: 2025-09-08T20:45:26.651Z - User: Zack Goertz - Date Added: 2025-09-08T20:45:26.651Z - Note: Not started. PCI has been put on notice that they are behind / 2025-10-08 08:10 - User: Jason Johnston - Date Added: 2025-10-08 08:10 - Note: not done
- QTS-102420: allucent_notes_20251014_152335: Zack Goertz on 2025-09-08T20:45:26.651Z: Not started. PCI has been put on notice that they are behind / Jason Johnston on 2025-10-08 08:10: not done / allucent_notes: 2025-09-08T20:45:26.651Z - User: Zack Goertz - Date Added: 2025-09-08T20:45:26.651Z - Note: Not started. PCI has been put on notice that they are behind / 2025-10-08 08:10 - User: Jason Johnston - Date Added: 2025-10-08 08:10 - Note: not done
- QTS-102430: allucent_notes_20251014_152335: Zack Goertz on 2025-09-08T20:45:26.651Z: Not started. PCI has been put on notice that they are behind / Jason Johnston on 2025-10-08 08:10: not done / allucent_notes: 2025-09-08T20:45:26.651Z - User: Zack Goertz - Date Added: 2025-09-08T20:45:26.651Z - Note: Not started. PCI has been put on notice that they are behind / 2025-10-08 08:10 - User: Jason Johnston - Date Added: 2025-10-08 08:10 - Note: not done

| ID | WBS | Activity | Duration | Start | Finish | Predecessors | Complete | Remaining | Planned start | Planned finish | Total float | Free float | Constraint | Calendar | Subcontractor | Location | Project Section-1 | Phase-1-1 | Baseline | Layton Responsible Party | Project Section | Allucent CSI Group | Level |
| --- | --- | --- | --- | --- | --- | --- | --- | --- | --- | --- | --- | --- | --- | --- | --- | --- | --- | --- | --- | --- | --- | --- | --- |
|  | 2 | **Gallery 1201 Mechanical** |  | 2025-09-24 | 2026-03-09 |  |  |  |  |  |  |  |  |  |  |  |  |  |  |  |  |  |  |
| QTS-13811 |  | DH 1200 / Mechanical Gallery 1201 // Install VESDA | 8d | 2025-09-24 A | 2025-10-17 A | QTS-1951 | 100% |  | 2025-09-24 | 2025-10-03 |  |  |  |  | Rosendin Electric, Inc | DH1200 | Construction | Phase 2 | IGMP | Scott Masterson | Construction | 01ADMIN |  |
| QTS-44491 |  | DH 1200 / Mechanical Gallery 1201 // Install OH Mechanical Hangers | 7d | 2025-09-24 A | 2025-10-02 A | QTS-1951 | 100% |  |  |  |  |  |  |  | Bel-Aire Mechanical, LLC | DH2100 | Construction |  | IGMP | Dave Wiltberger | Construction |  | Level 2 |
| QTS-13821 |  | DH 1200 / Mechanical Gallery 1201 // OH Mechanical Piping | 10d | 2025-10-08 A | 2025-12-12 A | QTS-44491 | 100% |  | 2025-10-08 | 2025-10-21 |  |  |  |  | Bel-Aire Mechanical, LLC | DH1200 | Construction | Phase 2 | IGMP | Dave Wiltberger | Construction | 01ADMIN |  |
| QTS-8621 |  | DH 1200 / Mechanical Gallery 1201 // Frame for 1201-1202 Wall | 5d | 2025-11-19 A | 2025-11-25 A | QTS-20381 | 100% |  |  |  |  |  |  |  |  | DH1200 | Construction | Phase 2 | IGMP | Sean Waisner | Construction | 01ADMIN |  |
| QTS-11261 |  | DH 1200 / Mechanical Gallery 1201 // Hang, Tape, & Finish Drywall for 1201-1202 Wall - EG Side | 10d | 2025-11-21 A | 2026-01-05 A | QTS-8621 SS | 100% |  | 2025-11-24 | 2025-12-06 |  |  |  | QTS-PHX3 DC1 - 6 day w/ Holidays | Performance Contracting, Inc. | DH1200 | Construction | Phase 2 | IGMP | Sean Waisner | Construction | 01ADMIN |  |
| QTS-10511 |  | DH 1200 / Mechanical Gallery 1201 // Frame Fan Wall | 5d | 2025-12-16 A | 2025-12-22 A | QTS-8621, QTS-13821 | 100% |  | 2025-12-15 | 2025-12-19 |  |  |  | QTS-PHX3 DC1 - 6 day w/ Holidays | Performance Contracting, Inc. | DH1200 | Construction | Phase 2 | IGMP | Sean Waisner | Construction | 01ADMIN |  |
| QTS-1003430 |  | DH 1200 / Mechanical Gallery 1201 // Tape & Finish for 1201-1202 Wall - MG Side - Top Out | 4d | 2026-01-14 | 2026-01-17 | QTS-1003420 |  |  |  |  | 9d | 0d |  | QTS-PHX3 DC1 - 6 day w/ Holidays | Performance Contracting, Inc. | DH1200 | Construction | Phase 2 | IGMP | Sean Waisner | Construction | 01ADMIN |  |
| QTS-10501 |  | DH 1200 / Mechanical Gallery 1201 // In Wall Electrical Rough for 1201-1202 Wall | 2d | 2026-01-14 | 2026-01-15 | QTS-8621 |  |  |  |  | 10d | 0d | start on or after 2026-01-05 | QTS-PHX3 DC1 - 6 day w/ Holidays | Rosendin Electric, Inc | DH1200 | Construction | Phase 2 | IGMP | Scott Masterson | Construction | 01ADMIN |  |
| QTS-11621 |  | DH 1200 / Mechanical Gallery 1201 // In Wall Electrical Rough for Fan Wall | 2d | 2026-01-14 | 2026-01-15 | QTS-10511 |  |  |  |  | 72d | 0d |  | QTS-PHX3 DC1 - 6 day w/ Holidays | Rosendin Electric, Inc | DH1200 | Construction | Phase 2 | IGMP | Scott Masterson | Construction | 01ADMIN |  |
| QTS-12251 |  | DH 1200 / Mechanical Gallery 1201 // Hang Drywall for Fan Wall - MG Side | 3d | 2026-01-14 A | 2026-01-16 A | QTS-10511 | 100% |  |  |  |  |  |  | QTS-PHX3 DC1 - 6 day w/ Holidays | Performance Contracting, Inc. | DH1200 | Construction | Phase 2 | IGMP | Sean Waisner | Construction | 01ADMIN |  |
| QTS-13031 |  | DH 1200 / Mechanical Gallery 1201 // Prime & Paint Walls for 1201-1202 Wall - EG Side | 3d | 2026-01-14 | 2026-01-16 | QTS-11261 |  |  |  |  | 22d | 0d |  | QTS-PHX3 DC1 - 6 day w/ Holidays | Pennington Painting Company, LLC | DH1200 | Construction | Phase 2 | IGMP | Sean Waisner | Construction | 01ADMIN |  |
| QTS-10901 |  | DH 1200 / Mechanical Gallery 1201 // In Wall Inspection for 1201-1202 Wall | 1d | 2026-01-16 | 2026-01-16 | QTS-10501 |  |  |  |  | 10d | 0d |  | QTS-PHX3 DC1 - 6 day w/ Holidays | Rosendin Electric, Inc | DH1200 | Construction | Phase 2 | IGMP | Scott Masterson | Construction | 01ADMIN |  |
| QTS-12001 |  | DH 1200 / Mechanical Gallery 1201 // In Wall Inspection for Fan Wall | 1d | 2026-01-16 | 2026-01-16 | QTS-11621 |  |  |  |  | 72d | 0d |  | QTS-PHX3 DC1 - 6 day w/ Holidays | Rosendin Electric, Inc | DH1200 | Construction | Phase 2 | IGMP | Scott Masterson | Construction | 01ADMIN |  |
| QTS-1003420 |  | DH 1200 / Mechanical Gallery 1201 // Top Out for 1201-1202 Wall - MG Side | 3d | 2026-01-17 A | 2026-01-24 A | QTS-8621 | 100% |  | 2026-01-17 | 2026-01-21 |  |  |  | QTS-PHX3 DC1 - 6 day w/ Holidays | Performance Contracting, Inc. | DH1200 | Construction | Phase 2 | IGMP | Sean Waisner | Construction | 01ADMIN |  |
| QTS-1003480 |  | DH 1200 / Mechanical Gallery 1201 // Insulate for 1201-1202 Wall | 3d | 2026-01-17 | 2026-01-21 | QTS-10901 |  |  |  |  | 10d | 0d |  | QTS-PHX3 DC1 - 6 day w/ Holidays | Rosendin Electric, Inc | DH1200 | Construction | Phase 2 | IGMP | Scott Masterson | Construction | 01ADMIN |  |
| QTS-1004360 |  | DH 1200 / Mechanical Gallery 1201 // Tape & Finish for Fan Wall - MG Side | 4d | 2026-01-17 A | 2026-01-20 A | QTS-12251 | 100% |  | 2026-01-17 | 2026-01-22 |  |  |  | QTS-PHX3 DC1 - 6 day w/ Holidays | Performance Contracting, Inc. | DH1200 | Construction | Phase 2 | IGMP | Sean Waisner | Construction | 01ADMIN |  |
| QTS-1004370 |  | DH 1200 / Mechanical Gallery 1201 // Hang Drywall for Fan Wall - DH Side | 3d | 2026-01-17 | 2026-01-21 | QTS-12001 |  |  |  |  | 72d | 0d |  | QTS-PHX3 DC1 - 6 day w/ Holidays | Performance Contracting, Inc. | DH1200 | Construction | Phase 2 | IGMP | Sean Waisner | Construction | 01ADMIN |  |
| QTS-13401 |  | DH 1200 / Mechanical Gallery 1201 // Top of Wall Fire Stop for 1201-1202 Wall | 2d | 2026-01-17 A | 2026-01-21 A | QTS-13031 | 100% |  | 2026-01-17 | 2026-01-20 |  |  |  | QTS-PHX3 DC1 - 6 day w/ Holidays | Alpha Insulation & Waterproofing, Inc. | DH1200 | Construction | Phase 2 | IGMP | Sean Waisner | Construction | 01ADMIN |  |
| QTS-15481 |  | DH 1200 / Mechanical Gallery 1201 // DH CRAH Unit Mechanical Connections | 10d | 2026-01-17 | 2026-01-29 | QTS-14251 |  |  |  |  | 34d | 0d |  | QTS-PHX3 DC1 - 6 day w/ Holidays | Bel-Aire Mechanical, LLC | DH1200 | Construction | Phase 2 | IGMP | Dave Wiltberger | Construction |  |  |
| QTS-15491 |  | DH 1200 / Mechanical Gallery 1201 // Install Angle Seal Around Units | 2d | 2026-01-17 | 2026-01-20 | QTS-14251 |  |  |  |  | 79d | 9d |  | QTS-PHX3 DC1 - 6 day w/ Holidays | Performance Contracting, Inc. | DH1200 | Construction | Phase 2 | IGMP | Sean Waisner | Construction |  |  |
| QTS-46651 |  | DH 1200 / Mechanical Gallery 1201 // Set EPMS/BMS Panels | 4d | 2026-01-17 | 2026-01-22 | QTS-13031 |  |  |  |  | 50d | 29d |  | QTS-PHX3 DC1 - 6 day w/ Holidays | Rosendin Electric, Inc | DH1100 | Construction | Phase 1 | IGMP | Scott Masterson | Construction | 01ADMIN | Level 1 |
| QTS-1003440 |  | DH 1200 / Mechanical Gallery 1201 // Prime & Paint for 1201-1202 Wall - MG Side - Top Out | 2d | 2026-01-20 | 2026-01-21 | QTS-1003430 |  |  |  |  | 9d | 0d |  | QTS-PHX3 DC1 - 6 day w/ Holidays | Performance Contracting, Inc. | DH1200 | Construction | Phase 2 | IGMP | Sean Waisner | Construction | 01ADMIN |  |
| QTS-14251 |  | DH 1200 / Mechanical Gallery 1201 // OFCI - L2 SET IN PLACE - Eq Type # - DH CRAH - 14 units | 6d | 2026-01-20 A | 2026-01-27 A | QTS-13031, QTS-34971, QTS-34981, QTS-34991, QTS-35001, QTS-35011, QTS-35021, QTS-35031, QTS-35041, QTS-35051, QTS-35061, QTS-35071, QTS-35081, QTS-35091, QTS-35101, QTS-13821, QTS-13041 | 100% |  | 2026-01-24 | 2026-01-30 |  |  |  | QTS-PHX3 DC1 - 6 day w/ Holidays | Bel-Aire Mechanical, LLC | DH1200 | Construction | Phase 2 | IGMP | Dave Wiltberger | Construction |  |  |
| QTS-13041 |  | DH 1200 / Mechanical Gallery 1201 // Paint Fan Walls - MG Side | 2d | 2026-01-21 A | 2026-01-23 A | QTS-1004360 | 100% |  | 2026-01-21 | 2026-01-22 |  |  |  | QTS-PHX3 DC1 - 6 day w/ Holidays | Pennington Painting Company, LLC | DH1200 | Construction | Phase 2 | IGMP | Sean Waisner | Construction | 01ADMIN |  |
| QTS-1003450 |  | DH 1200 / Mechanical Gallery 1201 // Hang Drywall for 1201-1202 Wall - MG Side - Remaining | 3d | 2026-01-22 | 2026-01-24 | QTS-1003480 |  |  |  |  | 10d | 0d |  | QTS-PHX3 DC1 - 6 day w/ Holidays | Performance Contracting, Inc. | DH1200 | Construction | Phase 2 | IGMP | Sean Waisner | Construction | 01ADMIN |  |
| QTS-1004380 |  | DH 1200 / Mechanical Gallery 1201 // Tape & Finish for Fan Wall - DH Side | 4d | 2026-01-22 | 2026-01-26 | QTS-1004370 |  |  |  |  | 72d | 0d |  | QTS-PHX3 DC1 - 6 day w/ Holidays | Performance Contracting, Inc. | DH1200 | Construction | Phase 2 | IGMP | Sean Waisner | Construction | 01ADMIN |  |
| QTS-15631 |  | DH 1200 / Mechanical Gallery 1201 // Install OH Electrical, FA/EPMS/BMS Conduit & Grounding | 10d | 2026-01-22 | 2026-02-02 | QTS-1003440, QTS-13821 |  |  |  |  | 9d | 0d |  | QTS-PHX3 DC1 - 6 day w/ Holidays | Rosendin Electric, Inc | DH1200 | Construction | Phase 2 | IGMP | Scott Masterson | Construction | 01ADMIN |  |
| QTS-1003460 |  | DH 1200 / Mechanical Gallery 1201 // Tape & Finish for 1201-1202 Wall - MG Side - Remaining | 4d | 2026-01-26 | 2026-01-29 | QTS-1003450 |  |  |  |  | 10d | 0d |  | QTS-PHX3 DC1 - 6 day w/ Holidays | Performance Contracting, Inc. | DH1200 | Construction | Phase 2 | IGMP | Sean Waisner | Construction | 01ADMIN |  |
| QTS-13831 |  | DH 1200 / Mechanical Gallery 1201 // Install Security Screen Above Fan Wall | 3d | 2026-01-26 A | 2026-01-14 | QTS-10511, QTS-99680, QTS-1001250 | 67% | 1d | 2026-01-26 | 2026-01-28 | 82d | 12d |  | QTS-PHX3 DC1 - 6 day w/ Holidays | Performance Contracting, Inc. | DH1200 | Construction | Phase 2 | IGMP | Sean Waisner | Construction | 01ADMIN |  |
| QTS-1004390 |  | DH 1200 / Mechanical Gallery 1201 // Paint Fan Walls - DH Side | 2d | 2026-01-27 | 2026-01-28 | QTS-1004380 |  |  |  |  | 72d | 49d |  | QTS-PHX3 DC1 - 6 day w/ Holidays | Pennington Painting Company, LLC | DH1200 | Construction | Phase 2 | IGMP | Sean Waisner | Construction | 01ADMIN |  |
| QTS-1003470 |  | DH 1200 / Mechanical Gallery 1201 // Prime & Paint for 1201-1202 Wall - MG Side - Remaining | 2d | 2026-01-30 | 2026-01-31 | QTS-1003460 |  |  |  |  | 10d | 0d |  | QTS-PHX3 DC1 - 6 day w/ Holidays | Performance Contracting, Inc. | DH1200 | Construction | Phase 2 | IGMP | Sean Waisner | Construction | 01ADMIN |  |
| QTS-17001 |  | DH 1200 / Mechanical Gallery 1201 // Set Humidifier | 1d | 2026-01-30 | 2026-01-30 | QTS-15481, QTS-13831, QTS-19511 |  |  |  |  | 70d | 0d |  | QTS-PHX3 DC1 - 6 day w/ Holidays | Bel-Aire Mechanical, LLC | DH1200 | Construction | Phase 2 | IGMP | Dave Wiltberger | Construction |  |  |
| QTS-17161 |  | DH 1200 / Mechanical Gallery 1201 // Tie-In MEP to Humidifiers | 6d | 2026-01-31 | 2026-02-06 | QTS-17001, QTS-14251, QTS-13821 FF, QTS-15491 |  |  |  |  | 70d | 69d |  | QTS-PHX3 DC1 - 6 day w/ Holidays | Bel-Aire Mechanical, LLC | DH1200 | Construction | Phase 2 | IGMP | Dave Wiltberger | Construction |  |  |
| QTS-16301 |  | DH 1200 / Mechanical Gallery 1201 // OFCI - L2 SET IN PLACE - Eq Type # - MOD-03 - 7 units | 10d | 2026-02-02 | 2026-02-12 | QTS-1003470, QTS-31621, QTS-31631, QTS-31641, QTS-31651, QTS-31661, QTS-31671, QTS-31711, QTS-14251 |  |  |  |  | 10d | 0d |  | QTS-PHX3 DC1 - 6 day w/ Holidays | Rosendin Electric, Inc | DH1200 | Construction | Phase 2 | IGMP | Scott Masterson | Construction |  |  |
| QTS-43901 |  | DH 1200 / Mechanical Gallery 1201 // OFCI - L2 SET IN PLACE - Eq Type # - MOD-02 - 7 units | 10d | 2026-02-02 | 2026-02-12 | QTS-16301 SS, QTS-31381, QTS-31391, QTS-31401, QTS-31411, QTS-31421, QTS-31431, QTS-31771, QTS-14251, QTS-13821 |  |  |  |  | 10d | 1d |  | QTS-PHX3 DC1 - 6 day w/ Holidays | Rosendin Electric, Inc | DH1200 | Construction | Phase 2 | IGMP | Scott Masterson | Construction |  |  |
| QTS-46631 |  | DH 1200 / Mechanical Gallery 1201 // OFCI - L2 SET IN PLACE - Eq Type # - EG CRAH - 4 units | 6d | 2026-02-02 | 2026-02-07 | QTS-1003470, QTS-1003440, QTS-35251, QTS-35261, QTS-35271, QTS-35281, QTS-13031 |  |  |  |  | 22d | 0d |  | QTS-PHX3 DC1 - 6 day w/ Holidays | Bel-Aire Mechanical, LLC | DH1200 | Construction | Phase 2 | IGMP | Dave Wiltberger | Construction | 01ADMIN |  |
| QTS-46641 |  | DH 1200 / Mechanical Gallery 1201 // EG CRAH Unit Mechanical Connections | 10d | 2026-02-02 | 2026-02-12 | QTS-46631 SS |  |  |  |  | 22d | 1d |  | QTS-PHX3 DC1 - 6 day w/ Holidays | Bel-Aire Mechanical, LLC | DH1200 | Construction | Phase 2 | IGMP | Dave Wiltberger | Construction |  |  |
| QTS-14511 |  | DH 1200 / Mechanical Gallery 1201 // Install Raceway from UPS Pod to MOD-02/03 Boards | 10d | 2026-02-03 | 2026-02-13 | QTS-15631, QTS-13561, QTS-16301 SS, QTS-43901 SS, QTS-13401 |  |  |  |  | 9d | 0d |  | QTS-PHX3 DC1 - 6 day w/ Holidays | Rosendin Electric, Inc | DH1200 | Construction | Phase 2 | IGMP | Scott Masterson | Construction |  |  |
| QTS-15621 |  | DH 1200 / Mechanical Gallery 1201 // Install Electrical Tray | 5d | 2026-02-14 | 2026-02-19 | QTS-13821, QTS-15481, QTS-46641, QTS-14511 |  |  |  |  | 21d | 0d |  | QTS-PHX3 DC1 - 6 day w/ Holidays | Rosendin Electric, Inc | DH1200 | Construction | Phase 2 | IGMP | Scott Masterson | Construction |  |  |
| QTS-43771 |  | DH 1200 / Mechanical Gallery 1201 // Pull & Terminate from UPS Pod to MOD-02/03 Boards | 5d | 2026-02-14 | 2026-02-19 | QTS-43901, QTS-16301, QTS-14511 |  |  |  |  | 9d | 0d |  | QTS-PHX3 DC1 - 6 day w/ Holidays | Rosendin Electric, Inc | DH1200 | Construction | Phase 2 | IGMP | Scott Masterson | Construction |  |  |
| QTS-16561 |  | DH 1200 / Mechanical Gallery 1201 // Install Basket Tray for LV | 5d | 2026-02-20 | 2026-02-25 | QTS-15621 |  |  |  |  | 21d | 0d |  | QTS-PHX3 DC1 - 6 day w/ Holidays | Rosendin Electric, Inc | DH1200 | Construction | Phase 2 | IGMP | Scott Masterson | Construction |  |  |
| QTS-44511 |  | DH 1200 / Mechanical Gallery 1201 // Install Lighting, Security, and Devices | 5d | 2026-02-20 | 2026-02-25 | QTS-43771 |  |  |  |  | 54d | 37d |  | QTS-PHX3 DC1 - 6 day w/ Holidays | Securitas Technology Corporation | DH2100 | Construction |  | IGMP | Scott Masterson | Construction |  | Level 2 |
| QTS-46661 |  | DH 1200 / Mechanical Gallery 1201 // Pull & Terminate from MOD-02 to CRAHs | 4d | 2026-02-20 | 2026-02-24 | QTS-43771 |  |  |  |  | 37d | 0d |  | QTS-PHX3 DC1 - 6 day w/ Holidays | Rosendin Electric, Inc | DH1100 | Construction | Phase 1 | IGMP | Scott Masterson | Construction |  | Level 1 |
| QTS-46671 |  | DH 1200 / Mechanical Gallery 1201 // Pull & Terminate from MOD-02 to DOAS | 4d | 2026-02-25 | 2026-02-28 | QTS-46661 |  |  |  |  | 37d | 0d |  | QTS-PHX3 DC1 - 6 day w/ Holidays | Rosendin Electric, Inc | DH1100 | Construction | Phase 1 | IGMP | Scott Masterson | Construction |  | Level 1 |
| QTS-44501 |  | DH 1200 / Mechanical Gallery 1201 // Install BMS & EPMS Cable and Terminations | 10d | 2026-02-26 | 2026-03-09 | QTS-16561, QTS-46651 |  |  |  |  | 21d | 5d |  | QTS-PHX3 DC1 - 6 day w/ Holidays | Rosendin Electric, Inc | DH2100 | Construction |  | IGMP | Scott Masterson | Construction |  | Level 2 |

Notes:
- QTS-13811: allucent_notes_20251014_152335: David Wiltberger on 2025-10-07 16:10: access limited / allucent_notes_20251021_145627: David Wiltberger on 2025-10-07 16:10: access limited / Luis Vea on 2025-10-21T15:11:17.421Z: delayed, nothing happening here / allucent_notes: 2025-10-07 16:10 - User: David Wiltberger - Date Added: 2025-10-07 16:10 - Note: access limited / 2025-10-21T15:11:17.421Z - User: Luis Vea - Date Added: 2025-10-21T15:11:17.421Z - Note: delayed, nothing happening here
- QTS-13821: allucent_notes_20251014_152335: David Wiltberger on 2025-10-07 15:10: not completed with zone 1 yet / allucent_notes_20251021_145627: David Wiltberger on 2025-10-07 15:10: not completed with zone 1 yet / David Wiltberger on 2025-10-21 13:10: Directed by Layton to concentrate on all Phase 1 work to drive completion / allucent_notes_20251027_224008: David Wiltberger on 2025-10-07 15:10: not completed with zone 1 yet / David Wiltberger on 2025-10-21 13:10: Directed by Layton to concentrate on all Phase 1 work to drive completion / allucent_notes_20251028_163138: David Wiltberger on 2025-10-07 15:10: not completed with zone 1 yet / David Wiltberger on 2025-10-21 13:10: Directed by Layton to concentrate on all Phase 1 work to drive completion / allucent_notes_20251104_160200: David Wiltberger on 2025-10-07 15:10: not completed with zone 1 yet / David Wiltberger on 2025-10-21 13:10: Directed by Layton to concentrate on all Phase 1 work to drive completion / allucent_notes_20251111_182405: David Wiltberger on 2025-10-07 15:10: not completed with zone 1 yet / David Wiltberger on 2025-10-21 13:10: Directed by Layton to concentrate on all Phase 1 work to drive completion / Jason Johnston on 2025-11-11 16:11: actually started 11/8 / allucent_notes_20251118_192630: David Wiltberger on 2025-10-07 15:10: not completed with zone 1 yet / David Wiltberger on 2025-10-21 13:10: Directed by Layton to concentrate on all Phase 1 work to drive completion / Jason Johnston on 2025-11-11 16:11: actually started 11/8 / David Wiltberger on 2025-11-17 16:11: out of sequence / allucent_notes_20251202_153722: David Wiltberger on 2025-10-07 15:10: not completed with zone 1 yet / David Wiltberger on 2025-10-21 13:10: Directed by Layton to concentrate on all Phase 1 work to drive completion / Jason Johnston on 2025-11-11 16:11: actually started 11/8 / David Wiltberger on 2025-11-17 16:11: out of sequence / allucent_notes_20251209_203830: David Wiltberger on 2025-10-07 15:10: not completed with zone 1 yet / David Wiltberger on 2025-10-21 13:10: Directed by Layton to concentrate on all Phase 1 work to drive completion / Jason Johnston on 2025-11-11 16:11: actually started 11/8 / David Wiltberger on 2025-11-17 16:11: out of sequence / allucent_notes_20251216_165335: David Wiltberger on 2025-10-07 15:10: not completed with zone 1 yet / David Wiltberger on 2025-10-21 13:10: Directed by Layton to concentrate on all Phase 1 work to drive completion / Jason Johnston on 2025-11-11 16:11: actually started 11/8 / David Wiltberger on 2025-11-17 16:11: out of sequence / allucent_notes: 2025-10-07 15:10 - User: David Wiltberger - Date Added: 2025-10-07 15:10 - Note: not completed with zone 1 yet / 2025-10-21 13:10 - User: David Wiltberger - Date Added: 2025-10-21 13:10 - Note: Directed by Layton to concentrate on all Phase 1 work to dri
- QTS-8621: allucent_notes: 10/1/25 / RFI #543 / Holding up the completion of the framing of the 12' X 38' / wall. / allucent_notes_20251014_152335: Zack Goertz on 2025-10-14T16:39:02.631Z: Needs resequencing. Zone 3 is the next priority area. / -ZG 10/14 / Jason Johnston on 2025-10-14 15:10: resequencing needed to ensure we are truly on critical path. / allucent_notes_20251021_145627: Zack Goertz on 2025-10-14T16:39:02.631Z: Needs resequencing. Zone 3 is the next priority area. / -ZG 10/14 / Jason Johnston on 2025-10-14 15:10: resequencing needed to ensure we are truly on critical path. / Luis Vea on 2025-10-21T15:12:12.333Z: bottom and top track is installed, no vertical framing, manpower got pushed back to zone 1 fan walls / Jason Johnston on 2025-10-21 12:10: Moving out to reallocate for zone 1 / allucent_notes_20251027_224008: Zack Goertz on 2025-10-14T16:39:02.631Z: Needs resequencing. Zone 3 is the next priority area. / -ZG 10/14 / Jason Johnston on 2025-10-14 15:10: resequencing needed to ensure we are truly on critical path. / Luis Vea on 2025-10-21T15:12:12.333Z: bottom and top track is installed, no vertical framing, manpower got pushed back to zone 1 fan walls / Jason Johnston on 2025-10-21 12:10: Moving out to reallocate for zone 1 / allucent_notes_20251028_163138: Zack Goertz on 2025-10-14T16:39:02.631Z: Needs resequencing. Zone 3 is the next priority area. / -ZG 10/14 / Jason Johnston on 2025-10-14 15:10: resequencing needed to ensure we are truly on critical path. / Luis Vea on 2025-10-21T15:12:12.333Z: bottom and top track is installed, no vertical framing, manpower got pushed back to zone 1 fan walls / Jason Johnston on 2025-10-21 12:10: Moving out to reallocate for zone 1 / allucent_notes_20251104_160200: Zack Goertz on 2025-10-14T16:39:02.631Z: Needs resequencing. Zone 3 is the next priority area. / -ZG 10/14 / Jason Johnston on 2025-10-14 15:10: resequencing needed to ensure we are truly on critical path. / Luis Vea on 2025-10-21T15:12:12.333Z: bottom and top track is installed, no vertical framing, manpower got pushed back to zone 1 fan walls / Jason Johnston on 2025-10-21 12:10: Moving out to reallocate for zone 1 / allucent_notes_20251111_182405: Zack Goertz on 2025-10-14T16:39:02.631Z: Needs resequencing. Zone 3 is the next priority area. / -ZG 10/14 / Jason Johnston on 2025-10-14 15:10: resequencing needed to ensure we are truly on critical path. / Luis Vea on 2025-10-21T15:12:12.333Z: bottom and top track is installed, no vertical framing, manpower got pushed back to zone 1 fan walls / Jason Johnston on 2025-10-21 12:10: Moving out to reallocate for zone 1 / Jason Johnston on 2025-11-11 16:11: Not started. / allucent_notes_20251118_192630: Zack Goertz on 2025-10-14T16:39:02.631Z: Needs resequencing. Zone 3 is the next priority area. / -ZG 10/14 / Jason Johnston on 2025-10-14 15:10: resequencing needed to ensure we are truly on critical path. / Luis Vea on 2025-10-21T15:12:12.333Z: bottom and top track is installed, no vertical framing, manpower got pushed back to zone 1 fan walls / Jason Johnston on 2025-10-21 12:10: Moving out to reallocate for zone 1 / Jason Johnston on 2025-11-11 16:11: Not started. / allucent_notes_20251202_153722: Zack Goertz on 2025-10-14T16:39:02.631Z: Needs resequencing. Zone 3 is the next priority area. / -ZG 10/14 / Jason Johnston on 2025-10-14 15:10: resequencing needed to ensure we are truly on critical path. / Luis Vea on 2025-10-21T15:12:12.333Z: bottom and top track is installed, no vertical framing, manpower got pushed back to zone 1 fan walls / Jason Johnston on 2025-10-21 12:10: Moving out to reallocate for zone 1 / Jason Johnston on 2025-11-11 16:11: Not started. / allucent_notes: 2025-10-14T16:39:02.631Z - User: Zack Goertz - Date Added: 2025-10-14T16:39:02.631Z - Note: Needs resequencing. Zone 3 is the next priority area. -ZG 10/14 / 2025-10-14 15:10 - User: Jason Johnston - Date Added: 2025-10-14 15:10 - Note: resequencing need
- QTS-11261: allucent_notes_20251230_164549: Zack Goertz on 2025-10-14T16:39:52.733Z: needs resequencing. Zone 3 and BOH is the next priority. / -ZG 10/14 / Jason Johnston on 2025-11-04 16:11: Update needed / Jason Johnston on 2025-11-11 16:11: Not starting / Luis Vea on 2025-12-01 10:28: started 11/21 / allucent_notes_20251014_152335: Zack Goertz on 2025-10-14T16:39:52.733Z: needs resequencing. Zone 3 and BOH is the next priority. / -ZG 10/14 / allucent_notes_20251021_145627: Zack Goertz on 2025-10-14T16:39:52.733Z: needs resequencing. Zone 3 and BOH is the next priority. / -ZG 10/14 / allucent_notes_20251027_224008: Zack Goertz on 2025-10-14T16:39:52.733Z: needs resequencing. Zone 3 and BOH is the next priority. / -ZG 10/14 / allucent_notes_20251028_163138: Zack Goertz on 2025-10-14T16:39:52.733Z: needs resequencing. Zone 3 and BOH is the next priority. / -ZG 10/14 / allucent_notes_20251104_160200: Zack Goertz on 2025-10-14T16:39:52.733Z: needs resequencing. Zone 3 and BOH is the next priority. / -ZG 10/14 / Jason Johnston on 2025-11-04 16:11: Update needed / allucent_notes_20251111_182405: Zack Goertz on 2025-10-14T16:39:52.733Z: needs resequencing. Zone 3 and BOH is the next priority. / -ZG 10/14 / Jason Johnston on 2025-11-04 16:11: Update needed / Jason Johnston on 2025-11-11 16:11: Not starting / allucent_notes_20251118_192630: Zack Goertz on 2025-10-14T16:39:52.733Z: needs resequencing. Zone 3 and BOH is the next priority. / -ZG 10/14 / Jason Johnston on 2025-11-04 16:11: Update needed / Jason Johnston on 2025-11-11 16:11: Not starting / allucent_notes_20251202_153722: Zack Goertz on 2025-10-14T16:39:52.733Z: needs resequencing. Zone 3 and BOH is the next priority. / -ZG 10/14 / Jason Johnston on 2025-11-04 16:11: Update needed / Jason Johnston on 2025-11-11 16:11: Not starting / Luis Vea on 2025-12-01 10:28: started 11/21 / allucent_notes_20251209_203830: Zack Goertz on 2025-10-14T16:39:52.733Z: needs resequencing. Zone 3 and BOH is the next priority. / -ZG 10/14 / Jason Johnston on 2025-11-04 16:11: Update needed / Jason Johnston on 2025-11-11 16:11: Not starting / Luis Vea on 2025-12-01 10:28: started 11/21 / allucent_notes_20251216_165335: Zack Goertz on 2025-10-14T16:39:52.733Z: needs resequencing. Zone 3 and BOH is the next priority. / -ZG 10/14 / Jason Johnston on 2025-11-04 16:11: Update needed / Jason Johnston on 2025-11-11 16:11: Not starting / Luis Vea on 2025-12-01 10:28: started 11/21 / allucent_notes: 2025-10-14T16:39:52.733Z - User: Zack Goertz - Date Added: 2025-10-14T16:39:52.733Z - Note: needs resequencing. Zone 3 and BOH is the next priority. -ZG 10/14 / 2025-11-04 16:11 - User: Jason Johnston - Date Added: 2025-11-04 16:11 - Note: Update needed
- QTS-10511: allucent_notes_20251230_164549: Jason Johnston on 2025-12-16 08:03: late start / David Wiltberger on 2025-12-30 16:21: no update / allucent_notes_20251216_165335: Jason Johnston on 2025-12-16 08:03: late start / allucent_notes: 2025-12-16 08:03 - User: Jason Johnston - Date Added: 2025-12-16 08:03 - Note: late start / 2025-12-30 16:21 - User: David Wiltberger - Date Added: 2025-12-30 16:21 - Note: no update
- QTS-1003430: allucent_notes_20251230_164549: Jason Johnston on 2025-12-16 08:03: late start / David Wiltberger on 2025-12-30 16:21: no update / allucent_notes_20251216_165335: Jason Johnston on 2025-12-16 08:03: late start / allucent_notes: 2025-12-16 08:03 - User: Jason Johnston - Date Added: 2025-12-16 08:03 - Note: late start / 2025-12-30 16:21 - User: David Wiltberger - Date Added: 2025-12-30 16:21 - Note: no update
- QTS-10501: allucent_notes_20251230_164549: David Wiltberger on 2025-10-07 16:10: No walls yet / David Wiltberger on 2025-10-14 12:10: no walls / Luis Vea on 2025-12-01 10:48: walls are not rough in, REI has manpwer in BOH AND FOH and zone 1 both floors / Jason Johnston on 2025-12-16 08:03: Waiting for BOH to be complete / allucent_notes_20251014_152335: David Wiltberger on 2025-10-07 16:10: No walls yet / David Wiltberger on 2025-10-14 12:10: no walls / allucent_notes_20251021_145627: David Wiltberger on 2025-10-07 16:10: No walls yet / David Wiltberger on 2025-10-14 12:10: no walls / allucent_notes_20251027_224008: David Wiltberger on 2025-10-07 16:10: No walls yet / David Wiltberger on 2025-10-14 12:10: no walls / allucent_notes_20251028_163138: David Wiltberger on 2025-10-07 16:10: No walls yet / David Wiltberger on 2025-10-14 12:10: no walls / allucent_notes_20251104_160200: David Wiltberger on 2025-10-07 16:10: No walls yet / David Wiltberger on 2025-10-14 12:10: no walls / allucent_notes_20251111_182405: David Wiltberger on 2025-10-07 16:10: No walls yet / David Wiltberger on 2025-10-14 12:10: no walls / allucent_notes_20251118_192630: David Wiltberger on 2025-10-07 16:10: No walls yet / David Wiltberger on 2025-10-14 12:10: no walls / allucent_notes_20251202_153722: David Wiltberger on 2025-10-07 16:10: No walls yet / David Wiltberger on 2025-10-14 12:10: no walls / Luis Vea on 2025-12-01 10:48: walls are not rough in, REI has manpwer in BOH AND FOH and zone 1 both floors / allucent_notes_20251209_203830: David Wiltberger on 2025-10-07 16:10: No walls yet / David Wiltberger on 2025-10-14 12:10: no walls / Luis Vea on 2025-12-01 10:48: walls are not rough in, REI has manpwer in BOH AND FOH and zone 1 both floors / allucent_notes_20251216_165335: David Wiltberger on 2025-10-07 16:10: No walls yet / David Wiltberger on 2025-10-14 12:10: no walls / Luis Vea on 2025-12-01 10:48: walls are not rough in, REI has manpwer in BOH AND FOH and zone 1 both floors / Jason Johnston on 2025-12-16 08:03: Waiting for BOH to be complete / allucent_notes: 2025-10-07 16:10 - User: David Wiltberger - Date Added: 2025-10-07 16:10 - Note: No walls yet / 2025-10-14 12:10 - User: David Wiltberger - Date Added: 2025-10-14 12:10 - Note: no walls / 2025-12-01 10:48 - User: Luis Vea - Date Added: 2025-12-01 10:48
- QTS-1003420: allucent_notes_20251230_164549: Jason Johnston on 2025-12-16 08:03: late start / David Wiltberger on 2025-12-30 16:21: no update / allucent_notes_20251216_165335: Jason Johnston on 2025-12-16 08:03: late start / allucent_notes: 2025-12-16 08:03 - User: Jason Johnston - Date Added: 2025-12-16 08:03 - Note: late start / 2025-12-30 16:21 - User: David Wiltberger - Date Added: 2025-12-30 16:21 - Note: no update
- QTS-1003440: allucent_notes_20251230_164549: Jason Johnston on 2025-12-16 08:03: late start / David Wiltberger on 2025-12-30 16:21: no update / allucent_notes_20251216_165335: Jason Johnston on 2025-12-16 08:03: late start / allucent_notes: 2025-12-16 08:03 - User: Jason Johnston - Date Added: 2025-12-16 08:03 - Note: late start / 2025-12-30 16:21 - User: David Wiltberger - Date Added: 2025-12-30 16:21 - Note: no update
- QTS-1003450: allucent_notes_20251230_164549: Jason Johnston on 2025-12-16 08:03: late start / David Wiltberger on 2025-12-30 16:21: no update / allucent_notes_20251216_165335: Jason Johnston on 2025-12-16 08:03: late start / allucent_notes: 2025-12-16 08:03 - User: Jason Johnston - Date Added: 2025-12-16 08:03 - Note: late start / 2025-12-30 16:21 - User: David Wiltberger - Date Added: 2025-12-30 16:21 - Note: no update
- QTS-15631: allucent_notes_20251230_164549: David Wiltberger on 2025-12-30 16:21: no update / allucent_notes: 2025-12-30 16:21 - User: David Wiltberger - Date Added: 2025-12-30 16:21 - Note: no update
- QTS-1003460: allucent_notes_20251230_164549: Jason Johnston on 2025-12-16 08:03: late start / David Wiltberger on 2025-12-30 16:21: no update / allucent_notes_20251216_165335: Jason Johnston on 2025-12-16 08:03: late start / allucent_notes: 2025-12-16 08:03 - User: Jason Johnston - Date Added: 2025-12-16 08:03 - Note: late start / 2025-12-30 16:21 - User: David Wiltberger - Date Added: 2025-12-30 16:21 - Note: no update
- QTS-1003470: allucent_notes_20251230_164549: Jason Johnston on 2025-12-16 08:03: late start / David Wiltberger on 2025-12-30 16:21: no update / allucent_notes_20251216_165335: Jason Johnston on 2025-12-16 08:03: late start / allucent_notes: 2025-12-16 08:03 - User: Jason Johnston - Date Added: 2025-12-16 08:03 - Note: late start / 2025-12-30 16:21 - User: David Wiltberger - Date Added: 2025-12-30 16:21 - Note: no update

| ID | WBS | Activity | Duration | Start | Finish | Predecessors | Complete | Planned start | Planned finish | Total float | Free float | Calendar | Subcontractor | Location | Project Section-1 | Phase-1-1 | Baseline | Layton Responsible Party | Project Section | Allucent CSI Group | Level | Notes |
| --- | --- | --- | --- | --- | --- | --- | --- | --- | --- | --- | --- | --- | --- | --- | --- | --- | --- | --- | --- | --- | --- | --- |
|  | 7 | **Gallery 1203 Mechanical** |  | 2025-10-30 | 2026-03-12 |  |  |  |  |  |  |  |  |  |  |  |  |  |  |  |  |  |
| QTS-14741 |  | DH 1200 / Mechanical Gallery 1203 // Install VESDA | 8d | 2025-10-30 A | 2025-11-10 A | QTS-14731 | 100% |  |  |  |  |  | Rosendin Electric, Inc | DH1200 | Construction | Phase 2 | IGMP | Scott Masterson | Construction | 01ADMIN |  |  |
| QTS-44601 |  | DH 1200 / Mechanical Gallery 1203 // Install OH Mechanical Hangers | 7d | 2025-11-13 A | 2025-12-02 A | QTS-44491 | 100% | 2025-11-06 | 2025-11-14 |  |  |  | Bel-Aire Mechanical, LLC | DH2100 | Construction |  | IGMP | Dave Wiltberger | Construction | 01ADMIN | Level 2 |  |
| QTS-10491 |  | DH 1200 / Mechanical Gallery 1203 // Frame for 1203 Exterior Wall | 5d | 2025-12-10 A | 2025-12-16 A | QTS-6921, QTS-4621, QTS-8611, QTS-8621 | 100% |  |  |  |  |  |  | DH1200 | Construction | Phase 2 | IGMP | Sean Waisner | Construction | 01ADMIN |  |  |
| QTS-14751 |  | DH 1200 / Mechanical Gallery 1203 // OH Mechanical Piping | 10d | 2025-12-15 A | 2026-01-21 A | QTS-44601, QTS-13821 | 100% | 2025-12-15 | 2025-12-26 |  |  | QTS-PHX3 DC1 - 6 day w/ Holidays | Bel-Aire Mechanical, LLC | DH1200 | Construction | Phase 2 | IGMP | Dave Wiltberger | Construction | 01ADMIN |  |  |
| QTS-11611 |  | DH 1200 / Mechanical Gallery 1203 // Frame Fan Wall | 5d | 2025-12-22 A | 2025-12-27 A | QTS-10491 | 100% |  |  |  |  | QTS-PHX3 DC1 - 6 day w/ Holidays | Performance Contracting, Inc. | DH1200 | Construction | Phase 2 | IGMP | Sean Waisner | Construction | 01ADMIN |  |  |
| QTS-1003500 |  | DH 1200 / Mechanical Gallery 1203 // Insulate 1203 Exterior Wall | 2d | 2026-01-14 | 2026-01-15 | QTS-10491 |  |  |  | 20d | 0d | QTS-PHX3 DC1 - 6 day w/ Holidays | Performance Contracting, Inc. | DH1200 | Construction | Phase 2 | IGMP | Sean Waisner | Construction | 01ADMIN |  | 1/20/26: Spray foam insulation incomplete. |
| QTS-12571 |  | DH 1200 / Mechanical Gallery 1203 // In Wall Electrical Rough for Fan Wall | 2d | 2026-01-14 | 2026-01-15 | QTS-11611 |  |  |  | 18d | 0d | QTS-PHX3 DC1 - 6 day w/ Holidays | Rosendin Electric, Inc | DH1200 | Construction | Phase 2 | IGMP | Scott Masterson | Construction | 01ADMIN |  |  |
| QTS-16551 |  | DH 1200 / Mechanical Gallery 1203 // Install OH Electrical & Grounding | 10d | 2026-01-14 | 2026-01-26 | QTS-14751 |  |  |  | 18d | 0d | QTS-PHX3 DC1 - 6 day w/ Holidays | Rosendin Electric, Inc | DH1200 | Construction | Phase 2 | IGMP | Scott Masterson | Construction | 01ADMIN |  |  |
| QTS-1003560 |  | DH 1200 / Mechanical Gallery 1203 // In Wall Electrical Rough In 1203 Exterior Wall | 2d | 2026-01-16 | 2026-01-17 | QTS-1003500 |  |  |  | 58d | 0d | QTS-PHX3 DC1 - 6 day w/ Holidays | Performance Contracting, Inc. | DH1200 | Construction | Phase 2 | IGMP | Sean Waisner | Construction | 01ADMIN |  |  |
| QTS-12241 |  | DH 1200 / Mechanical Gallery 1203 // Top Out for 1203 Exterior Wall | 3d | 2026-01-16 | 2026-01-20 | QTS-1003500, QTS-10491 |  |  |  | 20d | 0d | QTS-PHX3 DC1 - 6 day w/ Holidays | Performance Contracting, Inc. | DH1200 | Construction | Phase 2 | IGMP | Sean Waisner | Construction | 01ADMIN |  |  |
| QTS-12851 |  | DH 1200 / Mechanical Gallery 1203 // In Wall Inspection for Fan Wall | 1d | 2026-01-16 | 2026-01-16 | QTS-12571 |  |  |  | 18d | 0d | QTS-PHX3 DC1 - 6 day w/ Holidays | Rosendin Electric, Inc | DH1200 | Construction | Phase 2 | IGMP | Scott Masterson | Construction | 01ADMIN |  |  |
| QTS-13021 |  | DH 1200 / Mechanical Gallery 1203 // Hang, Tape, & Finish Fan Drywall | 5d | 2026-01-17 | 2026-01-23 | QTS-12851 |  |  |  | 18d | 0d | QTS-PHX3 DC1 - 6 day w/ Holidays | Performance Contracting, Inc. | DH1200 | Construction | Phase 2 | IGMP | Sean Waisner | Construction | 01ADMIN |  |  |
| QTS-1003570 |  | DH 1200 / Mechanical Gallery 1203 // In Wall Inspection 1203 Exterior Wall | 2d | 2026-01-20 | 2026-01-21 | QTS-1003560 |  |  |  | 58d | 0d | QTS-PHX3 DC1 - 6 day w/ Holidays | Performance Contracting, Inc. | DH1200 | Construction | Phase 2 | IGMP | Sean Waisner | Construction | 01ADMIN |  |  |
| QTS-1003510 |  | DH 1200 / Mechanical Gallery 1203 // Tape, & Finish Drywall for 1203 Exterior Wall - Top Out | 4d | 2026-01-21 | 2026-01-24 | QTS-12241 |  |  |  | 20d | 0d | QTS-PHX3 DC1 - 6 day w/ Holidays | Performance Contracting, Inc. | DH1200 | Construction | Phase 2 | IGMP | Sean Waisner | Construction | 01ADMIN |  |  |
| QTS-1003520 |  | DH 1200 / Mechanical Gallery 1203 // Hang Drywall for 1203 Exterior Wall - Remaining | 3d | 2026-01-22 | 2026-01-24 | QTS-1003570 |  |  |  | 58d | 0d | QTS-PHX3 DC1 - 6 day w/ Holidays | Performance Contracting, Inc. | DH1200 | Construction | Phase 2 | IGMP | Sean Waisner | Construction | 01ADMIN |  |  |
| QTS-13791 |  | DH 1200 / Mechanical Gallery 1203 // Paint Fan Walls | 5d | 2026-01-24 | 2026-01-29 | QTS-13021 |  |  |  | 18d | 0d | QTS-PHX3 DC1 - 6 day w/ Holidays | Pennington Painting Company, LLC | DH1200 | Construction | Phase 2 | IGMP | Sean Waisner | Construction |  |  |  |
| QTS-1003530 |  | DH 1200 / Mechanical Gallery 1203 // Tape, & Finish Drywall for 1203 Exterior Wall - Remaining | 4d | 2026-01-26 | 2026-01-29 | QTS-1003520 |  |  |  | 58d | 0d | QTS-PHX3 DC1 - 6 day w/ Holidays | Performance Contracting, Inc. | DH1200 | Construction | Phase 2 | IGMP | Sean Waisner | Construction | 01ADMIN |  |  |
| QTS-13781 |  | DH 1200 / Mechanical Gallery 1203 // Paint for 1203 Exterior Wall -Top Out | 2d | 2026-01-26 | 2026-01-27 | QTS-1003510, QTS-12241 |  |  |  | 20d | 0d | QTS-PHX3 DC1 - 6 day w/ Holidays | Pennington Painting Company, LLC | DH1200 | Construction | Phase 2 | IGMP | Sean Waisner | Construction | 01ADMIN |  |  |
| QTS-14761 |  | DH 1200 / Mechanical Gallery 1203 // Install Security Screen Above Fan Wall | 3d | 2026-01-27 | 2026-01-29 | QTS-11611, QTS-99680, QTS-14741, QTS-16551, QTS-1001250 |  |  |  | 18d | 0d | QTS-PHX3 DC1 - 6 day w/ Holidays | Performance Contracting, Inc. | DH1200 | Construction | Phase 2 | IGMP | Sean Waisner | Construction | 01ADMIN |  |  |
| QTS-14241 |  | DH 1200 / Mechanical Gallery 1203 // Top of Wall Fire Stop for 1203 Exterior Wall | 2d | 2026-01-28 | 2026-01-29 | QTS-13781 |  |  |  | 65d | 0d | QTS-PHX3 DC1 - 6 day w/ Holidays | Alpha Insulation & Waterproofing, Inc. | DH1200 | Construction | Phase 2 | IGMP | Sean Waisner | Construction |  |  |  |
| QTS-1003540 |  | DH 1200 / Mechanical Gallery 1203 // Paint for 1203 Exterior Wall - Remaining | 2d | 2026-01-30 | 2026-01-31 | QTS-1003530, QTS-1003520 |  |  |  | 58d | 0d | QTS-PHX3 DC1 - 6 day w/ Holidays | Pennington Painting Company, LLC | DH1200 | Construction | Phase 2 | IGMP | Sean Waisner | Construction | 01ADMIN |  |  |
| QTS-15301 |  | DH 1200 / Mechanical Gallery 1203 // OFCI - L2 SET IN PLACE - Eq Type # - CRAH - 14 units | 6d | 2026-01-30 | 2026-02-05 | QTS-13781, QTS-14761, QTS-35111, QTS-35121, QTS-35131, QTS-35141, QTS-35151, QTS-35161, QTS-35171, QTS-35181, QTS-35191, QTS-35201, QTS-35211, QTS-35221, QTS-35231, QTS-35241, QTS-14751, QTS-13791, QTS-14251 |  |  |  | 18d | 0d | QTS-PHX3 DC1 - 6 day w/ Holidays | Bel-Aire Mechanical, LLC | DH1200 | Construction | Phase 2 | IGMP | Dave Wiltberger | Construction |  |  |  |
| QTS-1003550 |  | DH 1200 / Mechanical Gallery 1203 // Install Wall Base | 3d | 2026-02-02 | 2026-02-04 | QTS-1003540 |  |  |  | 58d | 1d | QTS-PHX3 DC1 - 6 day w/ Holidays | Performance Contracting, Inc. | DH1200 | Construction | Phase 2 | IGMP | Sean Waisner | Construction | 01ADMIN |  |  |
| QTS-16331 |  | DH 1200 / Mechanical Gallery 1203 // CRAH Unit Mechanical Connections | 10d | 2026-02-06 | 2026-02-17 | QTS-15301 |  |  |  | 18d | 0d | QTS-PHX3 DC1 - 6 day w/ Holidays | Bel-Aire Mechanical, LLC | DH1200 | Construction | Phase 2 | IGMP | Dave Wiltberger | Construction |  |  |  |
| QTS-16341 |  | DH 1200 / Mechanical Gallery 1203 // Install Angle Seal Around Units | 2d | 2026-02-06 | 2026-02-07 | QTS-1003550, QTS-15301 |  |  |  | 57d | 18d | QTS-PHX3 DC1 - 6 day w/ Holidays | Performance Contracting, Inc. | DH1200 | Construction | Phase 2 | IGMP | Sean Waisner | Construction |  |  |  |
| QTS-16541 |  | DH 1200 / Mechanical Gallery 1203 // Install Electrical Tray | 5d | 2026-02-18 | 2026-02-23 | QTS-13781, QTS-14751, QTS-16331 |  |  |  | 18d | 0d | QTS-PHX3 DC1 - 6 day w/ Holidays | Rosendin Electric, Inc | DH1200 | Construction | Phase 2 | IGMP | Scott Masterson | Construction |  |  |  |
| QTS-17151 |  | DH 1200 / Mechanical Gallery 1203 // Install Basket Tray for LV | 5d | 2026-02-24 | 2026-02-28 | QTS-16541 |  |  |  | 18d | 0d | QTS-PHX3 DC1 - 6 day w/ Holidays | Rosendin Electric, Inc | DH1200 | Construction | Phase 2 | IGMP | Scott Masterson | Construction |  |  |  |
| QTS-17981 |  | DH 1200 / Mechanical Gallery 1203 // Install BMS & EPMS Cable and Terminations | 10d | 2026-03-02 | 2026-03-12 | QTS-17151 |  |  |  | 18d | 2d | QTS-PHX3 DC1 - 6 day w/ Holidays | Rosendin Electric, Inc | DH1200 | Construction | Phase 2 | IGMP | Scott Masterson | Construction |  |  |  |

Notes:
- QTS-10491: allucent_notes_20251021_145627: Luis Vea on 2025-10-21T15:13:02.973Z: manpower got pushed back to zone 1 fan wall, will be pulling man ack to this area / allucent_notes_20251027_224008: Luis Vea on 2025-10-21T15:13:02.973Z: manpower got pushed back to zone 1 fan wall, will be pulling man ack to this area / allucent_notes_20251028_163138: Luis Vea on 2025-10-21T15:13:02.973Z: manpower got pushed back to zone 1 fan wall, will be pulling man ack to this area / allucent_notes_20251104_160200: Luis Vea on 2025-10-21T15:13:02.973Z: manpower got pushed back to zone 1 fan wall, will be pulling man ack to this area / allucent_notes_20251111_182405: Luis Vea on 2025-10-21T15:13:02.973Z: manpower got pushed back to zone 1 fan wall, will be pulling man ack to this area / allucent_notes_20251118_192630: Luis Vea on 2025-10-21T15:13:02.973Z: manpower got pushed back to zone 1 fan wall, will be pulling man ack to this area / allucent_notes_20251202_153722: Luis Vea on 2025-10-21T15:13:02.973Z: manpower got pushed back to zone 1 fan wall, will be pulling man ack to this area / Luis Vea on 2025-12-01 10:49: starting 12/04 / allucent_notes_20251209_203830: Luis Vea on 2025-10-21T15:13:02.973Z: manpower got pushed back to zone 1 fan wall, will be pulling man ack to this area / Luis Vea on 2025-12-01 10:49: starting 12/04 / Jason Johnston on 2025-12-09 18:26: Need update from team / allucent_notes_20251216_165335: Luis Vea on 2025-10-21T15:13:02.973Z: manpower got pushed back to zone 1 fan wall, will be pulling man ack to this area / Luis Vea on 2025-12-01 10:49: starting 12/04 / Jason Johnston on 2025-12-09 18:26: Need update from team / allucent_notes: 2025-10-21T15:13:02.973Z - User: Luis Vea - Date Added: 2025-10-21T15:13:02.973Z - Note: manpower got pushed back to zone 1 fan wall, will be pulling man ack to this area / 2025-12-01 10:49 - User: Luis Vea - Date Added: 2025-12-01 10:49 - Note: startin
- QTS-1003500: allucent_notes_20251230_164549: David Wiltberger on 2025-12-30 16:21: no update / allucent_notes: 2025-12-30 16:21 - User: David Wiltberger - Date Added: 2025-12-30 16:21 - Note: no update
- QTS-1003560: allucent_notes_20251230_164549: David Wiltberger on 2025-12-30 16:21: no update / allucent_notes: 2025-12-30 16:21 - User: David Wiltberger - Date Added: 2025-12-30 16:21 - Note: no update
- QTS-12241: allucent_notes_20251230_164549: David Wiltberger on 2025-12-30 16:21: no update / allucent_notes: 2025-12-30 16:21 - User: David Wiltberger - Date Added: 2025-12-30 16:21 - Note: no update
- QTS-1003570: allucent_notes_20251230_164549: David Wiltberger on 2025-12-30 16:21: no update / allucent_notes: 2025-12-30 16:21 - User: David Wiltberger - Date Added: 2025-12-30 16:21 - Note: no update
- QTS-1003510: allucent_notes_20251230_164549: David Wiltberger on 2025-12-30 16:21: no update / allucent_notes: 2025-12-30 16:21 - User: David Wiltberger - Date Added: 2025-12-30 16:21 - Note: no update
- QTS-1003520: allucent_notes_20251230_164549: David Wiltberger on 2025-12-30 16:21: no update / allucent_notes: 2025-12-30 16:21 - User: David Wiltberger - Date Added: 2025-12-30 16:21 - Note: no update
- QTS-1003530: allucent_notes_20251230_164549: David Wiltberger on 2025-12-30 16:21: no update / allucent_notes: 2025-12-30 16:21 - User: David Wiltberger - Date Added: 2025-12-30 16:21 - Note: no update

| ID | WBS | Activity | Duration | Start | Finish | Predecessors | Complete | Remaining | Planned start | Planned finish | Total float | Free float | Calendar | Subcontractor | Location | Project Section-1 | Phase-1-1 | Baseline | Layton Responsible Party | Project Section | Allucent CSI Group |
| --- | --- | --- | --- | --- | --- | --- | --- | --- | --- | --- | --- | --- | --- | --- | --- | --- | --- | --- | --- | --- | --- |
|  | 1 | **Gallery 1202 Electrical** |  | 2025-10-20 | 2026-03-09 |  |  |  |  |  |  |  |  |  |  |  |  |  |  |  |  |
| QTS-14731 |  | DH 1200 / Electrical Gallery 1202 // Install VESDA | 8d | 2025-10-20 A | 2025-10-29 A | QTS-13811 | 100% |  |  |  |  |  |  | Rosendin Electric, Inc | DH1200 | Construction | Phase 2 | IGMP | Scott Masterson | Construction | 01ADMIN |
| QTS-46681 |  | DH 1200 / Electrical Gallery 1202 // Install OH Electrical, FA/ EPMS/BMS Conduit & Grounding | 10d | 2025-10-30 A | 2026-01-27 | QTS-1003490 FF+7d, QTS-13031 FF+7d, QTS-14731 | 100% | 0d | 2025-10-30 | 2025-11-10 | 37d | 2d | QTS-PHX3 DC1 - 6 day w/ Holidays | Rosendin Electric, Inc | DH1200 | Construction | Phase 2 | IGMP | Scott Masterson | Construction | 01ADMIN |
| QTS-14231 |  | DH 1200 / Electrical Gallery 1202 // Install Electrical Tray | 5d | 2026-01-29 | 2026-02-03 | QTS-46681, QTS-2901 |  |  |  |  | 35d | 0d | QTS-PHX3 DC1 - 6 day w/ Holidays | Rosendin Electric, Inc | DH1200 | Construction | Phase 2 | IGMP | Scott Masterson | Construction |  |
| QTS-15291 |  | DH 1200 / Electrical Gallery 1202 // Install Basket Tray for LV | 5d | 2026-02-04 | 2026-02-09 | QTS-14231 |  |  |  |  | 35d | 0d | QTS-PHX3 DC1 - 6 day w/ Holidays | Rosendin Electric, Inc | DH1200 | Construction | Phase 2 | IGMP | Scott Masterson | Construction |  |
| QTS-16851 |  | DH 1200 / Electrical Gallery 1202 // Set House Panels | 2d | 2026-02-06 | 2026-02-07 | QTS-14971, QTS-15761, QTS-13031 |  |  |  |  | 35d | 0d | QTS-PHX3 DC1 - 6 day w/ Holidays | Rosendin Electric, Inc | DH1200 | Construction | Phase 2 | IGMP | Scott Masterson | Construction |  |
| QTS-17751 |  | DH 1200 / Electrical Gallery 1202 // Install Conduit from UPS Pod to Chillers R-C | 6d | 2026-02-06 | 2026-02-12 | QTS-43601, QTS-1891, QTS-22471 |  |  |  |  | 6d | 0d | QTS-PHX3 DC1 - 6 day w/ Holidays | Rosendin Electric, Inc | DH1200 | Construction | Phase 2 | IGMP | Scott Masterson | Construction |  |
| QTS-18301 |  | DH 1200 / Electrical Gallery 1202 // Pull LV Cables Branch Circuits | 5d | 2026-02-09 | 2026-02-13 | QTS-16851 |  |  |  |  | 35d | 0d | QTS-PHX3 DC1 - 6 day w/ Holidays | Rosendin Electric, Inc | DH1200 | Construction | Phase 2 | IGMP | Scott Masterson | Construction |  |
| QTS-18671 |  | DH 1200 / Electrical Gallery 1202 // Install Conduit from UPS Pod to Pumps R-C | 6d | 2026-02-09 | 2026-02-14 | QTS-3431 FF, QTS-17751 SS+2d |  |  |  |  | 6d | 0d | QTS-PHX3 DC1 - 6 day w/ Holidays | Rosendin Electric, Inc | DH1200 | Construction | Phase 2 | IGMP | Scott Masterson | Construction |  |
| QTS-16091 |  | DH 1200 / Electrical Gallery 1202 // Install BMS & EPMS Cable and Terminations | 10d | 2026-02-10 | 2026-02-20 | QTS-15291 |  |  |  |  | 35d | 19d | QTS-PHX3 DC1 - 6 day w/ Holidays | Rosendin Electric, Inc | DH1200 | Construction | Phase 2 | IGMP | Scott Masterson | Construction |  |
| QTS-18661 |  | DH 1200 / Electrical Gallery 1202 // Pull & Terminate from UPS Pod to Chillers R-C | 3d | 2026-02-13 | 2026-02-16 | QTS-17751, QTS-13561 |  |  |  |  | 11d | 0d | QTS-PHX3 DC1 - 6 day w/ Holidays | Rosendin Electric, Inc | DH1200 | Construction | Phase 2 | IGMP | Scott Masterson | Construction |  |
| QTS-43781 |  | DH 1200 / Electrical Gallery 1202 // Install Conduit from UPS Pod to Chillers Lineup D-F | 6d | 2026-02-13 | 2026-02-19 | QTS-17751 |  |  |  |  | 6d | 0d | QTS-PHX3 DC1 - 6 day w/ Holidays | Rosendin Electric, Inc | DH1200 | Construction | Phase 2 | IGMP | Scott Masterson | Construction |  |
| QTS-18531 |  | DH 1200 / Electrical Gallery 1202 // Terminate Panels | 6d | 2026-02-14 | 2026-02-20 | QTS-18301 |  |  |  |  | 35d | 19d | QTS-PHX3 DC1 - 6 day w/ Holidays | Rosendin Electric, Inc | DH1200 | Construction | Phase 2 | IGMP | Scott Masterson | Construction |  |
| QTS-18971 |  | DH 1200 / Electrical Gallery 1202 // Pull & Terminate from UPS Pod to Pumps R-C | 3d | 2026-02-16 | 2026-02-18 | QTS-18671, QTS-13561, QTS-18661 FF |  |  |  |  | 9d | 0d | QTS-PHX3 DC1 - 6 day w/ Holidays | Rosendin Electric, Inc | DH1200 | Construction | Phase 2 | IGMP | Scott Masterson | Construction |  |
| QTS-43791 |  | DH 1200 / Electrical Gallery 1202 // Install Conduit from UPS Pod to Pumps Lineup D-F | 6d | 2026-02-16 | 2026-02-21 | QTS-43781 SS+2d, QTS-18671 |  |  |  |  | 6d | 0d | QTS-PHX3 DC1 - 6 day w/ Holidays | Rosendin Electric, Inc | DH1200 | Construction | Phase 2 | IGMP | Scott Masterson | Construction |  |
| QTS-43801 |  | DH 1200 / Electrical Gallery 1202 // Pull & Terminate from UPS Pod to Chillers Lineup D-F | 3d | 2026-02-20 | 2026-02-23 | QTS-43781, QTS-18661 |  |  |  |  | 8d | 0d | QTS-PHX3 DC1 - 6 day w/ Holidays | Rosendin Electric, Inc | DH1200 | Construction | Phase 2 | IGMP | Scott Masterson | Construction |  |
| QTS-43811 |  | DH 1200 / Electrical Gallery 1202 // Pull & Terminate from UPS Pod to Pumps Lineup D-F | 3d | 2026-02-23 | 2026-02-25 | QTS-43791, QTS-18971, QTS-43801 FF |  |  |  |  | 6d | 0d | QTS-PHX3 DC1 - 6 day w/ Holidays | Rosendin Electric, Inc | DH1200 | Construction | Phase 2 | IGMP | Scott Masterson | Construction |  |
|  | 1 | **Electrical** |  | 2026-01-17 | 2026-03-09 |  |  |  |  |  |  |  |  |  |  |  |  |  |  |  |  |
|  | 7 | **DH 1200 IDF Cabinets** |  | 2026-01-30 | 2026-02-03 |  |  |  |  |  |  |  |  |  |  |  |  |  |  |  |  |
| QTS-38601 |  | DH 1200 / Electrical Gallery 1202/1201 // Install Fire Rated Plywood | 1d | 2026-01-30 | 2026-01-30 | QTS-13401, QTS-14241 |  |  |  |  | 65d | 0d | QTS-PHX3 DC1 - 6 day w/ Holidays | Performance Contracting, Inc. | DH1200 | Construction | Phase 2 | GMP | Sean Waisner | Construction |  |
| QTS-38611 |  | DH 1200 / Electrical Gallery 1202/1201 // Set IDF Cabinet | 1d | 2026-01-31 | 2026-01-31 | QTS-38601 |  |  |  |  | 65d | 0d | QTS-PHX3 DC1 - 6 day w/ Holidays | Rosendin Electric, Inc | DH1200 | Construction | Phase 2 | GMP | Scott Masterson | Construction |  |
| QTS-38621 |  | DH 1200 / Electrical Gallery 1202/1201 // Set IDF Conduit | 2d | 2026-02-02 | 2026-02-03 | QTS-38611 |  |  |  |  | 65d | 0d | QTS-PHX3 DC1 - 6 day w/ Holidays | Rosendin Electric, Inc | DH1200 | Construction | Phase 2 | GMP | Scott Masterson | Construction |  |
|  | 1 | **A1200 Lineup** |  | 2026-01-17 | 2026-02-26 |  |  |  |  |  |  |  |  |  |  |  |  |  |  |  |  |
| QTS-15761 |  | Gallery 1202 / Lineup A1200 // OFCI - L2 SET IN PLACE - Eq Type # - COD/ATS-210-A - Skid 1-3 | 2d | 2026-01-17 | 2026-01-20 | QTS-33471, QTS-13031 |  |  |  |  | 47d | 0d | QTS-PHX3 DC1 - 6 day w/ Holidays | Rosendin Electric, Inc | DH1200 | Construction | Phase 2 | IGMP | Scott Masterson | Construction | 01ADMIN |
| QTS-45901 |  | Gallery 1202 / Lineup A1200 // OFCI - L2 SET IN PLACE - Eq Type # - COD/ATS-210-A - Skid 4-6 | 2d | 2026-01-21 | 2026-01-22 | QTS-15761 |  |  |  |  | 47d | 0d | QTS-PHX3 DC1 - 6 day w/ Holidays | Rosendin Electric, Inc | DH1200 | Construction | Phase 2 | IGMP | Scott Masterson | Construction |  |
| QTS-14211 |  | Gallery 1202 / Lineup A1200 // Install Hangers & Supports | 3d | 2026-01-23 | 2026-01-26 | QTS-13031, QTS-13401, QTS-1961 |  |  |  |  | 37d | 0d | QTS-PHX3 DC1 - 6 day w/ Holidays | Rosendin Electric, Inc | DH1200 | Construction | Phase 2 | IGMP | Scott Masterson | Construction | 01ADMIN |
| QTS-14971 |  | Gallery 1202 / Lineup A1200 // Install Raceways from LV POD to COD | 7d | 2026-01-29 | 2026-02-05 | QTS-14211, QTS-2901 |  |  |  |  | 35d | 0d | QTS-PHX3 DC1 - 6 day w/ Holidays | Rosendin Electric, Inc | DH1200 | Construction | Phase 2 | IGMP | Scott Masterson | Construction |  |
| QTS-16321 |  | Gallery 1202 / Lineup A1200 // Set Reserve Busway Segment | 2d | 2026-02-06 | 2026-02-07 | QTS-14971, QTS-15761, QTS-50041 |  |  |  |  | 45d | 0d | QTS-PHX3 DC1 - 6 day w/ Holidays | Rosendin Electric, Inc | DH1200 | Construction | Phase 2 | IGMP | Scott Masterson | Construction |  |
| QTS-16861 |  | Gallery 1202 / Lineup A1200 // Pull LV Cables from POD to ATS | 4d | 2026-02-06 | 2026-02-10 | QTS-15761, QTS-14971, QTS-13561, QTS-45901 FF+1d |  |  |  |  | 45d | 0d | QTS-PHX3 DC1 - 6 day w/ Holidays | Rosendin Electric, Inc | DH1200 | Construction | Phase 2 | IGMP | Scott Masterson | Construction |  |
| QTS-17771 |  | Gallery 1202 / Lineup A1200 // Pull LV Cables from Reserve Bus to ATS | 2d | 2026-02-09 | 2026-02-10 | QTS-14971, QTS-16321, QTS-15761 |  |  |  |  | 45d | 0d | QTS-PHX3 DC1 - 6 day w/ Holidays | Rosendin Electric, Inc | DH1200 | Construction | Phase 2 | IGMP | Scott Masterson | Construction |  |
| QTS-18151 |  | Gallery 1202 / Lineup A1200 // Terminate & Torque ATS | 7d | 2026-02-11 | 2026-02-18 | QTS-17771, QTS-16861 |  |  |  |  | 45d | 0d | QTS-PHX3 DC1 - 6 day w/ Holidays | Rosendin Electric, Inc | DH1200 | Construction | Phase 2 | IGMP | Scott Masterson | Construction |  |
| QTS-18161 |  | Gallery 1202 / Lineup A1200 // Terminate & Torque COD | 7d | 2026-02-19 | 2026-02-26 | QTS-16861, QTS-18151 |  |  |  |  | 45d | 0d | QTS-PHX3 DC1 - 6 day w/ Holidays | Rosendin Electric, Inc | DH1200 | Construction | Phase 2 | IGMP | Scott Masterson | Construction |  |

Notes:
- QTS-46681: allucent_notes_20251230_164549: Jason Johnston on 2025-11-19T02:25:15.062Z: undo / David Wiltberger on 2025-12-02 14:02: impacted by stop work / allucent_notes_20251118_192630: Jason Johnston on 2025-11-19T02:25:15.062Z: undo / allucent_notes_20251202_153722: Jason Johnston on 2025-11-19T02:25:15.062Z: undo / David Wiltberger on 2025-12-02 14:02: impacted by stop work / allucent_notes_20251209_203830: Jason Johnston on 2025-11-19T02:25:15.062Z: undo / David Wiltberger on 2025-12-02 14:02: impacted by stop work / allucent_notes_20251216_165335: Jason Johnston on 2025-11-19T02:25:15.062Z: undo / David Wiltberger on 2025-12-02 14:02: impacted by stop work / allucent_notes: 2025-11-19T02:25:15.062Z - User: Jason Johnston - Date Added: 2025-11-19T02:25:15.062Z - Note: undo / 2025-12-02 14:02 - User: David Wiltberger - Date Added: 2025-12-02 14:02 - Note: impacted by stop work

| ID | WBS | Activity | Duration | Start | Finish | Predecessors | Total float | Free float | Calendar | Subcontractor | Location | Project Section-1 | Phase-1-1 | Baseline | Layton Responsible Party | Project Section |
| --- | --- | --- | --- | --- | --- | --- | --- | --- | --- | --- | --- | --- | --- | --- | --- | --- |
|  | 2 | **B1200 Lineup** |  | 2026-01-23 | 2026-02-26 |  |  |  |  |  |  |  |  |  |  |  |
| QTS-1971 |  | Gallery 1202 / Lineup B1200 // Install Hangers & Supports | 3d | 2026-01-23 | 2026-01-26 | QTS-14211 SS | 37d | 0d | QTS-PHX3 DC1 - 6 day w/ Holidays | Rosendin Electric, Inc | DH1200 | Construction | Phase 2 | IGMP | Scott Masterson | Construction |
| QTS-4101 |  | Gallery 1202 / Lineup B1200 // OFCI - L2 SET IN PLACE - Eq Type # - COD/ATS-210-A - Skid 1-3 | 2d | 2026-01-23 | 2026-01-24 | QTS-33511, QTS-45901 | 47d | 0d | QTS-PHX3 DC1 - 6 day w/ Holidays | Rosendin Electric, Inc | DH1200 | Construction | Phase 2 | IGMP | Scott Masterson | Construction |
| QTS-45911 |  | Gallery 1202 / Lineup B1200 // OFCI - L2 SET IN PLACE - Eq Type # - COD/ATS-210-A - Skid 4-6 | 2d | 2026-01-26 | 2026-01-27 | QTS-4101 | 47d | 0d | QTS-PHX3 DC1 - 6 day w/ Holidays | Rosendin Electric, Inc | DH1200 | Construction | Phase 2 | IGMP | Scott Masterson | Construction |
| QTS-2911 |  | Gallery 1202 / Lineup B1200 // Install Raceways from LV POD to COD | 7d | 2026-01-29 | 2026-02-05 | QTS-1971, QTS-14971 SS | 35d | 0d | QTS-PHX3 DC1 - 6 day w/ Holidays | Rosendin Electric, Inc | DH1200 | Construction | Phase 2 | IGMP | Scott Masterson | Construction |
| QTS-5151 |  | Gallery 1202 / Lineup B1200 // Set Reserve Busway Segment | 2d | 2026-02-06 | 2026-02-07 | QTS-4101, QTS-2911, QTS-50041 | 45d | 0d | QTS-PHX3 DC1 - 6 day w/ Holidays | Rosendin Electric, Inc | DH1200 | Construction | Phase 2 | IGMP | Scott Masterson | Construction |
| QTS-6521 |  | Gallery 1202 / Lineup B1200 // Pull LV Cables from POD to ATS | 4d | 2026-02-06 | 2026-02-10 | QTS-4101, QTS-2911, QTS-13561, QTS-45911 FF+1d | 45d | 0d | QTS-PHX3 DC1 - 6 day w/ Holidays | Rosendin Electric, Inc | DH1200 | Construction | Phase 2 | IGMP | Scott Masterson | Construction |
| QTS-8231 |  | Gallery 1202 / Lineup B1200 // Pull LV Cables from Reserve Bus to ATS | 2d | 2026-02-09 | 2026-02-10 | QTS-2911, QTS-5151, QTS-4101 | 45d | 0d | QTS-PHX3 DC1 - 6 day w/ Holidays | Rosendin Electric, Inc | DH1200 | Construction | Phase 2 | IGMP | Scott Masterson | Construction |
| QTS-9231 |  | Gallery 1202 / Lineup B1200 // Terminate & Torque ATS | 7d | 2026-02-11 | 2026-02-18 | QTS-8231, QTS-6521 | 45d | 0d | QTS-PHX3 DC1 - 6 day w/ Holidays | Rosendin Electric, Inc | DH1200 | Construction | Phase 2 | IGMP | Scott Masterson | Construction |
| QTS-9241 |  | Gallery 1202 / Lineup B1200 // Terminate & Torque COD | 7d | 2026-02-19 | 2026-02-26 | QTS-6521, QTS-9231 | 45d | 0d | QTS-PHX3 DC1 - 6 day w/ Holidays | Rosendin Electric, Inc | DH1200 | Construction | Phase 2 | IGMP | Scott Masterson | Construction |
|  | 3 | **C1200 Lineup** |  | 2026-01-27 | 2026-03-06 |  |  |  |  |  |  |  |  |  |  |  |
| QTS-1981 |  | Gallery 1202 / Lineup C1200 // Install Hangers & Supports | 3d | 2026-01-27 | 2026-01-29 | QTS-1971 | 41d | 0d | QTS-PHX3 DC1 - 6 day w/ Holidays | Rosendin Electric, Inc | DH1200 | Construction | Phase 2 | IGMP | Scott Masterson | Construction |
| QTS-4111 |  | Gallery 1202 / Lineup C1200 // OFCI - L2 SET IN PLACE - Eq Type # - COD/ATS-210-A - Skid 1-3 | 2d | 2026-01-28 | 2026-01-29 | QTS-33551, QTS-45911 | 47d | 0d | QTS-PHX3 DC1 - 6 day w/ Holidays | Rosendin Electric, Inc | DH1200 | Construction | Phase 2 | IGMP | Scott Masterson | Construction |
| QTS-45921 |  | Gallery 1202 / Lineup C1200 // OFCI - L2 SET IN PLACE - Eq Type # - COD/ATS-210-A - Skid 4-6 | 2d | 2026-01-30 | 2026-01-31 | QTS-4111 | 47d | 0d | QTS-PHX3 DC1 - 6 day w/ Holidays | Rosendin Electric, Inc | DH1200 | Construction | Phase 2 | IGMP | Scott Masterson | Construction |
| QTS-2921 |  | Gallery 1202 / Lineup C1200 // Install Raceways from LV POD to COD | 7d | 2026-02-06 | 2026-02-13 | QTS-1981, QTS-2911 | 35d | 0d | QTS-PHX3 DC1 - 6 day w/ Holidays | Rosendin Electric, Inc | DH1200 | Construction | Phase 2 | IGMP | Scott Masterson | Construction |
| QTS-5171 |  | Gallery 1202 / Lineup C1200 // Set Reserve Busway Segment | 2d | 2026-02-14 | 2026-02-16 | QTS-4111, QTS-2921, QTS-50041 | 40d | 2d | QTS-PHX3 DC1 - 6 day w/ Holidays | Rosendin Electric, Inc | DH1200 | Construction | Phase 2 | IGMP | Scott Masterson | Construction |
| QTS-6531 |  | Gallery 1202 / Lineup C1200 // Pull LV Cables from POD to ATS | 4d | 2026-02-14 | 2026-02-18 | QTS-4111, QTS-2921, QTS-13561, QTS-45921 FF+1d | 38d | 0d | QTS-PHX3 DC1 - 6 day w/ Holidays | Rosendin Electric, Inc | DH1200 | Construction | Phase 2 | IGMP | Scott Masterson | Construction |
| QTS-8251 |  | Gallery 1202 / Lineup C1200 // Pull LV Cables from Reserve Bus to ATS | 2d | 2026-02-19 | 2026-02-20 | QTS-2921, QTS-6531, QTS-5171, QTS-4111 | 38d | 0d | QTS-PHX3 DC1 - 6 day w/ Holidays | Rosendin Electric, Inc | DH1200 | Construction | Phase 2 | IGMP | Scott Masterson | Construction |
| QTS-9261 |  | Gallery 1202 / Lineup C1200 // Terminate & Torque ATS | 7d | 2026-02-21 | 2026-02-28 | QTS-8251, QTS-6531 | 38d | 0d | QTS-PHX3 DC1 - 6 day w/ Holidays | Rosendin Electric, Inc | DH1200 | Construction | Phase 2 | IGMP | Scott Masterson | Construction |
| QTS-9271 |  | Gallery 1202 / Lineup C1200 // Terminate & Torque COD | 7d | 2026-02-27 | 2026-03-06 | QTS-6531, QTS-9261 FF+5d | 38d | 1d | QTS-PHX3 DC1 - 6 day w/ Holidays | Rosendin Electric, Inc | DH1200 | Construction | Phase 2 | IGMP | Scott Masterson | Construction |
|  | 4 | **D1200 Lineup** |  | 2026-01-27 | 2026-03-06 |  |  |  |  |  |  |  |  |  |  |  |
| QTS-1991 |  | Gallery 1202 / Lineup D1200 // Install Hangers & Supports | 3d | 2026-01-27 | 2026-01-29 | QTS-1981 SS | 41d | 0d | QTS-PHX3 DC1 - 6 day w/ Holidays | Rosendin Electric, Inc | DH1200 | Construction | Phase 2 | IGMP | Scott Masterson | Construction |
| QTS-4121 |  | Gallery 1202 / Lineup D1200 // OFCI - L2 SET IN PLACE - Eq Type # - COD/ATS-210-A - Skid 1-3 | 2d | 2026-02-02 | 2026-02-03 | QTS-33591, QTS-45921 | 47d | 0d | QTS-PHX3 DC1 - 6 day w/ Holidays | Rosendin Electric, Inc | DH1200 | Construction | Phase 2 | IGMP | Scott Masterson | Construction |
| QTS-45931 |  | Gallery 1202 / Lineup D1200 // OFCI - L2 SET IN PLACE - Eq Type # - COD/ATS-210-A - Skid 4-6 | 2d | 2026-02-04 | 2026-02-05 | QTS-4121 | 48d | 0d | QTS-PHX3 DC1 - 6 day w/ Holidays | Rosendin Electric, Inc | DH1200 | Construction | Phase 2 | IGMP | Scott Masterson | Construction |
| QTS-2931 |  | Gallery 1202 / Lineup D1200 // Install Raceways from LV POD to COD | 7d | 2026-02-06 | 2026-02-13 | QTS-1991, QTS-2921 SS | 35d | 0d | QTS-PHX3 DC1 - 6 day w/ Holidays | Rosendin Electric, Inc | DH1200 | Construction | Phase 2 | IGMP | Scott Masterson | Construction |
| QTS-5191 |  | Gallery 1202 / Lineup D1200 // Set Reserve Busway Segment | 2d | 2026-02-14 | 2026-02-16 | QTS-4121, QTS-2931, QTS-50041 | 40d | 2d | QTS-PHX3 DC1 - 6 day w/ Holidays | Rosendin Electric, Inc | DH1200 | Construction | Phase 2 | IGMP | Scott Masterson | Construction |
| QTS-6541 |  | Gallery 1202 / Lineup D1200 // Pull LV Cables from POD to ATS | 4d | 2026-02-14 | 2026-02-18 | QTS-4121, QTS-2931, QTS-13561, QTS-45931 FF+1d | 38d | 0d | QTS-PHX3 DC1 - 6 day w/ Holidays | Rosendin Electric, Inc | DH1200 | Construction | Phase 2 | IGMP | Scott Masterson | Construction |
| QTS-8271 |  | Gallery 1202 / Lineup D1200 // Pull LV Cables from Reserve Bus to ATS | 2d | 2026-02-19 | 2026-02-20 | QTS-2931, QTS-6541, QTS-5191, QTS-4121 | 38d | 0d | QTS-PHX3 DC1 - 6 day w/ Holidays | Rosendin Electric, Inc | DH1200 | Construction | Phase 2 | IGMP | Scott Masterson | Construction |
| QTS-9291 |  | Gallery 1202 / Lineup D1200 // Terminate & Torque ATS | 7d | 2026-02-21 | 2026-02-28 | QTS-8271, QTS-6541 | 38d | 0d | QTS-PHX3 DC1 - 6 day w/ Holidays | Rosendin Electric, Inc | DH1200 | Construction | Phase 2 | IGMP | Scott Masterson | Construction |
| QTS-9301 |  | Gallery 1202 / Lineup D1200 // Terminate & Torque COD | 7d | 2026-02-27 | 2026-03-06 | QTS-6541, QTS-9291 FF+5d | 38d | 1d | QTS-PHX3 DC1 - 6 day w/ Holidays | Rosendin Electric, Inc | DH1200 | Construction | Phase 2 | IGMP | Scott Masterson | Construction |

| ID | WBS | Activity | Duration | Start | Finish | Predecessors | Total float | Free float | Calendar | Subcontractor | Location | Project Section-1 | Phase-1-1 | Baseline | Layton Responsible Party | Project Section | Allucent CSI Group |
| --- | --- | --- | --- | --- | --- | --- | --- | --- | --- | --- | --- | --- | --- | --- | --- | --- | --- |
|  | 5 | **E1200 Lineup** |  | 2026-01-30 | 2026-03-09 |  |  |  |  |  |  |  |  |  |  |  |  |
| QTS-2001 |  | Gallery 1202 / Lineup E1200 // Install Hangers & Supports | 3d | 2026-01-30 | 2026-02-02 | QTS-1991 | 45d | 0d | QTS-PHX3 DC1 - 6 day w/ Holidays | Rosendin Electric, Inc | DH1200 | Construction | Phase 2 | IGMP | Scott Masterson | Construction |  |
| QTS-4131 |  | Gallery 1202 / Lineup E1200 // OFCI - L2 SET IN PLACE - Eq Type # - COD/ATS-210-A - Skid 1-3 | 2d | 2026-02-04 | 2026-02-05 | QTS-33631, QTS-45931 FF | 48d | 0d | QTS-PHX3 DC1 - 6 day w/ Holidays | Rosendin Electric, Inc | DH1200 | Construction | Phase 2 | IGMP | Scott Masterson | Construction |  |
| QTS-45941 |  | Gallery 1202 / Lineup E1200 // OFCI - L2 SET IN PLACE - Eq Type # - COD/ATS-210-A - Skid 4-6 | 2d | 2026-02-06 | 2026-02-07 | QTS-4131 | 48d | 0d | QTS-PHX3 DC1 - 6 day w/ Holidays | Rosendin Electric, Inc | DH1200 | Construction | Phase 2 | IGMP | Scott Masterson | Construction |  |
| QTS-2941 |  | Gallery 1202 / Lineup E1200 // Install Raceways from LV POD to COD | 7d | 2026-02-14 | 2026-02-21 | QTS-2001, QTS-2931 | 35d | 0d | QTS-PHX3 DC1 - 6 day w/ Holidays | Rosendin Electric, Inc | DH1200 | Construction | Phase 2 | IGMP | Scott Masterson | Construction |  |
| QTS-5211 |  | Gallery 1202 / Lineup E1200 // Set Reserve Busway Segment | 2d | 2026-02-23 | 2026-02-24 | QTS-4131, QTS-2941, QTS-50041 | 37d | 2d | QTS-PHX3 DC1 - 6 day w/ Holidays | Rosendin Electric, Inc | DH1200 | Construction | Phase 2 | IGMP | Scott Masterson | Construction |  |
| QTS-6551 |  | Gallery 1202 / Lineup E1200 // Pull LV Cables from POD to ATS | 4d | 2026-02-23 | 2026-02-26 | QTS-4131, QTS-2941, QTS-13561, QTS-45941 FF+1d | 35d | 0d | QTS-PHX3 DC1 - 6 day w/ Holidays | Rosendin Electric, Inc | DH1200 | Construction | Phase 2 | IGMP | Scott Masterson | Construction |  |
| QTS-8291 |  | Gallery 1202 / Lineup E1200 // Pull LV Cables from Reserve Bus to ATS | 2d | 2026-02-27 | 2026-02-28 | QTS-2941, QTS-6551, QTS-5211, QTS-4131 | 35d | 0d | QTS-PHX3 DC1 - 6 day w/ Holidays | Rosendin Electric, Inc | DH1200 | Construction | Phase 2 | IGMP | Scott Masterson | Construction |  |
| QTS-9321 |  | Gallery 1202 / Lineup E1200 // Terminate & Torque ATS | 7d | 2026-03-02 | 2026-03-09 | QTS-8291, QTS-6551 | 35d | 0d | QTS-PHX3 DC1 - 6 day w/ Holidays | Rosendin Electric, Inc | DH1200 | Construction | Phase 2 | IGMP | Scott Masterson | Construction |  |
| QTS-9331 |  | Gallery 1202 / Lineup E1200 // Terminate & Torque COD | 7d | 2026-03-02 | 2026-03-09 | QTS-6551, QTS-9321 FF | 36d | 0d | QTS-PHX3 DC1 - 6 day w/ Holidays | Rosendin Electric, Inc | DH1200 | Construction | Phase 2 | IGMP | Scott Masterson | Construction |  |
|  | 6 | **F1200 Lineup** |  | 2026-01-30 | 2026-03-07 |  |  |  |  |  |  |  |  |  |  |  |  |
| QTS-2011 |  | Gallery 1202 / Lineup F1200 // Install Hangers & Supports | 3d | 2026-01-30 | 2026-02-02 | QTS-2001 SS | 46d | 10d | QTS-PHX3 DC1 - 6 day w/ Holidays | Rosendin Electric, Inc | DH1200 | Construction | Phase 2 | IGMP | Scott Masterson | Construction |  |
| QTS-4141 |  | Gallery 1202 / Lineup F1200 // OFCI - L2 SET IN PLACE - Eq Type # - COD/ATS-210-A - Skid 1-3 | 2d | 2026-02-06 | 2026-02-07 | QTS-33671, QTS-45941 FF | 48d | 0d | QTS-PHX3 DC1 - 6 day w/ Holidays | Rosendin Electric, Inc | DH1200 | Construction | Phase 2 | IGMP | Scott Masterson | Construction |  |
| QTS-45951 |  | Gallery 1202 / Lineup F1200 // OFCI - L2 SET IN PLACE - Eq Type # - COD/ATS-210-A - Skid 4-6 | 2d | 2026-02-09 | 2026-02-10 | QTS-4141 | 49d | 13d | QTS-PHX3 DC1 - 6 day w/ Holidays | Rosendin Electric, Inc | DH1200 | Construction | Phase 2 | IGMP | Scott Masterson | Construction |  |
| QTS-2951 |  | Gallery 1202 / Lineup F1200 // Install Raceways from LV POD to COD | 7d | 2026-02-14 | 2026-02-21 | QTS-2011, QTS-2941 SS | 36d | 0d | QTS-PHX3 DC1 - 6 day w/ Holidays | Rosendin Electric, Inc | DH1200 | Construction | Phase 2 | IGMP | Scott Masterson | Construction |  |
| QTS-5231 |  | Gallery 1202 / Lineup F1200 // Set Reserve Busway Segment | 2d | 2026-02-23 | 2026-02-24 | QTS-4141, QTS-2951, QTS-50041 | 38d | 2d | QTS-PHX3 DC1 - 6 day w/ Holidays | Rosendin Electric, Inc | DH1200 | Construction | Phase 2 | IGMP | Scott Masterson | Construction |  |
| QTS-6561 |  | Gallery 1202 / Lineup F1200 // Pull LV Cables from POD to ATS | 4d | 2026-02-23 | 2026-02-26 | QTS-4141, QTS-2951, QTS-13561, QTS-45951 FF+1d | 36d | 0d | QTS-PHX3 DC1 - 6 day w/ Holidays | Rosendin Electric, Inc | DH1200 | Construction | Phase 2 | IGMP | Scott Masterson | Construction |  |
| QTS-8311 |  | Gallery 1202 / Lineup F1200 // Pull LV Cables from Reserve Bus to ATS | 2d | 2026-02-27 | 2026-02-28 | QTS-2951, QTS-6561, QTS-5231, QTS-4141 | 36d | 0d | QTS-PHX3 DC1 - 6 day w/ Holidays | Rosendin Electric, Inc | DH1200 | Construction | Phase 2 | IGMP | Scott Masterson | Construction |  |
| QTS-9351 |  | Gallery 1202 / Lineup F1200 // Terminate & Torque ATS | 6d | 2026-03-02 | 2026-03-07 | QTS-8311, QTS-6561 | 36d | 0d | QTS-PHX3 DC1 - 6 day w/ Holidays | Rosendin Electric, Inc | DH1200 | Construction | Phase 2 | IGMP | Scott Masterson | Construction |  |
| QTS-9361 |  | Gallery 1202 / Lineup F1200 // Terminate & Torque COD | 6d | 2026-03-02 | 2026-03-07 | QTS-6561, QTS-9351 FF | 37d | 0d | QTS-PHX3 DC1 - 6 day w/ Holidays | Rosendin Electric, Inc | DH1200 | Construction | Phase 2 | IGMP | Scott Masterson | Construction |  |
|  | 9 | **R1200 Lineup** |  | 2026-01-20 | 2026-02-17 |  |  |  |  |  |  |  |  |  |  |  |  |
| QTS-1961 |  | Gallery 1202 / Lineup R1200 // Install Hangers & Supports | 3d | 2026-01-20 | 2026-01-22 | QTS-13031, QTS-13401 SS+1d | 35d | 0d | QTS-PHX3 DC1 - 6 day w/ Holidays | Rosendin Electric, Inc | DH1200 | Construction | Phase 2 | IGMP | Scott Masterson | Construction | 01ADMIN |
| QTS-2901 |  | Gallery 1202 / Lineup R1200 // Install Raceways from LV POD to Reserve Busway | 5d | 2026-01-23 | 2026-01-28 | QTS-1961 | 35d | 0d | QTS-PHX3 DC1 - 6 day w/ Holidays | Rosendin Electric, Inc | DH1200 | Construction | Phase 2 | IGMP | Scott Masterson | Construction | 01ADMIN |
| QTS-4081 |  | Gallery 1202 / Lineup R1200 // OFCI - L2 SET IN PLACE - Eq Type # - TIE SWD - 1 unit | 1d | 2026-01-29 | 2026-01-29 | QTS-2901 | 53d | 3d | QTS-PHX3 DC1 - 6 day w/ Holidays | Rosendin Electric, Inc | DH1200 | Construction | Phase 2 | IGMP | Scott Masterson | Construction |  |
| QTS-4091 |  | Gallery 1202 / Lineup R1200 // Set Reserve Busway Segment | 4d | 2026-01-29 | 2026-02-02 | QTS-2901, QTS-50041 | 50d | 0d | QTS-PHX3 DC1 - 6 day w/ Holidays | Rosendin Electric, Inc | DH1200 | Construction | Phase 2 | IGMP | Scott Masterson | Construction |  |
| QTS-5601 |  | Gallery 1202 / Lineup R1200 // Pull LV Cables from TIE SWD to Reserve Busway | 2d | 2026-02-03 | 2026-02-04 | QTS-2901, QTS-4081, QTS-4091 | 50d | 0d | QTS-PHX3 DC1 - 6 day w/ Holidays | Rosendin Electric, Inc | DH1200 | Construction | Phase 2 | IGMP | Scott Masterson | Construction |  |
| QTS-6211 |  | Gallery 1202 / Lineup R1200 // Pull LV Cables from POD to Reserve Busway | 4d | 2026-02-05 | 2026-02-09 | QTS-2901, QTS-5601, QTS-4091, QTS-13561 | 50d | 0d | QTS-PHX3 DC1 - 6 day w/ Holidays | Rosendin Electric, Inc | DH1200 | Construction | Phase 2 | IGMP | Scott Masterson | Construction |  |
| QTS-7171 |  | Gallery 1202 / Lineup R1200 // Pull LV Cables from TIE SWD to TIE SWD adjacent # | 5d | 2026-02-10 | 2026-02-14 | QTS-2901, QTS-6211 | 50d | 0d | QTS-PHX3 DC1 - 6 day w/ Holidays | Rosendin Electric, Inc | DH1200 | Construction | Phase 2 | IGMP | Scott Masterson | Construction |  |
| QTS-7181 |  | Gallery 1202 / Lineup R1200 // Terminate Reserve Busway | 2d | 2026-02-10 | 2026-02-11 | QTS-6211, QTS-5601 | 55d | 0d | QTS-PHX3 DC1 - 6 day w/ Holidays | Rosendin Electric, Inc | DH1200 | Construction | Phase 2 | IGMP | Scott Masterson | Construction |  |
| QTS-9211 |  | Gallery 1202 / Lineup R1200 // Terminate TIE SWD | 2d | 2026-02-16 | 2026-02-17 | QTS-5601, QTS-7171 | 50d | 0d | QTS-PHX3 DC1 - 6 day w/ Holidays | Rosendin Electric, Inc | DH1200 | Construction | Phase 2 | IGMP | Scott Masterson | Construction |  |

| ID | WBS | Activity | Duration | Start | Finish | Predecessors | Complete | Remaining | Planned start | Planned finish | Total float | Free float | Constraint | Calendar | Subcontractor | Location | Project Section-1 | Phase-1-1 | Baseline | Layton Responsible Party | Project Section | Level | Phase-1 | Allucent CSI Group |
| --- | --- | --- | --- | --- | --- | --- | --- | --- | --- | --- | --- | --- | --- | --- | --- | --- | --- | --- | --- | --- | --- | --- | --- | --- |
|  | 4 | **DH 1200 / Rooftop Mechanical** |  | 2025-08-12 | 2026-02-27 |  |  |  |  |  |  |  |  |  |  |  |  |  |  |  |  |  |  |  |
| QTS-1891 |  | DH 1200 / Rooftop Mechanical // OFCI - L2 SET IN PLACE - Eq Type # - Chiller #1RT40 - 7 units | 1d | 2025-08-12 A | 2025-08-12 A | QTS-21521, QTS-35471, QTS-35481, QTS-35491, QTS-35501, QTS-35511, QTS-35521, QTS-35531, QTS-1761 | 100% |  |  |  |  |  |  |  | Bel-Aire Mechanical, LLC | DH1200 | Construction | Phase 2 | IGMP | Dave Wiltberger | Construction |  |  |  |
| QTS-1921 |  | DH 1200 / Rooftop Mechanical // Set Doghouse Curbs | 8d | 2025-09-09 A | 2025-09-16 A | QTS-22151 SS | 100% |  | 2025-09-25 | 2025-10-06 |  |  |  |  | Rosendin Electric, Inc | DH1200 | Construction | Phase 2 | IGMP | Dave Wiltberger | Construction |  |  |  |
| QTS-1901 |  | DH 1200 / Rooftop Mechanical // Set Doghouses | 5d | 2025-09-17 A | 2025-09-23 A | QTS-1921, QTS-19911 | 100% |  |  |  |  |  |  |  | Rosendin Electric, Inc | DH1200 | Construction | Phase 2 | IGMP | Dave Wiltberger | Construction |  |  |  |
| QTS-100880 |  | DH 1200 / Rooftop Mechanical // Install Roof Protection | 2d | 2025-11-17 A | 2025-11-18 A | QTS-22861 SS | 100% |  |  |  |  |  |  |  | Bel-Aire Mechanical, LLC | DH2100 |  |  | IGMP | Dave Wiltberger | Construction | Level 2 | Phase 1 | 01ADMIN |
| QTS-100890 |  | DH 1200 / Rooftop Mechanical // Install 12" CHWS/R Run-Outs to RPH Vaults | 13d | 2025-12-10 A | 2026-02-03 | QTS-100880 |  | 17d | 2025-12-10 | 2025-12-24 | 38d | 0d |  | QTS-PHX3 DC1 - 6 day w/ Holidays | Bel-Aire Mechanical, LLC | DH2100 |  |  | IGMP | Dave Wiltberger | Construction | Level 2 | Phase 1 | 01ADMIN |
| QTS-100900 |  | DH 1200 / Rooftop Mechanical // Assemble & Install CHWS/R Piping from Mainline Piping to ACC Deck | 23d | 2025-12-10 A | 2026-01-26 A | QTS-100890 SS | 100% |  | 2025-12-10 | 2026-01-07 |  |  |  | QTS-PHX3 DC1 - 6 day w/ Holidays | Bel-Aire Mechanical, LLC | DH2100 |  |  | IGMP | Dave Wiltberger | Construction | Level 2 | Phase 1 | 01ADMIN |
| QTS-100910 |  | DH 1200 / Rooftop Mechanical // Assemble & Install CHW Pump Assemblies at ACC Deck to Chillers | 28d | 2025-12-10 A | 2026-01-27 A | QTS-100900 SS | 100% |  | 2025-12-10 | 2026-01-13 |  |  |  | QTS-PHX3 DC1 - 6 day w/ Holidays | Bel-Aire Mechanical, LLC | DH2100 |  |  | IGMP | Dave Wiltberger | Construction | Level 2 | Phase 1 | 01ADMIN |
| QTS-100980 |  | DH 1200 / Rooftop Mechanical // Set RPH Vault Housings | 5d | 2025-12-15 A | 2025-12-19 A | QTS-100960 FF+2d | 100% |  |  |  |  |  |  | QTS-PHX3 DC1 - 6 day w/ Holidays | Bel-Aire Mechanical, LLC | DH2100 |  |  | IGMP | Dave Wiltberger | Construction | Level 2 | Phase 1 | 01ADMIN |
| QTS-100960 |  | DH 1200 / Rooftop Mechanical // Install Mainline Piping from RPH Vaults to Galleries (Risers) L2 / L1 | 10d | 2025-12-22 A | 2025-12-26 A | QTS-100910 SS+8d | 100% |  | 2025-12-22 | 2026-01-03 |  |  |  | QTS-PHX3 DC1 - 6 day w/ Holidays | Bel-Aire Mechanical, LLC | DH2100 |  |  | IGMP | Dave Wiltberger | Construction | Level 2 | Phase 1 | 01ADMIN |
| QTS-3431 |  | DH 1200 / Rooftop Mechanical // Set Vertical Inline Centrifugal Pumps | 5d | 2026-01-07 A | 2026-01-12 A | QTS-1891, QTS-3421 | 100% |  |  |  |  |  |  | QTS-PHX3 DC1 - 6 day w/ Holidays | Bel-Aire Mechanical, LLC | DH1200 | Construction | Phase 2 | IGMP | Dave Wiltberger | Construction |  |  | 01ADMIN |
| QTS-1941 |  | DH 1200 / Rooftop Mechanical // OFCI - L2 SET IN PLACE - Eq Type # - DOAS-RT1200 - 2 units | 2d | 2026-01-12 A | 2026-01-13 A | QTS-22151, QTS-23421, QTS-23431, QTS-22861, QTS-100880 | 100% |  |  |  |  |  |  | QTS-PHX3 DC1 - 6 day w/ Holidays | Bel-Aire Mechanical, LLC | DH1200 | Construction | Phase 2 | IGMP | Dave Wiltberger | Construction |  |  | 01ADMIN |
| QTS-100990 |  | DH 1200 / Rooftop Mechanical // Pressure Test (Air) Industrial Loop (L1) | 1d | 2026-01-14 | 2026-01-14 | QTS-100960, QTS-100980 |  |  |  |  | 38d | 0d |  | QTS-PHX3 DC1 - 6 day w/ Holidays | Bel-Aire Mechanical, LLC | DH2100 |  |  | IGMP | Dave Wiltberger | Construction | Level 2 | Phase 1 | 01ADMIN |
| QTS-50211 |  | DH 1200 / Rooftop Mechanical // Rough In Plumbing from to DOAS | 1d | 2026-01-14 | 2026-01-14 | QTS-1941 |  |  |  |  | 71d | 0d |  | QTS-PHX3 DC1 - 6 day w/ Holidays | Bel-Aire Mechanical, LLC | FOH | Construction | Phase 1 | DC | Dave Wiltberger | Construction | Roof |  | 01ADMIN |
| QTS-100930 |  | DH 1200 / Rooftop Mechanical // Rough In Condensate Drain from DOAS | 2d | 2026-01-15 | 2026-01-16 | QTS-50211 |  |  |  |  | 72d | 1d |  | QTS-PHX3 DC1 - 6 day w/ Holidays | Bel-Aire Mechanical, LLC | DH2100 |  |  | IGMP | Dave Wiltberger | Construction | Level 2 | Phase 1 | 01ADMIN |
| QTS-101000 |  | DH 1200 / Rooftop Mechanical // Pressure Test (Air) Industrial Loop (L2) | 1d | 2026-01-15 | 2026-01-15 | QTS-100990 |  |  |  |  | 38d | 0d |  | QTS-PHX3 DC1 - 6 day w/ Holidays | Bel-Aire Mechanical, LLC | DH2100 |  |  | IGMP | Dave Wiltberger | Construction | Level 2 | Phase 1 | 01ADMIN |
| QTS-50221 |  | DH 1200 / Rooftop Mechanical // Rough In Power from to DOAS | 3d | 2026-01-15 | 2026-01-17 | QTS-50211 |  |  |  |  | 71d | 0d |  | QTS-PHX3 DC1 - 6 day w/ Holidays | Bel-Aire Mechanical, LLC | FOH | Construction | Phase 1 | DC | Dave Wiltberger | Construction | Roof |  | 01ADMIN |
| QTS-101010 |  | DH 1200 / Rooftop Mechanical // Pressure Test (Air) Industrial Loop (Roof) | 1d | 2026-01-16 | 2026-01-16 | QTS-101000 |  |  |  |  | 38d | 0d |  | QTS-PHX3 DC1 - 6 day w/ Holidays | Bel-Aire Mechanical, LLC | DH2100 |  |  | IGMP | Dave Wiltberger | Construction | Level 2 | Phase 1 | 01ADMIN |
| QTS-101020 |  | DH 1200 / Rooftop Mechanical // Install Temp Flush Pump, Power Source for Pump & Other Associated Components | 5d | 2026-01-17 | 2026-01-23 | QTS-101010 |  |  |  |  | 38d | 0d |  | QTS-PHX3 DC1 - 6 day w/ Holidays | Bel-Aire Mechanical, LLC | DH2100 |  |  | IGMP | Dave Wiltberger | Construction | Level 2 | Phase 1 | 01ADMIN |
| QTS-50231 |  | DH 1200 / Rooftop Mechanical // Rough In Controls from to DOAS | 1d | 2026-01-17 | 2026-01-17 | QTS-50221 FF |  |  |  |  | 71d | 0d |  | QTS-PHX3 DC1 - 6 day w/ Holidays | Bel-Aire Mechanical, LLC | FOH | Construction | Phase 1 | DC | Dave Wiltberger | Construction | Roof |  | 01ADMIN |
| QTS-50241 |  | DH 1200 / Rooftop Mechanical // Pre Energization Inspection DOAS | 1d | 2026-01-20 | 2026-01-20 | QTS-50231, QTS-100930 |  |  |  |  | 71d | 34d |  | QTS-PHX3 DC1 - 6 day w/ Holidays | Bel-Aire Mechanical, LLC | FOH | Construction | Phase 1 | DC | Dave Wiltberger | Construction | Roof |  | 01ADMIN |
| QTS-100920 |  | DH 1200 / Rooftop Mechanical // Install Grating, Toe Kicks, Hand Rails for TES Tanks | 5d | 2026-01-23 | 2026-01-28 | QTS-100880 |  |  |  |  | 22d | 0d | start on or after 2026-01-23 | QTS-PHX3 DC1 - 6 day w/ Holidays | Bel-Aire Mechanical, LLC | DH2100 |  |  | IGMP | Dave Wiltberger | Construction | Level 2 | Phase 1 | 01ADMIN |
| QTS-101060 |  | DH 1200 / Rooftop Mechanical // Hydro-Test (Water) Industrial Loop (L1) | 1d | 2026-01-24 | 2026-01-24 | QTS-101020 |  |  |  |  | 38d | 0d |  | QTS-PHX3 DC1 - 6 day w/ Holidays | Bel-Aire Mechanical, LLC | DH2100 |  |  | IGMP | Dave Wiltberger | Construction | Level 2 | Phase 1 | 01ADMIN |
| QTS-101070 |  | DH 1200 / Rooftop Mechanical // Hydro-Test (Water) Industrial Loop (L2) | 1d | 2026-01-26 | 2026-01-26 | QTS-101060 |  |  |  |  | 38d | 0d |  | QTS-PHX3 DC1 - 6 day w/ Holidays | Bel-Aire Mechanical, LLC | DH2100 |  |  | IGMP | Dave Wiltberger | Construction | Level 2 | Phase 1 | 01ADMIN |
| QTS-101080 |  | DH 1200 / Rooftop Mechanical // Hydro-Test (Water) Industrial Loop (Roof) | 1d | 2026-01-27 | 2026-01-27 | QTS-101070 |  |  |  |  | 38d | 0d |  | QTS-PHX3 DC1 - 6 day w/ Holidays | Bel-Aire Mechanical, LLC | DH2100 |  |  | IGMP | Dave Wiltberger | Construction | Level 2 | Phase 1 | 01ADMIN |
| QTS-101090 |  | DH 1200 / Rooftop Mechanical // Fill and Flush Industrial Loop (Zone 2 - All Levels) | 10d | 2026-01-28 | 2026-02-06 | QTS-101080 |  |  |  |  | 44d | 27d |  | QTS-PHX3 DC1 - 7 day No Holidays | Bel-Aire Mechanical, LLC | DH2100 |  |  | IGMP | Dave Wiltberger | Construction | Level 2 | Phase 1 | 01ADMIN |
| QTS-100940 |  | DH 1200 / Rooftop Mechanical // OFCI - ROOF SET IN PLACE - Eq Type # - TES Tanks - 7 units | 1d | 2026-01-29 | 2026-01-29 | QTS-100920, QTS-100720 |  |  |  |  | 22d | 0d |  | QTS-PHX3 DC1 - 6 day w/ Holidays | Bel-Aire Mechanical, LLC | DH2100 |  |  | IGMP | Dave Wiltberger | Construction | Level 2 | Phase 1 | 01ADMIN |
| QTS-100950 |  | DH 1200 / Rooftop Mechanical // Finalize Detailing for TES Tank CHW Piping/ Fabrication | 7d | 2026-01-30 | 2026-02-06 | QTS-100940 |  |  |  |  | 22d | 0d |  | QTS-PHX3 DC1 - 6 day w/ Holidays | Bel-Aire Mechanical, LLC | DH2100 |  |  | IGMP | Dave Wiltberger | Construction | Level 2 | Phase 1 | 01ADMIN |
| QTS-100970 |  | DH 1200 / Rooftop Mechanical // Install TES Tank CHW Piping - 7 Units | 10d | 2026-02-07 | 2026-02-18 | QTS-100950 |  |  |  |  | 22d | 0d |  | QTS-PHX3 DC1 - 6 day w/ Holidays | Bel-Aire Mechanical, LLC | DH2100 |  |  | IGMP | Dave Wiltberger | Construction | Level 2 | Phase 1 | 01ADMIN |
| QTS-101030 |  | DH 1200 / Rooftop Mechanical // Pressure Test (Air) Industrial Loop (TES Tank) | 1d | 2026-02-19 | 2026-02-19 | QTS-100970 |  |  |  |  | 22d | 0d |  | QTS-PHX3 DC1 - 6 day w/ Holidays | Bel-Aire Mechanical, LLC | DH2100 |  |  | IGMP | Dave Wiltberger | Construction | Level 2 | Phase 1 | 01ADMIN |
| QTS-101040 |  | DH 1200 / Rooftop Mechanical // Hydro-Test (Water) Industrial Loop (TES Tank) | 1d | 2026-02-20 | 2026-02-20 | QTS-101030 |  |  |  |  | 22d | 0d |  | QTS-PHX3 DC1 - 6 day w/ Holidays | Bel-Aire Mechanical, LLC | DH2100 |  |  | IGMP | Dave Wiltberger | Construction | Level 2 | Phase 1 | 01ADMIN |
| QTS-101050 |  | DH 1200 / Rooftop Mechanical // Fill and Flush Industrial Loop (TES Tank) | 7d | 2026-02-21 | 2026-02-27 | QTS-101040 |  |  |  |  | 26d | 19d |  | QTS-PHX3 DC1 - 7 day No Holidays | Bel-Aire Mechanical, LLC | DH2100 |  |  | IGMP | Dave Wiltberger | Construction | Level 2 | Phase 1 | 01ADMIN |

Notes:
- QTS-100880: allucent_notes_20251014_152335: David Wiltberger on 2025-08-19 09:08: changed pick order / David Wiltberger on 2025-09-02 10:09: Moving to accommodate roofing in Zone 1 / David Wiltberger on 2025-09-24 04:09: BAM not completed Potential Delay / David Wiltberger on 2025-09-30 12:09: BAM did not complete / David Wiltberger on 2025-10-14 10:10: set on recovery schedule
- QTS-100890: allucent_notes_20251230_164549: David Wiltberger on 2025-12-02 06:49: work impacted by roofing install / allucent_notes: David Wiltberger on 2025-08-19 09:08: changed pick order / allucent_notes_20251014_152335: David Wiltberger on 2025-08-19 09:08: changed pick order / David Wiltberger on 2025-09-02 10:09: Moving to accommodate roofing in Zone 1 / David Wiltberger on 2025-09-24 04:09: BAM not completed Potential Delay / David Wiltberger on 2025-09-30 12:09: BAM did not complete / David Wiltberger on 2025-10-14 10:10: set on recovery schedule / allucent_notes_20251202_153722: David Wiltberger on 2025-12-02 06:49: work impacted by roofing install / allucent_notes_20251216_165335: David Wiltberger on 2025-12-02 06:49: work impacted by roofing install / allucent_notes: 2025-12-02 06:49 - User: David Wiltberger - Date Added: 2025-12-02 06:49 - Note: work impacted by roofing install
- QTS-100900: allucent_notes: David Wiltberger on 2025-08-19 09:08: changed pick order / allucent_notes_20251014_152335: David Wiltberger on 2025-08-19 09:08: changed pick order / David Wiltberger on 2025-09-02 10:09: Moving to accommodate roofing in Zone 1 / David Wiltberger on 2025-09-24 04:09: BAM not completed Potential Delay / David Wiltberger on 2025-09-30 12:09: BAM did not complete / David Wiltberger on 2025-10-14 10:10: set on recovery schedule
- QTS-100910: allucent_notes: David Wiltberger on 2025-08-19 09:08: changed pick order / allucent_notes_20251014_152335: David Wiltberger on 2025-08-19 09:08: changed pick order / David Wiltberger on 2025-09-02 10:09: Moving to accommodate roofing in Zone 1 / David Wiltberger on 2025-09-24 04:09: BAM not completed Potential Delay / David Wiltberger on 2025-09-30 12:09: BAM did not complete / David Wiltberger on 2025-10-14 10:10: set on recovery schedule
- QTS-100980: allucent_notes: David Wiltberger on 2025-08-19 09:08: changed pick order / allucent_notes_20251014_152335: David Wiltberger on 2025-08-19 09:08: changed pick order / David Wiltberger on 2025-09-02 10:09: Moving to accommodate roofing in Zone 1 / David Wiltberger on 2025-09-24 04:09: BAM not completed Potential Delay / David Wiltberger on 2025-09-30 12:09: BAM did not complete / David Wiltberger on 2025-10-14 10:10: set on recovery schedule
- QTS-100960: allucent_notes: David Wiltberger on 2025-08-19 09:08: changed pick order / allucent_notes_20251014_152335: David Wiltberger on 2025-08-19 09:08: changed pick order / David Wiltberger on 2025-09-02 10:09: Moving to accommodate roofing in Zone 1 / David Wiltberger on 2025-09-24 04:09: BAM not completed Potential Delay / David Wiltberger on 2025-09-30 12:09: BAM did not complete / David Wiltberger on 2025-10-14 10:10: set on recovery schedule
- QTS-3431: allucent_notes_20251230_164549: David Wiltberger on 2025-08-26 06:08: Need to set sequence. This is phase 2 equipment / allucent_notes: David Wiltberger on 2025-08-26 06:08: Need to set sequence. This is phase 2 equipment / allucent_notes_20251014_152335: David Wiltberger on 2025-08-26 06:08: Need to set sequence. This is phase 2 equipment / allucent_notes_20251021_145627: David Wiltberger on 2025-08-26 06:08: Need to set sequence. This is phase 2 equipment / allucent_notes_20251202_153722: David Wiltberger on 2025-08-26 06:08: Need to set sequence. This is phase 2 equipment / allucent_notes_20251216_165335: David Wiltberger on 2025-08-26 06:08: Need to set sequence. This is phase 2 equipment / allucent_notes: 2025-08-26 06:08 - User: David Wiltberger - Date Added: 2025-08-26 06:08 - Note: Need to set sequence. This is phase 2 equipment
- QTS-1941: allucent_notes_20251230_164549: David Wiltberger on 2025-12-30 16:21: no update / allucent_notes: 2025-12-30 16:21 - User: David Wiltberger - Date Added: 2025-12-30 16:21 - Note: no update
- QTS-100990: allucent_notes: David Wiltberger on 2025-08-19 09:08: changed pick order / allucent_notes_20251014_152335: David Wiltberger on 2025-08-19 09:08: changed pick order / David Wiltberger on 2025-09-02 10:09: Moving to accommodate roofing in Zone 1 / David Wiltberger on 2025-09-24 04:09: BAM not completed Potential Delay / David Wiltberger on 2025-09-30 12:09: BAM did not complete / David Wiltberger on 2025-10-14 10:10: set on recovery schedule
- QTS-100930: allucent_notes: David Wiltberger on 2025-08-19 09:08: changed pick order / allucent_notes_20251014_152335: David Wiltberger on 2025-08-19 09:08: changed pick order / David Wiltberger on 2025-09-02 10:09: Moving to accommodate roofing in Zone 1 / David Wiltberger on 2025-09-24 04:09: BAM not completed Potential Delay / David Wiltberger on 2025-09-30 12:09: BAM did not complete / David Wiltberger on 2025-10-14 10:10: set on recovery schedule
- QTS-101000: allucent_notes: David Wiltberger on 2025-08-19 09:08: changed pick order / allucent_notes_20251014_152335: David Wiltberger on 2025-08-19 09:08: changed pick order / David Wiltberger on 2025-09-02 10:09: Moving to accommodate roofing in Zone 1 / David Wiltberger on 2025-09-24 04:09: BAM not completed Potential Delay / David Wiltberger on 2025-09-30 12:09: BAM did not complete / David Wiltberger on 2025-10-14 10:10: set on recovery schedule
- QTS-101010: allucent_notes: David Wiltberger on 2025-08-19 09:08: changed pick order / allucent_notes_20251014_152335: David Wiltberger on 2025-08-19 09:08: changed pick order / David Wiltberger on 2025-09-02 10:09: Moving to accommodate roofing in Zone 1 / David Wiltberger on 2025-09-24 04:09: BAM not completed Potential Delay / David Wiltberger on 2025-09-30 12:09: BAM did not complete / David Wiltberger on 2025-10-14 10:10: set on recovery schedule
- QTS-101020: allucent_notes: David Wiltberger on 2025-08-19 09:08: changed pick order / allucent_notes_20251014_152335: David Wiltberger on 2025-08-19 09:08: changed pick order / David Wiltberger on 2025-09-02 10:09: Moving to accommodate roofing in Zone 1 / David Wiltberger on 2025-09-24 04:09: BAM not completed Potential Delay / David Wiltberger on 2025-09-30 12:09: BAM did not complete / David Wiltberger on 2025-10-14 10:10: set on recovery schedule
- QTS-100920: allucent_notes_20251230_164549: David Wiltberger on 2025-12-02 06:48: Grating not complete / Scott Masterson on 2025-12-16 16:13: Need an update from Drelan... / David Wiltberger on 2025-12-30 16:22: no update / allucent_notes: David Wiltberger on 2025-08-19 09:08: changed pick order / allucent_notes_20251014_152335: David Wiltberger on 2025-08-19 09:08: changed pick order / David Wiltberger on 2025-09-02 10:09: Moving to accommodate roofing in Zone 1 / David Wiltberger on 2025-09-24 04:09: BAM not completed Potential Delay / David Wiltberger on 2025-09-30 12:09: BAM did not complete / David Wiltberger on 2025-10-14 10:10: set on recovery schedule / allucent_notes_20251202_153722: David Wiltberger on 2025-12-02 06:48: Grating not complete / allucent_notes_20251216_165335: David Wiltberger on 2025-12-02 06:48: Grating not complete / Scott Masterson on 2025-12-16 16:13: Need an update from Drelan... / allucent_notes: 2025-12-02 06:48 - User: David Wiltberger - Date Added: 2025-12-02 06:48 - Note: Grating not complete / 2025-12-16 16:13 - User: Scott Masterson - Date Added: 2025-12-16 16:13 - Note: Need an update from Drelan... / 2025-12-30 16:22 - User: David Wiltbe
- QTS-101060: allucent_notes: David Wiltberger on 2025-08-19 09:08: changed pick order / allucent_notes_20251014_152335: David Wiltberger on 2025-08-19 09:08: changed pick order / David Wiltberger on 2025-09-02 10:09: Moving to accommodate roofing in Zone 1 / David Wiltberger on 2025-09-24 04:09: BAM not completed Potential Delay / David Wiltberger on 2025-09-30 12:09: BAM did not complete / David Wiltberger on 2025-10-14 10:10: set on recovery schedule
- QTS-101070: allucent_notes: David Wiltberger on 2025-08-19 09:08: changed pick order / allucent_notes_20251014_152335: David Wiltberger on 2025-08-19 09:08: changed pick order / David Wiltberger on 2025-09-02 10:09: Moving to accommodate roofing in Zone 1 / David Wiltberger on 2025-09-24 04:09: BAM not completed Potential Delay / David Wiltberger on 2025-09-30 12:09: BAM did not complete / David Wiltberger on 2025-10-14 10:10: set on recovery schedule
- QTS-101080: allucent_notes: David Wiltberger on 2025-08-19 09:08: changed pick order / allucent_notes_20251014_152335: David Wiltberger on 2025-08-19 09:08: changed pick order / David Wiltberger on 2025-09-02 10:09: Moving to accommodate roofing in Zone 1 / David Wiltberger on 2025-09-24 04:09: BAM not completed Potential Delay / David Wiltberger on 2025-09-30 12:09: BAM did not complete / David Wiltberger on 2025-10-14 10:10: set on recovery schedule
- QTS-101090: allucent_notes: David Wiltberger on 2025-08-19 09:08: changed pick order / allucent_notes_20251014_152335: David Wiltberger on 2025-08-19 09:08: changed pick order / David Wiltberger on 2025-09-02 10:09: Moving to accommodate roofing in Zone 1 / David Wiltberger on 2025-09-24 04:09: BAM not completed Potential Delay / David Wiltberger on 2025-09-30 12:09: BAM did not complete / David Wiltberger on 2025-10-14 10:10: set on recovery schedule
- QTS-100940: allucent_notes: David Wiltberger on 2025-08-19 09:08: changed pick order / allucent_notes_20251014_152335: David Wiltberger on 2025-08-19 09:08: changed pick order / David Wiltberger on 2025-09-02 10:09: Moving to accommodate roofing in Zone 1 / David Wiltberger on 2025-09-24 04:09: BAM not completed Potential Delay / David Wiltberger on 2025-09-30 12:09: BAM did not complete / David Wiltberger on 2025-10-14 10:10: set on recovery schedule
- QTS-100950: allucent_notes: David Wiltberger on 2025-08-19 09:08: changed pick order / allucent_notes_20251014_152335: David Wiltberger on 2025-08-19 09:08: changed pick order / David Wiltberger on 2025-09-02 10:09: Moving to accommodate roofing in Zone 1 / David Wiltberger on 2025-09-24 04:09: BAM not completed Potential Delay / David Wiltberger on 2025-09-30 12:09: BAM did not complete / David Wiltberger on 2025-10-14 10:10: set on recovery schedule
- QTS-100970: allucent_notes: David Wiltberger on 2025-08-19 09:08: changed pick order / allucent_notes_20251014_152335: David Wiltberger on 2025-08-19 09:08: changed pick order / David Wiltberger on 2025-09-02 10:09: Moving to accommodate roofing in Zone 1 / David Wiltberger on 2025-09-24 04:09: BAM not completed Potential Delay / David Wiltberger on 2025-09-30 12:09: BAM did not complete / David Wiltberger on 2025-10-14 10:10: set on recovery schedule
- QTS-101030: allucent_notes: David Wiltberger on 2025-08-19 09:08: changed pick order / allucent_notes_20251014_152335: David Wiltberger on 2025-08-19 09:08: changed pick order / David Wiltberger on 2025-09-02 10:09: Moving to accommodate roofing in Zone 1 / David Wiltberger on 2025-09-24 04:09: BAM not completed Potential Delay / David Wiltberger on 2025-09-30 12:09: BAM did not complete / David Wiltberger on 2025-10-14 10:10: set on recovery schedule
- QTS-101040: allucent_notes: David Wiltberger on 2025-08-19 09:08: changed pick order / allucent_notes_20251014_152335: David Wiltberger on 2025-08-19 09:08: changed pick order / David Wiltberger on 2025-09-02 10:09: Moving to accommodate roofing in Zone 1 / David Wiltberger on 2025-09-24 04:09: BAM not completed Potential Delay / David Wiltberger on 2025-09-30 12:09: BAM did not complete / David Wiltberger on 2025-10-14 10:10: set on recovery schedule
- QTS-101050: allucent_notes: David Wiltberger on 2025-08-19 09:08: changed pick order / allucent_notes_20251014_152335: David Wiltberger on 2025-08-19 09:08: changed pick order / David Wiltberger on 2025-09-02 10:09: Moving to accommodate roofing in Zone 1 / David Wiltberger on 2025-09-24 04:09: BAM not completed Potential Delay / David Wiltberger on 2025-09-30 12:09: BAM did not complete / David Wiltberger on 2025-10-14 10:10: set on recovery schedule

| ID | WBS | Activity | Duration | Start | Finish | Predecessors | Complete | Remaining | Planned start | Planned finish | Total float | Free float | Calendar | Subcontractor | Level | Location | Baseline | Layton Responsible Party | Phase-1 | Project Section | Allucent CSI Group | Project Section-1 | Phase-1-1 |
| --- | --- | --- | --- | --- | --- | --- | --- | --- | --- | --- | --- | --- | --- | --- | --- | --- | --- | --- | --- | --- | --- | --- | --- |
|  | 1 | **Fragnet Bulletin 4 Grating** |  | 2025-10-10 | 2026-01-26 |  |  |  |  |  |  |  |  |  |  |  |  |  |  |  |  |  |  |
| QTS-1001830 |  | Fragnet / DH 1200 / Rooftop Mechanical // Bulletin 4 Received by Layton | 1d | 2025-10-10 A | 2025-10-10 A | QTS-1371 SS | 100% |  |  |  |  |  |  | Bel-Aire Mechanical, LLC | Level 2 | DH2100 | IGMP | Dave Wiltberger | Phase 1 | Construction | 01ADMIN |  |  |
| QTS-1001850 |  | Fragnet / DH 1200 / Rooftop Mechanical // Updated Bulletin 4 Received by Layton | 3d | 2025-10-13 A | 2025-10-15 A | QTS-1001830 | 100% |  | 2025-10-10 | 2025-10-14 |  |  |  | Bel-Aire Mechanical, LLC | Level 2 | DH2100 | IGMP | Dave Wiltberger | Phase 1 | Construction | 01ADMIN |  |  |
| QTS-1001860 |  | Fragnet / DH 1200 / Rooftop Mechanical // Layton Submitting Shop Drawings to QTS Design (DLB) | 23d | 2025-10-16 A | 2025-11-17 A | QTS-1001850 | 100% |  | 2025-10-10 | 2025-11-11 |  |  |  | Bel-Aire Mechanical, LLC | Level 2 | DH2100 | IGMP | Dave Wiltberger | Phase 1 | Construction | 01ADMIN |  |  |
| QTS-1001870 |  | Fragnet / DH 1200 / Rooftop Mechanical // Layton Submitting Shop Drawings to QTS Design (Corgan) | 23d | 2025-11-18 A | 2025-12-09 A | QTS-1001860 | 100% |  | 2025-10-10 | 2025-11-11 |  |  |  | Bel-Aire Mechanical, LLC | Level 2 | DH2100 | IGMP | Dave Wiltberger | Phase 1 | Construction | 01ADMIN |  |  |
| QTS-1001880 |  | Fragnet / DH 1200 / Rooftop Mechanical // QTS Design Response for Grating | 10d | 2025-12-10 A | 2026-01-14 | QTS-1001870 | 100% | 0d | 2025-10-10 | 2025-10-23 | 89d | 0d |  | Bel-Aire Mechanical, LLC | Level 2 | DH2100 | IGMP | Dave Wiltberger | Phase 1 | Construction | 01ADMIN |  |  |
| QTS-1001840 |  | Fragnet / DH 1200 / Rooftop Mechanical // Install Grating, Toe Kicks, Hand Rails to Complete Chiller Deck | 10d | 2026-01-14 | 2026-01-26 | QTS-1001880 |  |  |  |  | 107d |  | QTS-PHX3 DC1 - 6 day w/ Holidays | Bel-Aire Mechanical, LLC | Level 2 | DH2100 | IGMP | Dave Wiltberger | Phase 1 | Construction | 01ADMIN |  |  |
|  | 5 | **DH 1200 / Mechanical Yard Buildout** |  | 2025-10-20 | 2026-02-16 |  |  |  |  |  |  |  |  |  |  |  |  |  |  |  |  |  |  |
| QTS-42441 |  | DH 1200 / Mechanical Yard // Excavate for MV Conduit | 5d | 2025-10-20 A | 2025-10-24 A | QTS-21521, QTS-42391 SS | 100% |  |  |  |  |  |  | Oregon Electric Group | Level 2 | Gen Yard | IGMP | Ron Carroll |  | Construction | 01ADMIN | Construction | Phase 1 |
| QTS-42451 |  | DH 1200 / Mechanical Yard // Install Conduit for MV Cables | 7d | 2025-10-21 A | 2025-10-29 A | QTS-42441 FF+3d | 100% |  |  |  |  |  |  | Oregon Electric Group | Level 2 | Gen Yard | IGMP | Ron Carroll |  | Construction | 01ADMIN | Construction | Phase 1 |
| QTS-42461 |  | DH 1200 / Mechanical Yard // Slurry for MV Cable Conduit | 5d | 2025-10-24 A | 2025-10-30 A | QTS-42451 FF+1d | 100% |  |  |  |  |  |  | Oregon Electric Group | Level 2 | Gen Yard | IGMP | Ron Carroll |  | Construction | 01ADMIN | Construction | Phase 1 |
| QTS-42471 |  | DH 1200 / Mechanical Yard // Backfill Conduit for MV Cables | 5d | 2025-10-27 A | 2025-10-31 A | QTS-42461 FF+1d | 100% |  |  |  |  |  |  | Oregon Electric Group | Level 2 | Gen Yard | IGMP | Ron Carroll |  | Construction | 01ADMIN | Construction | Phase 1 |
| QTS-1911 |  | DH 1200 / Mechanical Yard // Prep for Pier Footings | 3d | 2025-11-03 A | 2025-11-05 A | QTS-1891, QTS-42471 | 100% |  |  |  |  |  |  | Suntec Concrete Inc | Level 1 | Gen Yard | IGMP | Ron Carroll |  | Construction | 01ADMIN | Construction | Phase 2 |
| QTS-2891 |  | DH 1200 / Mechanical Yard // Form, Reinforce, & Pour 24" Diameter Piers #1 | 6d | 2025-11-06 A | 2025-11-13 A | QTS-1911 | 100% |  |  |  |  |  |  | Suntec Concrete Inc | Level 1 | Gen Yard | IGMP | Ron Carroll |  | Construction | 01ADMIN | Construction | Phase 2 |
| QTS-4061 |  | DH 1200 / Mechanical Yard // Form, Reinforce, & Pour 24" Diameter Piers #2 | 5d | 2025-11-14 A | 2025-11-20 A | QTS-2891 SS+5d, QTS-2891 FF+5d | 100% |  |  |  |  |  |  | Suntec Concrete Inc | Level 1 | Gen Yard | IGMP | Ron Carroll |  | Construction | 01ADMIN | Construction | Phase 2 |
| QTS-11211 |  | DH 1200 / Mechanical Yard // Form, Reinforce, & Pour Thickened Slab On Grade for Transformers | 9d | 2025-11-17 A | 2025-12-01 A | QTS-4061 SS+1d | 100% |  |  |  |  |  |  | Suntec Concrete Inc | Level 1 | Gen Yard | IGMP | Ron Carroll |  | Construction | 01ADMIN | Construction | Phase 2 |
| QTS-9981 |  | DH 1200 / Mechanical Yard // Form, Reinforce, & Pour Thickened Slab On Grade for UPS Pods | 5d | 2025-12-02 A | 2025-12-08 A | QTS-11211 | 100% |  |  |  |  |  |  | Suntec Concrete Inc | Level 1 | Gen Yard | IGMP | Ron Carroll |  | Construction | 01ADMIN | Construction | Phase 2 |
| QTS-12561 |  | DH 1200 / Mechanical Yard // Form, Reinforce, & Pour Thickened Slab On Grade for Generators | 10d | 2025-12-03 A | 2025-12-05 A | QTS-11211, QTS-9981 | 100% |  | 2025-12-09 | 2025-12-22 |  |  |  | Suntec Concrete Inc | Level 1 | Gen Yard | IGMP | Ron Carroll |  | Construction | 01ADMIN | Construction | Phase 2 |
| QTS-6511 |  | DH 1200 / Mechanical Yard // Place Gen Yard Gravel | 5d | 2025-12-09 A | 2025-12-15 A | QTS-4061, QTS-9981, QTS-11211 | 100% |  |  |  |  |  |  | Redpoint Contracting | Level 1 | Gen Yard | IGMP | Ron Carroll |  | Construction | 01ADMIN | Construction | Phase 2 |
|  | 2 | **Remaining Duration** |  | 2025-11-21 | 2026-02-16 |  |  |  |  |  |  |  |  |  |  |  |  |  |  |  |  |  |  |
| QTS-14521 |  | DH 1200 / Mechanical Yard // OFCI - L2 SET IN PLACE - Eq Type # - 2500KVA Transformers - 7 units | 3d | 2025-11-21 A | 2025-11-24 A | QTS-13561, QTS-35851, QTS-35861, QTS-35871, QTS-35881, QTS-35891, QTS-35901, QTS-35911 | 100% |  |  |  |  |  | QTS-PHX3 DC1 - 6 day w/ Holidays | Rosendin Electric, Inc | Level 1 | Gen Yard | IGMP | Scott Masterson |  | Construction | 01ADMIN | Construction | Phase 2 |
| QTS-41321 |  | DH 1200 / Mechanical Yard // OFCI - L2 SET IN PLACE - Eq Type # - 2500KW Generator #A-12 - 1 unit | 1d | 2025-12-10 A | 2025-12-10 A | QTS-40271, QTS-40291, QTS-40261, QTS-14521, QTS-12561 | 100% |  |  |  |  |  | QTS-PHX3 DC1 - 6 day w/ Holidays | Rosendin Electric, Inc | Level 1 | Gen Yard |  | Scott Masterson |  | Construction | 01ADMIN | Construction | Phase 2 |
| QTS-41331 |  | DH 1200 / Mechanical Yard // OFCI - L2 SET IN PLACE - Eq Type # - 2500KW Generator #B-12 - 1 unit | 1d | 2025-12-10 A | 2025-12-10 A | QTS-41321, QTS-40101, QTS-40111, QTS-40131 | 100% |  |  |  |  |  | QTS-PHX3 DC1 - 6 day w/ Holidays | Rosendin Electric, Inc | Level 1 | Gen Yard |  | Scott Masterson |  | Construction | 01ADMIN | Construction | Phase 2 |
| QTS-41341 |  | DH 1200 / Mechanical Yard // OFCI - L2 SET IN PLACE - Eq Type # - 2500KW Generator #C-12 - 1 unit | 1d | 2025-12-10 A | 2025-12-10 A | QTS-41331 SS, QTS-39941, QTS-39951, QTS-39971 | 100% |  |  |  |  |  | QTS-PHX3 DC1 - 6 day w/ Holidays | Rosendin Electric, Inc | Level 1 | Gen Yard |  | Scott Masterson |  | Construction | 01ADMIN | Construction | Phase 2 |
| QTS-41351 |  | DH 1200 / Mechanical Yard // OFCI - L2 SET IN PLACE - Eq Type # - 2500KW Generator #D-12 - 1 unit | 1d | 2025-12-10 A | 2025-12-10 A | QTS-41341, QTS-40461, QTS-40471, QTS-40491 | 100% |  |  |  |  |  | QTS-PHX3 DC1 - 6 day w/ Holidays | Rosendin Electric, Inc | Level 1 | Gen Yard |  | Scott Masterson |  | Construction | 01ADMIN | Construction | Phase 2 |
| QTS-41361 |  | DH 1200 / Mechanical Yard // OFCI - L2 SET IN PLACE - Eq Type # - 2500KW Generator #E-12 - 1 unit | 1d | 2025-12-10 A | 2025-12-10 A | QTS-41351 SS, QTS-40661, QTS-40671, QTS-40691 | 100% |  |  |  |  |  | QTS-PHX3 DC1 - 6 day w/ Holidays | Rosendin Electric, Inc | Level 1 | Gen Yard |  | Scott Masterson |  | Construction | 01ADMIN | Construction | Phase 2 |
| QTS-41371 |  | DH 1200 / Mechanical Yard // OFCI - L2 SET IN PLACE - Eq Type # - 2500KW Generator #F-12 - 1 unit | 1d | 2025-12-10 A | 2025-12-10 A | QTS-41361, QTS-40861, QTS-40871, QTS-40891 | 100% |  |  |  |  |  | QTS-PHX3 DC1 - 6 day w/ Holidays | Rosendin Electric, Inc | Level 1 | Gen Yard |  | Scott Masterson |  | Construction |  | Construction | Phase 2 |
| QTS-41381 |  | DH 1200 / Mechanical Yard // OFCI - L2 SET IN PLACE - Eq Type # - 2500KW Generator #R-12 - 1 unit | 1d | 2025-12-10 A | 2025-12-10 A | QTS-41371, QTS-41061, QTS-41071, QTS-41091 | 100% |  |  |  |  |  | QTS-PHX3 DC1 - 6 day w/ Holidays | Rosendin Electric, Inc | Level 1 | Gen Yard |  | Scott Masterson |  | Construction |  | Construction | Phase 2 |
| QTS-13561 |  | DH 1200 / Mechanical Yard // OFCI - L2 SET IN PLACE - Eq Type # - 3000A UPS Pods - 7 units | 5d | 2025-12-17 A | 2026-01-02 A | QTS-33821 FF, QTS-33831 FF, QTS-33841 FF, QTS-33851 FF, QTS-33861 FF, QTS-33871 FF, QTS-33881 | 100% |  | 2025-12-17 | 2025-12-22 |  |  | QTS-PHX3 DC1 - 6 day w/ Holidays | Rosendin Electric, Inc | Level 1 | Gen Yard | IGMP | Scott Masterson |  | Construction | 01ADMIN | Construction | Phase 2 |
| QTS-42481 |  | DH 1200 / Mechanical Yard // Wire Pull for MV Cables | 6d | 2026-01-14 | 2026-01-21 | QTS-41381 |  |  |  |  | 23d | 0d | QTS-PHX3 DC1 - 6 day w/ Holidays | Oregon Electric Group | Level 2 | Gen Yard | IGMP | Scott Masterson |  | Construction |  | Construction | Phase 1 |
| QTS-49991 |  | DH 1200 / Mechanical Yard // Install Cable Bus | 10d | 2026-01-14 | 2026-01-26 | QTS-6511, QTS-49711 |  |  |  |  | 9d | 0d | QTS-PHX3 DC1 - 6 day w/ Holidays | Oregon Electric Group | Level 2 | Gen Yard | IGMP | Scott Masterson |  | Construction | 01ADMIN | Construction | Phase 1 |
| QTS-42851 |  | DH 1200 / Mechanical Yard // Terminate MV at Transformers | 10d | 2026-01-17 | 2026-01-29 | QTS-42481 SS+3d |  |  |  |  | 23d | 3d | QTS-PHX3 DC1 - 6 day w/ Holidays | Oregon Electric Group | Level 2 | Gen Yard | IGMP | Scott Masterson |  | Construction |  | Construction | Phase 1 |
| QTS-15911 |  | DH 1200 / Mechanical Yard // Install Raceway from Generators to UPS Pods | 5d | 2026-01-27 | 2026-01-31 | QTS-41381, QTS-49991 |  |  |  |  | 9d | 0d | QTS-PHX3 DC1 - 6 day w/ Holidays | Rosendin Electric, Inc | Level 1 | Gen Yard | IGMP | Scott Masterson |  | Construction |  | Construction | Phase 2 |
| QTS-15151 |  | DH 1200 / Mechanical Yard // Install Raceway from Transformers to UPS Pods | 5d | 2026-01-29 | 2026-02-03 | QTS-14521, QTS-15911 SS+2d |  |  |  |  | 9d | 0d | QTS-PHX3 DC1 - 6 day w/ Holidays | Rosendin Electric, Inc | Level 1 | Gen Yard | IGMP | Scott Masterson |  | Construction |  | Construction | Phase 2 |
| QTS-17411 |  | DH 1200 / Mechanical Yard // Pull & Terminate from Generators to UPS Pods | 10d | 2026-02-02 | 2026-02-12 | QTS-15911 |  |  |  |  | 15d | 2d | QTS-PHX3 DC1 - 6 day w/ Holidays | Rosendin Electric, Inc | Level 1 | Gen Yard | IGMP | Scott Masterson |  | Construction |  | Construction | Phase 2 |
| QTS-1931 |  | DH 1200 / Mechanical Yard // Install FRP Platforms | 10d | 2026-02-03 | 2026-02-13 | QTS-13561, QTS-1341 |  |  |  |  | 61d | 13d | QTS-PHX3 DC1 - 6 day w/ Holidays | Advantic Building Group, LLC | Level 1 | Gen Yard | IGMP | Ron Carroll |  | Construction |  | Construction | Phase 2 |
| QTS-15901 |  | DH 1200 / Mechanical Yard // Pull & Terminate from Transformers to UPS Pods | 10d | 2026-02-04 | 2026-02-14 | QTS-15151 |  |  |  |  | 9d | 0d | QTS-PHX3 DC1 - 6 day w/ Holidays | Rosendin Electric, Inc | Level 1 | Gen Yard | IGMP | Scott Masterson |  | Construction |  | Construction | Phase 2 |
| QTS-1000300 |  | DH 1200 / Mechanical Yard // OFCI - L2 SET IN PLACE - Eq Type # - 2500KW Generator SCR - 7 units | 3d | 2026-02-13 | 2026-02-16 | QTS-40281, QTS-40121, QTS-39961, QTS-40481, QTS-40681, QTS-40881, QTS-41081, QTS-41381 |  |  |  |  | 32d | 0d | QTS-PHX3 DC1 - 6 day w/ Holidays | Rosendin Electric, Inc | Level 2 | Gen Yard |  | Scott Masterson |  | Construction | 01ADMIN | Construction | Phase 1 |
| QTS-1001210 |  | DH 1200 / Mechanical Yard // Pressure Test Generator Tanks | 2d | 2026-02-14 | 2026-02-16 | QTS-1000300 FF |  |  |  |  | 32d | 0d | QTS-PHX3 DC1 - 6 day w/ Holidays | Rosendin Electric, Inc | Level 2 | Gen Yard | IGMP | Dave Wiltberger | Phase 1 | Construction | 01ADMIN |  |  |

Notes:
- QTS-1001830: allucent_notes: David Wiltberger on 2025-08-19 09:08: changed pick order / allucent_notes_20251014_152335: David Wiltberger on 2025-08-19 09:08: changed pick order / David Wiltberger on 2025-09-02 10:09: Moving to accommodate roofing in Zone 1 / David Wiltberger on 2025-09-24 04:09: BAM not completed Potential Delay / David Wiltberger on 2025-09-30 12:09: BAM did not complete / David Wiltberger on 2025-10-14 10:10: set on recovery schedule / allucent_notes_20251202_153722: David Wiltberger on 2025-12-02 06:45: Grating install not complete for installation / allucent_notes_20251209_203830: David Wiltberger on 2025-12-02 06:45: Grating install not complete for installation / allucent_notes_20251216_165335: David Wiltberger on 2025-12-02 06:45: Grating install not complete for installation / allucent_notes: 2025-12-02 06:45 - User: David Wiltberger - Date Added: 2025-12-02 06:45 - Note: Grating install not complete for installation
- QTS-1001850: allucent_notes: David Wiltberger on 2025-08-19 09:08: changed pick order / allucent_notes_20251014_152335: David Wiltberger on 2025-08-19 09:08: changed pick order / David Wiltberger on 2025-09-02 10:09: Moving to accommodate roofing in Zone 1 / David Wiltberger on 2025-09-24 04:09: BAM not completed Potential Delay / David Wiltberger on 2025-09-30 12:09: BAM did not complete / David Wiltberger on 2025-10-14 10:10: set on recovery schedule / allucent_notes_20251202_153722: David Wiltberger on 2025-12-02 06:45: Grating install not complete for installation / allucent_notes_20251209_203830: David Wiltberger on 2025-12-02 06:45: Grating install not complete for installation / allucent_notes_20251216_165335: David Wiltberger on 2025-12-02 06:45: Grating install not complete for installation / allucent_notes: 2025-12-02 06:45 - User: David Wiltberger - Date Added: 2025-12-02 06:45 - Note: Grating install not complete for installation
- QTS-1001860: allucent_notes: David Wiltberger on 2025-08-19 09:08: changed pick order / allucent_notes_20251014_152335: David Wiltberger on 2025-08-19 09:08: changed pick order / David Wiltberger on 2025-09-02 10:09: Moving to accommodate roofing in Zone 1 / David Wiltberger on 2025-09-24 04:09: BAM not completed Potential Delay / David Wiltberger on 2025-09-30 12:09: BAM did not complete / David Wiltberger on 2025-10-14 10:10: set on recovery schedule / allucent_notes_20251202_153722: David Wiltberger on 2025-12-02 06:45: Grating install not complete for installation / allucent_notes_20251209_203830: David Wiltberger on 2025-12-02 06:45: Grating install not complete for installation / allucent_notes_20251216_165335: David Wiltberger on 2025-12-02 06:45: Grating install not complete for installation / allucent_notes: 2025-12-02 06:45 - User: David Wiltberger - Date Added: 2025-12-02 06:45 - Note: Grating install not complete for installation
- QTS-1001870: allucent_notes: David Wiltberger on 2025-08-19 09:08: changed pick order / allucent_notes_20251014_152335: David Wiltberger on 2025-08-19 09:08: changed pick order / David Wiltberger on 2025-09-02 10:09: Moving to accommodate roofing in Zone 1 / David Wiltberger on 2025-09-24 04:09: BAM not completed Potential Delay / David Wiltberger on 2025-09-30 12:09: BAM did not complete / David Wiltberger on 2025-10-14 10:10: set on recovery schedule / allucent_notes_20251202_153722: David Wiltberger on 2025-12-02 06:45: Grating install not complete for installation / allucent_notes_20251209_203830: David Wiltberger on 2025-12-02 06:45: Grating install not complete for installation / allucent_notes_20251216_165335: David Wiltberger on 2025-12-02 06:45: Grating install not complete for installation / allucent_notes: 2025-12-02 06:45 - User: David Wiltberger - Date Added: 2025-12-02 06:45 - Note: Grating install not complete for installation
- QTS-1001880: allucent_notes: David Wiltberger on 2025-08-19 09:08: changed pick order / allucent_notes_20251014_152335: David Wiltberger on 2025-08-19 09:08: changed pick order / David Wiltberger on 2025-09-02 10:09: Moving to accommodate roofing in Zone 1 / David Wiltberger on 2025-09-24 04:09: BAM not completed Potential Delay / David Wiltberger on 2025-09-30 12:09: BAM did not complete / David Wiltberger on 2025-10-14 10:10: set on recovery schedule / allucent_notes_20251202_153722: David Wiltberger on 2025-12-02 06:45: Grating install not complete for installation / allucent_notes_20251209_203830: David Wiltberger on 2025-12-02 06:45: Grating install not complete for installation / allucent_notes_20251216_165335: David Wiltberger on 2025-12-02 06:45: Grating install not complete for installation / allucent_notes: 2025-12-02 06:45 - User: David Wiltberger - Date Added: 2025-12-02 06:45 - Note: Grating install not complete for installation
- QTS-1001840: allucent_notes: David Wiltberger on 2025-08-19 09:08: changed pick order / allucent_notes_20251014_152335: David Wiltberger on 2025-08-19 09:08: changed pick order / David Wiltberger on 2025-09-02 10:09: Moving to accommodate roofing in Zone 1 / David Wiltberger on 2025-09-24 04:09: BAM not completed Potential Delay / David Wiltberger on 2025-09-30 12:09: BAM did not complete / David Wiltberger on 2025-10-14 10:10: set on recovery schedule / allucent_notes_20251202_153722: David Wiltberger on 2025-12-02 06:45: Grating install not complete for installation / allucent_notes_20251209_203830: David Wiltberger on 2025-12-02 06:45: Grating install not complete for installation / allucent_notes_20251216_165335: David Wiltberger on 2025-12-02 06:45: Grating install not complete for installation / allucent_notes: 2025-12-02 06:45 - User: David Wiltberger - Date Added: 2025-12-02 06:45 - Note: Grating install not complete for installation
- QTS-13561: allucent_notes_20251230_164549: enrique perez on 2025-12-01 10:41: we had to adjust zone 2 delivery dates to acomodate for the othe DCs / David Wiltberger on 2025-12-30 16:22: no update / allucent_notes_20251202_153722: enrique perez on 2025-12-01 10:41: we had to adjust zone 2 delivery dates to acomodate for the othe DCs / allucent_notes_20251209_203830: enrique perez on 2025-12-01 10:41: we had to adjust zone 2 delivery dates to acomodate for the othe DCs / allucent_notes_20251216_165335: enrique perez on 2025-12-01 10:41: we had to adjust zone 2 delivery dates to acomodate for the othe DCs / allucent_notes: 2025-12-01 10:41 - User: enrique perez - Date Added: 2025-12-01 10:41 - Note: we had to adjust zone 2 delivery dates to acomodate for the othe DCs / 2025-12-30 16:22 - User: David Wiltberger - Date Added: 2025-12-30 16:22 - Note: no update
- QTS-49991: allucent_notes_20251230_164549: Scott Masterson on 2025-12-16 16:16: We are not setting PODs in zone 2 till next week. the logistic of all three DCs impacted our schedule. / David Wiltberger on 2025-12-30 16:22: no update / allucent_notes_20251216_165335: Scott Masterson on 2025-12-16 16:16: We are not setting PODs in zone 2 till next week. the logistic of all three DCs impacted our schedule. / allucent_notes: 2025-12-16 16:16 - User: Scott Masterson - Date Added: 2025-12-16 16:16 - Note: We are not setting PODs in zone 2 till next week. the logistic of all three DCs impacted our schedule. / 2025-12-30 16:22 - User: David Wiltberger - Date Added: 2025-12-30 16

| ID | WBS | Activity | Duration | Start | Finish | Predecessors | Complete | Total float | Free float | Constraint | Calendar | Location | Project Section-1 | Phase-1-1 | Baseline | Layton Responsible Party | Project Section | Subcontractor | Allucent CSI Group | Level |
| --- | --- | --- | --- | --- | --- | --- | --- | --- | --- | --- | --- | --- | --- | --- | --- | --- | --- | --- | --- | --- |
|  | 6 | **DH 1200 / Commissioning** |  |  |  |  |  |  |  |  |  |  |  |  |  |  |  |  |  |  |
|  | 2 | **Level 3 Energization & Prefunctional Testing** |  |  |  |  |  |  |  |  |  |  |  |  |  |  |  |  |  |  |
|  | 1 | **Electrical** |  |  |  |  |  |  |  |  |  |  |  |  |  |  |  |  |  |  |
|  | 2 | **Mechanical** |  |  |  |  |  |  |  |  |  |  |  |  |  |  |  |  |  |  |
|  | 4 | **Level 4 Functional Testing** |  |  |  |  |  |  |  |  |  |  |  |  |  |  |  |  |  |  |
|  | 3 | **Level 5 Integrated Systems Testing** |  |  |  |  |  |  |  |  |  |  |  |  |  |  |  |  |  |  |
|  | 8 | **Data Hall 2300 (9MW)** |  | 2025-09-04 | 2026-04-30 |  |  |  |  |  |  |  |  |  |  |  |  |  |  |  |
| QTS-2081 |  | DH 2300 // Prime & Paint Exposed Structure | 10d | 2025-09-24 A | 2025-10-07 A | QTS-23381, QTS-23261 FF+1d | 100% |  |  |  |  | DH2300 | Construction | Phase 3 | IGMP | Doug Hayes | Construction |  |  |  |
| QTS-4661 |  | DH 2300 // Install Fire Sprinkler | 8d | 2025-10-08 A | 2025-10-17 A | QTS-2081, QTS-23381 | 100% |  |  |  |  | DH2300 | Construction | Phase 3 | IGMP | Dave Wiltberger | Construction | Olympic West Fire Protection | 01ADMIN |  |
| QTS-6951 |  | DH 2300 // Install Fire Caulking | 4d | 2025-10-08 A | 2025-10-13 A | QTS-2081, QTS-4661 SS | 100% |  |  |  |  | DH2300 | Construction | Phase 3 | IGMP | Doug Hayes | Construction |  | 01ADMIN |  |
| QTS-6941 |  | DH 2300 // Establish Control & Layout Walls | 5d | 2025-10-15 A | 2025-10-21 A | QTS-2081, QTS-6951 | 100% |  |  |  |  | DH2300 | Construction | Phase 3 | IGMP | Doug Hayes | Construction |  | 01ADMIN |  |
| QTS-8631 |  | DH 2300 // Perimeter Insulation | 4d | 2025-10-22 A | 2025-10-27 A | QTS-6951, QTS-6941, QTS-19981 | 100% |  |  |  |  | DH2300 | Construction | Phase 3 | IGMP | Ron Carroll | Construction |  | 01ADMIN |  |
|  | 3 | **Data Hall 2300** |  | 2026-01-20 | 2026-04-13 |  |  |  |  |  |  |  |  |  |  |  |  |  |  |  |
| QTS-10571 |  | DH 2300 // Frame Data Hall / Corridor Wall 2307 (East) | 5d | 2026-01-20 | 2026-01-24 | QTS-10351, QTS-6941, QTS-4661, QTS-6951, QTS-8631 |  | 6d | 0d |  | QTS-PHX3 DC1 - 6 day w/ Holidays | DH2300 | Construction | Phase 3 | IGMP | Sean Waisner | Construction | Performance Contracting, Inc. | 01ADMIN |  |
| QTS-11301 |  | DH 2300 // Rough In-Wall Electrical (East) | 5d | 2026-01-26 | 2026-01-30 | QTS-10571 |  | 6d | 0d |  | QTS-PHX3 DC1 - 6 day w/ Holidays | DH2300 | Construction | Phase 3 | IGMP | Scott Masterson | Construction | Rosendin Electric, Inc | 01ADMIN |  |
| QTS-102440 |  | DH 2300 // Top Out / Corridor Wall 2307 (East) - Data Hall Side | 3d | 2026-01-31 | 2026-02-03 | QTS-11301 |  | 6d | 0d |  | QTS-PHX3 DC1 - 6 day w/ Holidays | DH2100 | Construction |  | IGMP | Sean Waisner | Construction | Performance Contracting, Inc. | 01ADMIN | Level 2 |
| QTS-1000640 |  | DH 2300 // Install Overhead Conduit - Electrical | 5d | 2026-02-02 | 2026-02-06 | QTS-120000, QTS-1000590 |  | 13d | 0d |  | QTS-PHX3 DC1 - 6 day w/ Holidays | DH2100 | Construction |  | IGMP | Sean Waisner | Construction |  | 01ADMIN | Level 2 |
| QTS-1000650 |  | DH 2300 // Install Overhead Conduit - Controls | 5d | 2026-02-02 | 2026-02-06 | QTS-1000640 SS, QTS-120000 |  | 13d | 7d |  | QTS-PHX3 DC1 - 6 day w/ Holidays | DH2100 | Construction |  | IGMP | Sean Waisner | Construction |  | 01ADMIN | Level 2 |
| QTS-10581 |  | DH 2300 // Frame Data Hall / Corridor Wall 2015-2016 (West) | 5d | 2026-02-02 | 2026-02-06 | QTS-6951, QTS-8641 |  | 50d | 0d | start on or after 2026-01-22 | QTS-PHX3 DC1 - 6 day w/ Holidays | DH2300 | Construction | Phase 3 | IGMP | Sean Waisner | Construction | Performance Contracting, Inc. | 01ADMIN |  |
| QTS-102450 |  | DH 2300 // One Side Data Hall / Corridor Wall 2307 (East) - Data Hall Side | 3d | 2026-02-04 | 2026-02-06 | QTS-102440 |  | 6d | 0d |  | QTS-PHX3 DC1 - 6 day w/ Holidays | DH2100 | Construction |  | IGMP | Sean Waisner | Construction | Performance Contracting, Inc. | 01ADMIN | Level 2 |
| QTS-102460 |  | DH 2300 // Tape, & Finish Drywall (East) - Data Hall Side | 5d | 2026-02-07 | 2026-02-12 | QTS-102450 |  | 6d | 0d |  | QTS-PHX3 DC1 - 6 day w/ Holidays | DH2200 | Construction | Phase 2 | IGMP | Sean Waisner | Construction | Performance Contracting, Inc. |  |  |
| QTS-11281 |  | DH 2300 // Rough In-Wall Electrical (West) | 5d | 2026-02-07 | 2026-02-12 | QTS-10571, QTS-10581, QTS-38981 |  | 50d | 0d |  | QTS-PHX3 DC1 - 6 day w/ Holidays | DH2300 | Construction | Phase 3 | IGMP | Scott Masterson | Construction | Rosendin Electric, Inc | 01ADMIN |  |
| QTS-11291 |  | DH 2300 // Install Hollow Metal Frames (West) | 1d | 2026-02-07 | 2026-02-07 | QTS-10581 |  | 63d | 13d |  | QTS-PHX3 DC1 - 6 day w/ Holidays | DH2300 | Construction | Phase 3 | IGMP | Sean Waisner | Construction | Performance Contracting, Inc. | 01ADMIN |  |
| QTS-102280 |  | DH 2300 // Hang Drywall (West) - Corridor Side | 2d | 2026-02-13 | 2026-02-14 | QTS-11281 |  | 50d | 0d |  | QTS-PHX3 DC1 - 6 day w/ Holidays | DH2200 | Construction | Phase 2 | IGMP | Sean Waisner | Construction | Performance Contracting, Inc. |  |  |
| QTS-102470 |  | DH 2300 // Paint Walls (East) - Data Hall Side | 2d | 2026-02-13 | 2026-02-14 | QTS-102460 |  | 6d | 0d |  | QTS-PHX3 DC1 - 6 day w/ Holidays | DH2200 | Construction | Phase 2 | IGMP | Sean Waisner | Construction | Pennington Painting Company, LLC |  |  |
| QTS-102480 |  | DH 2300 // Insulate & Vapor Barrier Data Hall / Corridor Wall 2307 (East) | 2d | 2026-02-13 | 2026-02-14 | QTS-102450, QTS-102460 |  | 82d | 0d |  | QTS-PHX3 DC1 - 6 day w/ Holidays | DH2100 | Construction |  | IGMP | Sean Waisner | Construction | Performance Contracting, Inc. | 01ADMIN | Level 2 |
| QTS-12261 |  | DH 2300 // In Wall Inspection for Fan Wall | 1d | 2026-02-13 | 2026-02-13 | QTS-11281, QTS-11301 |  | 58d | 1d |  | QTS-PHX3 DC1 - 6 day w/ Holidays | DH2300 | Construction | Phase 3 | IGMP | Scott Masterson | Construction | Rosendin Electric, Inc | 01ADMIN |  |
| QTS-102290 |  | DH 2300 // Tape & Finish Drywall (West) - Corridor Side | 5d | 2026-02-16 | 2026-02-20 | QTS-102280 |  | 50d | 0d |  | QTS-PHX3 DC1 - 6 day w/ Holidays | DH2200 | Construction | Phase 2 | IGMP | Sean Waisner | Construction | Performance Contracting, Inc. |  |  |
| QTS-12451 |  | DH 2300 // Hang Drywall (East) - Corridor Side | 2d | 2026-02-16 | 2026-02-17 | QTS-11301, QTS-11301 FF, QTS-12261, QTS-102480 |  | 82d | 0d |  | QTS-PHX3 DC1 - 6 day w/ Holidays | DH2300 | Construction | Phase 3 | IGMP | Sean Waisner | Construction | Performance Contracting, Inc. |  |  |
| QTS-14261 |  | DH 2300 // Install Structural Ceiling Grid - North | 10d | 2026-02-16 | 2026-02-26 | QTS-102470, QTS-1000640, QTS-1000650 |  | 6d | 0d |  | QTS-PHX3 DC1 - 6 day w/ Holidays | DH2300 | Construction | Phase 3 | IGMP | Sean Waisner | Construction | Performance Contracting, Inc. | 01ADMIN |  |
| QTS-12731 |  | DH 2300 // Tape, & Finish Drywall (East) - Corridor Side | 5d | 2026-02-18 | 2026-02-23 | QTS-12451 |  | 82d | 0d |  | QTS-PHX3 DC1 - 6 day w/ Holidays | DH2300 | Construction | Phase 3 | IGMP | Sean Waisner | Construction | Performance Contracting, Inc. |  |  |
| QTS-102300 |  | DH 2300 // Vapor Barrier & Insulation (West) | 2d | 2026-02-21 | 2026-02-23 | QTS-102290 |  | 50d | 0d |  | QTS-PHX3 DC1 - 6 day w/ Holidays | DH2100 | Construction |  | IGMP | Sean Waisner | Construction | Performance Contracting, Inc. | 01ADMIN | Level 2 |
| QTS-12441 |  | DH 2300 // Hang Drywall (West) - Data Hall Side | 2d | 2026-02-24 | 2026-02-25 | QTS-11281, QTS-10571, QTS-10581, QTS-11291, QTS-12261, QTS-102300 |  | 50d | 0d |  | QTS-PHX3 DC1 - 6 day w/ Holidays | DH2300 | Construction | Phase 3 | IGMP | Sean Waisner | Construction | Performance Contracting, Inc. |  |  |
| QTS-13421 |  | DH 2300 // Paint Walls (East) - Corridor Side | 2d | 2026-02-24 | 2026-02-25 | QTS-12451, QTS-12731 |  | 82d | 40d |  | QTS-PHX3 DC1 - 6 day w/ Holidays | DH2300 | Construction | Phase 3 | IGMP | Sean Waisner | Construction | Pennington Painting Company, LLC |  |  |
| QTS-12721 |  | DH 2300 // Tape, & Finish Drywall (West) - Data Hall Side | 5d | 2026-02-26 | 2026-03-03 | QTS-12441 |  | 50d | 0d |  | QTS-PHX3 DC1 - 6 day w/ Holidays | DH2300 | Construction | Phase 3 | IGMP | Sean Waisner | Construction | Performance Contracting, Inc. |  |  |
| QTS-1003580 |  | DH 2300 // Install Structural Ceiling Grid - South | 10d | 2026-02-27 | 2026-03-10 | QTS-14261 |  | 6d | 0d |  | QTS-PHX3 DC1 - 6 day w/ Holidays | DH2300 | Construction | Phase 3 | IGMP | Sean Waisner | Construction | Performance Contracting, Inc. | 01ADMIN |  |
| QTS-13411 |  | DH 2300 // Paint Walls (West) | 2d | 2026-03-04 | 2026-03-05 | QTS-12441, QTS-12721 |  | 50d | 0d |  | QTS-PHX3 DC1 - 6 day w/ Holidays | DH2300 | Construction | Phase 3 | IGMP | Sean Waisner | Construction | Pennington Painting Company, LLC |  |  |
| QTS-13871 |  | DH 2300 // Install Telecom Sleeves | 3d | 2026-03-06 | 2026-03-09 | QTS-13411, QTS-102470 |  | 50d |  |  | QTS-PHX3 DC1 - 6 day w/ Holidays | DH2300 | Construction | Phase 3 | IGMP | Scott Masterson | Construction | Rosendin Electric, Inc |  |  |
| QTS-14981 |  | DH 2300 // Install VESDA | 10d | 2026-03-11 | 2026-03-21 | QTS-1003580, QTS-14261 SS+3d, QTS-102470 |  | 6d | 0d |  | QTS-PHX3 DC1 - 6 day w/ Holidays | DH2300 | Construction | Phase 3 | IGMP | Scott Masterson | Construction | Rosendin Electric, Inc |  |  |
| QTS-16101 |  | DH 2300 // Install Overhead Lighting | 10d | 2026-03-13 | 2026-03-24 | QTS-1003580, QTS-14261, QTS-14981 FF+2d |  | 6d | 0d |  | QTS-PHX3 DC1 - 6 day w/ Holidays | DH2300 | Construction | Phase 3 | IGMP | Scott Masterson | Construction | Rosendin Electric, Inc |  |  |
| QTS-102490 |  | DH 2300 // Frame Data Hall / Corridor Wall 2307 (East) - 14x14 Leave Outs | 1d | 2026-03-18 | 2026-03-18 | QTS-46691, QTS-14311, QTS-15321, QTS - 7550 |  | 75d | 0d |  | QTS-PHX3 DC1 - 6 day w/ Holidays | DH2100 | Construction |  | IGMP | Sean Waisner | Construction | Performance Contracting, Inc. | 01ADMIN | Level 2 |
| QTS-11311 |  | DH 2300 // Install Hollow Metal Frames (East) - 14x14 Leave Out | 1d | 2026-03-18 | 2026-03-18 | QTS-10571, QTS-102490 FF |  | 75d | 0d |  | QTS-PHX3 DC1 - 6 day w/ Holidays | DH2300 | Construction | Phase 3 | IGMP | Sean Waisner | Construction | Performance Contracting, Inc. | 01ADMIN |  |
| QTS-102500 |  | DH 2300 // Hang Drywall Data Hall / Corridor Wall 2307 (East) - 14x14 Leave Outs | 1d | 2026-03-19 | 2026-03-19 | QTS-102490, QTS-11311 |  | 75d | 0d |  | QTS-PHX3 DC1 - 6 day w/ Holidays | DH2100 | Construction |  | IGMP | Sean Waisner | Construction | Performance Contracting, Inc. | 01ADMIN | Level 2 |
| QTS-102510 |  | DH 2300 // Tape & Finish Drywall Data Hall / Corridor Wall 2307 (East) - 14x14 Leave Outs | 5d | 2026-03-20 | 2026-03-25 | QTS-102500 |  | 75d | 0d |  | QTS-PHX3 DC1 - 6 day w/ Holidays | DH2100 | Construction |  | IGMP | Sean Waisner | Construction | Performance Contracting, Inc. | 01ADMIN | Level 2 |
| QTS-17581 |  | DH 2300 // Install Ceiling Tile | 7d | 2026-03-25 | 2026-04-01 | QTS-16101 |  | 42d | 0d |  | QTS-PHX3 DC1 - 6 day w/ Holidays | DH2300 | Construction | Phase 3 | IGMP | Sean Waisner | Construction | Performance Contracting, Inc. |  |  |
| QTS-17591 |  | DH 2300 // Install Fire Sprinkler Heads | 5d | 2026-03-25 | 2026-03-30 | QTS-16101 |  | 6d | 0d |  | QTS-PHX3 DC1 - 6 day w/ Holidays | DH2300 | Construction | Phase 3 | IGMP | Dave Wiltberger | Construction | Olympic West Fire Protection |  |  |
| QTS-102520 |  | DH 2300 // Paint Data Hall / Corridor Wall 2307 (East) - 14x14 Leave Outs | 1d | 2026-03-26 | 2026-03-26 | QTS-102510 |  | 75d | 33d |  | QTS-PHX3 DC1 - 6 day w/ Holidays | DH2100 | Construction |  | IGMP | Sean Waisner | Construction | Pennington Painting Company, LLC | 01ADMIN | Level 2 |
| QTS-18441 |  | DH 2300 // Install Temporary Hot Aisle Containment | 10d | 2026-04-02 | 2026-04-13 | QTS-17581, QTS-17591 |  | 42d | 0d |  | QTS-PHX3 DC1 - 6 day w/ Holidays | DH2300 | Construction | Phase 3 | IGMP | Sean Waisner | Construction | Performance Contracting, Inc. |  |  |

Notes:
- QTS-6941: allucent_notes_20251014_152335: Jason Johnston on 2025-10-14 15:10: Moving out to accommodate acceleration in Zone 1 / allucent_notes_20251021_145627: Jason Johnston on 2025-10-14 15:10: Moving out to accommodate acceleration in Zone 1 / Zack Goertz on 2025-10-21T17:24:54.415Z: Layout is complete, Work got shifted to BOH first. / allucent_notes: 2025-10-14 15:10 - User: Jason Johnston - Date Added: 2025-10-14 15:10 - Note: Moving out to accommodate acceleration in Zone 1 / 2025-10-21T17:24:54.415Z - User: Zack Goertz - Date Added: 2025-10-21T17:24:54.415Z - Note: Layout is complete, Work got shi
- QTS-10571: allucent_notes_20251230_164549: Jason Johnston on 2025-10-28 16:10: Need to tie to fan wall finish. / allucent_notes_20251028_163138: Jason Johnston on 2025-10-28 16:10: Need to tie to fan wall finish. / allucent_notes_20251104_160200: Jason Johnston on 2025-10-28 16:10: Need to tie to fan wall finish. / allucent_notes_20251111_182405: Jason Johnston on 2025-10-28 16:10: Need to tie to fan wall finish. / allucent_notes_20251118_192630: Jason Johnston on 2025-10-28 16:10: Need to tie to fan wall finish. / allucent_notes_20251209_203830: Jason Johnston on 2025-10-28 16:10: Need to tie to fan wall finish. / allucent_notes_20251216_165335: Jason Johnston on 2025-10-28 16:10: Need to tie to fan wall finish. / Notes: 1/20/26: Beam wrapping needs to complete before the framing can begin. / allucent_notes: 2025-10-28 16:10 - User: Jason Johnston - Date Added: 2025-10-28 16:10 - Note: Need to tie to fan wall finish.
- QTS-102440: allucent_notes_20251014_152335: Zack Goertz on 2025-09-08T20:45:26.651Z: Not started. PCI has been put on notice that they are behind / Jason Johnston on 2025-10-08 08:10: not done / allucent_notes: 2025-09-08T20:45:26.651Z - User: Zack Goertz - Date Added: 2025-09-08T20:45:26.651Z - Note: Not started. PCI has been put on notice that they are behind / 2025-10-08 08:10 - User: Jason Johnston - Date Added: 2025-10-08 08:10 - Note: not done
- QTS-10581: allucent_notes_20251230_164549: David Wiltberger on 2025-12-30 16:22: no update / allucent_notes: 2025-12-30 16:22 - User: David Wiltberger - Date Added: 2025-12-30 16:22 - Note: no update
- QTS-102450: allucent_notes_20251014_152335: Zack Goertz on 2025-09-08T20:45:26.651Z: Not started. PCI has been put on notice that they are behind / Jason Johnston on 2025-10-08 08:10: not done / allucent_notes: 2025-09-08T20:45:26.651Z - User: Zack Goertz - Date Added: 2025-09-08T20:45:26.651Z - Note: Not started. PCI has been put on notice that they are behind / 2025-10-08 08:10 - User: Jason Johnston - Date Added: 2025-10-08 08:10 - Note: not done
- QTS-102480: allucent_notes_20251014_152335: Zack Goertz on 2025-09-08T20:45:26.651Z: Not started. PCI has been put on notice that they are behind / Jason Johnston on 2025-10-08 08:10: not done / allucent_notes: 2025-09-08T20:45:26.651Z - User: Zack Goertz - Date Added: 2025-09-08T20:45:26.651Z - Note: Not started. PCI has been put on notice that they are behind / 2025-10-08 08:10 - User: Jason Johnston - Date Added: 2025-10-08 08:10 - Note: not done
- QTS-102490: allucent_notes_20251014_152335: Zack Goertz on 2025-09-08T20:45:26.651Z: Not started. PCI has been put on notice that they are behind / Jason Johnston on 2025-10-08 08:10: not done / allucent_notes: 2025-09-08T20:45:26.651Z - User: Zack Goertz - Date Added: 2025-09-08T20:45:26.651Z - Note: Not started. PCI has been put on notice that they are behind / 2025-10-08 08:10 - User: Jason Johnston - Date Added: 2025-10-08 08:10 - Note: not done
- QTS-102500: allucent_notes_20251014_152335: Zack Goertz on 2025-09-08T20:45:26.651Z: Not started. PCI has been put on notice that they are behind / Jason Johnston on 2025-10-08 08:10: not done / allucent_notes: 2025-09-08T20:45:26.651Z - User: Zack Goertz - Date Added: 2025-09-08T20:45:26.651Z - Note: Not started. PCI has been put on notice that they are behind / 2025-10-08 08:10 - User: Jason Johnston - Date Added: 2025-10-08 08:10 - Note: not done
- QTS-102510: allucent_notes_20251014_152335: Zack Goertz on 2025-09-08T20:45:26.651Z: Not started. PCI has been put on notice that they are behind / Jason Johnston on 2025-10-08 08:10: not done / allucent_notes: 2025-09-08T20:45:26.651Z - User: Zack Goertz - Date Added: 2025-09-08T20:45:26.651Z - Note: Not started. PCI has been put on notice that they are behind / 2025-10-08 08:10 - User: Jason Johnston - Date Added: 2025-10-08 08:10 - Note: not done
- QTS-102520: allucent_notes_20251014_152335: Zack Goertz on 2025-09-08T20:45:26.651Z: Not started. PCI has been put on notice that they are behind / Jason Johnston on 2025-10-08 08:10: not done / allucent_notes: 2025-09-08T20:45:26.651Z - User: Zack Goertz - Date Added: 2025-09-08T20:45:26.651Z - Note: Not started. PCI has been put on notice that they are behind / 2025-10-08 08:10 - User: Jason Johnston - Date Added: 2025-10-08 08:10 - Note: not done

| ID | WBS | Activity | Duration | Start | Finish | Predecessors | Complete | Planned start | Planned finish | Total float | Free float | Calendar | Subcontractor | Location | Project Section-1 | Phase-1-1 | Baseline | Layton Responsible Party | Project Section | Allucent CSI Group | Level |
| --- | --- | --- | --- | --- | --- | --- | --- | --- | --- | --- | --- | --- | --- | --- | --- | --- | --- | --- | --- | --- | --- |
|  | 2 | **Gallery 2301 Mechanical** |  | 2025-10-31 | 2026-04-25 |  |  |  |  |  |  |  |  |  |  |  |  |  |  |  |  |
| QTS-13881 |  | DH 2300 / Mechanical Gallery 2301 // Install VESDA | 8d | 2025-10-31 A | 2025-11-11 A | QTS-2081 | 100% |  |  |  |  |  | Rosendin Electric, Inc | DH2300 | Construction | Phase 3 | IGMP | Scott Masterson | Construction | 01ADMIN |  |
| QTS-44521 |  | DH 2300 / Mechanical Gallery 2301 // Install OH Mechanical Hangers | 7d | 2025-11-13 A | 2026-01-12 A | QTS-2081, QTS-120000 | 100% | 2025-11-21 | 2025-12-01 |  |  | QTS-PHX3 DC1 - 6 day w/ Holidays | Bel-Aire Mechanical, LLC | DH2100 | Construction |  | IGMP | Dave Wiltberger | Construction | 01ADMIN | Level 2 |
| QTS-13891 |  | DH 2300 / Mechanical Gallery 2301 // OH Mechanical Piping | 10d | 2026-01-14 | 2026-01-26 | QTS-44521 |  |  |  | 0d |  | QTS-PHX3 DC1 - 6 day w/ Holidays | Bel-Aire Mechanical, LLC | DH2300 | Construction | Phase 3 | IGMP | Dave Wiltberger | Construction | 01ADMIN |  |
| QTS-8641 |  | DH 2300 / Mechanical Gallery 2301 // Frame for 2301-2302 Wall | 5d | 2026-01-27 | 2026-01-31 | QTS-13891, QTS-6941, QTS-19981 |  |  |  | 0d |  | QTS-PHX3 DC1 - 6 day w/ Holidays | Performance Contracting, Inc. | DH2300 | Construction | Phase 3 | IGMP | Sean Waisner | Construction | 01ADMIN |  |
| QTS-10611 |  | DH 2300 / Mechanical Gallery 2301 // In Wall Electrical Rough for 2301-2302 Wall | 2d | 2026-02-02 | 2026-02-03 | QTS-8641, QTS-38981 |  |  |  | 0d |  | QTS-PHX3 DC1 - 6 day w/ Holidays | Rosendin Electric, Inc | DH2300 | Construction | Phase 3 | IGMP | Scott Masterson | Construction | 01ADMIN |  |
| QTS-10621 |  | DH 2300 / Mechanical Gallery 2301 // Frame Fan Wall | 5d | 2026-02-02 | 2026-02-06 | QTS-8641, QTS-10601, QTS-11611 |  |  |  | 23d | 0d | QTS-PHX3 DC1 - 6 day w/ Holidays | Performance Contracting, Inc. | DH2300 | Construction | Phase 3 | IGMP | Sean Waisner | Construction | 01ADMIN |  |
| QTS-10911 |  | DH 2300 / Mechanical Gallery 2301 // In Wall Inspection for 2301-2302 Wall | 1d | 2026-02-04 | 2026-02-04 | QTS-10611 |  |  |  | 0d |  | QTS-PHX3 DC1 - 6 day w/ Holidays | Rosendin Electric, Inc | DH2300 | Construction | Phase 3 | IGMP | Scott Masterson | Construction | 01ADMIN |  |
| QTS-11321 |  | DH 2300 / Mechanical Gallery 2301 // Top Out Drywall for 2301-2302 Wall - MG Side | 3d | 2026-02-05 | 2026-02-07 | QTS-10911 |  |  |  | 0d |  | QTS-PHX3 DC1 - 6 day w/ Holidays | Performance Contracting, Inc. | DH2300 | Construction | Phase 3 | IGMP | Sean Waisner | Construction | 01ADMIN |  |
| QTS-11661 |  | DH 2300 / Mechanical Gallery 2301 // In Wall Electrical Rough for Fan Wall | 2d | 2026-02-07 | 2026-02-09 | QTS-10621 |  |  |  | 23d | 0d | QTS-PHX3 DC1 - 6 day w/ Holidays | Rosendin Electric, Inc | DH2300 | Construction | Phase 3 | IGMP | Scott Masterson | Construction | 01ADMIN |  |
| QTS-13901 |  | DH 2300 / Mechanical Gallery 2301 // Install Security Screen Above Fan Wall | 3d | 2026-02-07 | 2026-02-10 | QTS-10621, QTS-99680 |  |  |  | 33d | 18d | QTS-PHX3 DC1 - 6 day w/ Holidays | Performance Contracting, Inc. | DH2300 | Construction | Phase 3 | IGMP | Sean Waisner | Construction | 01ADMIN |  |
| QTS-1003590 |  | DH 2300 / Mechanical Gallery 2301 // Tape & Drywall for 2301-2302 Wall - MG Side -Top Out | 4d | 2026-02-09 | 2026-02-12 | QTS-11321 |  |  |  | 35d | 0d | QTS-PHX3 DC1 - 6 day w/ Holidays | Performance Contracting, Inc. | DH2300 | Construction | Phase 3 | IGMP | Sean Waisner | Construction | 01ADMIN |  |
| QTS-1003650 |  | DH 2300 / Mechanical Gallery 2301 // Insulate for 2301-2302 Wall - Top Out | 2d | 2026-02-09 | 2026-02-10 | QTS-11321 |  |  |  | 0d |  | QTS-PHX3 DC1 - 6 day w/ Holidays | Rosendin Electric, Inc | DH2300 | Construction | Phase 3 | IGMP | Scott Masterson | Construction | 01ADMIN |  |
| QTS-12031 |  | DH 2300 / Mechanical Gallery 2301 // In Wall Inspection for Fan Wall | 1d | 2026-02-10 | 2026-02-10 | QTS-11661 |  |  |  | 23d | 0d | QTS-PHX3 DC1 - 6 day w/ Holidays | Rosendin Electric, Inc | DH2300 | Construction | Phase 3 | IGMP | Scott Masterson | Construction | 01ADMIN |  |
| QTS-1003620 |  | DH 2300 / Mechanical Gallery 2301 // Top Out Drywall for 2301-2302 Wall - EG Side | 3d | 2026-02-11 | 2026-02-13 | QTS-1003650 |  |  |  | 0d |  | QTS-PHX3 DC1 - 6 day w/ Holidays | Performance Contracting, Inc. | DH2300 | Construction | Phase 3 | IGMP | Sean Waisner | Construction | 01ADMIN |  |
| QTS-12291 |  | DH 2300 / Mechanical Gallery 2301 // Hang, Tape, & Finish Fan Drywall | 5d | 2026-02-11 | 2026-02-16 | QTS-12031 |  |  |  | 23d | 0d | QTS-PHX3 DC1 - 6 day w/ Holidays | Performance Contracting, Inc. | DH2300 | Construction | Phase 3 | IGMP | Sean Waisner | Construction | 01ADMIN |  |
| QTS-1003600 |  | DH 2300 / Mechanical Gallery 2301 // Prime & Paint for 2301-2302 Wall - MG Side -Top Out | 2d | 2026-02-13 | 2026-02-14 | QTS-1003590 |  |  |  | 35d | 0d | QTS-PHX3 DC1 - 6 day w/ Holidays | Performance Contracting, Inc. | DH2300 | Construction | Phase 3 | IGMP | Sean Waisner | Construction | 01ADMIN |  |
| QTS-1003630 |  | DH 2300 / Mechanical Gallery 2301 // Tape & Drywall for 2301-2302 Wall - EG Side -Top Out | 4d | 2026-02-14 | 2026-02-18 | QTS-1003620 |  |  |  | 40d | 0d | QTS-PHX3 DC1 - 6 day w/ Holidays | Performance Contracting, Inc. | DH2300 | Construction | Phase 3 | IGMP | Sean Waisner | Construction | 01ADMIN |  |
| QTS-1003660 |  | DH 2300 / Mechanical Gallery 2301 // Hang Drywall for 2301-2302 Wall - MG Side - Remaining | 3d | 2026-02-14 | 2026-02-17 | QTS-1003620 |  |  |  | 0d |  | QTS-PHX3 DC1 - 6 day w/ Holidays | Performance Contracting, Inc. | DH2300 | Construction | Phase 3 | IGMP | Sean Waisner | Construction | 01ADMIN |  |
| QTS-15651 |  | DH 2300 / Mechanical Gallery 2301 // Install OH Electrical, FA/ EPMS/BMS Conduit & Grounding | 10d | 2026-02-16 | 2026-02-26 | QTS-1003600, QTS-13891 |  |  |  | 35d | 20d | QTS-PHX3 DC1 - 6 day w/ Holidays | Rosendin Electric, Inc | DH2300 | Construction | Phase 3 | IGMP | Scott Masterson | Construction | 01ADMIN |  |
| QTS-13071 |  | DH 2300 / Mechanical Gallery 2301 // Paint Fan Walls | 5d | 2026-02-17 | 2026-02-21 | QTS-12291 |  |  |  | 23d | 8d | QTS-PHX3 DC1 - 6 day w/ Holidays | Pennington Painting Company, LLC | DH2300 | Construction | Phase 3 | IGMP | Sean Waisner | Construction |  |  |
| QTS-1003670 |  | DH 2300 / Mechanical Gallery 2301 // Tape & Drywall for 2301-2302 Wall - MG Side - Remaining | 4d | 2026-02-18 | 2026-02-21 | QTS-1003660 |  |  |  | 27d | 0d | QTS-PHX3 DC1 - 6 day w/ Holidays | Performance Contracting, Inc. | DH2300 | Construction | Phase 3 | IGMP | Sean Waisner | Construction | 01ADMIN |  |
| QTS-1003710 |  | DH 2300 / Mechanical Gallery 2301 // Insulate for 2301-2302 Wall - Remaining | 2d | 2026-02-18 | 2026-02-19 | QTS-1003660 |  |  |  | 0d |  | QTS-PHX3 DC1 - 6 day w/ Holidays | Rosendin Electric, Inc | DH2300 | Construction | Phase 3 | IGMP | Scott Masterson | Construction | 01ADMIN |  |
| QTS-1003640 |  | DH 2300 / Mechanical Gallery 2301 // Prime & Paint for 2301-2302 Wall - EG Side -Top Out | 2d | 2026-02-19 | 2026-02-20 | QTS-1003630 |  |  |  | 40d | 0d | QTS-PHX3 DC1 - 6 day w/ Holidays | Performance Contracting, Inc. | DH2300 | Construction | Phase 3 | IGMP | Sean Waisner | Construction | 01ADMIN |  |
| QTS-1003690 |  | DH 2300 / Mechanical Gallery 2301 // Hang Drywall for 2301-2302 Wall - EG Side - Remaining | 3d | 2026-02-20 | 2026-02-23 | QTS-1003710, QTS-10911 |  |  |  | 0d |  | QTS-PHX3 DC1 - 6 day w/ Holidays | Performance Contracting, Inc. | DH2300 | Construction | Phase 3 | IGMP | Sean Waisner | Construction | 01ADMIN |  |
| QTS-1003680 |  | DH 2300 / Mechanical Gallery 2301 // Prime & Paint for 2301-2302 Wall - MG Side - Remaining | 2d | 2026-02-23 | 2026-02-24 | QTS-1003670 |  |  |  | 27d | 12d | QTS-PHX3 DC1 - 6 day w/ Holidays | Performance Contracting, Inc. | DH2300 | Construction | Phase 3 | IGMP | Sean Waisner | Construction | 01ADMIN |  |
| QTS-1003700 |  | DH 2300 / Mechanical Gallery 2301 // Tape & Drywall for 2301-2302 Wall - EG Side - Remaining | 4d | 2026-02-24 | 2026-02-27 | QTS-1003690 |  |  |  | 0d |  | QTS-PHX3 DC1 - 6 day w/ Holidays | Performance Contracting, Inc. | DH2300 | Construction | Phase 3 | IGMP | Sean Waisner | Construction | 01ADMIN |  |
| QTS-13061 |  | DH 2300 / Mechanical Gallery 2301 // Paint Walls for 2301-2302 Wall - EG Side - Remaining | 3d | 2026-02-28 | 2026-03-03 | QTS-1003700 |  |  |  | 0d |  | QTS-PHX3 DC1 - 6 day w/ Holidays | Pennington Painting Company, LLC | DH2300 | Construction | Phase 3 | IGMP | Sean Waisner | Construction | 01ADMIN |  |
| QTS-13431 |  | DH 2300 / Mechanical Gallery 2301 // Top of Wall Fire Stop for 2301-2302 Wall | 2d | 2026-03-04 | 2026-03-05 | QTS-13061 |  |  |  | 0d |  | QTS-PHX3 DC1 - 6 day w/ Holidays | Alpha Insulation & Waterproofing, Inc. | DH2300 | Construction | Phase 3 | IGMP | Sean Waisner | Construction | 01ADMIN |  |
| QTS-14311 |  | DH 2300 / Mechanical Gallery 2301 // OFCI - L2 SET IN PLACE - Eq Type # - DH CRAH - 14 units | 6d | 2026-03-04 | 2026-03-10 | QTS-13061, QTS-36781, QTS-36791, QTS-36801, QTS-36811, QTS-36821, QTS-36831, QTS-36841, QTS-36851, QTS-36861, QTS-36871, QTS-36881, QTS-36891, QTS-36901, QTS-36911, QTS-13901, QTS-13071 |  |  |  | 15d | 0d | QTS-PHX3 DC1 - 6 day w/ Holidays | Bel-Aire Mechanical, LLC | DH2300 | Construction | Phase 3 | IGMP | Dave Wiltberger | Construction |  |  |
| QTS-46691 |  | DH 2300 / Mechanical Gallery 2301 // OFCI - L2 SET IN PLACE - Eq Type # - EG CRAH - 4 units | 6d | 2026-03-04 | 2026-03-10 | QTS-13061, QTS-37061, QTS-37071, QTS-37081, QTS-37091 |  |  |  | 15d | 0d | QTS-PHX3 DC1 - 6 day w/ Holidays | Bel-Aire Mechanical, LLC | DH2300 | Construction | Phase 3 | IGMP | Dave Wiltberger | Construction | 01ADMIN |  |
| QTS-46711 |  | DH 2300 / Mechanical Gallery 2301 // Set BMS & EPMS Panels | 4d | 2026-03-04 | 2026-03-07 | QTS-13061 |  |  |  | 42d | 27d | QTS-PHX3 DC1 - 6 day w/ Holidays | Rosendin Electric, Inc | DH2100 | Construction |  | IGMP | Scott Masterson | Construction | 01ADMIN | Level 2 |
| QTS-15501 |  | DH 2300 / Mechanical Gallery 2301 // DH CRAH Unit Mechanical Connections | 10d | 2026-03-11 | 2026-03-21 | QTS-14311 |  |  |  | 15d | 0d | QTS-PHX3 DC1 - 6 day w/ Holidays | Bel-Aire Mechanical, LLC | DH2300 | Construction | Phase 3 | IGMP | Dave Wiltberger | Construction |  |  |
| QTS-15511 |  | DH 2300 / Mechanical Gallery 2301 // Install Angle Seal Around Units | 2d | 2026-03-11 | 2026-03-12 | QTS-14311 |  |  |  | 27d | 9d | QTS-PHX3 DC1 - 6 day w/ Holidays | Performance Contracting, Inc. | DH2300 | Construction | Phase 3 | IGMP | Sean Waisner | Construction |  |  |
| QTS-16351 |  | DH 2300 / Mechanical Gallery 2301 // OFCI - L2 SET IN PLACE - Eq Type # - MOD-03 - 7 units | 10d | 2026-03-11 | 2026-03-21 | QTS-1003680, QTS-36571, QTS-36581, QTS-36591, QTS-36601, QTS-36611, QTS-36621, QTS-36631, QTS-14311 |  |  |  | 15d | 0d | QTS-PHX3 DC1 - 6 day w/ Holidays | Rosendin Electric, Inc | DH2300 | Construction | Phase 3 | IGMP | Scott Masterson | Construction |  |  |
| QTS-43921 |  | DH 2300 / Mechanical Gallery 2301 // OFCI - L2 SET IN PLACE - Eq Type # - MOD-02 - 7 units | 10d | 2026-03-11 | 2026-03-21 | QTS-36511, QTS-36521, QTS-36531, QTS-36541, QTS-36551, QTS-36561, QTS-36641, QTS-36511 FF, QTS-14311, QTS-13891 |  |  |  | 15d | 0d | QTS-PHX3 DC1 - 6 day w/ Holidays | Rosendin Electric, Inc | DH2300 | Construction | Phase 3 | IGMP | Scott Masterson | Construction |  |  |
| QTS-46701 |  | DH 2300 / Mechanical Gallery 2301 // EG CRAH Unit Mechanical Connections | 10d | 2026-03-11 | 2026-03-21 | QTS-46691 |  |  |  | 15d | 0d | QTS-PHX3 DC1 - 6 day w/ Holidays | Bel-Aire Mechanical, LLC | DH2300 | Construction | Phase 3 | IGMP | Dave Wiltberger | Construction |  |  |
| QTS-14531 |  | DH 2300 / Mechanical Gallery 2301 // Install Raceway from UPS Pod to MOD-02/03 Boards | 10d | 2026-03-23 | 2026-04-02 | QTS-15651, QTS-13571 FF+3d, QTS-16351, QTS-43921, QTS-13431, QTS-46701, QTS-15501, QTS-14771 |  |  |  | 15d | 0d | QTS-PHX3 DC1 - 6 day w/ Holidays | Rosendin Electric, Inc | DH2300 | Construction | Phase 3 | IGMP | Scott Masterson | Construction |  |  |
| QTS-17011 |  | DH 2300 / Mechanical Gallery 2301 // Set Humidifier | 1d | 2026-03-23 | 2026-03-23 | QTS-15501, QTS-13901, QTS-36051 |  |  |  | 18d | 0d | QTS-PHX3 DC1 - 6 day w/ Holidays | Bel-Aire Mechanical, LLC | DH2300 | Construction | Phase 3 | IGMP | Dave Wiltberger | Construction |  |  |
| QTS-17201 |  | DH 2300 / Mechanical Gallery 2301 // Tie-In MEP to Humidifiers | 6d | 2026-03-24 | 2026-03-30 | QTS-17011, QTS-14311, QTS-13891 FF, QTS-15511 |  |  |  | 18d | 3d | QTS-PHX3 DC1 - 6 day w/ Holidays | Bel-Aire Mechanical, LLC | DH2300 | Construction | Phase 3 | IGMP | Dave Wiltberger | Construction |  |  |
| QTS-15641 |  | DH 2300 / Mechanical Gallery 2301 // Install Electrical Tray | 5d | 2026-04-03 | 2026-04-08 | QTS-13891, QTS-15501, QTS-17201, QTS-14531 |  |  |  | 15d | 0d | QTS-PHX3 DC1 - 6 day w/ Holidays | Rosendin Electric, Inc | DH2300 | Construction | Phase 3 | IGMP | Scott Masterson | Construction |  |  |
| QTS-43821 |  | DH 2300 / Mechanical Gallery 2301 // Pull & Terminate from UPS Pod to MOD-02/03 Boards | 5d | 2026-04-03 | 2026-04-08 | QTS-14531 |  |  |  | 26d | 0d | QTS-PHX3 DC1 - 6 day w/ Holidays | Rosendin Electric, Inc | DH2300 | Construction | Phase 3 | IGMP | Scott Masterson | Construction |  |  |
| QTS-16591 |  | DH 2300 / Mechanical Gallery 2301 // Install Basket Tray for LV | 5d | 2026-04-09 | 2026-04-14 | QTS-15641, QTS-46711 |  |  |  | 15d | 0d | QTS-PHX3 DC1 - 6 day w/ Holidays | Rosendin Electric, Inc | DH2300 | Construction | Phase 3 | IGMP | Scott Masterson | Construction |  |  |
| QTS-44541 |  | DH 2300 / Mechanical Gallery 2301 // Install Lighting, Security, and Devices | 5d | 2026-04-09 | 2026-04-14 | QTS-43821 |  |  |  | 63d | 40d | QTS-PHX3 DC1 - 6 day w/ Holidays | Securitas Technology Corporation | DH2100 | Construction |  | IGMP | Scott Masterson | Construction |  | Level 2 |
| QTS-46721 |  | DH 2300 / Mechanical Gallery 2301 // Pull & Terminate from MOD-02 to CRAHs | 4d | 2026-04-09 | 2026-04-13 | QTS-43821 |  |  |  | 26d | 0d | QTS-PHX3 DC1 - 6 day w/ Holidays | Rosendin Electric, Inc | DH2300 | Construction | Phase 3 | IGMP | Scott Masterson | Construction |  |  |
| QTS-46731 |  | DH 2300 / Mechanical Gallery 2301 // Pull & Terminate from MOD-02 to DOAS | 4d | 2026-04-14 | 2026-04-17 | QTS-46721 |  |  |  | 45d | 1d | QTS-PHX3 DC1 - 6 day w/ Holidays | Rosendin Electric, Inc | DH2300 | Construction | Phase 3 | IGMP | Scott Masterson | Construction |  |  |
| QTS-44531 |  | DH 2300 / Mechanical Gallery 2301 // Install BMS & EPMS Cable and Terminations | 10d | 2026-04-15 | 2026-04-25 | QTS-16591, QTS-46711 |  |  |  | 15d | 0d | QTS-PHX3 DC1 - 6 day w/ Holidays | Rosendin Electric, Inc | DH2100 | Construction |  | IGMP | Scott Masterson | Construction |  | Level 2 |

Notes:
- QTS-13881: allucent_notes_20251014_152335: David Wiltberger on 2025-10-14 12:10: delayed by recovery / allucent_notes_20251021_145627: David Wiltberger on 2025-10-14 12:10: delayed by recovery / allucent_notes_20251027_224008: David Wiltberger on 2025-10-14 12:10: delayed by recovery / allucent_notes_20251028_163138: David Wiltberger on 2025-10-14 12:10: delayed by recovery / allucent_notes_20251104_160200: David Wiltberger on 2025-10-14 12:10: delayed by recovery / allucent_notes_20251111_182405: David Wiltberger on 2025-10-14 12:10: delayed by recovery / allucent_notes_20251118_192630: David Wiltberger on 2025-10-14 12:10: delayed by recovery / allucent_notes: 2025-10-14 12:10 - User: David Wiltberger - Date Added: 2025-10-14 12:10 - Note: delayed by recovery
- QTS-44521: allucent_notes_20251230_164549: David Wiltberger on 2025-10-14 12:10: delayed for recovery / David Wiltberger on 2025-11-04 14:11: changing order to recover / Zack Goertz on 2025-11-10T17:15:52.907Z: Bel-aire is very delayed / Jason Johnston on 2025-11-11 16:11: need framing. / David Wiltberger on 2025-12-01 10:13: have layout issue and correcting / David Wiltberger on 2025-12-02 06:49: correcting field layout / Jason Johnston on 2025-12-16 08:09: Hangers have not started. / David Wiltberger on 2025-12-30 16:23: no update / allucent_notes_20251014_152335: David Wiltberger on 2025-10-14 12:10: delayed for recovery / allucent_notes_20251021_145627: David Wiltberger on 2025-10-14 12:10: delayed for recovery / allucent_notes_20251027_224008: David Wiltberger on 2025-10-14 12:10: delayed for recovery / allucent_notes_20251028_163138: David Wiltberger on 2025-10-14 12:10: delayed for recovery / allucent_notes_20251104_160200: David Wiltberger on 2025-10-14 12:10: delayed for recovery / David Wiltberger on 2025-11-04 14:11: changing order to recover / allucent_notes_20251111_182405: David Wiltberger on 2025-10-14 12:10: delayed for recovery / David Wiltberger on 2025-11-04 14:11: changing order to recover / Zack Goertz on 2025-11-10T17:15:52.907Z: Bel-aire is very delayed / Jason Johnston on 2025-11-11 16:11: need framing. / allucent_notes_20251118_192630: David Wiltberger on 2025-10-14 12:10: delayed for recovery / David Wiltberger on 2025-11-04 14:11: changing order to recover / Zack Goertz on 2025-11-10T17:15:52.907Z: Bel-aire is very delayed / Jason Johnston on 2025-11-11 16:11: need framing. / allucent_notes_20251202_153722: David Wiltberger on 2025-10-14 12:10: delayed for recovery / David Wiltberger on 2025-11-04 14:11: changing order to recover / Zack Goertz on 2025-11-10T17:15:52.907Z: Bel-aire is very delayed / Jason Johnston on 2025-11-11 16:11: need framing. / David Wiltberger on 2025-12-01 10:13: have layout issue and correcting / David Wiltberger on 2025-12-02 06:49: correcting field layout / allucent_notes_20251209_203830: David Wiltberger on 2025-10-14 12:10: delayed for recovery / David Wiltberger on 2025-11-04 14:11: changing order to recover / Zack Goertz on 2025-11-10T17:15:52.907Z: Bel-aire is very delayed / Jason Johnston on 2025-11-11 16:11: need framing. / David Wiltberger on 2025-12-01 10:13: have layout issue and correcting / David Wiltberger on 2025-12-02 06:49: correcting field layout / allucent_notes_20251216_165335: David Wiltberger on 2025-10-14 12:10: delayed for recovery / David Wiltberger on 2025-11-04 14:11: changing order to recover / Zack Goertz on 2025-11-10T17:15:52.907Z: Bel-aire is very delayed / Jason Johnston on 2025-11-11 16:11: need framing. / David Wiltberger on 2025-12-01 10:13: have layout issue and correcting / David Wiltberger on 2025-12-02 06:49: correcting field layout / Jason Johnston on 2025-12-16 08:09: Hangers have not started. / allucent_notes: 2025-10-14 12:10 - User: David Wiltberger - Date Added: 2025-10-14 12:10 - Note: delayed for recovery / 2025-11-04 14:11 - User: David Wiltberger - Date Added: 2025-11-04 14:11 - Note: changing order to recover / 2025-11-10T17:15:52.907Z - User: Zack Go
- QTS-8641: allucent_notes_20251230_164549: Zack Goertz on 2025-10-27T14:03:46.929Z: Top track has been laid. Zone 2 is falling behind and pushing zone 3 / Jason Johnston on 2025-10-28T23:03:32.976Z: Unactualize this and move out to after BOH / Jason Johnston on 2025-10-28 16:10: unactualize. / Zack Goertz on 2025-10-29T19:32:19.063Z: Top and bottom track has started. But, I didnt realize zone 2 was a higher priority, so labor was adjusted accordingly. / Zack Goertz on 2025-11-03T16:48:10.388Z: Zone 3 is not the priority. Zone 2 is next and is falling behind waiting for Bel-aire to finish chiller mains and REI rough in / Jason Johnston on 2025-11-04 16:11: Update needed / Zack Goertz on 2025-11-07T13:26:24.821Z: Zone 3 is not a priority. Focus in on zone 2 first / Zack Goertz on 2025-11-10T17:15:24.993Z: Finally able to get PCI to start framing zone 3. Exterior and corridor walls are first / Zack Goertz on 2025-11-11T18:30:07.733Z: Finally able to get PCI to start framing zone 3. Exterior and corridor walls are first / Jason Johnston on 2025-11-11 16:11: not started / Sean Waisner on 2025-12-02 15:30: Have sequencing for priority needed / David Wiltberger on 2025-12-30 16:23: no update / allucent_notes_20251027_224008: Zack Goertz on 2025-10-27T14:03:46.929Z: Top track has been laid. Zone 2 is falling behind and pushing zone 3 / allucent_notes_20251028_163138: Zack Goertz on 2025-10-27T14:03:46.929Z: Top track has been laid. Zone 2 is falling behind and pushing zone 3 / Jason Johnston on 2025-10-28T23:03:32.976Z: Unactualize this and move out to after BOH / Jason Johnston on 2025-10-28 16:10: unactualize. / allucent_notes_20251104_160200: Zack Goertz on 2025-10-27T14:03:46.929Z: Top track has been laid. Zone 2 is falling behind and pushing zone 3 / Jason Johnston on 2025-10-28T23:03:32.976Z: Unactualize this and move out to after BOH / Jason Johnston on 2025-10-28 16:10: unactualize. / Zack Goertz on 2025-10-29T19:32:19.063Z: Top and bottom track has started. But, I didnt realize zone 2 was a higher priority, so labor was adjusted accordingly. / Zack Goertz on 2025-11-03T16:48:10.388Z: Zone 3 is not the priority. Zone 2 is next and is falling behind waiting for Bel-aire to finish chiller mains and REI rough in / Jason Johnston on 2025-11-04 16:11: Update needed / allucent_notes_20251111_182405: Zack Goertz on 2025-10-27T14:03:46.929Z: Top track has been laid. Zone 2 is falling behind and pushing zone 3 / Jason Johnston on 2025-10-28T23:03:32.976Z: Unactualize this and move out to after BOH / Jason Johnston on 2025-10-28 16:10: unactualize. / Zack Goertz on 2025-10-29T19:32:19.063Z: Top and bottom track has started. But, I didnt realize zone 2 was a higher priority, so labor was adjusted accordingly. / Zack Goertz on 2025-11-03T16:48:10.388Z: Zone 3 is not the priority. Zone 2 is next and is falling behind waiting for Bel-aire to finish chiller mains and REI rough in / Jason Johnston on 2025-11-04 16:11: Update needed / Zack Goertz on 2025-11-07T13:26:24.821Z: Zone 3 is not a priority. Focus in on zone 2 first / Zack Goertz on 2025-11-10T17:15:24.993Z: Finally able to get PCI to start framing zone 3. Exterior and corridor walls are first / Zack Goertz on 2025-11-11T18:30:07.733Z: Finally able to get PCI to start framing zone 3. Exterior and corridor walls are first / Jason Johnston on 2025-11-11 16:11: not started / allucent_notes_20251118_192630: Zack Goertz on 2025-10-27T14:03:46.929Z: Top track has been laid. Zone 2 is falling behind and pushing zone 3 / Jason Johnston on 2025-10-28T23:03:32.976Z: Unactualize this and move out to after BOH / Jason Johnston on 2025-10-28 16:10: unactualize. / Zack Goertz on 2025-10-29T19:32:19.063Z: Top and bottom track has started. But, I didnt realize zone 2 was a higher priority, so labor was adjusted accordingly. / Zack Goertz on 2025-11-03T16:48:10.388Z: Zone 3 is not the priority. Zone 2 is next and is falling behind waiting for Bel-aire to finish chiller mains and REI rough in / Jason Johnston on 2025-11-04 16:11: Update needed / Zack Goertz on 2025-11-07T13:26:24.821Z: Zone 3 is not a priority. Focus in on zone 2 first / Zack Goertz on 2025-11-10T17:15:24.993Z: Finally able to get PCI to start framing zone 3. Exterior and corridor walls are first / Zack Goertz on 2025-11-11T18:30:07.733Z: Finally able to get PCI to start framing zone 3. Exterior and corridor walls are first / Jason Johnston on 2025-11-11 16:11: not started / allucent_notes_20251202_153722: Zack Goertz on 2025-10-27T14:03:46.929Z: Top track has been laid. Zone 2 is falling behind and pushing zone 3 / Jason Johnston on 2025-10-28T23:03:32.976Z: Unactualize this and move out to after BOH / Jason Johnston on 2025-10-28 16:10: unactualize. / Zack Goertz on 2025-10-29T19:32:19.063Z: Top and bottom track has started. But, I didnt realize zone 2 was a higher priority, so labor was adjusted accordingly. / Zack Goertz on 2025-11-03T16:48:10.388Z: Zone 3 is not the priority. Zone 2 is next and is falling behind waiting for Bel-aire to finish chiller mains and REI rough in / Jason Johnston on 2025-11-04 16:11: Update needed / Zack Goertz on 2025-11-07T13:26:24.821Z: Zone 3 is not a priority. Focus in on zone 2 first / Zack Goertz on 2025-11-10T17:15:24.993Z: Finally able to get PCI to start framing zone 3. Exterior and corridor walls are first / Zack Goertz on 2025-11-11T18:30:07.733Z: Finally able to get PCI to start framing zone 3. Exterior and corridor walls are first / Jason Johnston on 2025-11-11 16:11: not started / Sean Waisner on 2025-12-02 15:30: Have sequencing for priority needed / allucent_notes_20251209_203830: Zack Goertz on 2025-10-27T14:03:46.929Z: Top track has been laid. Zone 2 is falling behind and pushing zone 3 / Jason Johnston on 2025-10-28T23:03:32.976Z: Unactualize this and move out to after BOH / Jason Johnston on 2025-10-28 16:10: unactualize. / Zack Goertz on 2025-10-29T19:32:19.063Z: Top and bottom track has started. But, I didnt realize zone 2 was a higher priority, so labor was adjusted accordingly. / Zack Goertz on 2025-11-03T16:48:10.388Z: Zone 3 is not the priority. Zone 2 is next and is falling behind waiting for Bel-aire to finish chiller mains and REI rough in / Jason Johnston on 2025-11-04 16:11: Update needed / Zack Goertz on 2025-11-07T13:26:24.821Z: Zone 3 is not a priority. Focus in on zone 2 first / Zack Goertz on 2025-11-10T17:15:24.993Z: Finally able to get PCI to start framing zone 3. Exterior and corridor walls are first / Zack Goertz on 2025-11-11T18:30:07.733Z: Finally able to get PCI to start framing zone 3. Exterior and corridor walls are first / Jason Johnston on 2025-11-11 16:11: not started / Sean Waisner on 2025-12-02 15:30: Have sequencing for priority needed / allucent_notes_20251216_165335: Zack Goertz on 2025-10-27T14:03:46.929Z: Top track has been laid. Zone 2 is falling behind and pushing zone 3 / Jason Johnston on 2025-10-28T23:03:32.976Z: Unactualize this and move out to after BOH / Jason Johnston on 2025-10-28 16:10: unactualize. / Zack Goertz on 2025-10-29T19:32:19.063Z: Top and bottom track has started. But, I didnt realize zone 2 was a higher priority, so labor was adjusted accordingly. / Zack Goertz on 2025-11-03T16:48:10.388Z: Zone 3 is not the priority. Zone 2 is next and is falling behind waiting for Bel-aire to finish chiller mains and REI rough in / Jason Johnston on 2025-11-04 16:11: Update needed / Zack Goertz on 2025-11-07T13:26:24.821Z: Zone 3 is not a priority. Focus in on zone 2 first / Zack Goertz on 2025-11-10T17:15:24.993Z: Finally able to get PCI to start framing zone 3. Exterior and corridor walls are first / Zack Goertz on 2025-11-11T18:30:07.733Z: Finally able to get PCI to start framing zone 3. Exterior and corridor walls are first / Jason Johnston on 2025-11-11 16:11: not started / Sean Waisner on 2025-12-02 15:30: Have sequencing for priority needed / allucent_notes: 2025-10-27T14:03:46.929Z - User: Zack Goertz - Date Added: 2025-10-27T14:03:46.929Z - Note: Top track has been laid. Zone 2 is falling behind and pushing zone 3 / 2025-10-28T23:03:32.976Z - User: Jason Johnston - Date Added: 2025-10-28T23:03:32.976Z - No
- QTS-10611: allucent_notes_20251230_164549: David Wiltberger on 2025-12-02 14:03: no fan wall built yet / allucent_notes_20251209_203830: David Wiltberger on 2025-12-02 14:03: no fan wall built yet / allucent_notes_20251216_165335: David Wiltberger on 2025-12-02 14:03: no fan wall built yet / allucent_notes: 2025-12-02 14:03 - User: David Wiltberger - Date Added: 2025-12-02 14:03 - Note: no fan wall built yet
- QTS-11321: allucent_notes_20251230_164549: Jason Johnston on 2025-11-04 16:11: Update needed / Zack Goertz on 2025-11-07T13:27:02.345Z: ZOne 2 is the first priority. No work is happening in zone 3 at this time / Zack Goertz on 2025-11-10T17:15:34.188Z: Finally able to get PCI to start framing zone 3. Exterior and corridor walls are first / Jason Johnston on 2025-11-11 16:11: need walls. / allucent_notes_20251104_160200: Jason Johnston on 2025-11-04 16:11: Update needed / allucent_notes_20251111_182405: Jason Johnston on 2025-11-04 16:11: Update needed / Zack Goertz on 2025-11-07T13:27:02.345Z: ZOne 2 is the first priority. No work is happening in zone 3 at this time / Zack Goertz on 2025-11-10T17:15:34.188Z: Finally able to get PCI to start framing zone 3. Exterior and corridor walls are first / Jason Johnston on 2025-11-11 16:11: need walls. / allucent_notes_20251118_192630: Jason Johnston on 2025-11-04 16:11: Update needed / Zack Goertz on 2025-11-07T13:27:02.345Z: ZOne 2 is the first priority. No work is happening in zone 3 at this time / Zack Goertz on 2025-11-10T17:15:34.188Z: Finally able to get PCI to start framing zone 3. Exterior and corridor walls are first / Jason Johnston on 2025-11-11 16:11: need walls. / allucent_notes_20251202_153722: Jason Johnston on 2025-11-04 16:11: Update needed / Zack Goertz on 2025-11-07T13:27:02.345Z: ZOne 2 is the first priority. No work is happening in zone 3 at this time / Zack Goertz on 2025-11-10T17:15:34.188Z: Finally able to get PCI to start framing zone 3. Exterior and corridor walls are first / Jason Johnston on 2025-11-11 16:11: need walls. / allucent_notes_20251209_203830: Jason Johnston on 2025-11-04 16:11: Update needed / Zack Goertz on 2025-11-07T13:27:02.345Z: ZOne 2 is the first priority. No work is happening in zone 3 at this time / Zack Goertz on 2025-11-10T17:15:34.188Z: Finally able to get PCI to start framing zone 3. Exterior and corridor walls are first / Jason Johnston on 2025-11-11 16:11: need walls. / allucent_notes_20251216_165335: Jason Johnston on 2025-11-04 16:11: Update needed / Zack Goertz on 2025-11-07T13:27:02.345Z: ZOne 2 is the first priority. No work is happening in zone 3 at this time / Zack Goertz on 2025-11-10T17:15:34.188Z: Finally able to get PCI to start framing zone 3. Exterior and corridor walls are first / Jason Johnston on 2025-11-11 16:11: need walls. / allucent_notes: 2025-11-04 16:11 - User: Jason Johnston - Date Added: 2025-11-04 16:11 - Note: Update needed / 2025-11-07T13:27:02.345Z - User: Zack Goertz - Date Added: 2025-11-07T13:27:02.345Z - Note: ZOne 2 is the first priority. No work is happening in zone 3 at thi
- QTS-1003590: allucent_notes_20251230_164549: Jason Johnston on 2025-11-04 16:11: Update needed / Zack Goertz on 2025-11-07T13:27:02.345Z: ZOne 2 is the first priority. No work is happening in zone 3 at this time / Zack Goertz on 2025-11-10T17:15:34.188Z: Finally able to get PCI to start framing zone 3. Exterior and corridor walls are first / Jason Johnston on 2025-11-11 16:11: need walls. / allucent_notes_20251104_160200: Jason Johnston on 2025-11-04 16:11: Update needed / allucent_notes_20251111_182405: Jason Johnston on 2025-11-04 16:11: Update needed / Zack Goertz on 2025-11-07T13:27:02.345Z: ZOne 2 is the first priority. No work is happening in zone 3 at this time / Zack Goertz on 2025-11-10T17:15:34.188Z: Finally able to get PCI to start framing zone 3. Exterior and corridor walls are first / Jason Johnston on 2025-11-11 16:11: need walls. / allucent_notes_20251118_192630: Jason Johnston on 2025-11-04 16:11: Update needed / Zack Goertz on 2025-11-07T13:27:02.345Z: ZOne 2 is the first priority. No work is happening in zone 3 at this time / Zack Goertz on 2025-11-10T17:15:34.188Z: Finally able to get PCI to start framing zone 3. Exterior and corridor walls are first / Jason Johnston on 2025-11-11 16:11: need walls. / allucent_notes_20251202_153722: Jason Johnston on 2025-11-04 16:11: Update needed / Zack Goertz on 2025-11-07T13:27:02.345Z: ZOne 2 is the first priority. No work is happening in zone 3 at this time / Zack Goertz on 2025-11-10T17:15:34.188Z: Finally able to get PCI to start framing zone 3. Exterior and corridor walls are first / Jason Johnston on 2025-11-11 16:11: need walls. / allucent_notes_20251209_203830: Jason Johnston on 2025-11-04 16:11: Update needed / Zack Goertz on 2025-11-07T13:27:02.345Z: ZOne 2 is the first priority. No work is happening in zone 3 at this time / Zack Goertz on 2025-11-10T17:15:34.188Z: Finally able to get PCI to start framing zone 3. Exterior and corridor walls are first / Jason Johnston on 2025-11-11 16:11: need walls. / allucent_notes_20251216_165335: Jason Johnston on 2025-11-04 16:11: Update needed / Zack Goertz on 2025-11-07T13:27:02.345Z: ZOne 2 is the first priority. No work is happening in zone 3 at this time / Zack Goertz on 2025-11-10T17:15:34.188Z: Finally able to get PCI to start framing zone 3. Exterior and corridor walls are first / Jason Johnston on 2025-11-11 16:11: need walls. / allucent_notes: 2025-11-04 16:11 - User: Jason Johnston - Date Added: 2025-11-04 16:11 - Note: Update needed / 2025-11-07T13:27:02.345Z - User: Zack Goertz - Date Added: 2025-11-07T13:27:02.345Z - Note: ZOne 2 is the first priority. No work is happening in zone 3 at thi
- QTS-1003620: allucent_notes_20251230_164549: Jason Johnston on 2025-11-04 16:11: Update needed / Zack Goertz on 2025-11-07T13:27:02.345Z: ZOne 2 is the first priority. No work is happening in zone 3 at this time / Zack Goertz on 2025-11-10T17:15:34.188Z: Finally able to get PCI to start framing zone 3. Exterior and corridor walls are first / Jason Johnston on 2025-11-11 16:11: need walls. / allucent_notes_20251104_160200: Jason Johnston on 2025-11-04 16:11: Update needed / allucent_notes_20251111_182405: Jason Johnston on 2025-11-04 16:11: Update needed / Zack Goertz on 2025-11-07T13:27:02.345Z: ZOne 2 is the first priority. No work is happening in zone 3 at this time / Zack Goertz on 2025-11-10T17:15:34.188Z: Finally able to get PCI to start framing zone 3. Exterior and corridor walls are first / Jason Johnston on 2025-11-11 16:11: need walls. / allucent_notes_20251118_192630: Jason Johnston on 2025-11-04 16:11: Update needed / Zack Goertz on 2025-11-07T13:27:02.345Z: ZOne 2 is the first priority. No work is happening in zone 3 at this time / Zack Goertz on 2025-11-10T17:15:34.188Z: Finally able to get PCI to start framing zone 3. Exterior and corridor walls are first / Jason Johnston on 2025-11-11 16:11: need walls. / allucent_notes_20251202_153722: Jason Johnston on 2025-11-04 16:11: Update needed / Zack Goertz on 2025-11-07T13:27:02.345Z: ZOne 2 is the first priority. No work is happening in zone 3 at this time / Zack Goertz on 2025-11-10T17:15:34.188Z: Finally able to get PCI to start framing zone 3. Exterior and corridor walls are first / Jason Johnston on 2025-11-11 16:11: need walls. / allucent_notes_20251209_203830: Jason Johnston on 2025-11-04 16:11: Update needed / Zack Goertz on 2025-11-07T13:27:02.345Z: ZOne 2 is the first priority. No work is happening in zone 3 at this time / Zack Goertz on 2025-11-10T17:15:34.188Z: Finally able to get PCI to start framing zone 3. Exterior and corridor walls are first / Jason Johnston on 2025-11-11 16:11: need walls. / allucent_notes_20251216_165335: Jason Johnston on 2025-11-04 16:11: Update needed / Zack Goertz on 2025-11-07T13:27:02.345Z: ZOne 2 is the first priority. No work is happening in zone 3 at this time / Zack Goertz on 2025-11-10T17:15:34.188Z: Finally able to get PCI to start framing zone 3. Exterior and corridor walls are first / Jason Johnston on 2025-11-11 16:11: need walls. / allucent_notes: 2025-11-04 16:11 - User: Jason Johnston - Date Added: 2025-11-04 16:11 - Note: Update needed / 2025-11-07T13:27:02.345Z - User: Zack Goertz - Date Added: 2025-11-07T13:27:02.345Z - Note: ZOne 2 is the first priority. No work is happening in zone 3 at thi
- QTS-1003600: allucent_notes_20251230_164549: Jason Johnston on 2025-11-04 16:11: Update needed / Zack Goertz on 2025-11-07T13:27:02.345Z: ZOne 2 is the first priority. No work is happening in zone 3 at this time / Zack Goertz on 2025-11-10T17:15:34.188Z: Finally able to get PCI to start framing zone 3. Exterior and corridor walls are first / Jason Johnston on 2025-11-11 16:11: need walls. / allucent_notes_20251104_160200: Jason Johnston on 2025-11-04 16:11: Update needed / allucent_notes_20251111_182405: Jason Johnston on 2025-11-04 16:11: Update needed / Zack Goertz on 2025-11-07T13:27:02.345Z: ZOne 2 is the first priority. No work is happening in zone 3 at this time / Zack Goertz on 2025-11-10T17:15:34.188Z: Finally able to get PCI to start framing zone 3. Exterior and corridor walls are first / Jason Johnston on 2025-11-11 16:11: need walls. / allucent_notes_20251118_192630: Jason Johnston on 2025-11-04 16:11: Update needed / Zack Goertz on 2025-11-07T13:27:02.345Z: ZOne 2 is the first priority. No work is happening in zone 3 at this time / Zack Goertz on 2025-11-10T17:15:34.188Z: Finally able to get PCI to start framing zone 3. Exterior and corridor walls are first / Jason Johnston on 2025-11-11 16:11: need walls. / allucent_notes_20251202_153722: Jason Johnston on 2025-11-04 16:11: Update needed / Zack Goertz on 2025-11-07T13:27:02.345Z: ZOne 2 is the first priority. No work is happening in zone 3 at this time / Zack Goertz on 2025-11-10T17:15:34.188Z: Finally able to get PCI to start framing zone 3. Exterior and corridor walls are first / Jason Johnston on 2025-11-11 16:11: need walls. / allucent_notes_20251209_203830: Jason Johnston on 2025-11-04 16:11: Update needed / Zack Goertz on 2025-11-07T13:27:02.345Z: ZOne 2 is the first priority. No work is happening in zone 3 at this time / Zack Goertz on 2025-11-10T17:15:34.188Z: Finally able to get PCI to start framing zone 3. Exterior and corridor walls are first / Jason Johnston on 2025-11-11 16:11: need walls. / allucent_notes_20251216_165335: Jason Johnston on 2025-11-04 16:11: Update needed / Zack Goertz on 2025-11-07T13:27:02.345Z: ZOne 2 is the first priority. No work is happening in zone 3 at this time / Zack Goertz on 2025-11-10T17:15:34.188Z: Finally able to get PCI to start framing zone 3. Exterior and corridor walls are first / Jason Johnston on 2025-11-11 16:11: need walls. / allucent_notes: 2025-11-04 16:11 - User: Jason Johnston - Date Added: 2025-11-04 16:11 - Note: Update needed / 2025-11-07T13:27:02.345Z - User: Zack Goertz - Date Added: 2025-11-07T13:27:02.345Z - Note: ZOne 2 is the first priority. No work is happening in zone 3 at thi
- QTS-1003630: allucent_notes_20251230_164549: Jason Johnston on 2025-11-04 16:11: Update needed / Zack Goertz on 2025-11-07T13:27:02.345Z: ZOne 2 is the first priority. No work is happening in zone 3 at this time / Zack Goertz on 2025-11-10T17:15:34.188Z: Finally able to get PCI to start framing zone 3. Exterior and corridor walls are first / Jason Johnston on 2025-11-11 16:11: need walls. / allucent_notes_20251104_160200: Jason Johnston on 2025-11-04 16:11: Update needed / allucent_notes_20251111_182405: Jason Johnston on 2025-11-04 16:11: Update needed / Zack Goertz on 2025-11-07T13:27:02.345Z: ZOne 2 is the first priority. No work is happening in zone 3 at this time / Zack Goertz on 2025-11-10T17:15:34.188Z: Finally able to get PCI to start framing zone 3. Exterior and corridor walls are first / Jason Johnston on 2025-11-11 16:11: need walls. / allucent_notes_20251118_192630: Jason Johnston on 2025-11-04 16:11: Update needed / Zack Goertz on 2025-11-07T13:27:02.345Z: ZOne 2 is the first priority. No work is happening in zone 3 at this time / Zack Goertz on 2025-11-10T17:15:34.188Z: Finally able to get PCI to start framing zone 3. Exterior and corridor walls are first / Jason Johnston on 2025-11-11 16:11: need walls. / allucent_notes_20251202_153722: Jason Johnston on 2025-11-04 16:11: Update needed / Zack Goertz on 2025-11-07T13:27:02.345Z: ZOne 2 is the first priority. No work is happening in zone 3 at this time / Zack Goertz on 2025-11-10T17:15:34.188Z: Finally able to get PCI to start framing zone 3. Exterior and corridor walls are first / Jason Johnston on 2025-11-11 16:11: need walls. / allucent_notes_20251209_203830: Jason Johnston on 2025-11-04 16:11: Update needed / Zack Goertz on 2025-11-07T13:27:02.345Z: ZOne 2 is the first priority. No work is happening in zone 3 at this time / Zack Goertz on 2025-11-10T17:15:34.188Z: Finally able to get PCI to start framing zone 3. Exterior and corridor walls are first / Jason Johnston on 2025-11-11 16:11: need walls. / allucent_notes_20251216_165335: Jason Johnston on 2025-11-04 16:11: Update needed / Zack Goertz on 2025-11-07T13:27:02.345Z: ZOne 2 is the first priority. No work is happening in zone 3 at this time / Zack Goertz on 2025-11-10T17:15:34.188Z: Finally able to get PCI to start framing zone 3. Exterior and corridor walls are first / Jason Johnston on 2025-11-11 16:11: need walls. / allucent_notes: 2025-11-04 16:11 - User: Jason Johnston - Date Added: 2025-11-04 16:11 - Note: Update needed / 2025-11-07T13:27:02.345Z - User: Zack Goertz - Date Added: 2025-11-07T13:27:02.345Z - Note: ZOne 2 is the first priority. No work is happening in zone 3 at thi
- QTS-1003660: allucent_notes_20251230_164549: Jason Johnston on 2025-11-04 16:11: Update needed / Zack Goertz on 2025-11-07T13:27:02.345Z: ZOne 2 is the first priority. No work is happening in zone 3 at this time / Zack Goertz on 2025-11-10T17:15:34.188Z: Finally able to get PCI to start framing zone 3. Exterior and corridor walls are first / Jason Johnston on 2025-11-11 16:11: need walls. / allucent_notes_20251104_160200: Jason Johnston on 2025-11-04 16:11: Update needed / allucent_notes_20251111_182405: Jason Johnston on 2025-11-04 16:11: Update needed / Zack Goertz on 2025-11-07T13:27:02.345Z: ZOne 2 is the first priority. No work is happening in zone 3 at this time / Zack Goertz on 2025-11-10T17:15:34.188Z: Finally able to get PCI to start framing zone 3. Exterior and corridor walls are first / Jason Johnston on 2025-11-11 16:11: need walls. / allucent_notes_20251118_192630: Jason Johnston on 2025-11-04 16:11: Update needed / Zack Goertz on 2025-11-07T13:27:02.345Z: ZOne 2 is the first priority. No work is happening in zone 3 at this time / Zack Goertz on 2025-11-10T17:15:34.188Z: Finally able to get PCI to start framing zone 3. Exterior and corridor walls are first / Jason Johnston on 2025-11-11 16:11: need walls. / allucent_notes_20251202_153722: Jason Johnston on 2025-11-04 16:11: Update needed / Zack Goertz on 2025-11-07T13:27:02.345Z: ZOne 2 is the first priority. No work is happening in zone 3 at this time / Zack Goertz on 2025-11-10T17:15:34.188Z: Finally able to get PCI to start framing zone 3. Exterior and corridor walls are first / Jason Johnston on 2025-11-11 16:11: need walls. / allucent_notes_20251209_203830: Jason Johnston on 2025-11-04 16:11: Update needed / Zack Goertz on 2025-11-07T13:27:02.345Z: ZOne 2 is the first priority. No work is happening in zone 3 at this time / Zack Goertz on 2025-11-10T17:15:34.188Z: Finally able to get PCI to start framing zone 3. Exterior and corridor walls are first / Jason Johnston on 2025-11-11 16:11: need walls. / allucent_notes_20251216_165335: Jason Johnston on 2025-11-04 16:11: Update needed / Zack Goertz on 2025-11-07T13:27:02.345Z: ZOne 2 is the first priority. No work is happening in zone 3 at this time / Zack Goertz on 2025-11-10T17:15:34.188Z: Finally able to get PCI to start framing zone 3. Exterior and corridor walls are first / Jason Johnston on 2025-11-11 16:11: need walls. / allucent_notes: 2025-11-04 16:11 - User: Jason Johnston - Date Added: 2025-11-04 16:11 - Note: Update needed / 2025-11-07T13:27:02.345Z - User: Zack Goertz - Date Added: 2025-11-07T13:27:02.345Z - Note: ZOne 2 is the first priority. No work is happening in zone 3 at thi
- QTS-1003670: allucent_notes_20251230_164549: Jason Johnston on 2025-11-04 16:11: Update needed / Zack Goertz on 2025-11-07T13:27:02.345Z: ZOne 2 is the first priority. No work is happening in zone 3 at this time / Zack Goertz on 2025-11-10T17:15:34.188Z: Finally able to get PCI to start framing zone 3. Exterior and corridor walls are first / Jason Johnston on 2025-11-11 16:11: need walls. / allucent_notes_20251104_160200: Jason Johnston on 2025-11-04 16:11: Update needed / allucent_notes_20251111_182405: Jason Johnston on 2025-11-04 16:11: Update needed / Zack Goertz on 2025-11-07T13:27:02.345Z: ZOne 2 is the first priority. No work is happening in zone 3 at this time / Zack Goertz on 2025-11-10T17:15:34.188Z: Finally able to get PCI to start framing zone 3. Exterior and corridor walls are first / Jason Johnston on 2025-11-11 16:11: need walls. / allucent_notes_20251118_192630: Jason Johnston on 2025-11-04 16:11: Update needed / Zack Goertz on 2025-11-07T13:27:02.345Z: ZOne 2 is the first priority. No work is happening in zone 3 at this time / Zack Goertz on 2025-11-10T17:15:34.188Z: Finally able to get PCI to start framing zone 3. Exterior and corridor walls are first / Jason Johnston on 2025-11-11 16:11: need walls. / allucent_notes_20251202_153722: Jason Johnston on 2025-11-04 16:11: Update needed / Zack Goertz on 2025-11-07T13:27:02.345Z: ZOne 2 is the first priority. No work is happening in zone 3 at this time / Zack Goertz on 2025-11-10T17:15:34.188Z: Finally able to get PCI to start framing zone 3. Exterior and corridor walls are first / Jason Johnston on 2025-11-11 16:11: need walls. / allucent_notes_20251209_203830: Jason Johnston on 2025-11-04 16:11: Update needed / Zack Goertz on 2025-11-07T13:27:02.345Z: ZOne 2 is the first priority. No work is happening in zone 3 at this time / Zack Goertz on 2025-11-10T17:15:34.188Z: Finally able to get PCI to start framing zone 3. Exterior and corridor walls are first / Jason Johnston on 2025-11-11 16:11: need walls. / allucent_notes_20251216_165335: Jason Johnston on 2025-11-04 16:11: Update needed / Zack Goertz on 2025-11-07T13:27:02.345Z: ZOne 2 is the first priority. No work is happening in zone 3 at this time / Zack Goertz on 2025-11-10T17:15:34.188Z: Finally able to get PCI to start framing zone 3. Exterior and corridor walls are first / Jason Johnston on 2025-11-11 16:11: need walls. / allucent_notes: 2025-11-04 16:11 - User: Jason Johnston - Date Added: 2025-11-04 16:11 - Note: Update needed / 2025-11-07T13:27:02.345Z - User: Zack Goertz - Date Added: 2025-11-07T13:27:02.345Z - Note: ZOne 2 is the first priority. No work is happening in zone 3 at thi
- QTS-1003640: allucent_notes_20251230_164549: Jason Johnston on 2025-11-04 16:11: Update needed / Zack Goertz on 2025-11-07T13:27:02.345Z: ZOne 2 is the first priority. No work is happening in zone 3 at this time / Zack Goertz on 2025-11-10T17:15:34.188Z: Finally able to get PCI to start framing zone 3. Exterior and corridor walls are first / Jason Johnston on 2025-11-11 16:11: need walls. / allucent_notes_20251104_160200: Jason Johnston on 2025-11-04 16:11: Update needed / allucent_notes_20251111_182405: Jason Johnston on 2025-11-04 16:11: Update needed / Zack Goertz on 2025-11-07T13:27:02.345Z: ZOne 2 is the first priority. No work is happening in zone 3 at this time / Zack Goertz on 2025-11-10T17:15:34.188Z: Finally able to get PCI to start framing zone 3. Exterior and corridor walls are first / Jason Johnston on 2025-11-11 16:11: need walls. / allucent_notes_20251118_192630: Jason Johnston on 2025-11-04 16:11: Update needed / Zack Goertz on 2025-11-07T13:27:02.345Z: ZOne 2 is the first priority. No work is happening in zone 3 at this time / Zack Goertz on 2025-11-10T17:15:34.188Z: Finally able to get PCI to start framing zone 3. Exterior and corridor walls are first / Jason Johnston on 2025-11-11 16:11: need walls. / allucent_notes_20251202_153722: Jason Johnston on 2025-11-04 16:11: Update needed / Zack Goertz on 2025-11-07T13:27:02.345Z: ZOne 2 is the first priority. No work is happening in zone 3 at this time / Zack Goertz on 2025-11-10T17:15:34.188Z: Finally able to get PCI to start framing zone 3. Exterior and corridor walls are first / Jason Johnston on 2025-11-11 16:11: need walls. / allucent_notes_20251209_203830: Jason Johnston on 2025-11-04 16:11: Update needed / Zack Goertz on 2025-11-07T13:27:02.345Z: ZOne 2 is the first priority. No work is happening in zone 3 at this time / Zack Goertz on 2025-11-10T17:15:34.188Z: Finally able to get PCI to start framing zone 3. Exterior and corridor walls are first / Jason Johnston on 2025-11-11 16:11: need walls. / allucent_notes_20251216_165335: Jason Johnston on 2025-11-04 16:11: Update needed / Zack Goertz on 2025-11-07T13:27:02.345Z: ZOne 2 is the first priority. No work is happening in zone 3 at this time / Zack Goertz on 2025-11-10T17:15:34.188Z: Finally able to get PCI to start framing zone 3. Exterior and corridor walls are first / Jason Johnston on 2025-11-11 16:11: need walls. / allucent_notes: 2025-11-04 16:11 - User: Jason Johnston - Date Added: 2025-11-04 16:11 - Note: Update needed / 2025-11-07T13:27:02.345Z - User: Zack Goertz - Date Added: 2025-11-07T13:27:02.345Z - Note: ZOne 2 is the first priority. No work is happening in zone 3 at thi
- QTS-1003690: allucent_notes_20251230_164549: Jason Johnston on 2025-11-04 16:11: Update needed / Zack Goertz on 2025-11-07T13:27:02.345Z: ZOne 2 is the first priority. No work is happening in zone 3 at this time / Zack Goertz on 2025-11-10T17:15:34.188Z: Finally able to get PCI to start framing zone 3. Exterior and corridor walls are first / Jason Johnston on 2025-11-11 16:11: need walls. / allucent_notes_20251104_160200: Jason Johnston on 2025-11-04 16:11: Update needed / allucent_notes_20251111_182405: Jason Johnston on 2025-11-04 16:11: Update needed / Zack Goertz on 2025-11-07T13:27:02.345Z: ZOne 2 is the first priority. No work is happening in zone 3 at this time / Zack Goertz on 2025-11-10T17:15:34.188Z: Finally able to get PCI to start framing zone 3. Exterior and corridor walls are first / Jason Johnston on 2025-11-11 16:11: need walls. / allucent_notes_20251118_192630: Jason Johnston on 2025-11-04 16:11: Update needed / Zack Goertz on 2025-11-07T13:27:02.345Z: ZOne 2 is the first priority. No work is happening in zone 3 at this time / Zack Goertz on 2025-11-10T17:15:34.188Z: Finally able to get PCI to start framing zone 3. Exterior and corridor walls are first / Jason Johnston on 2025-11-11 16:11: need walls. / allucent_notes_20251202_153722: Jason Johnston on 2025-11-04 16:11: Update needed / Zack Goertz on 2025-11-07T13:27:02.345Z: ZOne 2 is the first priority. No work is happening in zone 3 at this time / Zack Goertz on 2025-11-10T17:15:34.188Z: Finally able to get PCI to start framing zone 3. Exterior and corridor walls are first / Jason Johnston on 2025-11-11 16:11: need walls. / allucent_notes_20251209_203830: Jason Johnston on 2025-11-04 16:11: Update needed / Zack Goertz on 2025-11-07T13:27:02.345Z: ZOne 2 is the first priority. No work is happening in zone 3 at this time / Zack Goertz on 2025-11-10T17:15:34.188Z: Finally able to get PCI to start framing zone 3. Exterior and corridor walls are first / Jason Johnston on 2025-11-11 16:11: need walls. / allucent_notes_20251216_165335: Jason Johnston on 2025-11-04 16:11: Update needed / Zack Goertz on 2025-11-07T13:27:02.345Z: ZOne 2 is the first priority. No work is happening in zone 3 at this time / Zack Goertz on 2025-11-10T17:15:34.188Z: Finally able to get PCI to start framing zone 3. Exterior and corridor walls are first / Jason Johnston on 2025-11-11 16:11: need walls. / allucent_notes: 2025-11-04 16:11 - User: Jason Johnston - Date Added: 2025-11-04 16:11 - Note: Update needed / 2025-11-07T13:27:02.345Z - User: Zack Goertz - Date Added: 2025-11-07T13:27:02.345Z - Note: ZOne 2 is the first priority. No work is happening in zone 3 at thi
- QTS-1003680: allucent_notes_20251230_164549: Jason Johnston on 2025-11-04 16:11: Update needed / Zack Goertz on 2025-11-07T13:27:02.345Z: ZOne 2 is the first priority. No work is happening in zone 3 at this time / Zack Goertz on 2025-11-10T17:15:34.188Z: Finally able to get PCI to start framing zone 3. Exterior and corridor walls are first / Jason Johnston on 2025-11-11 16:11: need walls. / allucent_notes_20251104_160200: Jason Johnston on 2025-11-04 16:11: Update needed / allucent_notes_20251111_182405: Jason Johnston on 2025-11-04 16:11: Update needed / Zack Goertz on 2025-11-07T13:27:02.345Z: ZOne 2 is the first priority. No work is happening in zone 3 at this time / Zack Goertz on 2025-11-10T17:15:34.188Z: Finally able to get PCI to start framing zone 3. Exterior and corridor walls are first / Jason Johnston on 2025-11-11 16:11: need walls. / allucent_notes_20251118_192630: Jason Johnston on 2025-11-04 16:11: Update needed / Zack Goertz on 2025-11-07T13:27:02.345Z: ZOne 2 is the first priority. No work is happening in zone 3 at this time / Zack Goertz on 2025-11-10T17:15:34.188Z: Finally able to get PCI to start framing zone 3. Exterior and corridor walls are first / Jason Johnston on 2025-11-11 16:11: need walls. / allucent_notes_20251202_153722: Jason Johnston on 2025-11-04 16:11: Update needed / Zack Goertz on 2025-11-07T13:27:02.345Z: ZOne 2 is the first priority. No work is happening in zone 3 at this time / Zack Goertz on 2025-11-10T17:15:34.188Z: Finally able to get PCI to start framing zone 3. Exterior and corridor walls are first / Jason Johnston on 2025-11-11 16:11: need walls. / allucent_notes_20251209_203830: Jason Johnston on 2025-11-04 16:11: Update needed / Zack Goertz on 2025-11-07T13:27:02.345Z: ZOne 2 is the first priority. No work is happening in zone 3 at this time / Zack Goertz on 2025-11-10T17:15:34.188Z: Finally able to get PCI to start framing zone 3. Exterior and corridor walls are first / Jason Johnston on 2025-11-11 16:11: need walls. / allucent_notes_20251216_165335: Jason Johnston on 2025-11-04 16:11: Update needed / Zack Goertz on 2025-11-07T13:27:02.345Z: ZOne 2 is the first priority. No work is happening in zone 3 at this time / Zack Goertz on 2025-11-10T17:15:34.188Z: Finally able to get PCI to start framing zone 3. Exterior and corridor walls are first / Jason Johnston on 2025-11-11 16:11: need walls. / allucent_notes: 2025-11-04 16:11 - User: Jason Johnston - Date Added: 2025-11-04 16:11 - Note: Update needed / 2025-11-07T13:27:02.345Z - User: Zack Goertz - Date Added: 2025-11-07T13:27:02.345Z - Note: ZOne 2 is the first priority. No work is happening in zone 3 at thi
- QTS-1003700: allucent_notes_20251230_164549: Jason Johnston on 2025-11-04 16:11: Update needed / Zack Goertz on 2025-11-07T13:27:02.345Z: ZOne 2 is the first priority. No work is happening in zone 3 at this time / Zack Goertz on 2025-11-10T17:15:34.188Z: Finally able to get PCI to start framing zone 3. Exterior and corridor walls are first / Jason Johnston on 2025-11-11 16:11: need walls. / allucent_notes_20251104_160200: Jason Johnston on 2025-11-04 16:11: Update needed / allucent_notes_20251111_182405: Jason Johnston on 2025-11-04 16:11: Update needed / Zack Goertz on 2025-11-07T13:27:02.345Z: ZOne 2 is the first priority. No work is happening in zone 3 at this time / Zack Goertz on 2025-11-10T17:15:34.188Z: Finally able to get PCI to start framing zone 3. Exterior and corridor walls are first / Jason Johnston on 2025-11-11 16:11: need walls. / allucent_notes_20251118_192630: Jason Johnston on 2025-11-04 16:11: Update needed / Zack Goertz on 2025-11-07T13:27:02.345Z: ZOne 2 is the first priority. No work is happening in zone 3 at this time / Zack Goertz on 2025-11-10T17:15:34.188Z: Finally able to get PCI to start framing zone 3. Exterior and corridor walls are first / Jason Johnston on 2025-11-11 16:11: need walls. / allucent_notes_20251202_153722: Jason Johnston on 2025-11-04 16:11: Update needed / Zack Goertz on 2025-11-07T13:27:02.345Z: ZOne 2 is the first priority. No work is happening in zone 3 at this time / Zack Goertz on 2025-11-10T17:15:34.188Z: Finally able to get PCI to start framing zone 3. Exterior and corridor walls are first / Jason Johnston on 2025-11-11 16:11: need walls. / allucent_notes_20251209_203830: Jason Johnston on 2025-11-04 16:11: Update needed / Zack Goertz on 2025-11-07T13:27:02.345Z: ZOne 2 is the first priority. No work is happening in zone 3 at this time / Zack Goertz on 2025-11-10T17:15:34.188Z: Finally able to get PCI to start framing zone 3. Exterior and corridor walls are first / Jason Johnston on 2025-11-11 16:11: need walls. / allucent_notes_20251216_165335: Jason Johnston on 2025-11-04 16:11: Update needed / Zack Goertz on 2025-11-07T13:27:02.345Z: ZOne 2 is the first priority. No work is happening in zone 3 at this time / Zack Goertz on 2025-11-10T17:15:34.188Z: Finally able to get PCI to start framing zone 3. Exterior and corridor walls are first / Jason Johnston on 2025-11-11 16:11: need walls. / allucent_notes: 2025-11-04 16:11 - User: Jason Johnston - Date Added: 2025-11-04 16:11 - Note: Update needed / 2025-11-07T13:27:02.345Z - User: Zack Goertz - Date Added: 2025-11-07T13:27:02.345Z - Note: ZOne 2 is the first priority. No work is happening in zone 3 at thi

| ID | WBS | Activity | Duration | Start | Finish | Predecessors | Complete | Remaining | Planned start | Planned finish | Total float | Free float | Calendar | Location | Project Section-1 | Phase-1-1 | Baseline | Layton Responsible Party | Project Section | Allucent CSI Group | Subcontractor | Level |
| --- | --- | --- | --- | --- | --- | --- | --- | --- | --- | --- | --- | --- | --- | --- | --- | --- | --- | --- | --- | --- | --- | --- |
|  | 7 | **Gallery 2303 Mechanical** |  | 2025-11-06 | 2026-04-21 |  |  |  |  |  |  |  |  |  |  |  |  |  |  |  |  |  |
| QTS-10601 |  | DH 2300 / Mechanical Gallery 2303 // Frame 2303 Exterior Wall | 5d | 2025-11-06 A | 2025-11-12 A | QTS-19981 | 100% |  |  |  |  |  |  | DH2300 | Construction | Phase 3 | IGMP | Doug Hayes | Construction | 01ADMIN |  |  |
| QTS-12281 |  | DH 2300 / Mechanical Gallery 2303 // Hang, Tape, & Finish Drywall for 2303 Exterior Wall | 10d | 2025-12-15 A | 2026-03-26 | QTS-8651 FF, QTS-1004120 FF+6d, QTS-10601, QTS-38981 | 60% | 4d | 2025-12-15 | 2025-12-26 | 124d | 0d | QTS-PHX3 DC1 - 6 day w/ Holidays | DH2300 | Construction | Phase 3 | IGMP | Sean Waisner | Construction | 01ADMIN | Performance Contracting, Inc. |  |
| QTS-14781 |  | DH 2300 / Mechanical Gallery 2303 // Install VESDA | 8d | 2026-01-14 | 2026-01-23 | QTS-14771 |  |  |  |  | 55d | 28d | QTS-PHX3 DC1 - 6 day w/ Holidays | DH2300 | Construction | Phase 3 | IGMP | Scott Masterson | Construction | 01ADMIN | Rosendin Electric, Inc |  |
| QTS-14791 |  | DH 2300 / Mechanical Gallery 2303 // Install OH Mechanical Piping | 10d | 2026-01-14 | 2026-01-26 | QTS-44611 |  |  |  |  | 37d | 0d | QTS-PHX3 DC1 - 6 day w/ Holidays | DH2300 | Construction | Phase 3 | IGMP | Dave Wiltberger | Construction | 01ADMIN | Bel-Aire Mechanical, LLC |  |
| QTS-44611 |  | DH 2300 / Mechanical Gallery 2303 // Install OH Mechanical Hangers | 7d | 2026-01-21 A | 2026-01-28 A | QTS-44521 | 100% |  |  |  |  |  | QTS-PHX3 DC1 - 6 day w/ Holidays | DH2100 | Construction |  | IGMP | Dave Wiltberger | Construction | 01ADMIN | Bel-Aire Mechanical, LLC | Level 2 |
| QTS-16581 |  | DH 2300 / Mechanical Gallery 2303 // Install OH Electrical, FA/ EPMS/BMS Conduit & Grounding | 10d | 2026-01-27 | 2026-02-06 | QTS-14791 |  |  |  |  | 62d | 43d | QTS-PHX3 DC1 - 6 day w/ Holidays | DH2300 | Construction | Phase 3 | IGMP | Scott Masterson | Construction |  | Rosendin Electric, Inc |  |
| QTS-11651 |  | DH 2300 / Mechanical Gallery 2303 // Frame Fan Wall | 5d | 2026-02-07 | 2026-02-12 | QTS-14791, QTS-10601, QTS-10621 |  |  |  |  | 27d | 0d | QTS-PHX3 DC1 - 6 day w/ Holidays | DH2300 | Construction | Phase 3 | IGMP | Sean Waisner | Construction | 01ADMIN | Performance Contracting, Inc. |  |
| QTS-12591 |  | DH 2300 / Mechanical Gallery 2303 // In Wall Electrical Rough for Fan Wall | 2d | 2026-02-13 | 2026-02-14 | QTS-11651 |  |  |  |  | 27d | 0d | QTS-PHX3 DC1 - 6 day w/ Holidays | DH2300 | Construction | Phase 3 | IGMP | Scott Masterson | Construction | 01ADMIN | Rosendin Electric, Inc |  |
| QTS-12861 |  | DH 2300 / Mechanical Gallery 2303 // In Wall Inspection for Fan Wall | 1d | 2026-02-16 | 2026-02-16 | QTS-12591 |  |  |  |  | 27d | 0d | QTS-PHX3 DC1 - 6 day w/ Holidays | DH2300 | Construction | Phase 3 | IGMP | Scott Masterson | Construction | 01ADMIN | Rosendin Electric, Inc |  |
| QTS-13051 |  | DH 2300 / Mechanical Gallery 2303 // Hang Fan Drywall - MG Side | 2d | 2026-02-17 | 2026-02-18 | QTS-12861 |  |  |  |  | 27d | 0d | QTS-PHX3 DC1 - 6 day w/ Holidays | DH2300 | Construction | Phase 3 | IGMP | Sean Waisner | Construction | 01ADMIN | Performance Contracting, Inc. |  |
| QTS-1003720 |  | DH 2300 / Mechanical Gallery 2303 // Tape, & Finish Fan Drywall - MG Side | 4d | 2026-02-19 | 2026-02-23 | QTS-13051 |  |  |  |  | 27d | 0d | QTS-PHX3 DC1 - 6 day w/ Holidays | DH2300 | Construction | Phase 3 | IGMP | Sean Waisner | Construction | 01ADMIN | Performance Contracting, Inc. |  |
| QTS-13861 |  | DH 2300 / Mechanical Gallery 2303 // Prime & Paint Fan Wall - MG Side | 2d | 2026-02-24 | 2026-02-25 | QTS-1003720 |  |  |  |  | 27d | 0d | QTS-PHX3 DC1 - 6 day w/ Holidays | DH2300 | Construction | Phase 3 | IGMP | Sean Waisner | Construction |  | Pennington Painting Company, LLC |  |
| QTS-14801 |  | DH 2300 / Mechanical Gallery 2303 // Install Security Screen Above Fan Wall | 3d | 2026-02-26 | 2026-02-28 | QTS-13861, QTS-99680, QTS-14781 |  |  |  |  | 27d | 8d | QTS-PHX3 DC1 - 6 day w/ Holidays | DH2300 | Construction | Phase 3 | IGMP | Sean Waisner | Construction |  | Performance Contracting, Inc. |  |
| QTS-15321 |  | DH 2300 / Mechanical Gallery 2303 // OFCI - L2 SET IN PLACE - Eq Type # - DH CRAH - 14 units | 6d | 2026-03-11 | 2026-03-17 | QTS-14801, QTS-36921, QTS-36931, QTS-36941, QTS-36951, QTS-36961, QTS-36971, QTS-36981, QTS-36991, QTS-37001, QTS-37011, QTS-37021, QTS-37031, QTS-37041, QTS-37051, QTS-14791, QTS-14311 |  |  |  |  | 19d | 0d | QTS-PHX3 DC1 - 6 day w/ Holidays | DH2300 | Construction | Phase 3 | IGMP | Dave Wiltberger | Construction |  | Bel-Aire Mechanical, LLC |  |
| QTS-1003730 |  | DH 2300 / Mechanical Gallery 2303 // Hang Fan Drywall - DH Side | 2d | 2026-03-18 | 2026-03-19 | QTS-15321, QTS-13051 |  |  |  |  | 62d | 0d | QTS-PHX3 DC1 - 6 day w/ Holidays | DH2300 | Construction | Phase 3 | IGMP | Sean Waisner | Construction | 01ADMIN | Performance Contracting, Inc. |  |
| QTS-16381 |  | DH 2300 / Mechanical Gallery 2303 // CRAH Unit Mechanical Connections | 10d | 2026-03-18 | 2026-03-28 | QTS-15321 |  |  |  |  | 19d | 0d | QTS-PHX3 DC1 - 6 day w/ Holidays | DH2300 | Construction | Phase 3 | IGMP | Dave Wiltberger | Construction |  | Bel-Aire Mechanical, LLC |  |
| QTS-1003740 |  | DH 2300 / Mechanical Gallery 2303 // Tape, & Finish Fan Drywall - DH Side | 4d | 2026-03-20 | 2026-03-24 | QTS-1003730 |  |  |  |  | 62d | 0d | QTS-PHX3 DC1 - 6 day w/ Holidays | DH2300 | Construction | Phase 3 | IGMP | Sean Waisner | Construction | 01ADMIN | Performance Contracting, Inc. |  |
| QTS-1003750 |  | DH 2300 / Mechanical Gallery 2303 // Prime & Paint Fan Wall - DH Side | 2d | 2026-03-25 | 2026-03-26 | QTS-1003740 |  |  |  |  | 62d | 0d | QTS-PHX3 DC1 - 6 day w/ Holidays | DH2300 | Construction | Phase 3 | IGMP | Sean Waisner | Construction |  | Pennington Painting Company, LLC |  |
| QTS-13851 |  | DH 2300 / Mechanical Gallery 2303 // Paint for 2303 Exterior Wall | 3d | 2026-03-27 | 2026-03-30 | QTS-12281 |  |  |  |  | 124d | 0d | QTS-PHX3 DC1 - 6 day w/ Holidays | DH2300 | Construction | Phase 3 | IGMP | Sean Waisner | Construction | 01ADMIN | Pennington Painting Company, LLC |  |
| QTS-16391 |  | DH 2300 / Mechanical Gallery 2303 // Install Angle Seal Around Units | 2d | 2026-03-27 | 2026-03-28 | QTS-1003750, QTS-15321 |  |  |  |  | 62d | 13d | QTS-PHX3 DC1 - 6 day w/ Holidays | DH2300 | Construction | Phase 3 | IGMP | Sean Waisner | Construction |  | Performance Contracting, Inc. |  |
| QTS-16571 |  | DH 2300 / Mechanical Gallery 2303 // Install Electrical Tray | 5d | 2026-03-30 | 2026-04-03 | QTS-16581, QTS-14791, QTS-16381 |  |  |  |  | 19d | 0d | QTS-PHX3 DC1 - 6 day w/ Holidays | DH2300 | Construction | Phase 3 | IGMP | Scott Masterson | Construction |  | Rosendin Electric, Inc |  |
| QTS-14301 |  | DH 2300 / Mechanical Gallery 2303 // Top of Wall Fire Stop for 2303 Exterior Wall | 2d | 2026-03-31 | 2026-04-01 | QTS-13851 |  |  |  |  | 124d |  | QTS-PHX3 DC1 - 6 day w/ Holidays | DH2300 | Construction | Phase 3 | IGMP | Sean Waisner | Construction |  | Alpha Insulation & Waterproofing, Inc. |  |
| QTS-17191 |  | DH 2300 / Mechanical Gallery 2303 // Install Basket Tray for LV | 5d | 2026-04-04 | 2026-04-09 | QTS-16571 |  |  |  |  | 19d | 0d | QTS-PHX3 DC1 - 6 day w/ Holidays | DH2300 | Construction | Phase 3 | IGMP | Scott Masterson | Construction |  | Rosendin Electric, Inc |  |
| QTS-18001 |  | DH 2300 / Mechanical Gallery 2303 // Install BMS & EPMS Cable and Terminations | 10d | 2026-04-10 | 2026-04-21 | QTS-17191 |  |  |  |  | 19d | 4d | QTS-PHX3 DC1 - 6 day w/ Holidays | DH2300 | Construction | Phase 3 | IGMP | Scott Masterson | Construction |  | Rosendin Electric, Inc |  |

Notes:
- QTS-10601: allucent_notes_20251104_160200: Zack Goertz on 2025-11-03T16:48:44.461Z: Zone 3 is not the priority. Zone 2 is next and is falling behind waiting for Bel-aire to finish chiller mains and REI rough in / allucent_notes_20251111_182405: Zack Goertz on 2025-11-03T16:48:44.461Z: Zone 3 is not the priority. Zone 2 is next and is falling behind waiting for Bel-aire to finish chiller mains and REI rough in / allucent_notes_20251118_192630: Zack Goertz on 2025-11-03T16:48:44.461Z: Zone 3 is not the priority. Zone 2 is next and is falling behind waiting for Bel-aire to finish chiller mains and REI rough in / allucent_notes: 2025-11-03T16:48:44.461Z - User: Zack Goertz - Date Added: 2025-11-03T16:48:44.461Z - Note: Zone 3 is not the priority. Zone 2 is next and is falling behind waiting for Bel-aire to finish chiller mains and REI rough in
- QTS-12281: allucent_notes_20251118_192630: Zack Goertz on 2025-11-17 13:11: Zone 3 is last priority. Framing has barely begun on level 2. Plus, a stop work has been issued. / allucent_notes_20251202_153722: Zack Goertz on 2025-11-17 13:11: Zone 3 is last priority. Framing has barely begun on level 2. Plus, a stop work has been issued. / allucent_notes_20251209_203830: Zack Goertz on 2025-11-17 13:11: Zone 3 is last priority. Framing has barely begun on level 2. Plus, a stop work has been issued. / allucent_notes_20251216_165335: Zack Goertz on 2025-11-17 13:11: Zone 3 is last priority. Framing has barely begun on level 2. Plus, a stop work has been issued. / allucent_notes: 2025-11-17 13:11 - User: Zack Goertz - Date Added: 2025-11-17 13:11 - Note: Zone 3 is last priority. Framing has barely begun on level 2. Plus, a stop work has been issued.
- QTS-14781: allucent_notes_20251230_164549: David Wiltberger on 2025-12-30 16:23: no update / allucent_notes: 2025-12-30 16:23 - User: David Wiltberger - Date Added: 2025-12-30 16:23 - Note: no update
- QTS-11651: allucent_notes_20251118_192630: Zack Goertz on 2025-11-17 13:11: Zone 3 is last priority. Framing has barely begun on level 2. Plus, a stop work has been issued. Fan walls are last priority of all doors / allucent_notes: 2025-11-17 13:11 - User: Zack Goertz - Date Added: 2025-11-17 13:11 - Note: Zone 3 is last priority. Framing has barely begun on level 2. Plus, a stop work has been issued. Fan walls are last priority of all doors

| ID | WBS | Activity | Duration | Start | Finish | Predecessors | Complete | Planned start | Planned finish | Total float | Free float | Calendar | Subcontractor | Location | Project Section-1 | Phase-1-1 | Baseline | Layton Responsible Party | Project Section | Allucent CSI Group | Level |
| --- | --- | --- | --- | --- | --- | --- | --- | --- | --- | --- | --- | --- | --- | --- | --- | --- | --- | --- | --- | --- | --- |
|  | 1 | **Gallery 2302 Electrical** |  | 2025-12-10 | 2026-04-30 |  |  |  |  |  |  |  |  |  |  |  |  |  |  |  |  |
| QTS-14771 |  | DH 2300 / Electrical Gallery 2302 // Install VESDA | 8d | 2025-12-10 A | 2026-01-10 A | QTS-13881, QTS-120000 | 100% | 2025-12-10 | 2025-12-18 |  |  | QTS-PHX3 DC1 - 6 day w/ Holidays | Rosendin Electric, Inc | DH2300 | Construction | Phase 3 | IGMP | Scott Masterson | Construction | 01ADMIN |  |
| QTS-17791 |  | DH 2300 / Electrical Gallery 2302 // Install Conduit from UPS Pod to Chillers Line Up A-D | 6d | 2026-02-14 | 2026-02-20 | QTS-13571, QTS-102720, QTS-2021, QTS-14771 |  |  |  | 32d | 0d | QTS-PHX3 DC1 - 6 day w/ Holidays | Rosendin Electric, Inc | DH2300 | Construction | Phase 3 | IGMP | Scott Masterson | Construction | 01ADMIN |  |
| QTS-18691 |  | DH 2300 / Electrical Gallery 2302 // Install Conduit from UPS Pod to Pumps Line Up A-D | 6d | 2026-02-17 | 2026-02-23 | QTS-3441 FF, QTS-17791 SS+2d |  |  |  | 47d | 0d | QTS-PHX3 DC1 - 6 day w/ Holidays | Rosendin Electric, Inc | DH2300 | Construction | Phase 3 | IGMP | Scott Masterson | Construction |  |  |
| QTS-18681 |  | DH 2300 / Electrical Gallery 2302 // Pull & Terminate from UPS Pod to Chillers Line Up A-D | 3d | 2026-02-21 | 2026-02-24 | QTS-17791, QTS-13571 |  |  |  | 35d | 0d | QTS-PHX3 DC1 - 6 day w/ Holidays | Rosendin Electric, Inc | DH2300 | Construction | Phase 3 | IGMP | Scott Masterson | Construction |  |  |
| QTS-41391 |  | DH 2300 / Electrical Gallery 2302 // Install Conduit from UPS Pod to Chillers Lineup E-R | 6d | 2026-02-21 | 2026-02-27 | QTS-17791 |  |  |  | 32d | 0d | QTS-PHX3 DC1 - 6 day w/ Holidays | Rosendin Electric, Inc | DH2300 | Construction | Phase 3 | IGMP | Scott Masterson | Construction |  |  |
| QTS-46801 |  | DH 2300 / Electrical Gallery 2302 // Install OH Electrical, FA/ EPMS/BMS Conduit & Grounding | 10d | 2026-02-21 | 2026-03-04 | QTS-1003640, QTS-14771 |  |  |  | 40d | 11d | QTS-PHX3 DC1 - 6 day w/ Holidays | Rosendin Electric, Inc | DH2100 | Construction |  | IGMP | Scott Masterson | Construction | 01ADMIN | Level 2 |
| QTS-18981 |  | DH 2300 / Electrical Gallery 2302 // Pull & Terminate from UPS Pod to Pumps Line Up A-D | 3d | 2026-02-24 | 2026-02-26 | QTS-18691, QTS-18681 FF, QTS-13571 |  |  |  | 50d | 0d | QTS-PHX3 DC1 - 6 day w/ Holidays | Rosendin Electric, Inc | DH2300 | Construction | Phase 3 | IGMP | Scott Masterson | Construction |  |  |
| QTS-41411 |  | DH 2300 / Electrical Gallery 2302 // Install Conduit from UPS Pod to Pumps Lineup E-R | 6d | 2026-02-24 | 2026-03-02 | QTS-41391 SS+2d, QTS-18691 |  |  |  | 47d | 0d | QTS-PHX3 DC1 - 6 day w/ Holidays | Rosendin Electric, Inc | DH2300 | Construction | Phase 3 | IGMP | Scott Masterson | Construction |  |  |
| QTS-41401 |  | DH 2300 / Electrical Gallery 2302 // Pull & Terminate from UPS Pod to Chillers Lineup E-R | 3d | 2026-02-28 | 2026-03-03 | QTS-41391, QTS-18681 |  |  |  | 32d | 0d | QTS-PHX3 DC1 - 6 day w/ Holidays | Rosendin Electric, Inc | DH2300 | Construction | Phase 3 | IGMP | Scott Masterson | Construction |  |  |
| QTS-41421 |  | DH 2300 / Electrical Gallery 2302 // Pull & Terminate from UPS Pod to Pumps Lineup E-R | 3d | 2026-03-03 | 2026-03-05 | QTS-18981, QTS-41411, QTS-41401 FF |  |  |  | 47d | 0d | QTS-PHX3 DC1 - 6 day w/ Holidays | Rosendin Electric, Inc | DH2300 | Construction | Phase 3 | IGMP | Scott Masterson | Construction |  |  |
| QTS-14291 |  | DH 2300 / Electrical Gallery 2302 // Install Electrical Tray | 5d | 2026-03-18 | 2026-03-23 | QTS-46801, QTS-14991 |  |  |  | 29d | 0d | QTS-PHX3 DC1 - 6 day w/ Holidays | Rosendin Electric, Inc | DH2300 | Construction | Phase 3 | IGMP | Scott Masterson | Construction |  |  |
| QTS-16871 |  | DH 2300 / Electrical Gallery 2302 // House Panels | 2d | 2026-03-18 | 2026-03-19 | QTS-14991, QTS-15771 |  |  |  | 36d | 0d | QTS-PHX3 DC1 - 6 day w/ Holidays | Rosendin Electric, Inc | DH2300 | Construction | Phase 3 | IGMP | Scott Masterson | Construction |  |  |
| QTS-18321 |  | DH 2300 / Electrical Gallery 2302 // Pull LV Cables Branch Circuits | 5d | 2026-03-20 | 2026-03-25 | QTS-16871 |  |  |  | 36d | 0d | QTS-PHX3 DC1 - 6 day w/ Holidays | Rosendin Electric, Inc | DH2300 | Construction | Phase 3 | IGMP | Scott Masterson | Construction |  |  |
| QTS-15311 |  | DH 2300 / Electrical Gallery 2302 // Install Basket Tray for LV | 5d | 2026-03-24 | 2026-03-28 | QTS-14291 |  |  |  | 29d | 0d | QTS-PHX3 DC1 - 6 day w/ Holidays | Rosendin Electric, Inc | DH2300 | Construction | Phase 3 | IGMP | Scott Masterson | Construction |  |  |
| QTS-18541 |  | DH 2300 / Electrical Gallery 2302 // Terminate Panels | 6d | 2026-03-26 | 2026-04-01 | QTS-18321 |  |  |  | 36d | 21d | QTS-PHX3 DC1 - 6 day w/ Holidays | Rosendin Electric, Inc | DH2300 | Construction | Phase 3 | IGMP | Scott Masterson | Construction |  |  |
| QTS-16111 |  | DH 2300 / Electrical Gallery 2302 // Install BMS & EPMS Cable and Terminations | 10d | 2026-03-30 | 2026-04-09 | QTS-15311 |  |  |  | 29d | 14d | QTS-PHX3 DC1 - 6 day w/ Holidays | Rosendin Electric, Inc | DH2300 | Construction | Phase 3 | IGMP | Scott Masterson | Construction |  |  |
|  | 1 | **Electrical** |  | 2026-03-04 | 2026-04-30 |  |  |  |  |  |  |  |  |  |  |  |  |  |  |  |  |
|  | 7 | **DH 2300 IDF Cabinets** |  | 2026-03-06 | 2026-03-10 |  |  |  |  |  |  |  |  |  |  |  |  |  |  |  |  |
| QTS-38631 |  | DH 2300 / Electrical Gallery 2302/2303 // Install Fire Rated Plywood | 1d | 2026-03-06 | 2026-03-06 | QTS-13431 |  |  |  | 49d | 0d | QTS-PHX3 DC1 - 6 day w/ Holidays |  | DH2300 | Construction | Phase 3 | GMP | Sean Waisner | Construction |  |  |
| QTS-38641 |  | DH 2300 / Electrical Gallery 2302/2303 // Set IDF Cabinet | 1d | 2026-03-07 | 2026-03-07 | QTS-38631 |  |  |  | 49d | 0d | QTS-PHX3 DC1 - 6 day w/ Holidays | Rosendin Electric, Inc | DH2300 | Construction | Phase 3 | GMP | Scott Masterson | Construction |  |  |
| QTS-38651 |  | DH 2300 / Electrical Gallery 2302/2303 // Set IDF Conduit | 2d | 2026-03-09 | 2026-03-10 | QTS-38641 |  |  |  | 49d | 0d | QTS-PHX3 DC1 - 6 day w/ Holidays | Rosendin Electric, Inc | DH2300 | Construction | Phase 3 | GMP | Scott Masterson | Construction |  |  |
|  | 1 | **A2300 Lineup** |  | 2026-03-04 | 2026-04-07 |  |  |  |  |  |  |  |  |  |  |  |  |  |  |  |  |
| QTS-15771 |  | Gallery 2302 / Lineup A2300 // OFCI - L2 SET IN PLACE - Eq Type # - COD/ATS-210-A - Skid 1-3 | 2d | 2026-03-04 | 2026-03-05 | QTS-13061 FF, QTS-36651, QTS-13061 |  |  |  | 12d | 0d | QTS-PHX3 DC1 - 6 day w/ Holidays | Rosendin Electric, Inc | DH2300 | Construction | Phase 3 | IGMP | Scott Masterson | Construction | 01ADMIN |  |
| QTS-14271 |  | Gallery 2302 / Lineup A2300 // Install Hangers & Supports | 3d | 2026-03-06 | 2026-03-09 | QTS-13431 |  |  |  | 0d |  | QTS-PHX3 DC1 - 6 day w/ Holidays | Rosendin Electric, Inc | DH2300 | Construction | Phase 3 | IGMP | Scott Masterson | Construction | 01ADMIN |  |
| QTS-45961 |  | Gallery 2302 / Lineup A2300 // OFCI - L2 SET IN PLACE - Eq Type # - COD/ATS-210-A - Skid 4-6 | 2d | 2026-03-06 | 2026-03-07 | QTS-15771 |  |  |  | 12d | 0d | QTS-PHX3 DC1 - 6 day w/ Holidays | Rosendin Electric, Inc | DH2300 | Construction | Phase 3 | IGMP | Scott Masterson | Construction |  |  |
| QTS-14991 |  | Gallery 2302 / Lineup A2300 // Install Raceways from LV POD to COD | 7d | 2026-03-10 | 2026-03-17 | QTS-14271 |  |  |  | 0d |  | QTS-PHX3 DC1 - 6 day w/ Holidays | Rosendin Electric, Inc | DH2300 | Construction | Phase 3 | IGMP | Scott Masterson | Construction |  |  |
| QTS-16371 |  | Gallery 2302 / Lineup A2300 // Set Reserve Busway Segment | 2d | 2026-03-18 | 2026-03-19 | QTS-14991, QTS-15771, QTS-50051 |  |  |  | 22d | 0d | QTS-PHX3 DC1 - 6 day w/ Holidays | Rosendin Electric, Inc | DH2300 | Construction | Phase 3 | IGMP | Scott Masterson | Construction |  |  |
| QTS-16881 |  | Gallery 2302 / Lineup A2300 // Pull LV Cables from POD to ATS | 4d | 2026-03-18 | 2026-03-21 | QTS-15771, QTS-14991, QTS-13571, QTS-45961 FF+1d |  |  |  | 22d | 0d | QTS-PHX3 DC1 - 6 day w/ Holidays | Rosendin Electric, Inc | DH2300 | Construction | Phase 3 | IGMP | Scott Masterson | Construction |  |  |
| QTS-17811 |  | Gallery 2302 / Lineup A2300 // Pull LV Cables from Reserve Bus to ATS | 2d | 2026-03-20 | 2026-03-21 | QTS-14991, QTS-16371, QTS-15771 |  |  |  | 22d | 0d | QTS-PHX3 DC1 - 6 day w/ Holidays | Rosendin Electric, Inc | DH2300 | Construction | Phase 3 | IGMP | Scott Masterson | Construction |  |  |
| QTS-18181 |  | Gallery 2302 / Lineup A2300 // Terminate & Torque ATS | 7d | 2026-03-23 | 2026-03-30 | QTS-17811, QTS-16881 |  |  |  | 22d | 0d | QTS-PHX3 DC1 - 6 day w/ Holidays | Rosendin Electric, Inc | DH2300 | Construction | Phase 3 | IGMP | Scott Masterson | Construction |  |  |
| QTS-18191 |  | Gallery 2302 / Lineup A2300 // Terminate & Torque COD | 7d | 2026-03-31 | 2026-04-07 | QTS-16881, QTS-18181 |  |  |  | 22d | 14d | QTS-PHX3 DC1 - 6 day w/ Holidays | Rosendin Electric, Inc | DH2300 | Construction | Phase 3 | IGMP | Scott Masterson | Construction |  |  |

Notes:
- QTS-14771: allucent_notes_20251230_164549: Zack Goertz on 2025-11-17 13:11: Zone 3 is last priority. Framing has barely begun on level 2. Plus, a stop work has been issued. / Luis Vea on 2025-12-01 10:47: walls are not completed / David Wiltberger on 2025-12-30 16:23: no update / allucent_notes_20251118_192630: Zack Goertz on 2025-11-17 13:11: Zone 3 is last priority. Framing has barely begun on level 2. Plus, a stop work has been issued. / allucent_notes_20251202_153722: Zack Goertz on 2025-11-17 13:11: Zone 3 is last priority. Framing has barely begun on level 2. Plus, a stop work has been issued. / Luis Vea on 2025-12-01 10:47: walls are not completed / allucent_notes_20251209_203830: Zack Goertz on 2025-11-17 13:11: Zone 3 is last priority. Framing has barely begun on level 2. Plus, a stop work has been issued. / Luis Vea on 2025-12-01 10:47: walls are not completed / allucent_notes_20251216_165335: Zack Goertz on 2025-11-17 13:11: Zone 3 is last priority. Framing has barely begun on level 2. Plus, a stop work has been issued. / Luis Vea on 2025-12-01 10:47: walls are not completed / allucent_notes: 2025-11-17 13:11 - User: Zack Goertz - Date Added: 2025-11-17 13:11 - Note: Zone 3 is last priority. Framing has barely begun on level 2. Plus, a stop work has been issued. / 2025-12-01 10:47 - User: Luis Vea - Date Added: 2025-12-01 10:47 - Note: walls

| ID | WBS | Activity | Duration | Start | Finish | Predecessors | Total float | Free float | Calendar | Subcontractor | Location | Project Section-1 | Phase-1-1 | Baseline | Layton Responsible Party | Project Section | Allucent CSI Group |
| --- | --- | --- | --- | --- | --- | --- | --- | --- | --- | --- | --- | --- | --- | --- | --- | --- | --- |
|  | 2 | **B2300 Lineup** |  | 2026-03-06 | 2026-04-07 |  |  |  |  |  |  |  |  |  |  |  |  |
| QTS-2101 |  | Gallery 2302 / Lineup B2300 // Install Hangers & Supports | 3d | 2026-03-06 | 2026-03-09 | QTS-14271 SS | 0d |  | QTS-PHX3 DC1 - 6 day w/ Holidays | Rosendin Electric, Inc | DH2300 | Construction | Phase 3 | IGMP | Scott Masterson | Construction | 01ADMIN |
| QTS-4191 |  | Gallery 2302 / Lineup B2300 // OFCI - L2 SET IN PLACE - Eq Type # - COD/ATS-210-A - Skid 1-3 | 2d | 2026-03-09 | 2026-03-10 | QTS-36661, QTS-45961 | 12d | 0d | QTS-PHX3 DC1 - 6 day w/ Holidays | Rosendin Electric, Inc | DH2300 | Construction | Phase 3 | IGMP | Scott Masterson | Construction |  |
| QTS-2981 |  | Gallery 2302 / Lineup B2300 // Install Raceways from LV POD to COD | 7d | 2026-03-10 | 2026-03-17 | QTS-2101, QTS-14991 SS | 0d |  | QTS-PHX3 DC1 - 6 day w/ Holidays | Rosendin Electric, Inc | DH2300 | Construction | Phase 3 | IGMP | Scott Masterson | Construction |  |
| QTS-45971 |  | Gallery 2302 / Lineup B2300 // OFCI - L2 SET IN PLACE - Eq Type # - COD/ATS-210-A - Skid 4-6 | 2d | 2026-03-11 | 2026-03-12 | QTS-4191 | 12d | 0d | QTS-PHX3 DC1 - 6 day w/ Holidays | Rosendin Electric, Inc | DH2300 | Construction | Phase 3 | IGMP | Scott Masterson | Construction |  |
| QTS-5251 |  | Gallery 2302 / Lineup B2300 // Set Reserve Busway Segment | 2d | 2026-03-18 | 2026-03-19 | QTS-4191, QTS-2981, QTS-50051 | 22d | 0d | QTS-PHX3 DC1 - 6 day w/ Holidays | Rosendin Electric, Inc | DH2300 | Construction | Phase 3 | IGMP | Scott Masterson | Construction |  |
| QTS-6581 |  | Gallery 2302 / Lineup B2300 // Pull LV Cables from POD to ATS | 4d | 2026-03-18 | 2026-03-21 | QTS-4191, QTS-2981, QTS-13571, QTS-45971 FF+1d | 22d | 0d | QTS-PHX3 DC1 - 6 day w/ Holidays | Rosendin Electric, Inc | DH2300 | Construction | Phase 3 | IGMP | Scott Masterson | Construction |  |
| QTS-8331 |  | Gallery 2302 / Lineup B2300 // Pull LV Cables from Reserve Bus to ATS | 2d | 2026-03-20 | 2026-03-21 | QTS-2981, QTS-5251, QTS-4191 | 22d | 0d | QTS-PHX3 DC1 - 6 day w/ Holidays | Rosendin Electric, Inc | DH2300 | Construction | Phase 3 | IGMP | Scott Masterson | Construction |  |
| QTS-9391 |  | Gallery 2302 / Lineup B2300 // Terminate & Torque ATS | 7d | 2026-03-23 | 2026-03-30 | QTS-8331, QTS-6581 | 22d | 0d | QTS-PHX3 DC1 - 6 day w/ Holidays | Rosendin Electric, Inc | DH2300 | Construction | Phase 3 | IGMP | Scott Masterson | Construction |  |
| QTS-9401 |  | Gallery 2302 / Lineup B2300 // Terminate & Torque COD | 7d | 2026-03-31 | 2026-04-07 | QTS-6581, QTS-9391 | 22d | 14d | QTS-PHX3 DC1 - 6 day w/ Holidays | Rosendin Electric, Inc | DH2300 | Construction | Phase 3 | IGMP | Scott Masterson | Construction |  |
|  | 3 | **C2300 Lineup** |  | 2026-03-10 | 2026-04-15 |  |  |  |  |  |  |  |  |  |  |  |  |
| QTS-2111 |  | Gallery 2302 / Lineup C2300 // Install Hangers & Supports | 3d | 2026-03-10 | 2026-03-12 | QTS-2101 | 1d | 0d | QTS-PHX3 DC1 - 6 day w/ Holidays | Rosendin Electric, Inc | DH2300 | Construction | Phase 3 | IGMP | Scott Masterson | Construction |  |
| QTS-4201 |  | Gallery 2302 / Lineup C2300 // OFCI - L2 SET IN PLACE - Eq Type # - COD/ATS-210-A - Skid 1-3 | 2d | 2026-03-13 | 2026-03-14 | QTS-36671, QTS-45971 | 12d | 0d | QTS-PHX3 DC1 - 6 day w/ Holidays | Rosendin Electric, Inc | DH2300 | Construction | Phase 3 | IGMP | Scott Masterson | Construction |  |
| QTS-45981 |  | Gallery 2302 / Lineup C2300 // OFCI - L2 SET IN PLACE - Eq Type # - COD/ATS-210-A - Skid 4-6 | 2d | 2026-03-16 | 2026-03-17 | QTS-4201 | 12d | 0d | QTS-PHX3 DC1 - 6 day w/ Holidays | Rosendin Electric, Inc | DH2300 | Construction | Phase 3 | IGMP | Scott Masterson | Construction |  |
| QTS-2991 |  | Gallery 2302 / Lineup C2300 // Install Raceways from LV POD to COD | 7d | 2026-03-18 | 2026-03-25 | QTS-2111, QTS-2981 | 0d |  | QTS-PHX3 DC1 - 6 day w/ Holidays | Rosendin Electric, Inc | DH2300 | Construction | Phase 3 | IGMP | Scott Masterson | Construction |  |
| QTS-5271 |  | Gallery 2302 / Lineup C2300 // Set Reserve Busway Segment | 2d | 2026-03-26 | 2026-03-27 | QTS-4201, QTS-2991, QTS-50051 | 15d | 0d | QTS-PHX3 DC1 - 6 day w/ Holidays | Rosendin Electric, Inc | DH2300 | Construction | Phase 3 | IGMP | Scott Masterson | Construction |  |
| QTS-6591 |  | Gallery 2302 / Lineup C2300 // Pull LV Cables from POD to ATS | 4d | 2026-03-26 | 2026-03-30 | QTS-4201, QTS-2991, QTS-13571, QTS-45981 FF+1d | 15d | 0d | QTS-PHX3 DC1 - 6 day w/ Holidays | Rosendin Electric, Inc | DH2300 | Construction | Phase 3 | IGMP | Scott Masterson | Construction |  |
| QTS-8351 |  | Gallery 2302 / Lineup C2300 // Pull LV Cables from Reserve Bus to ATS | 2d | 2026-03-28 | 2026-03-30 | QTS-2991, QTS-5271, QTS-4201 | 15d | 0d | QTS-PHX3 DC1 - 6 day w/ Holidays | Rosendin Electric, Inc | DH2300 | Construction | Phase 3 | IGMP | Scott Masterson | Construction |  |
| QTS-9421 |  | Gallery 2302 / Lineup C2300 // Terminate & Torque ATS | 7d | 2026-03-31 | 2026-04-07 | QTS-8351, QTS-6591 | 15d | 0d | QTS-PHX3 DC1 - 6 day w/ Holidays | Rosendin Electric, Inc | DH2300 | Construction | Phase 3 | IGMP | Scott Masterson | Construction |  |
| QTS-9431 |  | Gallery 2302 / Lineup C2300 // Terminate & Torque COD | 7d | 2026-04-08 | 2026-04-15 | QTS-6591, QTS-9421 | 15d | 0d | QTS-PHX3 DC1 - 6 day w/ Holidays | Rosendin Electric, Inc | DH2300 | Construction | Phase 3 | IGMP | Scott Masterson | Construction |  |
|  | 4 | **D2300 Lineup** |  | 2026-03-13 | 2026-04-07 |  |  |  |  |  |  |  |  |  |  |  |  |
| QTS-2121 |  | Gallery 2302 / Lineup D2300 // Install Hangers & Supports | 3d | 2026-03-13 | 2026-03-16 | QTS-2111 | 1d | 0d | QTS-PHX3 DC1 - 6 day w/ Holidays | Rosendin Electric, Inc | DH2300 | Construction | Phase 3 | IGMP | Scott Masterson | Construction |  |
| QTS-3001 |  | Gallery 2302 / Lineup D2300 // Install Raceways from LV POD to COD | 7d | 2026-03-18 | 2026-03-25 | QTS-2121, QTS-2991 SS | 0d |  | QTS-PHX3 DC1 - 6 day w/ Holidays | Rosendin Electric, Inc | DH2300 | Construction | Phase 3 | IGMP | Scott Masterson | Construction |  |
| QTS-4211 |  | Gallery 2302 / Lineup D2300 // OFCI - L2 SET IN PLACE - Eq Type # - COD/ATS-210-A - Skid 1-3 | 2d | 2026-03-18 | 2026-03-19 | QTS-36681, QTS-45981 | 12d | 0d | QTS-PHX3 DC1 - 6 day w/ Holidays | Rosendin Electric, Inc | DH2300 | Construction | Phase 3 | IGMP | Scott Masterson | Construction |  |
| QTS-45991 |  | Gallery 2302 / Lineup D2300 // OFCI - L2 SET IN PLACE - Eq Type # - COD/ATS-210-A - Skid 4-6 | 2d | 2026-03-20 | 2026-03-21 | QTS-4211 | 12d | 0d | QTS-PHX3 DC1 - 6 day w/ Holidays | Rosendin Electric, Inc | DH2300 | Construction | Phase 3 | IGMP | Scott Masterson | Construction |  |
| QTS-5291 |  | Gallery 2302 / Lineup D2300 // Set Reserve Busway Segment | 2d | 2026-03-26 | 2026-03-27 | QTS-4211, QTS-3001, QTS-50051 | 20d | 0d | QTS-PHX3 DC1 - 6 day w/ Holidays | Rosendin Electric, Inc | DH2300 | Construction | Phase 3 | IGMP | Scott Masterson | Construction |  |
| QTS-6601 |  | Gallery 2302 / Lineup D2300 // Pull LV Cables from POD to ATS | 4d | 2026-03-26 | 2026-03-30 | QTS-4211, QTS-3001, QTS-13571, QTS-45991 FF+1d | 20d | 0d | QTS-PHX3 DC1 - 6 day w/ Holidays | Rosendin Electric, Inc | DH2300 | Construction | Phase 3 | IGMP | Scott Masterson | Construction |  |
| QTS-8371 |  | Gallery 2302 / Lineup D2300 // Pull LV Cables from Reserve Bus to ATS | 2d | 2026-03-28 | 2026-03-30 | QTS-3001, QTS-5291 | 20d | 0d | QTS-PHX3 DC1 - 6 day w/ Holidays | Rosendin Electric, Inc | DH2300 | Construction | Phase 3 | IGMP | Scott Masterson | Construction |  |
| QTS-9451 |  | Gallery 2302 / Lineup D2300 // Terminate & Torque ATS | 7d | 2026-03-31 | 2026-04-07 | QTS-8371, QTS-6601 | 20d | 0d | QTS-PHX3 DC1 - 6 day w/ Holidays | Rosendin Electric, Inc | DH2300 | Construction | Phase 3 | IGMP | Scott Masterson | Construction |  |
| QTS-9461 |  | Gallery 2302 / Lineup D2300 // Terminate & Torque COD | 7d | 2026-03-31 | 2026-04-07 | QTS-6601 | 22d | 0d | QTS-PHX3 DC1 - 6 day w/ Holidays | Rosendin Electric, Inc | DH2300 | Construction | Phase 3 | IGMP | Scott Masterson | Construction |  |

| ID | WBS | Activity | Duration | Start | Finish | Predecessors | Total float | Free float | Calendar | Subcontractor | Location | Project Section-1 | Phase-1-1 | Baseline | Layton Responsible Party | Project Section |
| --- | --- | --- | --- | --- | --- | --- | --- | --- | --- | --- | --- | --- | --- | --- | --- | --- |
|  | 5 | **E2300 Lineup** |  | 2026-03-17 | 2026-04-23 |  |  |  |  |  |  |  |  |  |  |  |
| QTS-2131 |  | Gallery 2302 / Lineup E2300 // Install Hangers & Supports | 3d | 2026-03-17 | 2026-03-19 | QTS-2121 | 2d | 0d | QTS-PHX3 DC1 - 6 day w/ Holidays | Rosendin Electric, Inc | DH2300 | Construction | Phase 3 | IGMP | Scott Masterson | Construction |
| QTS-4221 |  | Gallery 2302 / Lineup E2300 // OFCI - L2 SET IN PLACE - Eq Type # - COD/ATS-210-A - Skid 1-3 | 2d | 2026-03-23 | 2026-03-24 | QTS-36691, QTS-45991 | 12d | 0d | QTS-PHX3 DC1 - 6 day w/ Holidays | Rosendin Electric, Inc | DH2300 | Construction | Phase 3 | IGMP | Scott Masterson | Construction |
| QTS-46001 |  | Gallery 2302 / Lineup E2300 // OFCI - L2 SET IN PLACE - Eq Type # - COD/ATS-210-A - Skid 4-6 | 2d | 2026-03-25 | 2026-03-26 | QTS-4221 | 12d | 0d | QTS-PHX3 DC1 - 6 day w/ Holidays | Rosendin Electric, Inc | DH2300 | Construction | Phase 3 | IGMP | Scott Masterson | Construction |
| QTS-3011 |  | Gallery 2302 / Lineup E2300 // Install Raceways from LV POD to COD | 7d | 2026-03-26 | 2026-04-02 | QTS-2131, QTS-3001 | 0d |  | QTS-PHX3 DC1 - 6 day w/ Holidays | Rosendin Electric, Inc | DH2300 | Construction | Phase 3 | IGMP | Scott Masterson | Construction |
| QTS-5311 |  | Gallery 2302 / Lineup E2300 // Set Reserve Busway Segment | 2d | 2026-04-03 | 2026-04-04 | QTS-4221, QTS-3011, QTS-50051 | 8d | 0d | QTS-PHX3 DC1 - 6 day w/ Holidays | Rosendin Electric, Inc | DH2300 | Construction | Phase 3 | IGMP | Scott Masterson | Construction |
| QTS-6611 |  | Gallery 2302 / Lineup E2300 // Pull LV Cables from POD to ATS | 4d | 2026-04-03 | 2026-04-07 | QTS-4221, QTS-3011, QTS-13571, QTS-46001 FF+1d | 8d | 0d | QTS-PHX3 DC1 - 6 day w/ Holidays | Rosendin Electric, Inc | DH2300 | Construction | Phase 3 | IGMP | Scott Masterson | Construction |
| QTS-8391 |  | Gallery 2302 / Lineup E2300 // Pull LV Cables from Reserve Bus to ATS | 2d | 2026-04-06 | 2026-04-07 | QTS-3011, QTS-5311, QTS-4221 | 8d | 0d | QTS-PHX3 DC1 - 6 day w/ Holidays | Rosendin Electric, Inc | DH2300 | Construction | Phase 3 | IGMP | Scott Masterson | Construction |
| QTS-9481 |  | Gallery 2302 / Lineup E2300 // Terminate & Torque ATS | 7d | 2026-04-08 | 2026-04-15 | QTS-8391, QTS-6611 | 8d | 0d | QTS-PHX3 DC1 - 6 day w/ Holidays | Rosendin Electric, Inc | DH2300 | Construction | Phase 3 | IGMP | Scott Masterson | Construction |
| QTS-9491 |  | Gallery 2302 / Lineup E2300 // Terminate & Torque COD | 7d | 2026-04-16 | 2026-04-23 | QTS-6611, QTS-9481 | 8d | 0d | QTS-PHX3 DC1 - 6 day w/ Holidays | Rosendin Electric, Inc | DH2300 | Construction | Phase 3 | IGMP | Scott Masterson | Construction |
|  | 6 | **F2300 Lineup** |  | 2026-03-20 | 2026-04-23 |  |  |  |  |  |  |  |  |  |  |  |
| QTS-2141 |  | Gallery 2302 / Lineup F2300 // Install Hangers & Supports | 3d | 2026-03-20 | 2026-03-23 | QTS-2131 | 2d | 0d | QTS-PHX3 DC1 - 6 day w/ Holidays | Rosendin Electric, Inc | DH2300 | Construction | Phase 3 | IGMP | Scott Masterson | Construction |
| QTS-3021 |  | Gallery 2302 / Lineup F2300 // Install Raceways from LV POD to COD | 7d | 2026-03-26 | 2026-04-02 | QTS-2141, QTS-3011 SS | 0d |  | QTS-PHX3 DC1 - 6 day w/ Holidays | Rosendin Electric, Inc | DH2300 | Construction | Phase 3 | IGMP | Scott Masterson | Construction |
| QTS-4231 |  | Gallery 2302 / Lineup F2300 // OFCI - L2 SET IN PLACE - Eq Type # - COD/ATS-210-A - Skid 1-3 | 2d | 2026-03-27 | 2026-03-28 | QTS-36701, QTS-46001 | 12d | 0d | QTS-PHX3 DC1 - 6 day w/ Holidays | Rosendin Electric, Inc | DH2300 | Construction | Phase 3 | IGMP | Scott Masterson | Construction |
| QTS-46011 |  | Gallery 2302 / Lineup F2300 // OFCI - L2 SET IN PLACE - Eq Type # - COD/ATS-210-A - Skid 4-6 | 2d | 2026-03-30 | 2026-03-31 | QTS-4231 | 13d | 5d | QTS-PHX3 DC1 - 6 day w/ Holidays | Rosendin Electric, Inc | DH2300 | Construction | Phase 3 | IGMP | Scott Masterson | Construction |
| QTS-5331 |  | Gallery 2302 / Lineup F2300 // Set Reserve Busway Segment | 2d | 2026-04-03 | 2026-04-04 | QTS-4231, QTS-3021, QTS-50051 | 8d | 0d | QTS-PHX3 DC1 - 6 day w/ Holidays | Rosendin Electric, Inc | DH2300 | Construction | Phase 3 | IGMP | Scott Masterson | Construction |
| QTS-6621 |  | Gallery 2302 / Lineup F2300 // Pull LV Cables from POD to ATS | 4d | 2026-04-03 | 2026-04-07 | QTS-4231, QTS-3021, QTS-13571, QTS-46011 FF+1d | 8d | 0d | QTS-PHX3 DC1 - 6 day w/ Holidays | Rosendin Electric, Inc | DH2300 | Construction | Phase 3 | IGMP | Scott Masterson | Construction |
| QTS-8411 |  | Gallery 2302 / Lineup F2300 // Pull LV Cables from Reserve Bus to ATS | 2d | 2026-04-06 | 2026-04-07 | QTS-3021, QTS-5331, QTS-4231 | 8d | 0d | QTS-PHX3 DC1 - 6 day w/ Holidays | Rosendin Electric, Inc | DH2300 | Construction | Phase 3 | IGMP | Scott Masterson | Construction |
| QTS-9511 |  | Gallery 2302 / Lineup F2300 // Terminate & Torque ATS | 7d | 2026-04-08 | 2026-04-15 | QTS-8411, QTS-6621 | 8d | 0d | QTS-PHX3 DC1 - 6 day w/ Holidays | Rosendin Electric, Inc | DH2300 | Construction | Phase 3 | IGMP | Scott Masterson | Construction |
| QTS-9521 |  | Gallery 2302 / Lineup F2300 // Terminate & Torque COD | 7d | 2026-04-16 | 2026-04-23 | QTS-6621, QTS-9511 | 8d | 0d | QTS-PHX3 DC1 - 6 day w/ Holidays | Rosendin Electric, Inc | DH2300 | Construction | Phase 3 | IGMP | Scott Masterson | Construction |
|  | 9 | **R2300 Lineup** |  | 2026-03-24 | 2026-04-30 |  |  |  |  |  |  |  |  |  |  |  |
| QTS-2091 |  | Gallery 2302 / Lineup R2300 // Install Hangers & Supports | 3d | 2026-03-24 | 2026-03-26 | QTS-2141 | 6d |  | QTS-PHX3 DC1 - 6 day w/ Holidays | Rosendin Electric, Inc | DH2300 | Construction | Phase 3 | IGMP | Scott Masterson | Construction |
| QTS-2971 |  | Gallery 2302 / Lineup R2300 // Install Raceways from LV POD to Reserve Busway | 5d | 2026-04-03 | 2026-04-08 | QTS-2091, QTS-3021 | 0d |  | QTS-PHX3 DC1 - 6 day w/ Holidays | Rosendin Electric, Inc | DH2300 | Construction | Phase 3 | IGMP | Scott Masterson | Construction |
| QTS-4171 |  | Gallery 2302 / Lineup R2300 // OFCI - L2 SET IN PLACE - Eq Type # - TIE SWD - 1 unit | 1d | 2026-04-09 | 2026-04-09 | QTS-2971 | 3d |  | QTS-PHX3 DC1 - 6 day w/ Holidays | Rosendin Electric, Inc | DH2300 | Construction | Phase 3 | IGMP | Scott Masterson | Construction |
| QTS-4181 |  | Gallery 2302 / Lineup R2300 // Set Reserve Busway Segment | 4d | 2026-04-09 | 2026-04-13 | QTS-2971, QTS-50051 | 0d |  | QTS-PHX3 DC1 - 6 day w/ Holidays | Rosendin Electric, Inc | DH2300 | Construction | Phase 3 | IGMP | Scott Masterson | Construction |
| QTS-6221 |  | Gallery 2302 / Lineup R2300 // Pull LV Cables from TIE SWD to Reserve Busway | 4d | 2026-04-14 | 2026-04-17 | QTS-2971, QTS-4181, QTS-4171 | 0d |  | QTS-PHX3 DC1 - 6 day w/ Holidays | Rosendin Electric, Inc | DH2300 | Construction | Phase 3 | IGMP | Scott Masterson | Construction |
| QTS-7241 |  | Gallery 2302 / Lineup R2300 // Pull LV Cables from POD to Reserve Busway | 4d | 2026-04-18 | 2026-04-22 | QTS-6221, QTS-4181, QTS-2971 | 0d |  | QTS-PHX3 DC1 - 6 day w/ Holidays | Rosendin Electric, Inc | DH2300 | Construction | Phase 3 | IGMP | Scott Masterson | Construction |
| QTS-7221 |  | Gallery 2302 / Lineup R2300 // Pull LV Cables from TIE SWD to TIE SWD adjacent # | 5d | 2026-04-23 | 2026-04-28 | QTS-2971, QTS-6221, QTS-7241 | 0d |  | QTS-PHX3 DC1 - 6 day w/ Holidays | Rosendin Electric, Inc | DH2300 | Construction | Phase 3 | IGMP | Scott Masterson | Construction |
| QTS-7231 |  | Gallery 2302 / Lineup R2300 // Terminate Reserve Busway | 2d | 2026-04-23 | 2026-04-24 | QTS-6221, QTS-7241 | 5d | 1d | QTS-PHX3 DC1 - 6 day w/ Holidays | Rosendin Electric, Inc | DH2300 | Construction | Phase 3 | IGMP | Scott Masterson | Construction |
| QTS-9371 |  | Gallery 2302 / Lineup R2300 // Terminate TIE SWD | 2d | 2026-04-29 | 2026-04-30 | QTS-7221 | 0d |  | QTS-PHX3 DC1 - 6 day w/ Holidays | Rosendin Electric, Inc | DH2300 | Construction | Phase 3 | IGMP | Scott Masterson | Construction |

| ID | WBS | Activity | Duration | Start | Finish | Predecessors | Complete | Remaining | Planned start | Planned finish | Total float | Free float | Constraint | Calendar | Subcontractor | Location | Project Section-1 | Phase-1-1 | Baseline | Layton Responsible Party | Project Section | Level | Phase-1 | Allucent CSI Group |
| --- | --- | --- | --- | --- | --- | --- | --- | --- | --- | --- | --- | --- | --- | --- | --- | --- | --- | --- | --- | --- | --- | --- | --- | --- |
|  | 4 | **DH 2300 / Rooftop Mechanical** |  | 2025-09-04 | 2026-04-14 |  |  |  |  |  |  |  |  |  |  |  |  |  |  |  |  |  |  |  |
| QTS-2021 |  | DH 2300 / Rooftop Mechanical // OFCI - L2 SET IN PLACE - Eq Type # - Chiller #1RT40 - 7 units | 5d | 2025-09-04 A | 2025-09-05 A | QTS-37121 FF, QTS-37131 FF, QTS-37141 FF, QTS-37151 FF, QTS-37161 FF, QTS-37171 FF, QTS-37181 FF | 100% |  | 2025-09-04 | 2025-09-10 |  |  |  |  | Bel-Aire Mechanical, LLC | DH2300 | Construction | Phase 3 | IGMP | Dave Wiltberger | Construction |  |  |  |
| QTS-2051 |  | DH 2300 / Rooftop Mechanical // Set Doghouse Curbs | 5d | 2025-09-17 A | 2025-09-23 A | QTS-1921 | 100% |  |  |  |  |  |  |  | Rosendin Electric, Inc | DH2300 | Construction | Phase 3 | IGMP | Scott Masterson | Construction |  |  |  |
| QTS-2031 |  | DH 2300 / Rooftop Mechanical // Set Doghouses | 5d | 2025-09-24 A | 2025-09-30 A | QTS-2051, QTS-19911 | 100% |  |  |  |  |  |  |  | Rosendin Electric, Inc | DH2300 | Construction | Phase 3 | IGMP | Scott Masterson | Construction |  |  |  |
| QTS-101360 |  | DH 2300 / Rooftop Mechanical // Install Roof Protection | 2d | 2025-11-10 A | 2025-11-11 A | QTS-42671 | 100% |  |  |  |  |  |  |  | Bel-Aire Mechanical, LLC | DH2100 |  |  | IGMP | Dave Wiltberger | Construction | Level 2 | Phase 1 | 01ADMIN |
| QTS-2071 |  | DH 2300 / Rooftop Mechanical // OFCI - L2 SET IN PLACE - Eq Type # - DOAS-RT2300 - 2 units | 2d | 2026-01-12 A | 2026-01-13 A | QTS-23911, QTS-37261, QTS-37271, QTS-24581, QTS-101360 | 100% |  |  |  |  |  | start on or after 2026-01-12 | QTS-PHX3 DC1 - 6 day w/ Holidays | Bel-Aire Mechanical, LLC | DH2300 | Construction | Phase 3 | IGMP | Dave Wiltberger | Construction |  |  | 01ADMIN |
| QTS-101410 |  | DH 2300 / Rooftop Mechanical // Rough In Condensate Drain from DOAS | 2d | 2026-01-15 | 2026-01-16 | QTS-50251 |  |  |  |  | 121d | 1d |  | QTS-PHX3 DC1 - 6 day w/ Holidays | Bel-Aire Mechanical, LLC | DH2100 |  |  | IGMP | Dave Wiltberger | Construction | Level 2 | Phase 1 | 01ADMIN |
| QTS-50261 |  | DH 2300 / Rooftop Mechanical // Rough In Power from to DOAS | 3d | 2026-01-15 | 2026-01-17 | QTS-50251 |  |  |  |  | 120d | 0d |  | QTS-PHX3 DC1 - 6 day w/ Holidays | Bel-Aire Mechanical, LLC | FOH | Construction | Phase 1 | DC | Dave Wiltberger | Construction | Roof |  |  |
| QTS-50271 |  | DH 2300 / Rooftop Mechanical // Rough In Controls from to DOAS | 1d | 2026-01-17 | 2026-01-17 | QTS-50261 FF |  |  |  |  | 120d | 0d |  | QTS-PHX3 DC1 - 6 day w/ Holidays | Bel-Aire Mechanical, LLC | FOH | Construction | Phase 1 | DC | Dave Wiltberger | Construction | Roof |  |  |
| QTS-50281 |  | DH 2300 / Rooftop Mechanical // Pre Energization Inspection DOAS | 1d | 2026-01-20 | 2026-01-20 | QTS-50271, QTS-101410 |  |  |  |  | 120d | 76d |  | QTS-PHX3 DC1 - 6 day w/ Holidays | Bel-Aire Mechanical, LLC | FOH | Construction | Phase 1 | DC | Dave Wiltberger | Construction | Roof |  |  |
| QTS-3441 |  | DH 2300 / Rooftop Mechanical // Set Vertical Inline Centrifugal Pumps | 5d | 2026-01-21 A | 2026-01-26 A | QTS-2021, QTS-3431 | 100% |  |  |  |  |  |  | QTS-PHX3 DC1 - 6 day w/ Holidays | Bel-Aire Mechanical, LLC | DH2300 | Construction | Phase 3 | IGMP | Dave Wiltberger | Construction |  |  | 01ADMIN |
| QTS-50251 |  | DH 2300 / Rooftop Mechanical // Rough In Plumbing from to DOAS | 1d | 2026-01-21 A | 2026-01-14 | QTS-2071 |  | 1d | 2026-01-21 | 2026-01-21 | 120d | 0d |  | QTS-PHX3 DC1 - 6 day w/ Holidays | Bel-Aire Mechanical, LLC | FOH | Construction | Phase 1 | DC | Dave Wiltberger | Construction | Roof |  | 01ADMIN |
| QTS-101400 |  | DH 2300 / Rooftop Mechanical // Install Grating, Toe Kicks, Hand Rails for TES Tanks | 5d | 2026-02-20 | 2026-02-25 | QTS-101360, QTS-100350, QTS-100920 |  |  |  |  | 29d | 0d | start on or after 2026-02-20 | QTS-PHX3 DC1 - 6 day w/ Holidays | Bel-Aire Mechanical, LLC | DH2100 |  |  | IGMP | Dave Wiltberger | Construction | Level 2 | Phase 1 | 01ADMIN |
| QTS-101420 |  | DH 2300 / Rooftop Mechanical // OFCI - ROOF SET IN PLACE - Eq Type # - TES Tanks - 7 units | 1d | 2026-02-26 | 2026-02-26 | QTS-101400 |  |  |  |  | 29d | 0d |  | QTS-PHX3 DC1 - 6 day w/ Holidays | Bel-Aire Mechanical, LLC | DH2100 |  |  | IGMP | Dave Wiltberger | Construction | Level 2 | Phase 1 | 01ADMIN |
| QTS-101370 |  | DH 2300 / Rooftop Mechanical // Install 12" CHWS/R Run-Outs to RPH Vaults | 13d | 2026-02-27 | 2026-03-13 | QTS-101360, QTS-101420 |  |  |  |  | 30d | 0d |  | QTS-PHX3 DC1 - 6 day w/ Holidays | Bel-Aire Mechanical, LLC | DH2100 |  |  | IGMP | Dave Wiltberger | Construction | Level 2 | Phase 1 | 01ADMIN |
| QTS-101380 |  | DH 2300 / Rooftop Mechanical // Assemble & Install CHWS/R Piping from Mainline Piping to ACC Deck | 23d | 2026-02-27 | 2026-03-25 | QTS-101370 SS |  |  |  |  | 30d | 0d |  | QTS-PHX3 DC1 - 6 day w/ Holidays | Bel-Aire Mechanical, LLC | DH2100 |  |  | IGMP | Dave Wiltberger | Construction | Level 2 | Phase 1 | 01ADMIN |
| QTS-101390 |  | DH 2300 / Rooftop Mechanical // Assemble & Install CHW Pump Assemblies at ACC Deck to Chillers | 28d | 2026-02-27 | 2026-03-31 | QTS-101380 SS |  |  |  |  | 30d | 0d |  | QTS-PHX3 DC1 - 6 day w/ Holidays | Bel-Aire Mechanical, LLC | DH2100 |  |  | IGMP | Dave Wiltberger | Construction | Level 2 | Phase 1 | 01ADMIN |
| QTS-101430 |  | DH 2300 / Rooftop Mechanical // Finalize Detailing for TES Tank CHW Piping/ Fabrication | 7d | 2026-02-27 | 2026-03-06 | QTS-101420 |  |  |  |  | 47d | 0d |  | QTS-PHX3 DC1 - 6 day w/ Holidays | Bel-Aire Mechanical, LLC | DH2100 |  |  | IGMP | Dave Wiltberger | Construction | Level 2 | Phase 1 | 01ADMIN |
| QTS-101450 |  | DH 2300 / Rooftop Mechanical // Install TES Tank CHW Piping - 7 Units | 10d | 2026-03-07 | 2026-03-18 | QTS-101430 |  |  |  |  | 47d | 0d |  | QTS-PHX3 DC1 - 6 day w/ Holidays | Bel-Aire Mechanical, LLC | DH2100 |  |  | IGMP | Dave Wiltberger | Construction | Level 2 | Phase 1 | 01ADMIN |
| QTS-101440 |  | DH 2300 / Rooftop Mechanical // Install Mainline Piping from RPH Vaults to Galleries (Risers) L2 / L1 | 10d | 2026-03-09 | 2026-03-19 | QTS-101390 SS+8d |  |  |  |  | 30d | 0d |  | QTS-PHX3 DC1 - 6 day w/ Holidays | Bel-Aire Mechanical, LLC | DH2100 |  |  | IGMP | Dave Wiltberger | Construction | Level 2 | Phase 1 | 01ADMIN |
| QTS-101460 |  | DH 2300 / Rooftop Mechanical // Set RPH Vault Housings | 5d | 2026-03-17 | 2026-03-21 | QTS-101440 FF+2d |  |  |  |  | 30d | 1d |  | QTS-PHX3 DC1 - 6 day w/ Holidays | Bel-Aire Mechanical, LLC | DH2100 |  |  | IGMP | Dave Wiltberger | Construction | Level 2 | Phase 1 | 01ADMIN |
| QTS-101510 |  | DH 2300 / Rooftop Mechanical // Pressure Test (Air) Industrial Loop (TES Tank) | 1d | 2026-03-19 | 2026-03-19 | QTS-101450 |  |  |  |  | 47d | 0d |  | QTS-PHX3 DC1 - 6 day w/ Holidays | Bel-Aire Mechanical, LLC | DH2100 |  |  | IGMP | Dave Wiltberger | Construction | Level 2 | Phase 1 | 01ADMIN |
| QTS-101520 |  | DH 2300 / Rooftop Mechanical // Hydro-Test (Water) Industrial Loop (TES Tank) | 1d | 2026-03-20 | 2026-03-20 | QTS-101510 |  |  |  |  | 47d | 0d |  | QTS-PHX3 DC1 - 6 day w/ Holidays | Bel-Aire Mechanical, LLC | DH2100 |  |  | IGMP | Dave Wiltberger | Construction | Level 2 | Phase 1 | 01ADMIN |
| QTS-101530 |  | DH 2300 / Rooftop Mechanical // Fill and Flush Industrial Loop (TES Tank) | 7d | 2026-03-21 | 2026-03-27 | QTS-101520 |  |  |  |  | 55d |  |  | QTS-PHX3 DC1 - 7 day No Holidays | Bel-Aire Mechanical, LLC | DH2100 |  |  | IGMP | Dave Wiltberger | Construction | Level 2 | Phase 1 | 01ADMIN |
| QTS-101470 |  | DH 2300 / Rooftop Mechanical // Pressure Test (Air) Industrial Loop (L1) | 1d | 2026-03-24 | 2026-03-24 | QTS-101440, QTS-101230 FF, QTS-101460 |  |  |  |  | 29d | 0d |  | QTS-PHX3 DC1 - 6 day w/ Holidays | Bel-Aire Mechanical, LLC | DH2100 |  |  | IGMP | Dave Wiltberger | Construction | Level 2 | Phase 1 | 01ADMIN |
| QTS-101480 |  | DH 2300 / Rooftop Mechanical // Pressure Test (Air) Industrial Loop (L2) | 1d | 2026-03-25 | 2026-03-25 | QTS-101470 |  |  |  |  | 29d | 0d |  | QTS-PHX3 DC1 - 6 day w/ Holidays | Bel-Aire Mechanical, LLC | DH2100 |  |  | IGMP | Dave Wiltberger | Construction | Level 2 | Phase 1 | 01ADMIN |
| QTS-101490 |  | DH 2300 / Rooftop Mechanical // Pressure Test (Air) Industrial Loop (Roof) | 1d | 2026-03-26 | 2026-03-26 | QTS-101480 |  |  |  |  | 29d | 0d |  | QTS-PHX3 DC1 - 6 day w/ Holidays | Bel-Aire Mechanical, LLC | DH2100 |  |  | IGMP | Dave Wiltberger | Construction | Level 2 | Phase 1 | 01ADMIN |
| QTS-101500 |  | DH 2300 / Rooftop Mechanical // Install Temp Flush Pump, Power Source for Pump & Other Associated Components | 5d | 2026-03-27 | 2026-04-01 | QTS-101490 |  |  |  |  | 29d | 0d |  | QTS-PHX3 DC1 - 6 day w/ Holidays | Bel-Aire Mechanical, LLC | DH2100 |  |  | IGMP | Dave Wiltberger | Construction | Level 2 | Phase 1 | 01ADMIN |
| QTS-101540 |  | DH 2300 / Rooftop Mechanical // Hydro-Test (Water) Industrial Loop (L1) | 1d | 2026-04-02 | 2026-04-02 | QTS-101500 |  |  |  |  | 29d | 0d |  | QTS-PHX3 DC1 - 6 day w/ Holidays | Bel-Aire Mechanical, LLC | DH2100 |  |  | IGMP | Dave Wiltberger | Construction | Level 2 | Phase 1 | 01ADMIN |
| QTS-101550 |  | DH 2300 / Rooftop Mechanical // Hydro-Test (Water) Industrial Loop (L2) | 1d | 2026-04-03 | 2026-04-03 | QTS-101540 |  |  |  |  | 29d | 0d |  | QTS-PHX3 DC1 - 6 day w/ Holidays | Bel-Aire Mechanical, LLC | DH2100 |  |  | IGMP | Dave Wiltberger | Construction | Level 2 | Phase 1 | 01ADMIN |
| QTS-101560 |  | DH 2300 / Rooftop Mechanical // Hydro-Test (Water) Industrial Loop (Roof) | 1d | 2026-04-04 | 2026-04-04 | QTS-101550 |  |  |  |  | 29d | 0d |  | QTS-PHX3 DC1 - 6 day w/ Holidays | Bel-Aire Mechanical, LLC | DH2100 |  |  | IGMP | Dave Wiltberger | Construction | Level 2 | Phase 1 | 01ADMIN |
| QTS-101570 |  | DH 2300 / Rooftop Mechanical // Fill and Flush Industrial Loop (Zone 3 - All Levels) | 10d | 2026-04-05 | 2026-04-14 | QTS-101560 |  |  |  |  | 34d | 8d |  | QTS-PHX3 DC1 - 7 day No Holidays | Bel-Aire Mechanical, LLC | DH2100 |  |  | IGMP | Dave Wiltberger | Construction | Level 2 | Phase 1 | 01ADMIN |

Notes:
- QTS-101360: allucent_notes: David Wiltberger on 2025-08-19 09:08: changed pick order / allucent_notes_20251014_152335: David Wiltberger on 2025-08-19 09:08: changed pick order / David Wiltberger on 2025-09-02 10:09: Moving to accommodate roofing in Zone 1 / David Wiltberger on 2025-09-24 04:09: BAM not completed Potential Delay / David Wiltberger on 2025-09-30 12:09: BAM did not complete / David Wiltberger on 2025-10-14 10:10: set on recovery schedule / allucent_notes: 2025-08-19 09:08 - User: David Wiltberger - Date Added: 2025-08-19 09:08 - Note: changed pick order / 2025-09-02 10:09 - User: David Wiltberger - Date Added: 2025-09-02 10:09 - Note: Moving to accommodate roofing in Zone 1 / 2025-09-24 04:09 - User: Dav
- QTS-101410: allucent_notes: David Wiltberger on 2025-08-19 09:08: changed pick order / allucent_notes_20251014_152335: David Wiltberger on 2025-08-19 09:08: changed pick order / David Wiltberger on 2025-09-02 10:09: Moving to accommodate roofing in Zone 1 / David Wiltberger on 2025-09-24 04:09: BAM not completed Potential Delay / David Wiltberger on 2025-09-30 12:09: BAM did not complete / David Wiltberger on 2025-10-14 10:10: set on recovery schedule / allucent_notes: 2025-08-19 09:08 - User: David Wiltberger - Date Added: 2025-08-19 09:08 - Note: changed pick order / 2025-09-02 10:09 - User: David Wiltberger - Date Added: 2025-09-02 10:09 - Note: Moving to accommodate roofing in Zone 1 / 2025-09-24 04:09 - User: Dav
- QTS-101400: allucent_notes: David Wiltberger on 2025-08-19 09:08: changed pick order / allucent_notes_20251014_152335: David Wiltberger on 2025-08-19 09:08: changed pick order / David Wiltberger on 2025-09-02 10:09: Moving to accommodate roofing in Zone 1 / David Wiltberger on 2025-09-24 04:09: BAM not completed Potential Delay / David Wiltberger on 2025-09-30 12:09: BAM did not complete / David Wiltberger on 2025-10-14 10:10: set on recovery schedule / allucent_notes_20251202_153722: David Wiltberger on 2025-12-01 09:52: No TES tanks set yet / allucent_notes: 2025-12-01 09:52 - User: David Wiltberger - Date Added: 2025-12-01 09:52 - Note: No TES tanks set yet
- QTS-101420: allucent_notes: David Wiltberger on 2025-08-19 09:08: changed pick order / allucent_notes_20251014_152335: David Wiltberger on 2025-08-19 09:08: changed pick order / David Wiltberger on 2025-09-02 10:09: Moving to accommodate roofing in Zone 1 / David Wiltberger on 2025-09-24 04:09: BAM not completed Potential Delay / David Wiltberger on 2025-09-30 12:09: BAM did not complete / David Wiltberger on 2025-10-14 10:10: set on recovery schedule / allucent_notes: 2025-08-19 09:08 - User: David Wiltberger - Date Added: 2025-08-19 09:08 - Note: changed pick order / 2025-09-02 10:09 - User: David Wiltberger - Date Added: 2025-09-02 10:09 - Note: Moving to accommodate roofing in Zone 1 / 2025-09-24 04:09 - User: Dav
- QTS-101370: allucent_notes: David Wiltberger on 2025-08-19 09:08: changed pick order / allucent_notes_20251014_152335: David Wiltberger on 2025-08-19 09:08: changed pick order / David Wiltberger on 2025-09-02 10:09: Moving to accommodate roofing in Zone 1 / David Wiltberger on 2025-09-24 04:09: BAM not completed Potential Delay / David Wiltberger on 2025-09-30 12:09: BAM did not complete / David Wiltberger on 2025-10-14 10:10: set on recovery schedule / allucent_notes_20251118_192630: David Wiltberger on 2025-11-17 16:11: out of sequence / allucent_notes_20251202_153722: David Wiltberger on 2025-11-17 16:11: out of sequence / allucent_notes: 2025-11-17 16:11 - User: David Wiltberger - Date Added: 2025-11-17 16:11 - Note: out of sequence
- QTS-101380: allucent_notes: David Wiltberger on 2025-08-19 09:08: changed pick order / allucent_notes_20251014_152335: David Wiltberger on 2025-08-19 09:08: changed pick order / David Wiltberger on 2025-09-02 10:09: Moving to accommodate roofing in Zone 1 / David Wiltberger on 2025-09-24 04:09: BAM not completed Potential Delay / David Wiltberger on 2025-09-30 12:09: BAM did not complete / David Wiltberger on 2025-10-14 10:10: set on recovery schedule / allucent_notes: 2025-08-19 09:08 - User: David Wiltberger - Date Added: 2025-08-19 09:08 - Note: changed pick order / 2025-09-02 10:09 - User: David Wiltberger - Date Added: 2025-09-02 10:09 - Note: Moving to accommodate roofing in Zone 1 / 2025-09-24 04:09 - User: Dav
- QTS-101390: allucent_notes: David Wiltberger on 2025-08-19 09:08: changed pick order / allucent_notes_20251014_152335: David Wiltberger on 2025-08-19 09:08: changed pick order / David Wiltberger on 2025-09-02 10:09: Moving to accommodate roofing in Zone 1 / David Wiltberger on 2025-09-24 04:09: BAM not completed Potential Delay / David Wiltberger on 2025-09-30 12:09: BAM did not complete / David Wiltberger on 2025-10-14 10:10: set on recovery schedule / allucent_notes: 2025-08-19 09:08 - User: David Wiltberger - Date Added: 2025-08-19 09:08 - Note: changed pick order / 2025-09-02 10:09 - User: David Wiltberger - Date Added: 2025-09-02 10:09 - Note: Moving to accommodate roofing in Zone 1 / 2025-09-24 04:09 - User: Dav
- QTS-101430: allucent_notes: David Wiltberger on 2025-08-19 09:08: changed pick order / allucent_notes_20251014_152335: David Wiltberger on 2025-08-19 09:08: changed pick order / David Wiltberger on 2025-09-02 10:09: Moving to accommodate roofing in Zone 1 / David Wiltberger on 2025-09-24 04:09: BAM not completed Potential Delay / David Wiltberger on 2025-09-30 12:09: BAM did not complete / David Wiltberger on 2025-10-14 10:10: set on recovery schedule / allucent_notes: 2025-08-19 09:08 - User: David Wiltberger - Date Added: 2025-08-19 09:08 - Note: changed pick order / 2025-09-02 10:09 - User: David Wiltberger - Date Added: 2025-09-02 10:09 - Note: Moving to accommodate roofing in Zone 1 / 2025-09-24 04:09 - User: Dav
- QTS-101450: allucent_notes: David Wiltberger on 2025-08-19 09:08: changed pick order / allucent_notes_20251014_152335: David Wiltberger on 2025-08-19 09:08: changed pick order / David Wiltberger on 2025-09-02 10:09: Moving to accommodate roofing in Zone 1 / David Wiltberger on 2025-09-24 04:09: BAM not completed Potential Delay / David Wiltberger on 2025-09-30 12:09: BAM did not complete / David Wiltberger on 2025-10-14 10:10: set on recovery schedule / allucent_notes: 2025-08-19 09:08 - User: David Wiltberger - Date Added: 2025-08-19 09:08 - Note: changed pick order / 2025-09-02 10:09 - User: David Wiltberger - Date Added: 2025-09-02 10:09 - Note: Moving to accommodate roofing in Zone 1 / 2025-09-24 04:09 - User: Dav
- QTS-101440: allucent_notes: David Wiltberger on 2025-08-19 09:08: changed pick order / allucent_notes_20251014_152335: David Wiltberger on 2025-08-19 09:08: changed pick order / David Wiltberger on 2025-09-02 10:09: Moving to accommodate roofing in Zone 1 / David Wiltberger on 2025-09-24 04:09: BAM not completed Potential Delay / David Wiltberger on 2025-09-30 12:09: BAM did not complete / David Wiltberger on 2025-10-14 10:10: set on recovery schedule / allucent_notes: 2025-08-19 09:08 - User: David Wiltberger - Date Added: 2025-08-19 09:08 - Note: changed pick order / 2025-09-02 10:09 - User: David Wiltberger - Date Added: 2025-09-02 10:09 - Note: Moving to accommodate roofing in Zone 1 / 2025-09-24 04:09 - User: Dav
- QTS-101460: allucent_notes: David Wiltberger on 2025-08-19 09:08: changed pick order / allucent_notes_20251014_152335: David Wiltberger on 2025-08-19 09:08: changed pick order / David Wiltberger on 2025-09-02 10:09: Moving to accommodate roofing in Zone 1 / David Wiltberger on 2025-09-24 04:09: BAM not completed Potential Delay / David Wiltberger on 2025-09-30 12:09: BAM did not complete / David Wiltberger on 2025-10-14 10:10: set on recovery schedule / allucent_notes: 2025-08-19 09:08 - User: David Wiltberger - Date Added: 2025-08-19 09:08 - Note: changed pick order / 2025-09-02 10:09 - User: David Wiltberger - Date Added: 2025-09-02 10:09 - Note: Moving to accommodate roofing in Zone 1 / 2025-09-24 04:09 - User: Dav
- QTS-101510: allucent_notes: David Wiltberger on 2025-08-19 09:08: changed pick order / allucent_notes_20251014_152335: David Wiltberger on 2025-08-19 09:08: changed pick order / David Wiltberger on 2025-09-02 10:09: Moving to accommodate roofing in Zone 1 / David Wiltberger on 2025-09-24 04:09: BAM not completed Potential Delay / David Wiltberger on 2025-09-30 12:09: BAM did not complete / David Wiltberger on 2025-10-14 10:10: set on recovery schedule / allucent_notes: 2025-08-19 09:08 - User: David Wiltberger - Date Added: 2025-08-19 09:08 - Note: changed pick order / 2025-09-02 10:09 - User: David Wiltberger - Date Added: 2025-09-02 10:09 - Note: Moving to accommodate roofing in Zone 1 / 2025-09-24 04:09 - User: Dav
- QTS-101520: allucent_notes: David Wiltberger on 2025-08-19 09:08: changed pick order / allucent_notes_20251014_152335: David Wiltberger on 2025-08-19 09:08: changed pick order / David Wiltberger on 2025-09-02 10:09: Moving to accommodate roofing in Zone 1 / David Wiltberger on 2025-09-24 04:09: BAM not completed Potential Delay / David Wiltberger on 2025-09-30 12:09: BAM did not complete / David Wiltberger on 2025-10-14 10:10: set on recovery schedule / allucent_notes: 2025-08-19 09:08 - User: David Wiltberger - Date Added: 2025-08-19 09:08 - Note: changed pick order / 2025-09-02 10:09 - User: David Wiltberger - Date Added: 2025-09-02 10:09 - Note: Moving to accommodate roofing in Zone 1 / 2025-09-24 04:09 - User: Dav
- QTS-101530: allucent_notes: David Wiltberger on 2025-08-19 09:08: changed pick order / allucent_notes_20251014_152335: David Wiltberger on 2025-08-19 09:08: changed pick order / David Wiltberger on 2025-09-02 10:09: Moving to accommodate roofing in Zone 1 / David Wiltberger on 2025-09-24 04:09: BAM not completed Potential Delay / David Wiltberger on 2025-09-30 12:09: BAM did not complete / David Wiltberger on 2025-10-14 10:10: set on recovery schedule / allucent_notes: 2025-08-19 09:08 - User: David Wiltberger - Date Added: 2025-08-19 09:08 - Note: changed pick order / 2025-09-02 10:09 - User: David Wiltberger - Date Added: 2025-09-02 10:09 - Note: Moving to accommodate roofing in Zone 1 / 2025-09-24 04:09 - User: Dav
- QTS-101470: allucent_notes: David Wiltberger on 2025-08-19 09:08: changed pick order / allucent_notes_20251014_152335: David Wiltberger on 2025-08-19 09:08: changed pick order / David Wiltberger on 2025-09-02 10:09: Moving to accommodate roofing in Zone 1 / David Wiltberger on 2025-09-24 04:09: BAM not completed Potential Delay / David Wiltberger on 2025-09-30 12:09: BAM did not complete / David Wiltberger on 2025-10-14 10:10: set on recovery schedule / allucent_notes: 2025-08-19 09:08 - User: David Wiltberger - Date Added: 2025-08-19 09:08 - Note: changed pick order / 2025-09-02 10:09 - User: David Wiltberger - Date Added: 2025-09-02 10:09 - Note: Moving to accommodate roofing in Zone 1 / 2025-09-24 04:09 - User: Dav
- QTS-101480: allucent_notes: David Wiltberger on 2025-08-19 09:08: changed pick order / allucent_notes_20251014_152335: David Wiltberger on 2025-08-19 09:08: changed pick order / David Wiltberger on 2025-09-02 10:09: Moving to accommodate roofing in Zone 1 / David Wiltberger on 2025-09-24 04:09: BAM not completed Potential Delay / David Wiltberger on 2025-09-30 12:09: BAM did not complete / David Wiltberger on 2025-10-14 10:10: set on recovery schedule / allucent_notes: 2025-08-19 09:08 - User: David Wiltberger - Date Added: 2025-08-19 09:08 - Note: changed pick order / 2025-09-02 10:09 - User: David Wiltberger - Date Added: 2025-09-02 10:09 - Note: Moving to accommodate roofing in Zone 1 / 2025-09-24 04:09 - User: Dav
- QTS-101490: allucent_notes: David Wiltberger on 2025-08-19 09:08: changed pick order / allucent_notes_20251014_152335: David Wiltberger on 2025-08-19 09:08: changed pick order / David Wiltberger on 2025-09-02 10:09: Moving to accommodate roofing in Zone 1 / David Wiltberger on 2025-09-24 04:09: BAM not completed Potential Delay / David Wiltberger on 2025-09-30 12:09: BAM did not complete / David Wiltberger on 2025-10-14 10:10: set on recovery schedule / allucent_notes: 2025-08-19 09:08 - User: David Wiltberger - Date Added: 2025-08-19 09:08 - Note: changed pick order / 2025-09-02 10:09 - User: David Wiltberger - Date Added: 2025-09-02 10:09 - Note: Moving to accommodate roofing in Zone 1 / 2025-09-24 04:09 - User: Dav
- QTS-101500: allucent_notes: David Wiltberger on 2025-08-19 09:08: changed pick order / allucent_notes_20251014_152335: David Wiltberger on 2025-08-19 09:08: changed pick order / David Wiltberger on 2025-09-02 10:09: Moving to accommodate roofing in Zone 1 / David Wiltberger on 2025-09-24 04:09: BAM not completed Potential Delay / David Wiltberger on 2025-09-30 12:09: BAM did not complete / David Wiltberger on 2025-10-14 10:10: set on recovery schedule / allucent_notes: 2025-08-19 09:08 - User: David Wiltberger - Date Added: 2025-08-19 09:08 - Note: changed pick order / 2025-09-02 10:09 - User: David Wiltberger - Date Added: 2025-09-02 10:09 - Note: Moving to accommodate roofing in Zone 1 / 2025-09-24 04:09 - User: Dav
- QTS-101540: allucent_notes: David Wiltberger on 2025-08-19 09:08: changed pick order / allucent_notes_20251014_152335: David Wiltberger on 2025-08-19 09:08: changed pick order / David Wiltberger on 2025-09-02 10:09: Moving to accommodate roofing in Zone 1 / David Wiltberger on 2025-09-24 04:09: BAM not completed Potential Delay / David Wiltberger on 2025-09-30 12:09: BAM did not complete / David Wiltberger on 2025-10-14 10:10: set on recovery schedule / allucent_notes: 2025-08-19 09:08 - User: David Wiltberger - Date Added: 2025-08-19 09:08 - Note: changed pick order / 2025-09-02 10:09 - User: David Wiltberger - Date Added: 2025-09-02 10:09 - Note: Moving to accommodate roofing in Zone 1 / 2025-09-24 04:09 - User: Dav
- QTS-101550: allucent_notes: David Wiltberger on 2025-08-19 09:08: changed pick order / allucent_notes_20251014_152335: David Wiltberger on 2025-08-19 09:08: changed pick order / David Wiltberger on 2025-09-02 10:09: Moving to accommodate roofing in Zone 1 / David Wiltberger on 2025-09-24 04:09: BAM not completed Potential Delay / David Wiltberger on 2025-09-30 12:09: BAM did not complete / David Wiltberger on 2025-10-14 10:10: set on recovery schedule / allucent_notes: 2025-08-19 09:08 - User: David Wiltberger - Date Added: 2025-08-19 09:08 - Note: changed pick order / 2025-09-02 10:09 - User: David Wiltberger - Date Added: 2025-09-02 10:09 - Note: Moving to accommodate roofing in Zone 1 / 2025-09-24 04:09 - User: Dav
- QTS-101560: allucent_notes: David Wiltberger on 2025-08-19 09:08: changed pick order / allucent_notes_20251014_152335: David Wiltberger on 2025-08-19 09:08: changed pick order / David Wiltberger on 2025-09-02 10:09: Moving to accommodate roofing in Zone 1 / David Wiltberger on 2025-09-24 04:09: BAM not completed Potential Delay / David Wiltberger on 2025-09-30 12:09: BAM did not complete / David Wiltberger on 2025-10-14 10:10: set on recovery schedule / allucent_notes: 2025-08-19 09:08 - User: David Wiltberger - Date Added: 2025-08-19 09:08 - Note: changed pick order / 2025-09-02 10:09 - User: David Wiltberger - Date Added: 2025-09-02 10:09 - Note: Moving to accommodate roofing in Zone 1 / 2025-09-24 04:09 - User: Dav
- QTS-101570: allucent_notes: David Wiltberger on 2025-08-19 09:08: changed pick order / allucent_notes_20251014_152335: David Wiltberger on 2025-08-19 09:08: changed pick order / David Wiltberger on 2025-09-02 10:09: Moving to accommodate roofing in Zone 1 / David Wiltberger on 2025-09-24 04:09: BAM not completed Potential Delay / David Wiltberger on 2025-09-30 12:09: BAM did not complete / David Wiltberger on 2025-10-14 10:10: set on recovery schedule / allucent_notes: 2025-08-19 09:08 - User: David Wiltberger - Date Added: 2025-08-19 09:08 - Note: changed pick order / 2025-09-02 10:09 - User: David Wiltberger - Date Added: 2025-09-02 10:09 - Note: Moving to accommodate roofing in Zone 1 / 2025-09-24 04:09 - User: Dav

| ID | WBS | Activity | Duration | Start | Finish | Predecessors | Complete | Remaining | Planned start | Planned finish | Total float | Free float | Calendar | Subcontractor | Level | Location | Baseline | Layton Responsible Party | Phase-1 | Project Section | Allucent CSI Group | Project Section-1 | Phase-1-1 |
| --- | --- | --- | --- | --- | --- | --- | --- | --- | --- | --- | --- | --- | --- | --- | --- | --- | --- | --- | --- | --- | --- | --- | --- |
|  | 1 | **Fragnet Bulletin 4 Grating** |  | 2025-10-10 | 2026-01-26 |  |  |  |  |  |  |  |  |  |  |  |  |  |  |  |  |  |  |
| QTS-1001890 |  | Fragnet / DH 2300 / Rooftop Mechanical // Bulletin 4 Received by Layton | 1d | 2025-10-10 A | 2025-10-10 A | QTS-1371 SS | 100% |  |  |  |  |  |  | Bel-Aire Mechanical, LLC | Level 2 | DH2100 | IGMP | Dave Wiltberger | Phase 1 | Construction | 01ADMIN |  |  |
| QTS-1001910 |  | Fragnet / DH 2300 / Rooftop Mechanical // Updated Bulletin 4 Received by Layton | 3d | 2025-10-13 A | 2025-10-15 A | QTS-1001890 | 100% |  | 2025-10-10 | 2025-10-14 |  |  |  | Bel-Aire Mechanical, LLC | Level 2 | DH2100 | IGMP | Dave Wiltberger | Phase 1 | Construction | 01ADMIN |  |  |
| QTS-1001920 |  | Fragnet / DH 2300 / Rooftop Mechanical // Layton Submitting Shop Drawings to QTS Design (DLB) | 23d | 2025-10-16 A | 2025-11-17 A | QTS-1001910 | 100% |  | 2025-10-10 | 2025-11-11 |  |  |  | Bel-Aire Mechanical, LLC | Level 2 | DH2100 | IGMP | Dave Wiltberger | Phase 1 | Construction | 01ADMIN |  |  |
| QTS-1001930 |  | Fragnet / DH 2300 / Rooftop Mechanical // Layton Submitting Shop Drawings to QTS Design (Corgan) | 23d | 2025-11-18 A | 2025-12-09 A | QTS-1001920 | 100% |  | 2025-10-10 | 2025-11-11 |  |  |  | Bel-Aire Mechanical, LLC | Level 2 | DH2100 | IGMP | Dave Wiltberger | Phase 1 | Construction | 01ADMIN |  |  |
| QTS-1001940 |  | Fragnet / DH 2300 / Rooftop Mechanical // QTS Design Response for Grating | 10d | 2025-12-10 A | 2026-01-14 | QTS-1001930 | 100% | 0d | 2025-10-10 | 2025-10-23 | 133d | 0d |  | Bel-Aire Mechanical, LLC | Level 2 | DH2100 | IGMP | Dave Wiltberger | Phase 1 | Construction | 01ADMIN |  |  |
| QTS-1001900 |  | Fragnet / DH 2300 / Rooftop Mechanical // Install Grating, Toe Kicks, Hand Rails to Complete Chiller Deck | 10d | 2026-01-14 | 2026-01-26 | QTS-1001940 |  |  |  |  | 160d | 156d | QTS-PHX3 DC1 - 6 day w/ Holidays | Bel-Aire Mechanical, LLC | Level 2 | DH2100 | IGMP | Dave Wiltberger | Phase 1 | Construction | 01ADMIN |  |  |
|  | 5 | **DH 2300 / Mechanical Yard Buildout** |  | 2025-10-02 | 2026-04-10 |  |  |  |  |  |  |  |  |  |  |  |  |  |  |  |  |  |  |
| QTS-42491 |  | DH 2300 / Mechanical Yard // Excavate for MV Conduit | 4d | 2025-10-02 A | 2025-10-07 A | QTS-99200, QTS-42371 | 100% |  |  |  |  |  |  | Oregon Electric Group | Level 2 | Gen Yard | IGMP | Ron Carroll |  | Construction |  | Construction | Phase 1 |
| QTS-42501 |  | DH 2300 / Mechanical Yard // Install Conduit for MV Cables | 4d | 2025-10-03 A | 2025-10-15 A | QTS-42491 FF+1d | 100% |  | 2025-10-03 | 2025-10-08 |  |  |  | Oregon Electric Group | Level 2 | Gen Yard | IGMP | Ron Carroll |  | Construction | 01ADMIN | Construction | Phase 1 |
| QTS-42511 |  | DH 2300 / Mechanical Yard // Slurry for MV Conduits | 3d | 2025-10-07 A | 2025-10-16 A | QTS-42501 FF+1d | 100% |  | 2025-10-07 | 2025-10-09 |  |  |  | Oregon Electric Group | Level 2 | Gen Yard | IGMP | Ron Carroll |  | Construction | 01ADMIN | Construction | Phase 1 |
| QTS-42521 |  | DH 2300 / Mechanical Yard // Backfill Conduit for MV Cables | 4d | 2025-10-07 A | 2025-10-17 A | QTS-42511 FF+1d | 100% |  | 2025-10-07 | 2025-10-10 |  |  |  | Oregon Electric Group | Level 2 | Gen Yard | IGMP | Ron Carroll |  | Construction | 01ADMIN | Construction | Phase 1 |
| QTS-99420 |  | DH 2300 / Mechanical Yard // Form, Reinforce, & Pour Thickened Slab On Grade for MVGs | 5d | 2025-10-20 A | 2025-10-27 A | QTS-42491 | 100% |  | 2025-12-16 | 2025-12-22 |  |  |  | Suntec Concrete Inc | Level 2 | Gen Yard | IGMP | Ron Carroll | Phase 1 | Construction | 01ADMIN |  |  |
| QTS-99430 |  | DH 2300 / Mechanical Yard // OFCI - L2 SET IN PLACE - Eq Type # - DC1-MVG-A2 - 1 unit | 1d | 2025-10-28 A | 2025-10-28 A | QTS-99420, QTS-99340 FF | 100% |  |  |  |  |  |  | Rosendin Electric, Inc | Level 2 | Gen Yard | IGMP | Scott Masterson | Phase 1 | Construction |  |  |  |
| QTS-99440 |  | DH 2300 / Mechanical Yard // OFCI - L2 SET IN PLACE - Eq Type # - DC1-MVG-C2/G1 - 1 unit | 1d | 2025-10-28 A | 2025-10-28 A | QTS-99430 FF, QTS-99350 FF | 100% |  |  |  |  |  |  | Rosendin Electric, Inc | Level 2 | Gen Yard | IGMP | Scott Masterson | Phase 1 | Construction |  |  |  |
| QTS-14541 |  | DH 2300 / Mechanical Yard // OFCI - L2 SET IN PLACE - Eq Type # - 2500KVA Transformers - 2 units (A23 & R23) | 1d | 2025-11-04 A | 2025-11-04 A | QTS-37281, QTS-37341, QTS-99440 FF | 100% |  | 2026-01-14 | 2026-01-14 |  |  |  | Rosendin Electric, Inc | Level 1 | Gen Yard | IGMP | Scott Masterson |  | Construction |  | Construction | Phase 3 |
| QTS-2041 |  | DH 2300 / Mechanical Yard // Prep for Pier Footings | 3d | 2025-11-24 A | 2025-11-26 A | QTS-2021, QTS-42521, QTS-12561 SS+5d | 100% |  |  |  |  |  |  | Suntec Concrete Inc | Level 1 | Gen Yard | IGMP | Ron Carroll |  | Construction | 01ADMIN | Construction | Phase 3 |
| QTS-2961 |  | DH 2300 / Mechanical Yard // Form, Reinforce, & Pour 24" Diameter Piers #1 | 6d | 2025-12-01 A | 2025-12-01 A | QTS-2041 | 100% |  | 2025-12-01 | 2025-12-08 |  |  |  | Suntec Concrete Inc | Level 1 | Gen Yard | IGMP | Ron Carroll |  | Construction | 01ADMIN | Construction | Phase 3 |
| QTS-4151 |  | DH 2300 / Mechanical Yard // Form, Reinforce, & Pour 24" Diameter Piers #2 | 5d | 2025-12-02 A | 2025-12-12 A | QTS-2961 SS+5d, QTS-2961 FF+5d | 100% |  | 2025-12-02 | 2025-12-08 |  |  |  | Suntec Concrete Inc | Level 1 | Gen Yard | IGMP | Ron Carroll |  | Construction | 01ADMIN | Construction | Phase 3 |
|  | 2 | **Remaining Duration** |  | 2025-12-10 | 2026-04-10 |  |  |  |  |  |  |  |  |  |  |  |  |  |  |  |  |  |  |
| QTS-11271 |  | DH 2300 / Mechanical Yard // Form, Reinforce, & Pour Thickened Slab On Grade for Transformers | 9d | 2025-12-10 A | 2025-12-10 A | QTS-4151 SS+1d | 100% |  | 2025-12-10 | 2025-12-22 |  |  |  | Suntec Concrete Inc | Level 1 | Gen Yard | IGMP | Ron Carroll |  | Construction | 01ADMIN | Construction | Phase 3 |
| QTS-10011 |  | DH 2300 / Mechanical Yard // Form, Reinforce, & Pour Thickened Slab On Grade for UPS Pods | 5d | 2025-12-16 A | 2025-12-22 A | QTS-11271 | 100% |  |  |  |  |  |  | Suntec Concrete Inc | Level 1 | Gen Yard | IGMP | Ron Carroll |  | Construction | 01ADMIN | Construction | Phase 3 |
| QTS-12581 |  | DH 2300 / Mechanical Yard // Form, Reinforce, & Pour Thickened Slab On Grade for Generators | 10d | 2025-12-22 A | 2026-01-09 A | QTS-10011 | 100% |  | 2025-12-22 | 2026-01-03 |  |  | QTS-PHX3 DC1 - 6 day w/ Holidays | Suntec Concrete Inc | Level 1 | Gen Yard | IGMP | Ron Carroll |  | Construction | 01ADMIN | Construction | Phase 3 |
| QTS-1001460 |  | DH 2300 / Mechanical Yard // OFCI - L2 SET IN PLACE - Eq Type # - 2500KVA Transformers - 4 units (B13-F23) | 3d | 2026-01-06 A | 2026-01-06 A | QTS-14541, QTS-11271, QTS-37291, QTS-37301, QTS-37311, QTS-37321, QTS-37331 | 100% |  | 2026-01-06 | 2026-01-08 |  |  | QTS-PHX3 DC1 - 6 day w/ Holidays | Rosendin Electric, Inc | Level 1 | Gen Yard | IGMP | Scott Masterson |  | Construction | 01ADMIN | Construction | Phase 3 |
| QTS-6571 |  | DH 2300 / Mechanical Yard // Place Gen Yard Gravel | 5d | 2026-01-07 A | 2026-01-07 A | QTS-4151, QTS-11271, QTS-10011 | 100% |  | 2026-01-07 | 2026-01-12 |  |  | QTS-PHX3 DC1 - 6 day w/ Holidays | Redpoint Contracting | Level 1 | Gen Yard | IGMP | Ron Carroll |  | Construction | 01ADMIN | Construction | Phase 3 |
| QTS-50001 |  | DH 2300 / Mechanical Yard // Install Cable Bus | 10d | 2026-01-14 | 2026-01-26 | QTS-6571, QTS-49721 |  |  |  |  | 46d | 37d | QTS-PHX3 DC1 - 6 day w/ Holidays | Oregon Electric Group | Level 2 | Gen Yard | IGMP | Scott Masterson |  | Construction |  | Construction | Phase 1 |
| QTS-13571 |  | DH 2300 / Mechanical Yard // OFCI - L2 SET IN PLACE - Eq Type # - 3000A UPS Pods - 7 units | 5d | 2026-02-09 | 2026-02-13 | QTS-36711, QTS-36721 FF, QTS-36731 FF, QTS-36741 FF, QTS-36751 FF, QTS-36761 FF, QTS-36771 FF, QTS-10011 |  |  |  |  | 32d | 0d | QTS-PHX3 DC1 - 6 day w/ Holidays | Rosendin Electric, Inc | Level 1 | Gen Yard | IGMP | Scott Masterson |  | Construction |  | Construction | Phase 3 |
| QTS-2061 |  | DH 2300 / Mechanical Yard // Install FRP Platforms | 10d | 2026-02-14 | 2026-02-25 | QTS-13571, QTS-36081 |  |  |  |  | 100d | 43d | QTS-PHX3 DC1 - 6 day w/ Holidays | Advantic Building Group, LLC | Level 1 | Gen Yard | IGMP | Ron Carroll |  | Construction |  | Construction | Phase 3 |
| QTS-41461 |  | DH 2300 / Mechanical Yard // OFCI - L2 SET IN PLACE - Eq Type # - 2500KW Generator #A-23 - 1 unit | 1d | 2026-02-28 | 2026-02-28 | QTS-12581, QTS-14541, QTS-40301, QTS-40311, QTS-40331, QTS-1001460 |  |  |  |  | 11d | 0d | QTS-PHX3 DC1 - 6 day w/ Holidays | Rosendin Electric, Inc | Level 1 | Gen Yard |  | Scott Masterson |  | Construction | 01ADMIN | Construction | Phase 3 |
| QTS-41471 |  | DH 2300 / Mechanical Yard // OFCI - L2 SET IN PLACE - Eq Type # - 2500KW Generator #B-23 - 1 unit | 1d | 2026-03-02 | 2026-03-02 | QTS-41461, QTS-40141, QTS-40151, QTS-40171 |  |  |  |  | 11d | 1d | QTS-PHX3 DC1 - 6 day w/ Holidays | Rosendin Electric, Inc | Level 1 | Gen Yard |  | Scott Masterson |  | Construction | 01ADMIN | Construction | Phase 3 |
| QTS-41481 |  | DH 2300 / Mechanical Yard // OFCI - L2 SET IN PLACE - Eq Type # - 2500KW Generator #C-23 - 1 unit | 1d | 2026-03-04 | 2026-03-04 | QTS-41471, QTS-39981, QTS-39991, QTS-40011 |  |  |  |  | 10d | 1d | QTS-PHX3 DC1 - 6 day w/ Holidays | Rosendin Electric, Inc | Level 1 | Gen Yard |  | Scott Masterson |  | Construction |  | Construction | Phase 3 |
| QTS-41491 |  | DH 2300 / Mechanical Yard // OFCI - L2 SET IN PLACE - Eq Type # - 2500KW Generator #D-23 - 1 unit | 1d | 2026-03-06 | 2026-03-06 | QTS-41481, QTS-40501, QTS-40511, QTS-40531 |  |  |  |  | 9d | 0d | QTS-PHX3 DC1 - 6 day w/ Holidays | Rosendin Electric, Inc | Level 1 | Gen Yard |  | Scott Masterson |  | Construction |  | Construction | Phase 3 |
| QTS-41501 |  | DH 2300 / Mechanical Yard // OFCI - L2 SET IN PLACE - Eq Type # - 2500KW Generator #E-23 - 1 unit | 1d | 2026-03-07 | 2026-03-07 | QTS-41491, QTS-40701, QTS-40711, QTS-40731 |  |  |  |  | 9d | 0d | QTS-PHX3 DC1 - 6 day w/ Holidays | Rosendin Electric, Inc | Level 1 | Gen Yard |  | Scott Masterson |  | Construction |  | Construction | Phase 3 |
| QTS-41511 |  | DH 2300 / Mechanical Yard // OFCI - L2 SET IN PLACE - Eq Type # - 2500KW Generator #F-23 - 1 unit | 1d | 2026-03-09 | 2026-03-09 | QTS-41501, QTS-40901, QTS-40911, QTS-40931 |  |  |  |  | 9d | 0d | QTS-PHX3 DC1 - 6 day w/ Holidays | Rosendin Electric, Inc | Level 1 | Gen Yard |  | Scott Masterson |  | Construction |  | Construction | Phase 3 |
| QTS-41521 |  | DH 2300 / Mechanical Yard // OFCI - L2 SET IN PLACE - Eq Type # - 2500KW Generator #R-23 - 1 unit | 1d | 2026-03-10 | 2026-03-10 | QTS-41511, QTS-41101, QTS-41111, QTS-41131 |  |  |  |  | 9d | 0d | QTS-PHX3 DC1 - 6 day w/ Holidays | Rosendin Electric, Inc | Level 1 | Gen Yard |  | Scott Masterson |  | Construction |  | Construction | Phase 3 |
| QTS-15941 |  | DH 2300 / Mechanical Yard // Install Raceway from Generators to UPS Pods | 5d | 2026-03-11 | 2026-03-16 | QTS-41521, QTS-50001 |  |  |  |  | 9d | 0d | QTS-PHX3 DC1 - 6 day w/ Holidays | Rosendin Electric, Inc | Level 1 | Gen Yard | IGMP | Scott Masterson |  | Construction |  | Construction | Phase 3 |
| QTS-42531 |  | DH 2300 / Mechanical Yard // Wire Pull for MV Cables | 6d | 2026-03-11 | 2026-03-17 | QTS-42521, QTS-41521 |  |  |  |  | 10d | 0d | QTS-PHX3 DC1 - 6 day w/ Holidays | Oregon Electric Group | Level 2 | Gen Yard | IGMP | Scott Masterson |  | Construction |  | Construction | Phase 1 |
| QTS-1000310 |  | DH 2300 / Mechanical Yard // OFCI - L2 SET IN PLACE - Eq Type # - 2500KW Generator SCR - 7 units | 3d | 2026-03-13 | 2026-03-16 | QTS-40321, QTS-40161, QTS-40001, QTS-40521, QTS-40721, QTS-40921, QTS-41121, QTS-41521 |  |  |  |  | 57d | 0d | QTS-PHX3 DC1 - 6 day w/ Holidays | Rosendin Electric, Inc | Level 2 | Gen Yard |  | Scott Masterson |  | Construction | 01ADMIN | Construction | Phase 1 |
| QTS-15171 |  | DH 2300 / Mechanical Yard // Install Raceway from Transformers to UPS Pods | 5d | 2026-03-13 | 2026-03-18 | QTS-14541, QTS-15941 SS+2d, QTS-1001460 |  |  |  |  | 9d | 0d | QTS-PHX3 DC1 - 6 day w/ Holidays | Rosendin Electric, Inc | Level 1 | Gen Yard | IGMP | Scott Masterson |  | Construction |  | Construction | Phase 3 |
| QTS-1001220 |  | DH 2300 / Mechanical Yard // Pressure Test Generator Tanks | 2d | 2026-03-14 | 2026-03-16 | QTS-1000310 FF |  |  |  |  | 57d | 11d | QTS-PHX3 DC1 - 6 day w/ Holidays | Rosendin Electric, Inc | Level 2 | Gen Yard | IGMP | Dave Wiltberger | Phase 1 | Construction | 01ADMIN |  |  |
| QTS-17441 |  | DH 2300 / Mechanical Yard // Pull & Terminate from Generators to UPS Pods | 10d | 2026-03-17 | 2026-03-27 | QTS-15941, QTS-50001 |  |  |  |  | 11d | 1d | QTS-PHX3 DC1 - 6 day w/ Holidays | Rosendin Electric, Inc | Level 1 | Gen Yard | IGMP | Scott Masterson |  | Construction |  | Construction | Phase 3 |
| QTS-42871 |  | DH 2300 / Mechanical Yard // Terminate MV at Transformers | 10d | 2026-03-18 | 2026-03-28 | QTS-42531 |  |  |  |  | 10d | 1d | QTS-PHX3 DC1 - 6 day w/ Holidays | Oregon Electric Group | Level 2 | Gen Yard | IGMP | Scott Masterson |  | Construction |  | Construction | Phase 1 |
| QTS-15931 |  | DH 2300 / Mechanical Yard // Pull & Terminate from Transformers to UPS Pods | 10d | 2026-03-19 | 2026-03-30 | QTS-15171 |  |  |  |  | 9d | 0d | QTS-PHX3 DC1 - 6 day w/ Holidays | Rosendin Electric, Inc | Level 1 | Gen Yard | IGMP | Scott Masterson |  | Construction |  | Construction | Phase 3 |
| QTS-44361 |  | DH 2300 / Mechanical Yard // Install Exterior Stairs | 10d | 2026-03-31 | 2026-04-10 | QTS-15931, QTS-43331 |  |  |  |  | 90d |  | QTS-PHX3 DC1 - 6 day w/ Holidays | Rosendin Electric, Inc | Level 2 | Gen Yard | IGMP | Scott Masterson |  | Construction |  | Construction | Phase 1 |

Notes:
- QTS-1001890: allucent_notes: David Wiltberger on 2025-08-19 09:08: changed pick order / allucent_notes_20251014_152335: David Wiltberger on 2025-08-19 09:08: changed pick order / David Wiltberger on 2025-09-02 10:09: Moving to accommodate roofing in Zone 1 / David Wiltberger on 2025-09-24 04:09: BAM not completed Potential Delay / David Wiltberger on 2025-09-30 12:09: BAM did not complete / David Wiltberger on 2025-10-14 10:10: set on recovery schedule / allucent_notes_20251202_153722: David Wiltberger on 2025-12-02 06:45: Grating install not complete for installation / allucent_notes_20251209_203830: David Wiltberger on 2025-12-02 06:45: Grating install not complete for installation / allucent_notes_20251216_165335: David Wiltberger on 2025-12-02 06:45: Grating install not complete for installation / allucent_notes: 2025-12-02 06:45 - User: David Wiltberger - Date Added: 2025-12-02 06:45 - Note: Grating install not complete for installation
- QTS-1001910: allucent_notes: David Wiltberger on 2025-08-19 09:08: changed pick order / allucent_notes_20251014_152335: David Wiltberger on 2025-08-19 09:08: changed pick order / David Wiltberger on 2025-09-02 10:09: Moving to accommodate roofing in Zone 1 / David Wiltberger on 2025-09-24 04:09: BAM not completed Potential Delay / David Wiltberger on 2025-09-30 12:09: BAM did not complete / David Wiltberger on 2025-10-14 10:10: set on recovery schedule / allucent_notes_20251202_153722: David Wiltberger on 2025-12-02 06:45: Grating install not complete for installation / allucent_notes_20251209_203830: David Wiltberger on 2025-12-02 06:45: Grating install not complete for installation / allucent_notes_20251216_165335: David Wiltberger on 2025-12-02 06:45: Grating install not complete for installation / allucent_notes: 2025-12-02 06:45 - User: David Wiltberger - Date Added: 2025-12-02 06:45 - Note: Grating install not complete for installation
- QTS-1001920: allucent_notes: David Wiltberger on 2025-08-19 09:08: changed pick order / allucent_notes_20251014_152335: David Wiltberger on 2025-08-19 09:08: changed pick order / David Wiltberger on 2025-09-02 10:09: Moving to accommodate roofing in Zone 1 / David Wiltberger on 2025-09-24 04:09: BAM not completed Potential Delay / David Wiltberger on 2025-09-30 12:09: BAM did not complete / David Wiltberger on 2025-10-14 10:10: set on recovery schedule / allucent_notes_20251202_153722: David Wiltberger on 2025-12-02 06:45: Grating install not complete for installation / allucent_notes_20251209_203830: David Wiltberger on 2025-12-02 06:45: Grating install not complete for installation / allucent_notes_20251216_165335: David Wiltberger on 2025-12-02 06:45: Grating install not complete for installation / allucent_notes: 2025-12-02 06:45 - User: David Wiltberger - Date Added: 2025-12-02 06:45 - Note: Grating install not complete for installation
- QTS-1001930: allucent_notes: David Wiltberger on 2025-08-19 09:08: changed pick order / allucent_notes_20251014_152335: David Wiltberger on 2025-08-19 09:08: changed pick order / David Wiltberger on 2025-09-02 10:09: Moving to accommodate roofing in Zone 1 / David Wiltberger on 2025-09-24 04:09: BAM not completed Potential Delay / David Wiltberger on 2025-09-30 12:09: BAM did not complete / David Wiltberger on 2025-10-14 10:10: set on recovery schedule / allucent_notes_20251202_153722: David Wiltberger on 2025-12-02 06:45: Grating install not complete for installation / allucent_notes_20251209_203830: David Wiltberger on 2025-12-02 06:45: Grating install not complete for installation / allucent_notes_20251216_165335: David Wiltberger on 2025-12-02 06:45: Grating install not complete for installation / allucent_notes: 2025-12-02 06:45 - User: David Wiltberger - Date Added: 2025-12-02 06:45 - Note: Grating install not complete for installation
- QTS-1001940: allucent_notes: David Wiltberger on 2025-08-19 09:08: changed pick order / allucent_notes_20251014_152335: David Wiltberger on 2025-08-19 09:08: changed pick order / David Wiltberger on 2025-09-02 10:09: Moving to accommodate roofing in Zone 1 / David Wiltberger on 2025-09-24 04:09: BAM not completed Potential Delay / David Wiltberger on 2025-09-30 12:09: BAM did not complete / David Wiltberger on 2025-10-14 10:10: set on recovery schedule / allucent_notes_20251202_153722: David Wiltberger on 2025-12-02 06:45: Grating install not complete for installation / allucent_notes_20251209_203830: David Wiltberger on 2025-12-02 06:45: Grating install not complete for installation / allucent_notes_20251216_165335: David Wiltberger on 2025-12-02 06:45: Grating install not complete for installation / allucent_notes: 2025-12-02 06:45 - User: David Wiltberger - Date Added: 2025-12-02 06:45 - Note: Grating install not complete for installation
- QTS-1001900: allucent_notes: David Wiltberger on 2025-08-19 09:08: changed pick order / allucent_notes_20251014_152335: David Wiltberger on 2025-08-19 09:08: changed pick order / David Wiltberger on 2025-09-02 10:09: Moving to accommodate roofing in Zone 1 / David Wiltberger on 2025-09-24 04:09: BAM not completed Potential Delay / David Wiltberger on 2025-09-30 12:09: BAM did not complete / David Wiltberger on 2025-10-14 10:10: set on recovery schedule / allucent_notes_20251202_153722: David Wiltberger on 2025-12-02 06:45: Grating install not complete for installation / allucent_notes_20251209_203830: David Wiltberger on 2025-12-02 06:45: Grating install not complete for installation / allucent_notes_20251216_165335: David Wiltberger on 2025-12-02 06:45: Grating install not complete for installation / allucent_notes: 2025-12-02 06:45 - User: David Wiltberger - Date Added: 2025-12-02 06:45 - Note: Grating install not complete for installation
- QTS-42501: allucent_notes_20251014_152335: Jason Johnston on 2025-10-14 09:10: Rain delays / allucent_notes_20251021_145627: Jason Johnston on 2025-10-14 09:10: Rain delays / allucent_notes: 2025-10-14 09:10 - User: Jason Johnston - Date Added: 2025-10-14 09:10 - Note: Rain delays
- QTS-11271: allucent_notes_20251230_164549: David Wiltberger on 2025-12-30 16:23: no update / allucent_notes: 2025-12-30 16:23 - User: David Wiltberger - Date Added: 2025-12-30 16:23 - Note: no update

| ID | WBS | Activity | Duration | Start | Finish | Predecessors | Complete | Remaining | Planned start | Planned finish | Total float | Free float | Calendar | Location | Project Section-1 | Phase-1-1 | Baseline | Layton Responsible Party | Project Section | Allucent CSI Group | Subcontractor | Level |
| --- | --- | --- | --- | --- | --- | --- | --- | --- | --- | --- | --- | --- | --- | --- | --- | --- | --- | --- | --- | --- | --- | --- |
|  | 6 | **DH 2300 / Commissioning** |  |  |  |  |  |  |  |  |  |  |  |  |  |  |  |  |  |  |  |  |
|  | 2 | **Level 3 Energization & Prefunctional Testing** |  |  |  |  |  |  |  |  |  |  |  |  |  |  |  |  |  |  |  |  |
|  | 1 | **Electrical** |  |  |  |  |  |  |  |  |  |  |  |  |  |  |  |  |  |  |  |  |
|  | 2 | **Mechanical** |  |  |  |  |  |  |  |  |  |  |  |  |  |  |  |  |  |  |  |  |
|  | 4 | **Level 4 Functional Testing** |  |  |  |  |  |  |  |  |  |  |  |  |  |  |  |  |  |  |  |  |
|  | 3 | **Level 5 Integrated Systems Testing** |  |  |  |  |  |  |  |  |  |  |  |  |  |  |  |  |  |  |  |  |
|  | 9 | **Data Hall 1300 (9MW)** |  | 2025-09-08 | 2026-04-14 |  |  |  |  |  |  |  |  |  |  |  |  |  |  |  |  |  |
| QTS-2211 |  | DH 1300 // Prime & Paint Exposed Structure | 4d | 2025-10-21 A | 2025-10-24 A | QTS-23381, QTS-23741, QTS-23261, QTS-1040 | 100% |  |  |  |  |  |  | DH1300 | Construction | Phase 3 | IGMP | Doug Hayes | Construction | 01ADMIN |  |  |
| QTS-4701 |  | DH 1300 // Install Fire Sprinkler | 8d | 2025-10-27 A | 2026-01-21 A | QTS-2211, QTS-23741 | 100% |  | 2025-10-27 | 2025-11-04 |  |  | QTS-PHX3 DC1 - 6 day w/ Holidays | DH1300 | Construction | Phase 3 | IGMP | Dave Wiltberger | Construction | 01ADMIN | Olympic West Fire Protection |  |
| QTS-6971 |  | DH 1300 // Install Fire Caulking | 3d | 2025-10-28 A | 2025-10-28 A | QTS-4701 SS, QTS-99490 | 100% |  | 2025-10-28 | 2025-10-30 |  |  |  | DH1300 | Construction | Phase 3 | IGMP | Doug Hayes | Construction | 01ADMIN |  |  |
| QTS-6961 |  | DH 1300 // Establish Control & Layout Walls | 5d | 2025-12-01 A | 2025-12-05 A | QTS-2211, QTS-6971 | 100% |  |  |  |  |  |  | DH1300 | Construction | Phase 3 | IGMP | Sean Waisner | Construction | 01ADMIN |  |  |
| QTS-8651 |  | DH 1300 // Perimeter Insulation | 7d | 2025-12-10 A | 2026-03-19 | QTS-1004120 FF, QTS-6971, QTS-20831 | 100% | 0d | 2025-12-10 | 2025-12-17 | 131d | 7d | QTS-PHX3 DC1 - 6 day w/ Holidays | DH1300 | Construction | Phase 3 | IGMP | Sean Waisner | Construction | 01ADMIN | Performance Contracting, Inc. |  |
|  | 3 | **Data Hall 1300** |  | 2026-01-14 | 2026-03-13 |  |  |  |  |  |  |  |  |  |  |  |  |  |  |  |  |  |
| QTS-102530 |  | DH 1300 // Top Out / Corridor Wall 1012 (East) - Data Hall Side | 3d | 2026-01-14 | 2026-01-16 | QTS-10681 |  |  |  |  | 37d | 0d | QTS-PHX3 DC1 - 6 day w/ Holidays | DH2100 | Construction |  | IGMP | Sean Waisner | Construction | 01ADMIN | Performance Contracting, Inc. | Level 2 |
| QTS-10681 |  | DH 1300 // Frame Data Hall / Corridor Wall 1012 (East) | 5d | 2026-01-14 | 2026-01-14 | QTS-10461, QTS-6961, QTS-6971 |  |  | 2026-01-20 | 2026-01-24 |  |  | QTS-PHX3 DC1 - 6 day w/ Holidays | DH1300 | Construction | Phase 3 | IGMP | Sean Waisner | Construction | 01ADMIN | Performance Contracting, Inc. |  |
| QTS-11361 |  | DH 1300 // Rough In-Wall Electrical (East) | 5d | 2026-01-14 | 2026-01-20 | QTS-10681 |  |  |  |  | 84d | 7d | QTS-PHX3 DC1 - 6 day w/ Holidays | DH1300 | Construction | Phase 3 | IGMP | Scott Masterson | Construction |  | Rosendin Electric, Inc |  |
| QTS-102540 |  | DH 1300 // One Side Data Hall / Corridor Wall 1012 (East) - Data Hall Side | 3d | 2026-01-17 | 2026-01-21 | QTS-102530 |  |  |  |  | 37d | 0d | QTS-PHX3 DC1 - 6 day w/ Holidays | DH2100 | Construction |  | IGMP | Sean Waisner | Construction | 01ADMIN | Performance Contracting, Inc. | Level 2 |
| QTS-1000620 |  | DH 1300 // Install Overhead Conduit - Electrical | 5d | 2026-01-21 | 2026-01-26 | QTS-120000, QTS-1000610 |  |  |  |  | 40d | 0d | QTS-PHX3 DC1 - 6 day w/ Holidays | DH2100 | Construction |  | IGMP | Scott Masterson | Construction | 01ADMIN |  | Level 2 |
| QTS-1000630 |  | DH 1300 // Install Overhead Conduit - Controls | 5d | 2026-01-21 | 2026-01-26 | QTS-1000620 SS, QTS-120000 |  |  |  |  | 40d | 3d | QTS-PHX3 DC1 - 6 day w/ Holidays | DH2100 | Construction |  | IGMP | Scott Masterson | Construction | 01ADMIN |  | Level 2 |
| QTS-102550 |  | DH 1300 // Tape, & Finish Drywall (East) - Data Hall Side | 5d | 2026-01-22 | 2026-01-27 | QTS-102540 |  |  |  |  | 37d | 0d | QTS-PHX3 DC1 - 6 day w/ Holidays | DH2200 | Construction | Phase 2 | IGMP | Sean Waisner | Construction |  | Performance Contracting, Inc. |  |
| QTS-11341 |  | DH 1300 // Rough In-Wall Electrical (West) | 5d | 2026-01-23 | 2026-01-28 | QTS-10691, QTS-39041 |  |  |  |  | 69d | 0d | QTS-PHX3 DC1 - 6 day w/ Holidays | DH1300 | Construction | Phase 3 | IGMP | Scott Masterson | Construction |  | Rosendin Electric, Inc |  |
| QTS-11351 |  | DH 1300 // Install Hollow Metal Frames (West) | 1d | 2026-01-23 | 2026-01-23 | QTS-10691 |  |  |  |  | 82d | 13d | QTS-PHX3 DC1 - 6 day w/ Holidays | DH1300 | Construction | Phase 3 | IGMP | Sean Waisner | Construction |  | Performance Contracting, Inc. |  |
| QTS-10691 |  | DH 1300 // Frame Data Hall / Corridor Wall 1015-1016 (West) | 5d | 2026-01-27 A | 2026-01-22 | QTS-6971, QTS-10731, QTS-11691 SS | 60% | 2d | 2026-01-27 | 2026-01-31 | 69d | 0d | QTS-PHX3 DC1 - 6 day w/ Holidays | DH1300 | Construction | Phase 3 | IGMP | Sean Waisner | Construction |  | Performance Contracting, Inc. |  |
| QTS-102560 |  | DH 1300 // Paint Walls (East) - Data Hall Side - Top Out | 2d | 2026-01-28 | 2026-01-29 | QTS-102550 |  |  |  |  | 37d | 0d | QTS-PHX3 DC1 - 6 day w/ Holidays | DH2200 | Construction | Phase 2 | IGMP | Sean Waisner | Construction |  | Pennington Painting Company, LLC |  |
| QTS-102570 |  | DH 1300 // Insulate & Vapor Barrier Data Hall / Corridor Wall 1012 (East) | 2d | 2026-01-28 | 2026-01-29 | QTS-102540, QTS-102550 |  |  |  |  | 97d | 0d | QTS-PHX3 DC1 - 6 day w/ Holidays | DH2100 | Construction |  | IGMP | Sean Waisner | Construction | 01ADMIN | Performance Contracting, Inc. | Level 2 |
| QTS-102310 |  | DH 1300 // Hang Drywall (West) - Corridor Side | 2d | 2026-01-29 | 2026-01-30 | QTS-11341 |  |  |  |  | 69d | 0d | QTS-PHX3 DC1 - 6 day w/ Holidays | DH2200 | Construction | Phase 2 | IGMP | Sean Waisner | Construction |  | Performance Contracting, Inc. |  |
| QTS-12301 |  | DH 1300 // In Wall Inspection for Fan Wall | 1d | 2026-01-29 | 2026-01-29 | QTS-11341, QTS-11361 |  |  |  |  | 77d | 0d | QTS-PHX3 DC1 - 6 day w/ Holidays | DH1300 | Construction | Phase 3 | IGMP | Scott Masterson | Construction |  | Rosendin Electric, Inc |  |
| QTS-12471 |  | DH 1300 // Hang Drywall (East) - Corridor Side | 2d | 2026-01-30 | 2026-01-31 | QTS-11361, QTS-11361 FF, QTS-12301, QTS-102570 |  |  |  |  | 97d | 0d | QTS-PHX3 DC1 - 6 day w/ Holidays | DH1300 | Construction | Phase 3 | IGMP | Sean Waisner | Construction |  | Performance Contracting, Inc. |  |
| QTS-14321 |  | DH 1300 // Install Structural Ceiling Grid - North | 10d | 2026-01-30 | 2026-02-10 | QTS-102560, QTS-1000620, QTS-1000630 |  |  |  |  | 37d | 0d | QTS-PHX3 DC1 - 6 day w/ Holidays | DH1300 | Construction | Phase 3 | IGMP | Sean Waisner | Construction | 01ADMIN | Performance Contracting, Inc. |  |
| QTS-102320 |  | DH 1300 // Tape & Finish Drywall (West) - Corridor Side | 5d | 2026-01-31 | 2026-02-05 | QTS-102310 |  |  |  |  | 69d | 0d | QTS-PHX3 DC1 - 6 day w/ Holidays | DH2200 | Construction | Phase 2 | IGMP | Sean Waisner | Construction |  | Performance Contracting, Inc. |  |
| QTS-12751 |  | DH 1300 // Tape, & Finish Drywall (East) - Corridor Side | 5d | 2026-02-02 | 2026-02-06 | QTS-12471 |  |  |  |  | 97d | 0d | QTS-PHX3 DC1 - 6 day w/ Holidays | DH1300 | Construction | Phase 3 | IGMP | Sean Waisner | Construction |  | Performance Contracting, Inc. |  |
| QTS-15001 |  | DH 1300 // Install VESDA | 10d | 2026-02-03 | 2026-02-13 | QTS-14321 SS+3d, QTS-102560 |  |  |  |  | 42d | 5d | QTS-PHX3 DC1 - 6 day w/ Holidays | DH1300 | Construction | Phase 3 | IGMP | Scott Masterson | Construction |  | Rosendin Electric, Inc |  |
| QTS-102330 |  | DH 1300 // Vapor Barrier & Insulation (West) | 2d | 2026-02-06 | 2026-02-07 | QTS-102320 |  |  |  |  | 69d | 0d | QTS-PHX3 DC1 - 6 day w/ Holidays | DH2100 | Construction |  | IGMP | Sean Waisner | Construction | 01ADMIN | Performance Contracting, Inc. | Level 2 |
| QTS-13451 |  | DH 1300 // Paint Walls (East) - Corridor Side | 2d | 2026-02-07 | 2026-02-09 | QTS-12471, QTS-12751, QTS-12751 FF |  |  |  |  | 97d | 29d | QTS-PHX3 DC1 - 6 day w/ Holidays | DH1300 | Construction | Phase 3 | IGMP | Sean Waisner | Construction |  | Pennington Painting Company, LLC |  |
| QTS-12461 |  | DH 1300 // Hang Drywall (West) - Data Hall Side | 2d | 2026-02-09 | 2026-02-10 | QTS-11341, QTS-10681, QTS-10691, QTS-11351, QTS-12301, QTS-102330 |  |  |  |  | 69d | 0d | QTS-PHX3 DC1 - 6 day w/ Holidays | DH1300 | Construction | Phase 3 | IGMP | Sean Waisner | Construction |  | Performance Contracting, Inc. |  |
| QTS-1003800 |  | DH 1300 // Install Structural Ceiling Grid - South | 10d | 2026-02-11 | 2026-02-21 | QTS-14321 |  |  |  |  | 62d | 0d | QTS-PHX3 DC1 - 6 day w/ Holidays | DH1300 | Construction | Phase 3 | IGMP | Sean Waisner | Construction | 01ADMIN | Performance Contracting, Inc. |  |
| QTS-12741 |  | DH 1300 // Tape, & Finish Drywall (West) - Data Hall Side | 5d | 2026-02-11 | 2026-02-16 | QTS-12461 |  |  |  |  | 69d | 0d | QTS-PHX3 DC1 - 6 day w/ Holidays | DH1300 | Construction | Phase 3 | IGMP | Sean Waisner | Construction |  | Performance Contracting, Inc. |  |
| QTS-16121 |  | DH 1300 // Install Overhead Lighting | 10d | 2026-02-11 | 2026-02-21 | QTS-14321, QTS-15001 FF+2d |  |  |  |  | 37d | 0d | QTS-PHX3 DC1 - 6 day w/ Holidays | DH1300 | Construction | Phase 3 | IGMP | Scott Masterson | Construction |  | Rosendin Electric, Inc |  |
| QTS-13441 |  | DH 1300 // Paint Walls (West) | 2d | 2026-02-17 | 2026-02-18 | QTS-12461, QTS-12741 |  |  |  |  | 69d | 0d | QTS-PHX3 DC1 - 6 day w/ Holidays | DH1300 | Construction | Phase 3 | IGMP | Sean Waisner | Construction |  | Pennington Painting Company, LLC |  |
| QTS-13941 |  | DH 1300 // Install Telecom Sleeves | 3d | 2026-02-19 | 2026-02-21 | QTS-13441, QTS-102560 |  |  |  |  | 69d | 62d | QTS-PHX3 DC1 - 6 day w/ Holidays | DH1300 | Construction | Phase 3 | IGMP | Scott Masterson | Construction |  | Rosendin Electric, Inc |  |
| QTS-17601 |  | DH 1300 // Install Ceiling Tile | 7d | 2026-02-23 | 2026-03-02 | QTS-16121 |  |  |  |  | 69d | 0d | QTS-PHX3 DC1 - 6 day w/ Holidays | DH1300 | Construction | Phase 3 | IGMP | Sean Waisner | Construction |  | Performance Contracting, Inc. |  |
| QTS-17611 |  | DH 1300 // Install Fire Sprinkler Heads | 5d | 2026-02-23 | 2026-02-27 | QTS-16121 |  |  |  |  | 37d | 0d | QTS-PHX3 DC1 - 6 day w/ Holidays | DH1300 | Construction | Phase 3 | IGMP | Dave Wiltberger | Construction |  | Olympic West Fire Protection |  |
| QTS-102580 |  | DH 1300 // Frame Data Hall / Corridor Wall 1012 (East) - 14x14 Leave Outs | 1d | 2026-02-26 | 2026-02-26 | QTS-46751, QTS-14371, QTS-15341, QTS - 7550 |  |  |  |  | 93d | 0d | QTS-PHX3 DC1 - 6 day w/ Holidays | DH2100 | Construction |  | IGMP | Sean Waisner | Construction | 01ADMIN | Performance Contracting, Inc. | Level 2 |
| QTS-11371 |  | DH 1300 // Install Hollow Metal Frames (East) - 14x14 Leave Out | 1d | 2026-02-26 | 2026-02-26 | QTS-10681, QTS-102580 FF |  |  |  |  | 93d | 0d | QTS-PHX3 DC1 - 6 day w/ Holidays | DH1300 | Construction | Phase 3 | IGMP | Sean Waisner | Construction |  | Performance Contracting, Inc. |  |
| QTS-102590 |  | DH 1300 // Hang Drywall Data Hall / Corridor Wall 1012 (East) - 14x14 Leave Outs | 1d | 2026-02-27 | 2026-02-27 | QTS-102580, QTS-11371 |  |  |  |  | 93d | 0d | QTS-PHX3 DC1 - 6 day w/ Holidays | DH2100 | Construction |  | IGMP | Sean Waisner | Construction | 01ADMIN | Performance Contracting, Inc. | Level 2 |
| QTS-102600 |  | DH 1300 // Tape & Finish Drywall Data Hall / Corridor Wall 1012 (East) - 14x14 Leave Outs | 5d | 2026-02-28 | 2026-03-05 | QTS-102590 |  |  |  |  | 93d | 0d | QTS-PHX3 DC1 - 6 day w/ Holidays | DH2100 | Construction |  | IGMP | Sean Waisner | Construction | 01ADMIN | Performance Contracting, Inc. | Level 2 |
| QTS-18461 |  | DH 1300 // Install Temporary Hot Aisle Containment | 10d | 2026-03-03 | 2026-03-13 | QTS-17601, QTS-17611 |  |  |  |  | 69d | 1d | QTS-PHX3 DC1 - 6 day w/ Holidays | DH1300 | Construction | Phase 3 | IGMP | Sean Waisner | Construction |  |  |  |
| QTS-102610 |  | DH 1300 // Paint Data Hall / Corridor Wall 1012 (East) - 14x14 Leave Outs | 1d | 2026-03-06 | 2026-03-06 | QTS-102600 |  |  |  |  | 93d | 25d | QTS-PHX3 DC1 - 6 day w/ Holidays | DH2100 | Construction |  | IGMP | Sean Waisner | Construction | 01ADMIN | Pennington Painting Company, LLC | Level 2 |

Notes:
- QTS-2211: allucent_notes_20251021_145627: Luis Vea on 2025-10-21T15:13:55.825Z: completed / Zack Goertz on 2025-10-21T17:24:18.056Z: Waiting for Bel-aire to complete back to backs / allucent_notes_20251027_224008: Luis Vea on 2025-10-21T15:13:55.825Z: completed / Zack Goertz on 2025-10-21T17:24:18.056Z: Waiting for Bel-aire to complete back to backs / Zack Goertz on 2025-10-27T14:01:43.540Z: Remaining section is awaiting bel-Aire to finish installing back to backs in south mechanical gallery / allucent_notes: 2025-10-21T15:13:55.825Z - User: Luis Vea - Date Added: 2025-10-21T15:13:55.825Z - Note: completed / 2025-10-21T17:24:18.056Z - User: Zack Goertz - Date Added: 2025-10-21T17:24:18.056Z - Note: Waiting for Bel-aire to complete back to backs / 2025-10-27
- QTS-4701: allucent_notes_20251230_164549: Zack Goertz on 2025-11-11T18:31:06.842Z: Delayed by AF steel / Jason Johnston on 2025-11-11 16:11: SWO / Zack Goertz on 2025-11-17 13:11: Zone 3 is last priority. Framing has barely begun on level 2. Plus, a stop work has been issued. / David Wiltberger on 2025-12-01 09:51: Delayed due to stop work / David Wiltberger on 2025-12-30 16:24: no update / allucent_notes_20251111_182405: Zack Goertz on 2025-11-11T18:31:06.842Z: Delayed by AF steel / Jason Johnston on 2025-11-11 16:11: SWO / allucent_notes_20251118_192630: Zack Goertz on 2025-11-11T18:31:06.842Z: Delayed by AF steel / Jason Johnston on 2025-11-11 16:11: SWO / Zack Goertz on 2025-11-17 13:11: Zone 3 is last priority. Framing has barely begun on level 2. Plus, a stop work has been issued. / allucent_notes_20251202_153722: Zack Goertz on 2025-11-11T18:31:06.842Z: Delayed by AF steel / Jason Johnston on 2025-11-11 16:11: SWO / Zack Goertz on 2025-11-17 13:11: Zone 3 is last priority. Framing has barely begun on level 2. Plus, a stop work has been issued. / David Wiltberger on 2025-12-01 09:51: Delayed due to stop work / allucent_notes_20251209_203830: Zack Goertz on 2025-11-11T18:31:06.842Z: Delayed by AF steel / Jason Johnston on 2025-11-11 16:11: SWO / Zack Goertz on 2025-11-17 13:11: Zone 3 is last priority. Framing has barely begun on level 2. Plus, a stop work has been issued. / David Wiltberger on 2025-12-01 09:51: Delayed due to stop work / allucent_notes_20251216_165335: Zack Goertz on 2025-11-11T18:31:06.842Z: Delayed by AF steel / Jason Johnston on 2025-11-11 16:11: SWO / Zack Goertz on 2025-11-17 13:11: Zone 3 is last priority. Framing has barely begun on level 2. Plus, a stop work has been issued. / David Wiltberger on 2025-12-01 09:51: Delayed due to stop work / allucent_notes: 2025-11-11T18:31:06.842Z - User: Zack Goertz - Date Added: 2025-11-11T18:31:06.842Z - Note: Delayed by AF steel / 2025-11-11 16:11 - User: Jason Johnston - Date Added: 2025-11-11 16:11 - Note: SWO / 2025-11-17 13:11 - User: Zack Goertz - Date Added: 202
- QTS-6971: allucent_notes_20251028_163138: Jason Johnston on 2025-10-28 16:10: Done early. / allucent_notes: 2025-10-28 16:10 - User: Jason Johnston - Date Added: 2025-10-28 16:10 - Note: Done early.
- QTS-6961: allucent_notes_20251104_160200: Zack Goertz on 2025-11-03T16:48:52.656Z: Zone 3 is not the priority. Zone 2 is next and is falling behind waiting for Bel-aire to finish chiller mains and REI rough in / Jason Johnston on 2025-11-04 16:11: Update needed / allucent_notes_20251111_182405: Zack Goertz on 2025-11-03T16:48:52.656Z: Zone 3 is not the priority. Zone 2 is next and is falling behind waiting for Bel-aire to finish chiller mains and REI rough in / Jason Johnston on 2025-11-04 16:11: Update needed / Zack Goertz on 2025-11-11T18:31:44.087Z: ZOne 3 level 1 is not priority, plus, AF steel is doing their O.H. work / Jason Johnston on 2025-11-11 16:11: no updates / allucent_notes_20251118_192630: Zack Goertz on 2025-11-03T16:48:52.656Z: Zone 3 is not the priority. Zone 2 is next and is falling behind waiting for Bel-aire to finish chiller mains and REI rough in / Jason Johnston on 2025-11-04 16:11: Update needed / Zack Goertz on 2025-11-11T18:31:44.087Z: ZOne 3 level 1 is not priority, plus, AF steel is doing their O.H. work / Jason Johnston on 2025-11-11 16:11: no updates / Zack Goertz on 2025-11-17 13:11: Zone 3 is last priority. Framing has barely begun on level 2. Plus, a stop work has been issued. / allucent_notes_20251202_153722: Zack Goertz on 2025-11-03T16:48:52.656Z: Zone 3 is not the priority. Zone 2 is next and is falling behind waiting for Bel-aire to finish chiller mains and REI rough in / Jason Johnston on 2025-11-04 16:11: Update needed / Zack Goertz on 2025-11-11T18:31:44.087Z: ZOne 3 level 1 is not priority, plus, AF steel is doing their O.H. work / Jason Johnston on 2025-11-11 16:11: no updates / Zack Goertz on 2025-11-17 13:11: Zone 3 is last priority. Framing has barely begun on level 2. Plus, a stop work has been issued. / allucent_notes_20251209_203830: Zack Goertz on 2025-11-03T16:48:52.656Z: Zone 3 is not the priority. Zone 2 is next and is falling behind waiting for Bel-aire to finish chiller mains and REI rough in / Jason Johnston on 2025-11-04 16:11: Update needed / Zack Goertz on 2025-11-11T18:31:44.087Z: ZOne 3 level 1 is not priority, plus, AF steel is doing their O.H. work / Jason Johnston on 2025-11-11 16:11: no updates / Zack Goertz on 2025-11-17 13:11: Zone 3 is last priority. Framing has barely begun on level 2. Plus, a stop work has been issued. / allucent_notes: 2025-11-03T16:48:52.656Z - User: Zack Goertz - Date Added: 2025-11-03T16:48:52.656Z - Note: Zone 3 is not the priority. Zone 2 is next and is falling behind waiting for Bel-aire to finish chiller mains and REI rough in / 2025-11-04 16:11 - User: Jason Jo
- QTS-8651: allucent_notes_20251230_164549: David Wiltberger on 2025-12-30 16:24: no update / allucent_notes: 2025-12-30 16:24 - User: David Wiltberger - Date Added: 2025-12-30 16:24 - Note: no update
- QTS-102530: allucent_notes_20251014_152335: Zack Goertz on 2025-09-08T20:45:26.651Z: Not started. PCI has been put on notice that they are behind / Jason Johnston on 2025-10-08 08:10: not done / allucent_notes: 2025-09-08T20:45:26.651Z - User: Zack Goertz - Date Added: 2025-09-08T20:45:26.651Z - Note: Not started. PCI has been put on notice that they are behind / 2025-10-08 08:10 - User: Jason Johnston - Date Added: 2025-10-08 08:10 - Note: not done
- QTS-102540: allucent_notes_20251014_152335: Zack Goertz on 2025-09-08T20:45:26.651Z: Not started. PCI has been put on notice that they are behind / Jason Johnston on 2025-10-08 08:10: not done / allucent_notes: 2025-09-08T20:45:26.651Z - User: Zack Goertz - Date Added: 2025-09-08T20:45:26.651Z - Note: Not started. PCI has been put on notice that they are behind / 2025-10-08 08:10 - User: Jason Johnston - Date Added: 2025-10-08 08:10 - Note: not done
- QTS-102570: allucent_notes_20251014_152335: Zack Goertz on 2025-09-08T20:45:26.651Z: Not started. PCI has been put on notice that they are behind / Jason Johnston on 2025-10-08 08:10: not done / allucent_notes: 2025-09-08T20:45:26.651Z - User: Zack Goertz - Date Added: 2025-09-08T20:45:26.651Z - Note: Not started. PCI has been put on notice that they are behind / 2025-10-08 08:10 - User: Jason Johnston - Date Added: 2025-10-08 08:10 - Note: not done
- QTS-102580: allucent_notes_20251014_152335: Zack Goertz on 2025-09-08T20:45:26.651Z: Not started. PCI has been put on notice that they are behind / Jason Johnston on 2025-10-08 08:10: not done / allucent_notes: 2025-09-08T20:45:26.651Z - User: Zack Goertz - Date Added: 2025-09-08T20:45:26.651Z - Note: Not started. PCI has been put on notice that they are behind / 2025-10-08 08:10 - User: Jason Johnston - Date Added: 2025-10-08 08:10 - Note: not done
- QTS-102590: allucent_notes_20251014_152335: Zack Goertz on 2025-09-08T20:45:26.651Z: Not started. PCI has been put on notice that they are behind / Jason Johnston on 2025-10-08 08:10: not done / allucent_notes: 2025-09-08T20:45:26.651Z - User: Zack Goertz - Date Added: 2025-09-08T20:45:26.651Z - Note: Not started. PCI has been put on notice that they are behind / 2025-10-08 08:10 - User: Jason Johnston - Date Added: 2025-10-08 08:10 - Note: not done
- QTS-102600: allucent_notes_20251014_152335: Zack Goertz on 2025-09-08T20:45:26.651Z: Not started. PCI has been put on notice that they are behind / Jason Johnston on 2025-10-08 08:10: not done / allucent_notes: 2025-09-08T20:45:26.651Z - User: Zack Goertz - Date Added: 2025-09-08T20:45:26.651Z - Note: Not started. PCI has been put on notice that they are behind / 2025-10-08 08:10 - User: Jason Johnston - Date Added: 2025-10-08 08:10 - Note: not done
- QTS-102610: allucent_notes_20251014_152335: Zack Goertz on 2025-09-08T20:45:26.651Z: Not started. PCI has been put on notice that they are behind / Jason Johnston on 2025-10-08 08:10: not done / allucent_notes: 2025-09-08T20:45:26.651Z - User: Zack Goertz - Date Added: 2025-09-08T20:45:26.651Z - Note: Not started. PCI has been put on notice that they are behind / 2025-10-08 08:10 - User: Jason Johnston - Date Added: 2025-10-08 08:10 - Note: not done

| ID | WBS | Activity | Duration | Start | Finish | Predecessors | Complete | Remaining | Planned start | Planned finish | Total float | Free float | Calendar | Subcontractor | Location | Project Section-1 | Phase-1-1 | Baseline | Layton Responsible Party | Project Section | Allucent CSI Group | Level |
| --- | --- | --- | --- | --- | --- | --- | --- | --- | --- | --- | --- | --- | --- | --- | --- | --- | --- | --- | --- | --- | --- | --- |
|  | 2 | **Gallery 1301 Mechanical** |  | 2025-10-27 | 2026-04-08 |  |  |  |  |  |  |  |  |  |  |  |  |  |  |  |  |  |
| QTS-13951 |  | DH 1300 / Mechanical Gallery 1301 // Install VESDA | 8d | 2025-10-27 A | 2025-12-16 A | QTS-2211 | 100% |  | 2025-10-27 | 2025-11-05 |  |  |  | Rosendin Electric, Inc | DH1300 | Construction | Phase 3 | IGMP | Scott Masterson | Construction | 01ADMIN |  |
| QTS-44551 |  | DH 1300 / Mechanical Gallery 1301 // Install OH Mechanical Hangers | 7d | 2025-10-27 A | 2025-12-15 A | QTS-2211 | 100% |  | 2025-10-27 | 2025-11-04 |  |  |  | Bel-Aire Mechanical, LLC | DH2100 | Construction |  | IGMP | Dave Wiltberger | Construction | 01ADMIN | Level 2 |
| QTS-13961 |  | DH 1300 / Mechanical Gallery 1301 // Install OH Mechanical Piping | 10d | 2025-12-12 A | 2026-01-14 | QTS-44551 | 100% | 0d | 2025-12-16 | 2025-12-27 | 67d | 14d | QTS-PHX3 DC1 - 6 day w/ Holidays | Bel-Aire Mechanical, LLC | DH1300 | Construction | Phase 3 | IGMP | Dave Wiltberger | Construction | 01ADMIN |  |
| QTS-8661 |  | DH 1300 / Mechanical Gallery 1301 // Frame for 1301-1302 Wall | 5d | 2026-01-14 | 2026-01-20 | QTS-6961, QTS-20831 |  |  |  |  | 14d | 0d | QTS-PHX3 DC1 - 6 day w/ Holidays | Performance Contracting, Inc. | DH1300 | Construction | Phase 3 | IGMP | Sean Waisner | Construction | 01ADMIN |  |
| QTS-10731 |  | DH 1300 / Mechanical Gallery 1301 // Frame Fan Wall | 5d | 2026-01-20 | 2026-01-20 | QTS-8661, QTS-10711 |  |  | 2026-01-21 | 2026-01-26 |  |  | QTS-PHX3 DC1 - 6 day w/ Holidays | Performance Contracting, Inc. | DH1300 | Construction | Phase 3 | IGMP | Sean Waisner | Construction |  |  |
| QTS-10721 |  | DH 1300 / Mechanical Gallery 1301 // In Wall Electrical Rough for 1301-1302 Wall | 2d | 2026-01-21 | 2026-01-22 | QTS-8661 |  |  |  |  | 22d | 0d | QTS-PHX3 DC1 - 6 day w/ Holidays | Rosendin Electric, Inc | DH1300 | Construction | Phase 3 | IGMP | Scott Masterson | Construction | 01ADMIN |  |
| QTS-11381 |  | DH 1300 / Mechanical Gallery 1301 // Hang Drywall for 1301-1302 Wall - MG Side - Top Out | 3d | 2026-01-21 | 2026-01-23 | QTS-8661 |  |  |  |  | 14d | 0d | QTS-PHX3 DC1 - 6 day w/ Holidays | Performance Contracting, Inc. | DH1300 | Construction | Phase 3 | IGMP | Sean Waisner | Construction | 01ADMIN |  |
| QTS-11701 |  | DH 1300 / Mechanical Gallery 1301 // In Wall Electrical Rough for Fan Wall | 2d | 2026-01-21 | 2026-01-22 | QTS-10731 |  |  |  |  | 43d | 0d | QTS-PHX3 DC1 - 6 day w/ Holidays | Rosendin Electric, Inc | DH1300 | Construction | Phase 3 | IGMP | Scott Masterson | Construction |  |  |
| QTS-13971 |  | DH 1300 / Mechanical Gallery 1301 // Install Security Screen Above Fan Wall | 3d | 2026-01-21 | 2026-01-23 | QTS-10731, QTS-99680 |  |  |  |  | 59d | 20d | QTS-PHX3 DC1 - 6 day w/ Holidays | Performance Contracting, Inc. | DH1300 | Construction | Phase 3 | IGMP | Sean Waisner | Construction |  |  |
| QTS-10921 |  | DH 1300 / Mechanical Gallery 1301 // In Wall Inspection for 1301-1302 Wall | 1d | 2026-01-23 | 2026-01-23 | QTS-10721 |  |  |  |  | 22d | 8d | QTS-PHX3 DC1 - 6 day w/ Holidays | Rosendin Electric, Inc | DH1300 | Construction | Phase 3 | IGMP | Scott Masterson | Construction | 01ADMIN |  |
| QTS-12061 |  | DH 1300 / Mechanical Gallery 1301 // In Wall Inspection for Fan Wall | 1d | 2026-01-23 | 2026-01-23 | QTS-11701 |  |  |  |  | 43d | 0d | QTS-PHX3 DC1 - 6 day w/ Holidays | Rosendin Electric, Inc | DH1300 | Construction | Phase 3 | IGMP | Scott Masterson | Construction |  |  |
| QTS-1003810 |  | DH 1300 / Mechanical Gallery 1301 // Tape, & Finish Drywall for 1301-1302 Wall - MG Side - Top Out | 4d | 2026-01-24 | 2026-01-28 | QTS-11381 |  |  |  |  | 59d | 0d | QTS-PHX3 DC1 - 6 day w/ Holidays | Performance Contracting, Inc. | DH1300 | Construction | Phase 3 | IGMP | Sean Waisner | Construction | 01ADMIN |  |
| QTS-1003910 |  | DH 1300 / Mechanical Gallery 1301 // Insulate for 1301-1302 Wall - Top Out | 2d | 2026-01-24 | 2026-01-26 | QTS-11381 |  |  |  |  | 14d | 0d | QTS-PHX3 DC1 - 6 day w/ Holidays | Rosendin Electric, Inc | DH1300 | Construction | Phase 3 | IGMP | Scott Masterson | Construction | 01ADMIN |  |
| QTS-12331 |  | DH 1300 / Mechanical Gallery 1301 // Hang, Tape, & Finish Fan Drywall | 5d | 2026-01-24 | 2026-01-29 | QTS-12061 |  |  |  |  | 43d | 0d | QTS-PHX3 DC1 - 6 day w/ Holidays | Performance Contracting, Inc. | DH1300 | Construction | Phase 3 | IGMP | Sean Waisner | Construction |  |  |
| QTS-1003830 |  | DH 1300 / Mechanical Gallery 1301 // Hang Drywall for 1301-1302 Wall - EG Side - Top Out | 3d | 2026-01-27 | 2026-01-29 | QTS-1003910 |  |  |  |  | 14d | 0d | QTS-PHX3 DC1 - 6 day w/ Holidays | Performance Contracting, Inc. | DH1300 | Construction | Phase 3 | IGMP | Sean Waisner | Construction | 01ADMIN |  |
| QTS-1003820 |  | DH 1300 / Mechanical Gallery 1301 // Prime & Paint Wall for 1301-1302 Wall - MG Side - Top Out | 2d | 2026-01-29 | 2026-01-30 | QTS-1003810 |  |  |  |  | 59d | 0d | QTS-PHX3 DC1 - 6 day w/ Holidays | Performance Contracting, Inc. | DH1300 | Construction | Phase 3 | IGMP | Sean Waisner | Construction | 01ADMIN |  |
| QTS-1003840 |  | DH 1300 / Mechanical Gallery 1301 // Tape, & Finish Drywall for 1301-1302 Wall - EG Side - Top Out | 4d | 2026-01-30 | 2026-02-03 | QTS-1003830 |  |  |  |  | 54d | 0d | QTS-PHX3 DC1 - 6 day w/ Holidays | Performance Contracting, Inc. | DH1300 | Construction | Phase 3 | IGMP | Sean Waisner | Construction | 01ADMIN |  |
| QTS-1003860 |  | DH 1300 / Mechanical Gallery 1301 // Hang Drywall for 1301-1302 Wall - MG Side - Remaining | 3d | 2026-01-30 | 2026-02-02 | QTS-1003830 |  |  |  |  | 14d | 0d | QTS-PHX3 DC1 - 6 day w/ Holidays | Performance Contracting, Inc. | DH1300 | Construction | Phase 3 | IGMP | Sean Waisner | Construction | 01ADMIN |  |
| QTS-13101 |  | DH 1300 / Mechanical Gallery 1301 // Paint Fan Walls | 5d | 2026-01-30 | 2026-02-04 | QTS-12331 |  |  |  |  | 43d | 6d | QTS-PHX3 DC1 - 6 day w/ Holidays | Pennington Painting Company, LLC | DH1300 | Construction | Phase 3 | IGMP | Sean Waisner | Construction |  |  |
| QTS-15671 |  | DH 1300 / Mechanical Gallery 1301 // Install OH Electrical, FA/EPMS/BMS Conduit & Grounding | 10d | 2026-01-31 | 2026-02-11 | QTS-1003820, QTS-13961 |  |  |  |  | 59d | 20d | QTS-PHX3 DC1 - 6 day w/ Holidays | Rosendin Electric, Inc | DH1300 | Construction | Phase 3 | IGMP | Scott Masterson | Construction | 01ADMIN |  |
| QTS-1003870 |  | DH 1300 / Mechanical Gallery 1301 // Tape, & Finish Drywall for 1301-1302 Wall - MG Side - Remaining | 4d | 2026-02-03 | 2026-02-06 | QTS-1003860 |  |  |  |  | 45d | 0d | QTS-PHX3 DC1 - 6 day w/ Holidays | Performance Contracting, Inc. | DH1300 | Construction | Phase 3 | IGMP | Sean Waisner | Construction | 01ADMIN |  |
| QTS-1003920 |  | DH 1300 / Mechanical Gallery 1301 // Insulate for 1301-1302 Wall - Remaining | 2d | 2026-02-03 | 2026-02-04 | QTS-1003860, QTS-10921 |  |  |  |  | 14d | 0d | QTS-PHX3 DC1 - 6 day w/ Holidays | Rosendin Electric, Inc | DH1300 | Construction | Phase 3 | IGMP | Scott Masterson | Construction | 01ADMIN |  |
| QTS-1003850 |  | DH 1300 / Mechanical Gallery 1301 // Prime & Paint Wall for 1301-1302 Wall - EG Side - Top Out | 2d | 2026-02-04 | 2026-02-05 | QTS-1003840 |  |  |  |  | 54d | 0d | QTS-PHX3 DC1 - 6 day w/ Holidays | Performance Contracting, Inc. | DH1300 | Construction | Phase 3 | IGMP | Sean Waisner | Construction | 01ADMIN |  |
| QTS-1003890 |  | DH 1300 / Mechanical Gallery 1301 // Hang Drywall for 1301-1302 Wall - EG Side - Remaining | 3d | 2026-02-05 | 2026-02-07 | QTS-1003920 |  |  |  |  | 14d | 0d | QTS-PHX3 DC1 - 6 day w/ Holidays | Performance Contracting, Inc. | DH1300 | Construction | Phase 3 | IGMP | Sean Waisner | Construction | 01ADMIN |  |
| QTS-1003880 |  | DH 1300 / Mechanical Gallery 1301 // Prime & Paint Wall for 1301-1302 Wall - MG Side - Remaining | 2d | 2026-02-07 | 2026-02-09 | QTS-1003870 |  |  |  |  | 45d | 6d | QTS-PHX3 DC1 - 6 day w/ Holidays | Performance Contracting, Inc. | DH1300 | Construction | Phase 3 | IGMP | Sean Waisner | Construction | 01ADMIN |  |
| QTS-1003900 |  | DH 1300 / Mechanical Gallery 1301 // Tape, & Finish Drywall for 1301-1302 Wall - EG Side - Remaining | 4d | 2026-02-09 | 2026-02-12 | QTS-1003890 |  |  |  |  | 14d | 0d | QTS-PHX3 DC1 - 6 day w/ Holidays | Performance Contracting, Inc. | DH1300 | Construction | Phase 3 | IGMP | Sean Waisner | Construction | 01ADMIN |  |
| QTS-46751 |  | DH 1300 / Mechanical Gallery 1301 // OFCI - L2 SET IN PLACE - Eq Type # - DH CRAH - 14 units | 6d | 2026-02-12 | 2026-02-18 | QTS-13101, QTS-37621, QTS-37631, QTS-37641, QTS-37651, QTS-37661, QTS-37671, QTS-37681, QTS-37691, QTS-37701, QTS-37711, QTS-37721, QTS-37731, QTS-37741, QTS-37751 |  |  |  |  | 37d | 0d | QTS-PHX3 DC1 - 6 day w/ Holidays | Bel-Aire Mechanical, LLC | DH1300 | Construction | Phase 3 | IGMP | Dave Wiltberger | Construction |  |  |
| QTS-13091 |  | DH 1300 / Mechanical Gallery 1301 // Paint Walls for 1301-1302 Wall - EG Side - Remaining | 3d | 2026-02-13 | 2026-02-16 | QTS-1003900 |  |  |  |  | 14d | 0d | QTS-PHX3 DC1 - 6 day w/ Holidays | Pennington Painting Company, LLC | DH1300 | Construction | Phase 3 | IGMP | Sean Waisner | Construction |  |  |
| QTS-13461 |  | DH 1300 / Mechanical Gallery 1301 // Top of Wall Fire Stop for 1301-1302 Wall | 2d | 2026-02-17 | 2026-02-18 | QTS-13091 |  |  |  |  | 24d | 0d | QTS-PHX3 DC1 - 6 day w/ Holidays | Alpha Insulation & Waterproofing, Inc. | DH1300 | Construction | Phase 3 | IGMP | Sean Waisner | Construction |  |  |
| QTS-14371 |  | DH 1300 / Mechanical Gallery 1301 // OFCI - L2 SET IN PLACE - Eq Type # - EG CRAH - 4 units | 6d | 2026-02-17 | 2026-02-23 | QTS-1003880, QTS-13091, QTS-13971, QTS-37901, QTS-37911, QTS-37921, QTS-37931, QTS-13961 |  |  |  |  | 39d | 0d | QTS-PHX3 DC1 - 6 day w/ Holidays | Bel-Aire Mechanical, LLC | DH1300 | Construction | Phase 3 | IGMP | Dave Wiltberger | Construction |  |  |
| QTS-46741 |  | DH 1300 / Mechanical Gallery 1301 // Set EPMS/BMS Panels | 4d | 2026-02-17 | 2026-02-20 | QTS-13091 |  |  |  |  | 61d | 18d | QTS-PHX3 DC1 - 6 day w/ Holidays | Rosendin Electric, Inc | DH1300 | Construction | Phase 3 | IGMP | Scott Masterson | Construction |  |  |
| QTS-46761 |  | DH 1300 / Mechanical Gallery 1301 // DH CRAH Unit Mechanical Connections | 10d | 2026-02-19 | 2026-03-02 | QTS-46751 |  |  |  |  | 43d | 0d | QTS-PHX3 DC1 - 6 day w/ Holidays | Bel-Aire Mechanical, LLC | DH1300 | Construction | Phase 3 | IGMP | Dave Wiltberger | Construction |  |  |
| QTS-15521 |  | DH 1300 / Mechanical Gallery 1301 // EG CRAH Unit Mechanical Connections | 10d | 2026-02-24 | 2026-03-06 | QTS-14371 |  |  |  |  | 81d | 0d | QTS-PHX3 DC1 - 6 day w/ Holidays | Bel-Aire Mechanical, LLC | DH1300 | Construction | Phase 3 | IGMP | Dave Wiltberger | Construction |  |  |
| QTS-15531 |  | DH 1300 / Mechanical Gallery 1301 // Install Angle Seal Around Units | 2d | 2026-02-24 | 2026-02-25 | QTS-14371 |  |  |  |  | 98d | 9d | QTS-PHX3 DC1 - 6 day w/ Holidays | Performance Contracting, Inc. | DH1300 | Construction | Phase 3 | IGMP | Sean Waisner | Construction |  |  |
| QTS-16401 |  | DH 1300 / Mechanical Gallery 1301 // OFCI - L2 SET IN PLACE - Eq Type # - MOD-03 - 7 units | 10d | 2026-02-24 | 2026-03-06 | QTS-1003880, QTS-13951, QTS-37411, QTS-37421, QTS-37431, QTS-37441, QTS-37451, QTS-37461, QTS-37471, QTS-14371 |  |  |  |  | 39d | 0d | QTS-PHX3 DC1 - 6 day w/ Holidays | Rosendin Electric, Inc | DH1300 | Construction | Phase 3 | IGMP | Scott Masterson | Construction |  |  |
| QTS-43931 |  | DH 1300 / Mechanical Gallery 1301 // OFCI - L2 SET IN PLACE - Eq Type # - MOD-02 - 7 units | 10d | 2026-02-24 | 2026-03-06 | QTS-13951, QTS-37351, QTS-37361, QTS-37371, QTS-37381, QTS-37391, QTS-37401, QTS-37481, QTS-14371, QTS-13961 |  |  |  |  | 39d | 0d | QTS-PHX3 DC1 - 6 day w/ Holidays | Rosendin Electric, Inc | DH1300 | Construction | Phase 3 | IGMP | Scott Masterson | Construction |  |  |
| QTS-15661 |  | DH 1300 / Mechanical Gallery 1301 // Install Electrical Tray | 5d | 2026-03-03 | 2026-03-07 | QTS-13961, QTS-46761 |  |  |  |  | 43d | 0d | QTS-PHX3 DC1 - 6 day w/ Holidays | Rosendin Electric, Inc | DH1300 | Construction | Phase 3 | IGMP | Scott Masterson | Construction |  |  |
| QTS-14551 |  | DH 1300 / Mechanical Gallery 1301 // Install Raceway from UPS Pod to MOD-02/03 Boards | 10d | 2026-03-07 | 2026-03-18 | QTS-15671, QTS-13581, QTS-16401, QTS-43931, QTS-13461, QTS-13951 |  |  |  |  | 39d | 0d | QTS-PHX3 DC1 - 6 day w/ Holidays | Rosendin Electric, Inc | DH1300 | Construction | Phase 3 | IGMP | Scott Masterson | Construction |  |  |
| QTS-17021 |  | DH 1300 / Mechanical Gallery 1301 // Set Humidifier | 1d | 2026-03-07 | 2026-03-07 | QTS-15521, QTS-13971, QTS-36061, QTS-46761 |  |  |  |  | 89d | 0d | QTS-PHX3 DC1 - 6 day w/ Holidays | Bel-Aire Mechanical, LLC | DH1300 | Construction | Phase 3 | IGMP | Dave Wiltberger | Construction |  |  |
| QTS-16621 |  | DH 1300 / Mechanical Gallery 1301 // Install Basket Tray for LV | 5d | 2026-03-09 | 2026-03-13 | QTS-15661 |  |  |  |  | 43d | 0d | QTS-PHX3 DC1 - 6 day w/ Holidays | Rosendin Electric, Inc | DH1300 | Construction | Phase 3 | IGMP | Scott Masterson | Construction |  |  |
| QTS-17241 |  | DH 1300 / Mechanical Gallery 1301 // Tie-In MEP to Humidifiers | 6d | 2026-03-09 | 2026-03-14 | QTS-17021, QTS-14371, QTS-13961 FF, QTS-15531 |  |  |  |  | 89d | 87d | QTS-PHX3 DC1 - 6 day w/ Holidays | Bel-Aire Mechanical, LLC | DH1300 | Construction | Phase 3 | IGMP | Dave Wiltberger | Construction |  |  |
| QTS-44561 |  | DH 1300 / Mechanical Gallery 1301 // Install BMS & EPMS Cable and Terminations | 10d | 2026-03-14 | 2026-03-25 | QTS-16621, QTS-46741 |  |  |  |  | 43d | 6d | QTS-PHX3 DC1 - 6 day w/ Holidays | Rosendin Electric, Inc | DH2100 | Construction |  | IGMP | Scott Masterson | Construction |  | Level 2 |
| QTS-43831 |  | DH 1300 / Mechanical Gallery 1301 // Pull & Terminate from UPS Pod to MOD-02/03 Boards | 10d | 2026-03-19 | 2026-03-30 | QTS-14551 |  |  |  |  | 39d | 0d | QTS-PHX3 DC1 - 6 day w/ Holidays | Rosendin Electric, Inc | DH1300 | Construction | Phase 3 | IGMP | Scott Masterson | Construction |  |  |
| QTS-44571 |  | DH 1300 / Mechanical Gallery 1301 // Install Lighting, Security, and Devices | 5d | 2026-03-31 | 2026-04-04 | QTS-43831 |  |  |  |  | 71d | 40d | QTS-PHX3 DC1 - 6 day w/ Holidays | Securitas Technology Corporation | DH2100 | Construction |  | IGMP | Scott Masterson | Construction |  | Level 2 |
| QTS-46771 |  | DH 1300 / Mechanical Gallery 1301 // Pull & Terminate from MOD-02 to CRAHs | 4d | 2026-03-31 | 2026-04-03 | QTS-43831 |  |  |  |  | 53d | 0d | QTS-PHX3 DC1 - 6 day w/ Holidays | Rosendin Electric, Inc | DH1300 | Construction | Phase 3 | IGMP | Scott Masterson | Construction |  |  |
| QTS-46781 |  | DH 1300 / Mechanical Gallery 1301 // Pull & Terminate from MOD-02 to DOAS | 4d | 2026-04-04 | 2026-04-08 | QTS-46771 |  |  |  |  | 53d | 0d | QTS-PHX3 DC1 - 6 day w/ Holidays | Rosendin Electric, Inc | DH1300 | Construction | Phase 3 | IGMP | Scott Masterson | Construction |  |  |

Notes:
- QTS-13951: allucent_notes_20251230_164549: Zack Goertz on 2025-11-07T11:46:07.286Z: DH 1300 is priority after 12 and 2200. Which are behind. / Zack Goertz on 2025-11-10T17:17:12.528Z: See below comment / Jason Johnston on 2025-11-11 16:11: need update / Zack Goertz on 2025-11-17 13:11: Zone 3 is last priority. Framing has barely begun on level 2. Plus, a stop work has been issued. / Jason Johnston on 2025-12-09 20:35: Need update from team / Jason Johnston on 2025-12-16 08:12: not complete / David Wiltberger on 2025-12-30 16:24: no update / allucent_notes_20251111_182405: Zack Goertz on 2025-11-07T11:46:07.286Z: DH 1300 is priority after 12 and 2200. Which are behind. / Zack Goertz on 2025-11-10T17:17:12.528Z: See below comment / Jason Johnston on 2025-11-11 16:11: need update / allucent_notes_20251118_192630: Zack Goertz on 2025-11-07T11:46:07.286Z: DH 1300 is priority after 12 and 2200. Which are behind. / Zack Goertz on 2025-11-10T17:17:12.528Z: See below comment / Jason Johnston on 2025-11-11 16:11: need update / Zack Goertz on 2025-11-17 13:11: Zone 3 is last priority. Framing has barely begun on level 2. Plus, a stop work has been issued. / allucent_notes_20251202_153722: Zack Goertz on 2025-11-07T11:46:07.286Z: DH 1300 is priority after 12 and 2200. Which are behind. / Zack Goertz on 2025-11-10T17:17:12.528Z: See below comment / Jason Johnston on 2025-11-11 16:11: need update / Zack Goertz on 2025-11-17 13:11: Zone 3 is last priority. Framing has barely begun on level 2. Plus, a stop work has been issued. / allucent_notes_20251209_203830: Zack Goertz on 2025-11-07T11:46:07.286Z: DH 1300 is priority after 12 and 2200. Which are behind. / Zack Goertz on 2025-11-10T17:17:12.528Z: See below comment / Jason Johnston on 2025-11-11 16:11: need update / Zack Goertz on 2025-11-17 13:11: Zone 3 is last priority. Framing has barely begun on level 2. Plus, a stop work has been issued. / Jason Johnston on 2025-12-09 20:35: Need update from team / allucent_notes_20251216_165335: Zack Goertz on 2025-11-07T11:46:07.286Z: DH 1300 is priority after 12 and 2200. Which are behind. / Zack Goertz on 2025-11-10T17:17:12.528Z: See below comment / Jason Johnston on 2025-11-11 16:11: need update / Zack Goertz on 2025-11-17 13:11: Zone 3 is last priority. Framing has barely begun on level 2. Plus, a stop work has been issued. / Jason Johnston on 2025-12-09 20:35: Need update from team / Jason Johnston on 2025-12-16 08:12: not complete / allucent_notes: 2025-11-07T11:46:07.286Z - User: Zack Goertz - Date Added: 2025-11-07T11:46:07.286Z - Note: DH 1300 is priority after 12 and 2200. Which are behind. / 2025-11-10T17:17:12.528Z - User: Zack Goertz - Date Added: 2025-11-10T17:17:12.528Z - Note: See below
- QTS-44551: allucent_notes_20251104_160200: David Wiltberger on 2025-11-04 14:11: no floor to complete / allucent_notes_20251111_182405: David Wiltberger on 2025-11-04 14:11: no floor to complete / allucent_notes_20251118_192630: David Wiltberger on 2025-11-04 14:11: no floor to complete / Zack Goertz on 2025-11-17 13:11: Zone 3 is last priority. Framing has barely begun on level 2. Plus, a stop work has been issued. / allucent_notes_20251202_153722: David Wiltberger on 2025-11-04 14:11: no floor to complete / Zack Goertz on 2025-11-17 13:11: Zone 3 is last priority. Framing has barely begun on level 2. Plus, a stop work has been issued. / allucent_notes_20251209_203830: David Wiltberger on 2025-11-04 14:11: no floor to complete / Zack Goertz on 2025-11-17 13:11: Zone 3 is last priority. Framing has barely begun on level 2. Plus, a stop work has been issued. / allucent_notes_20251216_165335: David Wiltberger on 2025-11-04 14:11: no floor to complete / Zack Goertz on 2025-11-17 13:11: Zone 3 is last priority. Framing has barely begun on level 2. Plus, a stop work has been issued. / allucent_notes: 2025-11-04 14:11 - User: David Wiltberger - Date Added: 2025-11-04 14:11 - Note: no floor to complete / 2025-11-17 13:11 - User: Zack Goertz - Date Added: 2025-11-17 13:11 - Note: Zone 3 is last priority. Framing has barely begun on level 2. Plus, a stop
- QTS-13961: allucent_notes_20251230_164549: Zack Goertz on 2025-11-17 13:11: Zone 3 is last priority. Bel-aire is behind and have not begun to do back to backs. / Jason Johnston on 2025-12-16 08:17: Started early with risers / David Wiltberger on 2025-12-30 16:24: no update / allucent_notes_20251118_192630: Zack Goertz on 2025-11-17 13:11: Zone 3 is last priority. Bel-aire is behind and have not begun to do back to backs. / allucent_notes_20251209_203830: Zack Goertz on 2025-11-17 13:11: Zone 3 is last priority. Bel-aire is behind and have not begun to do back to backs. / allucent_notes_20251216_165335: Zack Goertz on 2025-11-17 13:11: Zone 3 is last priority. Bel-aire is behind and have not begun to do back to backs. / Jason Johnston on 2025-12-16 08:17: Started early with risers / allucent_notes: 2025-11-17 13:11 - User: Zack Goertz - Date Added: 2025-11-17 13:11 - Note: Zone 3 is last priority. Bel-aire is behind and have not begun to do back to backs. / 2025-12-16 08:17 - User: Jason Johnston - Date Added: 2025-12-16 08:17 - Note: Started earl
- QTS-8661: allucent_notes_20251230_164549: David Wiltberger on 2025-12-30 16:25: no update / allucent_notes: 2025-12-30 16:25 - User: David Wiltberger - Date Added: 2025-12-30 16:25 - Note: no update

| ID | WBS | Activity | Duration | Start | Finish | Predecessors | Complete | Remaining | Planned start | Planned finish | Total float | Free float | Calendar | Subcontractor | Level | Location | Project Section-1 | Baseline | Layton Responsible Party | Project Section | Allucent CSI Group | Phase-1-1 |
| --- | --- | --- | --- | --- | --- | --- | --- | --- | --- | --- | --- | --- | --- | --- | --- | --- | --- | --- | --- | --- | --- | --- |
|  | 7 | **Gallery 1303 Mechanical** |  | 2025-10-27 | 2026-04-01 |  |  |  |  |  |  |  |  |  |  |  |  |  |  |  |  |  |
| QTS-44621 |  | DH 1300 / Mechanical Gallery 1303 // Install OH Mechanical Hangers | 7d | 2025-10-27 A | 2026-01-07 A | QTS-44551 SS | 100% |  | 2025-10-27 | 2025-11-03 |  |  | QTS-PHX3 DC1 - 6 day w/ Holidays | Bel-Aire Mechanical, LLC | Level 2 | DH2100 | Construction | IGMP | Dave Wiltberger | Construction | 01ADMIN |  |
| QTS-10711 |  | DH 1300 / Mechanical Gallery 1303 // Frame for 1303 Exterior Wall | 5d | 2025-12-01 A | 2025-12-05 A | QTS-6961 FF, QTS-6971 | 100% |  |  |  |  |  | QTS-PHX3 DC1 - 6 day w/ Holidays | Performance Contracting, Inc. |  | DH1300 | Construction | IGMP | Sean Waisner | Construction | 01ADMIN | Phase 3 |
| QTS-12321 |  | DH 1300 / Mechanical Gallery 1303 // Hang Drywall for 1303 Exterior Wall | 4d | 2025-12-29 A | 2026-01-02 A | QTS-10711, QTS-39041 | 100% |  |  |  |  |  | QTS-PHX3 DC1 - 6 day w/ Holidays | Performance Contracting, Inc. |  | DH1300 | Construction | IGMP | Sean Waisner | Construction |  | Phase 3 |
| QTS-14831 |  | DH 1300 / Mechanical Gallery 1303 // Install OH Mechanical Piping | 10d | 2026-01-08 A | 2026-01-14 | QTS-44621 | 100% | 0d | 2026-01-08 | 2026-01-20 | 53d | 0d | QTS-PHX3 DC1 - 6 day w/ Holidays | Bel-Aire Mechanical, LLC |  | DH1300 | Construction | IGMP | Dave Wiltberger | Construction | 01ADMIN | Phase 3 |
| QTS-16611 |  | DH 1300 / Mechanical Gallery 1303 // Install OH Electrical, FA/EPMS/BMS Conduit & Grounding | 10d | 2026-01-14 | 2026-01-26 | QTS-14831 |  |  |  |  | 54d | 6d | QTS-PHX3 DC1 - 6 day w/ Holidays | Rosendin Electric, Inc |  | DH1300 | Construction | IGMP | Scott Masterson | Construction | 01ADMIN | Phase 3 |
| QTS-13081 |  | DH 1300 / Mechanical Gallery 1303 // Hang Fan Drywall - MG Side | 3d | 2026-01-16 | 2026-01-20 | QTS-11691 |  |  |  |  | 53d | 0d | QTS-PHX3 DC1 - 6 day w/ Holidays | Performance Contracting, Inc. |  | DH1300 | Construction | IGMP | Sean Waisner | Construction |  | Phase 3 |
| QTS-1003940 |  | DH 1300 / Mechanical Gallery 1303 // Tape & Finish Fan Drywall - MG Side | 4d | 2026-01-21 | 2026-01-24 | QTS-13081 |  |  |  |  | 53d | 0d | QTS-PHX3 DC1 - 6 day w/ Holidays | Performance Contracting, Inc. |  | DH1300 | Construction | IGMP | Sean Waisner | Construction |  | Phase 3 |
| QTS-11691 |  | DH 1300 / Mechanical Gallery 1303 // Frame Fan Wall | 5d | 2026-01-23 A | 2026-01-15 | QTS-14831 SS, QTS-10711 | 60% | 2d | 2026-01-21 | 2026-01-26 | 53d | 0d | QTS-PHX3 DC1 - 6 day w/ Holidays | Performance Contracting, Inc. |  | DH1300 | Construction | IGMP | Sean Waisner | Construction |  | Phase 3 |
| QTS-14821 |  | DH 1300 / Mechanical Gallery 1303 // Install VESDA | 8d | 2026-01-24 | 2026-02-02 | QTS-14811 |  |  |  |  | 48d | 0d | QTS-PHX3 DC1 - 6 day w/ Holidays | Rosendin Electric, Inc |  | DH1300 | Construction | IGMP | Scott Masterson | Construction | 01ADMIN | Phase 3 |
| QTS-13931 |  | DH 1300 / Mechanical Gallery 1303 // Paint Fan Wall - MG Side | 5d | 2026-01-26 | 2026-01-30 | QTS-1003940, QTS-13081 |  |  |  |  | 53d | 16d | QTS-PHX3 DC1 - 6 day w/ Holidays | Pennington Painting Company, LLC |  | DH1300 | Construction | IGMP | Sean Waisner | Construction |  | Phase 3 |
| QTS-14841 |  | DH 1300 / Mechanical Gallery 1303 // Install Security Screen Above Fan Wall | 3d | 2026-02-03 | 2026-02-05 | QTS-16611, QTS-11691, QTS-99680, QTS-14821 |  |  |  |  | 48d | 11d | QTS-PHX3 DC1 - 6 day w/ Holidays | Performance Contracting, Inc. |  | DH1300 | Construction | IGMP | Sean Waisner | Construction |  | Phase 3 |
| QTS-15341 |  | DH 1300 / Mechanical Gallery 1303 // OFCI - L2 SET IN PLACE - Eq Type # - DH CRAH - 14 units | 6d | 2026-02-19 | 2026-02-25 | QTS-14841, QTS-37761, QTS-37771, QTS-37781, QTS-37791, QTS-37801, QTS-37811, QTS-37821, QTS-37831, QTS-37841, QTS-37851, QTS-37861, QTS-37871, QTS-37881, QTS-37891, QTS-14831, QTS-13931, QTS-46751 |  |  |  |  | 37d | 0d | QTS-PHX3 DC1 - 6 day w/ Holidays | Bel-Aire Mechanical, LLC |  | DH1300 | Construction | IGMP | Dave Wiltberger | Construction |  | Phase 3 |
| QTS-12611 |  | DH 1300 / Mechanical Gallery 1303 // In Wall Electrical Rough for Fan Wall | 2d | 2026-02-26 | 2026-02-27 | QTS-15341, QTS-11691 |  |  |  |  | 72d | 0d | QTS-PHX3 DC1 - 6 day w/ Holidays | Rosendin Electric, Inc |  | DH1300 | Construction | IGMP | Scott Masterson | Construction |  | Phase 3 |
| QTS-16431 |  | DH 1300 / Mechanical Gallery 1303 // CRAH Unit Mechanical Connections | 10d | 2026-02-26 | 2026-03-09 | QTS-15341 |  |  |  |  | 37d | 0d | QTS-PHX3 DC1 - 6 day w/ Holidays | Bel-Aire Mechanical, LLC |  | DH1300 | Construction | IGMP | Dave Wiltberger | Construction |  | Phase 3 |
| QTS-12871 |  | DH 1300 / Mechanical Gallery 1303 // In Wall Inspection for Fan Wall | 1d | 2026-02-28 | 2026-02-28 | QTS-12611 |  |  |  |  | 72d | 0d | QTS-PHX3 DC1 - 6 day w/ Holidays | Rosendin Electric, Inc |  | DH1300 | Construction | IGMP | Scott Masterson | Construction |  | Phase 3 |
| QTS-1003950 |  | DH 1300 / Mechanical Gallery 1303 // Hang Fan Drywall - DH Side | 3d | 2026-03-02 | 2026-03-04 | QTS-12871 |  |  |  |  | 72d | 0d | QTS-PHX3 DC1 - 6 day w/ Holidays | Performance Contracting, Inc. |  | DH1300 | Construction | IGMP | Sean Waisner | Construction |  | Phase 3 |
| QTS-1003960 |  | DH 1300 / Mechanical Gallery 1303 // Tape & Finish Fan Drywall - DH Side | 4d | 2026-03-05 | 2026-03-09 | QTS-1003950 |  |  |  |  | 72d | 0d | QTS-PHX3 DC1 - 6 day w/ Holidays | Performance Contracting, Inc. |  | DH1300 | Construction | IGMP | Sean Waisner | Construction |  | Phase 3 |
| QTS-1003970 |  | DH 1300 / Mechanical Gallery 1303 // Paint Fan Wall - DH Side | 5d | 2026-03-10 | 2026-03-14 | QTS-1003960, QTS-1003950 |  |  |  |  | 72d | 0d | QTS-PHX3 DC1 - 6 day w/ Holidays | Pennington Painting Company, LLC |  | DH1300 | Construction | IGMP | Sean Waisner | Construction |  | Phase 3 |
| QTS-16601 |  | DH 1300 / Mechanical Gallery 1303 // Install Electrical Tray | 5d | 2026-03-10 | 2026-03-14 | QTS-14831, QTS-16431 |  |  |  |  | 37d | 0d | QTS-PHX3 DC1 - 6 day w/ Holidays | Rosendin Electric, Inc |  | DH1300 | Construction | IGMP | Scott Masterson | Construction |  | Phase 3 |
| QTS-16441 |  | DH 1300 / Mechanical Gallery 1303 // Install Angle Seal Around Units | 2d | 2026-03-16 | 2026-03-17 | QTS-1003970, QTS-15341 |  |  |  |  | 72d | 16d | QTS-PHX3 DC1 - 6 day w/ Holidays | Performance Contracting, Inc. |  | DH1300 | Construction | IGMP | Sean Waisner | Construction |  | Phase 3 |
| QTS-17231 |  | DH 1300 / Mechanical Gallery 1303 // Install Basket Tray for LV | 5d | 2026-03-16 | 2026-03-20 | QTS-16601 |  |  |  |  | 37d | 0d | QTS-PHX3 DC1 - 6 day w/ Holidays | Rosendin Electric, Inc |  | DH1300 | Construction | IGMP | Scott Masterson | Construction |  | Phase 3 |
| QTS-18021 |  | DH 1300 / Mechanical Gallery 1303 // Install BMS & EPMS Cable and Terminations | 10d | 2026-03-21 | 2026-04-01 | QTS-17231 |  |  |  |  | 37d | 0d | QTS-PHX3 DC1 - 6 day w/ Holidays | Rosendin Electric, Inc |  | DH1300 | Construction | IGMP | Scott Masterson | Construction |  | Phase 3 |
| QTS-1003930 |  | DH 1300 / Mechanical Gallery 1303 // Tape, & Finish Drywall for 1303 Exterior Wall | 4d | 2026-03-23 | 2026-03-26 | QTS-1004120 FF+6d, QTS-12321 |  |  |  |  | 124d | 0d | QTS-PHX3 DC1 - 6 day w/ Holidays | Performance Contracting, Inc. |  | DH1300 | Construction | IGMP | Sean Waisner | Construction |  | Phase 3 |
| QTS-13921 |  | DH 1300 / Mechanical Gallery 1303 // Paint Walls for 1303 Exterior Wall | 3d | 2026-03-27 | 2026-03-30 | QTS-1003930 |  |  |  |  | 124d | 0d | QTS-PHX3 DC1 - 6 day w/ Holidays | Pennington Painting Company, LLC |  | DH1300 | Construction | IGMP | Sean Waisner | Construction |  | Phase 3 |
| QTS-14361 |  | DH 1300 / Mechanical Gallery 1303 // Top of Wall Fire Stop | 2d | 2026-03-31 | 2026-04-01 | QTS-13921 |  |  |  |  | 124d |  | QTS-PHX3 DC1 - 6 day w/ Holidays | Alpha Insulation & Waterproofing, Inc. |  | DH1300 | Construction | IGMP | Sean Waisner | Construction |  | Phase 3 |

Notes:
- QTS-44621: allucent_notes_20251230_164549: David Wiltberger on 2025-11-04 14:11: no floor to complete / Zack Goertz on 2025-11-17 13:11: Zone 3 is last priority. Framing has barely begun on level 2. Plus, a stop work has been issued. / David Wiltberger on 2025-12-09 15:58: Out of sequence / allucent_notes_20251104_160200: David Wiltberger on 2025-11-04 14:11: no floor to complete / allucent_notes_20251111_182405: David Wiltberger on 2025-11-04 14:11: no floor to complete / allucent_notes_20251118_192630: David Wiltberger on 2025-11-04 14:11: no floor to complete / Zack Goertz on 2025-11-17 13:11: Zone 3 is last priority. Framing has barely begun on level 2. Plus, a stop work has been issued. / allucent_notes_20251202_153722: David Wiltberger on 2025-11-04 14:11: no floor to complete / Zack Goertz on 2025-11-17 13:11: Zone 3 is last priority. Framing has barely begun on level 2. Plus, a stop work has been issued. / allucent_notes_20251209_203830: David Wiltberger on 2025-11-04 14:11: no floor to complete / Zack Goertz on 2025-11-17 13:11: Zone 3 is last priority. Framing has barely begun on level 2. Plus, a stop work has been issued. / David Wiltberger on 2025-12-09 15:58: Out of sequence / allucent_notes_20251216_165335: David Wiltberger on 2025-11-04 14:11: no floor to complete / Zack Goertz on 2025-11-17 13:11: Zone 3 is last priority. Framing has barely begun on level 2. Plus, a stop work has been issued. / David Wiltberger on 2025-12-09 15:58: Out of sequence / allucent_notes: 2025-11-04 14:11 - User: David Wiltberger - Date Added: 2025-11-04 14:11 - Note: no floor to complete / 2025-11-17 13:11 - User: Zack Goertz - Date Added: 2025-11-17 13:11 - Note: Zone 3 is last priority. Framing has barely begun on level 2. Plus, a stop

| ID | WBS | Activity | Duration | Start | Finish | Predecessors | Total float | Free float | Calendar | Subcontractor | Location | Project Section-1 | Phase-1-1 | Baseline | Layton Responsible Party | Project Section | Allucent CSI Group | Level |
| --- | --- | --- | --- | --- | --- | --- | --- | --- | --- | --- | --- | --- | --- | --- | --- | --- | --- | --- |
|  | 1 | **Gallery 1302 Electrical** |  | 2026-01-14 | 2026-04-13 |  |  |  |  |  |  |  |  |  |  |  |  |  |
| QTS-14811 |  | DH 1300 / Electrical Gallery 1302 // Install VESDA | 8d | 2026-01-14 | 2026-01-23 | QTS-13951, QTS-120000 | 48d | 0d | QTS-PHX3 DC1 - 6 day w/ Holidays | Rosendin Electric, Inc | DH1300 | Construction | Phase 3 | IGMP | Scott Masterson | Construction | 01ADMIN |  |
| QTS-46791 |  | DH 1300 / Electrical Gallery 1302 // Install OH Electrical, FA/ EPMS/BMS Conduit & Grounding | 10d | 2026-02-06 | 2026-02-17 | QTS-1003850, QTS-14811 | 54d | 8d | QTS-PHX3 DC1 - 6 day w/ Holidays | Rosendin Electric, Inc | DH1100 | Construction | Phase 1 | IGMP | Scott Masterson | Construction | 01ADMIN | Level 1 |
| QTS-17831 |  | DH 1300 / Electrical Gallery 1302 // Install Conduit from UPS Pod to Chillers R-C | 6d | 2026-02-25 | 2026-03-03 | QTS-13581, QTS-13571, QTS-1000970, QTS-23651, QTS-2151, QTS-14811, QTS-22821 | 28d | 0d | QTS-PHX3 DC1 - 6 day w/ Holidays | Rosendin Electric, Inc | DH1300 | Construction | Phase 3 | IGMP | Scott Masterson | Construction |  |  |
| QTS-14351 |  | DH 1300 / Electrical Gallery 1302 // Install Electrical Tray | 5d | 2026-02-27 | 2026-03-04 | QTS-46791, QTS-3041 | 46d | 0d | QTS-PHX3 DC1 - 6 day w/ Holidays | Rosendin Electric, Inc | DH1300 | Construction | Phase 3 | IGMP | Scott Masterson | Construction |  |  |
| QTS-18711 |  | DH 1300 / Electrical Gallery 1302 // Install Conduit from UPS Pod to Pumps R-C | 6d | 2026-02-27 | 2026-03-05 | QTS-3451 FF, QTS-17831 SS+2d | 30d | 0d | QTS-PHX3 DC1 - 6 day w/ Holidays | Rosendin Electric, Inc | DH1300 | Construction | Phase 3 | IGMP | Scott Masterson | Construction |  |  |
| QTS-18701 |  | DH 1300 / Electrical Gallery 1302 // Pull & Terminate from UPS Pod to Chillers R-C | 3d | 2026-03-04 | 2026-03-06 | QTS-17831, QTS-13581 | 31d | 1d | QTS-PHX3 DC1 - 6 day w/ Holidays | Rosendin Electric, Inc | DH1300 | Construction | Phase 3 | IGMP | Scott Masterson | Construction |  |  |
| QTS-43841 |  | DH 1300 / Electrical Gallery 1302 // Install Conduit from UPS Pod to Chillers Lineup D-F | 6d | 2026-03-04 | 2026-03-10 | QTS-17831 | 28d | 0d | QTS-PHX3 DC1 - 6 day w/ Holidays | Rosendin Electric, Inc | DH1300 | Construction | Phase 3 | IGMP | Scott Masterson | Construction |  |  |
| QTS-15331 |  | DH 1300 / Electrical Gallery 1302 // Install Basket Tray for LV | 5d | 2026-03-05 | 2026-03-10 | QTS-14351 | 46d | 0d | QTS-PHX3 DC1 - 6 day w/ Holidays | Rosendin Electric, Inc | DH1300 | Construction | Phase 3 | IGMP | Scott Masterson | Construction |  |  |
| QTS-18991 |  | DH 1300 / Electrical Gallery 1302 // Pull & Terminate from UPS Pod to Pumps R-C | 3d | 2026-03-06 | 2026-03-09 | QTS-18711, QTS-18701 FF | 33d | 0d | QTS-PHX3 DC1 - 6 day w/ Holidays | Rosendin Electric, Inc | DH1300 | Construction | Phase 3 | IGMP | Scott Masterson | Construction |  |  |
| QTS-43861 |  | DH 1300 / Electrical Gallery 1302 // Install Conduit from UPS Pod to Pumps Lineup D-F | 6d | 2026-03-06 | 2026-03-12 | QTS-43841 FF, QTS-18711 | 30d | 0d | QTS-PHX3 DC1 - 6 day w/ Holidays | Rosendin Electric, Inc | DH1300 | Construction | Phase 3 | IGMP | Scott Masterson | Construction |  |  |
| QTS-16891 |  | DH 1300 / Electrical Gallery 1302 // Set House Panels | 2d | 2026-03-07 | 2026-03-09 | QTS-15011, QTS-15781, QTS-13091 | 46d | 0d | QTS-PHX3 DC1 - 6 day w/ Holidays | Rosendin Electric, Inc | DH1300 | Construction | Phase 3 | IGMP | Scott Masterson | Construction |  |  |
| QTS-18341 |  | DH 1300 / Electrical Gallery 1302 // Pull LV Cables Branch Circuits | 5d | 2026-03-10 | 2026-03-14 | QTS-16891 | 46d | 0d | QTS-PHX3 DC1 - 6 day w/ Holidays | Rosendin Electric, Inc | DH1300 | Construction | Phase 3 | IGMP | Scott Masterson | Construction |  |  |
| QTS-16131 |  | DH 1300 / Electrical Gallery 1302 // Install BMS & EPMS Cable and Terminations | 10d | 2026-03-11 | 2026-03-21 | QTS-15331 | 46d | 9d | QTS-PHX3 DC1 - 6 day w/ Holidays | Rosendin Electric, Inc | DH1300 | Construction | Phase 3 | IGMP | Scott Masterson | Construction |  |  |
| QTS-43851 |  | DH 1300 / Electrical Gallery 1302 // Pull & Terminate from UPS Pod to Chillers Lineup D-F | 3d | 2026-03-11 | 2026-03-13 | QTS-43841, QTS-18701 | 28d | 19d | QTS-PHX3 DC1 - 6 day w/ Holidays | Rosendin Electric, Inc | DH1300 | Construction | Phase 3 | IGMP | Scott Masterson | Construction |  |  |
| QTS-43871 |  | DH 1300 / Electrical Gallery 1302 // Pull & Terminate from UPS Pod to Pumps Lineup D-F | 3d | 2026-03-13 | 2026-03-16 | QTS-43861, QTS-18991 | 30d | 0d | QTS-PHX3 DC1 - 6 day w/ Holidays | Rosendin Electric, Inc | DH1300 | Construction | Phase 3 | IGMP | Scott Masterson | Construction |  |  |
| QTS-18551 |  | DH 1300 / Electrical Gallery 1302 // Terminate Panels | 6d | 2026-03-16 | 2026-03-21 | QTS-18341 | 46d | 9d | QTS-PHX3 DC1 - 6 day w/ Holidays | Rosendin Electric, Inc | DH1300 | Construction | Phase 3 | IGMP | Scott Masterson | Construction |  |  |
|  | 1 | **Electrical** |  | 2026-02-18 | 2026-04-13 |  |  |  |  |  |  |  |  |  |  |  |  |  |
|  | 7 | **DH 1300 IDF Cabinets** |  | 2026-02-19 | 2026-02-23 |  |  |  |  |  |  |  |  |  |  |  |  |  |
| QTS-38661 |  | DH 1300 / Electrical Gallery 1301/1302 // Install Fire Rated Plywood | 1d | 2026-02-19 | 2026-02-19 | QTS-13461 | 68d | 0d | QTS-PHX3 DC1 - 6 day w/ Holidays |  | DH1300 | Construction | Phase 3 | GMP | Sean Waisner | Construction |  |  |
| QTS-38671 |  | DH 1300 / Electrical Gallery 1301/1302 // Set IDF Cabinet | 1d | 2026-02-20 | 2026-02-20 | QTS-38661 | 68d | 0d | QTS-PHX3 DC1 - 6 day w/ Holidays | Rosendin Electric, Inc | DH1300 | Construction | Phase 3 | GMP | Scott Masterson | Construction |  |  |
| QTS-38681 |  | DH 1300 / Electrical Gallery 1301/1302 // Set IDF Conduit | 2d | 2026-02-21 | 2026-02-23 | QTS-38671 | 68d | 0d | QTS-PHX3 DC1 - 6 day w/ Holidays | Rosendin Electric, Inc | DH1300 | Construction | Phase 3 | GMP | Scott Masterson | Construction |  |  |
|  | 1 | **A1300 Lineup** |  | 2026-02-21 | 2026-03-27 |  |  |  |  |  |  |  |  |  |  |  |  |  |
| QTS-14331 |  | Gallery 1302 / Lineup A1300 // Install Hangers & Supports | 3d | 2026-02-21 | 2026-02-24 | QTS-13461, QTS-13091, QTS-2221 | 26d | 0d | QTS-PHX3 DC1 - 6 day w/ Holidays | Rosendin Electric, Inc | DH1300 | Construction | Phase 3 | IGMP | Scott Masterson | Construction |  |  |
| QTS-15011 |  | Gallery 1302 / Lineup A1300 // Install Raceways from LV POD to COD | 7d | 2026-02-27 | 2026-03-06 | QTS-14331, QTS-3041 | 24d | 0d | QTS-PHX3 DC1 - 6 day w/ Holidays | Rosendin Electric, Inc | DH1300 | Construction | Phase 3 | IGMP | Scott Masterson | Construction |  |  |
| QTS-15781 |  | Gallery 1302 / Lineup A1300 // OFCI - L2 SET IN PLACE - Eq Type # - COD/ATS-210-A - Skid 1-3 | 2d | 2026-02-28 | 2026-03-02 | QTS-1003340, QTS-37491, QTS-13091 | 24d | 0d | QTS-PHX3 DC1 - 6 day w/ Holidays | Rosendin Electric, Inc | DH1300 | Construction | Phase 3 | IGMP | Scott Masterson | Construction |  |  |
| QTS-46021 |  | Gallery 1302 / Lineup A1300 // OFCI - L2 SET IN PLACE - Eq Type # - COD/ATS-210-A - Skid 4-6 | 2d | 2026-03-03 | 2026-03-04 | QTS-1003340, QTS-15781 | 24d | 0d | QTS-PHX3 DC1 - 6 day w/ Holidays | Rosendin Electric, Inc | DH1300 | Construction | Phase 3 | IGMP | Scott Masterson | Construction |  |  |
| QTS-16421 |  | Gallery 1302 / Lineup A1300 // Set Reserve Busway Segment | 2d | 2026-03-07 | 2026-03-09 | QTS-15011, QTS-15781, QTS-50061 | 34d | 0d | QTS-PHX3 DC1 - 6 day w/ Holidays | Rosendin Electric, Inc | DH1300 | Construction | Phase 3 | IGMP | Scott Masterson | Construction |  |  |
| QTS-16901 |  | Gallery 1302 / Lineup A1300 // Pull LV Cables from POD to ATS | 4d | 2026-03-07 | 2026-03-11 | QTS-15781, QTS-15011, QTS-13581, QTS-46021 FF+1d | 34d | 0d | QTS-PHX3 DC1 - 6 day w/ Holidays | Rosendin Electric, Inc | DH1300 | Construction | Phase 3 | IGMP | Scott Masterson | Construction |  |  |
| QTS-17851 |  | Gallery 1302 / Lineup A1300 // Pull LV Cables from Reserve Bus to ATS | 2d | 2026-03-10 | 2026-03-11 | QTS-15011, QTS-16421, QTS-15781 | 34d | 0d | QTS-PHX3 DC1 - 6 day w/ Holidays | Rosendin Electric, Inc | DH1300 | Construction | Phase 3 | IGMP | Scott Masterson | Construction |  |  |
| QTS-18211 |  | Gallery 1302 / Lineup A1300 // Terminate & Torque ATS | 7d | 2026-03-12 | 2026-03-19 | QTS-17851, QTS-16901 | 34d | 0d | QTS-PHX3 DC1 - 6 day w/ Holidays | Rosendin Electric, Inc | DH1300 | Construction | Phase 3 | IGMP | Scott Masterson | Construction |  |  |
| QTS-18221 |  | Gallery 1302 / Lineup A1300 // Terminate & Torque COD | 7d | 2026-03-20 | 2026-03-27 | QTS-16901, QTS-18211 | 34d | 2d | QTS-PHX3 DC1 - 6 day w/ Holidays | Rosendin Electric, Inc | DH1300 | Construction | Phase 3 | IGMP | Scott Masterson | Construction |  |  |

Notes:
- QTS-14811: allucent_notes_20251230_164549: Zack Goertz on 2025-11-11T18:32:05.605Z: ZOne 3 level 1 is not priority, plus, AF steel is doing their O.H. work / Zack Goertz on 2025-11-17 13:11: Zone 3 is last priority. Zone 3 level 2 is only beginning framing / allucent_notes_20251111_182405: Zack Goertz on 2025-11-11T18:32:05.605Z: ZOne 3 level 1 is not priority, plus, AF steel is doing their O.H. work / allucent_notes_20251118_192630: Zack Goertz on 2025-11-11T18:32:05.605Z: ZOne 3 level 1 is not priority, plus, AF steel is doing their O.H. work / Zack Goertz on 2025-11-17 13:11: Zone 3 is last priority. Zone 3 level 2 is only beginning framing / allucent_notes_20251202_153722: Zack Goertz on 2025-11-11T18:32:05.605Z: ZOne 3 level 1 is not priority, plus, AF steel is doing their O.H. work / Zack Goertz on 2025-11-17 13:11: Zone 3 is last priority. Zone 3 level 2 is only beginning framing / allucent_notes_20251209_203830: Zack Goertz on 2025-11-11T18:32:05.605Z: ZOne 3 level 1 is not priority, plus, AF steel is doing their O.H. work / Zack Goertz on 2025-11-17 13:11: Zone 3 is last priority. Zone 3 level 2 is only beginning framing / allucent_notes_20251216_165335: Zack Goertz on 2025-11-11T18:32:05.605Z: ZOne 3 level 1 is not priority, plus, AF steel is doing their O.H. work / Zack Goertz on 2025-11-17 13:11: Zone 3 is last priority. Zone 3 level 2 is only beginning framing / allucent_notes: 2025-11-11T18:32:05.605Z - User: Zack Goertz - Date Added: 2025-11-11T18:32:05.605Z - Note: ZOne 3 level 1 is not priority, plus, AF steel is doing their O.H. work / 2025-11-17 13:11 - User: Zack Goertz - Date Added: 2025-11-17 13:11 - Note: Zone 3 is la

| ID | WBS | Activity | Duration | Start | Finish | Predecessors | Total float | Free float | Calendar | Subcontractor | Location | Project Section-1 | Phase-1-1 | Baseline | Layton Responsible Party | Project Section |
| --- | --- | --- | --- | --- | --- | --- | --- | --- | --- | --- | --- | --- | --- | --- | --- | --- |
|  | 2 | **B1300 Lineup** |  | 2026-02-21 | 2026-03-27 |  |  |  |  |  |  |  |  |  |  |  |
| QTS-2231 |  | Gallery 1302 / Lineup B1300 // Install Hangers & Supports | 3d | 2026-02-21 | 2026-02-24 | QTS-14331 SS | 26d | 0d | QTS-PHX3 DC1 - 6 day w/ Holidays | Rosendin Electric, Inc | DH1300 | Construction | Phase 3 | IGMP | Scott Masterson | Construction |
| QTS-3051 |  | Gallery 1302 / Lineup B1300 // Install Raceways from LV POD to COD | 7d | 2026-02-27 | 2026-03-06 | QTS-2231, QTS-15011 SS | 24d | 0d | QTS-PHX3 DC1 - 6 day w/ Holidays | Rosendin Electric, Inc | DH1300 | Construction | Phase 3 | IGMP | Scott Masterson | Construction |
| QTS-4281 |  | Gallery 1302 / Lineup B1300 // OFCI - L2 SET IN PLACE - Eq Type # - COD/ATS-210-A - Skid 1-3 | 2d | 2026-03-05 | 2026-03-06 | QTS-37501, QTS-46021 | 24d | 0d | QTS-PHX3 DC1 - 6 day w/ Holidays | Rosendin Electric, Inc | DH1300 | Construction | Phase 3 | IGMP | Scott Masterson | Construction |
| QTS-46031 |  | Gallery 1302 / Lineup B1300 // OFCI - L2 SET IN PLACE - Eq Type # - COD/ATS-210-A - Skid 4-6 | 2d | 2026-03-07 | 2026-03-09 | QTS-4281 | 24d | 0d | QTS-PHX3 DC1 - 6 day w/ Holidays | Rosendin Electric, Inc | DH1300 | Construction | Phase 3 | IGMP | Scott Masterson | Construction |
| QTS-5351 |  | Gallery 1302 / Lineup B1300 // Set Reserve Busway Segment | 2d | 2026-03-07 | 2026-03-09 | QTS-4281, QTS-3051, QTS-50061 | 38d | 0d | QTS-PHX3 DC1 - 6 day w/ Holidays | Rosendin Electric, Inc | DH1300 | Construction | Phase 3 | IGMP | Scott Masterson | Construction |
| QTS-6641 |  | Gallery 1302 / Lineup B1300 // Pull LV Cables from POD to ATS | 4d | 2026-03-07 | 2026-03-11 | QTS-4281, QTS-3051, QTS-13581, QTS-46031 FF+1d | 38d | 0d | QTS-PHX3 DC1 - 6 day w/ Holidays | Rosendin Electric, Inc | DH1300 | Construction | Phase 3 | IGMP | Scott Masterson | Construction |
| QTS-8431 |  | Gallery 1302 / Lineup B1300 // Pull LV Cables from Reserve Bus to ATS | 2d | 2026-03-10 | 2026-03-11 | QTS-3051, QTS-5351, QTS-4281 | 38d | 0d | QTS-PHX3 DC1 - 6 day w/ Holidays | Rosendin Electric, Inc | DH1300 | Construction | Phase 3 | IGMP | Scott Masterson | Construction |
| QTS-9551 |  | Gallery 1302 / Lineup B1300 // Terminate & Torque ATS | 7d | 2026-03-12 | 2026-03-19 | QTS-8431, QTS-6641 | 38d | 0d | QTS-PHX3 DC1 - 6 day w/ Holidays | Rosendin Electric, Inc | DH1300 | Construction | Phase 3 | IGMP | Scott Masterson | Construction |
| QTS-9561 |  | Gallery 1302 / Lineup B1300 // Terminate & Torque COD | 7d | 2026-03-20 | 2026-03-27 | QTS-6641, QTS-9551 | 38d | 2d | QTS-PHX3 DC1 - 6 day w/ Holidays | Rosendin Electric, Inc | DH1300 | Construction | Phase 3 | IGMP | Scott Masterson | Construction |
|  | 3 | **C1300 Lineup** |  | 2026-02-25 | 2026-04-04 |  |  |  |  |  |  |  |  |  |  |  |
| QTS-2241 |  | Gallery 1302 / Lineup C1300 // Install Hangers & Supports | 3d | 2026-02-25 | 2026-02-27 | QTS-2231 | 27d | 0d | QTS-PHX3 DC1 - 6 day w/ Holidays | Rosendin Electric, Inc | DH1300 | Construction | Phase 3 | IGMP | Scott Masterson | Construction |
| QTS-3061 |  | Gallery 1302 / Lineup C1300 // Install Raceways from LV POD to COD | 7d | 2026-03-07 | 2026-03-14 | QTS-2241, QTS-3051 | 24d | 0d | QTS-PHX3 DC1 - 6 day w/ Holidays | Rosendin Electric, Inc | DH1300 | Construction | Phase 3 | IGMP | Scott Masterson | Construction |
| QTS-4291 |  | Gallery 1302 / Lineup C1300 // OFCI - L2 SET IN PLACE - Eq Type # - COD/ATS-210-A - Skid 1-3 | 2d | 2026-03-10 | 2026-03-11 | QTS-37511, QTS-46031 | 24d | 0d | QTS-PHX3 DC1 - 6 day w/ Holidays | Rosendin Electric, Inc | DH1300 | Construction | Phase 3 | IGMP | Scott Masterson | Construction |
| QTS-46041 |  | Gallery 1302 / Lineup C1300 // OFCI - L2 SET IN PLACE - Eq Type # - COD/ATS-210-A - Skid 4-6 | 2d | 2026-03-12 | 2026-03-13 | QTS-4291 | 24d | 0d | QTS-PHX3 DC1 - 6 day w/ Holidays | Rosendin Electric, Inc | DH1300 | Construction | Phase 3 | IGMP | Scott Masterson | Construction |
| QTS-5371 |  | Gallery 1302 / Lineup C1300 // Set Reserve Busway Segment | 2d | 2026-03-16 | 2026-03-17 | QTS-4291, QTS-3061, QTS-50061 | 31d | 0d | QTS-PHX3 DC1 - 6 day w/ Holidays | Rosendin Electric, Inc | DH1300 | Construction | Phase 3 | IGMP | Scott Masterson | Construction |
| QTS-6651 |  | Gallery 1302 / Lineup C1300 // Pull LV Cables from POD to ATS | 4d | 2026-03-16 | 2026-03-19 | QTS-4291, QTS-3061, QTS-13581, QTS-46041 FF+1d | 31d | 0d | QTS-PHX3 DC1 - 6 day w/ Holidays | Rosendin Electric, Inc | DH1300 | Construction | Phase 3 | IGMP | Scott Masterson | Construction |
| QTS-8451 |  | Gallery 1302 / Lineup C1300 // Pull LV Cables from Reserve Bus to ATS | 2d | 2026-03-18 | 2026-03-19 | QTS-3061, QTS-5371, QTS-4291 | 31d | 0d | QTS-PHX3 DC1 - 6 day w/ Holidays | Rosendin Electric, Inc | DH1300 | Construction | Phase 3 | IGMP | Scott Masterson | Construction |
| QTS-9581 |  | Gallery 1302 / Lineup C1300 // Terminate & Torque ATS | 7d | 2026-03-20 | 2026-03-27 | QTS-8451, QTS-6651 | 31d | 0d | QTS-PHX3 DC1 - 6 day w/ Holidays | Rosendin Electric, Inc | DH1300 | Construction | Phase 3 | IGMP | Scott Masterson | Construction |
| QTS-9591 |  | Gallery 1302 / Lineup C1300 // Terminate & Torque COD | 7d | 2026-03-28 | 2026-04-04 | QTS-6651, QTS-9581 | 31d | 0d | QTS-PHX3 DC1 - 6 day w/ Holidays | Rosendin Electric, Inc | DH1300 | Construction | Phase 3 | IGMP | Scott Masterson | Construction |
|  | 4 | **D1300 Lineup** |  | 2026-02-28 | 2026-04-06 |  |  |  |  |  |  |  |  |  |  |  |
| QTS-2251 |  | Gallery 1302 / Lineup D1300 // Install Hangers & Supports | 3d | 2026-02-28 | 2026-03-03 | QTS-2241 | 27d | 0d | QTS-PHX3 DC1 - 6 day w/ Holidays | Rosendin Electric, Inc | DH1300 | Construction | Phase 3 | IGMP | Scott Masterson | Construction |
| QTS-3071 |  | Gallery 1302 / Lineup D1300 // Install Raceways from LV POD to COD | 7d | 2026-03-07 | 2026-03-14 | QTS-2251, QTS-3061 SS | 24d | 0d | QTS-PHX3 DC1 - 6 day w/ Holidays | Rosendin Electric, Inc | DH1300 | Construction | Phase 3 | IGMP | Scott Masterson | Construction |
| QTS-4301 |  | Gallery 1302 / Lineup D1300 // OFCI - L2 SET IN PLACE - Eq Type # - COD/ATS-210-A - Skid 1-3 | 2d | 2026-03-14 | 2026-03-16 | QTS-37521, QTS-46041 | 24d | 0d | QTS-PHX3 DC1 - 6 day w/ Holidays | Rosendin Electric, Inc | DH1300 | Construction | Phase 3 | IGMP | Scott Masterson | Construction |
| QTS-46051 |  | Gallery 1302 / Lineup D1300 // OFCI - L2 SET IN PLACE - Eq Type # - COD/ATS-210-A - Skid 4-6 | 2d | 2026-03-17 | 2026-03-18 | QTS-4301 | 24d | 0d | QTS-PHX3 DC1 - 6 day w/ Holidays | Rosendin Electric, Inc | DH1300 | Construction | Phase 3 | IGMP | Scott Masterson | Construction |
| QTS-5391 |  | Gallery 1302 / Lineup D1300 // Set Reserve Busway Segment | 2d | 2026-03-17 | 2026-03-18 | QTS-4301, QTS-3071, QTS-50061 | 30d | 0d | QTS-PHX3 DC1 - 6 day w/ Holidays | Rosendin Electric, Inc | DH1300 | Construction | Phase 3 | IGMP | Scott Masterson | Construction |
| QTS-6661 |  | Gallery 1302 / Lineup D1300 // Pull LV Cables from POD to ATS | 4d | 2026-03-17 | 2026-03-20 | QTS-4301, QTS-3071, QTS-13581, QTS-46051 FF+1d | 30d | 0d | QTS-PHX3 DC1 - 6 day w/ Holidays | Rosendin Electric, Inc | DH1300 | Construction | Phase 3 | IGMP | Scott Masterson | Construction |
| QTS-8471 |  | Gallery 1302 / Lineup D1300 // Pull LV Cables from Reserve Bus to ATS | 2d | 2026-03-19 | 2026-03-20 | QTS-3071, QTS-5391, QTS-4301 | 30d | 0d | QTS-PHX3 DC1 - 6 day w/ Holidays | Rosendin Electric, Inc | DH1300 | Construction | Phase 3 | IGMP | Scott Masterson | Construction |
| QTS-9611 |  | Gallery 1302 / Lineup D1300 // Terminate & Torque ATS | 7d | 2026-03-21 | 2026-03-28 | QTS-8471, QTS-6661 | 30d | 0d | QTS-PHX3 DC1 - 6 day w/ Holidays | Rosendin Electric, Inc | DH1300 | Construction | Phase 3 | IGMP | Scott Masterson | Construction |
| QTS-9621 |  | Gallery 1302 / Lineup D1300 // Terminate & Torque COD | 7d | 2026-03-30 | 2026-04-06 | QTS-6661, QTS-9611 | 30d | 0d | QTS-PHX3 DC1 - 6 day w/ Holidays | Rosendin Electric, Inc | DH1300 | Construction | Phase 3 | IGMP | Scott Masterson | Construction |

| ID | WBS | Activity | Duration | Start | Finish | Predecessors | Total float | Free float | Calendar | Subcontractor | Location | Project Section-1 | Phase-1-1 | Baseline | Layton Responsible Party | Project Section |
| --- | --- | --- | --- | --- | --- | --- | --- | --- | --- | --- | --- | --- | --- | --- | --- | --- |
|  | 5 | **E1300 Lineup** |  | 2026-03-04 | 2026-04-13 |  |  |  |  |  |  |  |  |  |  |  |
| QTS-2261 |  | Gallery 1302 / Lineup E1300 // Install Hangers & Supports | 3d | 2026-03-04 | 2026-03-06 | QTS-2251 | 30d | 0d | QTS-PHX3 DC1 - 6 day w/ Holidays | Rosendin Electric, Inc | DH1300 | Construction | Phase 3 | IGMP | Scott Masterson | Construction |
| QTS-3081 |  | Gallery 1302 / Lineup E1300 // Install Raceways from LV POD to COD | 7d | 2026-03-16 | 2026-03-23 | QTS-2261, QTS-3071 | 24d | 0d | QTS-PHX3 DC1 - 6 day w/ Holidays | Rosendin Electric, Inc | DH1300 | Construction | Phase 3 | IGMP | Scott Masterson | Construction |
| QTS-4311 |  | Gallery 1302 / Lineup E1300 // OFCI - L2 SET IN PLACE - Eq Type # - COD/ATS-210-A - Skid 1-3 | 2d | 2026-03-19 | 2026-03-20 | QTS-37531, QTS-46051 | 24d | 0d | QTS-PHX3 DC1 - 6 day w/ Holidays | Rosendin Electric, Inc | DH1300 | Construction | Phase 3 | IGMP | Scott Masterson | Construction |
| QTS-46061 |  | Gallery 1302 / Lineup E1300 // OFCI - L2 SET IN PLACE - Eq Type # - COD/ATS-210-A - Skid 4-6 | 2d | 2026-03-21 | 2026-03-23 | QTS-4311 | 24d | 0d | QTS-PHX3 DC1 - 6 day w/ Holidays | Rosendin Electric, Inc | DH1300 | Construction | Phase 3 | IGMP | Scott Masterson | Construction |
| QTS-5411 |  | Gallery 1302 / Lineup E1300 // Set Reserve Busway Segment | 2d | 2026-03-24 | 2026-03-25 | QTS-4311, QTS-3081, QTS-50061 | 24d | 0d | QTS-PHX3 DC1 - 6 day w/ Holidays | Rosendin Electric, Inc | DH1300 | Construction | Phase 3 | IGMP | Scott Masterson | Construction |
| QTS-6671 |  | Gallery 1302 / Lineup E1300 // Pull LV Cables from POD to ATS | 4d | 2026-03-24 | 2026-03-27 | QTS-4311, QTS-3081, QTS-13581, QTS-46061 FF+1d | 24d | 0d | QTS-PHX3 DC1 - 6 day w/ Holidays | Rosendin Electric, Inc | DH1300 | Construction | Phase 3 | IGMP | Scott Masterson | Construction |
| QTS-8491 |  | Gallery 1302 / Lineup E1300 // Pull LV Cables from Reserve Bus to ATS | 2d | 2026-03-26 | 2026-03-27 | QTS-3081, QTS-5411, QTS-4311 | 24d | 0d | QTS-PHX3 DC1 - 6 day w/ Holidays | Rosendin Electric, Inc | DH1300 | Construction | Phase 3 | IGMP | Scott Masterson | Construction |
| QTS-9641 |  | Gallery 1302 / Lineup E1300 // Terminate & Torque ATS | 7d | 2026-03-28 | 2026-04-04 | QTS-8491, QTS-6671 | 24d | 0d | QTS-PHX3 DC1 - 6 day w/ Holidays | Rosendin Electric, Inc | DH1300 | Construction | Phase 3 | IGMP | Scott Masterson | Construction |
| QTS-9651 |  | Gallery 1302 / Lineup E1300 // Terminate & Torque COD | 7d | 2026-04-06 | 2026-04-13 | QTS-6671, QTS-9641 | 24d | 0d | QTS-PHX3 DC1 - 6 day w/ Holidays | Rosendin Electric, Inc | DH1300 | Construction | Phase 3 | IGMP | Scott Masterson | Construction |
|  | 6 | **F1300 Lineup** |  | 2026-03-07 | 2026-04-13 |  |  |  |  |  |  |  |  |  |  |  |
| QTS-2271 |  | Gallery 1302 / Lineup F1300 // Install Hangers & Supports | 3d | 2026-03-07 | 2026-03-10 | QTS-2261 | 30d | 4d | QTS-PHX3 DC1 - 6 day w/ Holidays | Rosendin Electric, Inc | DH1300 | Construction | Phase 3 | IGMP | Scott Masterson | Construction |
| QTS-3091 |  | Gallery 1302 / Lineup F1300 // Install Raceways from LV POD to COD | 7d | 2026-03-16 | 2026-03-23 | QTS-2271, QTS-3081 SS | 26d | 2d | QTS-PHX3 DC1 - 6 day w/ Holidays | Rosendin Electric, Inc | DH1300 | Construction | Phase 3 | IGMP | Scott Masterson | Construction |
| QTS-4321 |  | Gallery 1302 / Lineup F1300 // OFCI - L2 SET IN PLACE - Eq Type # - COD/ATS-210-A - Skid 1-3 | 2d | 2026-03-24 | 2026-03-25 | QTS-37541, QTS-46061 | 24d | 0d | QTS-PHX3 DC1 - 6 day w/ Holidays | Rosendin Electric, Inc | DH1300 | Construction | Phase 3 | IGMP | Scott Masterson | Construction |
| QTS-46071 |  | Gallery 1302 / Lineup F1300 // OFCI - L2 SET IN PLACE - Eq Type # - COD/ATS-210-A - Skid 4-6 | 2d | 2026-03-26 | 2026-03-27 | QTS-4321 | 25d | 1d | QTS-PHX3 DC1 - 6 day w/ Holidays | Rosendin Electric, Inc | DH1300 | Construction | Phase 3 | IGMP | Scott Masterson | Construction |
| QTS-5431 |  | Gallery 1302 / Lineup F1300 // Set Reserve Busway Segment | 2d | 2026-03-26 | 2026-03-27 | QTS-4321, QTS-3091, QTS-50061 | 24d | 0d | QTS-PHX3 DC1 - 6 day w/ Holidays | Rosendin Electric, Inc | DH1300 | Construction | Phase 3 | IGMP | Scott Masterson | Construction |
| QTS-6681 |  | Gallery 1302 / Lineup F1300 // Pull LV Cables from POD to ATS | 4d | 2026-03-26 | 2026-03-30 | QTS-4321, QTS-3091, QTS-13581, QTS-46071 FF+1d | 24d | 0d | QTS-PHX3 DC1 - 6 day w/ Holidays | Rosendin Electric, Inc | DH1300 | Construction | Phase 3 | IGMP | Scott Masterson | Construction |
| QTS-8511 |  | Gallery 1302 / Lineup F1300 // Pull LV Cables from Reserve Bus to ATS | 2d | 2026-03-28 | 2026-03-30 | QTS-3091, QTS-5431, QTS-4321 | 24d | 0d | QTS-PHX3 DC1 - 6 day w/ Holidays | Rosendin Electric, Inc | DH1300 | Construction | Phase 3 | IGMP | Scott Masterson | Construction |
| QTS-9671 |  | Gallery 1302 / Lineup F1300 // Terminate & Torque ATS | 6d | 2026-03-31 | 2026-04-06 | QTS-8511, QTS-6681 | 24d | 0d | QTS-PHX3 DC1 - 6 day w/ Holidays | Rosendin Electric, Inc | DH1300 | Construction | Phase 3 | IGMP | Scott Masterson | Construction |
| QTS-9681 |  | Gallery 1302 / Lineup F1300 // Terminate & Torque COD | 6d | 2026-04-07 | 2026-04-13 | QTS-6681, QTS-9671 | 24d | 0d | QTS-PHX3 DC1 - 6 day w/ Holidays | Rosendin Electric, Inc | DH1300 | Construction | Phase 3 | IGMP | Scott Masterson | Construction |
|  | 9 | **R1300 Lineup** |  | 2026-02-18 | 2026-03-18 |  |  |  |  |  |  |  |  |  |  |  |
| QTS-2221 |  | Gallery 1302 / Lineup R1300 // Install Hangers & Supports | 3d | 2026-02-18 | 2026-02-20 | QTS-13091, QTS-13461 SS+1d | 24d | 0d | QTS-PHX3 DC1 - 6 day w/ Holidays | Rosendin Electric, Inc | DH1300 | Construction | Phase 3 | IGMP | Scott Masterson | Construction |
| QTS-3041 |  | Gallery 1302 / Lineup R1300 // Install Raceways from LV POD to Reserve Busway | 5d | 2026-02-21 | 2026-02-26 | QTS-2221 | 24d | 0d | QTS-PHX3 DC1 - 6 day w/ Holidays | Rosendin Electric, Inc | DH1300 | Construction | Phase 3 | IGMP | Scott Masterson | Construction |
| QTS-4261 |  | Gallery 1302 / Lineup R1300 // OFCI - L2 SET IN PLACE - Eq Type # - TIE SWD - 1 unit | 1d | 2026-02-27 | 2026-02-27 | QTS-3041 | 39d | 3d | QTS-PHX3 DC1 - 6 day w/ Holidays | Rosendin Electric, Inc | DH1300 | Construction | Phase 3 | IGMP | Scott Masterson | Construction |
| QTS-4271 |  | Gallery 1302 / Lineup R1300 // Set Reserve Busway Segment | 4d | 2026-02-27 | 2026-03-03 | QTS-3041, QTS-50061 | 36d | 0d | QTS-PHX3 DC1 - 6 day w/ Holidays | Rosendin Electric, Inc | DH1300 | Construction | Phase 3 | IGMP | Scott Masterson | Construction |
| QTS-5641 |  | Gallery 1302 / Lineup R1300 // Pull LV Cables from TIE SWD to Reserve Busway | 2d | 2026-03-04 | 2026-03-05 | QTS-3041, QTS-4261, QTS-4271 | 36d | 0d | QTS-PHX3 DC1 - 6 day w/ Holidays | Rosendin Electric, Inc | DH1300 | Construction | Phase 3 | IGMP | Scott Masterson | Construction |
| QTS-6231 |  | Gallery 1302 / Lineup R1300 // Pull LV Cables from POD to Reserve Busway | 4d | 2026-03-06 | 2026-03-10 | QTS-3041, QTS-5641, QTS-4271, QTS-13581 | 36d | 0d | QTS-PHX3 DC1 - 6 day w/ Holidays | Rosendin Electric, Inc | DH1300 | Construction | Phase 3 | IGMP | Scott Masterson | Construction |
| QTS-7271 |  | Gallery 1302 / Lineup R1300 // Pull LV Cables from TIE SWD to TIE SWD adjacent # | 5d | 2026-03-11 | 2026-03-16 | QTS-3041, QTS-6231 | 36d | 0d | QTS-PHX3 DC1 - 6 day w/ Holidays | Rosendin Electric, Inc | DH1300 | Construction | Phase 3 | IGMP | Scott Masterson | Construction |
| QTS-7281 |  | Gallery 1302 / Lineup R1300 // Terminate Reserve Busway | 2d | 2026-03-11 | 2026-03-12 | QTS-6231, QTS-5641 | 41d | 0d | QTS-PHX3 DC1 - 6 day w/ Holidays | Rosendin Electric, Inc | DH1300 | Construction | Phase 3 | IGMP | Scott Masterson | Construction |
| QTS-9531 |  | Gallery 1302 / Lineup R1300 // Terminate TIE SWD | 2d | 2026-03-17 | 2026-03-18 | QTS-5641, QTS-7271 | 36d | 0d | QTS-PHX3 DC1 - 6 day w/ Holidays | Rosendin Electric, Inc | DH1300 | Construction | Phase 3 | IGMP | Scott Masterson | Construction |

| ID | WBS | Activity | Duration | Start | Finish | Predecessors | Complete | Planned start | Planned finish | Total float | Free float | Constraint | Calendar | Subcontractor | Location | Project Section-1 | Phase-1-1 | Baseline | Layton Responsible Party | Project Section | Level | Phase-1 | Allucent CSI Group |
| --- | --- | --- | --- | --- | --- | --- | --- | --- | --- | --- | --- | --- | --- | --- | --- | --- | --- | --- | --- | --- | --- | --- | --- |
|  | 4 | **DH 1300 / Rooftop Mechanical** |  | 2025-09-08 | 2026-04-14 |  |  |  |  |  |  |  |  |  |  |  |  |  |  |  |  |  |  |
| QTS-2151 |  | DH 1300 / Rooftop Mechanical // OFCI - L2 SET IN PLACE - Eq Type # - Chiller #1RT40 - 7 units | 5d | 2025-09-08 A | 2025-09-10 A | QTS-37961 FF, QTS-37971 FF, QTS-37981 FF, QTS-37991 FF, QTS-38001 FF, QTS-38011 FF, QTS-38021 FF, QTS-2021 | 100% | 2025-09-08 | 2025-09-12 |  |  |  |  | Bel-Aire Mechanical, LLC | DH1300 | Construction | Phase 3 | IGMP | Dave Wiltberger | Construction |  |  |  |
| QTS-2181 |  | DH 1300 / Rooftop Mechanical // Set Doghouse Curbs | 8d | 2025-09-17 A | 2025-09-23 A | QTS-2051 SS | 100% | 2025-09-17 | 2025-09-26 |  |  |  |  | Rosendin Electric, Inc | DH1300 | Construction | Phase 3 | IGMP | Scott Masterson | Construction |  |  |  |
| QTS-2161 |  | DH 1300 / Rooftop Mechanical // Set Doghouses | 5d | 2025-09-24 A | 2025-09-30 A | QTS-2181, QTS-19911 | 100% |  |  |  |  |  |  | Rosendin Electric, Inc | DH1300 | Construction | Phase 3 | IGMP | Scott Masterson | Construction |  |  |  |
| QTS-101120 |  | DH 1300 / Rooftop Mechanical // Install Roof Protection | 2d | 2025-11-10 A | 2025-11-11 A | QTS-42671 | 100% |  |  |  |  |  |  | Bel-Aire Mechanical, LLC | DH2100 |  |  | IGMP | Dave Wiltberger | Construction | Level 2 | Phase 1 | 01ADMIN |
| QTS-2201 |  | DH 1300 / Rooftop Mechanical // OFCI - L2 SET IN PLACE - Eq Type # - DOAS-RT1300 - 2 units | 2d | 2026-01-12 A | 2026-01-13 A | QTS-23911, QTS-38101, QTS-38111, QTS-24581, QTS-101120 | 100% |  |  |  |  | start on or after 2026-01-12 | QTS-PHX3 DC1 - 6 day w/ Holidays | Bel-Aire Mechanical, LLC | DH1300 | Construction | Phase 3 | IGMP | Dave Wiltberger | Construction |  |  | 01ADMIN |
| QTS-3451 |  | DH 1300 / Rooftop Mechanical // Set Vertical Inline Centrifugal Pumps | 5d | 2026-01-14 | 2026-01-20 | QTS-2151, QTS-3441 |  |  |  | 68d | 38d |  | QTS-PHX3 DC1 - 6 day w/ Holidays | Bel-Aire Mechanical, LLC | DH1300 | Construction | Phase 3 | IGMP | Dave Wiltberger | Construction |  |  |  |
| QTS-50291 |  | DH 1300 / Rooftop Mechanical // Rough In Plumbing from to DOAS | 1d | 2026-01-14 | 2026-01-14 | QTS-2201 |  |  |  | 120d | 0d |  | QTS-PHX3 DC1 - 6 day w/ Holidays | Bel-Aire Mechanical, LLC | FOH | Construction | Phase 1 | DC | Dave Wiltberger | Construction | Roof |  | 01ADMIN |
| QTS-101170 |  | DH 1300 / Rooftop Mechanical // Rough In Condensate Drain from DOAS | 2d | 2026-01-15 | 2026-01-16 | QTS-50291 |  |  |  | 121d | 1d |  | QTS-PHX3 DC1 - 6 day w/ Holidays | Bel-Aire Mechanical, LLC | DH2100 |  |  | IGMP | Dave Wiltberger | Construction | Level 2 | Phase 1 | 01ADMIN |
| QTS-50301 |  | DH 1300 / Rooftop Mechanical // Rough In Power from to DOAS | 3d | 2026-01-15 | 2026-01-17 | QTS-50291 |  |  |  | 120d | 0d |  | QTS-PHX3 DC1 - 6 day w/ Holidays | Bel-Aire Mechanical, LLC | FOH | Construction | Phase 1 | DC | Dave Wiltberger | Construction | Roof |  |  |
| QTS-50311 |  | DH 1300 / Rooftop Mechanical // Rough In Controls from to DOAS | 1d | 2026-01-17 | 2026-01-17 | QTS-50301 FF |  |  |  | 120d | 0d |  | QTS-PHX3 DC1 - 6 day w/ Holidays | Bel-Aire Mechanical, LLC | FOH | Construction | Phase 1 | DC | Dave Wiltberger | Construction | Roof |  |  |
| QTS-50321 |  | DH 1300 / Rooftop Mechanical // Pre Energization Inspection DOAS | 1d | 2026-01-20 | 2026-01-20 | QTS-50311, QTS-101170 |  |  |  | 120d | 67d |  | QTS-PHX3 DC1 - 6 day w/ Holidays | Bel-Aire Mechanical, LLC | FOH | Construction | Phase 1 | DC | Dave Wiltberger | Construction | Roof |  |  |
| QTS-101160 |  | DH 1300 / Rooftop Mechanical // Install Grating, Toe Kicks, Hand Rails for TES Tanks | 5d | 2026-01-29 | 2026-02-03 | QTS-101120, QTS-100350, QTS-100920 |  |  |  | 49d | 20d |  | QTS-PHX3 DC1 - 6 day w/ Holidays | Bel-Aire Mechanical, LLC | DH2100 |  |  | IGMP | Dave Wiltberger | Construction | Level 2 | Phase 1 | 01ADMIN |
| QTS-101180 |  | DH 1300 / Rooftop Mechanical // OFCI - ROOF SET IN PLACE - Eq Type # - TES Tanks - 7 units | 1d | 2026-02-27 | 2026-02-27 | QTS-101160, QTS-101420 |  |  |  | 29d | 0d |  | QTS-PHX3 DC1 - 6 day w/ Holidays | Bel-Aire Mechanical, LLC | DH2100 |  |  | IGMP | Dave Wiltberger | Construction | Level 2 | Phase 1 | 01ADMIN |
| QTS-101130 |  | DH 1300 / Rooftop Mechanical // Install 12" CHWS/R Run-Outs to RPH Vaults | 13d | 2026-02-28 | 2026-03-14 | QTS-101120, QTS-101180 |  |  |  | 29d | 0d |  | QTS-PHX3 DC1 - 6 day w/ Holidays | Bel-Aire Mechanical, LLC | DH2100 |  |  | IGMP | Dave Wiltberger | Construction | Level 2 | Phase 1 | 01ADMIN |
| QTS-101140 |  | DH 1300 / Rooftop Mechanical // Assemble & Install CHWS/R Piping from Mainline Piping to ACC Deck | 23d | 2026-02-28 | 2026-03-26 | QTS-101130 SS |  |  |  | 29d | 0d |  | QTS-PHX3 DC1 - 6 day w/ Holidays | Bel-Aire Mechanical, LLC | DH2100 |  |  | IGMP | Dave Wiltberger | Construction | Level 2 | Phase 1 | 01ADMIN |
| QTS-101150 |  | DH 1300 / Rooftop Mechanical // Assemble & Install CHW Pump Assemblies at ACC Deck to Chillers | 28d | 2026-02-28 | 2026-04-01 | QTS-101140 SS |  |  |  | 29d | 0d |  | QTS-PHX3 DC1 - 6 day w/ Holidays | Bel-Aire Mechanical, LLC | DH2100 |  |  | IGMP | Dave Wiltberger | Construction | Level 2 | Phase 1 | 01ADMIN |
| QTS-101190 |  | DH 1300 / Rooftop Mechanical // Finalize Detailing for TES Tank CHW Piping/ Fabrication | 7d | 2026-02-28 | 2026-03-07 | QTS-101180 |  |  |  | 46d | 0d |  | QTS-PHX3 DC1 - 6 day w/ Holidays | Bel-Aire Mechanical, LLC | DH2100 |  |  | IGMP | Dave Wiltberger | Construction | Level 2 | Phase 1 | 01ADMIN |
| QTS-101210 |  | DH 1300 / Rooftop Mechanical // Install TES Tank CHW Piping - 7 Units | 10d | 2026-03-09 | 2026-03-19 | QTS-101190 |  |  |  | 46d | 0d |  | QTS-PHX3 DC1 - 6 day w/ Holidays | Bel-Aire Mechanical, LLC | DH2100 |  |  | IGMP | Dave Wiltberger | Construction | Level 2 | Phase 1 | 01ADMIN |
| QTS-101200 |  | DH 1300 / Rooftop Mechanical // Install Mainline Piping from RPH Vaults to Galleries (Risers) L2 / L1 | 10d | 2026-03-10 | 2026-03-20 | QTS-101150 SS+8d |  |  |  | 29d | 0d |  | QTS-PHX3 DC1 - 6 day w/ Holidays | Bel-Aire Mechanical, LLC | DH2100 |  |  | IGMP | Dave Wiltberger | Construction | Level 2 | Phase 1 | 01ADMIN |
| QTS-101220 |  | DH 1300 / Rooftop Mechanical // Set RPH Vault Housings | 5d | 2026-03-18 | 2026-03-23 | QTS-101200 FF+2d |  |  |  | 29d | 0d |  | QTS-PHX3 DC1 - 6 day w/ Holidays | Bel-Aire Mechanical, LLC | DH2100 |  |  | IGMP | Dave Wiltberger | Construction | Level 2 | Phase 1 | 01ADMIN |
| QTS-101270 |  | DH 1300 / Rooftop Mechanical // Pressure Test (Air) Industrial Loop (TES Tank) | 1d | 2026-03-20 | 2026-03-20 | QTS-101210 |  |  |  | 46d | 0d |  | QTS-PHX3 DC1 - 6 day w/ Holidays | Bel-Aire Mechanical, LLC | DH2100 |  |  | IGMP | Dave Wiltberger | Construction | Level 2 | Phase 1 | 01ADMIN |
| QTS-101280 |  | DH 1300 / Rooftop Mechanical // Hydro-Test (Water) Industrial Loop (TES Tank) | 1d | 2026-03-21 | 2026-03-21 | QTS-101270 |  |  |  | 46d | 0d |  | QTS-PHX3 DC1 - 6 day w/ Holidays | Bel-Aire Mechanical, LLC | DH2100 |  |  | IGMP | Dave Wiltberger | Construction | Level 2 | Phase 1 | 01ADMIN |
| QTS-101290 |  | DH 1300 / Rooftop Mechanical // Fill and Flush Industrial Loop (TES Tank) | 7d | 2026-03-22 | 2026-03-28 | QTS-101280 |  |  |  | 54d | 53d |  | QTS-PHX3 DC1 - 7 day No Holidays | Bel-Aire Mechanical, LLC | DH2100 |  |  | IGMP | Dave Wiltberger | Construction | Level 2 | Phase 1 | 01ADMIN |
| QTS-101230 |  | DH 1300 / Rooftop Mechanical // Pressure Test (Air) Industrial Loop (L1) | 1d | 2026-03-24 | 2026-03-24 | QTS-101200, QTS-101220 |  |  |  | 29d | 0d |  | QTS-PHX3 DC1 - 6 day w/ Holidays | Bel-Aire Mechanical, LLC | DH2100 |  |  | IGMP | Dave Wiltberger | Construction | Level 2 | Phase 1 | 01ADMIN |
| QTS-101240 |  | DH 1300 / Rooftop Mechanical // Pressure Test (Air) Industrial Loop (L2) | 1d | 2026-03-25 | 2026-03-25 | QTS-101230 |  |  |  | 29d | 0d |  | QTS-PHX3 DC1 - 6 day w/ Holidays | Bel-Aire Mechanical, LLC | DH2100 |  |  | IGMP | Dave Wiltberger | Construction | Level 2 | Phase 1 | 01ADMIN |
| QTS-101250 |  | DH 1300 / Rooftop Mechanical // Pressure Test (Air) Industrial Loop (Roof) | 1d | 2026-03-26 | 2026-03-26 | QTS-101240 |  |  |  | 29d | 0d |  | QTS-PHX3 DC1 - 6 day w/ Holidays | Bel-Aire Mechanical, LLC | DH2100 |  |  | IGMP | Dave Wiltberger | Construction | Level 2 | Phase 1 | 01ADMIN |
| QTS-101260 |  | DH 1300 / Rooftop Mechanical // Install Temp Flush Pump, Power Source for Pump & Other Associated Components | 5d | 2026-03-27 | 2026-04-01 | QTS-101250 |  |  |  | 29d | 0d |  | QTS-PHX3 DC1 - 6 day w/ Holidays | Bel-Aire Mechanical, LLC | DH2100 |  |  | IGMP | Dave Wiltberger | Construction | Level 2 | Phase 1 | 01ADMIN |
| QTS-101300 |  | DH 1300 / Rooftop Mechanical // Hydro-Test (Water) Industrial Loop (L1) | 1d | 2026-04-02 | 2026-04-02 | QTS-101260 |  |  |  | 29d | 0d |  | QTS-PHX3 DC1 - 6 day w/ Holidays | Bel-Aire Mechanical, LLC | DH2100 |  |  | IGMP | Dave Wiltberger | Construction | Level 2 | Phase 1 | 01ADMIN |
| QTS-101310 |  | DH 1300 / Rooftop Mechanical // Hydro-Test (Water) Industrial Loop (L2) | 1d | 2026-04-03 | 2026-04-03 | QTS-101300 |  |  |  | 29d | 0d |  | QTS-PHX3 DC1 - 6 day w/ Holidays | Bel-Aire Mechanical, LLC | DH2100 |  |  | IGMP | Dave Wiltberger | Construction | Level 2 | Phase 1 | 01ADMIN |
| QTS-101320 |  | DH 1300 / Rooftop Mechanical // Hydro-Test (Water) Industrial Loop (Roof) | 1d | 2026-04-04 | 2026-04-04 | QTS-101310 |  |  |  | 29d | 0d |  | QTS-PHX3 DC1 - 6 day w/ Holidays | Bel-Aire Mechanical, LLC | DH2100 |  |  | IGMP | Dave Wiltberger | Construction | Level 2 | Phase 1 | 01ADMIN |
| QTS-101330 |  | DH 1300 / Rooftop Mechanical // Fill and Flush Industrial Loop (Zone 3 - All Levels) | 10d | 2026-04-05 | 2026-04-14 | QTS-101320 |  |  |  | 34d | 26d |  | QTS-PHX3 DC1 - 7 day No Holidays | Bel-Aire Mechanical, LLC | DH2100 |  |  | IGMP | Dave Wiltberger | Construction | Level 2 | Phase 1 | 01ADMIN |

Notes:
- QTS-101120: allucent_notes: David Wiltberger on 2025-08-19 09:08: changed pick order / allucent_notes_20251014_152335: David Wiltberger on 2025-08-19 09:08: changed pick order / David Wiltberger on 2025-09-02 10:09: Moving to accommodate roofing in Zone 1 / David Wiltberger on 2025-09-24 04:09: BAM not completed Potential Delay / David Wiltberger on 2025-09-30 12:09: BAM did not complete / David Wiltberger on 2025-10-14 10:10: set on recovery schedule / allucent_notes: 2025-08-19 09:08 - User: David Wiltberger - Date Added: 2025-08-19 09:08 - Note: changed pick order / 2025-09-02 10:09 - User: David Wiltberger - Date Added: 2025-09-02 10:09 - Note: Moving to accommodate roofing in Zone 1 / 2025-09-24 04:09 - User: Dav
- QTS-101170: allucent_notes: David Wiltberger on 2025-08-19 09:08: changed pick order / allucent_notes_20251014_152335: David Wiltberger on 2025-08-19 09:08: changed pick order / David Wiltberger on 2025-09-02 10:09: Moving to accommodate roofing in Zone 1 / David Wiltberger on 2025-09-24 04:09: BAM not completed Potential Delay / David Wiltberger on 2025-09-30 12:09: BAM did not complete / David Wiltberger on 2025-10-14 10:10: set on recovery schedule / allucent_notes: 2025-08-19 09:08 - User: David Wiltberger - Date Added: 2025-08-19 09:08 - Note: changed pick order / 2025-09-02 10:09 - User: David Wiltberger - Date Added: 2025-09-02 10:09 - Note: Moving to accommodate roofing in Zone 1 / 2025-09-24 04:09 - User: Dav
- QTS-101160: allucent_notes_20251230_164549: David Wiltberger on 2025-12-01 09:51: No TES tanks installed yet / allucent_notes: David Wiltberger on 2025-08-19 09:08: changed pick order / allucent_notes_20251014_152335: David Wiltberger on 2025-08-19 09:08: changed pick order / David Wiltberger on 2025-09-02 10:09: Moving to accommodate roofing in Zone 1 / David Wiltberger on 2025-09-24 04:09: BAM not completed Potential Delay / David Wiltberger on 2025-09-30 12:09: BAM did not complete / David Wiltberger on 2025-10-14 10:10: set on recovery schedule / allucent_notes_20251202_153722: David Wiltberger on 2025-12-01 09:51: No TES tanks installed yet / allucent_notes_20251216_165335: David Wiltberger on 2025-12-01 09:51: No TES tanks installed yet / allucent_notes: 2025-12-01 09:51 - User: David Wiltberger - Date Added: 2025-12-01 09:51 - Note: No TES tanks installed yet
- QTS-101180: allucent_notes: David Wiltberger on 2025-08-19 09:08: changed pick order / allucent_notes_20251014_152335: David Wiltberger on 2025-08-19 09:08: changed pick order / David Wiltberger on 2025-09-02 10:09: Moving to accommodate roofing in Zone 1 / David Wiltberger on 2025-09-24 04:09: BAM not completed Potential Delay / David Wiltberger on 2025-09-30 12:09: BAM did not complete / David Wiltberger on 2025-10-14 10:10: set on recovery schedule / allucent_notes: 2025-08-19 09:08 - User: David Wiltberger - Date Added: 2025-08-19 09:08 - Note: changed pick order / 2025-09-02 10:09 - User: David Wiltberger - Date Added: 2025-09-02 10:09 - Note: Moving to accommodate roofing in Zone 1 / 2025-09-24 04:09 - User: Dav
- QTS-101130: allucent_notes: David Wiltberger on 2025-08-19 09:08: changed pick order / allucent_notes_20251014_152335: David Wiltberger on 2025-08-19 09:08: changed pick order / David Wiltberger on 2025-09-02 10:09: Moving to accommodate roofing in Zone 1 / David Wiltberger on 2025-09-24 04:09: BAM not completed Potential Delay / David Wiltberger on 2025-09-30 12:09: BAM did not complete / David Wiltberger on 2025-10-14 10:10: set on recovery schedule / allucent_notes_20251118_192630: David Wiltberger on 2025-11-17 16:11: out of sequence / allucent_notes_20251202_153722: David Wiltberger on 2025-11-17 16:11: out of sequence / allucent_notes: 2025-11-17 16:11 - User: David Wiltberger - Date Added: 2025-11-17 16:11 - Note: out of sequence
- QTS-101140: allucent_notes: David Wiltberger on 2025-08-19 09:08: changed pick order / allucent_notes_20251014_152335: David Wiltberger on 2025-08-19 09:08: changed pick order / David Wiltberger on 2025-09-02 10:09: Moving to accommodate roofing in Zone 1 / David Wiltberger on 2025-09-24 04:09: BAM not completed Potential Delay / David Wiltberger on 2025-09-30 12:09: BAM did not complete / David Wiltberger on 2025-10-14 10:10: set on recovery schedule / allucent_notes: 2025-08-19 09:08 - User: David Wiltberger - Date Added: 2025-08-19 09:08 - Note: changed pick order / 2025-09-02 10:09 - User: David Wiltberger - Date Added: 2025-09-02 10:09 - Note: Moving to accommodate roofing in Zone 1 / 2025-09-24 04:09 - User: Dav
- QTS-101150: allucent_notes: David Wiltberger on 2025-08-19 09:08: changed pick order / allucent_notes_20251014_152335: David Wiltberger on 2025-08-19 09:08: changed pick order / David Wiltberger on 2025-09-02 10:09: Moving to accommodate roofing in Zone 1 / David Wiltberger on 2025-09-24 04:09: BAM not completed Potential Delay / David Wiltberger on 2025-09-30 12:09: BAM did not complete / David Wiltberger on 2025-10-14 10:10: set on recovery schedule / allucent_notes: 2025-08-19 09:08 - User: David Wiltberger - Date Added: 2025-08-19 09:08 - Note: changed pick order / 2025-09-02 10:09 - User: David Wiltberger - Date Added: 2025-09-02 10:09 - Note: Moving to accommodate roofing in Zone 1 / 2025-09-24 04:09 - User: Dav
- QTS-101190: allucent_notes: David Wiltberger on 2025-08-19 09:08: changed pick order / allucent_notes_20251014_152335: David Wiltberger on 2025-08-19 09:08: changed pick order / David Wiltberger on 2025-09-02 10:09: Moving to accommodate roofing in Zone 1 / David Wiltberger on 2025-09-24 04:09: BAM not completed Potential Delay / David Wiltberger on 2025-09-30 12:09: BAM did not complete / David Wiltberger on 2025-10-14 10:10: set on recovery schedule / allucent_notes: 2025-08-19 09:08 - User: David Wiltberger - Date Added: 2025-08-19 09:08 - Note: changed pick order / 2025-09-02 10:09 - User: David Wiltberger - Date Added: 2025-09-02 10:09 - Note: Moving to accommodate roofing in Zone 1 / 2025-09-24 04:09 - User: Dav
- QTS-101210: allucent_notes: David Wiltberger on 2025-08-19 09:08: changed pick order / allucent_notes_20251014_152335: David Wiltberger on 2025-08-19 09:08: changed pick order / David Wiltberger on 2025-09-02 10:09: Moving to accommodate roofing in Zone 1 / David Wiltberger on 2025-09-24 04:09: BAM not completed Potential Delay / David Wiltberger on 2025-09-30 12:09: BAM did not complete / David Wiltberger on 2025-10-14 10:10: set on recovery schedule / allucent_notes: 2025-08-19 09:08 - User: David Wiltberger - Date Added: 2025-08-19 09:08 - Note: changed pick order / 2025-09-02 10:09 - User: David Wiltberger - Date Added: 2025-09-02 10:09 - Note: Moving to accommodate roofing in Zone 1 / 2025-09-24 04:09 - User: Dav
- QTS-101200: allucent_notes: David Wiltberger on 2025-08-19 09:08: changed pick order / allucent_notes_20251014_152335: David Wiltberger on 2025-08-19 09:08: changed pick order / David Wiltberger on 2025-09-02 10:09: Moving to accommodate roofing in Zone 1 / David Wiltberger on 2025-09-24 04:09: BAM not completed Potential Delay / David Wiltberger on 2025-09-30 12:09: BAM did not complete / David Wiltberger on 2025-10-14 10:10: set on recovery schedule / allucent_notes: 2025-08-19 09:08 - User: David Wiltberger - Date Added: 2025-08-19 09:08 - Note: changed pick order / 2025-09-02 10:09 - User: David Wiltberger - Date Added: 2025-09-02 10:09 - Note: Moving to accommodate roofing in Zone 1 / 2025-09-24 04:09 - User: Dav
- QTS-101220: allucent_notes: David Wiltberger on 2025-08-19 09:08: changed pick order / allucent_notes_20251014_152335: David Wiltberger on 2025-08-19 09:08: changed pick order / David Wiltberger on 2025-09-02 10:09: Moving to accommodate roofing in Zone 1 / David Wiltberger on 2025-09-24 04:09: BAM not completed Potential Delay / David Wiltberger on 2025-09-30 12:09: BAM did not complete / David Wiltberger on 2025-10-14 10:10: set on recovery schedule / allucent_notes: 2025-08-19 09:08 - User: David Wiltberger - Date Added: 2025-08-19 09:08 - Note: changed pick order / 2025-09-02 10:09 - User: David Wiltberger - Date Added: 2025-09-02 10:09 - Note: Moving to accommodate roofing in Zone 1 / 2025-09-24 04:09 - User: Dav
- QTS-101270: allucent_notes: David Wiltberger on 2025-08-19 09:08: changed pick order / allucent_notes_20251014_152335: David Wiltberger on 2025-08-19 09:08: changed pick order / David Wiltberger on 2025-09-02 10:09: Moving to accommodate roofing in Zone 1 / David Wiltberger on 2025-09-24 04:09: BAM not completed Potential Delay / David Wiltberger on 2025-09-30 12:09: BAM did not complete / David Wiltberger on 2025-10-14 10:10: set on recovery schedule / allucent_notes: 2025-08-19 09:08 - User: David Wiltberger - Date Added: 2025-08-19 09:08 - Note: changed pick order / 2025-09-02 10:09 - User: David Wiltberger - Date Added: 2025-09-02 10:09 - Note: Moving to accommodate roofing in Zone 1 / 2025-09-24 04:09 - User: Dav
- QTS-101280: allucent_notes: David Wiltberger on 2025-08-19 09:08: changed pick order / allucent_notes_20251014_152335: David Wiltberger on 2025-08-19 09:08: changed pick order / David Wiltberger on 2025-09-02 10:09: Moving to accommodate roofing in Zone 1 / David Wiltberger on 2025-09-24 04:09: BAM not completed Potential Delay / David Wiltberger on 2025-09-30 12:09: BAM did not complete / David Wiltberger on 2025-10-14 10:10: set on recovery schedule / allucent_notes: 2025-08-19 09:08 - User: David Wiltberger - Date Added: 2025-08-19 09:08 - Note: changed pick order / 2025-09-02 10:09 - User: David Wiltberger - Date Added: 2025-09-02 10:09 - Note: Moving to accommodate roofing in Zone 1 / 2025-09-24 04:09 - User: Dav
- QTS-101290: allucent_notes: David Wiltberger on 2025-08-19 09:08: changed pick order / allucent_notes_20251014_152335: David Wiltberger on 2025-08-19 09:08: changed pick order / David Wiltberger on 2025-09-02 10:09: Moving to accommodate roofing in Zone 1 / David Wiltberger on 2025-09-24 04:09: BAM not completed Potential Delay / David Wiltberger on 2025-09-30 12:09: BAM did not complete / David Wiltberger on 2025-10-14 10:10: set on recovery schedule / allucent_notes: 2025-08-19 09:08 - User: David Wiltberger - Date Added: 2025-08-19 09:08 - Note: changed pick order / 2025-09-02 10:09 - User: David Wiltberger - Date Added: 2025-09-02 10:09 - Note: Moving to accommodate roofing in Zone 1 / 2025-09-24 04:09 - User: Dav
- QTS-101230: allucent_notes: David Wiltberger on 2025-08-19 09:08: changed pick order / allucent_notes_20251014_152335: David Wiltberger on 2025-08-19 09:08: changed pick order / David Wiltberger on 2025-09-02 10:09: Moving to accommodate roofing in Zone 1 / David Wiltberger on 2025-09-24 04:09: BAM not completed Potential Delay / David Wiltberger on 2025-09-30 12:09: BAM did not complete / David Wiltberger on 2025-10-14 10:10: set on recovery schedule / allucent_notes: 2025-08-19 09:08 - User: David Wiltberger - Date Added: 2025-08-19 09:08 - Note: changed pick order / 2025-09-02 10:09 - User: David Wiltberger - Date Added: 2025-09-02 10:09 - Note: Moving to accommodate roofing in Zone 1 / 2025-09-24 04:09 - User: Dav
- QTS-101240: allucent_notes: David Wiltberger on 2025-08-19 09:08: changed pick order / allucent_notes_20251014_152335: David Wiltberger on 2025-08-19 09:08: changed pick order / David Wiltberger on 2025-09-02 10:09: Moving to accommodate roofing in Zone 1 / David Wiltberger on 2025-09-24 04:09: BAM not completed Potential Delay / David Wiltberger on 2025-09-30 12:09: BAM did not complete / David Wiltberger on 2025-10-14 10:10: set on recovery schedule / allucent_notes: 2025-08-19 09:08 - User: David Wiltberger - Date Added: 2025-08-19 09:08 - Note: changed pick order / 2025-09-02 10:09 - User: David Wiltberger - Date Added: 2025-09-02 10:09 - Note: Moving to accommodate roofing in Zone 1 / 2025-09-24 04:09 - User: Dav
- QTS-101250: allucent_notes: David Wiltberger on 2025-08-19 09:08: changed pick order / allucent_notes_20251014_152335: David Wiltberger on 2025-08-19 09:08: changed pick order / David Wiltberger on 2025-09-02 10:09: Moving to accommodate roofing in Zone 1 / David Wiltberger on 2025-09-24 04:09: BAM not completed Potential Delay / David Wiltberger on 2025-09-30 12:09: BAM did not complete / David Wiltberger on 2025-10-14 10:10: set on recovery schedule / allucent_notes: 2025-08-19 09:08 - User: David Wiltberger - Date Added: 2025-08-19 09:08 - Note: changed pick order / 2025-09-02 10:09 - User: David Wiltberger - Date Added: 2025-09-02 10:09 - Note: Moving to accommodate roofing in Zone 1 / 2025-09-24 04:09 - User: Dav
- QTS-101260: allucent_notes: David Wiltberger on 2025-08-19 09:08: changed pick order / allucent_notes_20251014_152335: David Wiltberger on 2025-08-19 09:08: changed pick order / David Wiltberger on 2025-09-02 10:09: Moving to accommodate roofing in Zone 1 / David Wiltberger on 2025-09-24 04:09: BAM not completed Potential Delay / David Wiltberger on 2025-09-30 12:09: BAM did not complete / David Wiltberger on 2025-10-14 10:10: set on recovery schedule / allucent_notes: 2025-08-19 09:08 - User: David Wiltberger - Date Added: 2025-08-19 09:08 - Note: changed pick order / 2025-09-02 10:09 - User: David Wiltberger - Date Added: 2025-09-02 10:09 - Note: Moving to accommodate roofing in Zone 1 / 2025-09-24 04:09 - User: Dav
- QTS-101300: allucent_notes: David Wiltberger on 2025-08-19 09:08: changed pick order / allucent_notes_20251014_152335: David Wiltberger on 2025-08-19 09:08: changed pick order / David Wiltberger on 2025-09-02 10:09: Moving to accommodate roofing in Zone 1 / David Wiltberger on 2025-09-24 04:09: BAM not completed Potential Delay / David Wiltberger on 2025-09-30 12:09: BAM did not complete / David Wiltberger on 2025-10-14 10:10: set on recovery schedule / allucent_notes: 2025-08-19 09:08 - User: David Wiltberger - Date Added: 2025-08-19 09:08 - Note: changed pick order / 2025-09-02 10:09 - User: David Wiltberger - Date Added: 2025-09-02 10:09 - Note: Moving to accommodate roofing in Zone 1 / 2025-09-24 04:09 - User: Dav
- QTS-101310: allucent_notes: David Wiltberger on 2025-08-19 09:08: changed pick order / allucent_notes_20251014_152335: David Wiltberger on 2025-08-19 09:08: changed pick order / David Wiltberger on 2025-09-02 10:09: Moving to accommodate roofing in Zone 1 / David Wiltberger on 2025-09-24 04:09: BAM not completed Potential Delay / David Wiltberger on 2025-09-30 12:09: BAM did not complete / David Wiltberger on 2025-10-14 10:10: set on recovery schedule / allucent_notes: 2025-08-19 09:08 - User: David Wiltberger - Date Added: 2025-08-19 09:08 - Note: changed pick order / 2025-09-02 10:09 - User: David Wiltberger - Date Added: 2025-09-02 10:09 - Note: Moving to accommodate roofing in Zone 1 / 2025-09-24 04:09 - User: Dav
- QTS-101320: allucent_notes: David Wiltberger on 2025-08-19 09:08: changed pick order / allucent_notes_20251014_152335: David Wiltberger on 2025-08-19 09:08: changed pick order / David Wiltberger on 2025-09-02 10:09: Moving to accommodate roofing in Zone 1 / David Wiltberger on 2025-09-24 04:09: BAM not completed Potential Delay / David Wiltberger on 2025-09-30 12:09: BAM did not complete / David Wiltberger on 2025-10-14 10:10: set on recovery schedule / allucent_notes: 2025-08-19 09:08 - User: David Wiltberger - Date Added: 2025-08-19 09:08 - Note: changed pick order / 2025-09-02 10:09 - User: David Wiltberger - Date Added: 2025-09-02 10:09 - Note: Moving to accommodate roofing in Zone 1 / 2025-09-24 04:09 - User: Dav
- QTS-101330: allucent_notes: David Wiltberger on 2025-08-19 09:08: changed pick order / allucent_notes_20251014_152335: David Wiltberger on 2025-08-19 09:08: changed pick order / David Wiltberger on 2025-09-02 10:09: Moving to accommodate roofing in Zone 1 / David Wiltberger on 2025-09-24 04:09: BAM not completed Potential Delay / David Wiltberger on 2025-09-30 12:09: BAM did not complete / David Wiltberger on 2025-10-14 10:10: set on recovery schedule / allucent_notes: 2025-08-19 09:08 - User: David Wiltberger - Date Added: 2025-08-19 09:08 - Note: changed pick order / 2025-09-02 10:09 - User: David Wiltberger - Date Added: 2025-09-02 10:09 - Note: Moving to accommodate roofing in Zone 1 / 2025-09-24 04:09 - User: Dav

| ID | WBS | Activity | Duration | Start | Finish | Predecessors | Complete | Remaining | Planned start | Planned finish | Total float | Free float | Calendar | Subcontractor | Level | Location | Baseline | Layton Responsible Party | Phase-1 | Project Section | Allucent CSI Group | Project Section-1 | Phase-1-1 |
| --- | --- | --- | --- | --- | --- | --- | --- | --- | --- | --- | --- | --- | --- | --- | --- | --- | --- | --- | --- | --- | --- | --- | --- |
|  | 1 | **Fragnet Bulletin 4 Grating** |  | 2025-10-10 | 2026-01-26 |  |  |  |  |  |  |  |  |  |  |  |  |  |  |  |  |  |  |
| QTS-1001950 |  | Fragnet / DH 1300 / Rooftop Mechanical // Bulletin 4 Received by Layton | 1d | 2025-10-10 A | 2025-10-10 A | QTS-1371 SS | 100% |  |  |  |  |  |  | Bel-Aire Mechanical, LLC | Level 2 | DH2100 | IGMP | Dave Wiltberger | Phase 1 | Construction | 01ADMIN |  |  |
| QTS-1001970 |  | Fragnet / DH 1300 / Rooftop Mechanical // Updated Bulletin 4 Received by Layton | 3d | 2025-10-13 A | 2025-10-15 A | QTS-1001950 | 100% |  | 2025-10-10 | 2025-10-14 |  |  |  | Bel-Aire Mechanical, LLC | Level 2 | DH2100 | IGMP | Dave Wiltberger | Phase 1 | Construction | 01ADMIN |  |  |
| QTS-1001980 |  | Fragnet / DH 1300 / Rooftop Mechanical // Layton Submitting Shop Drawings to QTS Design (DLB) | 23d | 2025-10-16 A | 2025-11-17 A | QTS-1001970 | 100% |  | 2025-10-10 | 2025-11-11 |  |  |  | Bel-Aire Mechanical, LLC | Level 2 | DH2100 | IGMP | Dave Wiltberger | Phase 1 | Construction | 01ADMIN |  |  |
| QTS-1001990 |  | Fragnet / DH 1300 / Rooftop Mechanical // Layton Submitting Shop Drawings to QTS Design (Corgan) | 23d | 2025-11-18 A | 2025-12-09 A | QTS-1001980 | 100% |  | 2025-10-10 | 2025-11-11 |  |  |  | Bel-Aire Mechanical, LLC | Level 2 | DH2100 | IGMP | Dave Wiltberger | Phase 1 | Construction | 01ADMIN |  |  |
| QTS-1002000 |  | Fragnet / DH 1300 / Rooftop Mechanical // QTS Design Response for Grating | 10d | 2025-12-10 A | 2026-01-14 | QTS-1001990 | 100% | 0d | 2025-10-10 | 2025-10-23 | 133d | 0d |  | Bel-Aire Mechanical, LLC | Level 2 | DH2100 | IGMP | Dave Wiltberger | Phase 1 | Construction | 01ADMIN |  |  |
| QTS-1001960 |  | Fragnet / DH 1300 / Rooftop Mechanical // Install Grating, Toe Kicks, Hand Rails to Complete Chiller Deck | 10d | 2026-01-14 | 2026-01-26 | QTS-1002000 |  |  |  |  | 160d | 156d | QTS-PHX3 DC1 - 6 day w/ Holidays | Bel-Aire Mechanical, LLC | Level 2 | DH2100 | IGMP | Dave Wiltberger | Phase 1 | Construction | 01ADMIN |  |  |
|  | 5 | **DH 1300 / Mechanical Yard Buildout** |  | 2025-10-02 | 2026-04-03 |  |  |  |  |  |  |  |  |  |  |  |  |  |  |  |  |  |  |
| QTS-42541 |  | DH 1300 / Mechanical Yard // Excavate for MV Conduits | 4d | 2025-10-02 A | 2025-10-07 A | QTS-23261, QTS-42491 SS | 100% |  |  |  |  |  |  | Oregon Electric Group | Level 2 | Gen Yard | IGMP | Ron Carroll |  | Construction |  | Construction | Phase 1 |
| QTS-42551 |  | DH 1300 / Mechanical Yard // Install Conduit for MV Cables | 4d | 2025-10-03 A | 2025-10-15 A | QTS-42541 FF+1d | 100% |  | 2025-10-03 | 2025-10-08 |  |  |  | Oregon Electric Group | Level 2 | Gen Yard | IGMP | Ron Carroll |  | Construction | 01ADMIN | Construction | Phase 1 |
| QTS-42561 |  | DH 1300 / Mechanical Yard // Slurry for MV Conduits | 3d | 2025-10-07 A | 2025-10-16 A | QTS-42551 FF+1d | 100% |  | 2025-10-07 | 2025-10-09 |  |  |  | Oregon Electric Group | Level 2 | Gen Yard | IGMP | Ron Carroll |  | Construction | 01ADMIN | Construction | Phase 1 |
| QTS-42571 |  | DH 1300 / Mechanical Yard // Backfill Conduit for MV Cables | 4d | 2025-10-07 A | 2025-10-17 A | QTS-42561 FF+1d | 100% |  | 2025-10-07 | 2025-10-10 |  |  |  | Oregon Electric Group | Level 2 | Gen Yard | IGMP | Ron Carroll |  | Construction | 01ADMIN | Construction | Phase 1 |
| QTS-1001470 |  | DH 1300 / Mechanical Yard // OFCI - L2 SET IN PLACE - Eq Type # - 2500KVA Transformers - 2 units (F13 & R13) | 3d | 2025-11-04 A | 2025-11-04 A | QTS-38181, QTS-38171 | 100% |  | 2025-12-30 | 2026-01-05 |  |  |  | Rosendin Electric, Inc | Level 1 | Gen Yard | IGMP | Scott Masterson |  | Construction |  | Construction | Phase 3 |
| QTS-2171 |  | DH 1300 / Mechanical Yard // Prep for Pier Footings | 3d | 2025-12-02 A | 2025-12-04 A | QTS-2151, QTS-42571, QTS-2041 SS | 100% |  |  |  |  |  |  | Suntec Concrete Inc | Level 1 | Gen Yard | IGMP | Ron Carroll |  | Construction | 01ADMIN | Construction | Phase 3 |
| QTS-4241 |  | DH 1300 / Mechanical Yard // Form, Reinforce, & Pour 24" Diameter Piers #1 | 6d | 2025-12-05 A | 2025-12-12 A | QTS-2171, QTS-2171 FF | 100% |  |  |  |  |  |  | Suntec Concrete Inc | Level 1 | Gen Yard | IGMP | Ron Carroll |  | Construction | 01ADMIN | Construction | Phase 3 |
|  | 2 | **Remaining Duration** |  | 2025-12-15 | 2026-04-03 |  |  |  |  |  |  |  |  |  |  |  |  |  |  |  |  |  |  |
| QTS-42881 |  | DH 1300 / Mechanical Yard // Form, Reinforce, & Pour 24" Diameter Piers #2 | 5d | 2025-12-15 A | 2025-12-16 A | QTS-4241 | 100% |  | 2025-12-15 | 2025-12-19 |  |  | QTS-PHX3 DC1 - 6 day w/ Holidays | Suntec Concrete Inc | Level 1 | Gen Yard | IGMP | Ron Carroll |  | Construction | 01ADMIN | Construction | Phase 3 |
| QTS-11331 |  | DH 1300 / Mechanical Yard // Form, Reinforce, & Pour Thickened Slab On Grade for Transformers | 9d | 2025-12-16 A | 2025-12-16 A | QTS-2171, QTS-42881 SS+1d | 100% |  | 2025-12-16 | 2025-12-26 |  |  | QTS-PHX3 DC1 - 6 day w/ Holidays | Suntec Concrete Inc | Level 1 | Gen Yard | IGMP | Ron Carroll |  | Construction | 01ADMIN | Construction | Phase 3 |
| QTS-10041 |  | DH 1300 / Mechanical Yard // Form, Reinforce, & Pour Thickened Slab On Grade for UPS Pods | 5d | 2025-12-17 A | 2025-12-17 A | QTS-11331 | 100% |  | 2026-01-08 | 2026-01-13 |  |  | QTS-PHX3 DC1 - 6 day w/ Holidays | Suntec Concrete Inc | Level 1 | Gen Yard | IGMP | Ron Carroll |  | Construction | 01ADMIN | Construction | Phase 3 |
| QTS-6631 |  | DH 1300 / Mechanical Yard // Place Gen Yard Gravel | 5d | 2025-12-18 A | 2025-12-18 A | QTS-42881, QTS-11331, QTS-10041 | 100% |  | 2025-12-18 | 2025-12-23 |  |  | QTS-PHX3 DC1 - 6 day w/ Holidays | Redpoint Contracting | Level 1 | Gen Yard | IGMP | Ron Carroll |  | Construction |  | Construction | Phase 3 |
| QTS-12601 |  | DH 1300 / Mechanical Yard // Form, Reinforce, & Pour Thickened Slab On Grade for Generators | 10d | 2025-12-22 A | 2025-12-31 A | QTS-11331, QTS-10041 | 100% |  | 2025-12-22 | 2026-01-03 |  |  | QTS-PHX3 DC1 - 6 day w/ Holidays | Suntec Concrete Inc | Level 1 | Gen Yard | IGMP | Ron Carroll |  | Construction |  | Construction | Phase 3 |
| QTS-14561 |  | DH 1300 / Mechanical Yard // OFCI - L2 SET IN PLACE - Eq Type # - 2500KVA Transformers - 4 units (A13, C13, D13 & E13) | 3d | 2026-01-06 A | 2026-01-06 A | QTS-38121, QTS-38141, QTS-38151, QTS-38161, QTS-38171, QTS-38181, QTS-1001470 | 100% |  | 2026-01-06 | 2026-01-08 |  |  | QTS-PHX3 DC1 - 6 day w/ Holidays | Rosendin Electric, Inc | Level 1 | Gen Yard | IGMP | Scott Masterson |  | Construction | 01ADMIN | Construction | Phase 3 |
| QTS-50011 |  | DH 1300 / Mechanical Yard // Install Cable Bus | 10d | 2026-01-14 | 2026-01-26 | QTS-6631, QTS-49731 |  |  |  |  | 42d | 41d | QTS-PHX3 DC1 - 6 day w/ Holidays | Oregon Electric Group | Level 2 | Gen Yard | IGMP | Scott Masterson |  | Construction |  | Construction | Phase 1 |
| QTS-1004420 |  | DH 1300 / Mechanical Yard // OFCI - L2 SET IN PLACE - Eq Type # - 2500KVA Transformers - 1 units (B13) | 1d | 2026-01-15 | 2026-01-15 | QTS-38131 |  |  |  |  | 57d | 56d | QTS-PHX3 DC1 - 6 day w/ Holidays | Rosendin Electric, Inc | Level 1 | Gen Yard | IGMP | Scott Masterson |  | Construction | 01ADMIN | Construction | Phase 3 |
| QTS-13581 |  | DH 1300 / Mechanical Yard // OFCI - L2 SET IN PLACE - Eq Type # - 3000A UPS Pods - 7 units | 5d | 2026-02-19 | 2026-02-24 | QTS-37551, QTS-37561 FF, QTS-37571 FF, QTS-37581 FF, QTS-37591 FF, QTS-37601 FF, QTS-37611, QTS-10041 |  |  |  |  | 17d | 0d | QTS-PHX3 DC1 - 6 day w/ Holidays | Rosendin Electric, Inc | Level 1 | Gen Yard | IGMP | Scott Masterson |  | Construction |  | Construction | Phase 3 |
| QTS-2191 |  | DH 1300 / Mechanical Yard // Install FRP Platforms | 10d | 2026-02-25 | 2026-03-07 | QTS-13581, QTS-36071 |  |  |  |  | 91d | 49d | QTS-PHX3 DC1 - 6 day w/ Holidays | Advantic Building Group, LLC | Level 1 | Gen Yard | IGMP | Ron Carroll |  | Construction |  | Construction | Phase 3 |
| QTS-7000 |  | DH 1300 / Mechanical Yard // OFCI - L2 SET IN PLACE - Eq Type # - 2500KW Generator #A-13 - 1 unit | 1d | 2026-02-27 | 2026-02-27 | QTS-40341, QTS-40351, QTS-40371, QTS-14561, QTS-12601 |  |  |  |  | 8d | 6d | QTS-PHX3 DC1 - 6 day w/ Holidays | Rosendin Electric, Inc | Level 1 | Gen Yard |  | Scott Masterson |  | Construction |  | Construction | Phase 3 |
| QTS-7010 |  | DH 1300 / Mechanical Yard // OFCI - L2 SET IN PLACE - Eq Type # - 2500KW Generator #B-13 - 1 unit | 1d | 2026-03-07 | 2026-03-07 | QTS-7000, QTS-40181, QTS-40191, QTS-40211 |  |  |  |  | 2d | 0d | QTS-PHX3 DC1 - 6 day w/ Holidays | Rosendin Electric, Inc | Level 1 | Gen Yard |  | Scott Masterson |  | Construction |  | Construction | Phase 3 |
| QTS-7020 |  | DH 1300 / Mechanical Yard // OFCI - L2 SET IN PLACE - Eq Type # - 2500KW Generator #C-13 - 1 unit | 1d | 2026-03-09 | 2026-03-09 | QTS-7010, QTS-40021, QTS-40031, QTS-40051 |  |  |  |  | 2d | 0d | QTS-PHX3 DC1 - 6 day w/ Holidays | Rosendin Electric, Inc | Level 1 | Gen Yard |  | Scott Masterson |  | Construction |  | Construction | Phase 3 |
| QTS-7030 |  | DH 1300 / Mechanical Yard // OFCI - L2 SET IN PLACE - Eq Type # - 2500KW Generator #D-13 - 1 unit | 1d | 2026-03-10 | 2026-03-10 | QTS-7020, QTS-40541, QTS-40551, QTS-40571 |  |  |  |  | 2d | 0d | QTS-PHX3 DC1 - 6 day w/ Holidays | Rosendin Electric, Inc | Level 1 | Gen Yard |  | Scott Masterson |  | Construction |  | Construction | Phase 3 |
| QTS-41431 |  | DH 1300 / Mechanical Yard // OFCI - L2 SET IN PLACE - Eq Type # - 2500KW Generator #E-13 - 1 unit | 1d | 2026-03-11 | 2026-03-11 | QTS-7030, QTS-40741, QTS-40751, QTS-40771 |  |  |  |  | 2d | 1d | QTS-PHX3 DC1 - 6 day w/ Holidays | Rosendin Electric, Inc | Level 1 | Gen Yard |  | Scott Masterson |  | Construction |  | Construction | Phase 3 |
| QTS-41441 |  | DH 1300 / Mechanical Yard // OFCI - L2 SET IN PLACE - Eq Type # - 2500KW Generator #F-13 - 1 unit | 1d | 2026-03-13 | 2026-03-13 | QTS-41431, QTS-40941, QTS-40951, QTS-40971 |  |  |  |  | 1d | 0d | QTS-PHX3 DC1 - 6 day w/ Holidays | Rosendin Electric, Inc | Level 1 | Gen Yard |  | Scott Masterson |  | Construction |  | Construction | Phase 3 |
| QTS-41451 |  | DH 1300 / Mechanical Yard // OFCI - L2 SET IN PLACE - Eq Type # - 2500KW Generator #R-13 - 1 unit | 1d | 2026-03-14 | 2026-03-14 | QTS-41441, QTS-41141, QTS-41151, QTS-41171 |  |  |  |  | 1d | 0d | QTS-PHX3 DC1 - 6 day w/ Holidays | Rosendin Electric, Inc | Level 1 | Gen Yard |  | Scott Masterson |  | Construction |  | Construction | Phase 3 |
| QTS-1000320 |  | DH 1300 / Mechanical Yard // OFCI - L2 SET IN PLACE - Eq Type # - 2500KW Generator SCR - 7 units | 3d | 2026-03-16 | 2026-03-18 | QTS-40361, QTS-40201, QTS-40041, QTS-40561, QTS-40761, QTS-40961, QTS-41161, QTS-41451 |  |  |  |  | 55d | 0d | QTS-PHX3 DC1 - 6 day w/ Holidays | Rosendin Electric, Inc | Level 2 | Gen Yard |  | Scott Masterson |  | Construction | 01ADMIN | Construction | Phase 1 |
| QTS-15971 |  | DH 1300 / Mechanical Yard // Install Raceway from Generators to UPS Pods | 5d | 2026-03-16 | 2026-03-20 | QTS-13581, QTS-41451, QTS-50011 |  |  |  |  | 1d | 0d | QTS-PHX3 DC1 - 6 day w/ Holidays | Rosendin Electric, Inc | Level 1 | Gen Yard | IGMP | Scott Masterson |  | Construction |  | Construction | Phase 3 |
| QTS-42581 |  | DH 1300 / Mechanical Yard // Wire Pull for MV Cables | 6d | 2026-03-16 | 2026-03-21 | QTS-42571, QTS-41451 |  |  |  |  | 2d | 0d | QTS-PHX3 DC1 - 6 day w/ Holidays | Oregon Electric Group | Level 2 | Gen Yard | IGMP | Scott Masterson |  | Construction |  | Construction | Phase 1 |
| QTS-1001230 |  | DH 1300 / Mechanical Yard // Pressure Test Generator Tanks | 2d | 2026-03-17 | 2026-03-18 | QTS-1000320 FF |  |  |  |  | 55d | 12d | QTS-PHX3 DC1 - 6 day w/ Holidays | Rosendin Electric, Inc | Level 2 | Gen Yard | IGMP | Dave Wiltberger | Phase 1 | Construction | 01ADMIN |  |  |
| QTS-15191 |  | DH 1300 / Mechanical Yard // Install Raceway from Transformers to UPS Pods | 5d | 2026-03-18 | 2026-03-23 | QTS-1004420 FF, QTS-14561, QTS-15971 SS+2d |  |  |  |  | 1d | 0d | QTS-PHX3 DC1 - 6 day w/ Holidays | Rosendin Electric, Inc | Level 1 | Gen Yard | IGMP | Scott Masterson |  | Construction |  | Construction | Phase 3 |
| QTS-17471 |  | DH 1300 / Mechanical Yard // Pull & Terminate from Generators to UPS Pods | 10d | 2026-03-21 | 2026-04-01 | QTS-15971 |  |  |  |  | 12d | 0d | QTS-PHX3 DC1 - 6 day w/ Holidays | Rosendin Electric, Inc | Level 1 | Gen Yard | IGMP | Scott Masterson |  | Construction |  | Construction | Phase 3 |
| QTS-42891 |  | DH 1300 / Mechanical Yard // Terminate MV at Transformers | 10d | 2026-03-23 | 2026-04-02 | QTS-42581 |  |  |  |  | 2d |  | QTS-PHX3 DC1 - 6 day w/ Holidays | Oregon Electric Group | Level 2 | Gen Yard | IGMP | Scott Masterson |  | Construction |  | Construction | Phase 1 |
| QTS-15961 |  | DH 1300 / Mechanical Yard // Pull & Terminate from Transformers to UPS Pods | 10d | 2026-03-24 | 2026-04-03 | QTS-15191 |  |  |  |  | 1d |  | QTS-PHX3 DC1 - 6 day w/ Holidays | Rosendin Electric, Inc | Level 1 | Gen Yard | IGMP | Scott Masterson |  | Construction |  | Construction | Phase 3 |

Notes:
- QTS-1001950: allucent_notes: David Wiltberger on 2025-08-19 09:08: changed pick order / allucent_notes_20251014_152335: David Wiltberger on 2025-08-19 09:08: changed pick order / David Wiltberger on 2025-09-02 10:09: Moving to accommodate roofing in Zone 1 / David Wiltberger on 2025-09-24 04:09: BAM not completed Potential Delay / David Wiltberger on 2025-09-30 12:09: BAM did not complete / David Wiltberger on 2025-10-14 10:10: set on recovery schedule / allucent_notes_20251202_153722: David Wiltberger on 2025-12-02 06:45: Grating install not complete for installation / allucent_notes_20251209_203830: David Wiltberger on 2025-12-02 06:45: Grating install not complete for installation / allucent_notes_20251216_165335: David Wiltberger on 2025-12-02 06:45: Grating install not complete for installation / allucent_notes: 2025-12-02 06:45 - User: David Wiltberger - Date Added: 2025-12-02 06:45 - Note: Grating install not complete for installation
- QTS-1001970: allucent_notes: David Wiltberger on 2025-08-19 09:08: changed pick order / allucent_notes_20251014_152335: David Wiltberger on 2025-08-19 09:08: changed pick order / David Wiltberger on 2025-09-02 10:09: Moving to accommodate roofing in Zone 1 / David Wiltberger on 2025-09-24 04:09: BAM not completed Potential Delay / David Wiltberger on 2025-09-30 12:09: BAM did not complete / David Wiltberger on 2025-10-14 10:10: set on recovery schedule / allucent_notes_20251202_153722: David Wiltberger on 2025-12-02 06:45: Grating install not complete for installation / allucent_notes_20251209_203830: David Wiltberger on 2025-12-02 06:45: Grating install not complete for installation / allucent_notes_20251216_165335: David Wiltberger on 2025-12-02 06:45: Grating install not complete for installation / allucent_notes: 2025-12-02 06:45 - User: David Wiltberger - Date Added: 2025-12-02 06:45 - Note: Grating install not complete for installation
- QTS-1001980: allucent_notes: David Wiltberger on 2025-08-19 09:08: changed pick order / allucent_notes_20251014_152335: David Wiltberger on 2025-08-19 09:08: changed pick order / David Wiltberger on 2025-09-02 10:09: Moving to accommodate roofing in Zone 1 / David Wiltberger on 2025-09-24 04:09: BAM not completed Potential Delay / David Wiltberger on 2025-09-30 12:09: BAM did not complete / David Wiltberger on 2025-10-14 10:10: set on recovery schedule / allucent_notes_20251202_153722: David Wiltberger on 2025-12-02 06:45: Grating install not complete for installation / allucent_notes_20251209_203830: David Wiltberger on 2025-12-02 06:45: Grating install not complete for installation / allucent_notes_20251216_165335: David Wiltberger on 2025-12-02 06:45: Grating install not complete for installation / allucent_notes: 2025-12-02 06:45 - User: David Wiltberger - Date Added: 2025-12-02 06:45 - Note: Grating install not complete for installation
- QTS-1001990: allucent_notes: David Wiltberger on 2025-08-19 09:08: changed pick order / allucent_notes_20251014_152335: David Wiltberger on 2025-08-19 09:08: changed pick order / David Wiltberger on 2025-09-02 10:09: Moving to accommodate roofing in Zone 1 / David Wiltberger on 2025-09-24 04:09: BAM not completed Potential Delay / David Wiltberger on 2025-09-30 12:09: BAM did not complete / David Wiltberger on 2025-10-14 10:10: set on recovery schedule / allucent_notes_20251202_153722: David Wiltberger on 2025-12-02 06:45: Grating install not complete for installation / allucent_notes_20251209_203830: David Wiltberger on 2025-12-02 06:45: Grating install not complete for installation / allucent_notes_20251216_165335: David Wiltberger on 2025-12-02 06:45: Grating install not complete for installation / allucent_notes: 2025-12-02 06:45 - User: David Wiltberger - Date Added: 2025-12-02 06:45 - Note: Grating install not complete for installation
- QTS-1002000: allucent_notes: David Wiltberger on 2025-08-19 09:08: changed pick order / allucent_notes_20251014_152335: David Wiltberger on 2025-08-19 09:08: changed pick order / David Wiltberger on 2025-09-02 10:09: Moving to accommodate roofing in Zone 1 / David Wiltberger on 2025-09-24 04:09: BAM not completed Potential Delay / David Wiltberger on 2025-09-30 12:09: BAM did not complete / David Wiltberger on 2025-10-14 10:10: set on recovery schedule / allucent_notes_20251202_153722: David Wiltberger on 2025-12-02 06:45: Grating install not complete for installation / allucent_notes_20251209_203830: David Wiltberger on 2025-12-02 06:45: Grating install not complete for installation / allucent_notes_20251216_165335: David Wiltberger on 2025-12-02 06:45: Grating install not complete for installation / allucent_notes: 2025-12-02 06:45 - User: David Wiltberger - Date Added: 2025-12-02 06:45 - Note: Grating install not complete for installation
- QTS-1001960: allucent_notes: David Wiltberger on 2025-08-19 09:08: changed pick order / allucent_notes_20251014_152335: David Wiltberger on 2025-08-19 09:08: changed pick order / David Wiltberger on 2025-09-02 10:09: Moving to accommodate roofing in Zone 1 / David Wiltberger on 2025-09-24 04:09: BAM not completed Potential Delay / David Wiltberger on 2025-09-30 12:09: BAM did not complete / David Wiltberger on 2025-10-14 10:10: set on recovery schedule / allucent_notes_20251202_153722: David Wiltberger on 2025-12-02 06:45: Grating install not complete for installation / allucent_notes_20251209_203830: David Wiltberger on 2025-12-02 06:45: Grating install not complete for installation / allucent_notes_20251216_165335: David Wiltberger on 2025-12-02 06:45: Grating install not complete for installation / allucent_notes: 2025-12-02 06:45 - User: David Wiltberger - Date Added: 2025-12-02 06:45 - Note: Grating install not complete for installation
- QTS-42551: allucent_notes_20251014_152335: Jason Johnston on 2025-10-14 09:10: Rain delays / allucent_notes_20251021_145627: Jason Johnston on 2025-10-14 09:10: Rain delays / allucent_notes: 2025-10-14 09:10 - User: Jason Johnston - Date Added: 2025-10-14 09:10 - Note: Rain delays
- QTS-42881: allucent_notes_20251230_164549: David Wiltberger on 2025-12-30 16:25: no update / allucent_notes: 2025-12-30 16:25 - User: David Wiltberger - Date Added: 2025-12-30 16:25 - Note: no update

| ID | WBS | Activity | Duration | Start | Finish | Predecessors | Total float | Free float | Calendar | Notes/Preds | Layton Responsible Party | Allucent CSI Group | Subcontractor |
| --- | --- | --- | --- | --- | --- | --- | --- | --- | --- | --- | --- | --- | --- |
|  | 6 | **DH 1300 / Commissioning** |  |  |  |  |  |  |  |  |  |  |  |
|  | 2 | **Level 3 Energization & Prefunctional Testing** |  |  |  |  |  |  |  |  |  |  |  |
|  | 1 | **Electrical** |  |  |  |  |  |  |  |  |  |  |  |
|  | 2 | **Mechanical** |  |  |  |  |  |  |  |  |  |  |  |
|  | 4 | **Level 4 Functional Testing** |  |  |  |  |  |  |  |  |  |  |  |
|  | 3 | **Level 5 Integrated Systems Testing** |  |  |  |  |  |  |  |  |  |  |  |
|  | 7 | **TFO Construction** |  | 2025-11-05 | 2026-06-16 |  |  |  |  |  |  |  |  |
|  | 2 | **Infrastructure Buildout** |  | 2025-11-05 | 2026-06-16 |  |  |  |  |  |  |  |  |
|  | 1 | **Front of House (FOH)** |  | 2026-01-14 | 2026-04-28 |  |  |  |  |  |  |  |  |
|  | 6 | **FOH TFO** |  | 2026-01-14 | 2026-04-28 |  |  |  |  |  |  |  |  |
|  | 1 | **Flex Space** |  | 2026-01-14 | 2026-04-28 |  |  |  |  |  |  |  |  |
| QTS - 24191 |  | TFO Scope // Flex Space // Rework OH Fire Sprinkler | 6d | 2026-01-14 | 2026-01-21 | QTS-42221, QTS-29301, QTS-27271, QTS-26521, QTS-28311 | 101d | 0d | QTS-PHX3 DC1 - 6 day w/ Holidays | QTS-29591 | Dave Wiltberger | 01ADMIN |  |
| QTS - 24201 |  | TFO Scope // Flex Space // Framing Layout & MEP Blockouts | 3d | 2026-01-22 | 2026-01-24 | QTS - 24191 | 101d | 0d | QTS-PHX3 DC1 - 6 day w/ Holidays |  | Sean Waisner | 01ADMIN | Performance Contracting, Inc. |
| QTS - 24271 |  | TFO Scope // Flex Space // Soffit Framing Layout | 2d | 2026-01-22 | 2026-01-23 | QTS - 24201 SS | 147d | 9d | QTS-PHX3 DC1 - 6 day w/ Holidays |  | Sean Waisner | 01ADMIN | Performance Contracting, Inc. |
| QTS - 24211 |  | TFO Scope // Flex Space // OH Electrical Rough-In | 5d | 2026-01-26 | 2026-01-30 | QTS - 24201 | 101d | 0d | QTS-PHX3 DC1 - 6 day w/ Holidays |  | Scott Masterson | 01ADMIN |  |
| QTS - 24221 |  | TFO Scope // Flex Space // OH Mechanical Rough-In | 3d | 2026-01-31 | 2026-02-03 | QTS - 24211 | 138d | 0d | QTS-PHX3 DC1 - 6 day w/ Holidays |  | Dave Wiltberger | 01ADMIN | Bel-Aire Mechanical, LLC |
| QTS - 24231 |  | TFO Scope // Flex Space // OH Plumbing Rough-In | 3d | 2026-01-31 | 2026-02-03 | QTS - 24211 | 101d | 0d | QTS-PHX3 DC1 - 6 day w/ Holidays |  | Dave Wiltberger | 01ADMIN | Bel-Aire Mechanical, LLC |
| QTS - 24251 |  | TFO Scope // Flex Space // Framing Walls | 5d | 2026-02-04 | 2026-02-09 | QTS - 24231 | 101d | 0d | QTS-PHX3 DC1 - 6 day w/ Holidays |  | Sean Waisner |  | Performance Contracting, Inc. |
| QTS - 24281 |  | TFO Scope // Flex Space // Soffit Framing | 4d | 2026-02-04 | 2026-02-07 | QTS - 24271, QTS - 24231, QTS - 24221 | 138d | 0d | QTS-PHX3 DC1 - 6 day w/ Holidays |  | Sean Waisner |  | Performance Contracting, Inc. |
| QTS - 24291 |  | TFO Scope // Flex Space // HVAC/Lighting Soffit Rough-In | 5d | 2026-02-09 | 2026-02-13 | QTS - 24281 | 138d | 0d | QTS-PHX3 DC1 - 6 day w/ Holidays |  | Scott Masterson |  |  |
| QTS - 24261 |  | TFO Scope // Flex Space // Frame HM Doors | 2d | 2026-02-10 | 2026-02-11 | QTS - 24251 | 101d | 0d | QTS-PHX3 DC1 - 6 day w/ Holidays |  | Sean Waisner |  | Performance Contracting, Inc. |
| QTS - 24241 |  | TFO Scope // Flex Space // In-Wall MEP, AV, Security & FA | 10d | 2026-02-12 | 2026-02-23 | QTS - 24251, QTS - 24261 | 101d | 0d | QTS-PHX3 DC1 - 6 day w/ Holidays |  | Scott Masterson |  |  |
| QTS - 24311 |  | TFO Scope // Flex Space // OH MEP Inspections | 1d | 2026-02-14 | 2026-02-14 | QTS - 24291, QTS - 24231, QTS - 24221, QTS - 24211 | 138d | 0d | QTS-PHX3 DC1 - 6 day w/ Holidays |  | Scott Masterson |  |  |
| QTS - 24321 |  | TFO Scope // Flex Space // Hang GWB Soffits | 4d | 2026-02-16 | 2026-02-19 | QTS - 24311 | 138d | 0d | QTS-PHX3 DC1 - 6 day w/ Holidays |  | Sean Waisner |  | Performance Contracting, Inc. |
| QTS - 24351 |  | TFO Scope // Flex Space // Tape & Finish Soffits | 8d | 2026-02-20 | 2026-02-28 | QTS - 24321 | 138d | 15d | QTS-PHX3 DC1 - 6 day w/ Holidays |  | Sean Waisner |  | Performance Contracting, Inc. |
| QTS - 24301 |  | TFO Scope // Flex Space // In-Wall MEP Inspections | 1d | 2026-02-24 | 2026-02-24 | QTS - 24261, QTS - 24241 | 101d | 0d | QTS-PHX3 DC1 - 6 day w/ Holidays |  | Scott Masterson |  |  |
| QTS - 24331 |  | TFO Scope // Flex Space // Hang GWB Drywall | 5d | 2026-02-25 | 2026-03-02 | QTS - 24301 | 101d | 0d | QTS-PHX3 DC1 - 6 day w/ Holidays |  | Sean Waisner |  | Performance Contracting, Inc. |
| QTS - 24341 |  | TFO Scope // Flex Space // Tape & Finish Drywall | 10d | 2026-03-03 | 2026-03-13 | QTS - 24331 | 101d | 0d | QTS-PHX3 DC1 - 6 day w/ Holidays |  | Sean Waisner |  | Performance Contracting, Inc. |
| QTS - 24361 |  | TFO Scope // Flex Space // Paint 1st Coat Soffit & Walls | 4d | 2026-03-14 | 2026-03-18 | QTS - 24341 | 101d | 0d | QTS-PHX3 DC1 - 6 day w/ Holidays |  | Sean Waisner |  | Pennington Painting Company, LLC |
| QTS - 24371 |  | TFO Scope // Flex Space // Install Grid | 6d | 2026-03-19 | 2026-03-25 | QTS - 24351, QTS - 24361 | 123d | 0d | QTS-PHX3 DC1 - 6 day w/ Holidays |  | Sean Waisner |  | Performance Contracting, Inc. |
| QTS - 24391 |  | TFO Scope // Flex Space // Paint 2nd Coat Soffit & Walls | 5d | 2026-03-19 | 2026-03-24 | QTS - 24361 | 101d | 0d | QTS-PHX3 DC1 - 6 day w/ Holidays |  | Sean Waisner |  | Pennington Painting Company, LLC |
| QTS - 24401 |  | TFO Scope // Flex Space // MEP Wall Finishes | 5d | 2026-03-25 | 2026-03-30 | QTS - 24391 | 103d | 0d | QTS-PHX3 DC1 - 6 day w/ Holidays |  | Dave Wiltberger |  |  |
| QTS - 24381 |  | TFO Scope // Flex Space // Install Lighting | 5d | 2026-03-26 | 2026-03-31 | QTS - 24371, QTS - 24391 | 123d | 22d | QTS-PHX3 DC1 - 6 day w/ Holidays |  | Scott Masterson |  |  |
| QTS - 24411 |  | TFO Scope // Flex Space // Millwork Installation | 4d | 2026-03-31 | 2026-04-03 | QTS - 24401 | 103d | 0d | QTS-PHX3 DC1 - 6 day w/ Holidays |  | Sean Waisner |  |  |
| QTS - 24421 |  | TFO Scope // Flex Space // ACT Installation | 6d | 2026-04-04 | 2026-04-10 | QTS - 24411 | 103d | 0d | QTS-PHX3 DC1 - 6 day w/ Holidays |  | Sean Waisner |  | Performance Contracting, Inc. |
| QTS - 24431 |  | TFO Scope // Flex Space // Carpet Flooring Installation | 6d | 2026-04-11 | 2026-04-17 | QTS - 24421 | 103d | 0d | QTS-PHX3 DC1 - 6 day w/ Holidays |  | Sean Waisner |  |  |
| QTS - 24441 |  | TFO Scope // Flex Space // Office Storefront System | 5d | 2026-04-18 | 2026-04-23 | QTS - 24431 | 103d | 2d | QTS-PHX3 DC1 - 6 day w/ Holidays |  | Sean Waisner |  |  |
| QTS - 24451 |  | TFO Scope // Flex Space // Final Clean | 2d | 2026-04-27 | 2026-04-28 | QTS - 24441, QTS - 24381, QTS-1000250 | 101d | 7d | QTS-PHX3 DC1 - 6 day w/ Holidays |  | Sean Waisner |  |  |

Notes:
- QTS - 24191: allucent_notes_20251209_203830: Jason Johnston on 2025-12-09 20:32: Need update from team / allucent_notes: 2025-12-09 20:32 - User: Jason Johnston - Date Added: 2025-12-09 20:32 - Note: Need update from team

| ID | WBS | Activity | Duration | Start | Finish | Predecessors | Complete | Remaining | Planned start | Planned finish | Total float | Free float | Calendar | Subcontractor | Layton Responsible Party | Allucent CSI Group | Notes |
| --- | --- | --- | --- | --- | --- | --- | --- | --- | --- | --- | --- | --- | --- | --- | --- | --- | --- |
|  | 2 | **MDR #221** |  | 2026-03-25 | 2026-04-25 |  |  |  |  |  |  |  |  |  |  |  |  |
| QTS-1000180 |  | TFO Scope // MDF #221 // Install Telecom Racks | 5d | 2026-03-25 | 2026-03-30 | QTS - 24391 |  |  |  |  | 101d | 0d | QTS-PHX3 DC1 - 6 day w/ Holidays | E2 Optics, LLC | Scott Masterson |  |  |
| QTS-1000190 |  | TFO Scope // MDF #221 // Rack & Stack | 2d | 2026-03-31 | 2026-04-01 | QTS-1000180 |  |  |  |  | 110d | 0d | QTS-PHX3 DC1 - 6 day w/ Holidays | E2 Optics, LLC | Sean Waisner |  |  |
| QTS-1000200 |  | TFO Scope // MDF #221 // Level 2 - Technology Pathway FOH - A Loop | 5d | 2026-03-31 | 2026-04-04 | QTS-1000180 |  |  |  |  | 101d | 0d | QTS-PHX3 DC1 - 6 day w/ Holidays |  | Scott Masterson |  |  |
| QTS-1000260 |  | TFO Scope // MDF #221 // Wire Pull | 4d | 2026-04-02 | 2026-04-06 | QTS-1000190 |  |  |  |  | 110d | 0d | QTS-PHX3 DC1 - 6 day w/ Holidays | E2 Optics, LLC | Scott Masterson |  |  |
| QTS-1000220 |  | TFO Scope // MDF #221 // Level 2 - Technology Pathway FOH - B Loop | 5d | 2026-04-06 | 2026-04-10 | QTS-1000200 |  |  |  |  | 101d | 0d | QTS-PHX3 DC1 - 6 day w/ Holidays |  | Scott Masterson |  |  |
| QTS-1000210 |  | TFO Scope // MDF #221 // Install Security Devices / Hoffman Enclosures | 5d | 2026-04-07 | 2026-04-11 | QTS-1000260 |  |  |  |  | 110d | 9d | QTS-PHX3 DC1 - 6 day w/ Holidays | Securitas Technology Corporation | Scott Masterson |  |  |
| QTS-1000230 |  | TFO Scope // MDF #221 // Level 1 - Technology Pathway FOH - A Loop | 5d | 2026-04-11 | 2026-04-16 | QTS-1000220 |  |  |  |  | 101d | 0d | QTS-PHX3 DC1 - 6 day w/ Holidays |  | Scott Masterson |  |  |
| QTS-1000240 |  | TFO Scope // MDF #221 // Level 1 - Technology Pathway FOH - B Loop | 5d | 2026-04-17 | 2026-04-22 | QTS-1000230 |  |  |  |  | 101d | 0d | QTS-PHX3 DC1 - 6 day w/ Holidays |  | Scott Masterson |  |  |
| QTS-1000250 |  | TFO Scope // MDF #221 // Wire & Telecom - Terminations | 3d | 2026-04-23 | 2026-04-25 | QTS-1000190, QTS-1000210, QTS-1000220, QTS-1000240 |  |  |  |  | 101d | 0d | QTS-PHX3 DC1 - 6 day w/ Holidays | E2 Optics, LLC | Scott Masterson |  |  |
|  | 3 | **Data Hall 2100 (9MW)** |  | 2025-11-24 | 2026-05-20 |  |  |  |  |  |  |  |  |  |  |  |  |
|  | 3 | **Data Hall 2100** |  | 2025-12-08 | 2026-05-20 |  |  |  |  |  |  |  |  |  |  |  |  |
|  | 8 | **DH 2100 - TFO Scope Buildout (9MW)** |  | 2025-12-08 | 2026-05-20 |  |  |  |  |  |  |  |  |  |  |  |  |
|  | 1 | **2100 - TFO Scope Buildout (3MW) - Lineup A - B** |  | 2025-12-08 | 2026-05-20 |  |  |  |  |  |  |  |  |  |  |  |  |
| QTS - 1070 |  | TFO Scope // DH 2100 / Lineup A - B / Install HAC Support Steel | 5d | 2025-12-08 A | 2025-12-12 A | QTS - 1980, QTS - 9550 | 100% |  |  |  |  |  |  |  | Scott Masterson | 01ADMIN |  |
| QTS - 1080 |  | TFO Scope // DH 2100 / Lineup A - B / Install Stainless Steel Piping Hangers | 4d | 2025-12-15 A | 2025-12-18 A | QTS - 1070, QTS - 2240 | 100% |  |  |  |  |  |  |  | Dave Wiltberger | 01ADMIN |  |
| QTS - 1750 |  | TFO Scope // DH 2100 / Lineup A - B / Uncrate QCools with HACs | 1d | 2025-12-30 A | 2025-12-30 A | QTS - 2600, QTS - 1020, QTS-23561 | 100% |  |  |  |  |  |  |  | Dave Wiltberger | 01ADMIN | Changed Duration from 10 to 5 |
| QTS - 1220 |  | TFO Scope // DH 2100 / Lineup A - B / Raise HAC, QCool & Trays | 6d | 2025-12-31 A | 2026-01-05 A | QTS - 1080, QTS - 1750 | 100% |  | 2025-12-31 | 2026-01-09 |  |  |  |  | Dave Wiltberger |  |  |
|  | 1 | **TFO Bulletin #1 Pipe Redesign** |  | 2025-12-12 | 2026-01-14 |  |  |  |  |  |  |  |  |  |  |  |  |
| QTS - 24861 |  | TFO Bulletin #1 Released | 1d | 2025-12-12 A | 2025-12-12 A | QTS-1371 SS | 100% |  | 2025-12-15 | 2025-12-15 |  |  |  |  | Dave Wiltberger | 01ADMIN |  |
| QTS - 24871 |  | Layton Notifies QTS Stainless Steel Pipe Fabrication Was Complete TFO Bulletin #1 | 1d | 2025-12-15 A | 2025-12-15 A | QTS - 24861 | 100% |  |  |  |  |  |  |  | Dave Wiltberger | 01ADMIN |  |
| QTS - 24881 |  | Layton Notifies QTS Stainless Steel Pipe Install Will Be Completed In Per Design Change for TFO Bulletin #1 | 16d | 2025-12-16 A | 2026-01-14 | QTS - 24871 | 100% | 0d | 2025-12-16 | 2026-01-05 |  |  | QTS-PHX3 DC1 - 6 day w/ Holidays |  | Dave Wiltberger | 01ADMIN |  |
|  | 2 | **Remaining Scope** |  | 2026-01-05 | 2026-05-20 |  |  |  |  |  |  |  |  |  |  |  |  |
| QTS - 1150 |  | TFO Scope // DH 2100 / Lineup A - B / Install OH Trapeze - Screen Wall to CODs | 3d | 2026-01-05 A | 2026-01-14 | QTS - 1770 | 100% | 0d | 2025-12-08 | 2025-12-10 | 32d | 0d | QTS-PHX3 DC1 - 6 day w/ Holidays |  | Scott Masterson | 01ADMIN |  |
| QTS - 1790 |  | TFO Scope // DH 2100 / Lineup A - B / Install OH Trapeze - Screen Wall to RPPs | 3d | 2026-01-05 A | 2026-01-14 | QTS - 1150 SS | 100% | 0d | 2026-01-05 | 2026-01-07 | 32d | 8d | QTS-PHX3 DC1 - 6 day w/ Holidays |  | Scott Masterson | 01ADMIN |  |
| QTS - 24841 |  | TFO Scope // DH 2100 / Lineup A - B / Detail Ceiling Grid to QCools | 10d | 2026-01-14 | 2026-01-26 | QTS-101770 |  |  |  |  | 6d | 0d | QTS-PHX3 DC1 - 6 day w/ Holidays | Performance Contracting, Inc. | Scott Masterson | 01ADMIN |  |
| QTS - 24951 |  | TFO Scope // DH 2100 / Lineup A - B / Install Grid Hangers | 5d | 2026-01-14 | 2026-01-20 | QTS-101770 |  |  |  |  | 58d | 0d | QTS-PHX3 DC1 - 6 day w/ Holidays | Performance Contracting, Inc. | Scott Masterson |  |  |
| QTS - 1730 |  | TFO Scope // DH 2100 / Lineup A - B / Hang Stainless Steel 6" Fan Wall - QCool - North | 4d | 2026-01-21 A | 2026-01-24 A | QTS - 24881, QTS - 1080, QTS - 2590, QTS - 2610 | 100% |  |  |  |  |  | QTS-PHX3 DC1 - 6 day w/ Holidays | Bel-Aire Mechanical, LLC | Dave Wiltberger | 01ADMIN |  |
| QTS - 24921 |  | TFO Scope // DH 2100 / Lineup A - B / Hang Stainless Steel 6" Fan Wall - QCool - South | 4d | 2026-01-21 A | 2026-01-24 A | QTS - 1730 SS | 100% |  |  |  |  |  | QTS-PHX3 DC1 - 6 day w/ Holidays | Bel-Aire Mechanical, LLC | Dave Wiltberger | 01ADMIN |  |
| QTS - 24961 |  | TFO Scope // DH 2100 / Lineup A - B / Install Telecom Trays Tier # 1 - Grid | 10d | 2026-01-21 | 2026-01-31 | QTS - 24951 |  |  |  |  | 68d | 0d | QTS-PHX3 DC1 - 6 day w/ Holidays |  | Scott Masterson |  |  |
| QTS - 1200 |  | TFO Scope // DH 2100 / Lineup A - B / Pull MC Feeders - CODs to RPPs | 3d | 2026-01-24 | 2026-01-27 | QTS - 24851, QTS - 1150, QTS - 1790 |  |  |  |  | 24d | 0d | QTS-PHX3 DC1 - 6 day w/ Holidays |  | Scott Masterson |  |  |
| QTS - 24971 |  | TFO Scope // DH 2100 / Lineup A - B / Install Telecom Trays Tier # 2 - Grid | 10d | 2026-01-26 | 2026-02-05 | QTS - 24961 FF+4d |  |  |  |  | 68d | 0d | QTS-PHX3 DC1 - 6 day w/ Holidays |  | Scott Masterson |  |  |
| QTS - 1250 |  | TFO Scope // DH 2100 / Lineup A - B / Set RPP # 12 Units | 5d | 2026-01-27 | 2026-01-31 | QTS-23171, QTS - 1220, QTS - 1030 |  |  |  |  | 11d | 0d | QTS-PHX3 DC1 - 6 day w/ Holidays |  | Scott Masterson |  |  |
| QTS - 1780 |  | TFO Scope // DH 2100 / Lineup A - B / Install QCool Arms | 5d | 2026-01-27 | 2026-01-31 | QTS - 24841, QTS - 1070, QTS - 1750 |  |  |  |  | 34d | 0d | QTS-PHX3 DC1 - 6 day w/ Holidays |  | Scott Masterson |  |  |
| QTS - 24891 |  | TFO Scope // DH 2100 / Lineup A - B / Terminate MC Feeder at CODs | 10d | 2026-01-28 | 2026-02-07 | QTS - 1200 |  |  |  |  | 24d | 0d | QTS-PHX3 DC1 - 6 day w/ Holidays |  | Scott Masterson |  |  |
| QTS - 24981 |  | TFO Scope // DH 2100 / Lineup A - B / Install Telecom Trays Tier # 3 - Grid | 10d | 2026-01-30 | 2026-02-10 | QTS - 24971 FF+4d |  |  |  |  | 68d | 34d | QTS-PHX3 DC1 - 6 day w/ Holidays |  | Scott Masterson |  |  |
| QTS - 1090 |  | TFO Scope // DH 2100 / Lineup A - B / Install Telecom Trays Tier # 5 - QCool | 10d | 2026-02-02 | 2026-02-12 | QTS - 1780, QTS - 1220, QTS - 1750, QTS - 1020 |  |  |  |  | 34d | 0d | QTS-PHX3 DC1 - 6 day w/ Holidays |  | Scott Masterson |  |  |
| QTS - 1280 |  | TFO Scope // DH 2100 / Lineup A - B / Rough-In I&C | 10d | 2026-02-02 | 2026-02-12 | QTS - 1170, QTS - 1250 |  |  |  |  | 39d | 0d | QTS-PHX3 DC1 - 6 day w/ Holidays |  | Scott Masterson |  |  |
| QTS - 1290 |  | TFO Scope // DH 2100 / Lineup A - B / Terminate MC Feeder at RPPs | 10d | 2026-02-02 | 2026-02-12 | QTS - 1250, QTS - 1200 FF+3d |  |  |  |  | 21d | 0d | QTS-PHX3 DC1 - 6 day w/ Holidays |  | Scott Masterson |  | Added Set RPP Pred |
| QTS - 2810 |  | TFO Scope // DH 2100 / Lineup A - B / Install Telecom Trays Tier # 4 - QCool | 10d | 2026-02-06 | 2026-02-17 | QTS - 1090 FF+4d, QTS - 1220 |  |  |  |  | 34d | 0d | QTS-PHX3 DC1 - 6 day w/ Holidays |  | Scott Masterson |  |  |
| QTS - 2820 |  | TFO Scope // DH 2100 / Lineup A - B / Install Telecom Trays Tier # 3 - QCool | 10d | 2026-02-11 | 2026-02-21 | QTS - 2810 FF+4d |  |  |  |  | 34d | 0d | QTS-PHX3 DC1 - 6 day w/ Holidays |  | Scott Masterson |  |  |
| QTS - 1300 |  | TFO Scope // DH 2100 / Lineup A - B / Install Fire Alarm & Security | 7d | 2026-02-13 | 2026-02-20 | QTS - 1280 |  |  |  |  | 39d | 0d | QTS-PHX3 DC1 - 6 day w/ Holidays |  | Scott Masterson |  |  |
| QTS - 3580 |  | TFO Scope // DH 2100 / Lineup A - B / Install Power Tray Tier # 2 - QCool | 10d | 2026-02-17 | 2026-02-27 | QTS - 2820 SS+5d, QTS - 2820 FF+5d, QTS - 1220 |  |  |  |  | 52d | 0d | QTS-PHX3 DC1 - 6 day w/ Holidays |  | Scott Masterson |  |  |
| QTS - 1320 |  | TFO Scope // DH 2100 / Lineup A - B / Terminate I&C | 5d | 2026-02-21 | 2026-02-26 | QTS - 1300, QTS - 1280, QTS - 1270, QTS - 2620 |  |  |  |  | 39d | 0d | QTS-PHX3 DC1 - 6 day w/ Holidays |  | Scott Masterson |  |  |
| QTS - 1260 |  | TFO Scope // DH 2100 / Lineup A - B / Pull LV Wire | 14d | 2026-02-23 | 2026-03-10 | QTS - 1220, QTS - 2820 |  |  |  |  | 34d | 0d | QTS-PHX3 DC1 - 6 day w/ Holidays |  | Scott Masterson |  |  |
| QTS - 3590 |  | TFO Scope // DH 2100 / Lineup A - B / Install Power Tray Tier # 1 - QCool | 10d | 2026-02-23 | 2026-03-05 | QTS - 3580 SS+5d, QTS - 3580 FF+5d |  |  |  |  | 52d | 47d | QTS-PHX3 DC1 - 6 day w/ Holidays |  | Scott Masterson |  |  |
| QTS - 1350 |  | TFO Scope // DH 2100 / Lineup A - B / Terminate - BMS & EPMS Connections | 7d | 2026-02-27 | 2026-03-06 | QTS - 1340, QTS - 1320 |  |  |  |  | 49d |  | QTS-PHX3 DC1 - 6 day w/ Holidays |  | Scott Masterson |  |  |
| QTS - 1310 |  | TFO Scope // DH 2100 / Lineup A - B / Terminate LV | 10d | 2026-03-11 | 2026-03-21 | QTS - 1260 |  |  |  |  | 34d | 0d | QTS-PHX3 DC1 - 6 day w/ Holidays |  | Scott Masterson |  |  |
| QTS - 1330 |  | TFO Scope // DH 2100 / Lineup A - B / Clean Walk & PEI - Electrical & Controls | 2d | 2026-03-23 | 2026-03-24 | QTS - 24981, QTS - 1290, QTS - 1320, QTS - 1310, QTS - 1300 |  |  |  |  | 34d |  | QTS-PHX3 DC1 - 6 day w/ Holidays |  | Scott Masterson |  |  |
| QTS - 10310 |  | TFO Scope // DH 2100 / Lineup A - B / Pull RPP Whips - RPP to Racks | 15d | 2026-04-30 | 2026-05-16 | QTS - 24791, QTS - 3580, QTS - 3590 |  |  |  |  | 5d | 0d | QTS-PHX3 DC1 - 6 day w/ Holidays |  | Scott Masterson |  |  |
| QTS - 3620 |  | TFO Scope // DH 2100 / Lineup A - B / Terminate Whips at RPP | 10d | 2026-05-09 | 2026-05-20 | QTS - 10310 FF+3d |  |  |  |  | 5d | 0d | QTS-PHX3 DC1 - 6 day w/ Holidays |  | Scott Masterson |  |  |

Notes:
- QTS - 24861: allucent_notes_20251230_164549: David Wiltberger on 2025-12-30 16:28: bulletin 1 impact / allucent_notes: 2025-12-30 16:28 - User: David Wiltberger - Date Added: 2025-12-30 16:28 - Note: bulletin 1 impact
- QTS - 24871: allucent_notes_20251230_164549: David Wiltberger on 2025-12-30 16:28: bulletin 1 impact / allucent_notes: 2025-12-30 16:28 - User: David Wiltberger - Date Added: 2025-12-30 16:28 - Note: bulletin 1 impact
- QTS - 24881: allucent_notes_20251230_164549: David Wiltberger on 2025-12-30 16:28: bulletin 1 impact / allucent_notes: 2025-12-30 16:28 - User: David Wiltberger - Date Added: 2025-12-30 16:28 - Note: bulletin 1 impact
- QTS - 1150: allucent_notes_20251230_164549: David Wiltberger on 2025-12-30 16:28: no update / allucent_notes: 2025-12-30 16:28 - User: David Wiltberger - Date Added: 2025-12-30 16:28 - Note: no update
- QTS - 1790: allucent_notes_20251230_164549: Jason Johnston on 2025-12-09 20:32: Need update from team / Scott Masterson on 2025-12-16 16:35: Need to actualize dates for this install. RFI answer for use of MC cable vs conduit. MC procurment is set at 6 weeks at this time. / Jason Johnston on 2025-12-30 16:43: No update / allucent_notes_20251209_203830: Jason Johnston on 2025-12-09 20:32: Need update from team / allucent_notes_20251216_165335: Jason Johnston on 2025-12-09 20:32: Need update from team / Scott Masterson on 2025-12-16 16:35: Need to actualize dates for this install. RFI answer for use of MC cable vs conduit. MC procurment is set at 6 weeks at this time. / allucent_notes: 2025-12-09 20:32 - User: Jason Johnston - Date Added: 2025-12-09 20:32 - Note: Need update from team / 2025-12-16 16:35 - User: Scott Masterson - Date Added: 2025-12-16 16:35 - Note: Need to actualize dates for this install. RFI answer for use of MC cab
- QTS - 1730: Notes: 1/13/26 Delivery of matieral to site delayed until 1/21 / allucent_notes_20251230_164549: David Wiltberger on 2025-12-30 16:28: bulletin 1 impact / allucent_notes: 2025-12-30 16:28 - User: David Wiltberger - Date Added: 2025-12-30 16:28 - Note: bulletin 1 impact
- QTS - 24921: allucent_notes_20251230_164549: David Wiltberger on 2025-12-30 16:28: bulletin 1 impact / allucent_notes: 2025-12-30 16:28 - User: David Wiltberger - Date Added: 2025-12-30 16:28 - Note: bulletin 1 impact

| ID | WBS | Activity | Duration | Start | Finish | Predecessors | Complete | Remaining | Planned start | Planned finish | Total float | Free float | Calendar | Layton Responsible Party | Allucent CSI Group | Subcontractor | Notes |
| --- | --- | --- | --- | --- | --- | --- | --- | --- | --- | --- | --- | --- | --- | --- | --- | --- | --- |
|  | 3 | **2100 - TFO Scope Buildout (3MW) - Lineup C - D** |  | 2025-12-15 | 2026-05-20 |  |  |  |  |  |  |  |  |  |  |  |  |
| QTS - 2840 |  | TFO Scope // DH 2100 / Lineup C - D / Install HAC Support Steel | 5d | 2025-12-15 A | 2025-12-19 A | QTS - 1070, QTS - 1980 | 100% |  |  |  |  |  |  | Scott Masterson | 01ADMIN |  |  |
| QTS - 2850 |  | TFO Scope // DH 2100 / Lineup C - D / Install Stainless Steel Piping Hangers | 4d | 2025-12-22 A | 2025-12-30 A | QTS - 2840, QTS - 1080 | 100% |  |  |  |  |  |  | Dave Wiltberger | 01ADMIN | Bel-Aire Mechanical, LLC |  |
| QTS - 2890 |  | TFO Scope // DH 2100 / Lineup C - D / Uncrate QCools with HACs | 1d | 2026-01-05 A | 2026-01-05 A | QTS - 1750 SS+5d, QTS - 2600, QTS - 1020 | 100% |  |  |  |  |  |  | Dave Wiltberger |  |  | Changed Duration from 10 to 5 |
| QTS - 2950 |  | TFO Scope // DH 2100 / Lineup C - D / Raise HAC, QCool & Trays | 6d | 2026-01-06 A | 2026-01-07 A | QTS - 2850, QTS - 2890 | 100% |  | 2026-01-06 | 2026-01-12 |  |  | QTS-PHX3 DC1 - 6 day w/ Holidays | Dave Wiltberger |  |  |  |
| QTS - 2920 |  | TFO Scope // DH 2100 / Lineup C - D / Install OH Trapeze - Screen Wall to RPPs | 3d | 2026-01-14 | 2026-01-16 | QTS - 2940 SS |  |  |  |  | 34d | 8d | QTS-PHX3 DC1 - 6 day w/ Holidays | Scott Masterson | 01ADMIN |  |  |
| QTS - 2940 |  | TFO Scope // DH 2100 / Lineup C - D / Install OH Trapeze - Screen Wall to CODs | 3d | 2026-01-14 | 2026-01-16 | QTS - 1150 |  |  |  |  | 34d | 0d | QTS-PHX3 DC1 - 6 day w/ Holidays | Scott Masterson | 01ADMIN |  |  |
| QTS - 24991 |  | TFO Scope // DH 2100 / Lineup C - D / Install Grid Hangers | 5d | 2026-01-21 | 2026-01-26 | QTS - 24951 |  |  |  |  | 58d | 0d | QTS-PHX3 DC1 - 6 day w/ Holidays | Scott Masterson |  |  |  |
| QTS - 24931 |  | TFO Scope // DH 2100 / Lineup C - D / Hang Stainless Steel 6" Fan Wall - QCool - South | 4d | 2026-01-26 A | 2026-01-17 | QTS - 2880 SS |  | 4d | 2026-01-26 | 2026-01-29 | 56d | 13d | QTS-PHX3 DC1 - 6 day w/ Holidays | Dave Wiltberger | 01ADMIN | Bel-Aire Mechanical, LLC |  |
| QTS - 2880 |  | TFO Scope // DH 2100 / Lineup C - D / Hang Stainless Steel 6" Fan Wall - QCool - North | 4d | 2026-01-26 A | 2026-01-29 A | QTS - 2850, QTS - 2590, QTS - 1730, QTS - 2610 | 100% |  |  |  |  |  | QTS-PHX3 DC1 - 6 day w/ Holidays | Dave Wiltberger | 01ADMIN | Bel-Aire Mechanical, LLC |  |
| QTS - 24901 |  | TFO Scope // DH 2100 / Lineup C - D / Detail Ceiling Grid to QCools | 10d | 2026-01-27 | 2026-02-06 | QTS - 24841 |  |  |  |  | 6d | 0d | QTS-PHX3 DC1 - 6 day w/ Holidays | Scott Masterson | 01ADMIN | Performance Contracting, Inc. |  |
| QTS - 25001 |  | TFO Scope // DH 2100 / Lineup C - D / Install Telecom Trays Tier # 1 - Grid | 10d | 2026-01-27 | 2026-02-06 | QTS - 24991 |  |  |  |  | 63d | 0d | QTS-PHX3 DC1 - 6 day w/ Holidays | Scott Masterson |  |  |  |
| QTS - 2990 |  | TFO Scope // DH 2100 / Lineup C - D / Pull MC Feeders - CODs to RPPs | 3d | 2026-01-28 | 2026-01-30 | QTS - 1200, QTS - 2920, QTS - 2940 |  |  |  |  | 26d | 0d | QTS-PHX3 DC1 - 6 day w/ Holidays | Scott Masterson |  |  |  |
| QTS - 25011 |  | TFO Scope // DH 2100 / Lineup C - D / Install Telecom Trays Tier # 2 - Grid | 10d | 2026-01-31 | 2026-02-11 | QTS - 25001 FF+4d |  |  |  |  | 63d | 0d | QTS-PHX3 DC1 - 6 day w/ Holidays | Scott Masterson |  |  |  |
| QTS - 2960 |  | TFO Scope // DH 2100 / Lineup C - D / Set RPP # 12 Units | 5d | 2026-02-02 | 2026-02-06 | QTS - 1250, QTS - 2950, QTS - 1030 |  |  |  |  | 11d | 0d | QTS-PHX3 DC1 - 6 day w/ Holidays | Scott Masterson |  |  |  |
| QTS - 25021 |  | TFO Scope // DH 2100 / Lineup C - D / Install Telecom Trays Tier # 3 - Grid | 10d | 2026-02-05 | 2026-02-16 | QTS - 25011 FF+4d |  |  |  |  | 63d | 39d | QTS-PHX3 DC1 - 6 day w/ Holidays | Scott Masterson |  |  |  |
| QTS - 2860 |  | TFO Scope // DH 2100 / Lineup C - D / Install QCool Arms | 5d | 2026-02-07 | 2026-02-12 | QTS - 24901, QTS - 2840, QTS - 2890 |  |  |  |  | 24d | 0d | QTS-PHX3 DC1 - 6 day w/ Holidays | Scott Masterson |  |  |  |
| QTS - 2980 |  | TFO Scope // DH 2100 / Lineup C - D / Rough-In I&C | 10d | 2026-02-07 | 2026-02-18 | QTS - 2960, QTS - 3310 |  |  |  |  | 39d | 0d | QTS-PHX3 DC1 - 6 day w/ Holidays | Scott Masterson |  |  |  |
| QTS - 3030 |  | TFO Scope // DH 2100 / Lineup C - D / Terminate Feeder at RPPs and CODs | 10d | 2026-02-07 | 2026-02-18 | QTS - 2960, QTS - 2990 FF+3d |  |  |  |  | 16d | 0d | QTS-PHX3 DC1 - 6 day w/ Holidays | Scott Masterson |  |  | Added Set RPP Pred |
| QTS - 2900 |  | TFO Scope // DH 2100 / Lineup C - D / Install Telecom Trays Tier # 5 | 10d | 2026-02-13 | 2026-02-24 | QTS - 2860, QTS - 2950, QTS - 2890, QTS - 1020 |  |  |  |  | 24d | 0d | QTS-PHX3 DC1 - 6 day w/ Holidays | Scott Masterson |  |  |  |
| QTS - 2910 |  | TFO Scope // DH 2100 / Lineup C - D / Install Telecom Trays Tier # 4 | 10d | 2026-02-18 | 2026-02-28 | QTS - 2900 SS+4d, QTS - 2900 FF+4d, QTS - 2950 |  |  |  |  | 24d | 0d | QTS-PHX3 DC1 - 6 day w/ Holidays | Scott Masterson |  |  |  |
| QTS - 3000 |  | TFO Scope // DH 2100 / Lineup C - D / Install Fire Alarm & Security | 7d | 2026-02-19 | 2026-02-26 | QTS - 2980 |  |  |  |  | 39d | 0d | QTS-PHX3 DC1 - 6 day w/ Holidays | Scott Masterson |  |  |  |
| QTS - 2930 |  | TFO Scope // DH 2100 / Lineup C - D / Install Telecom Trays Tier # 3 | 10d | 2026-02-23 | 2026-03-05 | QTS - 2910 SS+4d, QTS - 2910 FF+4d |  |  |  |  | 24d | 0d | QTS-PHX3 DC1 - 6 day w/ Holidays | Scott Masterson |  |  |  |
| QTS - 3020 |  | TFO Scope // DH 2100 / Lineup C - D / Terminate I&C | 5d | 2026-02-27 | 2026-03-04 | QTS - 3000, QTS - 2980, QTS - 1270, QTS - 1320 |  |  |  |  | 39d | 0d | QTS-PHX3 DC1 - 6 day w/ Holidays | Scott Masterson |  |  |  |
| QTS - 3560 |  | TFO Scope // DH 2100 / Lineup C - D / Install Power Tray Tier # 2 | 10d | 2026-02-27 | 2026-03-10 | QTS - 2930 SS+4d, QTS - 2930 FF+4d, QTS - 2950 |  |  |  |  | 44d | 0d | QTS-PHX3 DC1 - 6 day w/ Holidays | Scott Masterson |  |  |  |
| QTS - 3570 |  | TFO Scope // DH 2100 / Lineup C - D / Install Power Tray Tier # 1 | 10d | 2026-03-04 | 2026-03-14 | QTS - 3560 SS+4d, QTS - 3560 FF+4d |  |  |  |  | 44d | 39d | QTS-PHX3 DC1 - 6 day w/ Holidays | Scott Masterson |  |  |  |
| QTS - 3040 |  | TFO Scope // DH 2100 / Lineup C - D / Terminate - BMS & EPMS Connections | 7d | 2026-03-05 | 2026-03-12 | QTS - 3020 |  |  |  |  | 44d |  | QTS-PHX3 DC1 - 6 day w/ Holidays | Scott Masterson |  |  |  |
| QTS - 2970 |  | TFO Scope // DH 2100 / Lineup C - D / Pull LV Wire | 14d | 2026-03-06 | 2026-03-21 | QTS - 2950, QTS - 2930 |  |  |  |  | 24d | 0d | QTS-PHX3 DC1 - 6 day w/ Holidays | Scott Masterson |  |  |  |
| QTS - 3010 |  | TFO Scope // DH 2100 / Lineup C - D / Terminate LV | 10d | 2026-03-23 | 2026-04-02 | QTS - 2970 |  |  |  |  | 24d | 0d | QTS-PHX3 DC1 - 6 day w/ Holidays | Scott Masterson |  |  |  |
| QTS - 3050 |  | TFO Scope // DH 2100 / Lineup C - D / Clean Walk & PEI - Electrical & Controls | 2d | 2026-04-03 | 2026-04-04 | QTS - 25021, QTS - 3030, QTS - 3020, QTS - 3010, QTS - 3000 |  |  |  |  | 24d |  | QTS-PHX3 DC1 - 6 day w/ Holidays | Scott Masterson |  |  |  |
| QTS - 10330 |  | TFO Scope // DH 2100 / Lineup C - D / Pull RPP Whips - RPP to Racks | 15d | 2026-04-30 | 2026-05-16 | QTS - 24791, QTS - 3560, QTS - 3570 |  |  |  |  | 5d | 0d | QTS-PHX3 DC1 - 6 day w/ Holidays | Scott Masterson |  |  |  |
| QTS - 3610 |  | TFO Scope // DH 2100 / Lineup C - D / Terminate Whips at RPP | 10d | 2026-05-09 | 2026-05-20 | QTS - 10330 FF+3d |  |  |  |  | 5d | 0d | QTS-PHX3 DC1 - 6 day w/ Holidays | Scott Masterson |  |  |  |

| ID | WBS | Activity | Duration | Start | Finish | Predecessors | Complete | Planned start | Planned finish | Total float | Free float | Constraint | Calendar | Layton Responsible Party | Allucent CSI Group | Subcontractor | Notes |
| --- | --- | --- | --- | --- | --- | --- | --- | --- | --- | --- | --- | --- | --- | --- | --- | --- | --- |
|  | 2 | **2100 - TFO Scope Buildout (3MW) - Lineup E - F** |  | 2025-12-22 | 2026-05-20 |  |  |  |  |  |  |  |  |  |  |  |  |
| QTS - 3070 |  | TFO Scope // DH 2100 / Lineup E - F / Install HAC Support Steel | 5d | 2025-12-22 A | 2025-12-23 A | QTS - 2840, QTS - 1980 | 100% | 2025-12-22 | 2025-12-27 |  |  |  | QTS-PHX3 DC1 - 6 day w/ Holidays | Scott Masterson | 01ADMIN |  |  |
| QTS - 3080 |  | TFO Scope // DH 2100 / Lineup E - F / Install Stainless Steel Piping Hangers | 4d | 2026-01-07 A | 2026-01-10 A | QTS - 3070, QTS - 2850 | 100% |  |  |  |  |  | QTS-PHX3 DC1 - 6 day w/ Holidays | Dave Wiltberger | 01ADMIN |  |  |
| QTS - 3120 |  | TFO Scope // DH 2100 / Lineup E - F / Uncrate QCools with HACs | 1d | 2026-01-07 A | 2026-01-07 A | QTS - 2890, QTS - 2600, QTS - 1020 | 100% |  |  |  |  | start on or after 2026-01-07 | QTS-PHX3 DC1 - 6 day w/ Holidays | Dave Wiltberger |  |  |  |
| QTS - 3180 |  | TFO Scope // DH 2100 / Lineup E - F / Raise HAC, QCool & Trays | 2d | 2026-01-08 A | 2026-01-09 A | QTS - 3120 | 100% |  |  |  |  |  | QTS-PHX3 DC1 - 6 day w/ Holidays | Dave Wiltberger |  |  |  |
| QTS - 24941 |  | TFO Scope // DH 2100 / Lineup E - F / Hang Stainless Steel 6" Fan Wall - QCool - South | 4d | 2026-01-14 | 2026-01-17 | QTS - 3110 SS |  |  |  | 63d | 20d |  | QTS-PHX3 DC1 - 6 day w/ Holidays | Dave Wiltberger |  | Bel-Aire Mechanical, LLC |  |
| QTS - 3110 |  | TFO Scope // DH 2100 / Lineup E - F / Hang Stainless Steel 6" Fan Wall - QCool - North | 4d | 2026-01-14 | 2026-01-17 | QTS - 3080, QTS - 2590, QTS - 1100, QTS - 2880, QTS - 2610 |  |  |  | 63d | 0d |  | QTS-PHX3 DC1 - 6 day w/ Holidays | Dave Wiltberger |  | Bel-Aire Mechanical, LLC |  |
| QTS - 3150 |  | TFO Scope // DH 2100 / Lineup E - F / Install OH Trapeze - Screen Wall to RPPs | 3d | 2026-01-17 | 2026-01-21 | QTS - 3170 SS |  |  |  | 34d | 8d |  | QTS-PHX3 DC1 - 6 day w/ Holidays | Scott Masterson |  |  |  |
| QTS - 3170 |  | TFO Scope // DH 2100 / Lineup E - F / Install OH Trapeze - Screen Wall to CODs | 3d | 2026-01-17 | 2026-01-21 | QTS - 2940 |  |  |  | 34d | 0d |  | QTS-PHX3 DC1 - 6 day w/ Holidays | Scott Masterson |  |  |  |
| QTS - 25031 |  | TFO Scope // DH 2100 / Lineup E - F / Install Grid Hangers | 5d | 2026-01-27 | 2026-01-31 | QTS - 24991 |  |  |  | 58d | 0d |  | QTS-PHX3 DC1 - 6 day w/ Holidays | Scott Masterson |  |  |  |
| QTS - 3220 |  | TFO Scope // DH 2100 / Lineup E - F / Pull MC Feeders - CODs to RPPs | 3d | 2026-01-31 | 2026-02-03 | QTS - 2990, QTS - 3150, QTS - 3170 |  |  |  | 26d | 15d |  | QTS-PHX3 DC1 - 6 day w/ Holidays | Scott Masterson |  |  | Added MC and Removed RPP Set |
| QTS - 25041 |  | TFO Scope // DH 2100 / Lineup E - F / Install Telecom Trays Tier # 1 - Grid | 10d | 2026-02-02 | 2026-02-12 | QTS - 25031 |  |  |  | 58d | 0d |  | QTS-PHX3 DC1 - 6 day w/ Holidays | Scott Masterson |  |  |  |
| QTS - 25051 |  | TFO Scope // DH 2100 / Lineup E - F / Install Telecom Trays Tier # 2 - Grid | 10d | 2026-02-06 | 2026-02-17 | QTS - 25041 FF+4d |  |  |  | 58d | 0d |  | QTS-PHX3 DC1 - 6 day w/ Holidays | Scott Masterson |  |  |  |
| QTS - 24911 |  | TFO Scope // DH 2100 / Lineup E - F / Detail Ceiling Grid to QCools | 10d | 2026-02-07 | 2026-02-18 | QTS - 24901 |  |  |  | 6d | 0d |  | QTS-PHX3 DC1 - 6 day w/ Holidays | Scott Masterson | 01ADMIN | Performance Contracting, Inc. |  |
| QTS - 3190 |  | TFO Scope // DH 2100 / Lineup E - F / Set RPP # 12 Units | 5d | 2026-02-07 | 2026-02-12 | QTS - 2960, QTS - 3180, QTS - 1030 |  |  |  | 11d | 0d |  | QTS-PHX3 DC1 - 6 day w/ Holidays | Scott Masterson |  |  |  |
| QTS - 25061 |  | TFO Scope // DH 2100 / Lineup E - F / Install Telecom Trays Tier # 3 - Grid | 10d | 2026-02-11 | 2026-02-21 | QTS - 25051 FF+4d |  |  |  | 58d | 52d |  | QTS-PHX3 DC1 - 6 day w/ Holidays | Scott Masterson |  |  |  |
| QTS - 3210 |  | TFO Scope // DH 2100 / Lineup E - F / Rough-In I&C | 10d | 2026-02-13 | 2026-02-24 | QTS - 3190 |  |  |  | 39d | 0d |  | QTS-PHX3 DC1 - 6 day w/ Holidays | Scott Masterson |  |  |  |
| QTS - 3260 |  | TFO Scope // DH 2100 / Lineup E - F / Terminate Feeder at RPPs and CODs | 10d | 2026-02-13 | 2026-02-24 | QTS - 3190, QTS - 3220 FF+3d |  |  |  | 11d | 0d |  | QTS-PHX3 DC1 - 6 day w/ Holidays | Scott Masterson |  |  | Added Set RPP Pred |
| QTS - 3090 |  | TFO Scope // DH 2100 / Lineup E - F / Install Install QCool Arms | 5d | 2026-02-19 | 2026-02-24 | QTS - 24911, QTS - 3070, QTS - 3120 |  |  |  | 6d | 0d |  | QTS-PHX3 DC1 - 6 day w/ Holidays | Scott Masterson |  |  |  |
| QTS - 3130 |  | TFO Scope // DH 2100 / Lineup E - F / Install Telecom Trays Tier # 5 | 10d | 2026-02-25 | 2026-03-07 | QTS - 3090, QTS - 3180, QTS - 3120, QTS - 1020 |  |  |  | 6d | 0d |  | QTS-PHX3 DC1 - 6 day w/ Holidays | Scott Masterson |  |  |  |
| QTS - 3230 |  | TFO Scope // DH 2100 / Lineup E - F / Install Fire Alarm & Security | 7d | 2026-02-25 | 2026-03-04 | QTS - 3210 |  |  |  | 39d | 0d |  | QTS-PHX3 DC1 - 6 day w/ Holidays | Scott Masterson |  |  |  |
| QTS - 3140 |  | TFO Scope // DH 2100 / Lineup E - F / Install Telecom Trays Tier # 4 | 10d | 2026-03-02 | 2026-03-12 | QTS - 3130 SS+4d, QTS - 3130 FF+4d, QTS - 3180 |  |  |  | 6d | 0d |  | QTS-PHX3 DC1 - 6 day w/ Holidays | Scott Masterson |  |  |  |
| QTS - 3250 |  | TFO Scope // DH 2100 / Lineup E - F / Terminate I&C | 5d | 2026-03-05 | 2026-03-10 | QTS - 3230, QTS - 3210, QTS - 1270, QTS - 3020 |  |  |  | 39d | 14d |  | QTS-PHX3 DC1 - 6 day w/ Holidays | Scott Masterson |  |  |  |
| QTS - 3160 |  | TFO Scope // DH 2100 / Lineup E - F / Install Telecom Trays Tier # 3 | 10d | 2026-03-06 | 2026-03-17 | QTS - 3140 SS+4d, QTS - 3140 FF+4d |  |  |  | 6d | 0d |  | QTS-PHX3 DC1 - 6 day w/ Holidays | Scott Masterson |  |  |  |
| QTS - 3470 |  | TFO Scope // DH 2100 / Lineup E - F / Install Power Tray Tier # 2 | 10d | 2026-03-11 | 2026-03-21 | QTS - 3160 SS+4d, QTS - 3160 FF+4d, QTS - 3180 |  |  |  | 6d | 0d |  | QTS-PHX3 DC1 - 6 day w/ Holidays | Scott Masterson |  |  |  |
| QTS - 3480 |  | TFO Scope // DH 2100 / Lineup E - F / Install Power Tray Tier # 1 | 10d | 2026-03-16 | 2026-03-26 | QTS - 3470 SS+4d, QTS - 3470 FF+4d |  |  |  | 6d | 0d |  | QTS-PHX3 DC1 - 6 day w/ Holidays | Scott Masterson |  |  |  |
| QTS - 3200 |  | TFO Scope // DH 2100 / Lineup E - F / Pull LV Wire | 14d | 2026-03-27 | 2026-04-11 | QTS - 3180, QTS - 3160, QTS - 3470, QTS - 3480 |  |  |  | 6d | 0d |  | QTS-PHX3 DC1 - 6 day w/ Holidays | Scott Masterson |  |  |  |
| QTS - 3270 |  | TFO Scope // DH 2100 / Lineup E - F / Terminate - BMS & EPMS Connections | 7d | 2026-03-27 | 2026-04-03 | QTS - 3250, QTS - 3480 |  |  |  | 25d |  |  | QTS-PHX3 DC1 - 6 day w/ Holidays | Scott Masterson |  |  |  |
| QTS - 3240 |  | TFO Scope // DH 2100 / Lineup E - F / Terminate LV | 10d | 2026-04-13 | 2026-04-23 | QTS - 3200 |  |  |  | 6d | 0d |  | QTS-PHX3 DC1 - 6 day w/ Holidays | Scott Masterson |  |  |  |
| QTS - 3280 |  | TFO Scope // DH 2100 / Lineup E - F / Clean Walk & PEI - Electrical & Controls | 2d | 2026-04-24 | 2026-04-25 | QTS - 25061, QTS - 3260, QTS - 3250, QTS - 3240, QTS - 3230 |  |  |  | 6d |  |  | QTS-PHX3 DC1 - 6 day w/ Holidays | Scott Masterson |  |  |  |
| QTS - 10350 |  | TFO Scope // DH 2100 / Lineup E - F / Pull RPP Whips - RPP to Racks | 15d | 2026-04-30 | 2026-05-16 | QTS - 24791, QTS - 3470, QTS - 3480 |  |  |  | 5d | 0d |  | QTS-PHX3 DC1 - 6 day w/ Holidays | Scott Masterson |  |  |  |
| QTS - 10360 |  | TFO Scope // DH 2100 / Lineup E - F / Terminate Whips at RPP | 10d | 2026-05-09 | 2026-05-20 | QTS - 10350 FF+3d |  |  |  | 5d | 0d |  | QTS-PHX3 DC1 - 6 day w/ Holidays | Scott Masterson |  |  |  |

| ID | WBS | Activity | Duration | Start | Finish | Predecessors | Complete | Remaining | Planned start | Planned finish | Total float | Free float | Calendar | Layton Responsible Party | Allucent CSI Group |
| --- | --- | --- | --- | --- | --- | --- | --- | --- | --- | --- | --- | --- | --- | --- | --- |
|  | 2 | **Gallery 2101 Mechanical** |  | 2025-11-24 | 2026-03-09 |  |  |  |  |  |  |  |  |  |  |
|  | 9 | **TFO 2101 - CDU Mechanical Gallery** |  | 2025-11-24 | 2026-03-09 |  |  |  |  |  |  |  |  |  |  |
| QTS - 1770 |  | TFO Scope // DH 2100 - 2101 Mechanical Gallery / Install OH Technical Loop Hangers | 5d | 2025-11-24 A | 2025-12-05 A | QTS - 2240 | 100% |  | 2025-11-24 | 2025-12-02 |  |  |  |  |  |
| QTS - 1100 |  | TFO Scope // DH 2100 - 2101 Mechanical Gallery / Install OH 8" Technical Loop CDU Piping | 9d | 2025-12-08 A | 2026-01-14 | QTS - 1770, QTS - 2590, QTS - 2240 FF+5d, QTS - 2610 | 100% | 0d | 2025-12-08 | 2025-12-17 | 28d | 0d | QTS-PHX3 DC1 - 6 day w/ Holidays | Dave Wiltberger | 01ADMIN |
| QTS - 1170 |  | TFO Scope // DH 2100 - 2101 Mechanical Gallery / OFCI - L2 SET IN PLACE - CDU - 9 units | 3d | 2025-12-15 A | 2025-12-15 A | QTS - 1040, QTS - 1100 SS | 100% |  | 2025-12-15 | 2025-12-17 |  |  |  | Dave Wiltberger | 01ADMIN |
| QTS - 1230 |  | TFO Scope // DH 2100 - 2101 Mechanical Gallery / Pull Branches From MOD-03 to CDUs | 8d | 2026-01-14 | 2026-01-23 | QTS - 1170 |  |  |  |  | 28d | 0d | QTS-PHX3 DC1 - 6 day w/ Holidays | Scott Masterson | 01ADMIN |
| QTS - 1700 |  | TFO Scope // DH 2100 - 2101 Mechanical Gallery / Detail & Fabricate CDU Mechanical Connections | 10d | 2026-01-14 | 2026-01-26 | QTS - 1170, QTS - 1100 |  |  |  |  | 47d | 0d | QTS-PHX3 DC1 - 6 day w/ Holidays | Dave Wiltberger | 01ADMIN |
| QTS - 1270 |  | TFO Scope // DH 2100 - 2101 Mechanical Gallery / Terminate & Torque - CDU Connections | 5d | 2026-01-24 | 2026-01-29 | QTS - 1230, QTS - 1170 |  |  |  |  | 58d | 0d | QTS-PHX3 DC1 - 6 day w/ Holidays | Scott Masterson |  |
| QTS - 1180 |  | TFO Scope // DH 2100 - 2101 Mechanical Gallery / CDU Unit 4" Mechanical Connections Lineup - A - B | 7d | 2026-01-27 | 2026-02-03 | QTS - 1700, QTS - 1730, QTS - 1170 |  |  |  |  | 47d | 0d | QTS-PHX3 DC1 - 6 day w/ Holidays | Dave Wiltberger |  |
| QTS - 3430 |  | TFO Scope // DH 2100 - 2101 Mechanical Gallery / Clean Walk & PEI - Electrical | 2d | 2026-01-30 | 2026-01-31 | QTS - 1270 |  |  |  |  | 78d |  | QTS-PHX3 DC1 - 6 day w/ Holidays | Scott Masterson |  |
| QTS - 10160 |  | TFO Scope // DH 2100 - 2101 Mechanical Gallery / Install Telecom Conduit from MMR to IDF Cabinet | 10d | 2026-01-31 | 2026-02-11 | QTS-24371 |  |  |  |  | 57d | 0d | QTS-PHX3 DC1 - 6 day w/ Holidays | Scott Masterson |  |
| QTS - 1340 |  | TFO Scope // DH 2100 - 2101 Mechanical Gallery / Pull LV Main / IDF Cabinet to Basket Tray | 7d | 2026-01-31 | 2026-02-07 | QTS-24371 |  |  |  |  | 65d | 13d | QTS-PHX3 DC1 - 6 day w/ Holidays | Scott Masterson |  |
| QTS - 1210 |  | TFO Scope // DH 2100 - 2101 Mechanical Gallery / Fill & Flush Technical Loop A - B | 5d | 2026-02-04 | 2026-02-09 | QTS - 1180, QTS - 1730 |  |  |  |  | 57d | 0d | QTS-PHX3 DC1 - 6 day w/ Holidays | Dave Wiltberger |  |
| QTS - 1710 |  | TFO Scope // DH 2100 - 2101 Mechanical Gallery / CDU Unit 4" Mechanical Connections Lineup - C - D | 7d | 2026-02-04 | 2026-02-11 | QTS - 1180, QTS - 2880 |  |  |  |  | 47d | 0d | QTS-PHX3 DC1 - 6 day w/ Holidays | Dave Wiltberger |  |
| QTS - 1360 |  | TFO Scope // DH 2100 - 2101 Mechanical Gallery / Final Connection Tie-In to CDU Lineup - A - B | 5d | 2026-02-10 | 2026-02-14 | QTS - 1210 |  |  |  |  | 57d | 0d | QTS-PHX3 DC1 - 6 day w/ Holidays | Dave Wiltberger |  |
| QTS - 10170 |  | TFO Scope // DH 2100 - 2101 Mechanical Gallery / Pull Telecom Wire from MMR to IDF Cabinet | 10d | 2026-02-12 | 2026-02-23 | QTS - 10160 |  |  |  |  | 57d | 0d | QTS-PHX3 DC1 - 6 day w/ Holidays | Scott Masterson |  |
| QTS - 1720 |  | TFO Scope // DH 2100 - 2101 Mechanical Gallery / CDU Unit 4" Mechanical Connections Lineup - E - F | 7d | 2026-02-12 | 2026-02-19 | QTS - 1710, QTS - 3110 |  |  |  |  | 47d | 0d | QTS-PHX3 DC1 - 6 day w/ Holidays | Dave Wiltberger |  |
| QTS - 3650 |  | TFO Scope // DH 2100 - 2101 Mechanical Gallery / Fill & Flush Technical Loop C - D | 5d | 2026-02-12 | 2026-02-17 | QTS - 1710, QTS - 2880 |  |  |  |  | 50d | 0d | QTS-PHX3 DC1 - 6 day w/ Holidays | Dave Wiltberger |  |
| QTS - 3640 |  | TFO Scope // DH 2100 - 2101 Mechanical Gallery / Final Connection Tie-In to CDU Lineup - C - D | 5d | 2026-02-18 | 2026-02-23 | QTS - 3650 |  |  |  |  | 50d | 0d | QTS-PHX3 DC1 - 6 day w/ Holidays | Dave Wiltberger |  |
| QTS - 3670 |  | TFO Scope // DH 2100 - 2101 Mechanical Gallery / Fill & Flush Technical Loop E - F | 5d | 2026-02-20 | 2026-02-25 | QTS - 1720, QTS - 3110 |  |  |  |  | 47d | 0d | QTS-PHX3 DC1 - 6 day w/ Holidays | Dave Wiltberger |  |
| QTS - 10180 |  | TFO Scope // DH 2100 - 2101 Mechanical Gallery / Clean Walk & PEI - Controls | 2d | 2026-02-24 | 2026-02-25 | QTS - 10170 |  |  |  |  | 57d |  | QTS-PHX3 DC1 - 6 day w/ Holidays | Scott Masterson |  |
| QTS - 3440 |  | TFO Scope // DH 2100 - 2101 Mechanical Gallery / BMS & EPMS Terminations | 2d | 2026-02-24 | 2026-02-25 | QTS - 1340, QTS - 10170 |  |  |  |  | 57d |  | QTS-PHX3 DC1 - 6 day w/ Holidays | Scott Masterson |  |
| QTS - 3660 |  | TFO Scope // DH 2100 - 2101 Mechanical Gallery / Final Connection Tie-In to CDU Lineup - E - F | 5d | 2026-02-26 | 2026-03-03 | QTS - 3670 |  |  |  |  | 47d | 0d | QTS-PHX3 DC1 - 6 day w/ Holidays | Dave Wiltberger |  |
| QTS - 1240 |  | TFO Scope // DH 2100 - 2101 Mechanical Gallery / Clean Walk & PEI - Mechanical | 5d | 2026-03-04 | 2026-03-09 | QTS - 3640, QTS - 3660, QTS - 1360 |  |  |  |  | 47d |  | QTS-PHX3 DC1 - 6 day w/ Holidays | Dave Wiltberger |  |

Notes:
- QTS - 1100: allucent_notes_20251230_164549: David Wiltberger on 2025-12-30 16:29: bulletin 1 impact / allucent_notes: 2025-12-30 16:29 - User: David Wiltberger - Date Added: 2025-12-30 16:29 - Note: bulletin 1 impact

| ID | WBS | Activity | Duration | Start | Finish | Predecessors | Complete | Remaining | Planned start | Planned finish | Total float | Free float | Calendar | Layton Responsible Party | Allucent CSI Group | Notes | Subcontractor |
| --- | --- | --- | --- | --- | --- | --- | --- | --- | --- | --- | --- | --- | --- | --- | --- | --- | --- |
|  | 7 | **Gallery 2103 Mechanical** |  | 2025-12-12 | 2026-03-09 |  |  |  |  |  |  |  |  |  |  |  |  |
|  | 10 | **TFO 2103 - CDU Mechanical Gallery** |  | 2025-12-12 | 2026-03-09 |  |  |  |  |  |  |  |  |  |  |  |  |
| QTS - 3290 |  | TFO Scope // DH 2100 - 2103 Mechanical Gallery / Install OH Technical Loop Hangers | 5d | 2025-12-12 A | 2025-12-18 A | QTS - 2240, QTS - 1770 | 100% |  |  |  |  |  |  | Dave Wiltberger | 01ADMIN |  |  |
| QTS - 3310 |  | TFO Scope // DH 2100 - 2103 Mechanical Gallery / OFCI - L2 SET IN PLACE - CDU - 9 units | 3d | 2025-12-16 A | 2025-12-16 A | QTS - 1040 | 100% |  | 2025-12-16 | 2025-12-18 |  |  |  | Dave Wiltberger | 01ADMIN |  |  |
| QTS - 3320 |  | TFO Scope // DH 2100 - 2103 Mechanical Gallery / Pull Branches From MOD-03 to CDUs | 8d | 2026-01-14 | 2026-01-23 | QTS - 3310 |  |  |  |  | 28d | 0d | QTS-PHX3 DC1 - 6 day w/ Holidays | Scott Masterson |  |  |  |
| QTS - 3330 |  | TFO Scope // DH 2100 - 2103 Mechanical Gallery / Detail & Fabricate CDU Mechanical Connections | 10d | 2026-01-21 A | 2026-01-26 | QTS - 3310 |  | 10d | 2026-01-21 | 2026-01-31 | 43d | 0d | QTS-PHX3 DC1 - 6 day w/ Holidays | Dave Wiltberger |  |  |  |
| QTS - 3300 |  | TFO Scope // DH 2100 - 2103 Mechanical Gallery / Install OH 8" Technical Loop CDU Piping | 10d | 2026-01-23 A | 2026-01-26 | QTS - 3290, QTS - 2590, QTS - 2240, QTS - 2610 |  | 10d | 2026-01-23 | 2026-02-03 | 43d | 0d | QTS-PHX3 DC1 - 6 day w/ Holidays | Dave Wiltberger | 01ADMIN |  |  |
| QTS - 3370 |  | TFO Scope // DH 2100 - 2103 Mechanical Gallery / Terminate & Torque - CDU Connections | 5d | 2026-01-24 | 2026-01-29 | QTS - 3320, QTS - 3310 |  |  |  |  | 71d | 2d | QTS-PHX3 DC1 - 6 day w/ Holidays | Scott Masterson |  |  |  |
| QTS - 3400 |  | TFO Scope // DH 2100 - 2103 Mechanical Gallery / Pull LV Main / IDF Cabinet to Basket Tray | 7d | 2026-01-24 | 2026-01-31 | QTS-24801 |  |  |  |  | 74d | 0d | QTS-PHX3 DC1 - 6 day w/ Holidays | Scott Masterson |  |  |  |
| QTS - 3340 |  | TFO Scope // DH 2100 - 2103 Mechanical Gallery / CDU Unit 4" Mechanical Connections Lineup - A - B | 7d | 2026-01-27 | 2026-02-03 | QTS - 24921, QTS - 3330, QTS - 3300, QTS - 3310 |  |  |  |  | 43d | 0d | QTS-PHX3 DC1 - 6 day w/ Holidays | Dave Wiltberger |  |  |  |
| QTS - 3420 |  | TFO Scope // DH 2100 - 2103 Mechanical Gallery / BMS & EPMS Terminations | 2d | 2026-02-02 | 2026-02-03 | QTS - 3400, QTS - 3370 |  |  |  |  | 74d | 0d | QTS-PHX3 DC1 - 6 day w/ Holidays | Scott Masterson |  |  |  |
| QTS - 3350 |  | TFO Scope // DH 2100 - 2103 Mechanical Gallery / CDU Unit 4" Mechanical Connections Lineup - C - D | 7d | 2026-02-04 | 2026-02-11 | QTS - 24931, QTS - 3340 |  |  |  |  | 43d | 0d | QTS-PHX3 DC1 - 6 day w/ Holidays | Dave Wiltberger |  |  |  |
| QTS - 3380 |  | TFO Scope // DH 2100 - 2103 Mechanical Gallery / Fill & Flush Technical Loop A - B | 5d | 2026-02-04 | 2026-02-09 | QTS - 3340 |  |  |  |  | 57d | 0d | QTS-PHX3 DC1 - 6 day w/ Holidays | Dave Wiltberger |  |  |  |
| QTS - 3410 |  | TFO Scope // DH 2100 - 2103 Mechanical Gallery / Clean Walk & PEI - Electrical | 2d | 2026-02-04 | 2026-02-05 | QTS - 3370, QTS - 3420 |  |  |  |  | 74d |  | QTS-PHX3 DC1 - 6 day w/ Holidays | Scott Masterson |  |  |  |
| QTS - 3510 |  | TFO Scope // DH 2100 - 2103 Mechanical Gallery / Final Connection to CDU Lineup - A - B | 5d | 2026-02-10 | 2026-02-14 | QTS - 3380 |  |  |  |  | 57d | 0d | QTS-PHX3 DC1 - 6 day w/ Holidays | Dave Wiltberger |  |  |  |
| QTS - 3360 |  | TFO Scope // DH 2100 - 2103 Mechanical Gallery / CDU Unit 4" Mechanical Connections Lineup - E - F | 7d | 2026-02-12 | 2026-02-19 | QTS - 24941, QTS - 3350 |  |  |  |  | 43d | 0d | QTS-PHX3 DC1 - 6 day w/ Holidays | Dave Wiltberger |  |  |  |
| QTS - 3520 |  | TFO Scope // DH 2100 - 2103 Mechanical Gallery / Fill & Flush Technical Loop C - D | 5d | 2026-02-12 | 2026-02-17 | QTS - 24931, QTS - 3350 |  |  |  |  | 50d | 0d | QTS-PHX3 DC1 - 6 day w/ Holidays | Dave Wiltberger |  |  |  |
| QTS - 3530 |  | TFO Scope // DH 2100 - 2103 Mechanical Gallery / Final Connection to CDU Lineup - C - D | 5d | 2026-02-18 | 2026-02-23 | QTS - 3520 |  |  |  |  | 50d | 0d | QTS-PHX3 DC1 - 6 day w/ Holidays | Dave Wiltberger |  |  |  |
| QTS - 3550 |  | TFO Scope // DH 2100 - 2103 Mechanical Gallery / Fill & Flush Technical Loop E - F | 5d | 2026-02-20 | 2026-02-25 | QTS - 24941, QTS - 3360 |  |  |  |  | 43d | 0d | QTS-PHX3 DC1 - 6 day w/ Holidays | Dave Wiltberger |  |  |  |
| QTS - 3540 |  | TFO Scope // DH 2100 - 2103 Mechanical Gallery / Final Connection to CDU Lineup - E - F | 5d | 2026-02-26 | 2026-03-03 | QTS - 3550 |  |  |  |  | 43d | 0d | QTS-PHX3 DC1 - 6 day w/ Holidays | Dave Wiltberger |  |  |  |
| QTS - 3390 |  | TFO Scope // DH 2100 - 2103 Mechanical Gallery / Clean Walk & PEI - Mechanical | 5d | 2026-03-04 | 2026-03-09 | QTS - 3510, QTS - 3530, QTS - 3540 |  |  |  |  | 47d |  | QTS-PHX3 DC1 - 6 day w/ Holidays | Dave Wiltberger |  |  |  |
|  | 4 | **Data Hall 1100 (9MW)** |  | 2025-11-05 | 2026-04-01 |  |  |  |  |  |  |  |  |  |  |  |  |
|  | 3 | **Data Hall 1100** |  | 2025-11-05 | 2026-04-01 |  |  |  |  |  |  |  |  |  |  |  |  |
|  | 8 | **DH 1100 - TFO Scope Buildout (9MW)** |  | 2025-11-05 | 2026-04-01 |  |  |  |  |  |  |  |  |  |  |  |  |
|  | 1 | **1100 - TFO Scope Buildout (3MW) - Lineup A - B** |  | 2025-11-05 | 2026-03-20 |  |  |  |  |  |  |  |  |  |  |  |  |
| QTS - 3680 |  | TFO Scope // DH 1100 / Lineup A - B / Install HAC Support Steel | 4d | 2025-11-05 A | 2025-11-05 A | QTS - 1980 | 100% |  | 2025-11-05 | 2025-11-10 |  |  | **GLOBAL - 5 Day Workweek w/ Basic Holidays |  |  |  |  |
| QTS - 3690 |  | TFO Scope // DH 1100 / Lineup A - B / Install Stainless Steel Piping Hangers (North Half) | 4d | 2025-11-10 A | 2025-11-11 A | QTS - 3680 | 100% |  | 2025-11-10 | 2025-11-13 |  |  | **GLOBAL - 5 Day Workweek w/ Basic Holidays |  |  | North Half installed on 11/10. |  |
| QTS - 3690.1 |  | TFO Scope // DH 1100 / Lineup A - B / Install Stainless Steel Piping Hangers (South Half) | 2d | 2025-12-03 A | 2025-12-04 A | QTS - 3690 | 100% |  |  |  |  |  |  |  |  | South Half wainting on FP |  |
| QTS - 3840 |  | TFO Scope // DH 1100 / Lineup A - B / Stainless Steel 6" Fan Wall - QCool | 10d | 2025-12-10 A | 2026-01-26 | QTS - 3730 FF+2d, QTS - 2590, QTS - 4820 FF, QTS - 3690.1, QTS - 24731 | 20% | 8d | 2025-12-10 | 2025-12-20 | 25d | 13d | QTS-PHX3 DC1 - 6 day w/ Holidays | Dave Wiltberger |  |  |  |
| QTS - 3740 |  | TFO Scope // DH 1100 / Lineup A - B / Install OH Trapeze - Screen Wall to RPPs | 14d | 2025-12-26 A | 2026-01-05 A | QTS - 3890 SS | 100% |  | 2025-12-29 | 2026-01-20 |  |  |  | Scott Masterson | 01ADMIN | Changed from Conduit to Tray |  |
| QTS - 3890 |  | TFO Scope // DH 1100 / Lineup A - B / Install OH Trapeze - Screen Wall to CODs | 10d | 2025-12-26 A | 2026-01-05 A | QTS - 3850 | 100% |  | 2025-12-30 | 2026-01-14 |  |  |  | Scott Masterson | 01ADMIN | Changed from Conduit to Tray |  |
| QTS - 3730 |  | TFO Scope // DH 1100 / Lineup A - B / Raise HAC & QCool | 5d | 2025-12-29 A | 2026-01-02 A | QTS - 3850, QTS - 3690.1 | 100% |  | 2025-12-29 | 2026-01-06 |  |  |  | Dave Wiltberger |  |  |  |
| QTS - 3850 |  | TFO Scope // DH 1100 / Lineup A - B / Uncrate QCools with HACs | 1d | 2025-12-29 A | 2025-12-29 A | QTS - 2600, QTS - 1020 | 100% |  |  |  |  |  |  | Dave Wiltberger | 01ADMIN | Changed Duration from 10 to 5 |  |
| QTS - 24831 |  | TFO Scope // DH 1100 / Lineup A - B / Detail Ceiling Grid to QCools | 10d | 2026-01-05 A | 2026-01-14 | QTS - 3730 | 100% | 0d | 2026-01-05 | 2026-01-15 | 27d | 0d | QTS-PHX3 DC1 - 6 day w/ Holidays | Scott Masterson | 01ADMIN |  | Rosendin Electric, Inc |
| QTS - 3760 |  | TFO Scope // DH 1100 / Lineup A - B / Pull MC Feeders - CODs to RPPs | 12d | 2026-01-14 | 2026-01-28 | QTS - 3740, QTS - 3890 |  |  |  |  | 43d | 9d | QTS-PHX3 DC1 - 6 day w/ Holidays | Scott Masterson |  |  |  |
| QTS - 3860 |  | TFO Scope // DH 1100 / Lineup A - B / Install QCool Arms | 5d | 2026-01-14 | 2026-01-20 | QTS - 24831, QTS-14081, QTS - 3680, QTS - 3850 |  |  |  |  | 27d | 0d | QTS-PHX3 DC1 - 6 day w/ Holidays | Scott Masterson | 01ADMIN |  |  |
| QTS - 25071 |  | TFO Scope // DH 1100 / Lineup A - B / Install Grid Hangers | 5d | 2026-01-21 | 2026-01-26 | QTS-14081, QTS - 3860 |  |  |  |  | 53d | 0d | QTS-PHX3 DC1 - 6 day w/ Holidays | Scott Masterson |  |  |  |
| QTS - 3710 |  | TFO Scope // DH 1100 / Lineup A - B / Install Telecom Trays Tier # 5 | 10d | 2026-01-21 | 2026-01-31 | QTS - 3860, QTS - 3730, QTS - 3850, QTS - 1020 |  |  |  |  | 37d | 0d | QTS-PHX3 DC1 - 6 day w/ Holidays | Scott Masterson |  |  |  |
| QTS - 3720 |  | TFO Scope // DH 1100 / Lineup A - B / Set RPP # 12 Units | 5d | 2026-01-26 | 2026-01-30 | QTS-13321, QTS - 3730 |  |  |  |  | 8d | 0d | QTS-PHX3 DC1 - 6 day w/ Holidays | Scott Masterson |  |  |  |
| QTS - 3870 |  | TFO Scope // DH 1100 / Lineup A - B / Install Telecom Trays Tier # 4 | 10d | 2026-01-26 | 2026-02-05 | QTS - 3710 SS+4d, QTS - 3730, QTS - 3710 FF+4d |  |  |  |  | 37d | 0d | QTS-PHX3 DC1 - 6 day w/ Holidays | Scott Masterson |  |  |  |
| QTS - 25081 |  | TFO Scope // DH 1100 / Lineup A - B / Install Telecom Trays Tier # 1 - Grid | 10d | 2026-01-27 | 2026-02-06 | QTS - 25071 |  |  |  |  | 63d | 0d | QTS-PHX3 DC1 - 6 day w/ Holidays | Scott Masterson |  |  |  |
| QTS - 3880 |  | TFO Scope // DH 1100 / Lineup A - B / Install Telecom Trays Tier # 3 | 10d | 2026-01-30 | 2026-02-10 | QTS - 3870 SS+4d, QTS - 3870 FF+4d |  |  |  |  | 37d | 0d | QTS-PHX3 DC1 - 6 day w/ Holidays | Scott Masterson |  |  |  |
| QTS - 25091 |  | TFO Scope // DH 1100 / Lineup A - B / Install Telecom Trays Tier # 2 - Grid | 10d | 2026-01-31 | 2026-02-11 | QTS - 25081 FF+4d |  |  |  |  | 63d | 0d | QTS-PHX3 DC1 - 6 day w/ Holidays | Scott Masterson |  |  |  |
| QTS - 3780 |  | TFO Scope // DH 1100 / Lineup A - B / Terminate Feeder at RPPs and CODs | 10d | 2026-01-31 | 2026-02-11 | QTS - 3720, QTS - 3760 FF+3d |  |  |  |  | 34d | 0d | QTS-PHX3 DC1 - 6 day w/ Holidays | Scott Masterson |  |  |  |
| QTS - 4430 |  | TFO Scope // DH 1100 / Lineup A - B / Install Power Tray Tier # 2 | 10d | 2026-02-04 | 2026-02-14 | QTS - 3880 SS+4d, QTS - 3880 FF+4d, QTS - 3730 |  |  |  |  | 37d | 0d | QTS-PHX3 DC1 - 6 day w/ Holidays | Scott Masterson |  |  |  |
| QTS - 25101 |  | TFO Scope // DH 1100 / Lineup A - B / Install Telecom Trays Tier # 3 - Grid | 10d | 2026-02-05 | 2026-02-16 | QTS - 25091 FF+4d |  |  |  |  | 63d | 26d | QTS-PHX3 DC1 - 6 day w/ Holidays | Scott Masterson |  |  |  |
| QTS - 3790 |  | TFO Scope // DH 1100 / Lineup A - B / Pull I&C | 10d | 2026-02-06 | 2026-02-17 | QTS - 3870, QTS - 3720 |  |  |  |  | 38d | 0d | QTS-PHX3 DC1 - 6 day w/ Holidays | Scott Masterson |  |  |  |
| QTS - 4440 |  | TFO Scope // DH 1100 / Lineup A - B / Install Power Tray Tier # 1 | 10d | 2026-02-09 | 2026-02-19 | QTS - 4430 SS+4d, QTS - 4430 FF+4d |  |  |  |  | 37d | 0d | QTS-PHX3 DC1 - 6 day w/ Holidays | Scott Masterson |  |  |  |
| QTS - 3800 |  | TFO Scope // DH 1100 / Lineup A - B / Install Fire Alarm & Security | 7d | 2026-02-18 | 2026-02-25 | QTS - 3790 |  |  |  |  | 38d | 0d | QTS-PHX3 DC1 - 6 day w/ Holidays | Scott Masterson |  |  |  |
| QTS - 10370 |  | TFO Scope // DH 1100 / Lineup A - B / Pull RPP Whips - RPP to Racks | 15d | 2026-02-20 | 2026-03-09 | QTS - 4430, QTS - 4440 |  |  |  |  | 65d | 0d | QTS-PHX3 DC1 - 6 day w/ Holidays | Scott Masterson |  |  |  |
| QTS - 3750 |  | TFO Scope // DH 1100 / Lineup A - B / Pull LV Wire | 13d | 2026-02-20 | 2026-03-06 | QTS - 3730, QTS - 3880, QTS - 4430, QTS - 4440 |  |  |  |  | 37d | 0d | QTS-PHX3 DC1 - 6 day w/ Holidays | Scott Masterson |  |  |  |
| QTS - 3810 |  | TFO Scope // DH 1100 / Lineup A - B / Terminate I&C | 5d | 2026-02-26 | 2026-03-03 | QTS - 3800, QTS - 3790, QTS - 4810, QTS - 2620 |  |  |  |  | 38d | 0d | QTS-PHX3 DC1 - 6 day w/ Holidays | Scott Masterson |  |  |  |
| QTS - 10380 |  | TFO Scope // DH 1100 / Lineup A - B / Terminate Whips at RPP | 10d | 2026-03-02 | 2026-03-12 | QTS - 10370 FF+3d |  |  |  |  | 65d | 48d | QTS-PHX3 DC1 - 6 day w/ Holidays | Scott Masterson |  |  |  |
| QTS - 3820 |  | TFO Scope // DH 1100 / Lineup A - B / Terminate - BMS & EPMS Connections | 7d | 2026-03-04 | 2026-03-11 | QTS - 3810, QTS - 4800 |  |  |  |  | 38d | 0d | QTS-PHX3 DC1 - 6 day w/ Holidays | Scott Masterson |  |  |  |
| QTS - 3770 |  | TFO Scope // DH 1100 / Lineup A - B / Terminate LV | 10d | 2026-03-07 | 2026-03-18 | QTS - 3750 |  |  |  |  | 37d | 0d | QTS-PHX3 DC1 - 6 day w/ Holidays | Scott Masterson |  |  |  |
| QTS - 3830 |  | TFO Scope // DH 1100 / Lineup A - B / Clean Walk & PEI - Electrical & Controls | 2d | 2026-03-19 | 2026-03-20 | QTS - 25101, QTS - 3780, QTS - 3810, QTS - 3770, QTS - 3800 |  |  |  |  | 37d | 36d | QTS-PHX3 DC1 - 6 day w/ Holidays | Scott Masterson |  |  |  |

Notes:
- QTS - 3290: allucent_notes_20251230_164549: David Wiltberger on 2025-12-09 16:02: adjust to hang Qcools in 1100 / allucent_notes_20251209_203830: David Wiltberger on 2025-12-09 16:02: adjust to hang Qcools in 1100 / allucent_notes_20251216_165335: David Wiltberger on 2025-12-09 16:02: adjust to hang Qcools in 1100 / allucent_notes: 2025-12-09 16:02 - User: David Wiltberger - Date Added: 2025-12-09 16:02 - Note: adjust to hang Qcools in 1100
- QTS - 3300: allucent_notes_20251230_164549: David Wiltberger on 2025-12-30 16:29: bulletin 1 impact / allucent_notes: 2025-12-30 16:29 - User: David Wiltberger - Date Added: 2025-12-30 16:29 - Note: bulletin 1 impact
- QTS - 3740: allucent_notes_20251230_164549: David Wiltberger on 2025-12-30 16:30: no update / allucent_notes: 2025-12-30 16:30 - User: David Wiltberger - Date Added: 2025-12-30 16:30 - Note: no update

| ID | WBS | Activity | Duration | Start | Finish | Predecessors | Total float | Free float | Calendar | Layton Responsible Party | Allucent CSI Group | Notes |
| --- | --- | --- | --- | --- | --- | --- | --- | --- | --- | --- | --- | --- |
|  | 2 | **1100 - TFO Scope Buildout (3MW) - Lineup C - D** |  | 2026-01-14 | 2026-03-26 |  |  |  |  |  |  |  |
| QTS - 15040 |  | TFO Scope // DH 1100 / Lineup C - D / Install OH Trapeze - Screen Wall to CODs | 3d | 2026-01-14 | 2026-01-16 | QTS - 3740 | 37d | 0d | QTS-PHX3 DC1 - 6 day w/ Holidays | Scott Masterson | 01ADMIN |  |
| QTS - 15050 |  | TFO Scope // DH 1100 / Lineup C - D / Install OH Trapeze - Screen Wall to RPPs | 3d | 2026-01-14 | 2026-01-16 | QTS - 15040 SS | 37d | 0d | QTS-PHX3 DC1 - 6 day w/ Holidays | Scott Masterson | 01ADMIN |  |
| QTS - 15150 |  | TFO Scope // DH 1100 / Lineup C - D / Pull MC Feeders - CODs to RPPs | 12d | 2026-01-17 | 2026-01-31 | QTS - 15050, QTS - 15040 | 40d | 0d | QTS-PHX3 DC1 - 6 day w/ Holidays | Scott Masterson |  |  |
| QTS - 15190 |  | TFO Scope // DH 1100 / Lineup C - D / Set RPP # 12 Units | 5d | 2026-01-17 | 2026-01-23 | QTS - 15050 | 40d | 0d | QTS-PHX3 DC1 - 6 day w/ Holidays | Scott Masterson |  |  |
| QTS - 15130 |  | TFO Scope // DH 1100 / Lineup C - D / Install QCool Arms | 5d | 2026-01-21 | 2026-01-26 | QTS - 3860 | 27d | 0d | QTS-PHX3 DC1 - 6 day w/ Holidays | Scott Masterson |  |  |
| QTS - 15180 |  | TFO Scope // DH 1100 / Lineup C - D / Rough-In I&C | 10d | 2026-01-24 | 2026-02-04 | QTS - 15190 | 56d | 0d | QTS-PHX3 DC1 - 6 day w/ Holidays | Scott Masterson |  |  |
| QTS - 15230 |  | TFO Scope // DH 1100 / Lineup C - D / Terminate Feeder at RPPs and CODs | 10d | 2026-01-24 | 2026-02-04 | QTS - 15190, QTS - 15150 FF+3d | 40d | 0d | QTS-PHX3 DC1 - 6 day w/ Holidays | Scott Masterson |  | Added Set RPP Pred |
| QTS - 15100 |  | TFO Scope // DH 1100 / Lineup C - D / Install Telecom Trays Tier # 5 | 10d | 2026-01-27 | 2026-02-06 | QTS - 15130, QTS - 3690.1 | 32d | 0d | QTS-PHX3 DC1 - 6 day w/ Holidays | Scott Masterson |  |  |
| QTS - 25111 |  | TFO Scope // DH 1100 / Lineup C - D / Install Grid Hangers | 5d | 2026-01-27 | 2026-01-31 | QTS - 25071 | 53d | 0d | QTS-PHX3 DC1 - 6 day w/ Holidays | Scott Masterson |  |  |
| QTS - 15110 |  | TFO Scope // DH 1100 / Lineup C - D / Install Telecom Trays Tier # 4 | 10d | 2026-01-31 | 2026-02-11 | QTS - 15100 SS+4d, QTS - 15100 FF+4d, QTS - 3690.1 | 32d | 0d | QTS-PHX3 DC1 - 6 day w/ Holidays | Scott Masterson |  |  |
| QTS - 25121 |  | TFO Scope // DH 1100 / Lineup C - D / Install Telecom Trays Tier # 1 - Grid | 10d | 2026-02-02 | 2026-02-12 | QTS - 25111 | 58d | 0d | QTS-PHX3 DC1 - 6 day w/ Holidays | Scott Masterson |  |  |
| QTS - 15020 |  | TFO Scope // DH 1100 / Lineup C - D / Install Fire Alarm & Security | 7d | 2026-02-05 | 2026-02-12 | QTS - 15180 | 56d | 0d | QTS-PHX3 DC1 - 6 day w/ Holidays | Scott Masterson |  |  |
| QTS - 15120 |  | TFO Scope // DH 1100 / Lineup C - D / Install Telecom Trays Tier # 3 | 10d | 2026-02-05 | 2026-02-16 | QTS - 15110 SS+4d, QTS - 15110 FF+4d | 32d | 0d | QTS-PHX3 DC1 - 6 day w/ Holidays | Scott Masterson |  |  |
| QTS - 25131 |  | TFO Scope // DH 1100 / Lineup C - D / Install Telecom Trays Tier # 2 - Grid | 10d | 2026-02-06 | 2026-02-17 | QTS - 25121 FF+4d | 58d | 0d | QTS-PHX3 DC1 - 6 day w/ Holidays | Scott Masterson |  |  |
| QTS - 15070 |  | TFO Scope // DH 1100 / Lineup C - D / Install Power Tray Tier # 2 | 10d | 2026-02-10 | 2026-02-20 | QTS - 15120 SS+4d, QTS - 15120 FF+4d, QTS - 3690.1 | 32d | 0d | QTS-PHX3 DC1 - 6 day w/ Holidays | Scott Masterson |  |  |
| QTS - 25141 |  | TFO Scope // DH 1100 / Lineup C - D / Install Telecom Trays Tier # 3 - Grid | 10d | 2026-02-11 | 2026-02-21 | QTS - 25131 FF+4d | 58d | 26d | QTS-PHX3 DC1 - 6 day w/ Holidays | Scott Masterson |  |  |
| QTS - 15240 |  | TFO Scope // DH 1100 / Lineup C - D / Terminate I&C | 5d | 2026-02-13 | 2026-02-18 | QTS - 15020, QTS - 15180 | 56d | 18d | QTS-PHX3 DC1 - 6 day w/ Holidays | Scott Masterson |  |  |
| QTS - 15080 |  | TFO Scope // DH 1100 / Lineup C - D / Install Power Tray Tier # 1 | 10d | 2026-02-14 | 2026-02-25 | QTS - 15070 SS+4d, QTS - 15070 FF+4d | 32d | 0d | QTS-PHX3 DC1 - 6 day w/ Holidays | Scott Masterson |  |  |
| QTS - 15000 |  | TFO Scope // DH 1100 / Lineup C - D / Build HACs | 5d | 2026-02-21 | 2026-02-26 | QTS-17521 | 8d | 0d | QTS-PHX3 DC1 - 6 day w/ Holidays | Sean Waisner |  | Changed Duration from 10 to 5 |
| QTS - 15140 |  | TFO Scope // DH 1100 / Lineup C - D / Pull RPP Whips - RPP to Racks | 15d | 2026-02-26 | 2026-03-14 | QTS - 15070, QTS - 15080 | 60d | 0d | QTS-PHX3 DC1 - 6 day w/ Holidays | Scott Masterson |  |  |
| QTS - 15160 |  | TFO Scope // DH 1100 / Lineup C - D / Pull LV Wire | 13d | 2026-02-26 | 2026-03-12 | QTS - 15120, QTS - 15070, QTS - 15080, QTS - 3690.1 | 32d | 0d | QTS-PHX3 DC1 - 6 day w/ Holidays | Scott Masterson |  |  |
| QTS - 15220 |  | TFO Scope // DH 1100 / Lineup C - D / Terminate Whips at RPP | 10d | 2026-03-07 | 2026-03-18 | QTS - 15140 FF+3d | 60d | 43d | QTS-PHX3 DC1 - 6 day w/ Holidays | Scott Masterson |  |  |
| QTS - 15210 |  | TFO Scope // DH 1100 / Lineup C - D / Terminate - BMS & EPMS Connections | 7d | 2026-03-12 | 2026-03-19 | QTS - 15240, QTS - 3820 | 38d |  | QTS-PHX3 DC1 - 6 day w/ Holidays | Scott Masterson |  |  |
| QTS - 15250 |  | TFO Scope // DH 1100 / Lineup C - D / Terminate LV | 10d | 2026-03-13 | 2026-03-24 | QTS - 15160 | 32d | 0d | QTS-PHX3 DC1 - 6 day w/ Holidays | Scott Masterson |  |  |
| QTS - 15010 |  | TFO Scope // DH 1100 / Lineup C - D / Clean Walk & PEI - Electrical & Controls | 2d | 2026-03-25 | 2026-03-26 | QTS - 25141, QTS - 15230, QTS - 15240, QTS - 15250, QTS - 15020 | 32d | 31d | QTS-PHX3 DC1 - 6 day w/ Holidays | Scott Masterson |  |  |

| ID | WBS | Activity | Duration | Start | Finish | Predecessors | Total float | Free float | Calendar | Layton Responsible Party | Notes |
| --- | --- | --- | --- | --- | --- | --- | --- | --- | --- | --- | --- |
|  | 3 | **1100 - TFO Scope Buildout (3MW) - Lineup E - F** |  | 2026-01-17 | 2026-04-01 |  |  |  |  |  |  |
| QTS - 24501 |  | TFO Scope // DH 1100 / Lineup E - F / Install OH Trapeze - Screen Wall to CODs | 3d | 2026-01-17 | 2026-01-21 | QTS - 15050 | 37d | 0d | QTS-PHX3 DC1 - 6 day w/ Holidays | Scott Masterson |  |
| QTS - 24511 |  | TFO Scope // DH 1100 / Lineup E - F / Install OH Trapeze - Screen Wall to RPPs | 3d | 2026-01-17 | 2026-01-21 | QTS - 24501 SS | 37d | 0d | QTS-PHX3 DC1 - 6 day w/ Holidays | Scott Masterson |  |
| QTS - 24611 |  | TFO Scope // DH 1100 / Lineup E - F / Pull MC Feeders - CODs to RPPs | 12d | 2026-01-22 | 2026-02-04 | QTS - 24511, QTS - 24501 | 37d | 0d | QTS-PHX3 DC1 - 6 day w/ Holidays | Scott Masterson | Added MC and Removed RPP Set |
| QTS - 24651 |  | TFO Scope // DH 1100 / Lineup E - F / Set RPP # 12 Units | 5d | 2026-01-22 | 2026-01-27 | QTS - 24511, QTS - 3690.1 | 37d | 0d | QTS-PHX3 DC1 - 6 day w/ Holidays | Scott Masterson |  |
| QTS - 24591 |  | TFO Scope // DH 1100 / Lineup E - F / Install QCool Arms | 5d | 2026-01-27 | 2026-01-31 | QTS - 15130 | 27d | 0d | QTS-PHX3 DC1 - 6 day w/ Holidays | Scott Masterson |  |
| QTS - 24641 |  | TFO Scope // DH 1100 / Lineup E - F / Rough-In I&C | 10d | 2026-01-28 | 2026-02-07 | QTS - 24651 | 53d | 0d | QTS-PHX3 DC1 - 6 day w/ Holidays | Scott Masterson |  |
| QTS - 24691 |  | TFO Scope // DH 1100 / Lineup E - F / Terminate Feeder at RPPs and CODs | 10d | 2026-01-28 | 2026-02-07 | QTS - 24651, QTS - 24611 FF+3d | 37d | 0d | QTS-PHX3 DC1 - 6 day w/ Holidays | Scott Masterson | Added Set RPP Pred |
| QTS - 24561 |  | TFO Scope // DH 1100 / Lineup E - F / Install Telecom Trays Tier # 5 | 10d | 2026-02-02 | 2026-02-12 | QTS - 24591, QTS - 3690.1 | 27d | 0d | QTS-PHX3 DC1 - 6 day w/ Holidays | Scott Masterson |  |
| QTS - 25151 |  | TFO Scope // DH 1100 / Lineup E - F / Install Grid Hangers | 5d | 2026-02-02 | 2026-02-06 | QTS - 25111 | 53d | 0d | QTS-PHX3 DC1 - 6 day w/ Holidays | Scott Masterson |  |
| QTS - 24571 |  | TFO Scope // DH 1100 / Lineup E - F / Install Telecom Trays Tier # 4 | 10d | 2026-02-06 | 2026-02-17 | QTS - 24561 SS+4d, QTS - 24561 FF+4d, QTS - 3690.1 | 27d | 0d | QTS-PHX3 DC1 - 6 day w/ Holidays | Scott Masterson |  |
| QTS - 25161 |  | TFO Scope // DH 1100 / Lineup E - F / Install Telecom Trays Tier # 1 - Grid | 10d | 2026-02-07 | 2026-02-18 | QTS - 25151 | 53d | 0d | QTS-PHX3 DC1 - 6 day w/ Holidays | Scott Masterson |  |
| QTS - 24481 |  | TFO Scope // DH 1100 / Lineup E - F / Install Fire Alarm & Security | 7d | 2026-02-09 | 2026-02-16 | QTS - 24641 | 53d | 0d | QTS-PHX3 DC1 - 6 day w/ Holidays | Scott Masterson |  |
| QTS - 24581 |  | TFO Scope // DH 1100 / Lineup E - F / Install Telecom Trays Tier # 3 | 10d | 2026-02-11 | 2026-02-21 | QTS - 24571 SS+4d, QTS - 24571 FF+4d | 27d | 0d | QTS-PHX3 DC1 - 6 day w/ Holidays | Scott Masterson |  |
| QTS - 25171 |  | TFO Scope // DH 1100 / Lineup E - F / Install Telecom Trays Tier # 2 - Grid | 10d | 2026-02-12 | 2026-02-23 | QTS - 25161 FF+4d | 53d | 0d | QTS-PHX3 DC1 - 6 day w/ Holidays | Scott Masterson |  |
| QTS - 24531 |  | TFO Scope // DH 1100 / Lineup E - F / Install Power Tray Tier # 2 | 10d | 2026-02-16 | 2026-02-26 | QTS - 24581 SS+4d, QTS - 24581 FF+4d, QTS - 3690.1 | 27d | 0d | QTS-PHX3 DC1 - 6 day w/ Holidays | Scott Masterson |  |
| QTS - 24701 |  | TFO Scope // DH 1100 / Lineup E - F / Terminate I&C | 5d | 2026-02-17 | 2026-02-21 | QTS - 24481, QTS - 24641 | 53d | 0d | QTS-PHX3 DC1 - 6 day w/ Holidays | Scott Masterson |  |
| QTS - 25181 |  | TFO Scope // DH 1100 / Lineup E - F / Install Telecom Trays Tier # 3 - Grid | 10d | 2026-02-17 | 2026-02-27 | QTS - 25171 FF+4d | 53d | 26d | QTS-PHX3 DC1 - 6 day w/ Holidays | Scott Masterson |  |
| QTS - 24541 |  | TFO Scope // DH 1100 / Lineup E - F / Install Power Tray Tier # 1 | 10d | 2026-02-20 | 2026-03-03 | QTS - 24531 SS+4d, QTS - 24531 FF+4d | 27d | 0d | QTS-PHX3 DC1 - 6 day w/ Holidays | Scott Masterson |  |
| QTS - 24671 |  | TFO Scope // DH 1100 / Lineup E - F / Terminate - BMS & EPMS Connections | 7d | 2026-02-23 | 2026-03-02 | QTS - 24701 | 53d |  | QTS-PHX3 DC1 - 6 day w/ Holidays | Scott Masterson |  |
| QTS - 24461 |  | TFO Scope // DH 1100 / Lineup E - F / Build HACs | 5d | 2026-02-27 | 2026-03-04 | QTS - 15000 | 18d | 0d | QTS-PHX3 DC1 - 6 day w/ Holidays | Sean Waisner | Changed Duration from 10 to 5 |
| QTS - 24601 |  | TFO Scope // DH 1100 / Lineup E - F / Pull RPP Whips - RPP to Racks | 15d | 2026-03-04 | 2026-03-20 | QTS - 24531, QTS - 24541 | 55d | 0d | QTS-PHX3 DC1 - 6 day w/ Holidays | Scott Masterson |  |
| QTS - 24621 |  | TFO Scope // DH 1100 / Lineup E - F / Pull LV Wire | 13d | 2026-03-04 | 2026-03-18 | QTS - 24581, QTS - 24531, QTS - 24541, QTS - 3690.1 | 27d | 0d | QTS-PHX3 DC1 - 6 day w/ Holidays | Scott Masterson |  |
| QTS - 24681 |  | TFO Scope // DH 1100 / Lineup E - F / Terminate Whips at RPP | 10d | 2026-03-13 | 2026-03-24 | QTS - 24601 FF+3d | 55d | 38d | QTS-PHX3 DC1 - 6 day w/ Holidays | Scott Masterson |  |
| QTS - 24711 |  | TFO Scope // DH 1100 / Lineup E - F / Terminate LV | 10d | 2026-03-19 | 2026-03-30 | QTS - 24621 | 27d | 0d | QTS-PHX3 DC1 - 6 day w/ Holidays | Scott Masterson |  |
| QTS - 24471 |  | TFO Scope // DH 1100 / Lineup E - F / Clean Walk & PEI - Electrical & Controls | 2d | 2026-03-31 | 2026-04-01 | QTS - 25181, QTS - 24691, QTS - 24701, QTS - 24711, QTS - 24481 | 27d | 26d | QTS-PHX3 DC1 - 6 day w/ Holidays | Scott Masterson |  |

| ID | WBS | Activity | Duration | Start | Finish | Predecessors | Complete | Planned start | Planned finish | Total float | Free float | Constraint | Calendar | Layton Responsible Party | Allucent CSI Group | Notes |
| --- | --- | --- | --- | --- | --- | --- | --- | --- | --- | --- | --- | --- | --- | --- | --- | --- |
|  | 2 | **Gallery 1101 Mechanical** |  | 2025-12-04 | 2026-03-07 |  |  |  |  |  |  |  |  |  |  |  |
|  | 9 | **TFO 1101 - CDU Mechanical Gallery** |  | 2025-12-04 | 2026-03-07 |  |  |  |  |  |  |  |  |  |  |  |
| QTS - 4900 |  | TFO Scope // DH 1100 - 1101 Mechanical Gallery / Install OH Technical Loop Hangers | 5d | 2025-12-04 A | 2025-12-10 A | QTS - 2250 | 100% | 2025-12-03 | 2025-12-09 |  |  |  |  | Dave Wiltberger | 01ADMIN |  |
| QTS - 4820 |  | TFO Scope // DH 1100 - 1101 Mechanical Gallery / Install OH 8" Technical Loop CDU Piping | 10d | 2026-01-14 | 2026-01-26 | QTS - 4900, QTS - 2590, QTS - 2250, QTS - 24731 |  |  |  | 12d | 0d | start on or after 2026-01-12 | QTS-PHX3 DC1 - 6 day w/ Holidays | Dave Wiltberger | 01ADMIN |  |
| QTS - 4790 |  | TFO Scope // DH 1100 - 1101 Mechanical Gallery / OFCI - L2 SET IN PLACE - CDU - 3 units | 3d | 2026-01-27 | 2026-01-29 | QTS - 4820, QTS - 1040 |  |  |  | 12d | 0d |  | QTS-PHX3 DC1 - 6 day w/ Holidays | Dave Wiltberger |  |  |
| QTS - 4840 |  | TFO Scope // DH 1100 - 1101 Mechanical Gallery / Pull Branches From MOD-03 to CDUs | 8d | 2026-01-30 | 2026-02-07 | QTS - 4790 |  |  |  | 14d | 0d |  | QTS-PHX3 DC1 - 6 day w/ Holidays | Scott Masterson |  |  |
| QTS - 4870 |  | TFO Scope // DH 1100 - 1101 Mechanical Gallery / Detail & Fabricate CDU Mechanical Connections | 10d | 2026-01-30 | 2026-02-10 | QTS - 4790 |  |  |  | 12d | 0d |  | QTS-PHX3 DC1 - 6 day w/ Holidays | Dave Wiltberger |  |  |
| QTS - 4800 |  | TFO Scope // DH 1100 - 1101 Mechanical Gallery / Pull LV Main / IDF Cabinet to Basket Tray | 7d | 2026-02-06 | 2026-02-13 | QTS-16501 |  |  |  | 53d | 0d |  | QTS-PHX3 DC1 - 6 day w/ Holidays | Scott Masterson |  | Tied to QTS-16501 |
| QTS - 4810 |  | TFO Scope // DH 1100 - 1101 Mechanical Gallery / Terminate & Torque - CDU Connections | 5d | 2026-02-09 | 2026-02-13 | QTS - 4840, QTS - 4790 |  |  |  | 14d | 2d |  | QTS-PHX3 DC1 - 6 day w/ Holidays | Scott Masterson |  |  |
| QTS - 24721 |  | TFO Scope // DH 1100 - 1101 Mechanical Gallery / CDU Unit 4" Mechanical Connections Lineup - A - B | 7d | 2026-02-11 | 2026-02-18 | QTS - 4790, QTS - 4870 |  |  |  | 12d | 0d |  | QTS-PHX3 DC1 - 6 day w/ Holidays | Dave Wiltberger |  |  |
| QTS - 4920 |  | TFO Scope // DH 1100 - 1101 Mechanical Gallery / BMS & EPMS Terminations | 2d | 2026-02-14 | 2026-02-16 | QTS - 4800 |  |  |  | 63d | 0d |  | QTS-PHX3 DC1 - 6 day w/ Holidays | Scott Masterson |  |  |
| QTS - 4910 |  | TFO Scope // DH 1100 - 1101 Mechanical Gallery / Clean Walk & PEI - Electrical | 2d | 2026-02-17 | 2026-02-18 | QTS - 4810, QTS - 4920 |  |  |  | 63d | 62d |  | QTS-PHX3 DC1 - 6 day w/ Holidays | Scott Masterson |  |  |
| QTS - 4850 |  | TFO Scope // DH 1100 - 1101 Mechanical Gallery / Fill & Flush Technical Loop A - B | 5d | 2026-02-19 | 2026-02-24 | QTS - 3840, QTS - 24721 |  |  |  | 12d | 0d |  | QTS-PHX3 DC1 - 6 day w/ Holidays | Dave Wiltberger |  |  |
| QTS - 4930 |  | TFO Scope // DH 1100 - 1101 Mechanical Gallery / Final Connection Tie-In to CDU Lineup - A - B | 5d | 2026-02-25 | 2026-03-02 | QTS - 4850 |  |  |  | 12d | 0d |  | QTS-PHX3 DC1 - 6 day w/ Holidays | Dave Wiltberger |  |  |
| QTS - 4860 |  | TFO Scope // DH 1100 - 1101 Mechanical Gallery / Clean Walk & PEI - Mechanical | 5d | 2026-03-03 | 2026-03-07 | QTS - 4930 |  |  |  | 12d | 0d |  | QTS-PHX3 DC1 - 6 day w/ Holidays | Dave Wiltberger |  |  |
|  | 7 | **Gallery 1103 Mechanical** |  | 2025-12-11 | 2026-03-07 |  |  |  |  |  |  |  |  |  |  |  |
|  | 10 | **TFO 1103 - CDU Mechanical Gallery** |  | 2025-12-11 | 2026-03-07 |  |  |  |  |  |  |  |  |  |  |  |
| QTS - 4710 |  | TFO Scope // DH 1100 - 1103 Mechanical Gallery / Install OH Technical Loop Hangers | 5d | 2025-12-11 A | 2025-12-17 A | QTS - 2250, QTS - 4900 | 100% |  |  |  |  |  |  | Dave Wiltberger | 01ADMIN |  |
| QTS - 4630 |  | TFO Scope // DH 1100 - 1103 Mechanical Gallery / Install OH 8" Technical Loop CDU Piping | 10d | 2026-01-14 | 2026-01-26 | QTS - 4710, QTS - 2590, QTS - 2250, QTS - 24731 |  |  |  | 12d | 0d |  | QTS-PHX3 DC1 - 6 day w/ Holidays | Dave Wiltberger | 01ADMIN |  |
| QTS - 4610 |  | TFO Scope // DH 1100 - 1103 Mechanical Gallery / Pull LV Main / IDF Cabinet to Basket Tray | 7d | 2026-01-21 | 2026-01-28 | QTS-17071 |  |  |  | 77d | 14d |  | QTS-PHX3 DC1 - 6 day w/ Holidays | Scott Masterson |  |  |
| QTS - 4600 |  | TFO Scope // DH 1100 - 1103 Mechanical Gallery / OFCI - L2 SET IN PLACE - CDU - 3 units | 3d | 2026-01-27 | 2026-01-29 | QTS - 4630, QTS - 1040 |  |  |  | 12d | 0d |  | QTS-PHX3 DC1 - 6 day w/ Holidays | Dave Wiltberger |  |  |
| QTS - 4650 |  | TFO Scope // DH 1100 - 1103 Mechanical Gallery / Pull Branches From MOD-03 to CDUs | 8d | 2026-01-30 | 2026-02-07 | QTS - 4600 |  |  |  | 14d | 0d |  | QTS-PHX3 DC1 - 6 day w/ Holidays | Scott Masterson |  |  |
| QTS - 4680 |  | TFO Scope // DH 1100 - 1103 Mechanical Gallery / Detail & Fabricate CDU Mechanical Connections | 10d | 2026-01-30 | 2026-02-10 | QTS - 4600 |  |  |  | 12d | 0d |  | QTS-PHX3 DC1 - 6 day w/ Holidays | Dave Wiltberger |  |  |
| QTS - 4620 |  | TFO Scope // DH 1100 - 1103 Mechanical Gallery / Terminate & Torque - CDU Connections | 5d | 2026-02-09 | 2026-02-13 | QTS - 4650, QTS - 4600 |  |  |  | 14d | 0d |  | QTS-PHX3 DC1 - 6 day w/ Holidays | Scott Masterson |  |  |
| QTS - 4640 |  | TFO Scope // DH 1100 - 1103 Mechanical Gallery / CDU Unit 4" Mechanical Connections Lineup - A - B | 7d | 2026-02-11 | 2026-02-18 | QTS - 4680, QTS - 4630, QTS - 4600, QTS - 3840 |  |  |  | 12d | 0d |  | QTS-PHX3 DC1 - 6 day w/ Holidays | Dave Wiltberger |  |  |
| QTS - 4730 |  | TFO Scope // DH 1100 - 1103 Mechanical Gallery / BMS & EPMS Terminations | 2d | 2026-02-14 | 2026-02-16 | QTS - 4610, QTS - 4620 |  |  |  | 63d | 0d |  | QTS-PHX3 DC1 - 6 day w/ Holidays | Scott Masterson |  |  |
| QTS - 4720 |  | TFO Scope // DH 1100 - 1103 Mechanical Gallery / Clean Walk & PEI - Electrical | 2d | 2026-02-17 | 2026-02-18 | QTS - 4620, QTS - 4730 |  |  |  | 63d | 62d |  | QTS-PHX3 DC1 - 6 day w/ Holidays | Scott Masterson |  |  |
| QTS - 4660 |  | TFO Scope // DH 1100 - 1103 Mechanical Gallery / Fill & Flush Technical Loop A - B | 5d | 2026-02-19 | 2026-02-24 | QTS - 4640, QTS - 3840 |  |  |  | 12d | 0d |  | QTS-PHX3 DC1 - 6 day w/ Holidays | Dave Wiltberger |  |  |
| QTS - 4740 |  | TFO Scope // DH 1100 - 1103 Mechanical Gallery / Final Connection to CDU Lineup - A - B | 5d | 2026-02-25 | 2026-03-02 | QTS - 4660 |  |  |  | 12d | 0d |  | QTS-PHX3 DC1 - 6 day w/ Holidays | Dave Wiltberger |  |  |
| QTS - 4670 |  | TFO Scope // DH 1100 - 1103 Mechanical Gallery / Clean Walk & PEI - Mechanical | 5d | 2026-03-03 | 2026-03-07 | QTS - 4740 |  |  |  | 12d | 0d |  | QTS-PHX3 DC1 - 6 day w/ Holidays | Dave Wiltberger |  |  |

| ID | WBS | Activity | Duration | Start | Finish | Predecessors | Complete | Remaining | Planned start | Planned finish | Total float | Free float | Constraint | Calendar | Layton Responsible Party | Allucent CSI Group | Notes |
| --- | --- | --- | --- | --- | --- | --- | --- | --- | --- | --- | --- | --- | --- | --- | --- | --- | --- |
|  | 6 | **Data Hall 2200 (9MW)** |  | 2025-12-08 | 2026-05-15 |  |  |  |  |  |  |  |  |  |  |  |  |
|  | 3 | **Data Hall 2200** |  | 2025-12-08 | 2026-05-15 |  |  |  |  |  |  |  |  |  |  |  |  |
|  | 8 | **DH 2200 - TFO Scope Buildout (9MW)** |  | 2025-12-08 | 2026-05-15 |  |  |  |  |  |  |  |  |  |  |  |  |
|  | 1 | **2200 - TFO Scope Buildout (3MW) - Lineup A - B** |  | 2025-12-08 | 2026-05-15 |  |  |  |  |  |  |  |  |  |  |  |  |
| QTS - 4940 |  | TFO Scope // DH 2200 / Lineup A - B / Install HAC Support Steel | 5d | 2025-12-08 A | 2025-12-12 A | QTS - 1980, QTS - 3070 | 100% |  |  |  |  |  |  | QTS-PHX3 DC1 - 6 day w/ Holidays | Scott Masterson | 01ADMIN |  |
| QTS - 5260 |  | TFO Scope // DH 2200 / Lineup A - B / Hang Stainless Steel 6" Fan Wall - QCool | 9d | 2026-01-20 | 2026-01-29 | QTS - 4950, QTS - 2590, QTS - 24741 |  |  |  |  | 67d | 23d |  | QTS-PHX3 DC1 - 6 day w/ Holidays | Dave Wiltberger |  |  |
| QTS - 4950 |  | TFO Scope // DH 2200 / Lineup A - B / Install Stainless Steel Piping Hangers | 4d | 2026-01-21 A | 2026-01-17 | QTS - 4940 |  | 4d | 2026-01-21 | 2026-01-24 | 36d | 0d | start on or after 2026-01-12 | QTS-PHX3 DC1 - 6 day w/ Holidays | Dave Wiltberger |  |  |
| QTS - 5310 |  | TFO Scope // DH 2200 / Lineup A - B / Uncrate QCools with HACs | 1d | 2026-01-21 A | 2026-01-21 A | QTS - 7540, QTS - 1070, QTS - 1020 | 100% |  |  |  |  |  | start on or after 2026-01-10 | QTS-PHX3 DC1 - 6 day w/ Holidays | Dave Wiltberger |  |  |
| QTS - 4990 |  | TFO Scope // DH 2200 / Lineup A - B / Raise HAC, QCool & Trays | 3d | 2026-01-22 A | 2026-01-16 | QTS - 5310, QTS - 4940, QTS - 10190 |  | 3d | 2026-01-22 | 2026-01-24 | 50d | 30d |  | QTS-PHX3 DC1 - 6 day w/ Holidays | Dave Wiltberger |  |  |
| QTS - 5000 |  | TFO Scope // DH 2200 / Lineup A - B / Install OH Trapeze - Screen Wall to CODs | 3d | 2026-02-07 | 2026-02-10 | QTS-15751, QTS-4011, QTS-45841, QTS-45851 |  |  |  |  | 30d | 0d |  | QTS-PHX3 DC1 - 6 day w/ Holidays | Scott Masterson |  | Changed from Conduit to Tray |
| QTS - 5360 |  | TFO Scope // DH 2200 / Lineup A - B / Install OH Trapeze - Screen Wall to RPPs | 3d | 2026-02-07 | 2026-02-10 | QTS - 5000 SS |  |  |  |  | 43d | 0d |  | QTS-PHX3 DC1 - 6 day w/ Holidays | Scott Masterson |  | Changed from Conduit to Tray |
| QTS - 5020 |  | TFO Scope // DH 2200 / Lineup A - B / Pull MC Feeders - CODs to RPPs | 12d | 2026-02-11 | 2026-02-24 | QTS - 5000, QTS - 5360 |  |  |  |  | 43d | 10d |  | QTS-PHX3 DC1 - 6 day w/ Holidays | Scott Masterson |  | Added MC and Removed RPP Set |
| QTS - 25191 |  | TFO Scope // DH 2200 / Lineup A - B / Install Grid Hangers | 5d | 2026-02-23 | 2026-02-27 | QTS-1003070 |  |  |  |  | 51d | 0d |  | QTS-PHX3 DC1 - 6 day w/ Holidays | Scott Masterson |  |  |
| QTS - 4980 |  | TFO Scope // DH 2200 / Lineup A - B / Set RPP # 12 Units | 5d | 2026-02-23 | 2026-02-27 | QTS-1003070, QTS - 4990 |  |  |  |  | 23d | 0d |  | QTS-PHX3 DC1 - 6 day w/ Holidays | Scott Masterson |  | Tied to Raise QCool |
| QTS - 5330 |  | TFO Scope // DH 2200 / Lineup A - B / Install QCool Arms | 5d | 2026-02-23 | 2026-02-27 | QTS-1003070, QTS-14141, QTS - 4940, QTS - 5310 |  |  |  |  | 15d | 0d |  | QTS-PHX3 DC1 - 6 day w/ Holidays | Scott Masterson |  |  |
| QTS - 25201 |  | TFO Scope // DH 2200 / Lineup A - B / Install Telecom Trays Tier # 1 - Grid | 10d | 2026-02-28 | 2026-03-11 | QTS - 25191 |  |  |  |  | 61d | 0d |  | QTS-PHX3 DC1 - 6 day w/ Holidays | Scott Masterson |  |  |
| QTS - 4970 |  | TFO Scope // DH 2200 / Lineup A - B / Install Telecom Trays Tier # 5 | 10d | 2026-02-28 | 2026-03-11 | QTS - 5330, QTS - 4990, QTS - 5310, QTS - 1020 |  |  |  |  | 15d | 0d |  | QTS-PHX3 DC1 - 6 day w/ Holidays | Scott Masterson |  |  |
| QTS - 5040 |  | TFO Scope // DH 2200 / Lineup A - B / Terminate Feeder at RPPs and CODs | 10d | 2026-02-28 | 2026-03-11 | QTS - 4980, QTS - 5020 FF+3d |  |  |  |  | 33d | 0d |  | QTS-PHX3 DC1 - 6 day w/ Holidays | Scott Masterson |  | Added Set RPP Pred |
| QTS - 5050 |  | TFO Scope // DH 2200 / Lineup A - B / Rough-In I&C | 10d | 2026-02-28 | 2026-03-11 | QTS - 5070, QTS - 4980 |  |  |  |  | 42d | 0d |  | QTS-PHX3 DC1 - 6 day w/ Holidays | Scott Masterson |  |  |
| QTS - 25211 |  | TFO Scope // DH 2200 / Lineup A - B / Install Telecom Trays Tier # 2 - Grid | 10d | 2026-03-05 | 2026-03-16 | QTS - 25201 FF+4d |  |  |  |  | 61d | 0d |  | QTS-PHX3 DC1 - 6 day w/ Holidays | Scott Masterson |  |  |
| QTS - 25221 |  | TFO Scope // DH 2200 / Lineup A - B / Install Telecom Trays Tier # 3 - Grid | 10d | 2026-03-10 | 2026-03-20 | QTS - 25211 FF+4d |  |  |  |  | 61d | 46d |  | QTS-PHX3 DC1 - 6 day w/ Holidays | Scott Masterson |  |  |
| QTS - 5060 |  | TFO Scope // DH 2200 / Lineup A - B / Install Fire Alarm & Security | 7d | 2026-03-12 | 2026-03-19 | QTS - 5050, QTS - 4940, QTS - 10190 |  |  |  |  | 42d | 0d |  | QTS-PHX3 DC1 - 6 day w/ Holidays | Scott Masterson |  |  |
| QTS - 5340 |  | TFO Scope // DH 2200 / Lineup A - B / Install Telecom Trays Tier # 4 | 10d | 2026-03-12 | 2026-03-23 | QTS - 4970, QTS - 4990 |  |  |  |  | 15d | 0d |  | QTS-PHX3 DC1 - 6 day w/ Holidays | Scott Masterson |  |  |
| QTS - 5150 |  | TFO Scope // DH 2200 / Lineup A - B / Terminate I&C | 5d | 2026-03-20 | 2026-03-25 | QTS - 5060, QTS - 5050, QTS - 5090, QTS - 2620 |  |  |  |  | 42d | 0d |  | QTS-PHX3 DC1 - 6 day w/ Holidays | Scott Masterson |  |  |
| QTS - 5350 |  | TFO Scope // DH 2200 / Lineup A - B / Install Telecom Trays Tier # 3 | 10d | 2026-03-24 | 2026-04-03 | QTS - 5340 |  |  |  |  | 15d | 0d |  | QTS-PHX3 DC1 - 6 day w/ Holidays | Scott Masterson |  |  |
| QTS - 5160 |  | TFO Scope // DH 2200 / Lineup A - B / Terminate - BMS & EPMS Connections | 7d | 2026-03-26 | 2026-04-02 | QTS - 5080, QTS - 5150 |  |  |  |  | 52d | 38d |  | QTS-PHX3 DC1 - 6 day w/ Holidays | Scott Masterson |  |  |
| QTS - 6130 |  | TFO Scope // DH 2200 / Lineup A - B / Install Power Tray Tier # 2 | 10d | 2026-03-30 | 2026-04-09 | QTS - 5350 SS+5d, QTS - 5350 FF+5d, QTS - 4990 |  |  |  |  | 15d | 0d |  | QTS-PHX3 DC1 - 6 day w/ Holidays | Scott Masterson |  |  |
| QTS - 6140 |  | TFO Scope // DH 2200 / Lineup A - B / Install Power Tray Tier # 1 | 10d | 2026-04-04 | 2026-04-15 | QTS - 6130 SS+5d, QTS - 6130 FF+5d |  |  |  |  | 15d | 0d |  | QTS-PHX3 DC1 - 6 day w/ Holidays | Scott Masterson |  |  |
| QTS - 10390 |  | TFO Scope // DH 2200 / Lineup A - B / Pull RPP Whips - RPPs to Racks | 15d | 2026-04-16 | 2026-05-02 | QTS - 6130, QTS - 6140 |  |  |  |  | 44d | 0d |  | QTS-PHX3 DC1 - 6 day w/ Holidays | Scott Masterson |  |  |
| QTS - 5010 |  | TFO Scope // DH 2200 / Lineup A - B / Pull LV Wire | 14d | 2026-04-16 | 2026-05-01 | QTS - 4990, QTS - 5350, QTS - 6130, QTS - 6140 |  |  |  |  | 15d | 0d |  | QTS-PHX3 DC1 - 6 day w/ Holidays | Scott Masterson |  |  |
| QTS - 6170 |  | TFO Scope // DH 2200 / Lineup A - B / Terminate Whips at RPP | 10d | 2026-04-25 | 2026-05-06 | QTS - 10390 FF+3d |  |  |  |  | 44d | 34d |  | QTS-PHX3 DC1 - 6 day w/ Holidays | Scott Masterson |  |  |
| QTS - 5030 |  | TFO Scope // DH 2200 / Lineup A - B / Terminate LV | 10d | 2026-05-02 | 2026-05-13 | QTS - 5010 |  |  |  |  | 15d | 0d |  | QTS-PHX3 DC1 - 6 day w/ Holidays | Scott Masterson |  |  |
| QTS - 5170 |  | TFO Scope // DH 2200 / Lineup A - B / Clean Walk & PEI - Electrical & Controls | 2d | 2026-05-14 | 2026-05-15 | QTS - 25221, QTS - 5040, QTS - 5150, QTS - 5030, QTS - 5060 |  |  |  |  | 15d | 1d |  | QTS-PHX3 DC1 - 6 day w/ Holidays | Scott Masterson |  |  |

| ID | WBS | Activity | Duration | Start | Finish | Predecessors | Complete | Total float | Free float | Calendar | Layton Responsible Party | Notes |
| --- | --- | --- | --- | --- | --- | --- | --- | --- | --- | --- | --- | --- |
|  | 3 | **2200 - TFO Scope Buildout (3MW) - Lineup C - D** |  | 2025-12-15 | 2026-05-08 |  |  |  |  |  |  |  |
| QTS - 5400 |  | TFO Scope // DH 2200 / Lineup C - D / Install HAC Support Steel | 5d | 2025-12-15 A | 2025-12-19 A | QTS - 4940 | 100% |  |  | QTS-PHX3 DC1 - 6 day w/ Holidays | Scott Masterson |  |
| QTS - 5410 |  | TFO Scope // DH 2200 / Lineup C - D / Install Stainless Steel Piping Hangers | 4d | 2026-01-20 | 2026-01-23 | QTS - 5400, QTS - 4950 |  | 36d | 0d | QTS-PHX3 DC1 - 6 day w/ Holidays | Dave Wiltberger |  |
| QTS - 5570 |  | TFO Scope // DH 2200 / Lineup C - D / Uncrate QCools with HACs | 1d | 2026-01-21 | 2026-01-21 | QTS - 5310 SS+5d, QTS - 7540, QTS - 1020 |  | 52d | 0d | QTS-PHX3 DC1 - 6 day w/ Holidays | Dave Wiltberger |  |
| QTS - 5560 |  | TFO Scope // DH 2200 / Lineup C - D / Hang Stainless Steel 6" Fan Wall - QCool | 9d | 2026-01-24 | 2026-02-03 | QTS - 5410, QTS - 2590, QTS - 24741 |  | 41d | 0d | QTS-PHX3 DC1 - 6 day w/ Holidays | Dave Wiltberger |  |
| QTS - 5450 |  | TFO Scope // DH 2200 / Lineup C - D / Raise HAC, QCool & Trays | 3d | 2026-02-04 | 2026-02-06 | QTS - 5560, QTS - 5410, QTS - 5570, QTS - 5400, QTS - 10190 |  | 41d | 18d | QTS-PHX3 DC1 - 6 day w/ Holidays | Dave Wiltberger |  |
| QTS - 5460 |  | TFO Scope // DH 2200 / Lineup C - D / Install OH Trapeze - Screen Wall to CODs | 3d | 2026-02-11 | 2026-02-13 | QTS - 5000 |  | 30d | 0d | QTS-PHX3 DC1 - 6 day w/ Holidays | Scott Masterson | Changed from Conduit to Tray |
| QTS - 5610 |  | TFO Scope // DH 2200 / Lineup C - D / Install OH Trapeze - Screen Wall to RPPs | 3d | 2026-02-11 | 2026-02-13 | QTS - 5460 SS |  | 40d | 0d | QTS-PHX3 DC1 - 6 day w/ Holidays | Scott Masterson | Changed from Conduit to Tray |
| QTS - 5480 |  | TFO Scope // DH 2200 / Lineup C - D / Pull MC Feeders - CODs to RPPs | 12d | 2026-02-14 | 2026-02-27 | QTS - 5460, QTS - 5610 |  | 40d | 12d | QTS-PHX3 DC1 - 6 day w/ Holidays | Scott Masterson | Added MC and Removed RPP Set |
| QTS - 25231 |  | TFO Scope // DH 2200 / Lineup C - D / Install Grid Hangers | 5d | 2026-02-28 | 2026-03-05 | QTS - 25191 |  | 51d | 0d | QTS-PHX3 DC1 - 6 day w/ Holidays | Scott Masterson |  |
| QTS - 5440 |  | TFO Scope // DH 2200 / Lineup C - D / Set RPP # 12 Units | 5d | 2026-02-28 | 2026-03-05 | QTS - 4980, QTS - 5450 |  | 23d | 0d | QTS-PHX3 DC1 - 6 day w/ Holidays | Scott Masterson | Tied to Raise QCool |
| QTS - 5580 |  | TFO Scope // DH 2200 / Lineup C - D / Install QCool Arms | 5d | 2026-02-28 | 2026-03-05 | QTS - 5330, QTS - 5400, QTS - 5570 |  | 20d | 0d | QTS-PHX3 DC1 - 6 day w/ Holidays | Scott Masterson |  |
| QTS - 25241 |  | TFO Scope // DH 2200 / Lineup C - D / Install Telecom Trays Tier # 1 - Grid | 10d | 2026-03-06 | 2026-03-17 | QTS - 25231 |  | 56d | 0d | QTS-PHX3 DC1 - 6 day w/ Holidays | Scott Masterson |  |
| QTS - 5430 |  | TFO Scope // DH 2200 / Lineup C - D / Install Telecom Trays Tier # 5 | 10d | 2026-03-06 | 2026-03-17 | QTS - 5580, QTS - 5450, QTS - 5570, QTS - 1020 |  | 25d | 0d | QTS-PHX3 DC1 - 6 day w/ Holidays | Scott Masterson |  |
| QTS - 5500 |  | TFO Scope // DH 2200 / Lineup C - D / Terminate Feeder at RPPs and CODs | 10d | 2026-03-06 | 2026-03-17 | QTS - 5440, QTS - 5480 FF+3d |  | 28d | 0d | QTS-PHX3 DC1 - 6 day w/ Holidays | Scott Masterson | Added Set RPP Pred |
| QTS - 5510 |  | TFO Scope // DH 2200 / Lineup C - D / Rough-In I&C | 10d | 2026-03-06 | 2026-03-17 | QTS - 5440, QTS - 5860 |  | 42d | 0d | QTS-PHX3 DC1 - 6 day w/ Holidays | Scott Masterson |  |
| QTS - 25251 |  | TFO Scope // DH 2200 / Lineup C - D / Install Telecom Trays Tier # 2 - Grid | 10d | 2026-03-11 | 2026-03-21 | QTS - 25241 FF+4d |  | 56d | 0d | QTS-PHX3 DC1 - 6 day w/ Holidays | Scott Masterson |  |
| QTS - 5590 |  | TFO Scope // DH 2200 / Lineup C - D / Install Telecom Trays Tier # 4 | 10d | 2026-03-12 | 2026-03-23 | QTS - 5430 SS+5d, QTS - 5430 FF+5d, QTS - 5450 |  | 25d | 0d | QTS-PHX3 DC1 - 6 day w/ Holidays | Scott Masterson |  |
| QTS - 25261 |  | TFO Scope // DH 2200 / Lineup C - D / Install Telecom Trays Tier # 3 - Grid | 10d | 2026-03-16 | 2026-03-26 | QTS - 25251 FF+4d |  | 56d | 31d | QTS-PHX3 DC1 - 6 day w/ Holidays | Scott Masterson |  |
| QTS - 5520 |  | TFO Scope // DH 2200 / Lineup C - D / Install Fire Alarm & Security | 7d | 2026-03-18 | 2026-03-25 | QTS - 5510, QTS - 5400, QTS - 4940, QTS - 10190 |  | 42d | 0d | QTS-PHX3 DC1 - 6 day w/ Holidays | Scott Masterson |  |
| QTS - 5600 |  | TFO Scope // DH 2200 / Lineup C - D / Install Telecom Trays Tier # 3 | 10d | 2026-03-18 | 2026-03-28 | QTS - 5590 SS+5d, QTS - 5590 FF+5d |  | 25d | 0d | QTS-PHX3 DC1 - 6 day w/ Holidays | Scott Masterson |  |
| QTS - 6110 |  | TFO Scope // DH 2200 / Lineup C - D / Install Power Tray Tier # 2 | 10d | 2026-03-24 | 2026-04-03 | QTS - 5600 SS+5d, QTS - 5600 FF+5d, QTS - 5450 |  | 25d | 0d | QTS-PHX3 DC1 - 6 day w/ Holidays | Scott Masterson |  |
| QTS - 5530 |  | TFO Scope // DH 2200 / Lineup C - D / Terminate I&C | 5d | 2026-03-26 | 2026-03-31 | QTS - 5520, QTS - 5510, QTS - 5090, QTS - 5150, QTS - 2620 |  | 42d | 0d | QTS-PHX3 DC1 - 6 day w/ Holidays | Scott Masterson |  |
| QTS - 6120 |  | TFO Scope // DH 2200 / Lineup C - D / Install Power Tray Tier # 1 | 10d | 2026-03-30 | 2026-04-09 | QTS - 6110 SS+5d, QTS - 6110 FF+5d |  | 42d | 0d | QTS-PHX3 DC1 - 6 day w/ Holidays | Scott Masterson |  |
| QTS - 5540 |  | TFO Scope // DH 2200 / Lineup C - D / Terminate - BMS & EPMS Connections | 7d | 2026-04-01 | 2026-04-08 | QTS - 5530, QTS - 5080 |  | 47d | 33d | QTS-PHX3 DC1 - 6 day w/ Holidays | Scott Masterson |  |
| QTS - 5470 |  | TFO Scope // DH 2200 / Lineup C - D / Pull LV Wire | 14d | 2026-04-04 | 2026-04-20 | QTS - 5450, QTS - 5600, QTS - 6110 |  | 25d | 0d | QTS-PHX3 DC1 - 6 day w/ Holidays | Scott Masterson |  |
| QTS - 10410 |  | TFO Scope // DH 2200 / Lineup C - D / Pull RPP Whips - RPPs to Racks | 15d | 2026-04-10 | 2026-04-27 | QTS - 6120, QTS - 6110 |  | 42d | 0d | QTS-PHX3 DC1 - 6 day w/ Holidays | Scott Masterson |  |
| QTS - 5490 |  | TFO Scope // DH 2200 / Lineup C - D / Terminate LV | 10d | 2026-04-21 | 2026-05-01 | QTS - 5470 |  | 25d | 0d | QTS-PHX3 DC1 - 6 day w/ Holidays | Scott Masterson |  |
| QTS - 6160 |  | TFO Scope // DH 2200 / Lineup C - D / Terminate Whips at RPP | 10d | 2026-04-28 | 2026-05-08 | QTS - 10410 |  | 42d | 32d | QTS-PHX3 DC1 - 6 day w/ Holidays | Scott Masterson |  |
| QTS - 5550 |  | TFO Scope // DH 2200 / Lineup C - D / Clean Walk & PEI - Electrical & Controls | 2d | 2026-05-02 | 2026-05-04 | QTS - 25261, QTS - 5500, QTS - 5530, QTS - 5490, QTS - 5520 |  | 25d | 11d | QTS-PHX3 DC1 - 6 day w/ Holidays | Scott Masterson |  |

| ID | WBS | Activity | Duration | Start | Finish | Predecessors | Complete | Total float | Free float | Calendar | Layton Responsible Party | Notes |
| --- | --- | --- | --- | --- | --- | --- | --- | --- | --- | --- | --- | --- |
|  | 2 | **2200 - TFO Scope Buildout (3MW) - Lineup E - F** |  | 2025-12-22 | 2026-05-14 |  |  |  |  |  |  |  |
| QTS - 5630 |  | TFO Scope // DH 2200 / Lineup E - F / Install HAC Support Steel | 5d | 2025-12-22 A | 2025-12-27 A | QTS - 5400 | 100% |  |  | QTS-PHX3 DC1 - 6 day w/ Holidays | Scott Masterson |  |
| QTS - 5640 |  | TFO Scope // DH 2200 / Lineup E - F / Install Stainless Steel Piping Hangers | 4d | 2026-01-24 | 2026-01-28 | QTS - 5630, QTS - 5410 |  | 36d | 0d | QTS-PHX3 DC1 - 6 day w/ Holidays | Dave Wiltberger |  |
| QTS - 5800 |  | TFO Scope // DH 2200 / Lineup E - F / Uncrate QCools with HACs | 1d | 2026-01-27 | 2026-01-27 | QTS - 5570 SS+5d, QTS - 7540, QTS - 1020 |  | 52d | 10d | QTS-PHX3 DC1 - 6 day w/ Holidays | Dave Wiltberger |  |
| QTS - 5790 |  | TFO Scope // DH 2200 / Lineup E - F / Hang Stainless Steel 6" Fan Wall - QCool | 9d | 2026-01-29 | 2026-02-07 | QTS - 5640, QTS - 2590, QTS - 24741 |  | 42d | 0d | QTS-PHX3 DC1 - 6 day w/ Holidays | Dave Wiltberger |  |
| QTS - 5680 |  | TFO Scope // DH 2200 / Lineup E - F / Raise HAC, QCool & Trays | 3d | 2026-02-09 | 2026-02-11 | QTS - 5790, QTS - 5640, QTS - 5800, QTS - 5630, QTS - 10190 |  | 42d | 19d | QTS-PHX3 DC1 - 6 day w/ Holidays | Dave Wiltberger |  |
| QTS - 5690 |  | TFO Scope // DH 2200 / Lineup E - F / Install OH Trapeze - Screen Wall to CODs | 3d | 2026-02-14 | 2026-02-17 | QTS - 5460 |  | 30d | 0d | QTS-PHX3 DC1 - 6 day w/ Holidays | Scott Masterson | Changed from Conduit to Tray |
| QTS - 5840 |  | TFO Scope // DH 2200 / Lineup E - F / Install OH Trapeze - Screen Wall to RPPs | 3d | 2026-02-14 | 2026-02-17 | QTS - 5690 SS |  | 30d | 0d | QTS-PHX3 DC1 - 6 day w/ Holidays | Scott Masterson | Changed from Conduit to Tray |
| QTS - 5710 |  | TFO Scope // DH 2200 / Lineup E - F / Pull MC Feeders - CODs to RPPs | 12d | 2026-02-18 | 2026-03-03 | QTS - 5690, QTS - 5840 |  | 30d | 7d | QTS-PHX3 DC1 - 6 day w/ Holidays | Scott Masterson | Added MC and Removed RPP Set |
| QTS - 25271 |  | TFO Scope // DH 2200 / Lineup E - F / Install Grid Hangers | 5d | 2026-03-06 | 2026-03-11 | QTS - 25231 |  | 51d | 0d | QTS-PHX3 DC1 - 6 day w/ Holidays | Scott Masterson |  |
| QTS - 5670 |  | TFO Scope // DH 2200 / Lineup E - F / Set RPP # 12 Units | 5d | 2026-03-06 | 2026-03-11 | QTS - 5440, QTS - 5680 |  | 23d | 0d | QTS-PHX3 DC1 - 6 day w/ Holidays | Scott Masterson | Tied to Raise QCool |
| QTS - 5810 |  | TFO Scope // DH 2200 / Lineup E - F / Install QCool Arms | 5d | 2026-03-06 | 2026-03-11 | QTS - 5580, QTS - 5630, QTS - 5800 |  | 20d | 0d | QTS-PHX3 DC1 - 6 day w/ Holidays | Scott Masterson |  |
| QTS - 25281 |  | TFO Scope // DH 2200 / Lineup E - F / Install Telecom Trays Tier # 1 - Grid | 10d | 2026-03-12 | 2026-03-23 | QTS - 25271 |  | 51d | 0d | QTS-PHX3 DC1 - 6 day w/ Holidays | Scott Masterson |  |
| QTS - 5660 |  | TFO Scope // DH 2200 / Lineup E - F / Install Telecom Trays Tier # 5 | 10d | 2026-03-12 | 2026-03-23 | QTS - 5810, QTS - 5680, QTS - 5800, QTS - 1020 |  | 20d | 0d | QTS-PHX3 DC1 - 6 day w/ Holidays | Scott Masterson |  |
| QTS - 5730 |  | TFO Scope // DH 2200 / Lineup E - F / Terminate Feeder at RPPs and CODs | 10d | 2026-03-12 | 2026-03-23 | QTS - 5670, QTS - 5710 |  | 23d | 0d | QTS-PHX3 DC1 - 6 day w/ Holidays | Scott Masterson | Added Set RPP Pred |
| QTS - 5740 |  | TFO Scope // DH 2200 / Lineup E - F / Rough-In I&C | 10d | 2026-03-12 | 2026-03-23 | QTS - 5670 |  | 42d | 0d | QTS-PHX3 DC1 - 6 day w/ Holidays | Scott Masterson |  |
| QTS - 25291 |  | TFO Scope // DH 2200 / Lineup E - F / Install Telecom Trays Tier # 2 - Grid | 10d | 2026-03-17 | 2026-03-27 | QTS - 25281 FF+4d |  | 51d | 0d | QTS-PHX3 DC1 - 6 day w/ Holidays | Scott Masterson |  |
| QTS - 5820 |  | TFO Scope // DH 2200 / Lineup E - F / Install Telecom Trays Tier # 4 | 10d | 2026-03-18 | 2026-03-28 | QTS - 5660 SS+5d, QTS - 5660 FF+5d, QTS - 5680 |  | 20d | 0d | QTS-PHX3 DC1 - 6 day w/ Holidays | Scott Masterson |  |
| QTS - 25301 |  | TFO Scope // DH 2200 / Lineup E - F / Install Telecom Trays Tier # 3 - Grid | 10d | 2026-03-21 | 2026-04-01 | QTS - 25291 FF+4d |  | 51d | 31d | QTS-PHX3 DC1 - 6 day w/ Holidays | Scott Masterson |  |
| QTS - 5750 |  | TFO Scope // DH 2200 / Lineup E - F / Install Fire Alarm & Security | 7d | 2026-03-24 | 2026-03-31 | QTS - 5740, QTS - 5630, QTS - 5400, QTS - 4940, QTS - 10190 |  | 42d | 0d | QTS-PHX3 DC1 - 6 day w/ Holidays | Scott Masterson |  |
| QTS - 5830 |  | TFO Scope // DH 2200 / Lineup E - F / Install Telecom Trays Tier # 3 | 10d | 2026-03-24 | 2026-04-03 | QTS - 5820 SS+5d, QTS - 5820 FF+5d |  | 20d | 0d | QTS-PHX3 DC1 - 6 day w/ Holidays | Scott Masterson |  |
| QTS - 6020 |  | TFO Scope // DH 2200 / Lineup E - F / Install Power Tray Tier # 2 | 10d | 2026-03-30 | 2026-04-09 | QTS - 5830 SS+5d, QTS - 5830 FF+5d, QTS - 5680 |  | 20d | 0d | QTS-PHX3 DC1 - 6 day w/ Holidays | Scott Masterson |  |
| QTS - 5760 |  | TFO Scope // DH 2200 / Lineup E - F / Terminate I&C | 5d | 2026-04-01 | 2026-04-06 | QTS - 5750, QTS - 5740, QTS - 5090, QTS - 5530 |  | 42d | 0d | QTS-PHX3 DC1 - 6 day w/ Holidays | Scott Masterson |  |
| QTS - 6030 |  | TFO Scope // DH 2200 / Lineup E - F / Install Power Tray Tier # 1 | 10d | 2026-04-04 | 2026-04-15 | QTS - 6020 SS+5d, QTS - 6020 FF+5d |  | 37d | 0d | QTS-PHX3 DC1 - 6 day w/ Holidays | Scott Masterson |  |
| QTS - 5770 |  | TFO Scope // DH 2200 / Lineup E - F / Terminate - BMS & EPMS Connections | 7d | 2026-04-07 | 2026-04-14 | QTS - 5760 |  | 42d | 28d | QTS-PHX3 DC1 - 6 day w/ Holidays | Scott Masterson |  |
| QTS - 5700 |  | TFO Scope // DH 2200 / Lineup E - F / Pull LV Wire | 14d | 2026-04-10 | 2026-04-25 | QTS - 5680, QTS - 5830, QTS - 6020 |  | 20d | 0d | QTS-PHX3 DC1 - 6 day w/ Holidays | Scott Masterson |  |
| QTS - 10430 |  | TFO Scope // DH 2200 / Lineup E - F / Pull RPP Whips - RPPs to Racks | 15d | 2026-04-16 | 2026-05-02 | QTS - 6030, QTS - 6020 |  | 37d | 0d | QTS-PHX3 DC1 - 6 day w/ Holidays | Scott Masterson |  |
| QTS - 5720 |  | TFO Scope // DH 2200 / Lineup E - F / Terminate LV | 10d | 2026-04-27 | 2026-05-07 | QTS - 5700 |  | 20d | 0d | QTS-PHX3 DC1 - 6 day w/ Holidays | Scott Masterson |  |
| QTS - 6050 |  | TFO Scope // DH 2200 / Lineup E - F / Terminate Whips at RPP | 10d | 2026-05-04 | 2026-05-14 | QTS - 10430 |  | 37d | 27d | QTS-PHX3 DC1 - 6 day w/ Holidays | Scott Masterson |  |
| QTS - 5780 |  | TFO Scope // DH 2200 / Lineup E - F / Clean Walk & PEI - Electrical & Controls | 2d | 2026-05-08 | 2026-05-09 | QTS - 25301, QTS - 5730, QTS - 5760, QTS - 5720, QTS - 5750 |  | 20d | 6d | QTS-PHX3 DC1 - 6 day w/ Holidays | Scott Masterson |  |

| ID | WBS | Activity | Duration | Start | Finish | Predecessors | Remaining | Planned start | Planned finish | Total float | Free float | Constraint | Calendar | Layton Responsible Party | Allucent CSI Group | Notes |
| --- | --- | --- | --- | --- | --- | --- | --- | --- | --- | --- | --- | --- | --- | --- | --- | --- |
|  | 2 | **Gallery 2201 Mechanical** |  | 2025-12-29 | 2026-04-08 |  |  |  |  |  |  |  |  |  |  |  |
|  | 9 | **TFO 2201 - CDU Mechanical Gallery** |  | 2025-12-29 | 2026-04-08 |  |  |  |  |  |  |  |  |  |  |  |
| QTS - 5070 |  | TFO Scope // DH 2200 - 2201 Mechanical Gallery / OFCI - L2 SET IN PLACE - CDU - 9 units | 3d | 2025-12-29 A | 2026-01-22 | QTS - 1040 | 7d | 2025-12-29 | 2025-12-31 | 63d | 0d |  | QTS-PHX3 DC1 - 6 day w/ Holidays | Dave Wiltberger | 01ADMIN |  |
| QTS - 5120 |  | TFO Scope // DH 2200 - 2201 Mechanical Gallery / Pull Branches From MOD-03 to CDUs | 8d | 2026-01-23 | 2026-01-31 | QTS - 5070 |  |  |  | 77d | 0d |  | QTS-PHX3 DC1 - 6 day w/ Holidays | Scott Masterson | 01ADMIN |  |
| QTS - 5320 |  | TFO Scope // DH 2200 - 2201 Mechanical Gallery / Install OH Technical Loop Hangers | 5d | 2026-01-29 | 2026-02-03 | QTS - 5640 |  |  |  | 36d | 0d | start on or after 2026-01-12 | QTS-PHX3 DC1 - 6 day w/ Holidays | Dave Wiltberger |  |  |
| QTS - 5090 |  | TFO Scope // DH 2200 - 2201 Mechanical Gallery / Terminate & Torque - CDU Connections | 5d | 2026-02-02 | 2026-02-06 | QTS - 5120, QTS - 5070 |  |  |  | 77d | 33d |  | QTS-PHX3 DC1 - 6 day w/ Holidays | Scott Masterson |  |  |
| QTS - 5100 |  | TFO Scope // DH 2200 - 2201 Mechanical Gallery / Install OH 8" Technical Loop CDU Piping | 9d | 2026-02-04 | 2026-02-13 | QTS - 5320, QTS - 2590, QTS - 10190, QTS - 24741 |  |  |  | 44d | 0d |  | QTS-PHX3 DC1 - 6 day w/ Holidays | Dave Wiltberger |  |  |
| QTS - 5230 |  | TFO Scope // DH 2200 - 2201 Mechanical Gallery / Detail & Fabricate CDU Mechanical Connections | 10d | 2026-02-14 | 2026-02-25 | QTS - 5070, QTS - 5100 |  |  |  | 44d | 0d |  | QTS-PHX3 DC1 - 6 day w/ Holidays | Dave Wiltberger |  |  |
| QTS - 5110 |  | TFO Scope // DH 2200 - 2201 Mechanical Gallery / CDU Unit 4" Mechanical Connections Lineup - A - B | 7d | 2026-02-26 | 2026-03-05 | QTS - 5230, QTS - 5260, QTS - 5070 |  |  |  | 44d | 0d |  | QTS-PHX3 DC1 - 6 day w/ Holidays | Dave Wiltberger |  |  |
| QTS - 10230 |  | TFO Scope // DH 2200 - 2201 Mechanical Gallery / Install Telecom Conduit from MMR to IDF Cabinet | 10d | 2026-03-03 | 2026-03-13 | QTS-16531 |  |  |  | 55d | 0d |  | QTS-PHX3 DC1 - 6 day w/ Holidays | Scott Masterson |  |  |
| QTS - 5080 |  | TFO Scope // DH 2200 - 2201 Mechanical Gallery / Pull LV Main / IDF Cabinet to Basket Tray | 7d | 2026-03-03 | 2026-03-10 | QTS-16531 |  |  |  | 65d | 13d |  | QTS-PHX3 DC1 - 6 day w/ Holidays | Scott Masterson |  |  |
| QTS - 5130 |  | TFO Scope // DH 2200 - 2201 Mechanical Gallery / Fill & Flush Technical Loop A - B | 5d | 2026-03-06 | 2026-03-11 | QTS - 5110, QTS - 5260 |  |  |  | 58d | 0d |  | QTS-PHX3 DC1 - 6 day w/ Holidays | Dave Wiltberger |  |  |
| QTS - 5240 |  | TFO Scope // DH 2200 - 2201 Mechanical Gallery / CDU Unit 4" Mechanical Connections Lineup - C - D | 7d | 2026-03-06 | 2026-03-13 | QTS - 5110, QTS - 5560 |  |  |  | 44d | 0d |  | QTS-PHX3 DC1 - 6 day w/ Holidays | Dave Wiltberger |  |  |
| QTS - 6190 |  | TFO Scope // DH 2200 - 2201 Mechanical Gallery / Final Connection Tie-In to CDU Lineup - A - B | 5d | 2026-03-12 | 2026-03-17 | QTS - 5130 |  |  |  | 58d | 0d |  | QTS-PHX3 DC1 - 6 day w/ Holidays | Dave Wiltberger |  |  |
| QTS - 10240 |  | TFO Scope // DH 2200 - 2201 Mechanical Gallery / Pull Telecom Wire from MMR to IDF Cabinet | 10d | 2026-03-14 | 2026-03-25 | QTS - 10230 |  |  |  | 55d | 0d |  | QTS-PHX3 DC1 - 6 day w/ Holidays | Scott Masterson |  |  |
| QTS - 5250 |  | TFO Scope // DH 2200 - 2201 Mechanical Gallery / CDU Unit 4" Mechanical Connections Lineup - E - F | 7d | 2026-03-14 | 2026-03-21 | QTS - 5240, QTS - 5790 |  |  |  | 44d | 0d |  | QTS-PHX3 DC1 - 6 day w/ Holidays | Dave Wiltberger |  |  |
| QTS - 6200 |  | TFO Scope // DH 2200 - 2201 Mechanical Gallery / Fill & Flush Technical Loop C - D | 5d | 2026-03-14 | 2026-03-19 | QTS - 5240, QTS - 5560 |  |  |  | 51d | 0d |  | QTS-PHX3 DC1 - 6 day w/ Holidays | Dave Wiltberger |  |  |
| QTS - 6210 |  | TFO Scope // DH 2200 - 2201 Mechanical Gallery / Final Connection Tie-In to CDU Lineup - C - D | 5d | 2026-03-20 | 2026-03-25 | QTS - 6200 |  |  |  | 51d | 0d |  | QTS-PHX3 DC1 - 6 day w/ Holidays | Dave Wiltberger |  |  |
| QTS - 6220 |  | TFO Scope // DH 2200 - 2201 Mechanical Gallery / Fill & Flush Technical Loop E - F | 5d | 2026-03-23 | 2026-03-27 | QTS - 5250, QTS - 5790 |  |  |  | 44d | 0d |  | QTS-PHX3 DC1 - 6 day w/ Holidays | Dave Wiltberger |  |  |
| QTS - 6010 |  | TFO Scope // DH 2200 - 2201 Mechanical Gallery / BMS & EPMS Terminations | 2d | 2026-03-26 | 2026-03-27 | QTS - 5080, QTS - 10240 |  |  |  | 55d | 0d |  | QTS-PHX3 DC1 - 6 day w/ Holidays | Scott Masterson |  |  |
| QTS - 6000 |  | TFO Scope // DH 2200 - 2201 Mechanical Gallery / Clean Walk & PEI - Electrical | 2d | 2026-03-28 | 2026-03-30 | QTS - 5090, QTS - 6010 |  |  |  | 55d | 41d |  | QTS-PHX3 DC1 - 6 day w/ Holidays | Scott Masterson |  |  |
| QTS - 6230 |  | TFO Scope // DH 2200 - 2201 Mechanical Gallery / Final Connection Tie-In to CDU Lineup - E - F | 5d | 2026-03-28 | 2026-04-02 | QTS - 6220 |  |  |  | 44d | 0d |  | QTS-PHX3 DC1 - 6 day w/ Holidays | Dave Wiltberger |  |  |
| QTS - 5140 |  | TFO Scope // DH 2200 - 2201 Mechanical Gallery / Clean Walk & PEI - Mechanical | 5d | 2026-04-03 | 2026-04-08 | QTS - 6210, QTS - 6230, QTS - 6190 |  |  |  | 47d | 33d |  | QTS-PHX3 DC1 - 6 day w/ Holidays | Dave Wiltberger |  |  |
|  | 7 | **Gallery 2203 Mechanical** |  | 2026-02-04 | 2026-04-17 |  |  |  |  |  |  |  |  |  |  |  |
|  | 10 | **TFO 2203 - CDU Mechanical Gallery** |  | 2026-02-04 | 2026-04-17 |  |  |  |  |  |  |  |  |  |  |  |
| QTS - 5970 |  | TFO Scope // DH 2200 - 2203 Mechanical Gallery / Install OH Technical Loop Hangers | 5d | 2026-02-04 | 2026-02-09 | QTS - 5320, QTS - 10190 |  |  |  | 36d | 0d | start on or after 2026-01-12 | QTS-PHX3 DC1 - 6 day w/ Holidays | Dave Wiltberger | 01ADMIN |  |
| QTS - 5890 |  | TFO Scope // DH 2200 - 2203 Mechanical Gallery / Install OH 8" Technical Loop CDU Piping | 9d | 2026-02-10 | 2026-02-19 | QTS - 5970, QTS - 2590, QTS - 10190, QTS - 24741 |  |  |  | 36d | 0d |  | QTS-PHX3 DC1 - 6 day w/ Holidays | Dave Wiltberger | 01ADMIN | Changed 10-9 Days |
| QTS - 5860 |  | TFO Scope // DH 2200 - 2203 Mechanical Gallery / OFCI - L2 SET IN PLACE - CDU - 9 units | 3d | 2026-02-20 | 2026-02-23 | QTS - 5890 |  |  |  | 36d | 0d |  | QTS-PHX3 DC1 - 6 day w/ Holidays | Dave Wiltberger |  |  |
| QTS - 5910 |  | TFO Scope // DH 2200 - 2203 Mechanical Gallery / Pull Branches From MOD-03 to CDUs | 8d | 2026-02-24 | 2026-03-04 | QTS - 5860 |  |  |  | 64d | 0d |  | QTS-PHX3 DC1 - 6 day w/ Holidays | Scott Masterson |  |  |
| QTS - 5940 |  | TFO Scope // DH 2200 - 2203 Mechanical Gallery / Detail & Fabricate CDU Mechanical Connections | 10d | 2026-02-24 | 2026-03-06 | QTS - 5860 |  |  |  | 36d | 0d |  | QTS-PHX3 DC1 - 6 day w/ Holidays | Dave Wiltberger |  |  |
| QTS - 5870 |  | TFO Scope // DH 2200 - 2203 Mechanical Gallery / Pull LV Main / IDF Cabinet to Basket Tray | 7d | 2026-02-25 | 2026-03-04 | QTS-17111 |  |  |  | 73d | 5d |  | QTS-PHX3 DC1 - 6 day w/ Holidays | Scott Masterson |  |  |
| QTS - 5880 |  | TFO Scope // DH 2200 - 2203 Mechanical Gallery / Terminate & Torque - CDU Connections | 5d | 2026-03-05 | 2026-03-10 | QTS - 5910, QTS - 5860 |  |  |  | 64d | 0d |  | QTS-PHX3 DC1 - 6 day w/ Holidays | Scott Masterson |  |  |
| QTS - 5900 |  | TFO Scope // DH 2200 - 2203 Mechanical Gallery / CDU Unit 4" Mechanical Connections Lineup - A - B | 7d | 2026-03-07 | 2026-03-14 | QTS - 5940, QTS - 5890, QTS - 5860, QTS - 5260 |  |  |  | 36d | 0d |  | QTS-PHX3 DC1 - 6 day w/ Holidays | Dave Wiltberger |  |  |
| QTS - 5990 |  | TFO Scope // DH 2200 - 2203 Mechanical Gallery / BMS & EPMS Terminations | 2d | 2026-03-11 | 2026-03-12 | QTS - 5870, QTS - 5880 |  |  |  | 68d | 0d |  | QTS-PHX3 DC1 - 6 day w/ Holidays | Scott Masterson |  |  |
| QTS - 5980 |  | TFO Scope // DH 2200 - 2203 Mechanical Gallery / Clean Walk & PEI - Electrical | 2d | 2026-03-13 | 2026-03-14 | QTS - 5880, QTS - 5990 |  |  |  | 68d | 54d |  | QTS-PHX3 DC1 - 6 day w/ Holidays | Scott Masterson |  |  |
| QTS - 5920 |  | TFO Scope // DH 2200 - 2203 Mechanical Gallery / Fill & Flush Technical Loop A - B | 5d | 2026-03-16 | 2026-03-20 | QTS - 5900, QTS - 5260 |  |  |  | 50d | 0d |  | QTS-PHX3 DC1 - 6 day w/ Holidays | Dave Wiltberger |  |  |
| QTS - 5950 |  | TFO Scope // DH 2200 - 2203 Mechanical Gallery / CDU Unit 4" Mechanical Connections Lineup - C - D | 7d | 2026-03-16 | 2026-03-23 | QTS - 5900 |  |  |  | 36d | 0d |  | QTS-PHX3 DC1 - 6 day w/ Holidays | Dave Wiltberger |  |  |
| QTS - 6060 |  | TFO Scope // DH 2200 - 2203 Mechanical Gallery / Final Connection to CDU Lineup - A - B | 5d | 2026-03-21 | 2026-03-26 | QTS - 5920 |  |  |  | 50d | 0d |  | QTS-PHX3 DC1 - 6 day w/ Holidays | Dave Wiltberger |  |  |
| QTS - 5960 |  | TFO Scope // DH 2200 - 2203 Mechanical Gallery / CDU Unit 4" Mechanical Connections Lineup - E - F | 7d | 2026-03-24 | 2026-03-31 | QTS - 5950 |  |  |  | 36d | 0d |  | QTS-PHX3 DC1 - 6 day w/ Holidays | Dave Wiltberger |  |  |
| QTS - 6070 |  | TFO Scope // DH 2200 - 2203 Mechanical Gallery / Fill & Flush Technical Loop C - D | 5d | 2026-03-24 | 2026-03-28 | QTS - 5950 |  |  |  | 43d | 0d |  | QTS-PHX3 DC1 - 6 day w/ Holidays | Dave Wiltberger |  |  |
| QTS - 6080 |  | TFO Scope // DH 2200 - 2203 Mechanical Gallery / Final Connection to CDU Lineup - C - D | 5d | 2026-03-30 | 2026-04-03 | QTS - 6070 |  |  |  | 43d | 1d |  | QTS-PHX3 DC1 - 6 day w/ Holidays | Dave Wiltberger |  |  |
| QTS - 6100 |  | TFO Scope // DH 2200 - 2203 Mechanical Gallery / Fill & Flush Technical Loop E - F | 5d | 2026-04-01 | 2026-04-06 | QTS - 5960 |  |  |  | 36d | 0d |  | QTS-PHX3 DC1 - 6 day w/ Holidays | Dave Wiltberger |  |  |
| QTS - 6090 |  | TFO Scope // DH 2200 - 2203 Mechanical Gallery / Final Connection to CDU Lineup - E - F | 5d | 2026-04-07 | 2026-04-11 | QTS - 6100 |  |  |  | 36d | 0d |  | QTS-PHX3 DC1 - 6 day w/ Holidays | Dave Wiltberger |  |  |
| QTS - 5930 |  | TFO Scope // DH 2200 - 2203 Mechanical Gallery / Clean Walk & PEI - Mechanical | 5d | 2026-04-13 | 2026-04-17 | QTS - 6060, QTS - 6090, QTS - 6080 |  |  |  | 39d | 25d |  | QTS-PHX3 DC1 - 6 day w/ Holidays | Dave Wiltberger |  | Removed 6070 FF |

| ID | WBS | Activity | Duration | Start | Finish | Predecessors | Complete | Planned start | Planned finish | Total float | Free float | Constraint | Calendar | Notes | Layton Responsible Party | Allucent CSI Group |
| --- | --- | --- | --- | --- | --- | --- | --- | --- | --- | --- | --- | --- | --- | --- | --- | --- |
|  | 7 | **Data Hall 1200 (9MW)** |  | 2025-11-06 | 2026-05-06 |  |  |  |  |  |  |  |  |  |  |  |
|  | 3 | **Data Hall 1200** |  | 2025-11-06 | 2026-05-06 |  |  |  |  |  |  |  |  |  |  |  |
|  | 8 | **DH 1200 - TFO Scope Buildout (9MW)** |  | 2025-11-06 | 2026-05-06 |  |  |  |  |  |  |  |  |  |  |  |
|  | 1 | **1200 - TFO Scope Buildout (3MW) - Lineup A - B** |  | 2025-11-06 | 2026-04-23 |  |  |  |  |  |  |  |  |  |  |  |
| QTS - 7560 |  | TFO Scope // DH 1200 / Lineup A - B / Install HAC Support Steel | 5d | 2025-11-06 A | 2025-11-06 A | QTS - 1980, QTS - 3680 | 100% | 2025-11-07 | 2025-11-13 |  |  |  | **GLOBAL - 5 Day Workweek w/ Basic Holidays | Changed 7-5 Days |  |  |
| QTS - 7570 |  | TFO Scope // DH 1200 / Lineup A - B / Install Stainless Steel Piping Hangers | 4d | 2026-01-14 | 2026-01-17 | QTS - 7560 |  |  |  | 1d | 0d |  | QTS-PHX3 DC1 - 6 day w/ Holidays |  | Dave Wiltberger | 01ADMIN |
| QTS - 7620 |  | TFO Scope // DH 1200 / Lineup A - B / Install OH Trapeze - Screen Wall to CODs | 3d | 2026-01-14 | 2026-01-16 | QTS - 7560 |  |  |  | 57d | 0d | start on or after 2026-01-09 | QTS-PHX3 DC1 - 6 day w/ Holidays |  | Dave Wiltberger | 01ADMIN |
| QTS - 7930 |  | TFO Scope // DH 1200 / Lineup A - B / Uncrate QCools with HACs | 1d | 2026-01-14 | 2026-01-14 | QTS - 7540, QTS - 1020 |  |  |  | 47d | 0d |  | QTS-PHX3 DC1 - 6 day w/ Holidays |  | Dave Wiltberger |  |
| QTS - 7980 |  | TFO Scope // DH 1200 / Lineup A - B / Install OH Trapeze - Screen Wall to RPPs | 3d | 2026-01-14 | 2026-01-16 | QTS - 7620 SS |  |  |  | 63d | 0d |  | QTS-PHX3 DC1 - 6 day w/ Holidays |  | Dave Wiltberger | 01ADMIN |
| QTS - 7610 |  | TFO Scope // DH 1200 / Lineup A - B / Raise HAC, QCool & Trays | 6d | 2026-01-15 | 2026-01-22 | QTS - 7930, QTS - 7560 |  |  |  | 59d | 0d |  | QTS-PHX3 DC1 - 6 day w/ Holidays |  | Dave Wiltberger |  |
| QTS - 7640 |  | TFO Scope // DH 1200 / Lineup A - B / Pull MC Feeders - CODs to RPPs | 12d | 2026-01-17 | 2026-01-31 | QTS - 7620, QTS - 7980 |  |  |  | 63d | 4d |  | QTS-PHX3 DC1 - 6 day w/ Holidays |  | Scott Masterson |  |
| QTS - 7880 |  | TFO Scope // DH 1200 / Lineup A - B / Hang Stainless Steel 6" Fan Wall - QCool | 9d | 2026-01-20 | 2026-01-29 | QTS - 7570, QTS - 2590, QTS - 24751 |  |  |  | 24d | 18d |  | QTS-PHX3 DC1 - 6 day w/ Holidays |  | Dave Wiltberger | 01ADMIN |
| QTS - 7600 |  | TFO Scope // DH 1200 / Lineup A - B / Set RPP # 12 Units | 5d | 2026-01-23 | 2026-01-28 | QTS - 7610 |  |  |  | 59d | 0d |  | QTS-PHX3 DC1 - 6 day w/ Holidays | Tied to Raise QCool | Scott Masterson |  |
| QTS - 7660 |  | TFO Scope // DH 1200 / Lineup A - B / Terminate Feeder at RPPs and CODs | 10d | 2026-01-29 | 2026-02-09 | QTS - 7600, QTS - 7640 FF+3d |  |  |  | 59d | 0d |  | QTS-PHX3 DC1 - 6 day w/ Holidays | Added Set RPP Pred | Scott Masterson |  |
| QTS - 7670 |  | TFO Scope // DH 1200 / Lineup A - B / Rough-In I&C | 10d | 2026-02-09 | 2026-02-19 | QTS - 7690, QTS - 7600 |  |  |  | 57d | 0d |  | QTS-PHX3 DC1 - 6 day w/ Holidays |  | Scott Masterson |  |
| QTS - 25311 |  | TFO Scope // DH 1200 / Lineup A - B / Install Grid Hangers | 5d | 2026-02-13 | 2026-02-18 | QTS-1003410 |  |  |  | 59d | 0d |  | QTS-PHX3 DC1 - 6 day w/ Holidays |  | Scott Masterson |  |
| QTS - 7950 |  | TFO Scope // DH 1200 / Lineup A - B / Install QCool Arms | 5d | 2026-02-13 | 2026-02-18 | QTS-1003410, QTS - 7560, QTS - 7930 |  |  |  | 23d | 0d |  | QTS-PHX3 DC1 - 6 day w/ Holidays |  | Scott Masterson |  |
| QTS - 25321 |  | TFO Scope // DH 1200 / Lineup A - B / Install Telecom Trays Tier # 1 - Grid | 10d | 2026-02-19 | 2026-03-02 | QTS - 25311 |  |  |  | 69d | 0d |  | QTS-PHX3 DC1 - 6 day w/ Holidays |  | Scott Masterson |  |
| QTS - 7590 |  | TFO Scope // DH 1200 / Lineup A - B / Install Telecom Trays Tier # 5 | 10d | 2026-02-19 | 2026-03-02 | QTS - 7950, QTS - 7610, QTS - 7930, QTS - 1020 |  |  |  | 38d | 0d |  | QTS-PHX3 DC1 - 6 day w/ Holidays |  | Scott Masterson |  |
| QTS - 7680 |  | TFO Scope // DH 1200 / Lineup A - B / Install Fire Alarm & Security | 7d | 2026-02-20 | 2026-02-27 | QTS - 7670, QTS - 7560 |  |  |  | 57d | 0d |  | QTS-PHX3 DC1 - 6 day w/ Holidays |  | Scott Masterson |  |
| QTS - 25331 |  | TFO Scope // DH 1200 / Lineup A - B / Install Telecom Trays Tier # 2 - Grid | 10d | 2026-02-24 | 2026-03-06 | QTS - 25321 FF+4d |  |  |  | 69d | 0d |  | QTS-PHX3 DC1 - 6 day w/ Holidays |  | Scott Masterson |  |
| QTS - 7960 |  | TFO Scope // DH 1200 / Lineup A - B / Install Telecom Trays Tier # 4 | 10d | 2026-02-25 | 2026-03-07 | QTS - 7590 FF+5d, QTS - 7590 SS+5d, QTS - 7610 |  |  |  | 38d | 0d |  | QTS-PHX3 DC1 - 6 day w/ Holidays |  | Scott Masterson |  |
| QTS - 25341 |  | TFO Scope // DH 1200 / Lineup A - B / Install Telecom Trays Tier # 3 - Grid | 10d | 2026-02-28 | 2026-03-11 | QTS - 25331 FF+4d |  |  |  | 69d | 31d |  | QTS-PHX3 DC1 - 6 day w/ Holidays |  | Scott Masterson |  |
| QTS - 7770 |  | TFO Scope // DH 1200 / Lineup A - B / Terminate I&C | 5d | 2026-02-28 | 2026-03-05 | QTS - 7680, QTS - 7670, QTS - 7710, QTS - 2620 |  |  |  | 57d | 0d |  | QTS-PHX3 DC1 - 6 day w/ Holidays |  | Scott Masterson |  |
| QTS - 7970 |  | TFO Scope // DH 1200 / Lineup A - B / Install Telecom Trays Tier # 3 | 10d | 2026-03-03 | 2026-03-13 | QTS - 7960 FF+5d, QTS - 7960 SS+5d |  |  |  | 38d | 0d |  | QTS-PHX3 DC1 - 6 day w/ Holidays |  | Scott Masterson |  |
| QTS - 7780 |  | TFO Scope // DH 1200 / Lineup A - B / Terminate - BMS & EPMS Connections | 7d | 2026-03-06 | 2026-03-13 | QTS - 7700, QTS - 7770 |  |  |  | 69d | 46d |  | QTS-PHX3 DC1 - 6 day w/ Holidays |  | Scott Masterson |  |
| QTS - 8750 |  | TFO Scope // DH 1200 / Lineup A - B / Install Power Tray Tier # 2 | 10d | 2026-03-09 | 2026-03-19 | QTS - 7970 FF+5d, QTS - 7970 SS+5d, QTS - 7610 |  |  |  | 38d | 0d |  | QTS-PHX3 DC1 - 6 day w/ Holidays |  | Scott Masterson |  |
| QTS - 8760 |  | TFO Scope // DH 1200 / Lineup A - B / Install Power Tray Tier # 1 | 10d | 2026-03-14 | 2026-03-25 | QTS - 8750 FF+5d, QTS - 8750 SS+5d |  |  |  | 55d | 0d |  | QTS-PHX3 DC1 - 6 day w/ Holidays |  | Scott Masterson |  |
| QTS - 7630 |  | TFO Scope // DH 1200 / Lineup A - B / Pull LV Wire | 14d | 2026-03-20 | 2026-04-04 | QTS - 7610, QTS - 7970, QTS - 8750 |  |  |  | 38d | 0d |  | QTS-PHX3 DC1 - 6 day w/ Holidays |  | Scott Masterson |  |
| QTS - 10450 |  | TFO Scope // DH 1200 / Lineup A - B / Pull RPP Whips - RPPs to Racks | 15d | 2026-03-26 | 2026-04-11 | QTS - 8760, QTS - 8750 |  |  |  | 55d | 0d |  | QTS-PHX3 DC1 - 6 day w/ Holidays |  | Scott Masterson |  |
| QTS - 7650 |  | TFO Scope // DH 1200 / Lineup A - B / Terminate LV | 10d | 2026-04-06 | 2026-04-16 | QTS - 7630 |  |  |  | 38d | 0d |  | QTS-PHX3 DC1 - 6 day w/ Holidays |  | Scott Masterson |  |
| QTS - 8790 |  | TFO Scope // DH 1200 / Lineup A - B / Terminate Whips at RPP | 10d | 2026-04-13 | 2026-04-23 | QTS - 10450 |  |  |  | 55d | 46d |  | QTS-PHX3 DC1 - 6 day w/ Holidays |  | Scott Masterson |  |
| QTS - 7790 |  | TFO Scope // DH 1200 / Lineup A - B / Clean Walk & PEI - Electrical & Controls | 2d | 2026-04-17 | 2026-04-18 | QTS - 25341, QTS - 7660, QTS - 7770, QTS - 7650, QTS - 7680 |  |  |  | 38d | 15d |  | QTS-PHX3 DC1 - 6 day w/ Holidays |  | Scott Masterson |  |

Notes:
- QTS - 7570: allucent_notes_20251230_164549: Jason Johnston on 2025-12-09 20:32: Need update from team / Scott Masterson on 2025-12-16 16:33: Need to break this appart due to field dimension / detailing needs. / David Wiltberger on 2025-12-30 16:31: no update / allucent_notes_20251209_203830: Jason Johnston on 2025-12-09 20:32: Need update from team / allucent_notes_20251216_165335: Jason Johnston on 2025-12-09 20:32: Need update from team / Scott Masterson on 2025-12-16 16:33: Need to break this appart due to field dimension / detailing needs. / allucent_notes: 2025-12-09 20:32 - User: Jason Johnston - Date Added: 2025-12-09 20:32 - Note: Need update from team / 2025-12-16 16:33 - User: Scott Masterson - Date Added: 2025-12-16 16:33 - Note: Need to break this appart due to field dimension / detailing needs.
- QTS - 7620: allucent_notes_20251230_164549: Jason Johnston on 2025-12-09 20:32: Need update from team / Scott Masterson on 2025-12-16 16:33: Need to break this appart due to field dimension / detailing needs. / David Wiltberger on 2025-12-30 16:31: no updste / allucent_notes_20251209_203830: Jason Johnston on 2025-12-09 20:32: Need update from team / allucent_notes_20251216_165335: Jason Johnston on 2025-12-09 20:32: Need update from team / Scott Masterson on 2025-12-16 16:33: Need to break this appart due to field dimension / detailing needs. / allucent_notes: 2025-12-09 20:32 - User: Jason Johnston - Date Added: 2025-12-09 20:32 - Note: Need update from team / 2025-12-16 16:33 - User: Scott Masterson - Date Added: 2025-12-16 16:33 - Note: Need to break this appart due to field dimension / detailing needs.

| ID | WBS | Activity | Duration | Start | Finish | Predecessors | Complete | Planned start | Planned finish | Total float | Free float | Calendar | Notes | Layton Responsible Party | Allucent CSI Group |
| --- | --- | --- | --- | --- | --- | --- | --- | --- | --- | --- | --- | --- | --- | --- | --- |
|  | 3 | **1200 - TFO Scope Buildout (3MW) - Lineup C - D** |  | 2025-11-07 | 2026-05-05 |  |  |  |  |  |  |  |  |  |  |
| QTS - 8020 |  | TFO Scope // DH 1200 / Lineup C - D / Install HAC Support Steel | 5d | 2025-11-07 A | 2025-11-07 A | QTS - 7560 | 100% | 2025-11-14 | 2025-11-20 |  |  | **GLOBAL - 5 Day Workweek w/ Basic Holidays | Changed 7-5 Days |  |  |
| QTS - 8080 |  | TFO Scope // DH 1200 / Lineup C - D / Install OH Trapeze - Screen Wall to CODs | 3d | 2026-01-17 | 2026-01-21 | QTS - 7620 |  |  |  | 57d | 0d | QTS-PHX3 DC1 - 6 day w/ Holidays |  | Scott Masterson | 01ADMIN |
| QTS - 8230 |  | TFO Scope // DH 1200 / Lineup C - D / Install OH Trapeze - Screen Wall to RPPs | 3d | 2026-01-17 | 2026-01-21 | QTS - 8080 SS |  |  |  | 60d | 0d | QTS-PHX3 DC1 - 6 day w/ Holidays |  | Scott Masterson | 01ADMIN |
| QTS - 8030 |  | TFO Scope // DH 1200 / Lineup C - D / Install Stainless Steel Piping Hangers | 4d | 2026-01-20 | 2026-01-23 | QTS - 8020, QTS - 7570 |  |  |  | 66d | 0d | QTS-PHX3 DC1 - 6 day w/ Holidays |  | Dave Wiltberger | 01ADMIN |
| QTS - 8190 |  | TFO Scope // DH 1200 / Lineup C - D / Uncrate QCools with HACs | 1d | 2026-01-21 | 2026-01-21 | QTS - 7930 SS+5d, QTS - 1020 |  |  |  | 47d | 0d | QTS-PHX3 DC1 - 6 day w/ Holidays |  | Dave Wiltberger |  |
| QTS - 8070 |  | TFO Scope // DH 1200 / Lineup C - D / Raise HAC, QCool & Trays | 6d | 2026-01-22 | 2026-01-28 | QTS - 8190, QTS - 8020 |  |  |  | 54d | 0d | QTS-PHX3 DC1 - 6 day w/ Holidays |  | Dave Wiltberger |  |
| QTS - 8100 |  | TFO Scope // DH 1200 / Lineup C - D / Pull MC Feeders - CODs to RPPs | 12d | 2026-01-22 | 2026-02-04 | QTS - 8080, QTS - 8230 |  |  |  | 60d | 6d | QTS-PHX3 DC1 - 6 day w/ Holidays | Added MC and Removed RPP Set | Scott Masterson |  |
| QTS - 8180 |  | TFO Scope // DH 1200 / Lineup C - D / Hang Stainless Steel 6" Fan Wall - QCool | 9d | 2026-01-24 | 2026-02-03 | QTS - 8030, QTS - 2590, QTS - 24751 |  |  |  | 66d | 21d | QTS-PHX3 DC1 - 6 day w/ Holidays |  | Dave Wiltberger | 01ADMIN |
| QTS - 8060 |  | TFO Scope // DH 1200 / Lineup C - D / Set RPP # 12 Units | 5d | 2026-01-29 | 2026-02-03 | QTS - 8070 |  |  |  | 54d | 0d | QTS-PHX3 DC1 - 6 day w/ Holidays | Tied to Raise QCool | Scott Masterson |  |
| QTS - 8120 |  | TFO Scope // DH 1200 / Lineup C - D / Terminate Feeder at RPPs and CODs | 10d | 2026-02-04 | 2026-02-14 | QTS - 8060, QTS - 8100 FF+3d |  |  |  | 54d | 0d | QTS-PHX3 DC1 - 6 day w/ Holidays | Added Set RPP Pred | Scott Masterson |  |
| QTS - 8130 |  | TFO Scope // DH 1200 / Lineup C - D / Rough-In I&C | 10d | 2026-02-14 | 2026-02-25 | QTS - 8060, QTS - 8480 |  |  |  | 57d | 0d | QTS-PHX3 DC1 - 6 day w/ Holidays |  | Scott Masterson |  |
| QTS - 25351 |  | TFO Scope // DH 1200 / Lineup C - D / Install Grid Hangers | 5d | 2026-02-19 | 2026-02-24 | QTS - 25311 |  |  |  | 59d | 0d | QTS-PHX3 DC1 - 6 day w/ Holidays |  | Scott Masterson |  |
| QTS - 8200 |  | TFO Scope // DH 1200 / Lineup C - D / Install QCool Arms | 5d | 2026-02-19 | 2026-02-24 | QTS - 7950, QTS - 8020, QTS - 8190 |  |  |  | 23d | 0d | QTS-PHX3 DC1 - 6 day w/ Holidays |  | Scott Masterson |  |
| QTS - 25361 |  | TFO Scope // DH 1200 / Lineup C - D / Install Telecom Trays Tier # 1 - Grid | 10d | 2026-02-25 | 2026-03-07 | QTS - 25351 |  |  |  | 64d | 0d | QTS-PHX3 DC1 - 6 day w/ Holidays |  | Scott Masterson |  |
| QTS - 8050 |  | TFO Scope // DH 1200 / Lineup C - D / Install Telecom Trays Tier # 5 | 10d | 2026-02-25 | 2026-03-07 | QTS - 8200, QTS - 8190, QTS - 1020 |  |  |  | 28d | 0d | QTS-PHX3 DC1 - 6 day w/ Holidays |  | Scott Masterson |  |
| QTS - 8140 |  | TFO Scope // DH 1200 / Lineup C - D / Install Fire Alarm & Security | 7d | 2026-02-26 | 2026-03-05 | QTS - 8130, QTS - 8020, QTS - 7560 |  |  |  | 57d | 0d | QTS-PHX3 DC1 - 6 day w/ Holidays |  | Scott Masterson |  |
| QTS - 25371 |  | TFO Scope // DH 1200 / Lineup C - D / Install Telecom Trays Tier # 2 - Grid | 10d | 2026-03-02 | 2026-03-12 | QTS - 25361 FF+4d |  |  |  | 64d | 0d | QTS-PHX3 DC1 - 6 day w/ Holidays |  | Scott Masterson |  |
| QTS - 8210 |  | TFO Scope // DH 1200 / Lineup C - D / Install Telecom Trays Tier # 4 | 10d | 2026-03-03 | 2026-03-13 | QTS - 8050 FF+5d, QTS - 8050 SS+5d, QTS - 8070 |  |  |  | 28d | 0d | QTS-PHX3 DC1 - 6 day w/ Holidays |  | Scott Masterson |  |
| QTS - 25381 |  | TFO Scope // DH 1200 / Lineup C - D / Install Telecom Trays Tier # 3 - Grid | 10d | 2026-03-06 | 2026-03-17 | QTS - 25371 FF+4d |  |  |  | 64d | 36d | QTS-PHX3 DC1 - 6 day w/ Holidays |  | Scott Masterson |  |
| QTS - 8150 |  | TFO Scope // DH 1200 / Lineup C - D / Terminate I&C | 5d | 2026-03-06 | 2026-03-11 | QTS - 8140, QTS - 8130, QTS - 7770 |  |  |  | 57d | 0d | QTS-PHX3 DC1 - 6 day w/ Holidays |  | Scott Masterson |  |
| QTS - 8220 |  | TFO Scope // DH 1200 / Lineup C - D / Install Telecom Trays Tier # 3 | 10d | 2026-03-09 | 2026-03-19 | QTS - 8210 FF+5d, QTS - 8210 SS+5d |  |  |  | 28d | 0d | QTS-PHX3 DC1 - 6 day w/ Holidays |  | Scott Masterson |  |
| QTS - 8160 |  | TFO Scope // DH 1200 / Lineup C - D / Terminate - BMS & EPMS Connections | 7d | 2026-03-12 | 2026-03-19 | QTS - 8150 |  |  |  | 62d | 34d | QTS-PHX3 DC1 - 6 day w/ Holidays |  | Scott Masterson |  |
| QTS - 8730 |  | TFO Scope // DH 1200 / Lineup C - D / Install Power Tray Tier # 2 | 10d | 2026-03-14 | 2026-03-25 | QTS - 8220 FF+5d, QTS - 8220 SS+5d, QTS - 8070 |  |  |  | 28d | 0d | QTS-PHX3 DC1 - 6 day w/ Holidays |  | Scott Masterson |  |
| QTS - 8740 |  | TFO Scope // DH 1200 / Lineup C - D / Install Power Tray Tier # 1 | 10d | 2026-03-20 | 2026-03-31 | QTS - 8730 FF+5d, QTS - 8730 SS+5d |  |  |  | 28d | 0d | QTS-PHX3 DC1 - 6 day w/ Holidays |  | Scott Masterson |  |
| QTS - 8090 |  | TFO Scope // DH 1200 / Lineup C - D / Pull LV Wire | 14d | 2026-04-01 | 2026-04-16 | QTS - 8070, QTS - 8220, QTS - 8730, QTS - 8740 |  |  |  | 28d | 0d | QTS-PHX3 DC1 - 6 day w/ Holidays |  | Scott Masterson |  |
| QTS - 10470 |  | TFO Scope // DH 1200 / Lineup C - D / Pull RPP Whips - RPPs to Racks | 15d | 2026-04-07 | 2026-04-23 | QTS - 8650, QTS - 8640 |  |  |  | 45d | 0d | QTS-PHX3 DC1 - 6 day w/ Holidays |  | Scott Masterson |  |
| QTS - 8110 |  | TFO Scope // DH 1200 / Lineup C - D / Terminate LV | 10d | 2026-04-17 | 2026-04-28 | QTS - 8090 |  |  |  | 28d | 0d | QTS-PHX3 DC1 - 6 day w/ Holidays |  | Scott Masterson |  |
| QTS - 8780 |  | TFO Scope // DH 1200 / Lineup C - D / Terminate Whips at RPP | 10d | 2026-04-24 | 2026-05-05 | QTS - 10470 |  |  |  | 45d | 36d | QTS-PHX3 DC1 - 6 day w/ Holidays |  | Scott Masterson |  |
| QTS - 8170 |  | TFO Scope // DH 1200 / Lineup C - D / Clean Walk & PEI - Electrical & Controls | 2d | 2026-04-29 | 2026-04-30 | QTS - 25381, QTS - 8120, QTS - 8150, QTS - 8110, QTS - 8140, QTS - 8160 |  |  |  | 28d | 5d | QTS-PHX3 DC1 - 6 day w/ Holidays |  | Scott Masterson |  |

| ID | WBS | Activity | Duration | Start | Finish | Predecessors | Complete | Planned start | Planned finish | Total float | Free float | Calendar | Notes | Layton Responsible Party | Allucent CSI Group |
| --- | --- | --- | --- | --- | --- | --- | --- | --- | --- | --- | --- | --- | --- | --- | --- |
|  | 2 | **1200 - TFO Scope Buildout (3MW) - Lineup E - F** |  | 2025-11-10 | 2026-05-06 |  |  |  |  |  |  |  |  |  |  |
| QTS - 8250 |  | TFO Scope // DH 1200 / Lineup E - F / Install HAC Support Steel | 5d | 2025-11-10 A | 2025-11-10 A | QTS - 8020 | 100% | 2025-11-10 | 2025-11-14 |  |  | **GLOBAL - 5 Day Workweek w/ Basic Holidays | Changed 7-5 Days |  |  |
| QTS - 8310 |  | TFO Scope // DH 1200 / Lineup E - F / Install OH Trapeze - Screen Wall to CODs | 3d | 2026-01-22 | 2026-01-24 | QTS - 8250, QTS - 8080 |  |  |  | 57d | 0d | QTS-PHX3 DC1 - 6 day w/ Holidays | Changed from Conduit to Tray | Scott Masterson |  |
| QTS - 8460 |  | TFO Scope // DH 1200 / Lineup E - F / Install OH Trapeze - Screen Wall to RPPs | 3d | 2026-01-22 | 2026-01-24 | QTS - 8310 SS |  |  |  | 57d | 0d | QTS-PHX3 DC1 - 6 day w/ Holidays | Changed from Conduit to Tray | Scott Masterson |  |
| QTS - 8260 |  | TFO Scope // DH 1200 / Lineup E - F / Install Stainless Steel Piping Hangers | 4d | 2026-01-24 | 2026-01-28 | QTS - 8250, QTS - 8030 |  |  |  | 69d | 0d | QTS-PHX3 DC1 - 6 day w/ Holidays |  | Dave Wiltberger | 01ADMIN |
| QTS - 8330 |  | TFO Scope // DH 1200 / Lineup E - F / Pull MC Feeders - CODs to RPPs | 12d | 2026-01-26 | 2026-02-07 | QTS - 8310, QTS - 8460 |  |  |  | 57d | 8d | QTS-PHX3 DC1 - 6 day w/ Holidays | Added MC and Removed RPP Set | Scott Masterson |  |
| QTS - 8420 |  | TFO Scope // DH 1200 / Lineup E - F / Uncrate QCools with HACs | 1d | 2026-01-27 | 2026-01-27 | QTS - 8190 SS+5d, QTS - 1020 |  |  |  | 47d | 0d | QTS-PHX3 DC1 - 6 day w/ Holidays |  | Dave Wiltberger |  |
| QTS - 8300 |  | TFO Scope // DH 1200 / Lineup E - F / Raise HAC, QCool & Trays | 6d | 2026-01-28 | 2026-02-03 | QTS - 8420, QTS - 8250 |  |  |  | 49d | 0d | QTS-PHX3 DC1 - 6 day w/ Holidays |  | Dave Wiltberger |  |
| QTS - 8410 |  | TFO Scope // DH 1200 / Lineup E - F / Hang Stainless Steel 6" Fan Wall - QCool | 9d | 2026-01-29 | 2026-02-07 | QTS - 8260, QTS - 2590, QTS - 24751 |  |  |  | 69d | 24d | QTS-PHX3 DC1 - 6 day w/ Holidays |  | Dave Wiltberger |  |
| QTS - 8290 |  | TFO Scope // DH 1200 / Lineup E - F / Set RPP # 12 Units | 5d | 2026-02-04 | 2026-02-09 | QTS - 8300 |  |  |  | 49d | 0d | QTS-PHX3 DC1 - 6 day w/ Holidays | Tied to Raise QCool | Scott Masterson |  |
| QTS - 8350 |  | TFO Scope // DH 1200 / Lineup E - F / Terminate Feeder at RPPs and CODs | 10d | 2026-02-10 | 2026-02-20 | QTS - 8290, QTS - 8330 FF+3d |  |  |  | 49d | 1d | QTS-PHX3 DC1 - 6 day w/ Holidays | Added Set RPP Pred | Scott Masterson |  |
| QTS - 8360 |  | TFO Scope // DH 1200 / Lineup E - F / Rough-In I&C | 10d | 2026-02-10 | 2026-02-20 | QTS - 8290 |  |  |  | 66d | 0d | QTS-PHX3 DC1 - 6 day w/ Holidays |  | Scott Masterson |  |
| QTS - 8370 |  | TFO Scope // DH 1200 / Lineup E - F / Install Fire Alarm & Security | 7d | 2026-02-21 | 2026-02-28 | QTS - 8360, QTS - 8250, QTS - 8020, QTS - 7560 |  |  |  | 66d | 9d | QTS-PHX3 DC1 - 6 day w/ Holidays |  | Scott Masterson |  |
| QTS - 25391 |  | TFO Scope // DH 1200 / Lineup E - F / Install Grid Hangers | 5d | 2026-02-25 | 2026-03-02 | QTS - 25351 |  |  |  | 59d | 0d | QTS-PHX3 DC1 - 6 day w/ Holidays |  | Scott Masterson |  |
| QTS - 8430 |  | TFO Scope // DH 1200 / Lineup E - F / Install QCool Arms | 5d | 2026-02-25 | 2026-03-02 | QTS - 8200, QTS - 8250, QTS - 8420 |  |  |  | 23d | 0d | QTS-PHX3 DC1 - 6 day w/ Holidays |  | Scott Masterson |  |
| QTS - 25401 |  | TFO Scope // DH 1200 / Lineup E - F / Install Telecom Trays Tier # 1 - Grid | 10d | 2026-03-03 | 2026-03-13 | QTS - 25391 |  |  |  | 59d | 0d | QTS-PHX3 DC1 - 6 day w/ Holidays |  | Scott Masterson |  |
| QTS - 8280 |  | TFO Scope // DH 1200 / Lineup E - F / Install Telecom Trays Tier # 5 | 10d | 2026-03-03 | 2026-03-13 | QTS - 8430, QTS - 8420 |  |  |  | 23d | 0d | QTS-PHX3 DC1 - 6 day w/ Holidays |  | Scott Masterson |  |
| QTS - 25411 |  | TFO Scope // DH 1200 / Lineup E - F / Install Telecom Trays Tier # 2 - Grid | 10d | 2026-03-07 | 2026-03-18 | QTS - 25401 FF+4d |  |  |  | 59d | 0d | QTS-PHX3 DC1 - 6 day w/ Holidays |  | Scott Masterson |  |
| QTS - 8440 |  | TFO Scope // DH 1200 / Lineup E - F / Install Telecom Trays Tier # 4 | 10d | 2026-03-09 | 2026-03-19 | QTS - 8280 FF+5d, QTS - 8280 SS+5d, QTS - 8300 |  |  |  | 23d | 0d | QTS-PHX3 DC1 - 6 day w/ Holidays |  | Scott Masterson |  |
| QTS - 25421 |  | TFO Scope // DH 1200 / Lineup E - F / Install Telecom Trays Tier # 3 - Grid | 10d | 2026-03-12 | 2026-03-23 | QTS - 25411 FF+4d |  |  |  | 59d | 36d | QTS-PHX3 DC1 - 6 day w/ Holidays |  | Scott Masterson |  |
| QTS - 8380 |  | TFO Scope // DH 1200 / Lineup E - F / Terminate I&C | 5d | 2026-03-12 | 2026-03-17 | QTS - 8370, QTS - 8360, QTS - 8150 |  |  |  | 57d | 0d | QTS-PHX3 DC1 - 6 day w/ Holidays |  | Scott Masterson |  |
| QTS - 8450 |  | TFO Scope // DH 1200 / Lineup E - F / Install Telecom Trays Tier # 3 | 10d | 2026-03-14 | 2026-03-25 | QTS - 8440 FF+5d, QTS - 8440 SS+5d |  |  |  | 23d | 0d | QTS-PHX3 DC1 - 6 day w/ Holidays |  | Scott Masterson |  |
| QTS - 8390 |  | TFO Scope // DH 1200 / Lineup E - F / Terminate - BMS & EPMS Connections | 7d | 2026-03-18 | 2026-03-25 | QTS - 8380 |  |  |  | 57d | 34d | QTS-PHX3 DC1 - 6 day w/ Holidays |  | Scott Masterson |  |
| QTS - 8640 |  | TFO Scope // DH 1200 / Lineup E - F / Install Power Tray Tier # 2 | 10d | 2026-03-20 | 2026-03-31 | QTS - 8450 FF+5d, QTS - 8450 SS+5d, QTS - 8300 |  |  |  | 23d | 0d | QTS-PHX3 DC1 - 6 day w/ Holidays |  | Scott Masterson |  |
| QTS - 8650 |  | TFO Scope // DH 1200 / Lineup E - F / Install Power Tray Tier # 1 | 10d | 2026-03-26 | 2026-04-06 | QTS - 8640 FF+5d, QTS - 8640 SS+5d |  |  |  | 23d | 0d | QTS-PHX3 DC1 - 6 day w/ Holidays |  | Scott Masterson |  |
| QTS - 10490 |  | TFO Scope // DH 1200 / Lineup E - F / Pull RPP Whips - RPPs to Racks | 15d | 2026-04-07 | 2026-04-23 | QTS - 8650, QTS - 8640 |  |  |  | 45d | 0d | QTS-PHX3 DC1 - 6 day w/ Holidays |  | Scott Masterson |  |
| QTS - 8320 |  | TFO Scope // DH 1200 / Lineup E - F / Pull LV Wire | 14d | 2026-04-07 | 2026-04-22 | QTS - 8300, QTS - 8450, QTS - 8640, QTS - 8650 |  |  |  | 23d | 0d | QTS-PHX3 DC1 - 6 day w/ Holidays |  | Scott Masterson |  |
| QTS - 8340 |  | TFO Scope // DH 1200 / Lineup E - F / Terminate LV | 10d | 2026-04-23 | 2026-05-04 | QTS - 8320 |  |  |  | 23d | 0d | QTS-PHX3 DC1 - 6 day w/ Holidays |  | Scott Masterson |  |
| QTS - 8670 |  | TFO Scope // DH 1200 / Lineup E - F / Terminate Whips at RPP | 10d | 2026-04-24 | 2026-05-05 | QTS - 10490 |  |  |  | 45d | 36d | QTS-PHX3 DC1 - 6 day w/ Holidays |  | Scott Masterson |  |
| QTS - 8400 |  | TFO Scope // DH 1200 / Lineup E - F / Clean Walk & PEI - Electrical & Controls | 2d | 2026-05-05 | 2026-05-06 | QTS - 25421, QTS - 8350, QTS - 8380, QTS - 8340, QTS - 8370, QTS - 8390 |  |  |  | 23d | 0d | QTS-PHX3 DC1 - 6 day w/ Holidays |  | Scott Masterson |  |

| ID | WBS | Activity | Duration | Start | Finish | Predecessors | Total float | Free float | Calendar | Layton Responsible Party | Allucent CSI Group | Notes |
| --- | --- | --- | --- | --- | --- | --- | --- | --- | --- | --- | --- | --- |
|  | 2 | **Gallery 1201 Mechanical** |  | 2026-01-20 | 2026-04-02 |  |  |  |  |  |  |  |
|  | 9 | **TFO 1201 - CDU Mechanical Gallery** |  | 2026-01-20 | 2026-04-02 |  |  |  |  |  |  |  |
| QTS - 7940 |  | TFO Scope // DH 1200 - 1201 Mechanical Gallery / Install OH Technical Loop Hangers | 5d | 2026-01-20 | 2026-01-24 | QTS - 7570 | 1d | 0d | QTS-PHX3 DC1 - 6 day w/ Holidays | Dave Wiltberger |  |  |
| QTS - 7720 |  | TFO Scope // DH 1200 - 1201 Mechanical Gallery / Install OH 8" Technical Loop CDU Piping | 9d | 2026-01-26 | 2026-02-04 | QTS - 7940, QTS - 2590, QTS - 24751 | 23d | 0d | QTS-PHX3 DC1 - 6 day w/ Holidays | Dave Wiltberger |  |  |
| QTS - 7690 |  | TFO Scope // DH 1200 - 1201 Mechanical Gallery / OFCI - L2 SET IN PLACE - CDU - 9 units | 3d | 2026-02-05 | 2026-02-07 | QTS - 7720 | 23d | 0d | QTS-PHX3 DC1 - 6 day w/ Holidays | Dave Wiltberger |  |  |
| QTS - 7740 |  | TFO Scope // DH 1200 - 1201 Mechanical Gallery / Pull Branches From MOD-03 to CDUs | 8d | 2026-02-09 | 2026-02-17 | QTS - 7690 | 23d | 0d | QTS-PHX3 DC1 - 6 day w/ Holidays | Scott Masterson |  |  |
| QTS - 7850 |  | TFO Scope // DH 1200 - 1201 Mechanical Gallery / Detail & Fabricate CDU Mechanical Connections | 10d | 2026-02-09 | 2026-02-19 | QTS - 7690 | 45d | 0d | QTS-PHX3 DC1 - 6 day w/ Holidays | Dave Wiltberger |  |  |
| QTS - 7710 |  | TFO Scope // DH 1200 - 1201 Mechanical Gallery / Terminate & Torque - CDU Connections | 5d | 2026-02-18 | 2026-02-23 | QTS - 7740, QTS - 7690 | 23d | 4d | QTS-PHX3 DC1 - 6 day w/ Holidays | Scott Masterson |  |  |
| QTS - 7730 |  | TFO Scope // DH 1200 - 1201 Mechanical Gallery / CDU Unit 4" Mechanical Connections Lineup - A - B | 7d | 2026-02-20 | 2026-02-27 | QTS - 7850, QTS - 7880, QTS - 7690 | 45d | 0d | QTS-PHX3 DC1 - 6 day w/ Holidays | Dave Wiltberger |  |  |
| QTS - 10250 |  | TFO Scope // DH 1200 - 1201 Mechanical Gallery / Install Telecom Conduit from MMR to IDF Cabinet | 10d | 2026-02-26 | 2026-03-09 | QTS-16561 | 59d | 0d | QTS-PHX3 DC1 - 6 day w/ Holidays | Scott Masterson |  |  |
| QTS - 7700 |  | TFO Scope // DH 1200 - 1201 Mechanical Gallery / Pull LV Main / IDF Cabinet to Basket Tray | 7d | 2026-02-26 | 2026-03-05 | QTS-16561 | 69d | 0d | QTS-PHX3 DC1 - 6 day w/ Holidays | Scott Masterson |  |  |
| QTS - 7750 |  | TFO Scope // DH 1200 - 1201 Mechanical Gallery / Fill & Flush Technical Loop A - B | 5d | 2026-02-28 | 2026-03-05 | QTS - 7730 | 55d | 0d | QTS-PHX3 DC1 - 6 day w/ Holidays | Dave Wiltberger |  |  |
| QTS - 7860 |  | TFO Scope // DH 1200 - 1201 Mechanical Gallery / CDU Unit 4" Mechanical Connections Lineup - C - D | 7d | 2026-02-28 | 2026-03-07 | QTS - 7730, QTS - 8180 | 45d | 0d | QTS-PHX3 DC1 - 6 day w/ Holidays | Dave Wiltberger |  |  |
| QTS - 8810 |  | TFO Scope // DH 1200 - 1201 Mechanical Gallery / Final Connection Tie-In to CDU Lineup - A - B | 5d | 2026-03-06 | 2026-03-11 | QTS - 7750 | 55d | 0d | QTS-PHX3 DC1 - 6 day w/ Holidays | Dave Wiltberger |  |  |
| QTS - 7870 |  | TFO Scope // DH 1200 - 1201 Mechanical Gallery / CDU Unit 4" Mechanical Connections Lineup - E - F | 7d | 2026-03-09 | 2026-03-16 | QTS - 7860, QTS - 8410 | 45d | 0d | QTS-PHX3 DC1 - 6 day w/ Holidays | Dave Wiltberger |  |  |
| QTS - 8820 |  | TFO Scope // DH 1200 - 1201 Mechanical Gallery / Fill & Flush Technical Loop C - D | 5d | 2026-03-09 | 2026-03-13 | QTS - 7860 | 48d | 0d | QTS-PHX3 DC1 - 6 day w/ Holidays | Dave Wiltberger |  |  |
| QTS - 10260 |  | TFO Scope // DH 1200 - 1201 Mechanical Gallery / Pull Telecom Wire from MMR to IDF Cabinet | 10d | 2026-03-10 | 2026-03-20 | QTS - 10250 | 59d | 0d | QTS-PHX3 DC1 - 6 day w/ Holidays | Scott Masterson |  |  |
| QTS - 8830 |  | TFO Scope // DH 1200 - 1201 Mechanical Gallery / Final Connection Tie-In to CDU Lineup - C - D | 5d | 2026-03-14 | 2026-03-19 | QTS - 8820 | 48d | 0d | QTS-PHX3 DC1 - 6 day w/ Holidays | Dave Wiltberger |  |  |
| QTS - 8840 |  | TFO Scope // DH 1200 - 1201 Mechanical Gallery / Fill & Flush Technical Loop E - F | 5d | 2026-03-17 | 2026-03-21 | QTS - 7870 | 45d | 0d | QTS-PHX3 DC1 - 6 day w/ Holidays | Dave Wiltberger |  |  |
| QTS - 8630 |  | TFO Scope // DH 1200 - 1201 Mechanical Gallery / BMS & EPMS Terminations | 2d | 2026-03-21 | 2026-03-23 | QTS - 7700, QTS - 10260 | 59d | 0d | QTS-PHX3 DC1 - 6 day w/ Holidays | Scott Masterson |  |  |
| QTS - 8850 |  | TFO Scope // DH 1200 - 1201 Mechanical Gallery / Final Connection Tie-In to CDU Lineup - E - F | 5d | 2026-03-23 | 2026-03-27 | QTS - 8840 | 45d | 0d | QTS-PHX3 DC1 - 6 day w/ Holidays | Dave Wiltberger |  |  |
| QTS - 8620 |  | TFO Scope // DH 1200 - 1201 Mechanical Gallery / Clean Walk & PEI - Electrical | 2d | 2026-03-24 | 2026-03-25 | QTS - 7710, QTS - 10260, QTS - 8630 | 59d | 36d | QTS-PHX3 DC1 - 6 day w/ Holidays | Scott Masterson |  |  |
| QTS - 7760 |  | TFO Scope // DH 1200 - 1201 Mechanical Gallery / Clean Walk & PEI - Mechanical | 5d | 2026-03-28 | 2026-04-02 | QTS - 8830, QTS - 8840, QTS - 8850, QTS - 8810 | 52d | 29d | QTS-PHX3 DC1 - 6 day w/ Holidays | Dave Wiltberger |  |  |
|  | 7 | **Gallery 1203 Mechanical** |  | 2026-01-26 | 2026-04-01 |  |  |  |  |  |  |  |
|  | 10 | **TFO 1203 - CDU Mechanical Gallery** |  | 2026-01-26 | 2026-04-01 |  |  |  |  |  |  |  |
| QTS - 8590 |  | TFO Scope // DH 1200 - 1203 Mechanical Gallery / Install OH Technical Loop Hangers | 5d | 2026-01-26 | 2026-01-30 | QTS - 7940 | 1d | 0d | QTS-PHX3 DC1 - 6 day w/ Holidays | Dave Wiltberger | 01ADMIN |  |
| QTS - 8510 |  | TFO Scope // DH 1200 - 1203 Mechanical Gallery / Install OH 8" Technical Loop CDU Piping | 9d | 2026-01-31 | 2026-02-10 | QTS - 8590, QTS - 2590, QTS - 24751 | 1d | 0d | QTS-PHX3 DC1 - 6 day w/ Holidays | Dave Wiltberger |  | Changed 9 to 10 Days |
| QTS - 8480 |  | TFO Scope // DH 1200 - 1203 Mechanical Gallery / OFCI - L2 SET IN PLACE - CDU - 9 units | 3d | 2026-02-11 | 2026-02-13 | QTS - 8510 | 1d | 0d | QTS-PHX3 DC1 - 6 day w/ Holidays | Dave Wiltberger |  |  |
| QTS - 8530 |  | TFO Scope // DH 1200 - 1203 Mechanical Gallery / Pull Branches From MOD-03 to CDUs | 8d | 2026-02-14 | 2026-02-23 | QTS - 8480 | 18d | 17d | QTS-PHX3 DC1 - 6 day w/ Holidays | Scott Masterson |  |  |
| QTS - 8560 |  | TFO Scope // DH 1200 - 1203 Mechanical Gallery / Detail & Fabricate CDU Mechanical Connections | 10d | 2026-02-14 | 2026-02-25 | QTS - 8480 | 1d | 0d | QTS-PHX3 DC1 - 6 day w/ Holidays | Dave Wiltberger |  |  |
| QTS - 8520 |  | TFO Scope // DH 1200 - 1203 Mechanical Gallery / CDU Unit 4" Mechanical Connections Lineup - A - B | 7d | 2026-02-26 | 2026-03-05 | QTS - 8560, QTS - 8510, QTS - 8480, QTS - 7880 | 1d | 0d | QTS-PHX3 DC1 - 6 day w/ Holidays | Dave Wiltberger |  |  |
| QTS - 8490 |  | TFO Scope // DH 1200 - 1203 Mechanical Gallery / Pull LV Main / IDF Cabinet to Basket Tray | 7d | 2026-03-02 | 2026-03-09 | QTS-17151 | 69d | 10d | QTS-PHX3 DC1 - 6 day w/ Holidays | Scott Masterson |  |  |
| QTS - 8570 |  | TFO Scope // DH 1200 - 1203 Mechanical Gallery / CDU Unit 4" Mechanical Connections Lineup - C - D | 7d | 2026-03-03 | 2026-03-10 | QTS - 8520 SS+4d | 1d | 0d | QTS-PHX3 DC1 - 6 day w/ Holidays | Dave Wiltberger |  |  |
| QTS - 8540 |  | TFO Scope // DH 1200 - 1203 Mechanical Gallery / Fill & Flush Technical Loop A - B | 5d | 2026-03-06 | 2026-03-11 | QTS - 8520 | 54d | 0d | QTS-PHX3 DC1 - 6 day w/ Holidays | Dave Wiltberger |  |  |
| QTS - 8580 |  | TFO Scope // DH 1200 - 1203 Mechanical Gallery / CDU Unit 4" Mechanical Connections Lineup - E - F | 7d | 2026-03-07 | 2026-03-14 | QTS - 8570 SS+4d | 1d | 0d | QTS-PHX3 DC1 - 6 day w/ Holidays | Dave Wiltberger |  |  |
| QTS - 8690 |  | TFO Scope // DH 1200 - 1203 Mechanical Gallery / Fill & Flush Technical Loop C - D | 5d | 2026-03-11 | 2026-03-16 | QTS - 8570, QTS - 8570 FF | 54d | 0d | QTS-PHX3 DC1 - 6 day w/ Holidays | Dave Wiltberger |  |  |
| QTS - 8680 |  | TFO Scope // DH 1200 - 1203 Mechanical Gallery / Final Connection to CDU Lineup - A - B | 5d | 2026-03-12 | 2026-03-17 | QTS - 8540 | 54d | 6d | QTS-PHX3 DC1 - 6 day w/ Holidays | Dave Wiltberger |  |  |
| QTS - 8500 |  | TFO Scope // DH 1200 - 1203 Mechanical Gallery / Terminate & Torque - CDU Connections | 5d | 2026-03-16 | 2026-03-20 | QTS - 8580, QTS - 8530, QTS - 8480 | 1d | 0d | QTS-PHX3 DC1 - 6 day w/ Holidays | Dave Wiltberger |  |  |
| QTS - 8720 |  | TFO Scope // DH 1200 - 1203 Mechanical Gallery / Fill & Flush Technical Loop E - F | 5d | 2026-03-16 | 2026-03-20 | QTS - 8580 | 50d | 0d | QTS-PHX3 DC1 - 6 day w/ Holidays | Dave Wiltberger |  |  |
| QTS - 8700 |  | TFO Scope // DH 1200 - 1203 Mechanical Gallery / Final Connection to CDU Lineup - C - D | 5d | 2026-03-17 | 2026-03-21 | QTS - 8690 | 54d | 4d | QTS-PHX3 DC1 - 6 day w/ Holidays | Dave Wiltberger |  |  |
| QTS - 8610 |  | TFO Scope // DH 1200 - 1203 Mechanical Gallery / BMS & EPMS Terminations | 2d | 2026-03-21 | 2026-03-23 | QTS - 8490, QTS - 8500 | 59d | 0d | QTS-PHX3 DC1 - 6 day w/ Holidays | Scott Masterson |  |  |
| QTS - 8710 |  | TFO Scope // DH 1200 - 1203 Mechanical Gallery / Final Connection to CDU Lineup - E - F | 5d | 2026-03-21 | 2026-03-26 | QTS - 8720 | 50d | 0d | QTS-PHX3 DC1 - 6 day w/ Holidays | Dave Wiltberger |  |  |
| QTS - 8600 |  | TFO Scope // DH 1200 - 1203 Mechanical Gallery / Clean Walk & PEI - Electrical | 2d | 2026-03-24 | 2026-03-25 | QTS - 8500, QTS - 8610 | 59d | 36d | QTS-PHX3 DC1 - 6 day w/ Holidays | Scott Masterson |  |  |
| QTS - 8550 |  | TFO Scope // DH 1200 - 1203 Mechanical Gallery / Clean Walk & PEI - Mechanical | 5d | 2026-03-27 | 2026-04-01 | QTS - 8680, QTS - 8710, QTS - 8700 | 53d | 30d | QTS-PHX3 DC1 - 6 day w/ Holidays | Dave Wiltberger |  |  |

| ID | WBS | Activity | Duration | Start | Finish | Predecessors | Total float | Free float | Calendar | Layton Responsible Party | Notes |
| --- | --- | --- | --- | --- | --- | --- | --- | --- | --- | --- | --- |
|  | 8 | **Data Hall 2300 (9MW)** |  | 2026-01-14 | 2026-06-16 |  |  |  |  |  |  |
|  | 3 | **Data Hall 2300** |  | 2026-01-14 | 2026-06-16 |  |  |  |  |  |  |
|  | 8 | **DH 2300 - TFO Scope Buildout (9MW)** |  | 2026-01-14 | 2026-06-16 |  |  |  |  |  |  |
|  | 1 | **2300 - TFO Scope Buildout (3MW) - Lineup A - B** |  | 2026-01-14 | 2026-06-05 |  |  |  |  |  |  |
| QTS - 6240 |  | TFO Scope // DH 2300 / Lineup A - B / Install HAC Support Steel | 5d | 2026-01-14 | 2026-01-20 | QTS - 5630 | 42d | 0d | QTS-PHX3 DC1 - 6 day w/ Holidays | Scott Masterson |  |
| QTS - 6250 |  | TFO Scope // DH 2300 / Lineup A - B / Install Stainless Steel Piping Hangers | 4d | 2026-01-21 | 2026-01-24 | QTS - 6240 | 44d | 1d | QTS-PHX3 DC1 - 6 day w/ Holidays | Dave Wiltberger |  |
| QTS - 6560 |  | TFO Scope // DH 2300 / Lineup A - B / Hang Stainless Steel 6" Fan Wall - QCool | 9d | 2026-02-12 | 2026-02-21 | QTS - 6250, QTS - 2590, QTS - 24761 | 37d | 31d | QTS-PHX3 DC1 - 6 day w/ Holidays | Dave Wiltberger |  |
| QTS - 6610 |  | TFO Scope // DH 2300 / Lineup A - B / Uncrate QCools with HACs | 1d | 2026-02-12 | 2026-02-12 | QTS - 7550, QTS - 6240, QTS - 10210, QTS - 8420, QTS - 1020 | 35d | 0d | QTS-PHX3 DC1 - 6 day w/ Holidays | Dave Wiltberger | Changed Duration from 10 to 5 |
| QTS - 25431 |  | TFO Scope // DH 2300 / Lineup A - B / Install Grid Hangers | 5d | 2026-03-11 | 2026-03-16 | QTS-1003580 | 84d | 0d | QTS-PHX3 DC1 - 6 day w/ Holidays | Scott Masterson |  |
| QTS - 6630 |  | TFO Scope // DH 2300 / Lineup A - B / Install QCool Arms | 5d | 2026-03-11 | 2026-03-16 | QTS-1003580, QTS - 6240, QTS - 6610 | 38d | 0d | QTS-PHX3 DC1 - 6 day w/ Holidays | Scott Masterson |  |
| QTS - 6300 |  | TFO Scope // DH 2300 / Lineup A - B / Install OH Trapeze - Screen Wall to CODs | 3d | 2026-03-13 | 2026-03-16 | QTS-15771, QTS-4191, QTS-45961, QTS-45971 | 18d | 0d | QTS-PHX3 DC1 - 6 day w/ Holidays | Scott Masterson | Changed from Conduit to Tray |
| QTS - 6660 |  | TFO Scope // DH 2300 / Lineup A - B / Install OH Trapeze - Screen Wall to RPPs | 3d | 2026-03-13 | 2026-03-16 | QTS - 6300 SS | 24d | 0d | QTS-PHX3 DC1 - 6 day w/ Holidays | Scott Masterson | Changed from Conduit to Tray |
| QTS - 25441 |  | TFO Scope // DH 2300 / Lineup A - B / Install Telecom Trays Tier # 1 - Grid | 10d | 2026-03-17 | 2026-03-27 | QTS - 25431 | 94d | 0d | QTS-PHX3 DC1 - 6 day w/ Holidays | Scott Masterson |  |
| QTS - 6270 |  | TFO Scope // DH 2300 / Lineup A - B / Install Telecom Trays Tier # 5 | 10d | 2026-03-17 | 2026-03-27 | QTS - 6630, QTS - 6610, QTS - 1020 | 53d | 8d | QTS-PHX3 DC1 - 6 day w/ Holidays | Scott Masterson |  |
| QTS - 6320 |  | TFO Scope // DH 2300 / Lineup A - B / Pull MC Feeders - CODs to RPPs | 12d | 2026-03-17 | 2026-03-30 | QTS - 6300, QTS - 6660 | 24d | 18d | QTS-PHX3 DC1 - 6 day w/ Holidays | Scott Masterson | Added MC and Removed RPP Set |
| QTS - 25451 |  | TFO Scope // DH 2300 / Lineup A - B / Install Telecom Trays Tier # 2 - Grid | 10d | 2026-03-21 | 2026-04-01 | QTS - 25441 FF+4d | 94d | 0d | QTS-PHX3 DC1 - 6 day w/ Holidays | Scott Masterson |  |
| QTS - 25461 |  | TFO Scope // DH 2300 / Lineup A - B / Install Telecom Trays Tier # 3 - Grid | 10d | 2026-03-26 | 2026-04-06 | QTS - 25451 FF+4d | 94d | 49d | QTS-PHX3 DC1 - 6 day w/ Holidays | Scott Masterson |  |
| QTS - 6290 |  | TFO Scope // DH 2300 / Lineup A - B / Raise HAC, QCool & Trays | 6d | 2026-03-31 | 2026-04-06 | QTS - 6560, QTS - 6250, QTS - 6610, QTS-17591 | 6d | 0d | QTS-PHX3 DC1 - 6 day w/ Holidays | Dave Wiltberger |  |
| QTS - 6280 |  | TFO Scope // DH 2300 / Lineup A - B / Set RPP # 12 Units | 5d | 2026-04-07 | 2026-04-11 | QTS - 6290 | 6d | 0d | QTS-PHX3 DC1 - 6 day w/ Holidays | Scott Masterson | Tied to Raise QCool |
| QTS - 6640 |  | TFO Scope // DH 2300 / Lineup A - B / Install Telecom Trays Tier # 4 | 10d | 2026-04-07 | 2026-04-17 | QTS - 6270, QTS - 6290 | 45d | 0d | QTS-PHX3 DC1 - 6 day w/ Holidays | Scott Masterson |  |
| QTS - 6340 |  | TFO Scope // DH 2300 / Lineup A - B / Terminate Feeder at RPPs and CODs | 10d | 2026-04-13 | 2026-04-23 | QTS - 6280, QTS - 6320 FF+3d | 6d | 0d | QTS-PHX3 DC1 - 6 day w/ Holidays | Scott Masterson | Added Set RPP Pred |
| QTS - 6350 |  | TFO Scope // DH 2300 / Lineup A - B / Rough-In I&C | 10d | 2026-04-13 | 2026-04-23 | QTS - 6370, QTS - 6280 | 52d | 0d | QTS-PHX3 DC1 - 6 day w/ Holidays | Scott Masterson |  |
| QTS - 6650 |  | TFO Scope // DH 2300 / Lineup A - B / Install Telecom Trays Tier # 3 | 10d | 2026-04-18 | 2026-04-29 | QTS - 6640 | 45d | 0d | QTS-PHX3 DC1 - 6 day w/ Holidays | Scott Masterson |  |
| QTS - 6360 |  | TFO Scope // DH 2300 / Lineup A - B / Install Fire Alarm & Security | 7d | 2026-04-24 | 2026-05-01 | QTS - 6350, QTS - 6240, QTS - 10210 | 52d | 0d | QTS-PHX3 DC1 - 6 day w/ Holidays | Scott Masterson |  |
| QTS - 7430 |  | TFO Scope // DH 2300 / Lineup A - B / Install Power Tray Tier # 2 | 10d | 2026-04-24 | 2026-05-05 | QTS - 6650 SS+5d, QTS - 6650 FF+5d, QTS - 6290 | 45d | 0d | QTS-PHX3 DC1 - 6 day w/ Holidays | Scott Masterson |  |
| QTS - 7440 |  | TFO Scope // DH 2300 / Lineup A - B / Install Power Tray Tier # 1 | 10d | 2026-04-30 | 2026-05-11 | QTS - 7430 SS+5d, QTS - 7430 FF+5d | 69d | 0d | QTS-PHX3 DC1 - 6 day w/ Holidays | Scott Masterson |  |
| QTS - 6450 |  | TFO Scope // DH 2300 / Lineup A - B / Terminate I&C | 5d | 2026-05-02 | 2026-05-07 | QTS - 6360, QTS - 6350, QTS - 6390, QTS - 2620 | 52d | 0d | QTS-PHX3 DC1 - 6 day w/ Holidays | Scott Masterson |  |
| QTS - 6310 |  | TFO Scope // DH 2300 / Lineup A - B / Pull LV Wire | 14d | 2026-05-06 | 2026-05-21 | QTS - 6290, QTS - 6650, QTS - 7430 | 45d | 0d | QTS-PHX3 DC1 - 6 day w/ Holidays | Scott Masterson |  |
| QTS - 6460 |  | TFO Scope // DH 2300 / Lineup A - B / Terminate - BMS & EPMS Connections | 7d | 2026-05-08 | 2026-05-15 | QTS - 6380, QTS - 6450 | 62d | 24d | QTS-PHX3 DC1 - 6 day w/ Holidays | Scott Masterson |  |
| QTS - 7480 |  | TFO Scope // DH 2300 / Lineup A - B / Pull RPP Whips - RPPs to Racks | 15d | 2026-05-12 | 2026-05-29 | QTS - 7440, QTS - 7430 | 69d | 0d | QTS-PHX3 DC1 - 6 day w/ Holidays | Scott Masterson |  |
| QTS - 7470 |  | TFO Scope // DH 2300 / Lineup A - B / Terminate Whips at RPP | 10d | 2026-05-21 | 2026-06-02 | QTS - 7480 FF+3d | 69d | 63d | QTS-PHX3 DC1 - 6 day w/ Holidays | Scott Masterson |  |
| QTS - 6330 |  | TFO Scope // DH 2300 / Lineup A - B / Terminate LV | 10d | 2026-05-22 | 2026-06-03 | QTS - 6310 | 45d | 0d | QTS-PHX3 DC1 - 6 day w/ Holidays | Scott Masterson |  |
| QTS - 6470 |  | TFO Scope // DH 2300 / Lineup A - B / Clean Walk & PEI - Electrical & Controls | 2d | 2026-06-04 | 2026-06-05 | QTS - 25461, QTS - 6340, QTS - 6450, QTS - 6330, QTS - 6360 | 45d | 7d | QTS-PHX3 DC1 - 6 day w/ Holidays | Scott Masterson |  |

| ID | WBS | Activity | Duration | Start | Finish | Predecessors | Total float | Free float | Calendar | Layton Responsible Party | Notes |
| --- | --- | --- | --- | --- | --- | --- | --- | --- | --- | --- | --- |
|  | 3 | **2300 - TFO Scope Buildout (3MW) - Lineup C - D** |  | 2026-01-21 | 2026-05-21 |  |  |  |  |  |  |
| QTS - 6700 |  | TFO Scope // DH 2300 / Lineup C - D / Install HAC Support Steel | 5d | 2026-01-21 | 2026-01-26 | QTS - 6240 | 42d | 0d | QTS-PHX3 DC1 - 6 day w/ Holidays | Scott Masterson |  |
| QTS - 6710 |  | TFO Scope // DH 2300 / Lineup C - D / Install Stainless Steel Piping Hangers | 4d | 2026-01-27 | 2026-01-30 | QTS - 6250, QTS - 6700 | 43d | 1d | QTS-PHX3 DC1 - 6 day w/ Holidays | Dave Wiltberger |  |
| QTS - 6860 |  | TFO Scope // DH 2300 / Lineup C - D / Hang Stainless Steel 6" Fan Wall - QCool | 9d | 2026-02-12 | 2026-02-21 | QTS - 6710, QTS - 2590, QTS - 24761 | 37d | 0d | QTS-PHX3 DC1 - 6 day w/ Holidays | Dave Wiltberger |  |
| QTS - 6870 |  | TFO Scope // DH 2300 / Lineup C - D / Uncrate QCools with HACs | 1d | 2026-02-18 | 2026-02-18 | QTS - 6610 SS+5d, QTS - 7550, QTS - 6700, QTS - 10210, QTS - 1020 | 35d | 0d | QTS-PHX3 DC1 - 6 day w/ Holidays | Dave Wiltberger | Changed Duration from 10 to 5 |
| QTS - 6750 |  | TFO Scope // DH 2300 / Lineup C - D / Raise HAC, QCool & Trays | 6d | 2026-02-23 | 2026-02-28 | QTS - 6860, QTS - 6710, QTS - 6870 | 37d | 0d | QTS-PHX3 DC1 - 6 day w/ Holidays | Dave Wiltberger |  |
| QTS - 6740 |  | TFO Scope // DH 2300 / Lineup C - D / Set RPP # 12 Units | 5d | 2026-03-02 | 2026-03-06 | QTS - 6750 | 37d | 16d | QTS-PHX3 DC1 - 6 day w/ Holidays | Scott Masterson | Tied to Raise QCool |
| QTS - 25471 |  | TFO Scope // DH 2300 / Lineup C - D / Install Grid Hangers | 5d | 2026-03-17 | 2026-03-21 | QTS - 25431 | 84d | 0d | QTS-PHX3 DC1 - 6 day w/ Holidays | Scott Masterson |  |
| QTS - 6760 |  | TFO Scope // DH 2300 / Lineup C - D / Install OH Trapeze - Screen Wall to RPPs | 3d | 2026-03-17 | 2026-03-19 | QTS - 6910 SS | 21d | 0d | QTS-PHX3 DC1 - 6 day w/ Holidays | Scott Masterson | Changed from Conduit to Tray |
| QTS - 6880 |  | TFO Scope // DH 2300 / Lineup C - D / Install QCool Arms | 5d | 2026-03-17 | 2026-03-21 | QTS - 6630, QTS - 6700, QTS - 6870 | 38d | 0d | QTS-PHX3 DC1 - 6 day w/ Holidays | Scott Masterson |  |
| QTS - 6910 |  | TFO Scope // DH 2300 / Lineup C - D / Install OH Trapeze - Screen Wall to CODs | 3d | 2026-03-17 | 2026-03-19 | QTS - 6300 | 18d | 0d | QTS-PHX3 DC1 - 6 day w/ Holidays | Scott Masterson | Changed from Conduit to Tray |
| QTS - 6780 |  | TFO Scope // DH 2300 / Lineup C - D / Pull MC Feeders - CODs to RPPs | 12d | 2026-03-20 | 2026-04-02 | QTS - 6760, QTS - 6910 | 21d | 0d | QTS-PHX3 DC1 - 6 day w/ Holidays | Scott Masterson | Added MC and Removed RPP Set |
| QTS - 25481 |  | TFO Scope // DH 2300 / Lineup C - D / Install Telecom Trays Tier # 1 - Grid | 10d | 2026-03-23 | 2026-04-02 | QTS - 25471 | 89d | 0d | QTS-PHX3 DC1 - 6 day w/ Holidays | Scott Masterson |  |
| QTS - 6730 |  | TFO Scope // DH 2300 / Lineup C - D / Install Telecom Trays Tier # 5 | 10d | 2026-03-23 | 2026-04-02 | QTS - 6880, QTS - 6870, QTS - 1020, QTS - 1020 FF | 58d | 0d | QTS-PHX3 DC1 - 6 day w/ Holidays | Scott Masterson |  |
| QTS - 6800 |  | TFO Scope // DH 2300 / Lineup C - D / Terminate Feeder RPPs and CODs | 10d | 2026-03-26 | 2026-04-06 | QTS - 6740, QTS - 6780 FF+3d | 21d | 0d | QTS-PHX3 DC1 - 6 day w/ Holidays | Scott Masterson | Added Set RPP Pred |
| QTS - 25491 |  | TFO Scope // DH 2300 / Lineup C - D / Install Telecom Trays Tier # 2 - Grid | 10d | 2026-03-27 | 2026-04-07 | QTS - 25481 FF+4d | 89d | 0d | QTS-PHX3 DC1 - 6 day w/ Holidays | Scott Masterson |  |
| QTS - 6890 |  | TFO Scope // DH 2300 / Lineup C - D / Install Telecom Trays Tier # 4 | 10d | 2026-03-28 | 2026-04-08 | QTS - 6730 SS+5d, QTS - 6730 FF+5d, QTS - 6750 | 58d | 0d | QTS-PHX3 DC1 - 6 day w/ Holidays | Scott Masterson |  |
| QTS - 25501 |  | TFO Scope // DH 2300 / Lineup C - D / Install Telecom Trays Tier # 3 - Grid | 10d | 2026-04-01 | 2026-04-11 | QTS - 25491 FF+4d | 89d | 31d | QTS-PHX3 DC1 - 6 day w/ Holidays | Scott Masterson |  |
| QTS - 6900 |  | TFO Scope // DH 2300 / Lineup C - D / Install Telecom Trays Tier # 3 | 10d | 2026-04-03 | 2026-04-14 | QTS - 6890 SS+5d, QTS - 6890 FF+5d | 58d | 0d | QTS-PHX3 DC1 - 6 day w/ Holidays | Scott Masterson |  |
| QTS - 7410 |  | TFO Scope // DH 2300 / Lineup C - D / Install Power Tray Tier # 2 | 10d | 2026-04-09 | 2026-04-20 | QTS - 6900 SS+5d, QTS - 6900 FF+5d, QTS - 6750 | 58d | 0d | QTS-PHX3 DC1 - 6 day w/ Holidays | Scott Masterson |  |
| QTS - 6810 |  | TFO Scope // DH 2300 / Lineup C - D / Rough-In I&C | 10d | 2026-04-15 | 2026-04-25 | QTS - 6740, QTS - 7160 | 55d | 0d | QTS-PHX3 DC1 - 6 day w/ Holidays | Scott Masterson |  |
| QTS - 7420 |  | TFO Scope // DH 2300 / Lineup C - D / Install Power Tray Tier # 1 | 10d | 2026-04-15 | 2026-04-25 | QTS - 7410 SS+5d, QTS - 7410 FF+5d | 82d | 0d | QTS-PHX3 DC1 - 6 day w/ Holidays | Scott Masterson |  |
| QTS - 6770 |  | TFO Scope // DH 2300 / Lineup C - D / Pull LV Wire | 14d | 2026-04-21 | 2026-05-06 | QTS - 6750, QTS - 6900, QTS - 7410 | 58d | 0d | QTS-PHX3 DC1 - 6 day w/ Holidays | Scott Masterson |  |
| QTS - 6820 |  | TFO Scope // DH 2300 / Lineup C - D / Install Fire Alarm & Security | 7d | 2026-04-27 | 2026-05-04 | QTS - 6810, QTS - 6700, QTS - 6240, QTS - 10210 | 55d | 3d | QTS-PHX3 DC1 - 6 day w/ Holidays | Scott Masterson |  |
| QTS - 7450 |  | TFO Scope // DH 2300 / Lineup C - D / Pull RPP Whips - RPPs to Racks | 15d | 2026-04-27 | 2026-05-13 | QTS - 7420, QTS - 7410 | 82d | 0d | QTS-PHX3 DC1 - 6 day w/ Holidays | Scott Masterson |  |
| QTS - 7460 |  | TFO Scope // DH 2300 / Lineup C - D / Terminate Whips at RPP | 10d | 2026-05-06 | 2026-05-16 | QTS - 7450 FF+3d | 82d | 76d | QTS-PHX3 DC1 - 6 day w/ Holidays | Scott Masterson |  |
| QTS - 6790 |  | TFO Scope // DH 2300 / Lineup C - D / Terminate LV | 10d | 2026-05-07 | 2026-05-18 | QTS - 6770 | 58d | 0d | QTS-PHX3 DC1 - 6 day w/ Holidays | Scott Masterson |  |
| QTS - 6830 |  | TFO Scope // DH 2300 / Lineup C - D / Terminate I&C | 5d | 2026-05-08 | 2026-05-13 | QTS - 6820, QTS - 6810, QTS - 6450 | 52d | 0d | QTS-PHX3 DC1 - 6 day w/ Holidays | Scott Masterson |  |
| QTS - 6840 |  | TFO Scope // DH 2300 / Lineup C - D / Terminate - BMS & EPMS Connections | 7d | 2026-05-14 | 2026-05-21 | QTS - 6830 | 57d | 19d | QTS-PHX3 DC1 - 6 day w/ Holidays | Scott Masterson |  |
| QTS - 6850 |  | TFO Scope // DH 2300 / Lineup C - D / Clean Walk & PEI - Electrical & Controls | 2d | 2026-05-19 | 2026-05-20 | QTS - 25501, QTS - 6800, QTS - 6830, QTS - 6790, QTS - 6820 | 58d | 20d | QTS-PHX3 DC1 - 6 day w/ Holidays | Scott Masterson |  |

| ID | WBS | Activity | Duration | Start | Finish | Predecessors | Total float | Free float | Calendar | Layton Responsible Party | Notes |
| --- | --- | --- | --- | --- | --- | --- | --- | --- | --- | --- | --- |
|  | 2 | **2300 - TFO Scope Buildout (3MW) - Lineup E - F** |  | 2026-01-27 | 2026-06-16 |  |  |  |  |  |  |
| QTS - 6930 |  | TFO Scope // DH 2300 / Lineup E - F / Install HAC Support Steel | 5d | 2026-01-27 | 2026-01-31 | QTS - 6700 | 42d | 0d | QTS-PHX3 DC1 - 6 day w/ Holidays | Scott Masterson |  |
| QTS - 6940 |  | TFO Scope // DH 2300 / Lineup E - F / Install Stainless Steel Piping Hangers | 4d | 2026-02-02 | 2026-02-05 | QTS - 6710, QTS - 6930 | 42d | 5d | QTS-PHX3 DC1 - 6 day w/ Holidays | Dave Wiltberger |  |
| QTS - 7090 |  | TFO Scope // DH 2300 / Lineup E - F / Hang Stainless Steel 6" Fan Wall - QCool | 9d | 2026-02-12 | 2026-02-21 | QTS - 6940, QTS - 2590, QTS - 24761 | 37d | 2d | QTS-PHX3 DC1 - 6 day w/ Holidays | Dave Wiltberger |  |
| QTS - 7100 |  | TFO Scope // DH 2300 / Lineup E - F / Uncrate QCools with HACs | 1d | 2026-02-24 | 2026-02-24 | QTS - 6870 SS+5d, QTS - 7550, QTS - 6930, QTS - 10210, QTS - 1020 | 35d | 0d | QTS-PHX3 DC1 - 6 day w/ Holidays | Dave Wiltberger | Changed Duration from 10 to 5 |
| QTS - 6980 |  | TFO Scope // DH 2300 / Lineup E - F / Raise HAC, QCool & Trays | 6d | 2026-02-25 | 2026-03-03 | QTS - 7090, QTS - 6940, QTS - 7100 | 35d | 0d | QTS-PHX3 DC1 - 6 day w/ Holidays | Dave Wiltberger |  |
| QTS - 6970 |  | TFO Scope // DH 2300 / Lineup E - F / Set RPP # 12 Units | 5d | 2026-03-04 | 2026-03-09 | QTS - 6980 | 35d | 0d | QTS-PHX3 DC1 - 6 day w/ Holidays | Scott Masterson | Tied to Raise QCool |
| QTS - 7040 |  | TFO Scope // DH 2300 / Lineup E - F / Rough-In I&C | 10d | 2026-03-10 | 2026-03-20 | QTS - 6970 | 91d | 0d | QTS-PHX3 DC1 - 6 day w/ Holidays | Scott Masterson |  |
| QTS - 6990 |  | TFO Scope // DH 2300 / Lineup E - F / Install OH Trapeze - Screen Wall to RPPs | 3d | 2026-03-20 | 2026-03-23 | QTS - 7140 SS | 18d | 0d | QTS-PHX3 DC1 - 6 day w/ Holidays | Scott Masterson | Changed from Conduit to Tray |
| QTS - 7140 |  | TFO Scope // DH 2300 / Lineup E - F / Install OH Trapeze - Screen Wall to CODs | 3d | 2026-03-20 | 2026-03-23 | QTS - 6910 | 18d | 0d | QTS-PHX3 DC1 - 6 day w/ Holidays | Scott Masterson | Changed from Conduit to Tray |
| QTS - 7050 |  | TFO Scope // DH 2300 / Lineup E - F / Install Fire Alarm & Security | 7d | 2026-03-21 | 2026-03-28 | QTS - 7040, QTS - 6930, QTS - 6700, QTS - 6240, QTS - 10210 | 91d | 39d | QTS-PHX3 DC1 - 6 day w/ Holidays | Scott Masterson |  |
| QTS - 25511 |  | TFO Scope // DH 2300 / Lineup E - F / Install Grid Hangers | 5d | 2026-03-23 | 2026-03-27 | QTS - 25471 | 84d | 0d | QTS-PHX3 DC1 - 6 day w/ Holidays | Scott Masterson |  |
| QTS - 7110 |  | TFO Scope // DH 2300 / Lineup E - F / Install QCool Arms | 5d | 2026-03-23 | 2026-03-27 | QTS - 6880, QTS - 6930, QTS - 7100 | 38d | 0d | QTS-PHX3 DC1 - 6 day w/ Holidays | Scott Masterson |  |
| QTS - 7010 |  | TFO Scope // DH 2300 / Lineup E - F / Pull MC Feeders - CODs to RPPs | 12d | 2026-03-24 | 2026-04-06 | QTS - 6990, QTS - 7140 | 18d | 0d | QTS-PHX3 DC1 - 6 day w/ Holidays | Scott Masterson | Added MC and Removed RPP Set |
| QTS - 25521 |  | TFO Scope // DH 2300 / Lineup E - F / Install Telecom Trays Tier # 1 - Grid | 10d | 2026-03-28 | 2026-04-08 | QTS - 25511 | 84d | 0d | QTS-PHX3 DC1 - 6 day w/ Holidays | Scott Masterson |  |
| QTS - 6960 |  | TFO Scope // DH 2300 / Lineup E - F / Install Telecom Trays Tier # 5 | 10d | 2026-03-28 | 2026-04-08 | QTS - 7110, QTS - 7100 | 38d | 0d | QTS-PHX3 DC1 - 6 day w/ Holidays | Scott Masterson |  |
| QTS - 7030 |  | TFO Scope // DH 2300 / Lineup E - F / Terminate Feeder at RPPs and CODs | 10d | 2026-03-30 | 2026-04-09 | QTS - 6970, QTS - 7010 FF+3d | 18d | 0d | QTS-PHX3 DC1 - 6 day w/ Holidays | Scott Masterson | Added Set RPP Pred |
| QTS - 25531 |  | TFO Scope // DH 2300 / Lineup E - F / Install Telecom Trays Tier # 2 - Grid | 10d | 2026-04-02 | 2026-04-13 | QTS - 25521 FF+4d | 84d | 0d | QTS-PHX3 DC1 - 6 day w/ Holidays | Scott Masterson |  |
| QTS - 25541 |  | TFO Scope // DH 2300 / Lineup E - F / Install Telecom Trays Tier # 3 - Grid | 10d | 2026-04-07 | 2026-04-17 | QTS - 25531 FF+4d | 84d | 46d | QTS-PHX3 DC1 - 6 day w/ Holidays | Scott Masterson |  |
| QTS - 7120 |  | TFO Scope // DH 2300 / Lineup E - F / Install Telecom Trays Tier # 4 | 10d | 2026-04-09 | 2026-04-20 | QTS - 6960, QTS - 6980 | 38d | 0d | QTS-PHX3 DC1 - 6 day w/ Holidays | Scott Masterson |  |
| QTS - 7130 |  | TFO Scope // DH 2300 / Lineup E - F / Install Telecom Trays Tier # 3 | 10d | 2026-04-21 | 2026-05-01 | QTS - 7120 | 38d | 0d | QTS-PHX3 DC1 - 6 day w/ Holidays | Scott Masterson |  |
| QTS - 7320 |  | TFO Scope // DH 2300 / Lineup E - F / Install Power Tray Tier # 2 | 10d | 2026-05-02 | 2026-05-13 | QTS - 7130, QTS - 6980 | 38d | 0d | QTS-PHX3 DC1 - 6 day w/ Holidays | Scott Masterson |  |
| QTS - 7000 |  | TFO Scope // DH 2300 / Lineup E - F / Pull LV Wire | 14d | 2026-05-14 | 2026-05-30 | QTS - 6980, QTS - 7130, QTS - 7320 | 38d | 0d | QTS-PHX3 DC1 - 6 day w/ Holidays | Scott Masterson |  |
| QTS - 7060 |  | TFO Scope // DH 2300 / Lineup E - F / Terminate I&C | 5d | 2026-05-14 | 2026-05-19 | QTS - 7050, QTS - 7040, QTS - 6830 | 52d | 0d | QTS-PHX3 DC1 - 6 day w/ Holidays | Scott Masterson |  |
| QTS - 7330 |  | TFO Scope // DH 2300 / Lineup E - F / Install Power Tray Tier # 1 | 10d | 2026-05-14 | 2026-05-26 | QTS - 7320 | 57d | 0d | QTS-PHX3 DC1 - 6 day w/ Holidays | Scott Masterson |  |
| QTS - 7070 |  | TFO Scope // DH 2300 / Lineup E - F / Terminate - BMS & EPMS Connections | 7d | 2026-05-20 | 2026-05-28 | QTS - 7060 | 52d | 14d | QTS-PHX3 DC1 - 6 day w/ Holidays | Scott Masterson |  |
| QTS - 7340 |  | TFO Scope // DH 2300 / Lineup E - F / Pull RPP Whips - RPPs to Racks | 15d | 2026-05-27 | 2026-06-12 | QTS - 7320, QTS - 7330 | 57d | 0d | QTS-PHX3 DC1 - 6 day w/ Holidays | Scott Masterson |  |
| QTS - 7020 |  | TFO Scope // DH 2300 / Lineup E - F / Terminate LV | 10d | 2026-06-01 | 2026-06-11 | QTS - 7000 | 38d | 0d | QTS-PHX3 DC1 - 6 day w/ Holidays | Scott Masterson |  |
| QTS - 7350 |  | TFO Scope // DH 2300 / Lineup E - F / Terminate Whips at RPP | 10d | 2026-06-05 | 2026-06-16 | QTS - 7340 FF+3d | 57d | 51d | QTS-PHX3 DC1 - 6 day w/ Holidays | Scott Masterson |  |
| QTS - 7080 |  | TFO Scope // DH 2300 / Lineup E - F / Clean Walk & PEI - Electrical & Controls | 2d | 2026-06-12 | 2026-06-13 | QTS - 25541, QTS - 7030, QTS - 7060, QTS - 7020, QTS - 7050 | 38d | 0d | QTS-PHX3 DC1 - 6 day w/ Holidays | Scott Masterson |  |

| ID | WBS | Activity | Duration | Start | Finish | Predecessors | Total float | Free float | Calendar | Layton Responsible Party | Notes |
| --- | --- | --- | --- | --- | --- | --- | --- | --- | --- | --- | --- |
|  | 2 | **Gallery 2301 Mechanical** |  | 2026-03-20 | 2026-06-02 |  |  |  |  |  |  |
|  | 9 | **TFO 2301 - CDU Mechanical Gallery** |  | 2026-03-20 | 2026-06-02 |  |  |  |  |  |  |
| QTS - 6620 |  | TFO Scope // DH 2300 - 2301 Mechanical Gallery / Install OH Technical Loop Hangers | 5d | 2026-03-20 | 2026-03-25 | QTS - 6940, QTS - 7140 FF+2d | 40d | 0d | QTS-PHX3 DC1 - 6 day w/ Holidays | Dave Wiltberger |  |
| QTS - 6400 |  | TFO Scope // DH 2300 - 2301 Mechanical Gallery / Install OH 8" Technical Loop CDU Piping | 9d | 2026-03-26 | 2026-04-04 | QTS - 6620, QTS - 2590, QTS - 10210, QTS - 24761 | 45d | 0d | QTS-PHX3 DC1 - 6 day w/ Holidays | Dave Wiltberger |  |
| QTS - 6370 |  | TFO Scope // DH 2300 - 2301 Mechanical Gallery / OFCI - L2 SET IN PLACE - CDU - 9 units | 3d | 2026-04-06 | 2026-04-08 | QTS - 6400 | 45d | 0d | QTS-PHX3 DC1 - 6 day w/ Holidays | Dave Wiltberger |  |
| QTS - 6420 |  | TFO Scope // DH 2300 - 2301 Mechanical Gallery / Pull Branches From MOD-03 to CDUs | 8d | 2026-04-09 | 2026-04-17 | QTS - 6370 | 59d | 0d | QTS-PHX3 DC1 - 6 day w/ Holidays | Scott Masterson |  |
| QTS - 6530 |  | TFO Scope // DH 2300 - 2301 Mechanical Gallery / Detail & Fabricate CDU Mechanical Connections | 10d | 2026-04-09 | 2026-04-20 | QTS - 6370 | 45d | 0d | QTS-PHX3 DC1 - 6 day w/ Holidays | Dave Wiltberger |  |
| QTS - 10270 |  | TFO Scope // DH 2300 - 2301 Mechanical Gallery / Install Telecom Conduit from MMR to IDF Cabinet | 10d | 2026-04-15 | 2026-04-25 | QTS-16591 | 65d | 0d | QTS-PHX3 DC1 - 6 day w/ Holidays | Scott Masterson |  |
| QTS - 6380 |  | TFO Scope // DH 2300 - 2301 Mechanical Gallery / Pull LV Main / IDF Cabinet to Basket Tray | 7d | 2026-04-15 | 2026-04-22 | QTS-16591 | 75d | 13d | QTS-PHX3 DC1 - 6 day w/ Holidays | Scott Masterson |  |
| QTS - 6390 |  | TFO Scope // DH 2300 - 2301 Mechanical Gallery / Terminate & Torque - CDU Connections | 5d | 2026-04-18 | 2026-04-23 | QTS - 6420, QTS - 6370 | 59d | 7d | QTS-PHX3 DC1 - 6 day w/ Holidays | Scott Masterson |  |
| QTS - 6410 |  | TFO Scope // DH 2300 - 2301 Mechanical Gallery / CDU Unit 4" Mechanical Connections Lineup - A - B | 7d | 2026-04-21 | 2026-04-28 | QTS - 6530, QTS - 6560, QTS - 6370 | 45d | 0d | QTS-PHX3 DC1 - 6 day w/ Holidays | Dave Wiltberger |  |
| QTS - 10280 |  | TFO Scope // DH 2300 - 2301 Mechanical Gallery / Pull Telecom Wire from MMR to IDF Cabinet | 10d | 2026-04-27 | 2026-05-07 | QTS - 10270 | 65d | 0d | QTS-PHX3 DC1 - 6 day w/ Holidays | Scott Masterson |  |
| QTS - 6430 |  | TFO Scope // DH 2300 - 2301 Mechanical Gallery / Fill & Flush Technical Loop A - B | 5d | 2026-04-29 | 2026-05-04 | QTS - 6410 | 59d | 0d | QTS-PHX3 DC1 - 6 day w/ Holidays | Dave Wiltberger |  |
| QTS - 6540 |  | TFO Scope // DH 2300 - 2301 Mechanical Gallery / CDU Unit 4" Mechanical Connections Lineup - C - D | 7d | 2026-04-29 | 2026-05-06 | QTS - 6410, QTS - 6860 | 45d | 0d | QTS-PHX3 DC1 - 6 day w/ Holidays | Dave Wiltberger |  |
| QTS - 7490 |  | TFO Scope // DH 2300 - 2301 Mechanical Gallery / Final Connection Tie-In to CDU Lineup - A - B | 5d | 2026-05-05 | 2026-05-09 | QTS - 6430 | 59d | 0d | QTS-PHX3 DC1 - 6 day w/ Holidays | Dave Wiltberger |  |
| QTS - 6550 |  | TFO Scope // DH 2300 - 2301 Mechanical Gallery / CDU Unit 4" Mechanical Connections Lineup - E - F | 7d | 2026-05-07 | 2026-05-14 | QTS - 6540, QTS - 7090 | 45d | 0d | QTS-PHX3 DC1 - 6 day w/ Holidays | Dave Wiltberger |  |
| QTS - 7500 |  | TFO Scope // DH 2300 - 2301 Mechanical Gallery / Fill & Flush Technical Loop C - D | 5d | 2026-05-07 | 2026-05-12 | QTS - 6540 | 52d | 0d | QTS-PHX3 DC1 - 6 day w/ Holidays | Dave Wiltberger |  |
| QTS - 7310 |  | TFO Scope // DH 2300 - 2301 Mechanical Gallery / BMS & EPMS Terminations | 2d | 2026-05-08 | 2026-05-09 | QTS - 6380, QTS - 10280 | 65d | 0d | QTS-PHX3 DC1 - 6 day w/ Holidays | Scott Masterson |  |
| QTS - 7300 |  | TFO Scope // DH 2300 - 2301 Mechanical Gallery / Clean Walk & PEI - Electrical | 2d | 2026-05-11 | 2026-05-12 | QTS - 6390, QTS - 10280, QTS - 7310 | 65d | 27d | QTS-PHX3 DC1 - 6 day w/ Holidays | Scott Masterson |  |
| QTS - 7510 |  | TFO Scope // DH 2300 - 2301 Mechanical Gallery / Final Connection Tie-In to CDU Lineup - C - D | 5d | 2026-05-13 | 2026-05-18 | QTS - 7500 | 52d | 0d | QTS-PHX3 DC1 - 6 day w/ Holidays | Dave Wiltberger |  |
| QTS - 7520 |  | TFO Scope // DH 2300 - 2301 Mechanical Gallery / Fill & Flush Technical Loop E - F | 5d | 2026-05-15 | 2026-05-20 | QTS - 6550 | 45d | 0d | QTS-PHX3 DC1 - 6 day w/ Holidays | Dave Wiltberger |  |
| QTS - 7530 |  | TFO Scope // DH 2300 - 2301 Mechanical Gallery / Final Connection Tie-In to CDU Lineup - E - F | 5d | 2026-05-21 | 2026-05-27 | QTS - 7520 | 45d | 0d | QTS-PHX3 DC1 - 6 day w/ Holidays | Dave Wiltberger |  |
| QTS - 6440 |  | TFO Scope // DH 2300 - 2301 Mechanical Gallery / Clean Walk & PEI - Mechanical | 5d | 2026-05-28 | 2026-06-02 | QTS - 7510, QTS - 7520, QTS - 7530, QTS - 7490 | 48d | 10d | QTS-PHX3 DC1 - 6 day w/ Holidays | Dave Wiltberger |  |
|  | 7 | **Gallery 2303 Mechanical** |  | 2026-03-26 | 2026-06-08 |  |  |  |  |  |  |
|  | 10 | **TFO 2303 - CDU Mechanical Gallery** |  | 2026-03-26 | 2026-06-08 |  |  |  |  |  |  |
| QTS - 7270 |  | TFO Scope // DH 2300 - 2303 Mechanical Gallery / Install OH Technical Loop Hangers | 5d | 2026-03-26 | 2026-03-31 | QTS - 6620, QTS - 10210 | 40d | 0d | QTS-PHX3 DC1 - 6 day w/ Holidays | Dave Wiltberger |  |
| QTS - 7190 |  | TFO Scope // DH 2300 - 2303 Mechanical Gallery / Install OH 8" Technical Loop CDU Piping | 9d | 2026-04-01 | 2026-04-10 | QTS - 7270, QTS - 2590, QTS - 10210, QTS - 24761 | 40d | 0d | QTS-PHX3 DC1 - 6 day w/ Holidays | Dave Wiltberger | Changed 10-9 Days |
| QTS - 7170 |  | TFO Scope // DH 2300 - 2303 Mechanical Gallery / Pull LV Main / IDF Cabinet to Basket Tray | 7d | 2026-04-10 | 2026-04-17 | QTS-17191 | 82d | 10d | QTS-PHX3 DC1 - 6 day w/ Holidays | Scott Masterson |  |
| QTS - 7160 |  | TFO Scope // DH 2300 - 2303 Mechanical Gallery / OFCI - L2 SET IN PLACE - CDU - 9 units | 3d | 2026-04-11 | 2026-04-14 | QTS - 7190 | 40d | 0d | QTS-PHX3 DC1 - 6 day w/ Holidays | Dave Wiltberger |  |
| QTS - 7210 |  | TFO Scope // DH 2300 - 2303 Mechanical Gallery / Pull Branches From MOD-03 to CDUs | 8d | 2026-04-15 | 2026-04-23 | QTS - 7160 | 68d | 0d | QTS-PHX3 DC1 - 6 day w/ Holidays | Scott Masterson |  |
| QTS - 7240 |  | TFO Scope // DH 2300 - 2303 Mechanical Gallery / Detail & Fabricate CDU Mechanical Connections | 10d | 2026-04-15 | 2026-04-25 | QTS - 7160 | 40d | 0d | QTS-PHX3 DC1 - 6 day w/ Holidays | Dave Wiltberger |  |
| QTS - 7180 |  | TFO Scope // DH 2300 - 2303 Mechanical Gallery / Terminate & Torque - CDU Connections | 5d | 2026-04-24 | 2026-04-29 | QTS - 7210, QTS - 7160 | 68d | 0d | QTS-PHX3 DC1 - 6 day w/ Holidays | Scott Masterson |  |
| QTS - 7200 |  | TFO Scope // DH 2300 - 2303 Mechanical Gallery / CDU Unit 4" Mechanical Connections Lineup - A - B | 7d | 2026-04-27 | 2026-05-04 | QTS - 7240, QTS - 7190, QTS - 7160, QTS - 6560 | 40d | 0d | QTS-PHX3 DC1 - 6 day w/ Holidays | Dave Wiltberger |  |
| QTS - 7290 |  | TFO Scope // DH 2300 - 2303 Mechanical Gallery / BMS & EPMS Terminations | 2d | 2026-04-30 | 2026-05-01 | QTS - 7170, QTS - 7180 | 72d | 0d | QTS-PHX3 DC1 - 6 day w/ Holidays | Scott Masterson |  |
| QTS - 7280 |  | TFO Scope // DH 2300 - 2303 Mechanical Gallery / Clean Walk & PEI - Electrical | 2d | 2026-05-02 | 2026-05-04 | QTS - 7180, QTS - 7290 | 72d | 34d | QTS-PHX3 DC1 - 6 day w/ Holidays | Scott Masterson |  |
| QTS - 7220 |  | TFO Scope // DH 2300 - 2303 Mechanical Gallery / Fill & Flush Technical Loop A - B | 5d | 2026-05-05 | 2026-05-09 | QTS - 7200 | 54d | 0d | QTS-PHX3 DC1 - 6 day w/ Holidays | Dave Wiltberger |  |
| QTS - 7250 |  | TFO Scope // DH 2300 - 2303 Mechanical Gallery / CDU Unit 4" Mechanical Connections Lineup - C - D | 7d | 2026-05-05 | 2026-05-12 | QTS - 7200 | 40d | 0d | QTS-PHX3 DC1 - 6 day w/ Holidays | Dave Wiltberger |  |
| QTS - 7360 |  | TFO Scope // DH 2300 - 2303 Mechanical Gallery / Final Connection to CDU Lineup - A - B | 5d | 2026-05-11 | 2026-05-15 | QTS - 7220 | 54d | 1d | QTS-PHX3 DC1 - 6 day w/ Holidays | Dave Wiltberger |  |
| QTS - 7260 |  | TFO Scope // DH 2300 - 2303 Mechanical Gallery / CDU Unit 4" Mechanical Connections Lineup - E - F | 7d | 2026-05-13 | 2026-05-20 | QTS - 7250 | 40d | 0d | QTS-PHX3 DC1 - 6 day w/ Holidays | Dave Wiltberger |  |
| QTS - 7370 |  | TFO Scope // DH 2300 - 2303 Mechanical Gallery / Fill & Flush Technical Loop C - D | 5d | 2026-05-13 | 2026-05-18 | QTS - 7250 | 47d | 0d | QTS-PHX3 DC1 - 6 day w/ Holidays | Dave Wiltberger |  |
| QTS - 7380 |  | TFO Scope // DH 2300 - 2303 Mechanical Gallery / Final Connection to CDU Lineup - C - D | 5d | 2026-05-19 | 2026-05-23 | QTS - 7370 | 47d | 0d | QTS-PHX3 DC1 - 6 day w/ Holidays | Dave Wiltberger |  |
| QTS - 7400 |  | TFO Scope // DH 2300 - 2303 Mechanical Gallery / Fill & Flush Technical Loop E - F | 5d | 2026-05-21 | 2026-05-27 | QTS - 7260 | 40d | 0d | QTS-PHX3 DC1 - 6 day w/ Holidays | Dave Wiltberger |  |
| QTS - 7390 |  | TFO Scope // DH 2300 - 2303 Mechanical Gallery / Final Connection to CDU Lineup - E - F | 5d | 2026-05-28 | 2026-06-02 | QTS - 7400 | 40d | 0d | QTS-PHX3 DC1 - 6 day w/ Holidays | Dave Wiltberger |  |
| QTS - 7230 |  | TFO Scope // DH 2300 - 2303 Mechanical Gallery / Clean Walk & PEI - Mechanical | 5d | 2026-06-03 | 2026-06-08 | QTS - 7360, QTS - 7380, QTS - 7390 | 43d | 5d | QTS-PHX3 DC1 - 6 day w/ Holidays | Dave Wiltberger |  |

| ID | WBS | Activity | Duration | Start | Finish | Predecessors | Complete | Remaining | Planned start | Planned finish | Total float | Free float | Calendar | Notes | Layton Responsible Party | Allucent CSI Group |
| --- | --- | --- | --- | --- | --- | --- | --- | --- | --- | --- | --- | --- | --- | --- | --- | --- |
|  | 9 | **Data Hall 1300 (9MW)** |  | 2025-11-11 | 2026-06-04 |  |  |  |  |  |  |  |  |  |  |  |
|  | 3 | **Data Hall 1300** |  | 2025-11-11 | 2026-05-20 |  |  |  |  |  |  |  |  |  |  |  |
|  | 8 | **DH 1300 - TFO Scope Buildout (9MW)** |  | 2025-11-11 | 2026-05-20 |  |  |  |  |  |  |  |  |  |  |  |
|  | 1 | **1300 - TFO Scope Buildout (3MW) - Lineup A - B** |  | 2025-11-11 | 2026-05-13 |  |  |  |  |  |  |  |  |  |  |  |
| QTS - 8860 |  | TFO Scope // DH 1300 / Lineup A - B / Install HAC Support Steel | 5d | 2025-11-11 A | 2025-11-11 A | QTS - 8250 | 100% |  | 2025-11-11 | 2025-11-17 |  |  | **GLOBAL - 5 Day Workweek w/ Basic Holidays | Changed 7-5 Days Tied to 6930 |  |  |
| QTS - 8870 |  | TFO Scope // DH 1300 / Lineup A - B / Install Stainless Steel Piping Hangers | 4d | 2025-12-15 A | 2026-01-14 | QTS - 8860 | 100% | 0d | 2025-12-10 | 2025-12-13 | 62d | 0d | QTS-PHX3 DC1 - 6 day w/ Holidays |  | Dave Wiltberger | 01ADMIN |
| QTS - 9180 |  | TFO Scope // DH 1300 / Lineup A - B / Hang Stainless Steel 6" Fan Wall - QCool | 9d | 2026-01-14 | 2026-01-24 | QTS - 8870, QTS - 2590, QTS - 24771 |  |  |  |  | 66d | 29d | QTS-PHX3 DC1 - 6 day w/ Holidays |  | Dave Wiltberger | 01ADMIN |
| QTS - 25551 |  | TFO Scope // DH 1300 / Lineup A - B / Install Grid Hangers | 5d | 2026-02-23 | 2026-02-27 | QTS-1003800 |  |  |  |  | 98d | 0d | QTS-PHX3 DC1 - 6 day w/ Holidays |  | Scott Masterson |  |
| QTS - 9230 |  | TFO Scope // DH 1300 / Lineup A - B / Uncrate QCools with HACs | 1d | 2026-02-25 | 2026-02-25 | QTS - 7100, QTS - 1020 |  |  |  |  | 39d | 0d | QTS-PHX3 DC1 - 6 day w/ Holidays | Changed Duration from 10 to 5 | Dave Wiltberger |  |
| QTS - 9250 |  | TFO Scope // DH 1300 / Lineup A - B / Install QCool Arms | 5d | 2026-02-26 | 2026-03-03 | QTS-1003800, QTS-14321, QTS - 8860, QTS - 9230 |  |  |  |  | 59d | 0d | QTS-PHX3 DC1 - 6 day w/ Holidays |  | Scott Masterson |  |
| QTS - 25561 |  | TFO Scope // DH 1300 / Lineup A - B / Install Telecom Trays Tier # 1 - Grid | 10d | 2026-02-28 | 2026-03-11 | QTS - 25551 |  |  |  |  | 108d | 0d | QTS-PHX3 DC1 - 6 day w/ Holidays |  | Scott Masterson |  |
| QTS - 8910 |  | TFO Scope // DH 1300 / Lineup A - B / Raise HAC, QCool & Trays | 6d | 2026-02-28 | 2026-03-06 | QTS - 9180, QTS - 8870, QTS - 9230, QTS-17611 |  |  |  |  | 37d | 0d | QTS-PHX3 DC1 - 6 day w/ Holidays |  | Dave Wiltberger |  |
| QTS - 8890 |  | TFO Scope // DH 1300 / Lineup A - B / Install Telecom Trays Tier # 5 | 10d | 2026-03-04 | 2026-03-14 | QTS - 9250, QTS - 9230, QTS - 1020 |  |  |  |  | 64d | 0d | QTS-PHX3 DC1 - 6 day w/ Holidays |  | Scott Masterson |  |
| QTS - 25571 |  | TFO Scope // DH 1300 / Lineup A - B / Install Telecom Trays Tier # 2 - Grid | 10d | 2026-03-05 | 2026-03-16 | QTS - 25561 FF+4d |  |  |  |  | 108d | 0d | QTS-PHX3 DC1 - 6 day w/ Holidays |  | Scott Masterson |  |
| QTS - 8900 |  | TFO Scope // DH 1300 / Lineup A - B / Set RPP # 12 Units | 5d | 2026-03-07 | 2026-03-12 | QTS - 8910 |  |  |  |  | 37d | 5d | QTS-PHX3 DC1 - 6 day w/ Holidays | Tied to Raise QCool | Scott Masterson |  |
| QTS - 25581 |  | TFO Scope // DH 1300 / Lineup A - B / Install Telecom Trays Tier # 3 - Grid | 10d | 2026-03-10 | 2026-03-20 | QTS - 25571 FF+4d |  |  |  |  | 108d | 44d | QTS-PHX3 DC1 - 6 day w/ Holidays |  | Scott Masterson |  |
| QTS - 8920 |  | TFO Scope // DH 1300 / Lineup A - B / Install OH Trapeze - Screen Wall to RPPs | 3d | 2026-03-10 | 2026-03-12 | QTS - 9280 SS |  |  |  |  | 32d | 0d | QTS-PHX3 DC1 - 6 day w/ Holidays | Changed from Conduit to Tray | Scott Masterson |  |
| QTS - 9280 |  | TFO Scope // DH 1300 / Lineup A - B / Install OH Trapeze - Screen Wall to CODs | 3d | 2026-03-10 | 2026-03-12 | QTS-15781, QTS-4281, QTS-46021, QTS-46031 |  |  |  |  | 30d | 0d | QTS-PHX3 DC1 - 6 day w/ Holidays | Changed from Conduit to Tray | Scott Masterson |  |
| QTS - 8940 |  | TFO Scope // DH 1300 / Lineup A - B / Pull MC Feeders - CODs to RPPs | 12d | 2026-03-13 | 2026-03-26 | QTS - 8920, QTS - 9280 |  |  |  |  | 32d | 0d | QTS-PHX3 DC1 - 6 day w/ Holidays | Added MC and Removed RPP Set | Scott Masterson |  |
| QTS - 9260 |  | TFO Scope // DH 1300 / Lineup A - B / Install Telecom Trays Tier # 4 | 10d | 2026-03-16 | 2026-03-26 | QTS - 8890, QTS - 8910 |  |  |  |  | 64d | 0d | QTS-PHX3 DC1 - 6 day w/ Holidays |  | Scott Masterson |  |
| QTS - 8960 |  | TFO Scope // DH 1300 / Lineup A - B / Terminate Feeder at RPPs and CODs | 10d | 2026-03-19 | 2026-03-30 | QTS - 8900, QTS - 8940 FF+3d |  |  |  |  | 32d | 0d | QTS-PHX3 DC1 - 6 day w/ Holidays | Added Set RPP Pred | Scott Masterson |  |
| QTS - 9270 |  | TFO Scope // DH 1300 / Lineup A - B / Install Telecom Trays Tier # 3 | 10d | 2026-03-27 | 2026-04-07 | QTS - 9260 |  |  |  |  | 64d | 0d | QTS-PHX3 DC1 - 6 day w/ Holidays |  | Scott Masterson |  |
| QTS - 10050 |  | TFO Scope // DH 1300 / Lineup A - B / Install Power Tray Tier # 2 | 10d | 2026-04-02 | 2026-04-13 | QTS - 9270 SS+5d, QTS - 9270 FF+5d, QTS - 8910 |  |  |  |  | 64d | 0d | QTS-PHX3 DC1 - 6 day w/ Holidays |  | Scott Masterson |  |
| QTS - 8970 |  | TFO Scope // DH 1300 / Lineup A - B / Rough-In I&C | 10d | 2026-04-06 | 2026-04-16 | QTS - 8990, QTS - 8900 |  |  |  |  | 58d | 0d | QTS-PHX3 DC1 - 6 day w/ Holidays |  | Scott Masterson |  |
| QTS - 10060 |  | TFO Scope // DH 1300 / Lineup A - B / Install Power Tray Tier # 1 | 10d | 2026-04-08 | 2026-04-18 | QTS - 10050 SS+5d, QTS - 10050 FF+5d |  |  |  |  | 86d | 0d | QTS-PHX3 DC1 - 6 day w/ Holidays |  | Scott Masterson |  |
| QTS - 8930 |  | TFO Scope // DH 1300 / Lineup A - B / Pull LV Wire | 14d | 2026-04-14 | 2026-04-29 | QTS - 8910, QTS - 9270, QTS - 10050 |  |  |  |  | 64d | 0d | QTS-PHX3 DC1 - 6 day w/ Holidays |  | Scott Masterson |  |
| QTS - 8980 |  | TFO Scope // DH 1300 / Lineup A - B / Install Fire Alarm & Security | 7d | 2026-04-17 | 2026-04-24 | QTS - 8970, QTS - 8860, QTS - 10220 |  |  |  |  | 58d | 0d | QTS-PHX3 DC1 - 6 day w/ Holidays |  | Scott Masterson |  |
| QTS - 10100 |  | TFO Scope // DH 1300 / Lineup A - B / Pull Branches - RPPs Racks | 15d | 2026-04-20 | 2026-05-06 | QTS - 10060, QTS - 10050 |  |  |  |  | 86d | 0d | QTS-PHX3 DC1 - 6 day w/ Holidays |  | Scott Masterson |  |
| QTS - 9070 |  | TFO Scope // DH 1300 / Lineup A - B / Terminate I&C | 5d | 2026-04-25 | 2026-04-30 | QTS - 8980, QTS - 8970, QTS - 9010, QTS - 2620 |  |  |  |  | 58d | 0d | QTS-PHX3 DC1 - 6 day w/ Holidays |  | Scott Masterson |  |
| QTS - 10090 |  | TFO Scope // DH 1300 / Lineup A - B / Terminate Whips at RPP | 10d | 2026-04-29 | 2026-05-09 | QTS - 10100 FF+3d |  |  |  |  | 86d | 82d | QTS-PHX3 DC1 - 6 day w/ Holidays |  | Scott Masterson |  |
| QTS - 8950 |  | TFO Scope // DH 1300 / Lineup A - B / Terminate LV | 10d | 2026-04-30 | 2026-05-11 | QTS - 8930 |  |  |  |  | 64d | 0d | QTS-PHX3 DC1 - 6 day w/ Holidays |  | Scott Masterson |  |
| QTS - 9080 |  | TFO Scope // DH 1300 / Lineup A - B / Terminate - BMS & EPMS Connections | 7d | 2026-05-01 | 2026-05-08 | QTS - 9000, QTS - 9070 |  |  |  |  | 68d | 26d | QTS-PHX3 DC1 - 6 day w/ Holidays |  | Scott Masterson |  |
| QTS - 9090 |  | TFO Scope // DH 1300 / Lineup A - B / Clean Walk & PEI - Electrical & Controls | 2d | 2026-05-12 | 2026-05-13 | QTS - 25581, QTS - 8960, QTS - 9070, QTS - 8950, QTS - 8980 |  |  |  |  | 64d | 22d | QTS-PHX3 DC1 - 6 day w/ Holidays |  | Scott Masterson |  |

Notes:
- QTS - 8870: allucent_notes_20251230_164549: Jason Johnston on 2025-12-09 20:32: Need update from team / Scott Masterson on 2025-12-16 16:34: Late start due to AF steel access needed. / David Wiltberger on 2025-12-30 16:32: no update / allucent_notes_20251209_203830: Jason Johnston on 2025-12-09 20:32: Need update from team / allucent_notes_20251216_165335: Jason Johnston on 2025-12-09 20:32: Need update from team / Scott Masterson on 2025-12-16 16:34: Late start due to AF steel access needed. / allucent_notes: 2025-12-09 20:32 - User: Jason Johnston - Date Added: 2025-12-09 20:32 - Note: Need update from team / 2025-12-16 16:34 - User: Scott Masterson - Date Added: 2025-12-16 16:34 - Note: Late start due to AF steel access needed. / 2025-12-30 16:32 - User: D

| ID | WBS | Activity | Duration | Start | Finish | Predecessors | Complete | Planned start | Planned finish | Total float | Free float | Calendar | Notes | Layton Responsible Party | Allucent CSI Group |
| --- | --- | --- | --- | --- | --- | --- | --- | --- | --- | --- | --- | --- | --- | --- | --- |
|  | 3 | **1300 - TFO Scope Buildout (3MW) - Lineup C - D** |  | 2025-11-12 | 2026-05-14 |  |  |  |  |  |  |  |  |  |  |
| QTS - 9320 |  | TFO Scope // DH 1300 / Lineup C - D / Install HAC Support Steel | 5d | 2025-11-12 A | 2025-11-12 A | QTS - 8860 | 100% | 2025-11-12 | 2025-11-18 |  |  | **GLOBAL - 5 Day Workweek w/ Basic Holidays | Changed 7-5 Days |  |  |
| QTS - 9330 |  | TFO Scope // DH 1300 / Lineup C - D / Install Stainless Steel Piping Hangers | 4d | 2026-01-14 | 2026-01-17 | QTS - 8870 |  |  |  | 62d | 0d | QTS-PHX3 DC1 - 6 day w/ Holidays |  | Dave Wiltberger | 01ADMIN |
| QTS - 9480 |  | TFO Scope // DH 1300 / Lineup C - D / Hang Stainless Steel 6" Fan Wall - QCool | 9d | 2026-01-20 | 2026-01-29 | QTS - 9330, QTS - 2590, QTS - 24771 |  |  |  | 66d | 24d | QTS-PHX3 DC1 - 6 day w/ Holidays |  | Dave Wiltberger | 01ADMIN |
| QTS - 9490 |  | TFO Scope // DH 1300 / Lineup C - D / Uncrate QCools with HACs | 1d | 2026-02-26 | 2026-02-26 | QTS - 9230, QTS - 1020 |  |  |  | 41d | 0d | QTS-PHX3 DC1 - 6 day w/ Holidays | Changed Duration from 10 to 5 | Dave Wiltberger |  |
| QTS - 9370 |  | TFO Scope // DH 1300 / Lineup C - D / Raise HAC, QCool & Trays | 6d | 2026-02-27 | 2026-03-05 | QTS - 9480, QTS - 9330, QTS - 9490 |  |  |  | 42d | 0d | QTS-PHX3 DC1 - 6 day w/ Holidays |  | Dave Wiltberger |  |
| QTS - 25591 |  | TFO Scope // DH 1300 / Lineup C - D / Install Grid Hangers | 5d | 2026-02-28 | 2026-03-05 | QTS - 25551 |  |  |  | 98d | 0d | QTS-PHX3 DC1 - 6 day w/ Holidays |  | Scott Masterson |  |
| QTS - 9500 |  | TFO Scope // DH 1300 / Lineup C - D / Install QCool Arms | 5d | 2026-03-04 | 2026-03-09 | QTS - 9250, QTS - 9320, QTS - 9490 |  |  |  | 59d | 0d | QTS-PHX3 DC1 - 6 day w/ Holidays |  | Scott Masterson |  |
| QTS - 25601 |  | TFO Scope // DH 1300 / Lineup C - D / Install Telecom Trays Tier # 1 - Grid | 10d | 2026-03-06 | 2026-03-17 | QTS - 25591 |  |  |  | 103d | 0d | QTS-PHX3 DC1 - 6 day w/ Holidays |  | Scott Masterson |  |
| QTS - 9360 |  | TFO Scope // DH 1300 / Lineup C - D / Set RPP # 12 Units | 5d | 2026-03-06 | 2026-03-11 | QTS - 9370 |  |  |  | 42d | 9d | QTS-PHX3 DC1 - 6 day w/ Holidays | Tied to Raise QCool | Scott Masterson |  |
| QTS - 9350 |  | TFO Scope // DH 1300 / Lineup C - D / Install Telecom Trays Tier # 5 | 10d | 2026-03-10 | 2026-03-20 | QTS - 9500, QTS - 9490, QTS - 1020 |  |  |  | 69d | 0d | QTS-PHX3 DC1 - 6 day w/ Holidays |  | Scott Masterson |  |
| QTS - 25611 |  | TFO Scope // DH 1300 / Lineup C - D / Install Telecom Trays Tier # 2 - Grid | 10d | 2026-03-11 | 2026-03-21 | QTS - 25601 FF+4d |  |  |  | 103d | 0d | QTS-PHX3 DC1 - 6 day w/ Holidays |  | Scott Masterson |  |
| QTS - 9380 |  | TFO Scope // DH 1300 / Lineup C - D / Install OH Trapeze - Screen Wall to RPPs | 3d | 2026-03-13 | 2026-03-16 | QTS - 9530 SS |  |  |  | 33d | 0d | QTS-PHX3 DC1 - 6 day w/ Holidays | Changed from Conduit to Tray | Scott Masterson |  |
| QTS - 9530 |  | TFO Scope // DH 1300 / Lineup C - D / Install OH Trapeze - Screen Wall to CODs | 3d | 2026-03-13 | 2026-03-16 | QTS - 9280 |  |  |  | 30d | 0d | QTS-PHX3 DC1 - 6 day w/ Holidays | Changed from Conduit to Tray | Scott Masterson |  |
| QTS - 25621 |  | TFO Scope // DH 1300 / Lineup C - D / Install Telecom Trays Tier # 3 - Grid | 10d | 2026-03-16 | 2026-03-26 | QTS - 25611 FF+4d |  |  |  | 103d | 35d | QTS-PHX3 DC1 - 6 day w/ Holidays |  | Scott Masterson |  |
| QTS - 9510 |  | TFO Scope // DH 1300 / Lineup C - D / Install Telecom Trays Tier # 4 | 10d | 2026-03-16 | 2026-03-26 | QTS - 9350 SS+5d, QTS - 9350 FF+5d, QTS - 9370 |  |  |  | 69d | 0d | QTS-PHX3 DC1 - 6 day w/ Holidays |  | Scott Masterson |  |
| QTS - 9400 |  | TFO Scope // DH 1300 / Lineup C - D / Pull MC Feeders - CODs to RPPs | 12d | 2026-03-17 | 2026-03-30 | QTS - 9380, QTS - 9530 |  |  |  | 33d | 0d | QTS-PHX3 DC1 - 6 day w/ Holidays | Added MC and Removed RPP Set | Scott Masterson |  |
| QTS - 9520 |  | TFO Scope // DH 1300 / Lineup C - D / Install Telecom Trays Tier # 3 | 10d | 2026-03-21 | 2026-04-01 | QTS - 9510 SS+5d, QTS - 9510 FF+5d |  |  |  | 69d | 0d | QTS-PHX3 DC1 - 6 day w/ Holidays |  | Scott Masterson |  |
| QTS - 9420 |  | TFO Scope // DH 1300 / Lineup C - D / Terminate Feeder at RPPs and CODs | 10d | 2026-03-23 | 2026-04-02 | QTS - 9360, QTS - 9400 FF+3d |  |  |  | 33d | 0d | QTS-PHX3 DC1 - 6 day w/ Holidays | Added Set RPP Pred | Scott Masterson |  |
| QTS - 10030 |  | TFO Scope // DH 1300 / Lineup C - D / Install Power Tray Tier # 2 | 10d | 2026-03-27 | 2026-04-07 | QTS - 9520 SS+5d, QTS - 9520 FF+5d, QTS - 9370 |  |  |  | 69d | 0d | QTS-PHX3 DC1 - 6 day w/ Holidays |  | Scott Masterson |  |
| QTS - 10040 |  | TFO Scope // DH 1300 / Lineup C - D / Install Power Tray Tier # 1 | 10d | 2026-04-02 | 2026-04-13 | QTS - 10030 SS+5d, QTS - 10030 FF+5d |  |  |  | 91d | 0d | QTS-PHX3 DC1 - 6 day w/ Holidays |  | Scott Masterson |  |
| QTS - 9390 |  | TFO Scope // DH 1300 / Lineup C - D / Pull LV Wire | 14d | 2026-04-08 | 2026-04-23 | QTS - 9370, QTS - 9520, QTS - 10030 |  |  |  | 69d | 0d | QTS-PHX3 DC1 - 6 day w/ Holidays |  | Scott Masterson |  |
| QTS - 9430 |  | TFO Scope // DH 1300 / Lineup C - D / Rough-In I&C | 10d | 2026-04-11 | 2026-04-22 | QTS - 9360, QTS - 9780 |  |  |  | 58d | 0d | QTS-PHX3 DC1 - 6 day w/ Holidays |  | Scott Masterson |  |
| QTS - 10070 |  | TFO Scope // DH 1300 / Lineup C - D / Pull RPP Whips - RPPs to Racks | 15d | 2026-04-14 | 2026-04-30 | QTS - 10040, QTS - 10030 |  |  |  | 91d | 0d | QTS-PHX3 DC1 - 6 day w/ Holidays |  | Scott Masterson |  |
| QTS - 10080 |  | TFO Scope // DH 1300 / Lineup C - D / Terminate Whips at RPP | 10d | 2026-04-23 | 2026-05-04 | QTS - 10070 FF+3d |  |  |  | 91d | 87d | QTS-PHX3 DC1 - 6 day w/ Holidays |  | Scott Masterson |  |
| QTS - 9440 |  | TFO Scope // DH 1300 / Lineup C - D / Install Fire Alarm & Security | 7d | 2026-04-23 | 2026-04-30 | QTS - 9430, QTS - 9320, QTS - 8860, QTS - 10220 |  |  |  | 58d | 0d | QTS-PHX3 DC1 - 6 day w/ Holidays |  | Scott Masterson |  |
| QTS - 9410 |  | TFO Scope // DH 1300 / Lineup C - D / Terminate LV | 10d | 2026-04-24 | 2026-05-05 | QTS - 9390 |  |  |  | 69d | 1d | QTS-PHX3 DC1 - 6 day w/ Holidays |  | Scott Masterson |  |
| QTS - 9450 |  | TFO Scope // DH 1300 / Lineup C - D / Terminate I&C | 5d | 2026-05-01 | 2026-05-06 | QTS - 9440, QTS - 9430, QTS - 9070 |  |  |  | 58d | 0d | QTS-PHX3 DC1 - 6 day w/ Holidays |  | Scott Masterson |  |
| QTS - 9460 |  | TFO Scope // DH 1300 / Lineup C - D / Terminate - BMS & EPMS Connections | 7d | 2026-05-07 | 2026-05-14 | QTS - 9450 |  |  |  | 63d | 21d | QTS-PHX3 DC1 - 6 day w/ Holidays |  | Scott Masterson |  |
| QTS - 9470 |  | TFO Scope // DH 1300 / Lineup C - D / Clean Walk & PEI - Electrical & Controls | 2d | 2026-05-07 | 2026-05-08 | QTS - 25621, QTS - 9420, QTS - 9450, QTS - 9410, QTS - 9440 |  |  |  | 68d | 26d | QTS-PHX3 DC1 - 6 day w/ Holidays |  | Scott Masterson |  |

| ID | WBS | Activity | Duration | Start | Finish | Predecessors | Complete | Planned start | Planned finish | Total float | Free float | Calendar | Notes | Layton Responsible Party | Allucent CSI Group |
| --- | --- | --- | --- | --- | --- | --- | --- | --- | --- | --- | --- | --- | --- | --- | --- |
|  | 2 | **1300 - TFO Scope Buildout (3MW) - Lineup E - F** |  | 2025-11-13 | 2026-05-20 |  |  |  |  |  |  |  |  |  |  |
| QTS - 9550 |  | TFO Scope // DH 1300 / Lineup E - F / Install HAC Support Steel | 5d | 2025-11-13 A | 2025-12-05 A | QTS - 9320 | 100% | 2025-11-13 | 2025-11-19 |  |  |  | Changed 7-5 Days |  |  |
| QTS - 9560 |  | TFO Scope // DH 1300 / Lineup E - F / Install Stainless Steel Piping Hangers | 4d | 2026-01-20 | 2026-01-23 | QTS - 9330 |  |  |  | 62d | 0d | QTS-PHX3 DC1 - 6 day w/ Holidays |  | Dave Wiltberger | 01ADMIN |
| QTS - 9710 |  | TFO Scope // DH 1300 / Lineup E - F / Hang Stainless Steel 6" Fan Wall - QCool | 9d | 2026-01-24 | 2026-02-03 | QTS - 9560, QTS - 2590, QTS - 24771 |  |  |  | 62d | 21d | QTS-PHX3 DC1 - 6 day w/ Holidays |  | Dave Wiltberger | 01ADMIN |
| QTS - 9720 |  | TFO Scope // DH 1300 / Lineup E - F / Uncrate QCools with HACs | 1d | 2026-02-27 | 2026-02-27 | QTS - 9490, QTS - 1020 |  |  |  | 41d | 0d | QTS-PHX3 DC1 - 6 day w/ Holidays | Changed Duration from 10 to 5 | Dave Wiltberger |  |
| QTS - 9600 |  | TFO Scope // DH 1300 / Lineup E - F / Raise HAC, QCool & Trays | 6d | 2026-02-28 | 2026-03-06 | QTS - 9710, QTS - 9560, QTS - 9720 |  |  |  | 41d | 0d | QTS-PHX3 DC1 - 6 day w/ Holidays |  | Dave Wiltberger |  |
| QTS - 25631 |  | TFO Scope // DH 1300 / Lineup E - F / Install Grid Hangers | 5d | 2026-03-06 | 2026-03-11 | QTS - 25591 |  |  |  | 98d | 0d | QTS-PHX3 DC1 - 6 day w/ Holidays |  | Scott Masterson |  |
| QTS - 9590 |  | TFO Scope // DH 1300 / Lineup E - F / Set RPP # 12 Units | 5d | 2026-03-07 | 2026-03-12 | QTS - 9600 |  |  |  | 41d | 0d | QTS-PHX3 DC1 - 6 day w/ Holidays | Tied to Raise QCool | Scott Masterson |  |
| QTS - 9730 |  | TFO Scope // DH 1300 / Lineup E - F / Install QCool Arms | 5d | 2026-03-10 | 2026-03-14 | QTS - 9500, QTS - 9550, QTS - 9720 |  |  |  | 59d | 0d | QTS-PHX3 DC1 - 6 day w/ Holidays |  | Scott Masterson |  |
| QTS - 25641 |  | TFO Scope // DH 1300 / Lineup E - F / Install Telecom Trays Tier # 1 - Grid | 10d | 2026-03-12 | 2026-03-23 | QTS - 25631 |  |  |  | 98d | 0d | QTS-PHX3 DC1 - 6 day w/ Holidays |  | Scott Masterson |  |
| QTS - 9660 |  | TFO Scope // DH 1300 / Lineup E - F / Rough-In I&C | 10d | 2026-03-13 | 2026-03-24 | QTS - 9590 |  |  |  | 88d | 0d | QTS-PHX3 DC1 - 6 day w/ Holidays |  | Scott Masterson |  |
| QTS - 9580 |  | TFO Scope // DH 1300 / Lineup E - F / Install Telecom Trays Tier # 5 | 10d | 2026-03-16 | 2026-03-26 | QTS - 9730, QTS - 9600, QTS - 9720, QTS - 1020 |  |  |  | 59d | 0d | QTS-PHX3 DC1 - 6 day w/ Holidays |  | Scott Masterson |  |
| QTS - 25651 |  | TFO Scope // DH 1300 / Lineup E - F / Install Telecom Trays Tier # 2 - Grid | 10d | 2026-03-17 | 2026-03-27 | QTS - 25641 FF+4d |  |  |  | 98d | 0d | QTS-PHX3 DC1 - 6 day w/ Holidays |  | Scott Masterson |  |
| QTS - 9610 |  | TFO Scope // DH 1300 / Lineup E - F / Install OH Trapeze - Screen Wall to RPPs | 3d | 2026-03-17 | 2026-03-19 | QTS - 9760 SS |  |  |  | 30d | 0d | QTS-PHX3 DC1 - 6 day w/ Holidays | Changed from Conduit to Tray | Scott Masterson |  |
| QTS - 9760 |  | TFO Scope // DH 1300 / Lineup E - F / Install OH Trapeze - Screen Wall to CODs | 3d | 2026-03-17 | 2026-03-19 | QTS - 9530 |  |  |  | 30d | 0d | QTS-PHX3 DC1 - 6 day w/ Holidays | Changed from Conduit to Tray | Scott Masterson |  |
| QTS - 9630 |  | TFO Scope // DH 1300 / Lineup E - F / Pull MC Feeders - CODs to RPPs | 12d | 2026-03-20 | 2026-04-02 | QTS - 9610, QTS - 9760 |  |  |  | 30d | 0d | QTS-PHX3 DC1 - 6 day w/ Holidays | Added MC and Removed RPP Set | Scott Masterson |  |
| QTS - 25661 |  | TFO Scope // DH 1300 / Lineup E - F / Install Telecom Trays Tier # 3 - Grid | 10d | 2026-03-21 | 2026-04-01 | QTS - 25651 FF+4d |  |  |  | 98d | 39d | QTS-PHX3 DC1 - 6 day w/ Holidays |  | Scott Masterson |  |
| QTS - 9740 |  | TFO Scope // DH 1300 / Lineup E - F / Install Telecom Trays Tier # 4 | 10d | 2026-03-21 | 2026-04-01 | QTS - 9580 SS+5d, QTS - 9600 |  |  |  | 59d | 0d | QTS-PHX3 DC1 - 6 day w/ Holidays |  | Scott Masterson |  |
| QTS - 9670 |  | TFO Scope // DH 1300 / Lineup E - F / Install Fire Alarm & Security | 7d | 2026-03-25 | 2026-04-01 | QTS - 9660, QTS - 9550, QTS - 9320, QTS - 8860, QTS - 10220 |  |  |  | 88d | 30d | QTS-PHX3 DC1 - 6 day w/ Holidays |  | Scott Masterson |  |
| QTS - 9650 |  | TFO Scope // DH 1300 / Lineup E - F / Terminate Feeders RPPs and CODs | 10d | 2026-03-26 | 2026-04-06 | QTS - 9590, QTS - 9630 FF+3d |  |  |  | 30d | 0d | QTS-PHX3 DC1 - 6 day w/ Holidays | Added Set RPP Pred | Scott Masterson |  |
| QTS - 9750 |  | TFO Scope // DH 1300 / Lineup E - F / Install Telecom Trays Tier # 3 | 10d | 2026-03-27 | 2026-04-07 | QTS - 9740 SS+5d |  |  |  | 59d | 0d | QTS-PHX3 DC1 - 6 day w/ Holidays |  | Scott Masterson |  |
| QTS - 9940 |  | TFO Scope // DH 1300 / Lineup E - F / Install Power Tray Tier # 2 | 10d | 2026-04-08 | 2026-04-18 | QTS - 9750, QTS - 9600 |  |  |  | 59d | 0d | QTS-PHX3 DC1 - 6 day w/ Holidays |  | Scott Masterson |  |
| QTS - 9950 |  | TFO Scope // DH 1300 / Lineup E - F / Install Power Tray Tier # 1 | 10d | 2026-04-14 | 2026-04-24 | QTS - 9940 SS+5d |  |  |  | 81d | 0d | QTS-PHX3 DC1 - 6 day w/ Holidays |  | Scott Masterson |  |
| QTS - 9620 |  | TFO Scope // DH 1300 / Lineup E - F / Pull LV Wire | 14d | 2026-04-20 | 2026-05-05 | QTS - 9600, QTS - 9750, QTS - 9940 |  |  |  | 59d | 0d | QTS-PHX3 DC1 - 6 day w/ Holidays |  | Scott Masterson |  |
| QTS - 9960 |  | TFO Scope // DH 1300 / Lineup E - F / Pull RPP Whips - RPPs to Racks | 15d | 2026-04-25 | 2026-05-12 | QTS - 9940, QTS - 9950 |  |  |  | 81d | 0d | QTS-PHX3 DC1 - 6 day w/ Holidays |  | Scott Masterson |  |
| QTS - 9970 |  | TFO Scope // DH 1300 / Lineup E - F / Terminate Whips at RPP | 10d | 2026-05-05 | 2026-05-15 | QTS - 9960 FF+3d |  |  |  | 81d | 77d | QTS-PHX3 DC1 - 6 day w/ Holidays |  | Scott Masterson |  |
| QTS - 9640 |  | TFO Scope // DH 1300 / Lineup E - F / Terminate LV | 10d | 2026-05-06 | 2026-05-16 | QTS - 9620 |  |  |  | 59d | 0d | QTS-PHX3 DC1 - 6 day w/ Holidays |  | Scott Masterson |  |
| QTS - 9680 |  | TFO Scope // DH 1300 / Lineup E - F / Terminate I&C | 5d | 2026-05-07 | 2026-05-12 | QTS - 9670, QTS - 9660, QTS - 9450 |  |  |  | 58d | 0d | QTS-PHX3 DC1 - 6 day w/ Holidays |  | Scott Masterson |  |
| QTS - 9690 |  | TFO Scope // DH 1300 / Lineup E - F / Terminate - BMS & EPMS Connections | 7d | 2026-05-13 | 2026-05-20 | QTS - 9680 |  |  |  | 58d | 16d | QTS-PHX3 DC1 - 6 day w/ Holidays |  | Scott Masterson |  |
| QTS - 9700 |  | TFO Scope // DH 1300 / Lineup E - F / Clean Walk & PEI - Electrical & Controls | 2d | 2026-05-18 | 2026-05-19 | QTS - 25661, QTS - 9650, QTS - 9680, QTS - 9640, QTS - 9670 |  |  |  | 59d | 17d | QTS-PHX3 DC1 - 6 day w/ Holidays |  | Scott Masterson |  |

| ID | WBS | Activity | Duration | Start | Finish | Predecessors | Total float | Free float | Calendar | Layton Responsible Party | Notes |
| --- | --- | --- | --- | --- | --- | --- | --- | --- | --- | --- | --- |
|  | 2 | **Gallery 1301 Mechanical** |  | 2026-03-14 | 2026-05-29 |  |  |  |  |  |  |
|  | 9 | **TFO 1301 - CDU Mechanical Gallery** |  | 2026-03-14 | 2026-05-29 |  |  |  |  |  |  |
| QTS - 10290 |  | TFO Scope // DH 1300 - 1301 Mechanical Gallery / Install Telecom Conduit from MMR to IDF Cabinet | 10d | 2026-03-14 | 2026-03-25 | QTS-16621 | 91d | 0d | QTS-PHX3 DC1 - 6 day w/ Holidays | Scott Masterson |  |
| QTS - 9000 |  | TFO Scope // DH 1300 - 1301 Mechanical Gallery / Pull LV Main / IDF Cabinet to Basket Tray | 7d | 2026-03-14 | 2026-03-21 | QTS-16621 | 102d | 13d | QTS-PHX3 DC1 - 6 day w/ Holidays | Scott Masterson |  |
| QTS - 9240 |  | TFO Scope // DH 1300 - 1301 Mechanical Gallery / Install OH Technical Loop Hangers | 5d | 2026-03-17 | 2026-03-21 | QTS - 9760 FF+2d | 43d | 0d | QTS-PHX3 DC1 - 6 day w/ Holidays | Dave Wiltberger |  |
| QTS - 9020 |  | TFO Scope // DH 1300 - 1301 Mechanical Gallery / Install OH 8" Technical Loop CDU Piping | 9d | 2026-03-23 | 2026-04-01 | QTS - 9240, QTS - 2590, QTS - 10220, QTS - 24771 | 48d | 0d | QTS-PHX3 DC1 - 6 day w/ Holidays | Dave Wiltberger |  |
| QTS - 10300 |  | TFO Scope // DH 1300 - 1301 Mechanical Gallery / Pull Telecom Wire from MMR to IDF Cabinet | 10d | 2026-03-26 | 2026-04-06 | QTS - 10290 | 91d | 0d | QTS-PHX3 DC1 - 6 day w/ Holidays | Scott Masterson |  |
| QTS - 8990 |  | TFO Scope // DH 1300 - 1301 Mechanical Gallery / OFCI - L2 SET IN PLACE - CDU - 9 units | 3d | 2026-04-02 | 2026-04-04 | QTS - 9020 | 48d | 0d | QTS-PHX3 DC1 - 6 day w/ Holidays | Dave Wiltberger |  |
| QTS - 9040 |  | TFO Scope // DH 1300 - 1301 Mechanical Gallery / Pull Branches From MOD-03 to CDUs | 8d | 2026-04-06 | 2026-04-14 | QTS - 8990 | 62d | 0d | QTS-PHX3 DC1 - 6 day w/ Holidays | Scott Masterson |  |
| QTS - 9150 |  | TFO Scope // DH 1300 - 1301 Mechanical Gallery / Detail & Fabricate CDU Mechanical Connections | 10d | 2026-04-06 | 2026-04-16 | QTS - 8990 | 48d | 0d | QTS-PHX3 DC1 - 6 day w/ Holidays | Dave Wiltberger |  |
| QTS - 9930 |  | TFO Scope // DH 1300 - 1301 Mechanical Gallery / BMS & EPMS Terminations | 2d | 2026-04-07 | 2026-04-08 | QTS - 9000, QTS - 10300 | 94d | 52d | QTS-PHX3 DC1 - 6 day w/ Holidays | Scott Masterson |  |
| QTS - 9010 |  | TFO Scope // DH 1300 - 1301 Mechanical Gallery / Terminate & Torque - CDU Connections | 5d | 2026-04-15 | 2026-04-20 | QTS - 9040, QTS - 8990 | 62d | 0d | QTS-PHX3 DC1 - 6 day w/ Holidays | Scott Masterson |  |
| QTS - 9030 |  | TFO Scope // DH 1300 - 1301 Mechanical Gallery / CDU Unit 4" Mechanical Connections Lineup - A - B | 7d | 2026-04-17 | 2026-04-24 | QTS - 9150, QTS - 9180, QTS - 8990 | 48d | 0d | QTS-PHX3 DC1 - 6 day w/ Holidays | Dave Wiltberger |  |
| QTS - 9920 |  | TFO Scope // DH 1300 - 1301 Mechanical Gallery / Clean Walk & PEI - Electrical | 2d | 2026-04-21 | 2026-04-22 | QTS - 9010 | 82d | 40d | QTS-PHX3 DC1 - 6 day w/ Holidays | Scott Masterson |  |
| QTS - 9050 |  | TFO Scope // DH 1300 - 1301 Mechanical Gallery / Fill & Flush Technical Loop A - B | 5d | 2026-04-25 | 2026-04-30 | QTS - 9030 | 62d | 0d | QTS-PHX3 DC1 - 6 day w/ Holidays | Dave Wiltberger |  |
| QTS - 9160 |  | TFO Scope // DH 1300 - 1301 Mechanical Gallery / CDU Unit 4" Mechanical Connections Lineup - C - D | 7d | 2026-04-25 | 2026-05-02 | QTS - 9030, QTS - 9480 | 48d | 0d | QTS-PHX3 DC1 - 6 day w/ Holidays | Dave Wiltberger |  |
| QTS - 10110 |  | TFO Scope // DH 1300 - 1301 Mechanical Gallery / Final Connection Tie-In to CDU Lineup - A - B | 5d | 2026-05-01 | 2026-05-06 | QTS - 9050 | 62d | 0d | QTS-PHX3 DC1 - 6 day w/ Holidays | Dave Wiltberger |  |
| QTS - 10120 |  | TFO Scope // DH 1300 - 1301 Mechanical Gallery / Fill & Flush Technical Loop C - D | 5d | 2026-05-04 | 2026-05-08 | QTS - 9160 | 55d | 0d | QTS-PHX3 DC1 - 6 day w/ Holidays | Dave Wiltberger |  |
| QTS - 9170 |  | TFO Scope // DH 1300 - 1301 Mechanical Gallery / CDU Unit 4" Mechanical Connections Lineup - E - F | 7d | 2026-05-04 | 2026-05-11 | QTS - 9160, QTS - 9710 | 48d | 0d | QTS-PHX3 DC1 - 6 day w/ Holidays | Dave Wiltberger |  |
| QTS - 10130 |  | TFO Scope // DH 1300 - 1301 Mechanical Gallery / Final Connection Tie-In to CDU Lineup - C - D | 5d | 2026-05-09 | 2026-05-14 | QTS - 10120 | 55d | 0d | QTS-PHX3 DC1 - 6 day w/ Holidays | Dave Wiltberger |  |
| QTS - 10140 |  | TFO Scope // DH 1300 - 1301 Mechanical Gallery / Fill & Flush Technical Loop E - F | 5d | 2026-05-12 | 2026-05-16 | QTS - 9170 | 48d | 0d | QTS-PHX3 DC1 - 6 day w/ Holidays | Dave Wiltberger |  |
| QTS - 10150 |  | TFO Scope // DH 1300 - 1301 Mechanical Gallery / Final Connection Tie-In to CDU Lineup - E - F | 5d | 2026-05-18 | 2026-05-22 | QTS - 10140 | 48d | 0d | QTS-PHX3 DC1 - 6 day w/ Holidays | Dave Wiltberger |  |
| QTS - 9060 |  | TFO Scope // DH 1300 - 1301 Mechanical Gallery / Clean Walk & PEI - Mechanical | 5d | 2026-05-23 | 2026-05-29 | QTS - 10130, QTS - 10150, QTS - 10110, QTS - 10300 | 51d | 9d | QTS-PHX3 DC1 - 6 day w/ Holidays | Dave Wiltberger |  |
|  | 7 | **Gallery 1303 Mechanical** |  | 2026-03-21 | 2026-06-04 |  |  |  |  |  |  |
|  | 10 | **TFO 1303 - CDU Mechanical Gallery** |  | 2026-03-21 | 2026-06-04 |  |  |  |  |  |  |
| QTS - 9790 |  | TFO Scope // DH 1300 - 1303 Mechanical Gallery / Pull LV Main / IDF Cabinet to Basket Tray | 7d | 2026-03-21 | 2026-03-28 | QTS-17231 | 99d | 24d | QTS-PHX3 DC1 - 6 day w/ Holidays | Scott Masterson |  |
| QTS - 9890 |  | TFO Scope // DH 1300 - 1303 Mechanical Gallery / Install OH Technical Loop Hangers | 5d | 2026-03-23 | 2026-03-27 | QTS - 9240, QTS - 10220 | 43d | 0d | QTS-PHX3 DC1 - 6 day w/ Holidays | Dave Wiltberger |  |
| QTS - 9810 |  | TFO Scope // DH 1300 - 1303 Mechanical Gallery / Install OH 8" Technical Loop CDU Piping | 9d | 2026-03-28 | 2026-04-07 | QTS - 9890, QTS - 2590, QTS - 24771 | 43d | 0d | QTS-PHX3 DC1 - 6 day w/ Holidays | Dave Wiltberger | Changed 10-9 Days |
| QTS - 9780 |  | TFO Scope // DH 1300 - 1303 Mechanical Gallery / OFCI - L2 SET IN PLACE - CDU - 9 units | 3d | 2026-04-08 | 2026-04-10 | QTS - 9810 | 43d | 0d | QTS-PHX3 DC1 - 6 day w/ Holidays | Dave Wiltberger |  |
| QTS - 9830 |  | TFO Scope // DH 1300 - 1303 Mechanical Gallery / Pull Branches From MOD-03 to CDUs | 8d | 2026-04-11 | 2026-04-20 | QTS - 9780 | 71d | 0d | QTS-PHX3 DC1 - 6 day w/ Holidays | Scott Masterson |  |
| QTS - 9860 |  | TFO Scope // DH 1300 - 1303 Mechanical Gallery / Detail & Fabricate CDU Mechanical Connections | 10d | 2026-04-11 | 2026-04-22 | QTS - 9780 | 43d | 0d | QTS-PHX3 DC1 - 6 day w/ Holidays | Dave Wiltberger |  |
| QTS - 9800 |  | TFO Scope // DH 1300 - 1303 Mechanical Gallery / Terminate & Torque - CDU Connections | 5d | 2026-04-21 | 2026-04-25 | QTS - 9830, QTS - 9780 | 71d | 0d | QTS-PHX3 DC1 - 6 day w/ Holidays | Scott Masterson |  |
| QTS - 9820 |  | TFO Scope // DH 1300 - 1303 Mechanical Gallery / CDU Unit 4" Mechanical Connections Lineup - A - B | 7d | 2026-04-23 | 2026-04-30 | QTS - 9860, QTS - 9810, QTS - 9780, QTS - 9180 | 43d | 0d | QTS-PHX3 DC1 - 6 day w/ Holidays | Dave Wiltberger |  |
| QTS - 9910 |  | TFO Scope // DH 1300 - 1303 Mechanical Gallery / BMS & EPMS Terminations | 2d | 2026-04-27 | 2026-04-28 | QTS - 9790, QTS - 9800 | 75d | 0d | QTS-PHX3 DC1 - 6 day w/ Holidays | Scott Masterson |  |
| QTS - 9900 |  | TFO Scope // DH 1300 - 1303 Mechanical Gallery / Clean Walk & PEI - Electrical | 2d | 2026-04-29 | 2026-04-30 | QTS - 9800, QTS - 9910 | 75d | 33d | QTS-PHX3 DC1 - 6 day w/ Holidays | Scott Masterson |  |
| QTS - 9840 |  | TFO Scope // DH 1300 - 1303 Mechanical Gallery / Fill & Flush Technical Loop A - B | 5d | 2026-05-01 | 2026-05-06 | QTS - 9820 | 57d | 0d | QTS-PHX3 DC1 - 6 day w/ Holidays | Dave Wiltberger |  |
| QTS - 9870 |  | TFO Scope // DH 1300 - 1303 Mechanical Gallery / CDU Unit 4" Mechanical Connections Lineup - C - D | 7d | 2026-05-01 | 2026-05-08 | QTS - 9820, QTS - 9480 | 43d | 0d | QTS-PHX3 DC1 - 6 day w/ Holidays | Dave Wiltberger |  |
| QTS - 9980 |  | TFO Scope // DH 1300 - 1303 Mechanical Gallery / Final Connection to CDU Lineup - A - B | 5d | 2026-05-07 | 2026-05-12 | QTS - 9840 | 57d | 0d | QTS-PHX3 DC1 - 6 day w/ Holidays | Dave Wiltberger |  |
| QTS - 9880 |  | TFO Scope // DH 1300 - 1303 Mechanical Gallery / CDU Unit 4" Mechanical Connections Lineup - E - F | 7d | 2026-05-09 | 2026-05-16 | QTS - 9870, QTS - 9710 | 43d | 0d | QTS-PHX3 DC1 - 6 day w/ Holidays | Dave Wiltberger |  |
| QTS - 9990 |  | TFO Scope // DH 1300 - 1303 Mechanical Gallery / Fill & Flush Technical Loop C - D | 5d | 2026-05-09 | 2026-05-14 | QTS - 9870 | 50d | 0d | QTS-PHX3 DC1 - 6 day w/ Holidays | Dave Wiltberger |  |
| QTS - 10000 |  | TFO Scope // DH 1300 - 1303 Mechanical Gallery / Final Connection to CDU Lineup - C - D | 5d | 2026-05-15 | 2026-05-20 | QTS - 9990 | 50d | 0d | QTS-PHX3 DC1 - 6 day w/ Holidays | Dave Wiltberger |  |
| QTS - 10020 |  | TFO Scope // DH 1300 - 1303 Mechanical Gallery / Fill & Flush Technical Loop E - F | 5d | 2026-05-18 | 2026-05-22 | QTS - 9880 | 43d | 0d | QTS-PHX3 DC1 - 6 day w/ Holidays | Dave Wiltberger |  |
| QTS - 10010 |  | TFO Scope // DH 1300 - 1303 Mechanical Gallery / Final Connection to CDU Lineup - E - F | 5d | 2026-05-23 | 2026-05-29 | QTS - 10020 | 43d | 0d | QTS-PHX3 DC1 - 6 day w/ Holidays | Dave Wiltberger |  |
| QTS - 9850 |  | TFO Scope // DH 1300 - 1303 Mechanical Gallery / Clean Walk & PEI - Mechanical | 5d | 2026-05-30 | 2026-06-04 | QTS - 9980, QTS - 10010, QTS - 10000 | 46d | 4d | QTS-PHX3 DC1 - 6 day w/ Holidays | Dave Wiltberger |  |

| ID | WBS | Activity | Duration | Start | Finish | Predecessors | Complete | Remaining | Planned start | Planned finish | Total float | Free float | Constraint | Allucent CSI Group | Vendor Responsible Party |
| --- | --- | --- | --- | --- | --- | --- | --- | --- | --- | --- | --- | --- | --- | --- | --- |
|  | 6 | **Commissioning** |  | 2025-12-02 | 2026-08-26 |  |  |  |  |  |  |  |  |  |  |
|  | 01 | **DC1-House Cx** |  | 2025-12-02 | 2026-05-05 |  |  |  |  |  |  |  |  |  |  |
|  | 02 | **DC1-House Cx L2 Commissioning** |  | 2025-12-02 | 2026-02-18 |  |  |  |  |  |  |  |  |  |  |
|  | 01 | **DC1-Front of House (FOH) Cx L2** |  | 2025-12-10 | 2026-01-23 |  |  |  |  |  |  |  |  |  |  |
|  | 01 | **DC1-FOH-GEN-HSE-1 Cx L2** |  | 2025-12-16 | 2026-01-20 |  |  |  |  |  |  |  |  |  |  |
| DC1-GEN-HSE-L2-1000 |  | GEN-HSE-1 L2 Checklist | 2d | 2025-12-16 A | 2026-01-20 | QTS-1004480 FF+1d, QTS-41651 | 50% | 1d | 2025-12-10 | 2025-12-11 | 47d | 2d |  | 01ADMIN | YCY |
|  | 02 | **DC1-FOH-XFMR-HSE-1 Cx L2** |  | 2025-12-11 | 2026-01-20 |  |  |  |  |  |  |  |  |  |  |
| DC1-XFMR-HSE-L2-1000 |  | XFMR-HSE-1 L2 Checklist | 2d | 2025-12-11 A | 2026-01-20 | QTS-1004480 FF+1d, QTS-41631 | 50% | 1d | 2025-12-11 | 2025-12-12 | 3d | 0d |  | 01ADMIN | VTC |
|  | 03 | **DC1-FOH-SWBD-HSE-1 Cx L2** |  | 2025-12-19 | 2026-01-21 |  |  |  |  |  |  |  |  |  |  |
| DC1-SWBD-HSE-L2-1000 |  | SWBD-HSE-1 L2 Checklist | 4d | 2025-12-19 A | 2026-01-21 | QTS-1004480 FF+1d, QTS-44221, QTS-41631, QTS-41651, QTS-1000510 |  | 5d | 2025-12-19 | 2025-12-29 | 1d | 0d |  | 01ADMIN | PHE |
|  | 04 | **DC1-FOH-UPSs HSE Cx L2** |  | 2025-12-16 | 2026-01-22 |  |  |  |  |  |  |  |  |  |  |
| DC1-XFMR-HSE-L2-1040 |  | XFMR-STS-HSE-02 L2 Checklist | 2d | 2025-12-16 A | 2026-01-20 | QTS-1004480 FF+1d, QTS-44221 |  | 4d | 2025-12-16 | 2025-12-17 | 42d | 0d |  | 01ADMIN | ROS |
| DC1-XFMR-HSE-L2-1030 |  | XFMR-STS-HSE-01 L2 Checklist | 4d | 2025-12-18 A | 2026-01-20 | QTS-44221 |  | 4d | 2025-12-18 | 2025-12-23 | 44d | 19d |  | 01ADMIN | ROS |
| DC1-PNL-HSE-L2-1000 |  | PNL-UPS-HSE-01 L2 Checklist | 4d | 2026-01-14 A | 2026-01-20 | QTS-44221, QTS-4831, QTS-27311 |  | 4d |  |  | 45d | 0d |  | 01ADMIN | ROS |
| DC1-UPS-HSE-L2-1000 |  | UPS-HSE-01 L2 Checklist | 4d | 2026-01-16 A | 2026-01-20 | QTS-44221 |  | 4d | 2026-01-16 | 2026-01-22 | 38d | 0d |  | 01ADMIN | VER |
| DC1-STS-HSE-L2-1040 |  | STS-HSE-01 L2 Checklist | 3d | 2026-01-17 A | 2026-01-16 | QTS-44221, QTS-27291 |  | 3d | 2026-01-20 | 2026-01-22 | 42d | 0d |  | 01ADMIN | VER |
| DC1-PNL-HSE-L2-1010 |  | PNL-UPS-HSE-02 L2 Checklist | 2d | 2026-01-20 A | 2026-01-15 | DC1-PNL-HSE-L2-1000 SS |  | 2d | 2026-01-21 | 2026-01-22 | 45d | 0d |  | 01ADMIN | ROS |
| DC1-STS-HSE-L2-1050 |  | STS-HSE-02 L2 Checklist | 2d | 2026-01-20 A | 2026-01-16 | DC1-STS-HSE-L2-1040 FF, QTS-4821 |  | 2d | 2026-01-20 | 2026-01-21 | 42d | 2d |  | 01ADMIN | VER |
| DC1-UPS-HSE-L2-1010 |  | UPS-HSE-02 L2 Checklist | 2d | 2026-01-21 | 2026-01-22 | DC1-UPS-HSE-L2-1000 |  |  |  |  | 38d | 0d | start on or after 2025-12-22 | 01ADMIN | VER |
|  | 05 | **DC1-FOH-PNLs HSE Cx L2** |  | 2026-01-17 | 2026-01-23 |  |  |  |  |  |  |  |  |  |  |
| DC1-FOH-PNL-L2-1000 |  | PNL-ADM1 L2 Checklist | 2d | 2026-01-17 A | 2026-01-21 | DC1-SWBD-HSE-L2-1000 FF |  | 2d | 2026-01-20 | 2026-01-21 | 46d | 20d |  | 01ADMIN | ROS |
| DC1-FOH-PNL-L2-1020 |  | PNL-ADM2 L2 Checklist | 2d | 2026-01-20 A | 2026-01-21 | DC1-SWBD-HSE-L2-1000 FF |  | 2d |  |  | 45d | 0d |  | 01ADMIN | ROS |
| DC1-FOH-PNL-L2-1010 |  | PNL-DH11 L2 Checklist | 2d | 2026-01-22 | 2026-01-23 | DC1-SWBD-HSE-L2-1000 |  |  |  |  | 44d | 18d |  | 01ADMIN | ROS |
| DC1-FOH-PNL-L2-1030 |  | PNL-DH21 L2 Checklist | 2d | 2026-01-22 | 2026-01-23 | DC1-SWBD-HSE-L2-1000 |  |  |  |  | 44d | 18d |  | 01ADMIN | ROS |

Notes:
- DC1-GEN-HSE-L2-1000: allucent_notes_20251230_164549: Riley Warring on 2025-12-16 14:18: In progress as of 12/16 / Riley Warring on 2025-12-16 14:18: Started 12/16 / Riley Warring on 2025-12-29 12:01: Checklist not complete in Cx Alloy / allucent_notes_20251216_165335: Riley Warring on 2025-12-16 14:18: In progress as of 12/16 / Riley Warring on 2025-12-16 14:18: Started 12/16 / Steps: EC Installation Checklist; MC Installation Checklist; CC Installation Checklist; Vendor Pre-Energization Checklist; CXA Pre-Energization Inspection; PEI/Clean-Walk / allucent_notes: 2025-12-16 14:18 - User: Riley Warring - Date Added: 2025-12-16 14:18 - Note: In progress as of 12/16 / 2025-12-16 14:18 - User: Riley Warring - Date Added: 2025-12-16 14:18 - Note: Started 12/16 / 2025-12-29 12:01 - User: Riley Warring - Date Added: 20
- DC1-XFMR-HSE-L2-1000: allucent_notes_20251230_164549: Jason Johnston on 2025-12-09 15:15: Need to confirm who is responsible for updating this / Riley Warring on 2025-12-16 14:09: Not complete / Riley Warring on 2025-12-29 12:02: Checklist not complete in Cx Alloy. / Ongoing CT issue preventing L2 complete / allucent_notes_20251209_203830: Jason Johnston on 2025-12-09 15:15: Need to confirm who is responsible for updating this / allucent_notes_20251216_165335: Jason Johnston on 2025-12-09 15:15: Need to confirm who is responsible for updating this / Riley Warring on 2025-12-16 14:09: Not complete / Steps: EC Installation Checklist; CC Installation Checklist; Vendor Pre-Energization Checklist (done); CXA Pre-Energization Inspection; PEI/Clean-Walk / allucent_notes: 2025-12-09 15:15 - User: Jason Johnston - Date Added: 2025-12-09 15:15 - Note: Need to confirm who is responsible for updating this / 2025-12-16 14:09 - User: Riley Warring - Date Added: 2025-12-16 14:09 - Note: Not complete / 2025-12-29 12:02 - User: R
- DC1-SWBD-HSE-L2-1000: allucent_notes_20251230_164549: Riley Warring on 2025-12-16 14:10: Not started / Riley Warring on 2025-12-16 14:11: Not started as of 12/16 / Riley Warring on 2025-12-29 12:03: Checklist not complete in Cx Alloy / Open issues preventing L2 complete / allucent_notes_20251216_165335: Riley Warring on 2025-12-16 14:10: Not started / Riley Warring on 2025-12-16 14:11: Not started as of 12/16 / Steps: EC Installation Checklist; CC Installation Checklist; Vendor Pre-Energization Checklist; CXA Pre-Energization Inspection; PEI/Clean-Walk / allucent_notes: 2025-12-16 14:10 - User: Riley Warring - Date Added: 2025-12-16 14:10 - Note: Not started / 2025-12-16 14:11 - User: Riley Warring - Date Added: 2025-12-16 14:11 - Note: Not started as of 12/16 / 2025-12-29 12:03 - User: Riley Warring - Date Added: 2025
- DC1-XFMR-HSE-L2-1040: allucent_notes_20251230_164549: Riley Warring on 2025-12-16 14:12: Will not be complete by 12/17 / Riley Warring on 2025-12-29 12:04: Checklist not complete in Cx Alloy / Ongoing CT issues preventing L2 complete / allucent_notes_20251216_165335: Riley Warring on 2025-12-16 14:12: Will not be complete by 12/17 / Steps: EC Installation Checklist (done); CC Installation Checklist; Vendor Pre-Energization Checklist (done); CXA Pre-Energization Inspection; PEI/Clean-Walk / allucent_notes: 2025-12-16 14:12 - User: Riley Warring - Date Added: 2025-12-16 14:12 - Note: Will not be complete by 12/17 / 2025-12-29 12:04 - User: Riley Warring - Date Added: 2025-12-29 12:04 - Note: Checklist not complete in Cx AlloyOngoing CT issues preventing L2
- DC1-XFMR-HSE-L2-1030: allucent_notes_20251230_164549: Riley Warring on 2025-12-16 14:14: Not started as of 12/16 / Riley Warring on 2025-12-16 14:14: Not started as of 12/16 / Riley Warring on 2025-12-29 12:05: Checklist not started in Cx Alloy / allucent_notes_20251216_165335: Riley Warring on 2025-12-16 14:14: Not started as of 12/16 / Riley Warring on 2025-12-16 14:14: Not started as of 12/16 / Steps: EC Installation Checklist; CC Installation Checklist; Vendor Pre-Energization Checklist (done); CXA Pre-Energization Inspection; PEI/Clean-Walk / allucent_notes: 2025-12-16 14:14 - User: Riley Warring - Date Added: 2025-12-16 14:14 - Note: Not started as of 12/16 / 2025-12-16 14:14 - User: Riley Warring - Date Added: 2025-12-16 14:14 - Note: Not started as of 12/16 / 2025-12-29 12:05 - User: Riley Warring - Date
- DC1-PNL-HSE-L2-1000: allucent_notes_20251230_164549: Riley Warring on 2025-12-16 14:11: Not started / Riley Warring on 2025-12-16 14:12: Not started as of 12/16 / Riley Warring on 2025-12-29 12:05: Checklist not complete in Cx Alloy / allucent_notes_20251216_165335: Riley Warring on 2025-12-16 14:11: Not started / Riley Warring on 2025-12-16 14:12: Not started as of 12/16 / Steps: EC Installation Checklist; CC Installation Checklist; Vendor Pre-Energization Checklist (done); CXA Pre-Energization Inspection; PEI/Clean-Walk / allucent_notes: 2025-12-16 14:11 - User: Riley Warring - Date Added: 2025-12-16 14:11 - Note: Not started / 2025-12-16 14:12 - User: Riley Warring - Date Added: 2025-12-16 14:12 - Note: Not started as of 12/16 / 2025-12-29 12:05 - User: Riley Warring - Date Added: 2025
- DC1-UPS-HSE-L2-1000: allucent_notes_20251230_164549: Riley Warring on 2025-12-16 14:14: Not started / Riley Warring on 2025-12-16 14:14: Not started as of 12/16 / Riley Warring on 2025-12-29 12:05: Checklist not started in Cx Alloy / allucent_notes_20251216_165335: Riley Warring on 2025-12-16 14:14: Not started / Riley Warring on 2025-12-16 14:14: Not started as of 12/16 / Steps: EC Installation Checklist (done); CC Installation Checklist; Vendor Pre-Energization Checklist; CXA Pre-Energization Inspection; PEI/Clean-Walk / allucent_notes: 2025-12-16 14:14 - User: Riley Warring - Date Added: 2025-12-16 14:14 - Note: Not started / 2025-12-16 14:14 - User: Riley Warring - Date Added: 2025-12-16 14:14 - Note: Not started as of 12/16 / 2025-12-29 12:05 - User: Riley Warring - Date Added: 202
- DC1-STS-HSE-L2-1040: allucent_notes_20251230_164549: Riley Warring on 2025-12-16 14:13: Not started / Riley Warring on 2025-12-16 14:13: Not started as of 12/16 / Riley Warring on 2025-12-29 12:03: Checklist not started in Cx Alloy / allucent_notes_20251216_165335: Riley Warring on 2025-12-16 14:13: Not started / Riley Warring on 2025-12-16 14:13: Not started as of 12/16 / Steps: EC Installation Checklist; CC Installation Checklist; Vendor Pre-Energization Checklist; CXA Pre-Energization Inspection; PEI/Clean-Walk / allucent_notes: 2025-12-16 14:13 - User: Riley Warring - Date Added: 2025-12-16 14:13 - Note: Not started / 2025-12-16 14:13 - User: Riley Warring - Date Added: 2025-12-16 14:13 - Note: Not started as of 12/16 / 2025-12-29 12:03 - User: Riley Warring - Date Added: 2025
- DC1-PNL-HSE-L2-1010: Steps: EC Installation Checklist; CC Installation Checklist; Vendor Pre-Energization Checklist (done); CXA Pre-Energization Inspection; PEI/Clean-Walk
- DC1-STS-HSE-L2-1050: Steps: EC Installation Checklist; CC Installation Checklist; Vendor Pre-Energization Checklist; CXA Pre-Energization Inspection; PEI/Clean-Walk
- DC1-UPS-HSE-L2-1010: allucent_notes_20251230_164549: Riley Warring on 2025-12-16 14:14: Not started as of 12/16 / allucent_notes_20251216_165335: Riley Warring on 2025-12-16 14:14: Not started as of 12/16 / Steps: EC Installation Checklist; CC Installation Checklist; Vendor Pre-Energization Checklist; CXA Pre-Energization Inspection; PEI/Clean-Walk / allucent_notes: 2025-12-16 14:14 - User: Riley Warring - Date Added: 2025-12-16 14:14 - Note: Not started as of 12/16
- DC1-FOH-PNL-L2-1000: Steps: EC Installation Checklist; CC Installation Checklist; Vendor Pre-Energization Checklist (done); CXA Pre-Energization Inspection; PEI/Clean-Walk
- DC1-FOH-PNL-L2-1020: Steps: EC Installation Checklist; CC Installation Checklist; Vendor Pre-Energization Checklist (done); CXA Pre-Energization Inspection; PEI/Clean-Walk
- DC1-FOH-PNL-L2-1010: Steps: EC Installation Checklist; CC Installation Checklist; Vendor Pre-Energization Checklist; CXA Pre-Energization Inspection; PEI/Clean-Walk
- DC1-FOH-PNL-L2-1030: Steps: EC Installation Checklist; CC Installation Checklist; Vendor Pre-Energization Checklist; CXA Pre-Energization Inspection; PEI/Clean-Walk

| ID | WBS | Activity | Duration | Start | Finish | Predecessors | Remaining | Planned start | Planned finish | Total float | Free float | Allucent CSI Group | Vendor Responsible Party | Fed From |
| --- | --- | --- | --- | --- | --- | --- | --- | --- | --- | --- | --- | --- | --- | --- |
|  | 06 | **DC1-FOH-RTUs HSE Cx L2** |  | 2026-01-15 | 2026-01-21 |  |  |  |  |  |  |  |  |  |
| DC1-FOH-RTU-L2-1000 |  | RTU-RT-01 L2 Checklist | 4d | 2026-01-15 | 2026-01-21 | QTS-48911, QTS-48921, QTS-48931, QTS-48941 |  |  |  | 141d | 20d | 01ADMIN | TAS |  |
| DC1-FOH-RTU-L2-1010 |  | RTU-RT-02 L2 Checklist | 4d | 2026-01-15 | 2026-01-21 | QTS-48951, QTS-48961, QTS-48971, QTS-48981 |  |  |  | 141d | 20d | 01ADMIN | TAS |  |
|  | 07 | **DC1-FOH-Split Units-HSE Cx L2** |  | 2025-12-10 | 2026-01-22 |  |  |  |  |  |  |  |  |  |
|  | 01 | **DC1-FOH-Split Units-Floor 1-HSE Cx L2** |  | 2025-12-10 | 2026-01-16 |  |  |  |  |  |  |  |  |  |
| DC1-SS-L2-Cx-2690 |  | DC1-House SDF 0163 Split Units L2 Complete (2) | 1d | 2025-12-10 A | 2026-01-16 | QTS-21421 | 3d | 2025-12-10 | 2025-12-10 | 48d | 23d | 01ADMIN | BAM | HDP-A21-01 |
| DC1-SS-L2-Cx-2700 |  | DC1-House MMR1A 0134 Split Units L2 Complete (4) | 1d | 2025-12-10 A | 2026-01-16 | QTS-5491 | 3d | 2025-12-10 | 2025-12-10 | 48d | 23d | 01ADMIN | BAM | HDP-A21-01, B21-01, C21-01, D21-01 |
| DC1-SS-L2-Cx-2710 |  | DC1-House EMERG ELEC 0172 Split Units L2 Complete (3) | 1d | 2025-12-10 A | 2026-01-16 | QTS-27461 | 3d | 2025-12-10 | 2025-12-10 | 48d | 0d | 01ADMIN | BAM | HDP-B21-01 |
| DC1-SS-L2-Cx-2670 |  | DC1-House ELEV MACH 0156 Split Units L2 Complete (1) | 1d | 2025-12-11 A | 2026-01-16 | DC1-SS-L2-Cx-2710 SS | 3d | 2025-12-11 | 2025-12-11 | 48d | 0d | 01ADMIN | BAM | HDP-C21-01 |
| DC1-SS-L2-Cx-2680 |  | DC1-House ELEC 0173 Split Units L2 Complete (4) | 1d | 2025-12-12 A | 2026-01-16 | DC1-SS-L2-Cx-2670 SS | 3d | 2025-12-12 | 2025-12-12 | 48d | 0d | 01ADMIN | BAM | HDP-A12-01 |
| DC1-SS-L2-Cx-2660 |  | DC1-House DCIM 0133 Split Units L2 Complete (2) | 1d | 2025-12-15 A | 2026-01-16 | DC1-SS-L2-Cx-2680 SS | 3d | 2025-12-15 | 2025-12-15 | 48d | 23d | 01ADMIN | BAM | HDP-D21-01 |
|  | 02 | **DC1-FOH-Split Units-Floor 2-HSE Cx L2** |  | 2025-12-10 | 2026-01-22 |  |  |  |  |  |  |  |  |  |
| DC1-SS-L2-Cx-2720 |  | DC1 House House Electrical 0273 Split Units L2 Complete (4) | 1d | 2025-12-10 A | 2026-01-16 | QTS-5531 | 3d | 2025-12-10 | 2025-12-10 | 48d | 23d | 01ADMIN | BAM | HDP-B21-01, C21-01, D21-01 |
| DC1-SS-L2-Cx-2730 |  | DC1 House MMR2A 0212 Split Units L2 Complete (4) | 1d | 2025-12-10 A | 2026-01-16 | QTS-28361 | 3d | 2025-12-10 | 2025-12-10 | 48d | 23d | 01ADMIN | BAM | HDP-A21-01, B21-01, C21-01, D21-01 |
| DC1-SS-L2-Cx-2740 |  | DC1 House IDF 0213 Split Units L2 Complete (2) | 1d | 2025-12-10 A | 2026-01-16 | QTS-28141 | 3d | 2025-12-10 | 2025-12-10 | 48d | 23d | 01ADMIN | BAM | HDP-A21-01, B21-01 |
| DC1-SS-L2-Cx-3060 |  | DC1 House ELEV MACH 0224 Split Units L2 Complete (1) | 1d | 2026-01-22 | 2026-01-22 | DC1-FOH-PNL-L2-1020 |  |  |  | 45d | 20d | 01ADMIN | BAM |  |
|  | 02 | **DC1-Back of House (BOH) Cx L2** |  | 2025-12-02 | 2026-02-18 |  |  |  |  |  |  |  |  |  |
|  | 01 | **DC1-BOH-XFMR-HSE-2 Cx L2** |  | 2025-12-02 | 2026-01-20 |  |  |  |  |  |  |  |  |  |
| DC1-XFMR-HSE-L2-1010 |  | XFMR-HSE-2 L2 Checklist | 2d | 2025-12-02 A | 2026-01-20 | QTS-1004480 FF+1d | 2d | 2025-12-02 | 2025-12-03 | 3d | 0d | 01ADMIN | VTC |  |
|  | 02 | **DC1-BOH-GEN-HSE-2 Cx L2** |  | 2026-01-26 | 2026-01-27 |  |  |  |  |  |  |  |  |  |
| DC1-GEN-HSE-L2-1010 |  | GEN-HSE-2 L2 Checklist | 2d | 2026-01-26 | 2026-01-27 | QTS-1004480 FF+1d, QTS-41831 |  |  |  | 42d | 1d | 01ADMIN | YCY |  |
|  | 03 | **DC1-BOH-SWBD-HSE-2 Cx L2** |  | 2026-01-26 | 2026-01-27 |  |  |  |  |  |  |  |  |  |
| DC1-SWBD-HSE-L2-1010 |  | SWBD-HSE-2 L2 Checklist | 2d | 2026-01-26 | 2026-01-27 | QTS-1004480 FF+1d, QTS-41831, QTS-41811, QTS-26501, QTS-42081 |  |  |  | -2d | 0d |  | PHE |  |
|  | 04 | **DC1-BOH-UPSs HSE Cx L2** |  | 2026-01-16 | 2026-01-28 |  |  |  |  |  |  |  |  |  |
| DC1-PNL-HSE-L2-1020 |  | PNL-UPS-HSE-03 L2 Checklist | 2d | 2026-01-16 | 2026-01-20 | DC1-PNL-HSE-L2-1010 |  |  |  | 45d | 0d | 01ADMIN | ROS |  |
| DC1-PNL-HSE-L2-1030 |  | PNL-UPS-HSE-04 L2 Checklist | 2d | 2026-01-21 | 2026-01-22 | DC1-PNL-HSE-L2-1020 |  |  |  | 45d | 18d | 01ADMIN | ROS |  |
| DC1-XFMR-HSE-L2-1050 |  | XFMR-STS-HSE-03 L2 Checklist | 2d | 2026-01-21 | 2026-01-22 | DC1-XFMR-HSE-L2-1040 |  |  |  | 42d | 0d | 01ADMIN | ROS |  |
| DC1-STS-HSE-L2-1060 |  | STS-HSE-03 L2 Checklist | 2d | 2026-01-22 | 2026-01-23 | DC1-STS-HSE-L2-1050, QTS-27921 |  |  |  | 40d | 0d | 01ADMIN | VER |  |
| DC1-UPS-HSE-L2-1020 |  | UPS-HSE-03 L2 Checklist | 2d | 2026-01-23 | 2026-01-26 | DC1-UPS-HSE-L2-1010, QTS-27931 |  |  |  | 38d | 0d | 01ADMIN | VER |  |
| DC1-XFMR-HSE-L2-1060 |  | XFMR-STS-HSE-04 L2 Checklist | 2d | 2026-01-23 | 2026-01-26 | DC1-XFMR-HSE-L2-1050 |  |  |  | 42d | 15d | 01ADMIN | ROS |  |
| DC1-STS-HSE-L2-1070 |  | STS-HSE-04 L2 Checklist | 2d | 2026-01-26 | 2026-01-27 | DC1-STS-HSE-L2-1060, QTS-28591 |  |  |  | 40d | 13d | 01ADMIN | VER |  |
| DC1-UPS-HSE-L2-1030 |  | UPS-HSE-04 L2 Checklist | 2d | 2026-01-27 | 2026-01-28 | DC1-UPS-HSE-L2-1020, QTS-28601 |  |  |  | 38d | 0d | 01ADMIN | VER |  |

Notes:
- DC1-FOH-RTU-L2-1000: allucent_notes_20251230_164549: Riley Warring on 2025-12-16 14:15: Not started as of 12/16 / Riley Warring on 2025-12-16 14:15: Not started as of 12/16 / allucent_notes_20251216_165335: Riley Warring on 2025-12-16 14:15: Not started as of 12/16 / Riley Warring on 2025-12-16 14:15: Not started as of 12/16 / Steps: EC Installation Checklist; MC Installation Checklist; CC Installation Checklist; Vendor Pre-Energization Checklist; CXA Pre-Energization Inspection; PEI/Clean-Walk / allucent_notes: 2025-12-16 14:15 - User: Riley Warring - Date Added: 2025-12-16 14:15 - Note: Not started as of 12/16 / 2025-12-16 14:15 - User: Riley Warring - Date Added: 2025-12-16 14:15 - Note: Not started as of 12/16
- DC1-FOH-RTU-L2-1010: allucent_notes_20251230_164549: Riley Warring on 2025-12-16 14:15: Not started as of 12/16 / Riley Warring on 2025-12-16 14:15: Not started as of 12/16 / allucent_notes_20251216_165335: Riley Warring on 2025-12-16 14:15: Not started as of 12/16 / Riley Warring on 2025-12-16 14:15: Not started as of 12/16 / Steps: EC Installation Checklist; MC Installation Checklist; CC Installation Checklist; Vendor Pre-Energization Checklist; CXA Pre-Energization Inspection; PEI/Clean-Walk / allucent_notes: 2025-12-16 14:15 - User: Riley Warring - Date Added: 2025-12-16 14:15 - Note: Not started as of 12/16 / 2025-12-16 14:15 - User: Riley Warring - Date Added: 2025-12-16 14:15 - Note: Not started as of 12/16
- DC1-SS-L2-Cx-2690: allucent_notes_20251230_164549: Jason Johnston on 2025-12-09 15:15: Need to confirm who is responsible for updating this / Riley Warring on 2025-12-16 14:32: Prime has not completed L2.2s / Jason Johnston on 2025-12-30 16:43: No update / allucent_notes_20251209_203830: Jason Johnston on 2025-12-09 15:15: Need to confirm who is responsible for updating this / allucent_notes_20251216_165335: Jason Johnston on 2025-12-09 15:15: Need to confirm who is responsible for updating this / Riley Warring on 2025-12-16 14:32: Prime has not completed L2.2s / Steps: SS-0163-01; SS-0163-02 / allucent_notes: 2025-12-09 15:15 - User: Jason Johnston - Date Added: 2025-12-09 15:15 - Note: Need to confirm who is responsible for updating this / 2025-12-16 14:32 - User: Riley Warring - Date Added: 2025-12-16 14:32 - Note: Prime has not completed L2.2s / 2025-12-3
- DC1-SS-L2-Cx-2700: allucent_notes_20251230_164549: Jason Johnston on 2025-12-09 15:15: Need to confirm who is responsible for updating this / Riley Warring on 2025-12-16 14:32: Prime has not completed L2.2s / Jason Johnston on 2025-12-30 16:43: No update / allucent_notes_20251209_203830: Jason Johnston on 2025-12-09 15:15: Need to confirm who is responsible for updating this / allucent_notes_20251216_165335: Jason Johnston on 2025-12-09 15:15: Need to confirm who is responsible for updating this / Riley Warring on 2025-12-16 14:32: Prime has not completed L2.2s / Steps: SS-0134-01; SS-0134-02; SS-0134-03; SS-0134-04 / allucent_notes: 2025-12-09 15:15 - User: Jason Johnston - Date Added: 2025-12-09 15:15 - Note: Need to confirm who is responsible for updating this / 2025-12-16 14:32 - User: Riley Warring - Date Added: 2025-12-16 14:32 - Note: Prime has not completed L2.2s / 2025-12-3
- DC1-SS-L2-Cx-2710: allucent_notes_20251230_164549: Jason Johnston on 2025-12-09 15:15: Need to confirm who is responsible for updating this / Riley Warring on 2025-12-16 14:32: Prime has not completed L2.2s / Jason Johnston on 2025-12-30 16:43: No update / allucent_notes_20251209_203830: Jason Johnston on 2025-12-09 15:15: Need to confirm who is responsible for updating this / allucent_notes_20251216_165335: Jason Johnston on 2025-12-09 15:15: Need to confirm who is responsible for updating this / Riley Warring on 2025-12-16 14:32: Prime has not completed L2.2s / Steps: SS-0172-01; SS-0172-02; SS-0172-03 / allucent_notes: 2025-12-09 15:15 - User: Jason Johnston - Date Added: 2025-12-09 15:15 - Note: Need to confirm who is responsible for updating this / 2025-12-16 14:32 - User: Riley Warring - Date Added: 2025-12-16 14:32 - Note: Prime has not completed L2.2s / 2025-12-3
- DC1-SS-L2-Cx-2670: allucent_notes_20251230_164549: Riley Warring on 2025-12-16 14:32: Prime has not completed L2.2s / Jason Johnston on 2025-12-30 16:43: No update / allucent_notes_20251216_165335: Riley Warring on 2025-12-16 14:32: Prime has not completed L2.2s / Steps: SS-0156-01 / allucent_notes: 2025-12-16 14:32 - User: Riley Warring - Date Added: 2025-12-16 14:32 - Note: Prime has not completed L2.2s / 2025-12-30 16:43 - User: Jason Johnston - Date Added: 2025-12-30 16:43 - Note: No update
- DC1-SS-L2-Cx-2680: allucent_notes_20251230_164549: Riley Warring on 2025-12-16 14:32: Prime has not completed L2.2s / Jason Johnston on 2025-12-30 16:43: No update / allucent_notes_20251216_165335: Riley Warring on 2025-12-16 14:32: Prime has not completed L2.2s / Steps: SS-0173-01; SS-0173-02; SS-0173-03; SS-0173-04 / allucent_notes: 2025-12-16 14:32 - User: Riley Warring - Date Added: 2025-12-16 14:32 - Note: Prime has not completed L2.2s / 2025-12-30 16:43 - User: Jason Johnston - Date Added: 2025-12-30 16:43 - Note: No update
- DC1-SS-L2-Cx-2660: allucent_notes_20251230_164549: Riley Warring on 2025-12-16 14:32: Prime has not completed L2.2s / Jason Johnston on 2025-12-30 16:43: No update / allucent_notes_20251216_165335: Riley Warring on 2025-12-16 14:32: Prime has not completed L2.2s / Steps: SS-0133-01; SS-0133-02 / allucent_notes: 2025-12-16 14:32 - User: Riley Warring - Date Added: 2025-12-16 14:32 - Note: Prime has not completed L2.2s / 2025-12-30 16:43 - User: Jason Johnston - Date Added: 2025-12-30 16:43 - Note: No update
- DC1-SS-L2-Cx-2720: allucent_notes_20251230_164549: Jason Johnston on 2025-12-09 15:15: Need to confirm who is responsible for updating this / Riley Warring on 2025-12-16 14:32: Prime has not completed L2.2s / Jason Johnston on 2025-12-30 16:43: No update / allucent_notes_20251209_203830: Jason Johnston on 2025-12-09 15:15: Need to confirm who is responsible for updating this / allucent_notes_20251216_165335: Jason Johnston on 2025-12-09 15:15: Need to confirm who is responsible for updating this / Riley Warring on 2025-12-16 14:32: Prime has not completed L2.2s / Steps: SS-0273-01; SS-0273-02; SS-0273-03; SS-0273-04 / allucent_notes: 2025-12-09 15:15 - User: Jason Johnston - Date Added: 2025-12-09 15:15 - Note: Need to confirm who is responsible for updating this / 2025-12-16 14:32 - User: Riley Warring - Date Added: 2025-12-16 14:32 - Note: Prime has not completed L2.2s / 2025-12-3
- DC1-SS-L2-Cx-2730: allucent_notes_20251230_164549: Jason Johnston on 2025-12-09 15:16: Need to confirm who is responsible for updating this / Riley Warring on 2025-12-16 14:32: Prime has not completed L2.2s / Jason Johnston on 2025-12-30 16:43: No update / allucent_notes_20251209_203830: Jason Johnston on 2025-12-09 15:16: Need to confirm who is responsible for updating this / allucent_notes_20251216_165335: Jason Johnston on 2025-12-09 15:16: Need to confirm who is responsible for updating this / Riley Warring on 2025-12-16 14:32: Prime has not completed L2.2s / Steps: SS-0212-01; SS-0212-02; SS-0212-03; SS-0212-04 / allucent_notes: 2025-12-09 15:16 - User: Jason Johnston - Date Added: 2025-12-09 15:16 - Note: Need to confirm who is responsible for updating this / 2025-12-16 14:32 - User: Riley Warring - Date Added: 2025-12-16 14:32 - Note: Prime has not completed L2.2s / 2025-12-3
- DC1-SS-L2-Cx-2740: allucent_notes_20251230_164549: Jason Johnston on 2025-12-09 15:16: Need to confirm who is responsible for updating this / Riley Warring on 2025-12-16 14:32: Prime has not completed L2.2s / Jason Johnston on 2025-12-30 16:44: No update / allucent_notes_20251209_203830: Jason Johnston on 2025-12-09 15:16: Need to confirm who is responsible for updating this / allucent_notes_20251216_165335: Jason Johnston on 2025-12-09 15:16: Need to confirm who is responsible for updating this / Riley Warring on 2025-12-16 14:32: Prime has not completed L2.2s / Steps: SS-0213-01; SS-0213-02 / allucent_notes: 2025-12-09 15:16 - User: Jason Johnston - Date Added: 2025-12-09 15:16 - Note: Need to confirm who is responsible for updating this / 2025-12-16 14:32 - User: Riley Warring - Date Added: 2025-12-16 14:32 - Note: Prime has not completed L2.2s / 2025-12-3
- DC1-XFMR-HSE-L2-1010: Steps: EC Installation Checklist; CC Installation Checklist; Vendor Pre-Energization Checklist (done); CXA Pre-Energization Inspection; PEI/Clean-Walk
- DC1-GEN-HSE-L2-1010: Steps: EC Installation Checklist; MC Installation Checklist; CC Installation Checklist; Vendor Pre-Energization Checklist; CXA Pre-Energization Inspection; PEI/Clean-Walk
- DC1-SWBD-HSE-L2-1010: Steps: EC Installation Checklist; CC Installation Checklist; Vendor Pre-Energization Checklist; CXA Pre-Energization Inspection; PEI/Clean-Walk
- DC1-PNL-HSE-L2-1020: Steps: EC Installation Checklist; CC Installation Checklist; Vendor Pre-Energization Checklist; CXA Pre-Energization Inspection; PEI/Clean-Walk
- DC1-PNL-HSE-L2-1030: Steps: EC Installation Checklist; CC Installation Checklist; Vendor Pre-Energization Checklist; CXA Pre-Energization Inspection; PEI/Clean-Walk
- DC1-XFMR-HSE-L2-1050: Steps: EC Installation Checklist; CC Installation Checklist; Vendor Pre-Energization Checklist; CXA Pre-Energization Inspection; PEI/Clean-Walk
- DC1-STS-HSE-L2-1060: Steps: EC Installation Checklist; CC Installation Checklist; Vendor Pre-Energization Checklist; CXA Pre-Energization Inspection; PEI/Clean-Walk
- DC1-UPS-HSE-L2-1020: Steps: EC Installation Checklist; CC Installation Checklist; Vendor Pre-Energization Checklist; CXA Pre-Energization Inspection; PEI/Clean-Walk
- DC1-XFMR-HSE-L2-1060: Steps: EC Installation Checklist; CC Installation Checklist; Vendor Pre-Energization Checklist; CXA Pre-Energization Inspection; PEI/Clean-Walk
- DC1-STS-HSE-L2-1070: Steps: EC Installation Checklist; CC Installation Checklist; Vendor Pre-Energization Checklist; CXA Pre-Energization Inspection; PEI/Clean-Walk
- DC1-UPS-HSE-L2-1030: Steps: EC Installation Checklist; CC Installation Checklist; Vendor Pre-Energization Checklist; CXA Pre-Energization Inspection; PEI/Clean-Walk

| ID | WBS | Activity | Duration | Start | Finish | Predecessors | Remaining | Planned start | Planned finish | Total float | Free float | Constraint | Allucent CSI Group | Vendor Responsible Party | Fed From |
| --- | --- | --- | --- | --- | --- | --- | --- | --- | --- | --- | --- | --- | --- | --- | --- |
|  | 05 | **DC1-BOH-PNLs HSE Cx L2** |  | 2026-01-14 | 2026-01-20 |  |  |  |  |  |  |  |  |  |  |
| DC1-BOH-PNL-L2-1040 |  | PNL-DH12 L2 Checklist | 4d | 2026-01-14 | 2026-01-20 | QTS-26501 |  |  |  | 47d | 6d | start on or after 2026-01-05 | 01ADMIN | ROS |  |
| DC1-BOH-PNL-L2-1050 |  | PNL-DH13 L2 Checklist | 4d | 2026-01-14 | 2026-01-20 | QTS-26501 |  |  |  | 47d | 6d | start on or after 2026-01-05 | 01ADMIN | ROS |  |
| DC1-BOH-PNL-L2-1060 |  | PNL-BOH1 L2 Checklist | 4d | 2026-01-14 | 2026-01-20 | QTS-26501 |  |  |  | 47d | 6d | start on or after 2026-01-05 | 01ADMIN | ROS |  |
| DC1-BOH-PNL-L2-1070 |  | PNL-DH22 L2 Checklist | 4d | 2026-01-14 | 2026-01-20 | QTS-26501 |  |  |  | 47d | 6d | start on or after 2026-01-05 | 01ADMIN | ROS |  |
| DC1-BOH-PNL-L2-1080 |  | PNL-DH23 L2 Checklist | 4d | 2026-01-14 | 2026-01-20 | QTS-26501 |  |  |  | 47d | 6d | start on or after 2026-01-05 | 01ADMIN | ROS |  |
| DC1-BOH-PNL-L2-1090 |  | PNL-BOH2 L2 Checklist | 4d | 2026-01-14 | 2026-01-20 | QTS-26501 |  |  |  | 46d | 6d | start on or after 2026-01-05 | 01ADMIN | ROS |  |
|  | 06 | **DC1-BOH-RTUs HSE Cx L2** |  | 2026-02-17 | 2026-02-18 |  |  |  |  |  |  |  |  |  |  |
| DC1-FOH-RTU-L2-1020 |  | RTU-RT-03 L2 Checklist | 2d | 2026-02-17 | 2026-02-18 | QTS-48991, QTS-49001, QTS-49011, QTS-49021 |  |  |  | 38d | 0d |  |  | TAS |  |
|  | 07 | **DC1-BOH-Split Units-HSE Cx L2** |  | 2026-01-14 | 2026-02-03 |  |  |  |  |  |  |  |  |  |  |
|  | 08 | **DC1-BOH-Split Units-Floor 1-HSE Cx L2** |  | 2026-01-19 | 2026-02-03 |  |  |  |  |  |  |  |  |  |  |
| DC1-SS-L2-Cx-2790 |  | DC1 House MMR1B 1068 Split Units L2 Complete (4) | 1d | 2026-01-19 A | 2026-01-16 | QTS-28531 | 3d | 2026-01-21 | 2026-01-21 | 48d | 8d |  |  | BAM | HDP-E22-01, F22-01, G22-01, J22-01 |
| DC1-SS-L2-Cx-2780 |  | DC1-House House Electrical 1066 Split Units L2 Complete (4) | 1d | 2026-01-21 | 2026-01-21 | QTS-28021 |  |  |  | 46d | 6d |  | 01ADMIN | BAM | HDP-H22-01, J22-01, K22-01 |
| DC1-SS-L2-Cx-2770 |  | DC1 House IDF 1064 Split Units L2 Complete (2) | 1d | 2026-01-30 | 2026-01-30 | QTS-27581 |  |  |  | 37d | 0d |  | 01ADMIN | BAM | HDP-J22-01, K22-01 |
| DC1-SS-L2-Cx-2760 |  | DC1 House ELEV MACH 1062 Split Units L2 Complete (1) | 1d | 2026-02-02 | 2026-02-02 | DC1-SS-L2-Cx-2770 |  |  |  | 37d | 0d |  |  | BAM | HDP-K22-01 |
| DC1-SS-L2-Cx-5010 |  | DC1 House ELEC 1081 Split Units L2 Complete (3) | 1d | 2026-02-03 | 2026-02-03 | DC1-SS-L2-Cx-2760 |  |  |  | 37d | 0d |  |  | BAM |  |
|  | 09 | **DC1-BOH-Split Units-Floor 2-HSE Cx L2** |  | 2026-01-14 | 2026-01-23 |  |  |  |  |  |  |  |  |  |  |
| DC1-SS-L2-Cx-2800 |  | DC1 House ELEC 2085 Split Units L2 Complete (4) | 1d | 2026-01-14 A | 2026-01-16 | QTS-28691 | 3d | 2026-01-14 | 2026-01-14 | 46d | 0d |  | 01ADMIN | BAM | HDP-G22-01, H22-01, J22-01 |
| DC1-SS-L2-Cx-2810 |  | DC1 House MMR2B 2068 Split Units L2 Complete (4) | 1d | 2026-01-14 A | 2026-01-16 | QTS-28831 | 3d | 2026-01-14 | 2026-01-14 | 48d | 8d |  | 01ADMIN | BAM | HDP-E22-01, F22-01, G22-01, J22-01 |
| DC1-SS-L2-Cx-2820 |  | DC1 House IDF 2064 Split Units L2 Complete (2) | 1d | 2026-01-14 A | 2026-01-23 | QTS-28331 | 3d | 2026-01-14 | 2026-01-14 | 44d | 4d |  | 01ADMIN | BAM | HDP-J22-01, K22-01 |
|  | 1 | **DC1-BOH-Split Units-Floor 3-HSE Cx L2** |  | 2026-01-20 | 2026-01-21 |  |  |  |  |  |  |  |  |  |  |
| DC1-SS-L2-Cx-5020 |  | DC1 House Elevator Penthouse Lobby 3065-2 Split Units L2 Complete (1) | 1d | 2026-01-20 | 2026-01-20 | DC1-SS-L2-Cx-2800 |  |  |  | 46d | 0d |  | 01ADMIN | BAM |  |
| DC1-SS-L2-Cx-2830 |  | DC1 House ELEV MACH 3065-1 Split Units L2 Complete (1) | 1d | 2026-01-21 | 2026-01-21 | DC1-SS-L2-Cx-5020 |  |  |  | 46d | 6d |  | 01ADMIN | BAM | HDP-D21-01 |
|  | 03 | **DC1-House Cx L3 Commissioning** |  | 2026-01-21 | 2026-05-05 |  |  |  |  |  |  |  |  |  |  |
|  | 01 | **DC1-Front of House (FOH) Cx L3** |  | 2026-01-21 | 2026-02-25 |  |  |  |  |  |  |  |  |  |  |
|  | 01 | **DC1-FOH-GEN-HSE-1 Cx L3** |  | 2026-01-23 | 2026-01-28 |  |  |  |  |  |  |  |  |  |  |
| DC1-GEN-HSE-L3-1000 |  | FOH GEN-HSE-1 FTE | 1d | 2026-01-23 | 2026-01-23 | DC1-GEN-HSE-L2-1000, DC1-SWBD-HSE-L3-1000 |  |  |  | 45d | 0d | start on or after 2025-12-17 | 01ADMIN | ROS |  |
| DC1-GEN-HSE-L3-1010 |  | FOH GEN-HSE-1 L3 Startup | 2d | 2026-01-26 | 2026-01-27 | DC1-GEN-HSE-L3-1000 |  |  |  | 45d | 0d |  | 01ADMIN | YCY |  |
| DC1-GEN-HSE-L3-1020 |  | FOH GEN-HSE-1 L3 BMS/EPMS | 1d | 2026-01-28 | 2026-01-28 | DC1-GEN-HSE-L3-1010 |  |  |  | 45d | 37d |  | 01ADMIN | PRM |  |

Notes:
- DC1-BOH-PNL-L2-1040: allucent_notes_20251230_164549: Jason Johnston on 2025-12-09 15:16: Need to confirm who is responsible for updating this / Riley Warring on 2025-12-16 14:16: Not started as of 12/16 / Riley Warring on 2025-12-16 14:17: Not started as of 12/16 / Riley Warring on 2025-12-29 12:07: Checklist not started in Cx Alloy / allucent_notes_20251209_203830: Jason Johnston on 2025-12-09 15:16: Need to confirm who is responsible for updating this / allucent_notes_20251216_165335: Jason Johnston on 2025-12-09 15:16: Need to confirm who is responsible for updating this / Riley Warring on 2025-12-16 14:16: Not started as of 12/16 / Riley Warring on 2025-12-16 14:17: Not started as of 12/16 / Steps: EC Installation Checklist; CC Installation Checklist; Vendor Pre-Energization Checklist; CXA Pre-Energization Inspection; PEI/Clean-Walk / allucent_notes: 2025-12-09 15:16 - User: Jason Johnston - Date Added: 2025-12-09 15:16 - Note: Need to confirm who is responsible for updating this / 2025-12-16 14:16 - User: Riley Warring - Date Added: 2025-12-16 14:16 - Note: Not started as of 12/16 / 2025-12-16 14:1
- DC1-BOH-PNL-L2-1050: allucent_notes_20251230_164549: Jason Johnston on 2025-12-09 15:16: Need to confirm who is responsible for updating this / Riley Warring on 2025-12-16 14:17: Not started as of 12/16 / Riley Warring on 2025-12-16 14:17: Not started as of 12/16 / Riley Warring on 2025-12-29 12:07: Checklist not started in Cx Alloy / allucent_notes_20251209_203830: Jason Johnston on 2025-12-09 15:16: Need to confirm who is responsible for updating this / allucent_notes_20251216_165335: Jason Johnston on 2025-12-09 15:16: Need to confirm who is responsible for updating this / Riley Warring on 2025-12-16 14:17: Not started as of 12/16 / Riley Warring on 2025-12-16 14:17: Not started as of 12/16 / Steps: EC Installation Checklist; CC Installation Checklist; Vendor Pre-Energization Checklist; CXA Pre-Energization Inspection; PEI/Clean-Walk / allucent_notes: 2025-12-09 15:16 - User: Jason Johnston - Date Added: 2025-12-09 15:16 - Note: Need to confirm who is responsible for updating this / 2025-12-16 14:17 - User: Riley Warring - Date Added: 2025-12-16 14:17 - Note: Not started as of 12/16 / 2025-12-16 14:1
- DC1-BOH-PNL-L2-1060: allucent_notes_20251230_164549: Jason Johnston on 2025-12-09 15:16: Need to confirm who is responsible for updating this / Riley Warring on 2025-12-16 14:16: Not started as of 12/16 / Riley Warring on 2025-12-16 14:17: Not started as of 12/16 / Riley Warring on 2025-12-29 12:07: Checklist not started in Cx Alloy / allucent_notes_20251209_203830: Jason Johnston on 2025-12-09 15:16: Need to confirm who is responsible for updating this / allucent_notes_20251216_165335: Jason Johnston on 2025-12-09 15:16: Need to confirm who is responsible for updating this / Riley Warring on 2025-12-16 14:16: Not started as of 12/16 / Riley Warring on 2025-12-16 14:17: Not started as of 12/16 / Steps: EC Installation Checklist; CC Installation Checklist; Vendor Pre-Energization Checklist; CXA Pre-Energization Inspection; PEI/Clean-Walk / allucent_notes: 2025-12-09 15:16 - User: Jason Johnston - Date Added: 2025-12-09 15:16 - Note: Need to confirm who is responsible for updating this / 2025-12-16 14:16 - User: Riley Warring - Date Added: 2025-12-16 14:16 - Note: Not started as of 12/16 / 2025-12-16 14:1
- DC1-BOH-PNL-L2-1070: allucent_notes_20251230_164549: Jason Johnston on 2025-12-09 15:16: Need to confirm who is responsible for updating this / Riley Warring on 2025-12-16 14:17: Not started as of 12/16 / Riley Warring on 2025-12-16 14:17: Not started as of 12/16 / Riley Warring on 2025-12-29 12:07: Checklist not started in Cx Alloy / allucent_notes_20251209_203830: Jason Johnston on 2025-12-09 15:16: Need to confirm who is responsible for updating this / allucent_notes_20251216_165335: Jason Johnston on 2025-12-09 15:16: Need to confirm who is responsible for updating this / Riley Warring on 2025-12-16 14:17: Not started as of 12/16 / Riley Warring on 2025-12-16 14:17: Not started as of 12/16 / Steps: EC Installation Checklist; CC Installation Checklist; Vendor Pre-Energization Checklist; CXA Pre-Energization Inspection; PEI/Clean-Walk / allucent_notes: 2025-12-09 15:16 - User: Jason Johnston - Date Added: 2025-12-09 15:16 - Note: Need to confirm who is responsible for updating this / 2025-12-16 14:17 - User: Riley Warring - Date Added: 2025-12-16 14:17 - Note: Not started as of 12/16 / 2025-12-16 14:1
- DC1-BOH-PNL-L2-1080: allucent_notes_20251230_164549: Jason Johnston on 2025-12-09 15:16: Need to confirm who is responsible for updating this / Riley Warring on 2025-12-16 14:17: Not started as of 12/16 / Riley Warring on 2025-12-16 14:17: Not started as of 12/16 / Riley Warring on 2025-12-29 12:07: Checklist not started in Cx Alloy / allucent_notes_20251209_203830: Jason Johnston on 2025-12-09 15:16: Need to confirm who is responsible for updating this / allucent_notes_20251216_165335: Jason Johnston on 2025-12-09 15:16: Need to confirm who is responsible for updating this / Riley Warring on 2025-12-16 14:17: Not started as of 12/16 / Riley Warring on 2025-12-16 14:17: Not started as of 12/16 / Steps: EC Installation Checklist; CC Installation Checklist; Vendor Pre-Energization Checklist; CXA Pre-Energization Inspection; PEI/Clean-Walk / allucent_notes: 2025-12-09 15:16 - User: Jason Johnston - Date Added: 2025-12-09 15:16 - Note: Need to confirm who is responsible for updating this / 2025-12-16 14:17 - User: Riley Warring - Date Added: 2025-12-16 14:17 - Note: Not started as of 12/16 / 2025-12-16 14:1
- DC1-BOH-PNL-L2-1090: allucent_notes_20251230_164549: Jason Johnston on 2025-12-09 15:16: Need to confirm who is responsible for updating this / Riley Warring on 2025-12-16 14:17: Not started as of 12/16 / Riley Warring on 2025-12-16 14:17: Not started as of 12/16 / Riley Warring on 2025-12-29 12:07: Checklist not started in Cx Alloy / allucent_notes_20251209_203830: Jason Johnston on 2025-12-09 15:16: Need to confirm who is responsible for updating this / allucent_notes_20251216_165335: Jason Johnston on 2025-12-09 15:16: Need to confirm who is responsible for updating this / Riley Warring on 2025-12-16 14:17: Not started as of 12/16 / Riley Warring on 2025-12-16 14:17: Not started as of 12/16 / Steps: EC Installation Checklist; CC Installation Checklist; Vendor Pre-Energization Checklist; CXA Pre-Energization Inspection; PEI/Clean-Walk / allucent_notes: 2025-12-09 15:16 - User: Jason Johnston - Date Added: 2025-12-09 15:16 - Note: Need to confirm who is responsible for updating this / 2025-12-16 14:17 - User: Riley Warring - Date Added: 2025-12-16 14:17 - Note: Not started as of 12/16 / 2025-12-16 14:1
- DC1-FOH-RTU-L2-1020: Steps: EC Installation Checklist; MC Installation Checklist; CC Installation Checklist; Vendor Pre-Energization Checklist; CXA Pre-Energization Inspection; PEI/Clean-Walk
- DC1-SS-L2-Cx-2790: Steps: SS-1068-01; SS-1068-02; SS-1068-03; SS-1068-04
- DC1-SS-L2-Cx-2780: Steps: SS-1066-01; SS-1066-02; SS-1066-03; SS-1066-04
- DC1-SS-L2-Cx-2770: Steps: SS-1064-01; SS-1064-02
- DC1-SS-L2-Cx-2760: Steps: SS-1062-01
- DC1-SS-L2-Cx-5010: Steps: SS-1081-01; SS-1081-02; SS-1081-03
- DC1-SS-L2-Cx-2800: Steps: SS-2085-01; SS-2085-02; SS-2085-03; SS-2085-04
- DC1-SS-L2-Cx-2810: Steps: SS-2068-01; SS-2068-02; SS-2068-03; SS-2068-04
- DC1-SS-L2-Cx-2820: Steps: SS-2064-01; SS-2064-02
- DC1-SS-L2-Cx-5020: Steps: SS-3065-2-02
- DC1-SS-L2-Cx-2830: Steps: SS-3065-1-01
- DC1-GEN-HSE-L3-1010: Steps: EC Startup Report; MC Startup Report; Vendor Startup

| ID | WBS | Activity | Duration | Start | Finish | Predecessors | Total float | Free float | Allucent CSI Group | Vendor Responsible Party | Layton Responsible Party |
| --- | --- | --- | --- | --- | --- | --- | --- | --- | --- | --- | --- |
|  | 02 | **DC1-FOH-XFMR-HSE-1 Cx L3** |  | 2026-01-21 | 2026-01-26 |  |  |  |  |  |  |
| DC1-XFMR-HSE-L3-1000 |  | FOH XFMR-HSE-1 FTE | 1d | 2026-01-21 | 2026-01-21 | DC1-XFMR-HSE-L2-1000 | 3d | 0d | 01ADMIN | ROS |  |
| DC1-XFMR-HSE-L3-1010 |  | FOH XFMR-HSE-1 L3 Startup | 2d | 2026-01-22 | 2026-01-23 | DC1-XFMR-HSE-L3-1000 | 47d | 0d | 01ADMIN | VTC |  |
| DC1-XFMR-HSE-L3-1020 |  | FOH XFMR-HSE-1 L3 BMS/EPMS | 1d | 2026-01-26 | 2026-01-26 | DC1-XFMR-HSE-L3-1010 | 47d | 39d | 01ADMIN | PRM |  |
|  | 03 | **DC1-FOH-SWBD-HSE-1 Cx L3** |  | 2026-01-22 | 2026-01-27 |  |  |  |  |  |  |
| DC1-SWBD-HSE-L3-1000 |  | FOH SWBD-HSE-1 FTE | 1d | 2026-01-22 | 2026-01-22 | DC1-SWBD-HSE-L2-1000, DC1-XFMR-HSE-L3-1000 SS | 2d | 0d | 01ADMIN | ROS |  |
| DC1-SWBD-HSE-L3-1010 |  | FOH SWBD-HSE-1 L3 Startup | 2d | 2026-01-23 | 2026-01-26 | DC1-SWBD-HSE-L3-1000 | 46d | 0d | 01ADMIN | PHE |  |
| DC1-SWBD-HSE-L3-1020 |  | FOH SWBD-HSE-1 L3 BMS/EPMS | 1d | 2026-01-27 | 2026-01-27 | DC1-SWBD-HSE-L3-1010, DC1-SWBD-HSE-L3-1000 | 46d | 38d | 01ADMIN | PRM |  |
|  | 04 | **DC1-FOH-UPSs Cx L3** |  | 2026-01-23 | 2026-02-23 |  |  |  |  |  |  |
|  | 01 | **DC1-FOH-UPS-HSE Cx L3** |  | 2026-01-23 | 2026-02-18 |  |  |  |  |  |  |
|  | 01 | **DC1-FOH-UPS-HSE-01 Cx L3** |  | 2026-01-23 | 2026-01-28 |  |  |  |  |  |  |
| DC1-FOH-UPS-L3-1000 |  | FOH-HSE UPS-HSE-01 FTE | 1d | 2026-01-23 | 2026-01-23 | DC1-UPS-HSE-L2-1000, DC1-SWBD-HSE-L3-1000 | 40d | 0d | 01ADMIN | ROS |  |
| DC1-FOH-UPS-L3-1010 |  | FOH-HSE UPS-HSE-01 L3 Startup | 2d | 2026-01-26 | 2026-01-27 | DC1-FOH-UPS-L3-1000 | 45d | 0d | 01ADMIN | ROS |  |
| DC1-FOH-UPS-L3-1020 |  | FOH-HSE UPS-HSE-01 L3 BMS/EPMS | 1d | 2026-01-28 | 2026-01-28 | DC1-FOH-UPS-L3-1010 | 45d | 37d | 01ADMIN | PRM |  |
|  | 02 | **DC1-FOH-UPS-HSE-02 Cx L3** |  | 2026-02-13 | 2026-02-18 |  |  |  |  |  |  |
| DC1-FOH-UPS-L3-1030 |  | FOH-HSE UPS-HSE-02 FTE | 1d | 2026-02-13 | 2026-02-13 | DC1-UPS-HSE-L2-1010, DC1-SWD-L3-CX-2180 | 25d | 0d |  | ROS | Riley Warring |
| DC1-FOH-UPS-L3-1040 |  | FOH-HSE UPS-HSE-02 L3 Startup | 2d | 2026-02-16 | 2026-02-17 | DC1-FOH-UPS-L3-1030 | 30d | 0d |  | VER | Riley Warring |
| DC1-FOH-UPS-L3-1050 |  | FOH-HSE UPS-HSE-02 L3 BMS/EPMS | 1d | 2026-02-18 | 2026-02-18 | DC1-FOH-UPS-L3-1040 | 30d | 22d |  | PRM | Riley Warring |
|  | 02 | **DC1-FOH-STS-HSE Cx L3** |  | 2026-02-16 | 2026-02-19 |  |  |  |  |  |  |
|  | 01 | **DC1-FOH-STS-HSE-01 Cx L3** |  | 2026-02-16 | 2026-02-19 |  |  |  |  |  |  |
| DC1-FOH-STS-L3-1000 |  | FOH-HSE STS-HSE-01 FTE | 1d | 2026-02-16 | 2026-02-16 | DC1-STS-HSE-L2-1040, DC1-FOH-UPS-L3-1030, DC1-FOH-UPS-L3-1000 | 25d | 0d |  | ROS | Riley Warring |
| DC1-FOH-STS-L3-1010 |  | FOH-HSE STS-HSE-01 L3 Startup | 2d | 2026-02-17 | 2026-02-18 | DC1-FOH-STS-L3-1000 | 29d | 0d |  | VER | Riley Warring |
| DC1-FOH-STS-L3-1020 |  | FOH-HSE STS-HSE-01 L3 BMS/EPMS | 1d | 2026-02-19 | 2026-02-19 | DC1-FOH-STS-L3-1010 | 29d | 21d |  | PRM | Riley Warring |
|  | 02 | **DC1-FOH-STS-HSE-02 Cx L3** |  | 2026-02-16 | 2026-02-19 |  |  |  |  |  |  |
| DC1-FOH-STS-L3-1030 |  | FOH-HSE STS-HSE-02 FTE | 1d | 2026-02-16 | 2026-02-16 | DC1-STS-HSE-L2-1050, DC1-FOH-UPS-L3-1000, DC1-FOH-UPS-L3-1030 | 27d | 0d |  | ROS | Riley Warring |
| DC1-FOH-STS-L3-1040 |  | FOH-HSE STS-HSE-02 L3 Startup | 2d | 2026-02-17 | 2026-02-18 | DC1-FOH-STS-L3-1030 | 29d | 0d |  | VER | Riley Warring |
| DC1-FOH-STS-L3-1050 |  | FOH-HSE STS-HSE-02 L3 BMS/EPMS | 1d | 2026-02-19 | 2026-02-19 | DC1-FOH-STS-L3-1040 | 29d | 21d |  | PRM | Riley Warring |

Notes:
- DC1-XFMR-HSE-L3-1010: Steps: EC Startup Report; Vendor Startup
- DC1-SWBD-HSE-L3-1010: Steps: EC Startup Report; Vendor Startup
- DC1-FOH-UPS-L3-1010: Steps: EC Startup Report; Vendor Startup
- DC1-FOH-UPS-L3-1040: Steps: EC Startup Report; Vendor Startup
- DC1-FOH-STS-L3-1010: Steps: EC Startup Report; Vendor Startup
- DC1-FOH-STS-L3-1040: Steps: EC Startup Report; Vendor Startup

| ID | WBS | Activity | Duration | Start | Finish | Predecessors | Total float | Free float | Layton Responsible Party | Vendor Responsible Party |
| --- | --- | --- | --- | --- | --- | --- | --- | --- | --- | --- |
|  | 03 | **DC1-FOH-XFMR-HSE Cx L3** |  | 2026-02-17 | 2026-02-20 |  |  |  |  |  |
|  | 01 | **DC1-FOH-XFMR-HSE-01 Cx L3** |  | 2026-02-17 | 2026-02-20 |  |  |  |  |  |
| DC1-FOH-XFMR-L3-1000 |  | FOH-HSE XFMR-STS-HSE-01 FTE | 1d | 2026-02-17 | 2026-02-17 | DC1-XFMR-HSE-L2-1030, DC1-FOH-STS-L3-1000, DC1-FOH-STS-L3-1000 FF | 25d | 0d | Riley Warring | ROS |
| DC1-FOH-XFMR-L3-1010 |  | FOH-HSE XFMR-STS-HSE-01 L3 Startup | 2d | 2026-02-18 | 2026-02-19 | DC1-FOH-XFMR-L3-1000 | 28d | 0d | Riley Warring | ROS |
| DC1-FOH-XFMR-L3-1020 |  | FOH-HSE XFMR-STS-HSE-01 L3 BMS/EPMS | 1d | 2026-02-20 | 2026-02-20 | DC1-FOH-XFMR-L3-1010 | 28d | 20d | Riley Warring | PRM |
|  | 02 | **DC1-FOH-XFMR-HSE-02 Cx L3** |  | 2026-02-17 | 2026-02-20 |  |  |  |  |  |
| DC1-FOH-XFMR-L3-1030 |  | FOH-HSE XFMR-STS-HSE-02 FTE | 1d | 2026-02-17 | 2026-02-17 | DC1-XFMR-HSE-L2-1040, DC1-FOH-STS-L3-1030 | 27d | 0d | Riley Warring | ROS |
| DC1-FOH-XFMR-L3-1040 |  | FOH-HSE XFMR-STS-HSE-02 L3 Startup | 2d | 2026-02-18 | 2026-02-19 | DC1-FOH-XFMR-L3-1030 | 28d | 0d | Riley Warring | ROS |
| DC1-FOH-XFMR-L3-1050 |  | FOH-HSE XFMR-STS-HSE-02 L3 BMS/EPMS | 1d | 2026-02-20 | 2026-02-20 | DC1-FOH-XFMR-L3-1040 | 28d | 20d | Riley Warring | PRM |
|  | 04 | **DC1-FOH-PNL-UPS-HSE Cx L3** |  | 2026-02-18 | 2026-02-23 |  |  |  |  |  |
|  | 01 | **DC1-FOH-PNL-UPS-HSE-01 Cx L3** |  | 2026-02-18 | 2026-02-23 |  |  |  |  |  |
| DC1-FOH-PNL-L3-2000 |  | FOH-HSE UPS-HSE-01 FTE | 1d | 2026-02-18 | 2026-02-18 | DC1-PNL-HSE-L2-1000, DC1-FOH-XFMR-L3-1000 | 25d | 0d | Riley Warring | ROS |
| DC1-FOH-PNL-L3-2010 |  | FOH-HSE UPS-HSE-01 L3 Startup | 2d | 2026-02-19 | 2026-02-20 | DC1-FOH-PNL-L3-2000 | 27d | 0d | Riley Warring | VER |
| DC1-FOH-PNL-L3-2020 |  | FOH-HSE UPS-HSE-01 L3 BMS/EPMS | 1d | 2026-02-23 | 2026-02-23 | DC1-FOH-PNL-L3-2010 | 27d | 19d | Riley Warring | PRM |
|  | 02 | **DC1-FOH-PNL-UPS-HSE-02 Cx L3** |  | 2026-02-18 | 2026-02-23 |  |  |  |  |  |
| DC1-FOH-PNL-L3-2030 |  | FOH-HSE UPS-HSE-02 FTE | 1d | 2026-02-18 | 2026-02-18 | DC1-PNL-HSE-L2-1010, DC1-FOH-XFMR-L3-1030 | 27d | 0d | Riley Warring | ROS |
| DC1-FOH-PNL-L3-2040 |  | FOH-HSE UPS-HSE-02 L3 Startup | 2d | 2026-02-19 | 2026-02-20 | DC1-FOH-PNL-L3-2030 | 27d | 0d | Riley Warring | ROS |
| DC1-FOH-PNL-L3-2050 |  | FOH-HSE UPS-HSE-02 L3 BMS/EPMS | 1d | 2026-02-23 | 2026-02-23 | DC1-FOH-PNL-L3-2040 | 27d | 19d | Riley Warring | PRM |
|  | 05 | **DC1-FOH-PNLs Cx L3** |  | 2026-02-19 | 2026-02-24 |  |  |  |  |  |
|  | 01 | **DC1-FOH-PNL-ADM1 Cx L3** |  | 2026-02-19 | 2026-02-24 |  |  |  |  |  |
| DC1-FOH-PNL-L3-1000 |  | FOH PNL-ADM1 FTE | 1d | 2026-02-19 | 2026-02-19 | DC1-FOH-PNL-L2-1000, DC1-FOH-PNL-L3-2000 | 26d | 0d | Riley Warring | ROS |
| DC1-FOH-PNL-L3-1010 |  | FOH PNL-ADM1 L3 Startup | 2d | 2026-02-20 | 2026-02-23 | DC1-FOH-PNL-L3-1000 | 26d | 0d | Riley Warring | ROS |
| DC1-FOH-PNL-L3-1020 |  | FOH PNL-ADM1 L3 BMS/EPMS | 1d | 2026-02-24 | 2026-02-24 | DC1-FOH-PNL-L3-1010 | 26d | 18d | Riley Warring | PRM |
|  | 02 | **DC1-FOH-PNL-DH11 Cx L3** |  | 2026-02-19 | 2026-02-24 |  |  |  |  |  |
| DC1-FOH-PNL-L3-1030 |  | FOH PNL-DH11 FTE | 1d | 2026-02-19 | 2026-02-19 | DC1-FOH-PNL-L2-1010, DC1-FOH-PNL-L3-2000 | 26d | 0d | Riley Warring | ROS |
| DC1-FOH-PNL-L3-1040 |  | FOH PNL-DH11 L3 Startup | 2d | 2026-02-20 | 2026-02-23 | DC1-FOH-PNL-L3-1030 | 26d | 0d | Riley Warring | ROS |
| DC1-FOH-PNL-L3-1050 |  | FOH PNL-DH11 L3 BMS/EPMS | 1d | 2026-02-24 | 2026-02-24 | DC1-FOH-PNL-L3-1040 | 26d | 18d | Riley Warring | PRM |

Notes:
- DC1-FOH-XFMR-L3-1010: Steps: EC Startup Report; Vendor Startup
- DC1-FOH-XFMR-L3-1040: Steps: EC Startup Report; Vendor Startup
- DC1-FOH-PNL-L3-2010: Steps: EC Startup Report; Vendor Startup
- DC1-FOH-PNL-L3-2040: Steps: EC Startup Report; Vendor Startup
- DC1-FOH-PNL-L3-1010: Steps: EC Startup Report; Vendor Startup
- DC1-FOH-PNL-L3-1040: Steps: EC Startup Report; Vendor Startup

| ID | WBS | Activity | Duration | Start | Finish | Predecessors | Total float | Free float | Layton Responsible Party | Vendor Responsible Party | Fed From |
| --- | --- | --- | --- | --- | --- | --- | --- | --- | --- | --- | --- |
|  | 03 | **DC1-FOH-PNL-ADM2 Cx L3** |  | 2026-02-19 | 2026-02-24 |  |  |  |  |  |  |
| DC1-FOH-PNL-L3-1060 |  | FOH PNL-ADM2 FTE | 1d | 2026-02-19 | 2026-02-19 | DC1-FOH-PNL-L2-1020, DC1-FOH-PNL-L3-2000 | 25d | 0d | Riley Warring | ROS |  |
| DC1-FOH-PNL-L3-1070 |  | FOH PNL-ADM2 L3 Startup | 2d | 2026-02-20 | 2026-02-23 | DC1-FOH-PNL-L3-1060 | 26d | 0d | Riley Warring | ROS |  |
| DC1-FOH-PNL-L3-1080 |  | FOH PNL-ADM2 L3 BMS/EPMS | 1d | 2026-02-24 | 2026-02-24 | DC1-FOH-PNL-L3-1070 | 26d | 18d | Riley Warring | PRM |  |
|  | 04 | **DC1-FOH-PNL-DH21 Cx L3** |  | 2026-02-19 | 2026-02-24 |  |  |  |  |  |  |
| DC1-FOH-PNL-L3-1090 |  | FOH PNL-DH21 FTE | 1d | 2026-02-19 | 2026-02-19 | DC1-FOH-PNL-L2-1030, DC1-FOH-PNL-L3-2000 | 26d | 0d | Riley Warring | ROS |  |
| DC1-FOH-PNL-L3-1100 |  | FOH PNL-DH21 L3 Startup | 2d | 2026-02-20 | 2026-02-23 | DC1-FOH-PNL-L3-1090 | 26d | 0d | Riley Warring | ROS |  |
| DC1-FOH-PNL-L3-1110 |  | FOH PNL-DH21 L3 BMS/EPMS | 1d | 2026-02-24 | 2026-02-24 | DC1-FOH-PNL-L3-1100 | 26d | 18d | Riley Warring | PRM |  |
|  | 06 | **DC1-FOH-RTUs Cx L3** |  | 2026-02-19 | 2026-02-24 |  |  |  |  |  |  |
|  | 01 | **DC1-FOH-RTU-RT-01 Cx L3** |  | 2026-02-19 | 2026-02-24 |  |  |  |  |  |  |
| DC1-FOH-RTU-L3-1000 |  | FOH RTU-RT-01 FTE | 1d | 2026-02-19 | 2026-02-19 | DC1-FOH-RTU-L2-1000, DC1-FOH-PNL-L3-2000 | 121d | 0d | Riley Warring | ROS |  |
| DC1-FOH-RTU-L3-1010 |  | FOH RTU-RT-01 L3 Startup | 2d | 2026-02-20 | 2026-02-23 | DC1-FOH-RTU-L3-1000 | 121d | 0d | Riley Warring | TAS |  |
| DC1-FOH-RTU-L3-1020 |  | FOH RTU-RT-01 L3 BMS/EPMS | 1d | 2026-02-24 | 2026-02-24 | DC1-FOH-RTU-L3-1010 | 121d | 19d | Riley Warring | PRM |  |
|  | 02 | **DC1-FOH-RTU-RT-02 Cx L3** |  | 2026-02-19 | 2026-02-24 |  |  |  |  |  |  |
| DC1-FOH-RTU-L3-1030 |  | FOH RTU-RT-02 FTE | 1d | 2026-02-19 | 2026-02-19 | DC1-FOH-RTU-L2-1010, DC1-FOH-PNL-L3-2000 | 121d | 0d | Riley Warring | ROS |  |
| DC1-FOH-RTU-L3-1040 |  | FOH RTU-RT-02 L3 Startup | 2d | 2026-02-20 | 2026-02-23 | DC1-FOH-RTU-L3-1030 | 121d | 0d | Riley Warring | TAS |  |
| DC1-FOH-RTU-L3-1050 |  | FOH RTU-RT-02 L3 BMS/EPMS | 1d | 2026-02-24 | 2026-02-24 | DC1-FOH-RTU-L3-1040 | 121d | 19d | Riley Warring | PRM |  |
|  | 07 | **DC1-FOH-Split Units-Floor 1-HSE Cx L3** |  | 2026-02-20 | 2026-02-25 |  |  |  |  |  |  |
|  | 01 | **DC1-House SDF 0163 Split Units L3** |  | 2026-02-20 | 2026-02-25 |  |  |  |  |  |  |
| DC1-SS-L3-Cx-2880 |  | DC1-House SDF 0163 Split Units FTE | 1d | 2026-02-20 | 2026-02-20 | DC1-SS-L2-Cx-2690, DC1-FOH-PNL-L3-1060 | 25d | 0d | Riley Warring | ROS | HDP-A21-01 |
| DC1-SS-L3-Cx-3020 |  | DC1-House SDF 0163 Split Units L3 Startup | 2d | 2026-02-23 | 2026-02-24 | DC1-SS-L3-Cx-2880 | 25d | 0d | Riley Warring | BAM | HDP-A21-01 |
| DC1-SS-L3-Cx-3030 |  | DC1-House SDF 0163 Split Units L3 BMS/EPMS | 1d | 2026-02-25 | 2026-02-25 | DC1-SS-L3-Cx-3020 | 25d |  | Riley Warring | PRM | HDP-A21-01 |
|  | 02 | **DC1-House MMR1A 0134 Split Units L3** |  | 2026-02-20 | 2026-02-25 |  |  |  |  |  |  |
| DC1-SS-L3-Cx-2840 |  | DC1-House MMR1A 0134 Split Units FTE | 1d | 2026-02-20 | 2026-02-20 | DC1-SS-L2-Cx-2700, DC1-FOH-PNL-L3-1060 | 25d | 0d | Riley Warring | ROS | HDP-A21-01, B21-01, C21-01, D21-01 |
| DC1-SS-L3-Cx-3040 |  | DC1-House MMR1A 0134 Split Units L3 Startup | 2d | 2026-02-23 | 2026-02-24 | DC1-SS-L3-Cx-2840 | 25d | 0d | Riley Warring | BAM | HDP-A21-01, B21-01, C21-01, D21-01 |
| DC1-SS-L3-Cx-3050 |  | DC1-House MMR1A 0134 Split Units L3 BMS/EPMS | 1d | 2026-02-25 | 2026-02-25 | DC1-SS-L3-Cx-3040 | 25d |  | Riley Warring | PRM | HDP-A21-01, B21-01, C21-01, D21-01 |

Notes:
- DC1-FOH-PNL-L3-1070: Steps: EC Startup Report; Vendor Startup
- DC1-FOH-PNL-L3-1100: Steps: EC Startup Report; Vendor Startup
- DC1-FOH-RTU-L3-1010: Steps: EC Startup Report; MC Startup Report; Vendor Startup
- DC1-FOH-RTU-L3-1040: Steps: EC Startup Report; MC Startup Report; Vendor Startup
- DC1-SS-L3-Cx-3020: Steps: EC Startup Report; MC Startup Report; Vendor Startup
- DC1-SS-L3-Cx-3040: Steps: EC Startup Report; MC Startup Report; Vendor Startup

| ID | WBS | Activity | Duration | Start | Finish | Predecessors | Total float | Free float | Fed From | Layton Responsible Party | Vendor Responsible Party |
| --- | --- | --- | --- | --- | --- | --- | --- | --- | --- | --- | --- |
|  | 03 | **DC1-House EMERG ELEC 0172 Split Units L3** |  | 2026-02-20 | 2026-02-25 |  |  |  |  |  |  |
| DC1-SS-L3-Cx-2870 |  | DC1-House EMERG ELEC 0172 Split Units FTE | 1d | 2026-02-20 | 2026-02-20 | DC1-SS-L2-Cx-2710, DC1-FOH-PNL-L3-1060 | 25d | 0d | HDP-B21-01 | Riley Warring | ROS |
| DC1-SS-L3-Cx-3070 |  | DC1-House EMERG ELEC 0172 Split Units L3 Startup | 2d | 2026-02-23 | 2026-02-24 | DC1-SS-L3-Cx-2870 | 25d | 0d |  | Riley Warring | BAM |
| DC1-SS-L3-Cx-3075 |  | DC1-House EMERG ELEC 0172 Split Units L3 BMS/EPMS | 1d | 2026-02-25 | 2026-02-25 | DC1-SS-L3-Cx-3070 | 25d |  |  | Riley Warring | PRM |
|  | 04 | **DC1-House ELEV MACH 0156 Split Units L3** |  | 2026-02-20 | 2026-02-25 |  |  |  |  |  |  |
| DC1-SS-L3-Cx-2850 |  | DC1-House ELEV MACH 0156 Split Units FTE | 1d | 2026-02-20 | 2026-02-20 | DC1-SS-L2-Cx-2670, DC1-FOH-PNL-L3-1060 | 25d | 0d | HDP-C21-01 | Riley Warring | ROS |
| DC1-SS-L3-Cx-3080 |  | DC1-House ELEV MACH 0156 Split Units L3 Startup | 2d | 2026-02-23 | 2026-02-24 | DC1-SS-L3-Cx-2850 | 25d | 0d |  | Riley Warring | BAM |
| DC1-SS-L3-Cx-3090 |  | DC1-House ELEV MACH 0156 Split Units L3 BMS/EPMS | 1d | 2026-02-25 | 2026-02-25 | DC1-SS-L3-Cx-3080 | 25d |  |  | Riley Warring | PRM |
|  | 05 | **DC1-House ELEC 0173 Split Units L3** |  | 2026-02-20 | 2026-02-25 |  |  |  |  |  |  |
| DC1-SS-L3-Cx-2860 |  | DC1-House ELEC 0173 Split Units FTE | 1d | 2026-02-20 | 2026-02-20 | DC1-SS-L2-Cx-2680, DC1-FOH-PNL-L3-1060 | 25d | 0d | HDP-A12-01 | Riley Warring | ROS |
| DC1-SS-L3-Cx-3100 |  | DC1-House ELEC 0173 Split Units L3 Startup | 2d | 2026-02-23 | 2026-02-24 | DC1-SS-L3-Cx-2860 | 25d | 0d |  | Riley Warring | BAM |
| DC1-SS-L3-Cx-3110 |  | DC1-House ELEC 0173 Split Units L3 BMS/EPMS | 1d | 2026-02-25 | 2026-02-25 | DC1-SS-L3-Cx-3100 | 25d |  |  | Riley Warring | PRM |
|  | 06 | **DC1-House DCIM 0133 Split Units L3** |  | 2026-02-20 | 2026-02-25 |  |  |  |  |  |  |
| DC1-SS-L3-Cx-2890 |  | DC1-House DCIM 0133 Split Units FTE | 1d | 2026-02-20 | 2026-02-20 | DC1-SS-L2-Cx-2660, DC1-FOH-PNL-L3-1060 | 25d | 0d | HDP-D21-01 | Riley Warring | ROS |
| DC1-SS-L3-Cx-3120 |  | DC1-House DCIM 0133 Split Units L3 Startup | 2d | 2026-02-23 | 2026-02-24 | DC1-SS-L3-Cx-2890 | 25d | 0d |  | Riley Warring | BAM |
| DC1-SS-L3-Cx-3130 |  | DC1-House DCIM 0133 Split Units L3 BMS/EPMS | 1d | 2026-02-25 | 2026-02-25 | DC1-SS-L3-Cx-3120 | 25d |  |  | Riley Warring | PRM |
|  | 08 | **DC1-FOH-Split Units-Floor 2-HSE Cx L3** |  | 2026-02-20 | 2026-02-25 |  |  |  |  |  |  |
|  | 01 | **DC1 House MMR2A 0212 Split Units L3** |  | 2026-02-20 | 2026-02-25 |  |  |  |  |  |  |
| DC1-SS-L3-Cx-2900 |  | DC1 House MMR2A 0212 Split Units FTE | 1d | 2026-02-20 | 2026-02-20 | DC1-SS-L2-Cx-2730, DC1-FOH-PNL-L3-1060 | 25d | 0d | HDP-A21-01, B21-01, C21-01, D21-01 | Riley Warring | ROS |
| DC1-SS-L3-Cx-3140 |  | DC1 House MMR2A 0212 Split Units L3 Startup | 2d | 2026-02-23 | 2026-02-24 | DC1-SS-L3-Cx-2900 | 25d | 0d |  | Riley Warring | BAM |
| DC1-SS-L3-Cx-3150 |  | DC1 House MMR2A 0212 Split Units L3 BMS/EPMS | 1d | 2026-02-25 | 2026-02-25 | DC1-SS-L3-Cx-3140 | 25d |  |  | Riley Warring | PRM |
|  | 02 | **DC1 House IDF 0213 Split Units L3** |  | 2026-02-20 | 2026-02-25 |  |  |  |  |  |  |
| DC1-SS-L3-Cx-2910 |  | DC1 House IDF 0213 Split Units FTE | 1d | 2026-02-20 | 2026-02-20 | DC1-SS-L2-Cx-2740, DC1-FOH-PNL-L3-1060 | 25d | 0d | HDP-A21-01, B21-01 | Riley Warring | ROS |
| DC1-SS-L3-Cx-3160 |  | DC1 House IDF 0213 Split Units L3 Startup | 2d | 2026-02-23 | 2026-02-24 | DC1-SS-L3-Cx-2910 | 25d | 0d |  | Riley Warring | BAM |
| DC1-SS-L3-Cx-3170 |  | DC1 House IDF 0213 Split Units L3 BMS/EPMS | 1d | 2026-02-25 | 2026-02-25 | DC1-SS-L3-Cx-3160 | 25d |  |  | Riley Warring | PRM |

Notes:
- DC1-SS-L3-Cx-3070: Steps: EC Startup Report; MC Startup Report; Vendor Startup
- DC1-SS-L3-Cx-3080: Steps: EC Startup Report; MC Startup Report; Vendor Startup
- DC1-SS-L3-Cx-3100: Steps: EC Startup Report; MC Startup Report; Vendor Startup
- DC1-SS-L3-Cx-3120: Steps: EC Startup Report; MC Startup Report; Vendor Startup
- DC1-SS-L3-Cx-3140: Steps: EC Startup Report; MC Startup Report; Vendor Startup
- DC1-SS-L3-Cx-3160: Steps: EC Startup Report; MC Startup Report; Vendor Startup

| ID | WBS | Activity | Duration | Start | Finish | Predecessors | Total float | Free float | Constraint | Fed From | Layton Responsible Party | Vendor Responsible Party | Allucent CSI Group |
| --- | --- | --- | --- | --- | --- | --- | --- | --- | --- | --- | --- | --- | --- |
|  | 03 | **DC1 House House Electrical 0273 Split Units L3** |  | 2026-02-20 | 2026-02-25 |  |  |  |  |  |  |  |  |
| DC1-SS-L3-Cx-2920 |  | DC1 House House Electrical 0273 Split Units FTE | 1d | 2026-02-20 | 2026-02-20 | DC1-SS-L2-Cx-2720, DC1-FOH-PNL-L3-1060 | 25d | 0d |  | HDP-B21-01, C21-01, D21-01 | Riley Warring | ROS |  |
| DC1-SS-L3-Cx-3180 |  | DC1 House House Electrical 0273 Split Units L3 Startup | 2d | 2026-02-23 | 2026-02-24 | DC1-SS-L3-Cx-2920 | 25d | 0d |  |  | Riley Warring | BAM |  |
| DC1-SS-L3-Cx-3190 |  | DC1 House House Electrical 0273 Split Units L3 BMS/EPMS | 1d | 2026-02-25 | 2026-02-25 | DC1-SS-L3-Cx-3180 | 25d |  |  |  | Riley Warring | PRM |  |
|  | 1 | **DC1 House ELEV MACH 0224 Split Units L3** |  | 2026-02-20 | 2026-02-25 |  |  |  |  |  |  |  |  |
| DC1-SS-L3-Cx-5090 |  | DC1 House ELEV MACH 0224 Split Units FTE | 1d | 2026-02-20 | 2026-02-20 | DC1-SS-L2-Cx-3060, DC1-FOH-PNL-L3-1060 | 25d | 0d |  | HDP-B21-01, C21-01, D21-01 | Riley Warring | ROS |  |
| DC1-SS-L3-Cx-5100 |  | DC1 House ELEV MACH 0224 Split Units L3 Startup | 2d | 2026-02-23 | 2026-02-24 | DC1-SS-L3-Cx-5090 | 25d | 0d |  |  | Riley Warring | BAM |  |
| DC1-SS-L3-Cx-5110 |  | DC1 House ELEV MACH 0224 Split Units L3 BMS/EPMS | 1d | 2026-02-25 | 2026-02-25 | DC1-SS-L3-Cx-5100 | 25d |  |  |  | Riley Warring | PRM |  |
|  | 02 | **DC1-Back of House (BOH) Cx L3** |  | 2026-01-21 | 2026-02-24 |  |  |  |  |  |  |  |  |
|  | 01 | **DC1-BOH-GEN-HSE-2 Cx L3** |  | 2026-01-29 | 2026-02-03 |  |  |  |  |  |  |  |  |
| DC1-GEN-HSE-L3-1030 |  | BOH GEN-HSE-2 FTE | 1d | 2026-01-29 | 2026-01-29 | DC1-GEN-HSE-L2-1010, DC1-SWBD-HSE-L3-1030 | 41d | 0d |  |  |  | ROS |  |
| DC1-GEN-HSE-L3-1040 |  | BOH GEN-HSE-2 L3 Startup | 2d | 2026-01-30 | 2026-02-02 | DC1-GEN-HSE-L3-1030 | 41d | 0d |  |  |  | YCY |  |
| DC1-GEN-HSE-L3-1050 |  | BOH GEN-HSE-2 L3 BMS/EPMS | 1d | 2026-02-03 | 2026-02-03 | DC1-GEN-HSE-L3-1040 | 41d | 33d |  |  |  | PRM |  |
|  | 02 | **DC1-BOH-XFMR-HSE-2 Cx L3** |  | 2026-01-21 | 2026-01-26 |  |  |  |  |  |  |  |  |
| DC1-XFMR-HSE-L3-1030 |  | BOH XFMR-HSE-2 FTE | 1d | 2026-01-21 | 2026-01-21 | DC1-XFMR-HSE-L2-1010 | 3d | 0d | start on or after 2025-12-18 |  |  | ROS | 01ADMIN |
| DC1-XFMR-HSE-L3-1040 |  | BOH XFMR-HSE-2 L3 Startup | 2d | 2026-01-22 | 2026-01-23 | DC1-XFMR-HSE-L3-1030 | 47d | 0d |  |  |  | VTC | 01ADMIN |
| DC1-XFMR-HSE-L3-1050 |  | BOH XFMR-HSE-2 L3 BMS/EPMS | 1d | 2026-01-26 | 2026-01-26 | DC1-XFMR-HSE-L3-1040 | 47d | 39d |  |  |  | PRM | 01ADMIN |
|  | 03 | **DC1-BOH-SWBD-HSE-2 Cx L3** |  | 2026-01-28 | 2026-02-02 |  |  |  |  |  |  |  |  |
| DC1-SWBD-HSE-L3-1030 |  | BOH SWBD-HSE-2 FTE | 1d | 2026-01-28 | 2026-01-28 | DC1-SWBD-HSE-L2-1010, DC1-XFMR-HSE-L3-1030 SS | -2d | 0d |  |  |  | ROS |  |
| DC1-SWBD-HSE-L3-1040 |  | BOH SWBD-HSE-2 L3 Startup | 2d | 2026-01-29 | 2026-01-30 | DC1-SWBD-HSE-L3-1030 | 42d | 0d |  |  |  | PHE |  |
| DC1-SWBD-HSE-L3-1050 |  | BOH SWBD-HSE-2 L3 BMS/EPMS | 1d | 2026-02-02 | 2026-02-02 | DC1-SWBD-HSE-L3-1040 | 42d | 34d |  |  |  | PRM |  |
|  | 04 | **DC1-BOH-UPSs Cx L3** |  | 2026-01-29 | 2026-02-23 |  |  |  |  |  |  |  |  |
|  | 01 | **DC1-BOH-UPS-HSE Cx L3** |  | 2026-01-29 | 2026-02-18 |  |  |  |  |  |  |  |  |
|  | 03 | **DC1-BOH-UPS-HSE-03 Cx L3** |  | 2026-02-13 | 2026-02-18 |  |  |  |  |  |  |  |  |
| DC1-BOH-UPS-L3-1060 |  | BOH-HSE UPS-HSE-03 FTE | 1d | 2026-02-13 | 2026-02-13 | DC1-UPS-HSE-L2-1020, DC1-SWD-L3-CX-1180 | 27d | 0d |  |  | Riley Warring | ROS |  |
| DC1-BOH-UPS-L3-1070 |  | BOH-HSE UPS-HSE-03 L3 Startup | 2d | 2026-02-16 | 2026-02-17 | DC1-BOH-UPS-L3-1060 | 30d | 0d |  |  | Riley Warring | ROS |  |
| DC1-BOH-UPS-L3-1080 |  | BOH-HSE UPS-HSE-03 L3 BMS/EPMS | 1d | 2026-02-18 | 2026-02-18 | DC1-BOH-UPS-L3-1070 | 30d | 22d |  |  | Riley Warring | PRM |  |

Notes:
- DC1-SS-L3-Cx-3180: Steps: EC Startup Report; MC Startup Report; Vendor Startup
- DC1-SS-L3-Cx-5100: Steps: EC Startup Report; MC Startup Report; Vendor Startup
- DC1-GEN-HSE-L3-1040: Steps: EC Startup Report; MC Startup Report; Vendor Startup
- DC1-XFMR-HSE-L3-1040: Steps: EC Startup Report; Vendor Startup
- DC1-SWBD-HSE-L3-1040: Steps: EC Startup Report; Vendor Startup
- DC1-BOH-UPS-L3-1070: Steps: EC Startup Report; Vendor Startup

| ID | WBS | Activity | Duration | Start | Finish | Predecessors | Total float | Free float | Vendor Responsible Party | Layton Responsible Party |
| --- | --- | --- | --- | --- | --- | --- | --- | --- | --- | --- |
|  | 04 | **DC1-BOH-UPS-HSE-04 Cx L3** |  | 2026-01-29 | 2026-02-03 |  |  |  |  |  |
| DC1-BOH-UPS-L3-1090 |  | BOH-HSE UPS-HSE-04 FTE | 1d | 2026-01-29 | 2026-01-29 | DC1-UPS-HSE-L2-1030, DC1-SWBD-HSE-L3-1030 | 38d | 0d | ROS |  |
| DC1-BOH-UPS-L3-1100 |  | BOH-HSE UPS-HSE-04 L3 Startup | 2d | 2026-01-30 | 2026-02-02 | DC1-BOH-UPS-L3-1090 | 41d | 0d | ROS |  |
| DC1-BOH-UPS-L3-1110 |  | BOH-HSE UPS-HSE-04 L3 BMS/EPMS | 1d | 2026-02-03 | 2026-02-03 | DC1-BOH-UPS-L3-1100 | 41d | 33d | PRM |  |
|  | 02 | **DC1-BOH-STS-HSE Cx L3** |  | 2026-02-16 | 2026-02-19 |  |  |  |  |  |
|  | 03 | **DC1-BOH-STS-HSE-03 Cx L3** |  | 2026-02-16 | 2026-02-19 |  |  |  |  |  |
| DC1-BOH-STS-L3-1060 |  | BOH-HSE STS-HSE-03 FTE | 1d | 2026-02-16 | 2026-02-16 | DC1-STS-HSE-L2-1060, DC1-BOH-UPS-L3-1060, DC1-BOH-UPS-L3-1090 | 27d | 0d | ROS | Riley Warring |
| DC1-BOH-STS-L3-1070 |  | BOH-HSE STS-HSE-03 L3 Startup | 2d | 2026-02-17 | 2026-02-18 | DC1-BOH-STS-L3-1060 | 29d | 0d | VER | Riley Warring |
| DC1-BOH-STS-L3-1080 |  | BOH-HSE STS-HSE-03 L3 BMS/EPMS | 1d | 2026-02-19 | 2026-02-19 | DC1-BOH-STS-L3-1070 | 29d | 21d | PRM | Riley Warring |
|  | 04 | **DC1-BOH-STS-HSE-04 Cx L3** |  | 2026-02-16 | 2026-02-19 |  |  |  |  |  |
| DC1-BOH-STS-L3-1090 |  | BOH-HSE STS-HSE-04 FTE | 1d | 2026-02-16 | 2026-02-16 | DC1-STS-HSE-L2-1070, DC1-BOH-UPS-L3-1060, DC1-BOH-UPS-L3-1090 | 27d | 0d | ROS | Riley Warring |
| DC1-BOH-STS-L3-1100 |  | BOH-HSE STS-HSE-04 L3 Startup | 2d | 2026-02-17 | 2026-02-18 | DC1-BOH-STS-L3-1090 | 29d | 0d | VER | Riley Warring |
| DC1-BOH-STS-L3-1110 |  | BOH-HSE STS-HSE-04 L3 BMS/EPMS | 1d | 2026-02-19 | 2026-02-19 | DC1-BOH-STS-L3-1100 | 29d | 21d | PRM | Riley Warring |
|  | 03 | **DC1-BOH-XFMR-HSE Cx L3** |  | 2026-02-17 | 2026-02-20 |  |  |  |  |  |
|  | 03 | **DC1-BOH-XFMR-HSE-03 Cx L3** |  | 2026-02-17 | 2026-02-20 |  |  |  |  |  |
| DC1-BOH-XFMR-L3-1060 |  | BOH-HSE XFMR-STS-HSE-03 FTE | 1d | 2026-02-17 | 2026-02-17 | DC1-XFMR-HSE-L2-1050, DC1-BOH-STS-L3-1060 | 27d | 0d | ROS | Riley Warring |
| DC1-BOH-XFMR-L3-1070 |  | BOH-HSE XFMR-STS-HSE-03 L3 Startup | 2d | 2026-02-18 | 2026-02-19 | DC1-BOH-XFMR-L3-1060 | 28d | 0d | ROS | Riley Warring |
| DC1-BOH-XFMR-L3-1080 |  | BOH-HSE XFMR-STS-HSE-03 L3 BMS/EPMS | 1d | 2026-02-20 | 2026-02-20 | DC1-BOH-XFMR-L3-1070 | 28d | 20d | PRM | Riley Warring |
|  | 04 | **DC1-BOH-XFMR-HSE-04 Cx L3** |  | 2026-02-17 | 2026-02-20 |  |  |  |  |  |
| DC1-BOH-XFMR-L3-1090 |  | BOH-HSE XFMR-STS-HSE-04 FTE | 1d | 2026-02-17 | 2026-02-17 | DC1-XFMR-HSE-L2-1060, DC1-BOH-STS-L3-1090 | 27d | 0d | ROS | Riley Warring |
| DC1-BOH-XFMR-L3-1100 |  | BOH-HSE XFMR-STS-HSE-04 L3 Startup | 2d | 2026-02-18 | 2026-02-19 | DC1-BOH-XFMR-L3-1090 | 28d | 0d | ROS | Riley Warring |
| DC1-BOH-XFMR-L3-1110 |  | BOH-HSE XFMR-STS-HSE-04 L3 BMS/EPMS | 1d | 2026-02-20 | 2026-02-20 | DC1-BOH-XFMR-L3-1100, DC1-SWBD-HSE-L3-1030 | 28d | 20d | PRM | Riley Warring |
|  | 04 | **DC1-BOH-PNL-UPS-HSE Cx L3** |  | 2026-02-18 | 2026-02-23 |  |  |  |  |  |
|  | 03 | **DC1-BOH-PNL-UPS-HSE-03 Cx L3** |  | 2026-02-18 | 2026-02-23 |  |  |  |  |  |
| DC1-BOH-PNL-L3-2060 |  | BOH-HSE UPS-HSE-03 FTE | 1d | 2026-02-18 | 2026-02-18 | DC1-PNL-HSE-L2-1020, DC1-BOH-XFMR-L3-1060 | 27d | 0d | ROS | Riley Warring |
| DC1-BOH-PNL-L3-2070 |  | BOH-HSE UPS-HSE-03 L3 Startup | 2d | 2026-02-19 | 2026-02-20 | DC1-BOH-PNL-L3-2060 | 27d | 0d | VER | Riley Warring |
| DC1-BOH-PNL-L3-2080 |  | BOH-HSE UPS-HSE-03 L3 BMS/EPMS | 1d | 2026-02-23 | 2026-02-23 | DC1-BOH-PNL-L3-2070 | 27d | 19d | PRM | Riley Warring |

Notes:
- DC1-BOH-UPS-L3-1100: Steps: EC Startup Report; Vendor Startup
- DC1-BOH-STS-L3-1070: Steps: EC Startup Report; Vendor Startup
- DC1-BOH-STS-L3-1100: Steps: EC Startup Report; Vendor Startup
- DC1-BOH-XFMR-L3-1070: Steps: EC Startup Report; Vendor Startup
- DC1-BOH-XFMR-L3-1100: Steps: EC Startup Report; Vendor Startup
- DC1-BOH-PNL-L3-2070: Steps: EC Startup Report; Vendor Startup

| ID | WBS | Activity | Duration | Start | Finish | Predecessors | Total float | Free float | Layton Responsible Party | Vendor Responsible Party |
| --- | --- | --- | --- | --- | --- | --- | --- | --- | --- | --- |
|  | 1 | **DC1-BOH-PNL-UPS-HSE-04 Cx L3** |  | 2026-02-18 | 2026-02-23 |  |  |  |  |  |
| DC1-BOH-PNL-L3-2090 |  | BOH-HSE UPS-HSE-04 FTE | 1d | 2026-02-18 | 2026-02-18 | DC1-PNL-HSE-L2-1030, DC1-BOH-XFMR-L3-1090 | 27d | 0d | Riley Warring | ROS |
| DC1-BOH-PNL-L3-2100 |  | BOH-HSE UPS-HSE-04 L3 Startup | 2d | 2026-02-19 | 2026-02-20 | DC1-BOH-PNL-L3-2090 | 27d | 0d | Riley Warring | VER |
| DC1-BOH-PNL-L3-2110 |  | BOH-HSE UPS-HSE-04 L3 BMS/EPMS | 1d | 2026-02-23 | 2026-02-23 | DC1-BOH-PNL-L3-2100 | 27d | 19d | Riley Warring | PRM |
|  | 05 | **DC1-BOH-PNLs Cx L3** |  | 2026-01-29 | 2026-02-03 |  |  |  |  |  |
|  | 01 | **DC1-BOH-PNL-BOH1 Cx L3** |  | 2026-01-29 | 2026-02-03 |  |  |  |  |  |
| DC1-BOH-PNL-L3-1000 |  | BOH PNL-BOH1 FTE | 1d | 2026-01-29 | 2026-01-29 | DC1-BOH-PNL-L2-1060, DC1-SWBD-HSE-L3-1030 | 41d | 0d |  | ROS |
| DC1-BOH-PNL-L3-1010 |  | BOH PNL-BOH1 L3 Startup | 2d | 2026-01-30 | 2026-02-02 | DC1-BOH-PNL-L3-1000 | 41d | 0d |  | ROS |
| DC1-BOH-PNL-L3-1020 |  | BOH PNL-BOH1 L3 BMS/EPMS | 1d | 2026-02-03 | 2026-02-03 | DC1-BOH-PNL-L3-1010 | 41d | 33d |  | PRM |
|  | 02 | **DC1-BOH-PNL-BOH2 Cx L3** |  | 2026-01-29 | 2026-02-03 |  |  |  |  |  |
| DC1-BOH-PNL-L3-1030 |  | BOH PNL-BOH2 FTE | 1d | 2026-01-29 | 2026-01-29 | DC1-BOH-PNL-L2-1090, DC1-SWBD-HSE-L3-1030 | 40d | 0d |  | ROS |
| DC1-BOH-PNL-L3-1040 |  | BOH PNL-BOH2 L3 Startup | 2d | 2026-01-30 | 2026-02-02 | DC1-BOH-PNL-L3-1030 | 41d | 0d |  | ROS |
| DC1-BOH-PNL-L3-1050 |  | BOH PNL-BOH2 L3 BMS/EPMS | 1d | 2026-02-03 | 2026-02-03 | DC1-BOH-PNL-L3-1040 | 41d | 33d |  | PRM |
|  | 03 | **DC1-BOH-PNL-DH12 Cx L3** |  | 2026-01-29 | 2026-02-03 |  |  |  |  |  |
| DC1-BOH-PNL-L3-1060 |  | BOH PNL-DH12 FTE | 1d | 2026-01-29 | 2026-01-29 | DC1-BOH-PNL-L2-1040, DC1-SWBD-HSE-L3-1030 | 41d | 0d |  | ROS |
| DC1-BOH-PNL-L3-1070 |  | BOH PNL-DH12 L3 Startup | 2d | 2026-01-30 | 2026-02-02 | DC1-BOH-PNL-L3-1060 | 41d | 0d |  | ROS |
| DC1-BOH-PNL-L3-1080 |  | BOH PNL-DH12 L3 BMS/EPMS | 1d | 2026-02-03 | 2026-02-03 | DC1-BOH-PNL-L3-1070 | 41d | 33d |  | PRM |
|  | 04 | **DC1-BOH-PNL-DH13 Cx L3** |  | 2026-01-29 | 2026-02-03 |  |  |  |  |  |
| DC1-BOH-PNL-L3-1090 |  | BOH PNL-DH13 FTE | 1d | 2026-01-29 | 2026-01-29 | DC1-BOH-PNL-L2-1050, DC1-SWBD-HSE-L3-1030 | 41d | 0d |  | ROS |
| DC1-BOH-PNL-L3-1100 |  | BOH PNL-DH13 L3 Startup | 2d | 2026-01-30 | 2026-02-02 | DC1-BOH-PNL-L3-1090 | 41d | 0d |  | ROS |
| DC1-BOH-PNL-L3-1110 |  | BOH PNL-DH13 L3 BMS/EPMS | 1d | 2026-02-03 | 2026-02-03 | DC1-BOH-PNL-L3-1100 | 41d | 33d |  | PRM |
|  | 05 | **DC1-BOH-PNL-DH22 Cx L3** |  | 2026-01-29 | 2026-02-03 |  |  |  |  |  |
| DC1-BOH-PNL-L3-1120 |  | BOH PNL-DH22 FTE | 1d | 2026-01-29 | 2026-01-29 | DC1-BOH-PNL-L2-1070, DC1-SWBD-HSE-L3-1030 | 41d | 0d |  | ROS |
| DC1-BOH-PNL-L3-1130 |  | BOH PNL-DH22 L3 Startup | 2d | 2026-01-30 | 2026-02-02 | DC1-BOH-PNL-L3-1120 | 41d | 0d |  | ROS |
| DC1-BOH-PNL-L3-1140 |  | BOH PNL-DH22 L3 BMS/EPMS | 1d | 2026-02-03 | 2026-02-03 | DC1-BOH-PNL-L3-1130 | 41d | 33d |  | PRM |

Notes:
- DC1-BOH-PNL-L3-2100: Steps: EC Startup Report; Vendor Startup
- DC1-BOH-PNL-L3-1010: Steps: EC Startup Report; Vendor Startup
- DC1-BOH-PNL-L3-1040: Steps: EC Startup Report; Vendor Startup
- DC1-BOH-PNL-L3-1070: Steps: EC Startup Report; Vendor Startup
- DC1-BOH-PNL-L3-1100: Steps: EC Startup Report; Vendor Startup
- DC1-BOH-PNL-L3-1130: Steps: EC Startup Report; Vendor Startup

| ID | WBS | Activity | Duration | Start | Finish | Predecessors | Total float | Free float | Vendor Responsible Party | Fed From |
| --- | --- | --- | --- | --- | --- | --- | --- | --- | --- | --- |
|  | 06 | **DC1-BOH-PNL-DH23 Cx L3** |  | 2026-01-29 | 2026-02-03 |  |  |  |  |  |
| DC1-BOH-PNL-L3-1150 |  | BOH PNL-DH23 FTE | 1d | 2026-01-29 | 2026-01-29 | DC1-BOH-PNL-L2-1080, DC1-SWBD-HSE-L3-1030 | 41d | 0d | ROS |  |
| DC1-BOH-PNL-L3-1160 |  | BOH PNL-DH23 L3 Startup | 2d | 2026-01-30 | 2026-02-02 | DC1-BOH-PNL-L3-1150 | 41d | 0d | ROS |  |
| DC1-BOH-PNL-L3-1170 |  | BOH PNL-DH23 L3 BMS/EPMS | 1d | 2026-02-03 | 2026-02-03 | DC1-BOH-PNL-L3-1160 | 41d | 33d | PRM |  |
|  | 06 | **DC1-BOH-RTUs Cx L3** |  | 2026-02-19 | 2026-02-24 |  |  |  |  |  |
| DC1-FOH-RTU-L3-1060 |  | BOH RTU-RT-03 FTE | 1d | 2026-02-19 | 2026-02-19 | DC1-FOH-RTU-L2-1020, DC1-SWBD-HSE-L3-1030 | 38d | 0d | ROS |  |
| DC1-FOH-RTU-L3-1070 |  | BOH RTU-RT-03 L3 Startup | 2d | 2026-02-20 | 2026-02-23 | DC1-FOH-RTU-L3-1060 | 38d | 0d | TAS |  |
| DC1-FOH-RTU-L3-1080 |  | BOH RTU-RT-03 L3 BMS/EPMS | 1d | 2026-02-24 | 2026-02-24 | DC1-FOH-RTU-L3-1070 | 38d | 40d | PRM |  |
|  | 07 | **DC1-BOH-Split Units-Floor 1-HSE Cx L3** |  | 2026-01-30 | 2026-02-09 |  |  |  |  |  |
|  | 01 | **DC1 House ELEC 1081 SPlit Units L3** |  | 2026-02-04 | 2026-02-09 |  |  |  |  |  |
| DC1-SS-L3-Cx-5030 |  | DC1 House ELEC 1081 Split Units FTE | 1d | 2026-02-04 | 2026-02-04 | DC1-SS-L2-Cx-5010, DC1-BOH-PNL-L3-1030 | 37d | 0d | ROS |  |
| DC1-SS-L3-Cx-5050 |  | DC1 House ELEC 1081 Split Units L3 Startup | 2d | 2026-02-05 | 2026-02-06 | DC1-SS-L3-Cx-5030 | 37d | 0d | BAM |  |
| DC1-SS-L3-Cx-5060 |  | DC1 House ELEC 1081 Split Units L3 BMS/EPMS | 1d | 2026-02-09 | 2026-02-09 | DC1-SS-L3-Cx-5050 | 37d |  | PRM |  |
|  | 02 | **DC1 House MMR1B 1068 Split Units L3** |  | 2026-01-30 | 2026-02-04 |  |  |  |  |  |
| DC1-SS-L3-Cx-2930 |  | DC1 House MMR1B 1068 Split Units FTE | 1d | 2026-01-30 | 2026-01-30 | DC1-SS-L2-Cx-2790, DC1-BOH-PNL-L3-1030 | 40d | 0d | ROS | HDP-E22-01, F22-01, G22-01, J22-01 |
| DC1-SS-L3-Cx-3200 |  | DC1 House MMR1B 1068 Split Units L3 Startup | 2d | 2026-02-02 | 2026-02-03 | DC1-SS-L3-Cx-2930 | 40d | 0d | BAM |  |
| DC1-SS-L3-Cx-3210 |  | DC1 House MMR1B 1068 Split Units L3 BMS/EPMS | 1d | 2026-02-04 | 2026-02-04 | DC1-SS-L3-Cx-3200 | 40d |  | PRM |  |
|  | 03 | **DC1-House House Electrical 1066 Split Units L3** |  | 2026-01-30 | 2026-02-04 |  |  |  |  |  |
| DC1-SS-L3-Cx-2940 |  | DC1-House House Electrical 1066 Split Units FTE | 1d | 2026-01-30 | 2026-01-30 | DC1-SS-L2-Cx-2780, DC1-BOH-PNL-L3-1030 | 40d | 0d | ROS | HDP-H22-01, J22-01, K22-01 |
| DC1-SS-L3-Cx-3220 |  | DC1-House House Electrical 1066 Split Units L3 Startup | 2d | 2026-02-02 | 2026-02-03 | DC1-SS-L3-Cx-2940 | 40d | 0d | BAM |  |
| DC1-SS-L3-Cx-3230 |  | DC1-House House Electrical 1066 Split Units L3 BMS/EPMS | 1d | 2026-02-04 | 2026-02-04 | DC1-SS-L3-Cx-3220 | 40d |  | PRM |  |
|  | 04 | **DC1 House IDF 1064 Split Units L3** |  | 2026-02-02 | 2026-02-05 |  |  |  |  |  |
| DC1-SS-L3-Cx-2950 |  | DC1 House IDF 1064 Split Units FTE | 1d | 2026-02-02 | 2026-02-02 | DC1-SS-L2-Cx-2770, DC1-BOH-PNL-L3-1030 | 39d | 0d | ROS | HDP-J22-01, K22-01 |
| DC1-SS-L3-Cx-3240 |  | DC1 House IDF 1064 Split Units L3 Startup | 2d | 2026-02-03 | 2026-02-04 | DC1-SS-L3-Cx-2950 | 39d | 0d | BAM |  |
| DC1-SS-L3-Cx-3250 |  | DC1 House IDF 1064 Split Units L3 BMS/EPMS | 1d | 2026-02-05 | 2026-02-05 | DC1-SS-L3-Cx-3240 | 39d |  | PRM |  |

Notes:
- DC1-BOH-PNL-L3-1160: Steps: EC Startup Report; Vendor Startup
- DC1-FOH-RTU-L3-1070: Steps: EC Startup Report; MC Startup Report; Vendor Startup
- DC1-SS-L3-Cx-5050: Steps: EC Startup Report; MC Startup Report; Vendor Startup
- DC1-SS-L3-Cx-3200: Steps: EC Startup Report; MC Startup Report; Vendor Startup
- DC1-SS-L3-Cx-3220: Steps: EC Startup Report; MC Startup Report; Vendor Startup
- DC1-SS-L3-Cx-3240: Steps: EC Startup Report; MC Startup Report; Vendor Startup

| ID | WBS | Activity | Duration | Start | Finish | Predecessors | Total float | Free float | Fed From | Vendor Responsible Party |
| --- | --- | --- | --- | --- | --- | --- | --- | --- | --- | --- |
|  | 05 | **DC1 House ELEV MACH 1062 Split Units L3** |  | 2026-02-03 | 2026-02-06 |  |  |  |  |  |
| DC1-SS-L3-Cx-2960 |  | DC1 House ELEV MACH 1062 Split Units FTE | 1d | 2026-02-03 | 2026-02-03 | DC1-SS-L2-Cx-2760, DC1-BOH-PNL-L3-1030 | 38d | 0d | HDP-K22-01 | ROS |
| DC1-SS-L3-Cx-3260 |  | DC1 House ELEV MACH 1062 Split Units L3 Startup | 2d | 2026-02-04 | 2026-02-05 | DC1-SS-L3-Cx-2960 | 38d | 0d |  | BAM |
| DC1-SS-L3-Cx-3270 |  | DC1 House ELEV MACH 1062 Split Units L3 BMS/EPMS | 1d | 2026-02-06 | 2026-02-06 | DC1-SS-L3-Cx-3260 | 38d |  |  | PRM |
|  | 06 | **DC1 House MMR2A 0212 Split Units L3** |  |  |  |  |  |  |  |  |
|  | 08 | **DC1-BOH-Split Units-Floor 2-HSE Cx L3** |  | 2026-01-30 | 2026-02-04 |  |  |  |  |  |
|  | 01 | **DC1 House MMR2B 2068 Split Units L3** |  | 2026-01-30 | 2026-02-04 |  |  |  |  |  |
| DC1-SS-L3-Cx-2980 |  | DC1 House MMR2B 2068 Split Units FTE | 1d | 2026-01-30 | 2026-01-30 | DC1-SS-L2-Cx-2810, DC1-BOH-PNL-L3-1030 | 40d | 0d | HDP-E22-01, F22-01, G22-01, J22-01 | ROS |
| DC1-SS-L3-Cx-3300 |  | DC1 House MMR2B 2068 Split Units L3 Startup | 2d | 2026-02-02 | 2026-02-03 | DC1-SS-L3-Cx-2980 | 40d | 0d |  | BAM |
| DC1-SS-L3-Cx-3310 |  | DC1 House MMR2B 2068 Split Units L3 BMS/EPMS | 1d | 2026-02-04 | 2026-02-04 | DC1-SS-L3-Cx-3300 | 40d |  |  | PRM |
|  | 02 | **DC1 House ELEC 2085 Split Units L3** |  | 2026-01-30 | 2026-02-04 |  |  |  |  |  |
| DC1-SS-L3-Cx-2990 |  | DC1 House ELEC 2085 Split Units FTE | 1d | 2026-01-30 | 2026-01-30 | DC1-SS-L2-Cx-2800, DC1-BOH-PNL-L3-1030 | 40d | 0d | HDP-G22-01, H22-01, J22-01 | ROS |
| DC1-SS-L3-Cx-3320 |  | DC1 House ELEC 2085 Split Units L3 Startup | 2d | 2026-02-02 | 2026-02-03 | DC1-SS-L3-Cx-2990 | 40d | 0d |  | BAM |
| DC1-SS-L3-Cx-3330 |  | DC1 House ELEC 2085 Split Units L3 BMS/EPMS | 1d | 2026-02-04 | 2026-02-04 | DC1-SS-L3-Cx-3320 | 40d |  |  | PRM |
|  | 03 | **DC1 House IDF 2064 Split Units L3** |  | 2026-01-30 | 2026-02-04 |  |  |  |  |  |
| DC1-SS-L3-Cx-3000 |  | DC1 House IDF 2064 Split Units FTE | 1d | 2026-01-30 | 2026-01-30 | DC1-SS-L2-Cx-2820, DC1-BOH-PNL-L3-1030 | 40d | 0d | HDP-J22-01, K22-01 | ROS |
| DC1-SS-L3-Cx-3340 |  | DC1 House IDF 2064 Split Units L3 Startup | 2d | 2026-02-02 | 2026-02-03 | DC1-SS-L3-Cx-3000 | 40d | 0d |  | BAM |
| DC1-SS-L3-Cx-3350 |  | DC1 House IDF 2064 Split Units L3 BMS/EPMS | 1d | 2026-02-04 | 2026-02-04 | DC1-SS-L3-Cx-3340 | 40d |  |  | PRM |
|  | 09 | **DC1-BOH-Split Units-Floor 3-HSE Cx L2** |  | 2026-01-30 | 2026-02-04 |  |  |  |  |  |
|  | 01 | **DC1 House Elevator Penthouse Lobby 3065-2 Split Units L3** |  | 2026-01-30 | 2026-02-04 |  |  |  |  |  |
| DC1-SS-L3-Cx-5040 |  | DC1 House Elevator Penthouse Lobby 3065-2 Split Units FTE | 1d | 2026-01-30 | 2026-01-30 | DC1-SS-L2-Cx-5020, DC1-BOH-PNL-L3-1030 | 40d | 0d |  | ROS |
| DC1-SS-L3-Cx-5070 |  | DC1 House Elevator Penthouse Lobby 3065-2 Split Units L3 Startup | 2d | 2026-02-02 | 2026-02-03 | DC1-SS-L3-Cx-5040 | 40d | 0d |  | BAM |
| DC1-SS-L3-Cx-5080 |  | DC1 House Elevator Penthouse Lobby 3065-2 Split Units L3 BMS/EPMS | 1d | 2026-02-04 | 2026-02-04 | DC1-SS-L3-Cx-5070 | 40d |  |  | PRM |
|  | 02 | **DC1 House ELEV MACH 3065-1 Split Units L3** |  | 2026-01-30 | 2026-02-04 |  |  |  |  |  |
| DC1-SS-L3-Cx-3010 |  | DC1 House ELEV MACH 3065-1 Split Units FTE | 1d | 2026-01-30 | 2026-01-30 | DC1-SS-L2-Cx-2830, DC1-BOH-PNL-L3-1030 | 40d | 0d | HDP-D21-01 | ROS |
| DC1-SS-L3-Cx-3360 |  | DC1 House ELEV MACH 3065-1 Split Units L3 Startup | 2d | 2026-02-02 | 2026-02-03 | DC1-SS-L3-Cx-3010 | 40d | 0d |  | BAM |
| DC1-SS-L3-Cx-3370 |  | DC1 House ELEV MACH 3065-1 Split Units L3 BMS/EPMS | 1d | 2026-02-04 | 2026-02-04 | DC1-SS-L3-Cx-3360 | 40d |  |  | PRM |

Notes:
- DC1-SS-L3-Cx-3260: Steps: EC Startup Report; MC Startup Report; Vendor Startup
- DC1-SS-L3-Cx-3300: Steps: EC Startup Report; MC Startup Report; Vendor Startup
- DC1-SS-L3-Cx-3320: Steps: EC Startup Report; MC Startup Report; Vendor Startup
- DC1-SS-L3-Cx-3340: Steps: EC Startup Report; MC Startup Report; Vendor Startup
- DC1-SS-L3-Cx-5070: Steps: EC Startup Report; MC Startup Report; Vendor Startup
- DC1-SS-L3-Cx-3360: Steps: EC Startup Report; MC Startup Report; Vendor Startup

| ID | WBS | Activity | Duration | Start | Finish | Predecessors | Total float | Free float | Calendar | Layton Responsible Party | Vendor Responsible Party | Notes | Allucent CSI Group |
| --- | --- | --- | --- | --- | --- | --- | --- | --- | --- | --- | --- | --- | --- |
|  | 03 | **DC1 House TAB** |  | 2026-03-24 | 2026-05-05 |  |  |  |  |  |  |  |  |
| DC1-HSE-TAB-1000 |  | DC1 FOH TAB | 10d | 2026-03-24 | 2026-04-02 | QTS - 24341, QTS-44141 SS, DC1-FOH-RTU-L3-1020, DC1-FOH-RTU-L3-1050 | 146d | 34d | QTS-PHX3 DC1 - 7 day No Holidays | Riley Warring | LAY |  |  |
| DC1-HSE-TAB-1010 |  | DC1 BOH TAB | 10d | 2026-04-22 | 2026-05-05 | QTS-1004100 SS, DC1-FOH-RTU-L3-1080, QTS-30841, QTS-30871 | -2d | 0d |  |  | LAY |  |  |
|  | 02 | **Data Hall 2100 Commissioning** |  | 2026-01-15 | 2026-06-01 |  |  |  |  |  |  |  |  |
|  | 02 | **Data Hall 2100 Cx L2** |  | 2026-01-15 | 2026-03-18 |  |  |  |  |  |  |  |  |
|  | 01 | **DC1-DH2100 Generators Cx L2** |  | 2026-02-18 | 2026-03-18 |  |  |  |  |  |  |  |  |
| DC1-GEN-L2-1000 |  | DH2100 GEN-A21 L2 Checklist | 3d | 2026-02-18 | 2026-02-20 | QTS-1004490, QTS-25591, QTS-1000270, QTS-1001180 | 6d | 0d |  |  | HLT | Not Broken Out By Lineup | 01ADMIN |
| DC1-GEN-L2-1010 |  | DH2100 GEN-B21 L2 Checklist | 3d | 2026-02-23 | 2026-02-25 | QTS-1004490, DC1-GEN-L2-1000, QTS-1000270, QTS-1001180 | 6d | 0d |  |  | HLT | Not Broken Out By Lineup |  |
| DC1-GEN-L2-1020 |  | DH2100 GEN-C21 L2 Checklist | 3d | 2026-02-26 | 2026-03-02 | QTS-1004490, DC1-GEN-L2-1010, QTS-1000270, QTS-1001180 | 6d | 0d |  |  | HLT | Not Broken Out By Lineup |  |
| DC1-GEN-L2-1030 |  | DH2100 GEN-D21 L2 Checklist | 3d | 2026-03-03 | 2026-03-05 | QTS-1004490, DC1-GEN-L2-1020, QTS-1000270, QTS-1001180 | 6d | 0d |  |  | HLT | Not Broken Out By Lineup |  |
| DC1-GEN-L2-1040 |  | DH2100 GEN-E21 L2 Checklist | 3d | 2026-03-06 | 2026-03-10 | QTS-1004490, DC1-GEN-L2-1030, QTS-1000270, QTS-1001180 | 6d | 0d |  |  | HLT | Not Broken Out By Lineup |  |
| DC1-GEN-L2-1050 |  | DH2100 GEN-F21 L2 Checklist | 3d | 2026-03-11 | 2026-03-13 | QTS-1004490, DC1-GEN-L2-1040, QTS-1000270, QTS-1001180 | 6d | 0d |  |  | HLT | Not Broken Out By Lineup |  |
| DC1-GEN-L2-1060 |  | DH2100 GEN-R21 L2 Checklist | 3d | 2026-03-16 | 2026-03-18 | QTS-1004490, DC1-GEN-L2-1050, QTS-1000270, QTS-1001180 | 6d | 0d |  |  | HLT | Not Broken Out By Lineup |  |
|  | 02 | **DC1-DH2100 MV XFMRs Cx L2** |  | 2026-01-15 | 2026-01-28 |  |  |  |  |  |  |  |  |
| DC1-XFMR-L2-1060 |  | DH2100 XFMR-R21 L2 Checklist | 3d | 2026-01-15 | 2026-01-20 | QTS-1004480 FF+1d, QTS-24911, QTS-42801 | 11d | 0d |  |  | VTC |  |  |
| DC1-XFMR-L2-1000 |  | DH2100 XFMR-A21 L2 Checklist | 3d | 2026-01-16 | 2026-01-21 | QTS-1004480 FF+1d, DC1-XFMR-L2-1060 SS+1d, QTS-42801 | 11d | 0d |  |  | VTC |  |  |
| DC1-XFMR-L2-1010 |  | DH2100 XFMR-B21 L2 Checklist | 3d | 2026-01-20 | 2026-01-22 | QTS-1004480 FF+1d, DC1-XFMR-L2-1000 SS+1d, QTS-42801 | 11d | 0d |  |  | VTC |  |  |
| DC1-XFMR-L2-1020 |  | DH2100 XFMR-C21 L2 Checklist | 3d | 2026-01-21 | 2026-01-23 | QTS-1004480 FF+1d, DC1-XFMR-L2-1010 SS+1d, QTS-42801 | 11d | 0d |  |  | VTC |  |  |
| DC1-XFMR-L2-1030 |  | DH2100 XFMR-D21 L2 Checklist | 3d | 2026-01-22 | 2026-01-26 | QTS-1004480 FF+1d, DC1-XFMR-L2-1020 SS+1d, QTS-42801 | 11d | 0d |  |  | VTC |  |  |
| DC1-XFMR-L2-1040 |  | DH2100 XFMR-E21 L2 Checklist | 3d | 2026-01-23 | 2026-01-27 | QTS-1004480 FF+1d, DC1-XFMR-L2-1030 SS+1d, QTS-42801 | 11d | 0d |  |  | VTC |  |  |
| DC1-XFMR-L2-1050 |  | DH2100 XFMR-F21 L2 Checklist | 3d | 2026-01-26 | 2026-01-28 | QTS-1004480 FF+1d, DC1-XFMR-L2-1040 SS+1d, QTS-42801 | 11d | 0d |  |  | VTC |  |  |
|  | 03 | **DC1-DH2100 PODS** |  | 2026-01-20 | 2026-02-11 |  |  |  |  |  |  |  |  |
|  | 01 | **DC1-DH2100 SWDs Cx L2** |  | 2026-01-20 | 2026-01-28 |  |  |  |  |  |  |  |  |
| DC1-SWD-L2-1060 |  | DH2100 SWD-R21 L2 Checklist | 1d | 2026-01-20 | 2026-01-20 | QTS-1004480 FF+1d, QTS-24911, QTS-25591 | 11d | 0d |  |  | SIE |  |  |
| DC1-SWD-L2-1000 |  | DH2100 SWD-A21 L2 Checklist | 1d | 2026-01-21 | 2026-01-21 | QTS-1004480 FF+1d, DC1-SWD-L2-1060 | 11d | 0d |  |  | SIE |  |  |
| DC1-SWD-L2-1010 |  | DH2100 SWD-B21 L2 Checklist | 1d | 2026-01-22 | 2026-01-22 | QTS-1004480 FF+1d, DC1-SWD-L2-1000 | 11d | 0d |  |  | SIE |  |  |
| DC1-SWD-L2-1020 |  | DH2100 SWD-C21 L2 Checklist | 1d | 2026-01-23 | 2026-01-23 | QTS-1004480 FF+1d, DC1-SWD-L2-1010 | 11d | 0d |  |  | SIE |  |  |
| DC1-SWD-L2-1030 |  | DH2100 SWD-D21 L2 Checklist | 1d | 2026-01-26 | 2026-01-26 | QTS-1004480 FF+1d, DC1-SWD-L2-1020 | 11d | 0d |  |  | SIE |  |  |
| DC1-SWD-L2-1040 |  | DH2100 SWD-E21 L2 Checklist | 1d | 2026-01-27 | 2026-01-27 | QTS-1004480 FF+1d, DC1-SWD-L2-1030 | 11d | 0d |  |  | SIE |  |  |
| DC1-SWD-L2-1050 |  | DH2100 SWD-F21 L2 Checklist | 1d | 2026-01-28 | 2026-01-28 | QTS-1004480 FF+1d, DC1-SWD-L2-1040 | 11d | 0d |  |  | SIE |  |  |

Notes:
- DC1-GEN-L2-1000: Steps: EC Installation Checklist; MC Installation Checklist; CC Installation Checklist; Vendor Pre-Energization Checklist; CXA Pre-Energization Inspection; PEI/Clean-Walk
- DC1-GEN-L2-1010: Steps: EC Installation Checklist; MC Installation Checklist; CC Installation Checklist; Vendor Pre-Energization Checklist; CXA Pre-Energization Inspection; PEI/Clean-Walk
- DC1-GEN-L2-1020: Steps: EC Installation Checklist; MC Installation Checklist; CC Installation Checklist; Vendor Pre-Energization Checklist; CXA Pre-Energization Inspection; PEI/Clean-Walk
- DC1-GEN-L2-1030: Steps: EC Installation Checklist; MC Installation Checklist; CC Installation Checklist; Vendor Pre-Energization Checklist; CXA Pre-Energization Inspection; PEI/Clean-Walk
- DC1-GEN-L2-1040: Steps: EC Installation Checklist; MC Installation Checklist; CC Installation Checklist; Vendor Pre-Energization Checklist; CXA Pre-Energization Inspection; PEI/Clean-Walk
- DC1-GEN-L2-1050: Steps: EC Installation Checklist; MC Installation Checklist; CC Installation Checklist; Vendor Pre-Energization Checklist; CXA Pre-Energization Inspection; PEI/Clean-Walk
- DC1-GEN-L2-1060: Steps: EC Installation Checklist; MC Installation Checklist; CC Installation Checklist; Vendor Pre-Energization Checklist; CXA Pre-Energization Inspection; PEI/Clean-Walk
- DC1-XFMR-L2-1060: Steps: EC Installation Checklist; CC Installation Checklist; Vendor Pre-Energization Checklist; CXA Pre-Energization Inspection; PEI/Clean-Walk
- DC1-XFMR-L2-1000: Steps: EC Installation Checklist; CC Installation Checklist; Vendor Pre-Energization Checklist; CXA Pre-Energization Inspection; PEI/Clean-Walk
- DC1-XFMR-L2-1010: Steps: EC Installation Checklist; CC Installation Checklist; Vendor Pre-Energization Checklist; CXA Pre-Energization Inspection; PEI/Clean-Walk
- DC1-XFMR-L2-1020: Steps: EC Installation Checklist; CC Installation Checklist; Vendor Pre-Energization Checklist; CXA Pre-Energization Inspection; PEI/Clean-Walk
- DC1-XFMR-L2-1030: Steps: EC Installation Checklist; CC Installation Checklist; Vendor Pre-Energization Checklist; CXA Pre-Energization Inspection; PEI/Clean-Walk
- DC1-XFMR-L2-1040: Steps: EC Installation Checklist; CC Installation Checklist; Vendor Pre-Energization Checklist; CXA Pre-Energization Inspection; PEI/Clean-Walk
- DC1-XFMR-L2-1050: Steps: EC Installation Checklist; CC Installation Checklist; Vendor Pre-Energization Checklist; CXA Pre-Energization Inspection; PEI/Clean-Walk
- DC1-SWD-L2-1060: Steps: EC Pre-Energization Checklist; Vendor Pre-Energization Checklist; CXA Pre-Energization Inspection; PEI/Clean-Walk
- DC1-SWD-L2-1000: Steps: EC Pre-Energization Checklist; Vendor Pre-Energization Checklist; CXA Pre-Energization Inspection; PEI/Clean-Walk
- DC1-SWD-L2-1010: Steps: EC Pre-Energization Checklist; Vendor Pre-Energization Checklist; CXA Pre-Energization Inspection; PEI/Clean-Walk
- DC1-SWD-L2-1020: Steps: EC Pre-Energization Checklist; Vendor Pre-Energization Checklist; CXA Pre-Energization Inspection; PEI/Clean-Walk
- DC1-SWD-L2-1030: Steps: EC Pre-Energization Checklist; Vendor Pre-Energization Checklist; CXA Pre-Energization Inspection; PEI/Clean-Walk
- DC1-SWD-L2-1040: Steps: EC Pre-Energization Checklist; Vendor Pre-Energization Checklist; CXA Pre-Energization Inspection; PEI/Clean-Walk
- DC1-SWD-L2-1050: Steps: EC Pre-Energization Checklist; Vendor Pre-Energization Checklist; CXA Pre-Energization Inspection; PEI/Clean-Walk

| ID | WBS | Activity | Duration | Start | Finish | Predecessors | Total float | Free float | Vendor Responsible Party | Notes | Layton Responsible Party |
| --- | --- | --- | --- | --- | --- | --- | --- | --- | --- | --- | --- |
|  | 02 | **DC1-DH2100 MOD-01s Cx L2** |  |  |  |  |  |  |  |  |  |
|  | 03 | **DC1-DH2100 UPS-M Cx L2** |  | 2026-02-03 | 2026-02-11 |  |  |  |  |  |  |
| DC1-UPS-M-L2-1000 |  | DH2100 UPS-M-A21 L2 Checklist | 1d | 2026-02-03 | 2026-02-03 | QTS-27361, QTS-43681 | 5d | 0d | VER |  |  |
| DC1-UPS-M-L2-1010 |  | DH2100 UPS-M-B21 L2 Checklist | 1d | 2026-02-04 | 2026-02-04 | DC1-UPS-M-L2-1000 | 5d | 0d | VER |  |  |
| DC1-UPS-M-L2-1020 |  | DH2100 UPS-M-C21 L2 Checklist | 1d | 2026-02-05 | 2026-02-05 | DC1-UPS-M-L2-1010 | 5d | 0d | VER |  |  |
| DC1-UPS-M-L2-1030 |  | DH2100 UPS-M-D21 L2 Checklist | 1d | 2026-02-06 | 2026-02-06 | DC1-UPS-M-L2-1020 | 5d | 0d | VER |  |  |
| DC1-UPS-M-L2-1040 |  | DH2100 UPS-M-E21 L2 Checklist | 1d | 2026-02-09 | 2026-02-09 | DC1-UPS-M-L2-1030 | 5d | 0d | VER |  |  |
| DC1-UPS-M-L2-1050 |  | DH2100 UPS-M-F21 L2 Checklist | 1d | 2026-02-10 | 2026-02-10 | DC1-UPS-M-L2-1040 | 5d | 0d | VER |  |  |
| DC1-UPS-M-L2-1060 |  | DH2100 UPS-M-R21 L2 Checklist | 1d | 2026-02-11 | 2026-02-11 | DC1-UPS-M-L2-1050 | 5d | 4d | VER |  |  |
|  | 04 | **DC1-DH2100 COMPRESSOR/FAN UNITS Cx L2** |  |  |  |  |  |  |  |  |  |
|  | 01 | **DC1-DH2100 POD-AC UNITS A21 Cx L2** |  |  |  |  |  |  |  |  |  |
|  | 02 | **DC1-DH2100 POD-AC UNITS B21 Cx L2** |  |  |  |  |  |  |  |  |  |
|  | 03 | **DC1-DH2100 POD-AC UNITS C21 Cx L2** |  |  |  |  |  |  |  |  |  |
|  | 04 | **DC1-DH2100 POD-AC UNITS D21 Cx L2** |  |  |  |  |  |  |  |  |  |
|  | 05 | **DC1-DH2100 POD-AC UNITS E21 Cx L2** |  |  |  |  |  |  |  |  |  |
|  | 06 | **DC1-DH2100 POD-AC UNITS F21 Cx L2** |  |  |  |  |  |  |  |  |  |
|  | 07 | **DC1-DH2100 POD-AC UNITS R21 Cx L2** |  |  |  |  |  |  |  |  |  |
|  | 04 | **DC1-DH2100 BUS-R1X/BUS-R2X Cx L2** |  | 2026-01-29 | 2026-03-09 |  |  |  |  |  |  |
| DC1-BUS-L2-1010 |  | DH2100 BUS-R1 (R11) CATCHER BUS Duct L2 Checklist | 3d | 2026-01-29 | 2026-02-02 | QTS-7081 | 25d | 8d | LAY |  |  |
| DC1-BUS-L2-1000 |  | DH2100 BUS-R2 (R21) MAINTENANCE BUS Duct L2 Checklist | 3d | 2026-03-05 | 2026-03-09 | QTS-7031, QTS-8731 FF+3d | 0d |  | LAY | CFCI - Bus duct complete (PRED) | Riley Warring |
|  | 05 | **DC1-DH2100 ATS Cx L2** |  | 2026-01-29 | 2026-02-26 |  |  |  |  |  |  |
|  | 01 | **DC1-DH2100 ATS-A21 Cx L2** |  | 2026-01-29 | 2026-02-02 |  |  |  |  |  |  |
| DC1-ATS-L2-1000 |  | DH2100 ATS-A21-01 L2 Checklist | 3d | 2026-01-29 | 2026-02-02 | QTS-43941 | 26d | 25d | MAV |  |  |
| DC1-ATS-L2-1010 |  | DH2100 ATS-A21-02 L2 Checklist | 3d | 2026-01-29 | 2026-02-02 | QTS-43941 | 26d | 25d | MAV |  |  |
| DC1-ATS-L2-1020 |  | DH2100 ATS-A21-03 L2 Checklist | 3d | 2026-01-29 | 2026-02-02 | QTS-43941 | 26d | 25d | MAV |  |  |
| DC1-ATS-L2-1030 |  | DH2100 ATS-A21-04 L2 Checklist | 3d | 2026-01-29 | 2026-02-02 | QTS-43941 | 26d | 25d | MAV |  |  |
| DC1-ATS-L2-1040 |  | DH2100 ATS-A21-05 L2 Checklist | 3d | 2026-01-29 | 2026-02-02 | QTS-43941 | 26d | 25d | MAV |  |  |
| DC1-ATS-L2-1050 |  | DH2100 ATS-A21-06 L2 Checklist | 3d | 2026-01-29 | 2026-02-02 | QTS-43941 | 26d | 25d | MAV |  |  |

Notes:
- DC1-UPS-M-L2-1000: Steps: EC Pre-Energization Checklist; Vendor Pre-Energization Checklist; CXA Pre-Energization Inspection; PEI/Clean-Walk
- DC1-UPS-M-L2-1010: Steps: EC Pre-Energization Checklist; Vendor Pre-Energization Checklist; CXA Pre-Energization Inspection; PEI/Clean-Walk
- DC1-UPS-M-L2-1020: Steps: EC Pre-Energization Checklist; Vendor Pre-Energization Checklist; CXA Pre-Energization Inspection; PEI/Clean-Walk
- DC1-UPS-M-L2-1030: Steps: EC Pre-Energization Checklist; Vendor Pre-Energization Checklist; CXA Pre-Energization Inspection; PEI/Clean-Walk
- DC1-UPS-M-L2-1040: Steps: EC Pre-Energization Checklist; Vendor Pre-Energization Checklist; CXA Pre-Energization Inspection; PEI/Clean-Walk
- DC1-UPS-M-L2-1050: Steps: EC Pre-Energization Checklist; Vendor Pre-Energization Checklist; CXA Pre-Energization Inspection; PEI/Clean-Walk
- DC1-UPS-M-L2-1060: Steps: EC Pre-Energization Checklist; Vendor Pre-Energization Checklist; CXA Pre-Energization Inspection; PEI/Clean-Walk
- DC1-BUS-L2-1010: Steps: EC Pre-Energization Checklist; Vendor Pre-Energization Checklist; CXA Pre-Energization Inspection; PEI/Clean-Walk
- DC1-BUS-L2-1000: Steps: EC Pre-Energization Checklist; Vendor Pre-Energization Checklist; CXA Pre-Energization Inspection; PEI/Clean-Walk
- DC1-ATS-L2-1000: Steps: EC Installation Checklist; CC Installation Checklist; Vendor Pre-Energization Checklist; CXA Pre-Energization Inspection; PEI/Clean-Walk
- DC1-ATS-L2-1010: Steps: EC Installation Checklist; CC Installation Checklist; Vendor Pre-Energization Checklist; CXA Pre-Energization Inspection; PEI/Clean-Walk
- DC1-ATS-L2-1020: Steps: EC Installation Checklist; CC Installation Checklist; Vendor Pre-Energization Checklist; CXA Pre-Energization Inspection; PEI/Clean-Walk
- DC1-ATS-L2-1030: Steps: EC Installation Checklist; CC Installation Checklist; Vendor Pre-Energization Checklist; CXA Pre-Energization Inspection; PEI/Clean-Walk
- DC1-ATS-L2-1040: Steps: EC Installation Checklist; CC Installation Checklist; Vendor Pre-Energization Checklist; CXA Pre-Energization Inspection; PEI/Clean-Walk
- DC1-ATS-L2-1050: Steps: EC Installation Checklist; CC Installation Checklist; Vendor Pre-Energization Checklist; CXA Pre-Energization Inspection; PEI/Clean-Walk

| ID | WBS | Activity | Duration | Start | Finish | Predecessors | Total float | Free float | Vendor Responsible Party |
| --- | --- | --- | --- | --- | --- | --- | --- | --- | --- |
|  | 02 | **DC1-DH2100 ATS-B21 Cx L2** |  | 2026-02-05 | 2026-02-09 |  |  |  |  |
| DC1-ATS-L2-1060 |  | DH2100 ATS-B21-01 L2 Checklist | 3d | 2026-02-05 | 2026-02-09 | QTS-8761 | 21d | 20d | MAV |
| DC1-ATS-L2-1070 |  | DH2100 ATS-B21-02 L2 Checklist | 3d | 2026-02-05 | 2026-02-09 | QTS-8761 | 21d |  | MAV |
| DC1-ATS-L2-1080 |  | DH2100 ATS-B21-03 L2 Checklist | 3d | 2026-02-05 | 2026-02-09 | QTS-8761 | 21d | 20d | MAV |
| DC1-ATS-L2-1090 |  | DH2100 ATS-B21-04 L2 Checklist | 3d | 2026-02-05 | 2026-02-09 | QTS-8761 | 21d |  | MAV |
| DC1-ATS-L2-1100 |  | DH2100 ATS-B21-05 L2 Checklist | 3d | 2026-02-05 | 2026-02-09 | QTS-8761 | 21d | 20d | MAV |
| DC1-ATS-L2-1110 |  | DH2100 ATS-B21-06 L2 Checklist | 3d | 2026-02-05 | 2026-02-09 | QTS-8761 | 21d |  | MAV |
|  | 03 | **DC1-DH2100 ATS-C21 Cx L2** |  | 2026-02-16 | 2026-02-18 |  |  |  |  |
| DC1-ATS-L2-1120 |  | DH2100 ATS-C21-01 L2 Checklist | 3d | 2026-02-16 | 2026-02-18 | QTS-8791 | 14d | 13d | MAV |
| DC1-ATS-L2-1130 |  | DH2100 ATS-C21-02 L2 Checklist | 3d | 2026-02-16 | 2026-02-18 | QTS-8791 | 14d |  | MAV |
| DC1-ATS-L2-1140 |  | DH2100 ATS-C21-03 L2 Checklist | 3d | 2026-02-16 | 2026-02-18 | QTS-8791 | 14d | 13d | MAV |
| DC1-ATS-L2-1150 |  | DH2100 ATS-C21-04 L2 Checklist | 3d | 2026-02-16 | 2026-02-18 | QTS-8791 | 14d |  | MAV |
| DC1-ATS-L2-1160 |  | DH2100 ATS-C21-05 L2 Checklist | 3d | 2026-02-16 | 2026-02-18 | QTS-8791 | 14d | 13d | MAV |
| DC1-ATS-L2-1170 |  | DH2100 ATS-C21-06 L2 Checklist | 3d | 2026-02-16 | 2026-02-18 | QTS-8791 | 14d |  | MAV |
|  | 04 | **DC1-DH2100 ATS-D21 Cx L2** |  | 2026-02-16 | 2026-02-18 |  |  |  |  |
| DC1-ATS-L2-1180 |  | DH2100 ATS-D21-01 L2 Checklist | 3d | 2026-02-16 | 2026-02-18 | QTS-8811 | 14d | 13d | MAV |
| DC1-ATS-L2-1190 |  | DH2100 ATS-D21-02 L2 Checklist | 3d | 2026-02-16 | 2026-02-18 | QTS-8811 | 14d |  | MAV |
| DC1-ATS-L2-1200 |  | DH2100 ATS-D21-03 L2 Checklist | 3d | 2026-02-16 | 2026-02-18 | QTS-8811 | 14d | 13d | MAV |
| DC1-ATS-L2-1210 |  | DH2100 ATS-D21-04 L2 Checklist | 3d | 2026-02-16 | 2026-02-18 | QTS-8811 | 14d |  | MAV |
| DC1-ATS-L2-1220 |  | DH2100 ATS-D21-05 L2 Checklist | 3d | 2026-02-16 | 2026-02-18 | QTS-8811 | 14d | 13d | MAV |
| DC1-ATS-L2-1230 |  | DH2100 ATS-D21-06 L2 Checklist | 3d | 2026-02-16 | 2026-02-18 | QTS-8811 | 14d |  | MAV |
|  | 05 | **DC1-DH2100 ATS-E21 Cx L2** |  | 2026-02-24 | 2026-02-26 |  |  |  |  |
| DC1-ATS-L2-1240 |  | DH2100 ATS-E21-01 L2 Checklist | 3d | 2026-02-24 | 2026-02-26 | QTS-8841 | 8d | 7d | MAV |
| DC1-ATS-L2-1250 |  | DH2100 ATS-E21-02 L2 Checklist | 3d | 2026-02-24 | 2026-02-26 | QTS-8841 | 8d |  | MAV |
| DC1-ATS-L2-1260 |  | DH2100 ATS-E21-03 L2 Checklist | 3d | 2026-02-24 | 2026-02-26 | QTS-8841 | 8d | 7d | MAV |
| DC1-ATS-L2-1270 |  | DH2100 ATS-E21-04 L2 Checklist | 3d | 2026-02-24 | 2026-02-26 | QTS-8841 | 8d |  | MAV |
| DC1-ATS-L2-1280 |  | DH2100 ATS-E21-05 L2 Checklist | 3d | 2026-02-24 | 2026-02-26 | QTS-8841 | 8d | 7d | MAV |
| DC1-ATS-L2-1290 |  | DH2100 ATS-E21-06 L2 Checklist | 3d | 2026-02-24 | 2026-02-26 | QTS-8841 | 8d |  | MAV |

Notes:
- DC1-ATS-L2-1060: Steps: EC Installation Checklist; CC Installation Checklist; Vendor Pre-Energization Checklist; CXA Pre-Energization Inspection; PEI/Clean-Walk
- DC1-ATS-L2-1070: Steps: EC Installation Checklist; CC Installation Checklist; Vendor Pre-Energization Checklist; CXA Pre-Energization Inspection; PEI/Clean-Walk
- DC1-ATS-L2-1080: Steps: EC Installation Checklist; CC Installation Checklist; Vendor Pre-Energization Checklist; CXA Pre-Energization Inspection; PEI/Clean-Walk
- DC1-ATS-L2-1090: Steps: EC Installation Checklist; CC Installation Checklist; Vendor Pre-Energization Checklist; CXA Pre-Energization Inspection; PEI/Clean-Walk
- DC1-ATS-L2-1100: Steps: EC Installation Checklist; CC Installation Checklist; Vendor Pre-Energization Checklist; CXA Pre-Energization Inspection; PEI/Clean-Walk
- DC1-ATS-L2-1110: Steps: EC Installation Checklist; CC Installation Checklist; Vendor Pre-Energization Checklist; CXA Pre-Energization Inspection; PEI/Clean-Walk
- DC1-ATS-L2-1120: Steps: EC Installation Checklist; CC Installation Checklist; Vendor Pre-Energization Checklist; CXA Pre-Energization Inspection; PEI/Clean-Walk
- DC1-ATS-L2-1130: Steps: EC Installation Checklist; CC Installation Checklist; Vendor Pre-Energization Checklist; CXA Pre-Energization Inspection; PEI/Clean-Walk
- DC1-ATS-L2-1140: Steps: EC Installation Checklist; CC Installation Checklist; Vendor Pre-Energization Checklist; CXA Pre-Energization Inspection; PEI/Clean-Walk
- DC1-ATS-L2-1150: Steps: EC Installation Checklist; CC Installation Checklist; Vendor Pre-Energization Checklist; CXA Pre-Energization Inspection; PEI/Clean-Walk
- DC1-ATS-L2-1160: Steps: EC Installation Checklist; CC Installation Checklist; Vendor Pre-Energization Checklist; CXA Pre-Energization Inspection; PEI/Clean-Walk
- DC1-ATS-L2-1170: Steps: EC Installation Checklist; CC Installation Checklist; Vendor Pre-Energization Checklist; CXA Pre-Energization Inspection; PEI/Clean-Walk
- DC1-ATS-L2-1180: Steps: EC Installation Checklist; CC Installation Checklist; Vendor Pre-Energization Checklist; CXA Pre-Energization Inspection; PEI/Clean-Walk
- DC1-ATS-L2-1190: Steps: EC Installation Checklist; CC Installation Checklist; Vendor Pre-Energization Checklist; CXA Pre-Energization Inspection; PEI/Clean-Walk
- DC1-ATS-L2-1200: Steps: EC Installation Checklist; CC Installation Checklist; Vendor Pre-Energization Checklist; CXA Pre-Energization Inspection; PEI/Clean-Walk
- DC1-ATS-L2-1210: Steps: EC Installation Checklist; CC Installation Checklist; Vendor Pre-Energization Checklist; CXA Pre-Energization Inspection; PEI/Clean-Walk
- DC1-ATS-L2-1220: Steps: EC Installation Checklist; CC Installation Checklist; Vendor Pre-Energization Checklist; CXA Pre-Energization Inspection; PEI/Clean-Walk
- DC1-ATS-L2-1230: Steps: EC Installation Checklist; CC Installation Checklist; Vendor Pre-Energization Checklist; CXA Pre-Energization Inspection; PEI/Clean-Walk
- DC1-ATS-L2-1240: Steps: EC Installation Checklist; CC Installation Checklist; Vendor Pre-Energization Checklist; CXA Pre-Energization Inspection; PEI/Clean-Walk
- DC1-ATS-L2-1250: Steps: EC Installation Checklist; CC Installation Checklist; Vendor Pre-Energization Checklist; CXA Pre-Energization Inspection; PEI/Clean-Walk
- DC1-ATS-L2-1260: Steps: EC Installation Checklist; CC Installation Checklist; Vendor Pre-Energization Checklist; CXA Pre-Energization Inspection; PEI/Clean-Walk
- DC1-ATS-L2-1270: Steps: EC Installation Checklist; CC Installation Checklist; Vendor Pre-Energization Checklist; CXA Pre-Energization Inspection; PEI/Clean-Walk
- DC1-ATS-L2-1280: Steps: EC Installation Checklist; CC Installation Checklist; Vendor Pre-Energization Checklist; CXA Pre-Energization Inspection; PEI/Clean-Walk
- DC1-ATS-L2-1290: Steps: EC Installation Checklist; CC Installation Checklist; Vendor Pre-Energization Checklist; CXA Pre-Energization Inspection; PEI/Clean-Walk

| ID | WBS | Activity | Duration | Start | Finish | Predecessors | Total float | Free float | Vendor Responsible Party |
| --- | --- | --- | --- | --- | --- | --- | --- | --- | --- |
|  | 06 | **DC1-DH2100 ATS-F21 Cx L2** |  | 2026-02-23 | 2026-02-25 |  |  |  |  |
| DC1-ATS-L2-1300 |  | DH2100 ATS-F21-01 L2 Checklist | 3d | 2026-02-23 | 2026-02-25 | QTS-8871 | 9d | 8d | MAV |
| DC1-ATS-L2-1310 |  | DH2100 ATS-F21-02 L2 Checklist | 3d | 2026-02-23 | 2026-02-25 | QTS-8871 | 9d |  | MAV |
| DC1-ATS-L2-1320 |  | DH2100 ATS-F21-03 L2 Checklist | 3d | 2026-02-23 | 2026-02-25 | QTS-8871 | 9d | 8d | MAV |
| DC1-ATS-L2-1330 |  | DH2100 ATS-F21-04 L2 Checklist | 3d | 2026-02-23 | 2026-02-25 | QTS-8871 | 9d |  | MAV |
| DC1-ATS-L2-1340 |  | DH2100 ATS-F21-05 L2 Checklist | 3d | 2026-02-23 | 2026-02-25 | QTS-8871 | 9d | 8d | MAV |
| DC1-ATS-L2-1350 |  | DH2100 ATS-F21-06 L2 Checklist | 3d | 2026-02-23 | 2026-02-25 | QTS-8871 | 9d |  | MAV |
|  | 06 | **DC1-DH2100 CODs Cx L2** |  | 2026-02-09 | 2026-02-26 |  |  |  |  |
|  | 01 | **DC1-DH2100 COD A21 Cx L2** |  | 2026-02-09 | 2026-02-11 |  |  |  |  |
| DC1-COD-L2-1000 |  | DH2100 COD-A21-01 L2 Checklist | 3d | 2026-02-09 | 2026-02-11 | QTS - 24891, QTS-25231 | 20d | 19d | SIE |
| DC1-COD-L2-1010 |  | DH2100 COD-A21-02 L2 Checklist | 3d | 2026-02-09 | 2026-02-11 | QTS - 24891, QTS-25231 | 20d | 19d | SIE |
| DC1-COD-L2-1020 |  | DH2100 COD-A21-03 L2 Checklist | 3d | 2026-02-09 | 2026-02-11 | QTS - 24891, QTS-25231 | 20d | 19d | SIE |
| DC1-COD-L2-1030 |  | DH2100 COD-A21-04 L2 Checklist | 3d | 2026-02-09 | 2026-02-11 | QTS - 24891, QTS-25231 | 20d | 19d | SIE |
| DC1-COD-L2-1040 |  | DH2100 COD-A21-05 L2 Checklist | 3d | 2026-02-09 | 2026-02-11 | QTS - 24891, QTS-25231 | 20d | 19d | SIE |
| DC1-COD-L2-1050 |  | DH2100 COD-A21-06 L2 Checklist | 3d | 2026-02-09 | 2026-02-11 | QTS - 24891, QTS-25231 | 20d | 19d | SIE |
|  | 02 | **DC1-DH2100 COD B21 Cx L2** |  | 2026-02-13 | 2026-02-17 |  |  |  |  |
| DC1-COD-L2-1060 |  | DH2100 COD-B21-01 L2 Checklist | 3d | 2026-02-13 | 2026-02-17 | QTS - 24891, QTS-8751 | 16d | 15d | SIE |
| DC1-COD-L2-1070 |  | DH2100 COD-B21-02 L2 Checklist | 3d | 2026-02-13 | 2026-02-17 | QTS - 24891, QTS-8751 | 16d |  | SIE |
| DC1-COD-L2-1080 |  | DH2100 COD-B21-03 L2 Checklist | 3d | 2026-02-13 | 2026-02-17 | QTS - 24891, QTS-8751 | 16d | 15d | SIE |
| DC1-COD-L2-1090 |  | DH2100 COD-B21-04 L2 Checklist | 3d | 2026-02-13 | 2026-02-17 | QTS - 24891, QTS-8751 | 16d |  | SIE |
| DC1-COD-L2-1100 |  | DH2100 COD-B21-05 L2 Checklist | 3d | 2026-02-13 | 2026-02-17 | QTS - 24891, QTS-8751 | 16d | 15d | SIE |
| DC1-COD-L2-1110 |  | DH2100 COD-B21-06 L2 Checklist | 3d | 2026-02-13 | 2026-02-17 | QTS - 24891, QTS-8751 | 16d |  | SIE |
|  | 03 | **DC1-DH2100 COD C21 Cx L2** |  | 2026-02-24 | 2026-02-26 |  |  |  |  |
| DC1-COD-L2-1120 |  | DH2100 COD-C21-01 L2 Checklist | 3d | 2026-02-24 | 2026-02-26 | QTS-8781 | 9d | 8d | SIE |
| DC1-COD-L2-1130 |  | DH2100 COD-C21-02 L2 Checklist | 3d | 2026-02-24 | 2026-02-26 | QTS-8781 | 9d |  | SIE |
| DC1-COD-L2-1140 |  | DH2100 COD-C21-03 L2 Checklist | 3d | 2026-02-24 | 2026-02-26 | QTS-8781 | 9d | 8d | SIE |
| DC1-COD-L2-1150 |  | DH2100 COD-C21-04 L2 Checklist | 3d | 2026-02-24 | 2026-02-26 | QTS-8781 | 9d |  | SIE |
| DC1-COD-L2-1160 |  | DH2100 COD-C21-05 L2 Checklist | 3d | 2026-02-24 | 2026-02-26 | QTS-8781 | 9d | 8d | SIE |
| DC1-COD-L2-1170 |  | DH2100 COD-C21-06 L2 Checklist | 3d | 2026-02-24 | 2026-02-26 | QTS-8781 | 9d |  | SIE |

Notes:
- DC1-ATS-L2-1300: Steps: EC Installation Checklist; CC Installation Checklist; Vendor Pre-Energization Checklist; CXA Pre-Energization Inspection; PEI/Clean-Walk
- DC1-ATS-L2-1310: Steps: EC Installation Checklist; CC Installation Checklist; Vendor Pre-Energization Checklist; CXA Pre-Energization Inspection; PEI/Clean-Walk
- DC1-ATS-L2-1320: Steps: EC Installation Checklist; CC Installation Checklist; Vendor Pre-Energization Checklist; CXA Pre-Energization Inspection; PEI/Clean-Walk
- DC1-ATS-L2-1330: Steps: EC Installation Checklist; CC Installation Checklist; Vendor Pre-Energization Checklist; CXA Pre-Energization Inspection; PEI/Clean-Walk
- DC1-ATS-L2-1340: Steps: EC Installation Checklist; CC Installation Checklist; Vendor Pre-Energization Checklist; CXA Pre-Energization Inspection; PEI/Clean-Walk
- DC1-ATS-L2-1350: Steps: EC Installation Checklist; CC Installation Checklist; Vendor Pre-Energization Checklist; CXA Pre-Energization Inspection; PEI/Clean-Walk
- DC1-COD-L2-1000: Steps: EC Installation Checklist; CC Installation Checklist; Vendor Pre-Energization Checklist; CXA Pre-Energization Inspection; PEI/Clean-Walk
- DC1-COD-L2-1010: Steps: EC Installation Checklist; CC Installation Checklist; Vendor Pre-Energization Checklist; CXA Pre-Energization Inspection; PEI/Clean-Walk
- DC1-COD-L2-1020: Steps: EC Installation Checklist; CC Installation Checklist; Vendor Pre-Energization Checklist; CXA Pre-Energization Inspection; PEI/Clean-Walk
- DC1-COD-L2-1030: Steps: EC Installation Checklist; CC Installation Checklist; Vendor Pre-Energization Checklist; CXA Pre-Energization Inspection; PEI/Clean-Walk
- DC1-COD-L2-1040: Steps: EC Installation Checklist; CC Installation Checklist; Vendor Pre-Energization Checklist; CXA Pre-Energization Inspection; PEI/Clean-Walk
- DC1-COD-L2-1050: Steps: EC Installation Checklist; CC Installation Checklist; Vendor Pre-Energization Checklist; CXA Pre-Energization Inspection; PEI/Clean-Walk
- DC1-COD-L2-1060: Steps: EC Installation Checklist; CC Installation Checklist; Vendor Pre-Energization Checklist; CXA Pre-Energization Inspection; PEI/Clean-Walk
- DC1-COD-L2-1070: Steps: EC Installation Checklist; CC Installation Checklist; Vendor Pre-Energization Checklist; CXA Pre-Energization Inspection; PEI/Clean-Walk
- DC1-COD-L2-1080: Steps: EC Installation Checklist; CC Installation Checklist; Vendor Pre-Energization Checklist; CXA Pre-Energization Inspection; PEI/Clean-Walk
- DC1-COD-L2-1090: Steps: EC Installation Checklist; CC Installation Checklist; Vendor Pre-Energization Checklist; CXA Pre-Energization Inspection; PEI/Clean-Walk
- DC1-COD-L2-1100: Steps: EC Installation Checklist; CC Installation Checklist; Vendor Pre-Energization Checklist; CXA Pre-Energization Inspection; PEI/Clean-Walk
- DC1-COD-L2-1110: Steps: EC Installation Checklist; CC Installation Checklist; Vendor Pre-Energization Checklist; CXA Pre-Energization Inspection; PEI/Clean-Walk
- DC1-COD-L2-1120: Steps: EC Installation Checklist; CC Installation Checklist; Vendor Pre-Energization Checklist; CXA Pre-Energization Inspection; PEI/Clean-Walk
- DC1-COD-L2-1130: Steps: EC Installation Checklist; CC Installation Checklist; Vendor Pre-Energization Checklist; CXA Pre-Energization Inspection; PEI/Clean-Walk
- DC1-COD-L2-1140: Steps: EC Installation Checklist; CC Installation Checklist; Vendor Pre-Energization Checklist; CXA Pre-Energization Inspection; PEI/Clean-Walk
- DC1-COD-L2-1150: Steps: EC Installation Checklist; CC Installation Checklist; Vendor Pre-Energization Checklist; CXA Pre-Energization Inspection; PEI/Clean-Walk
- DC1-COD-L2-1160: Steps: EC Installation Checklist; CC Installation Checklist; Vendor Pre-Energization Checklist; CXA Pre-Energization Inspection; PEI/Clean-Walk
- DC1-COD-L2-1170: Steps: EC Installation Checklist; CC Installation Checklist; Vendor Pre-Energization Checklist; CXA Pre-Energization Inspection; PEI/Clean-Walk

| ID | WBS | Activity | Duration | Start | Finish | Predecessors | Total float | Free float | Vendor Responsible Party | Layton Responsible Party |
| --- | --- | --- | --- | --- | --- | --- | --- | --- | --- | --- |
|  | 04 | **DC1-DH2100 COD D21 Cx L2** |  | 2026-02-24 | 2026-02-26 |  |  |  |  |  |
| DC1-COD-L2-1180 |  | DH2100 COD-D21-01 L2 Checklist | 3d | 2026-02-24 | 2026-02-26 | QTS-8821 | 9d | 8d | SIE |  |
| DC1-COD-L2-1190 |  | DH2100 COD-D21-02 L2 Checklist | 3d | 2026-02-24 | 2026-02-26 | QTS-8821 | 9d |  | SIE |  |
| DC1-COD-L2-1200 |  | DH2100 COD-D21-03 L2 Checklist | 3d | 2026-02-24 | 2026-02-26 | QTS-8821 | 9d | 8d | SIE |  |
| DC1-COD-L2-1210 |  | DH2100 COD-D21-04 L2 Checklist | 3d | 2026-02-24 | 2026-02-26 | QTS-8821 | 9d |  | SIE |  |
| DC1-COD-L2-1220 |  | DH2100 COD-D21-05 L2 Checklist | 3d | 2026-02-24 | 2026-02-26 | QTS-8821 | 9d | 8d | SIE |  |
| DC1-COD-L2-1230 |  | DH2100 COD-D21-06 L2 Checklist | 3d | 2026-02-24 | 2026-02-26 | QTS-8821 | 9d |  | SIE |  |
|  | 05 | **DC1-DH2100 COD E21 Cx L2** |  | 2026-02-23 | 2026-02-25 |  |  |  |  |  |
| DC1-COD-L2-1240 |  | DH2100 COD-E21-01 L2 Checklist | 3d | 2026-02-23 | 2026-02-25 | QTS-8851 | 10d | 9d | SIE |  |
| DC1-COD-L2-1250 |  | DH2100 COD-E21-02 L2 Checklist | 3d | 2026-02-23 | 2026-02-25 | QTS-8851 | 10d |  | SIE |  |
| DC1-COD-L2-1260 |  | DH2100 COD-E21-03 L2 Checklist | 3d | 2026-02-23 | 2026-02-25 | QTS-8851 | 10d | 9d | SIE |  |
| DC1-COD-L2-1270 |  | DH2100 COD-E21-04 L2 Checklist | 3d | 2026-02-23 | 2026-02-25 | QTS-8851 | 10d |  | SIE |  |
| DC1-COD-L2-1280 |  | DH2100 COD-E21-05 L2 Checklist | 3d | 2026-02-23 | 2026-02-25 | QTS-8851 | 10d | 9d | SIE |  |
| DC1-COD-L2-1290 |  | DH2100 COD-E21-06 L2 Checklist | 3d | 2026-02-23 | 2026-02-25 | QTS-8851 | 10d |  | SIE |  |
|  | 06 | **DC1-DH2100 COD F21 Cx L2** |  | 2026-02-23 | 2026-02-25 |  |  |  |  |  |
| DC1-COD-L2-1300 |  | DH2100 COD-F21-01 L2 Checklist | 3d | 2026-02-23 | 2026-02-25 | QTS-8881 | 10d | 9d | SIE |  |
| DC1-COD-L2-1310 |  | DH2100 COD-F21-02 L2 Checklist | 3d | 2026-02-23 | 2026-02-25 | QTS-8881 | 10d |  | SIE |  |
| DC1-COD-L2-1320 |  | DH2100 COD-F21-03 L2 Checklist | 3d | 2026-02-23 | 2026-02-25 | QTS-8881 | 10d | 9d | SIE |  |
| DC1-COD-L2-1330 |  | DH2100 COD-F21-04 L2 Checklist | 3d | 2026-02-23 | 2026-02-25 | QTS-8881 | 10d |  | SIE |  |
| DC1-COD-L2-1340 |  | DH2100 COD-F21-05 L2 Checklist | 3d | 2026-02-23 | 2026-02-25 | QTS-8881 | 10d | 9d | SIE |  |
| DC1-COD-L2-1350 |  | DH2100 COD-F21-06 L2 Checklist | 3d | 2026-02-23 | 2026-02-25 | QTS-8881 | 10d |  | SIE |  |
|  | 07 | **DC1-DH2100 RPPs Cx L2** |  | 2026-02-13 | 2026-02-27 |  |  |  |  |  |
|  | 01 | **DC1-DH2100 RPP A21 Cx L2** |  | 2026-02-13 | 2026-02-17 |  |  |  |  |  |
| DC1-RPP-L2-1000 |  | DH2100 RPP-A21-01 A/B L2 Checklist | 3d | 2026-02-13 | 2026-02-17 | QTS - 1290 | 17d | 16d | SQD | Riley Warring |
| DC1-RPP-L2-1010 |  | DH2100 RPP-A21-02 A/B L2 Checklist | 3d | 2026-02-13 | 2026-02-17 | QTS - 1290 | 17d | 16d | SQD | Riley Warring |
| DC1-RPP-L2-1020 |  | DH2100 RPP-A21-03 A/B L2 Checklist | 3d | 2026-02-13 | 2026-02-17 | QTS - 1290 | 17d | 16d | SQD | Riley Warring |
| DC1-RPP-L2-1030 |  | DH2100 RPP-A21-04 A/B L2 Checklist | 3d | 2026-02-13 | 2026-02-17 | QTS - 1290 | 17d | 16d | SQD | Riley Warring |
| DC1-RPP-L2-1040 |  | DH2100 RPP-A21-05 A/B L2 Checklist | 3d | 2026-02-13 | 2026-02-17 | QTS - 1290 | 17d | 16d | SQD | Riley Warring |
| DC1-RPP-L2-1050 |  | DH2100 RPP-A21-06 A/B L2 Checklist | 3d | 2026-02-13 | 2026-02-17 | QTS - 1290 | 17d | 16d | SQD | Riley Warring |

Notes:
- DC1-COD-L2-1180: Steps: EC Installation Checklist; CC Installation Checklist; Vendor Pre-Energization Checklist; CXA Pre-Energization Inspection; PEI/Clean-Walk
- DC1-COD-L2-1190: Steps: EC Installation Checklist; CC Installation Checklist; Vendor Pre-Energization Checklist; CXA Pre-Energization Inspection; PEI/Clean-Walk
- DC1-COD-L2-1200: Steps: EC Installation Checklist; CC Installation Checklist; Vendor Pre-Energization Checklist; CXA Pre-Energization Inspection; PEI/Clean-Walk
- DC1-COD-L2-1210: Steps: EC Installation Checklist; CC Installation Checklist; Vendor Pre-Energization Checklist; CXA Pre-Energization Inspection; PEI/Clean-Walk
- DC1-COD-L2-1220: Steps: EC Installation Checklist; CC Installation Checklist; Vendor Pre-Energization Checklist; CXA Pre-Energization Inspection; PEI/Clean-Walk
- DC1-COD-L2-1230: Steps: EC Installation Checklist; CC Installation Checklist; Vendor Pre-Energization Checklist; CXA Pre-Energization Inspection; PEI/Clean-Walk
- DC1-COD-L2-1240: Steps: EC Installation Checklist; CC Installation Checklist; Vendor Pre-Energization Checklist; CXA Pre-Energization Inspection; PEI/Clean-Walk
- DC1-COD-L2-1250: Steps: EC Installation Checklist; CC Installation Checklist; Vendor Pre-Energization Checklist; CXA Pre-Energization Inspection; PEI/Clean-Walk
- DC1-COD-L2-1260: Steps: EC Installation Checklist; CC Installation Checklist; Vendor Pre-Energization Checklist; CXA Pre-Energization Inspection; PEI/Clean-Walk
- DC1-COD-L2-1270: Steps: EC Installation Checklist; CC Installation Checklist; Vendor Pre-Energization Checklist; CXA Pre-Energization Inspection; PEI/Clean-Walk
- DC1-COD-L2-1280: Steps: EC Installation Checklist; CC Installation Checklist; Vendor Pre-Energization Checklist; CXA Pre-Energization Inspection; PEI/Clean-Walk
- DC1-COD-L2-1290: Steps: EC Installation Checklist; CC Installation Checklist; Vendor Pre-Energization Checklist; CXA Pre-Energization Inspection; PEI/Clean-Walk
- DC1-COD-L2-1300: Steps: EC Installation Checklist; CC Installation Checklist; Vendor Pre-Energization Checklist; CXA Pre-Energization Inspection; PEI/Clean-Walk
- DC1-COD-L2-1310: Steps: EC Installation Checklist; CC Installation Checklist; Vendor Pre-Energization Checklist; CXA Pre-Energization Inspection; PEI/Clean-Walk
- DC1-COD-L2-1320: Steps: EC Installation Checklist; CC Installation Checklist; Vendor Pre-Energization Checklist; CXA Pre-Energization Inspection; PEI/Clean-Walk
- DC1-COD-L2-1330: Steps: EC Installation Checklist; CC Installation Checklist; Vendor Pre-Energization Checklist; CXA Pre-Energization Inspection; PEI/Clean-Walk
- DC1-COD-L2-1340: Steps: EC Installation Checklist; CC Installation Checklist; Vendor Pre-Energization Checklist; CXA Pre-Energization Inspection; PEI/Clean-Walk
- DC1-COD-L2-1350: Steps: EC Installation Checklist; CC Installation Checklist; Vendor Pre-Energization Checklist; CXA Pre-Energization Inspection; PEI/Clean-Walk
- DC1-RPP-L2-1000: Steps: EC Installation Checklist; CC Installation Checklist; Vendor Pre-Energization Checklist; CXA Pre-Energization Inspection; PEI/Clean-Walk
- DC1-RPP-L2-1010: Steps: EC Installation Checklist; CC Installation Checklist; Vendor Pre-Energization Checklist; CXA Pre-Energization Inspection; PEI/Clean-Walk
- DC1-RPP-L2-1020: Steps: EC Installation Checklist; CC Installation Checklist; Vendor Pre-Energization Checklist; CXA Pre-Energization Inspection; PEI/Clean-Walk
- DC1-RPP-L2-1030: Steps: EC Installation Checklist; CC Installation Checklist; Vendor Pre-Energization Checklist; CXA Pre-Energization Inspection; PEI/Clean-Walk
- DC1-RPP-L2-1040: Steps: EC Installation Checklist; CC Installation Checklist; Vendor Pre-Energization Checklist; CXA Pre-Energization Inspection; PEI/Clean-Walk
- DC1-RPP-L2-1050: Steps: EC Installation Checklist; CC Installation Checklist; Vendor Pre-Energization Checklist; CXA Pre-Energization Inspection; PEI/Clean-Walk

| ID | WBS | Activity | Duration | Start | Finish | Predecessors | Total float | Free float | Layton Responsible Party | Vendor Responsible Party |
| --- | --- | --- | --- | --- | --- | --- | --- | --- | --- | --- |
|  | 02 | **DC1-DH2100 RPP B21 Cx L2** |  | 2026-02-13 | 2026-02-17 |  |  |  |  |  |
| DC1-RPP-L2-1060 |  | DH2100 RPP-B21-01 A/B L2 Checklist | 3d | 2026-02-13 | 2026-02-17 | QTS - 1290 | 17d | 16d | Riley Warring | SQD |
| DC1-RPP-L2-1070 |  | DH2100 RPP-B21-02 A/B L2 Checklist | 3d | 2026-02-13 | 2026-02-17 | QTS - 1290 | 17d |  | Riley Warring | SQD |
| DC1-RPP-L2-1080 |  | DH2100 RPP-B21-03 A/B L2 Checklist | 3d | 2026-02-13 | 2026-02-17 | QTS - 1290 | 17d | 16d | Riley Warring | SQD |
| DC1-RPP-L2-1090 |  | DH2100 RPP-B21-04 A/B L2 Checklist | 3d | 2026-02-13 | 2026-02-17 | QTS - 1290 | 17d |  | Riley Warring | SQD |
| DC1-RPP-L2-1100 |  | DH2100 RPP-B21-05 A/B L2 Checklist | 3d | 2026-02-13 | 2026-02-17 | QTS - 1290 | 17d | 16d | Riley Warring | SQD |
| DC1-RPP-L2-1110 |  | DH2100 RPP-B21-06 A/B L2 Checklist | 3d | 2026-02-13 | 2026-02-17 | QTS - 1290 | 17d |  | Riley Warring | SQD |
|  | 03 | **DC1-DH2100 RPP C21 Cx L2** |  | 2026-02-19 | 2026-02-23 |  |  |  |  |  |
| DC1-RPP-L2-1120 |  | DH2100 RPP-C21-01 A/B L2 Checklist | 3d | 2026-02-19 | 2026-02-23 | QTS - 3030 | 13d | 12d | Riley Warring | SQD |
| DC1-RPP-L2-1130 |  | DH2100 RPP-C21-02 A/B L2 Checklist | 3d | 2026-02-19 | 2026-02-23 | QTS - 3030 | 13d |  | Riley Warring | SQD |
| DC1-RPP-L2-1140 |  | DH2100 RPP-C21-03 A/B L2 Checklist | 3d | 2026-02-19 | 2026-02-23 | QTS - 3030 | 13d | 12d | Riley Warring | SQD |
| DC1-RPP-L2-1150 |  | DH2100 RPP-C21-04 A/B L2 Checklist | 3d | 2026-02-19 | 2026-02-23 | QTS - 3030 | 13d |  | Riley Warring | SQD |
| DC1-RPP-L2-1160 |  | DH2100 RPP-C21-05 A/B L2 Checklist | 3d | 2026-02-19 | 2026-02-23 | QTS - 3030 | 13d | 12d | Riley Warring | SQD |
| DC1-RPP-L2-1170 |  | DH2100 RPP-C21-06 A/B L2 Checklist | 3d | 2026-02-19 | 2026-02-23 | QTS - 3030 | 13d |  | Riley Warring | SQD |
|  | 04 | **DC1-DH2100 RPP D21 Cx L2** |  | 2026-02-19 | 2026-02-23 |  |  |  |  |  |
| DC1-RPP-L2-1180 |  | DH2100 RPP-D21-01 A/B L2 Checklist | 3d | 2026-02-19 | 2026-02-23 | QTS - 3030 | 13d | 12d | Riley Warring | SQD |
| DC1-RPP-L2-1190 |  | DH2100 RPP-D21-02 A/B L2 Checklist | 3d | 2026-02-19 | 2026-02-23 | QTS - 3030 | 13d |  | Riley Warring | SQD |
| DC1-RPP-L2-1200 |  | DH2100 RPP-D21-03 A/B L2 Checklist | 3d | 2026-02-19 | 2026-02-23 | QTS - 3030 | 13d | 12d | Riley Warring | SQD |
| DC1-RPP-L2-1210 |  | DH2100 RPP-D21-04 A/B L2 Checklist | 3d | 2026-02-19 | 2026-02-23 | QTS - 3030 | 13d |  | Riley Warring | SQD |
| DC1-RPP-L2-1220 |  | DH2100 RPP-D21-05 A/B L2 Checklist | 3d | 2026-02-19 | 2026-02-23 | QTS - 3030 | 13d | 12d | Riley Warring | SQD |
| DC1-RPP-L2-1230 |  | DH2100 RPP-D21-06 A/B L2 Checklist | 3d | 2026-02-19 | 2026-02-23 | QTS - 3030 | 13d |  | Riley Warring | SQD |
|  | 05 | **DC1-DH2100 RPP E21 Cx L2** |  | 2026-02-25 | 2026-02-27 |  |  |  |  |  |
| DC1-RPP-L2-1240 |  | DH2100 RPP-E21-01 A/B L2 Checklist | 3d | 2026-02-25 | 2026-02-27 | QTS - 3260 | 9d | 8d | Riley Warring | SQD |
| DC1-RPP-L2-1250 |  | DH2100 RPP-E21-02 A/B L2 Checklist | 3d | 2026-02-25 | 2026-02-27 | QTS - 3260 | 9d |  | Riley Warring | SQD |
| DC1-RPP-L2-1260 |  | DH2100 RPP-E21-03 A/B L2 Checklist | 3d | 2026-02-25 | 2026-02-27 | QTS - 3260 | 9d | 8d | Riley Warring | SQD |
| DC1-RPP-L2-1270 |  | DH2100 RPP-E21-04 A/B L2 Checklist | 3d | 2026-02-25 | 2026-02-27 | QTS - 3260 | 9d |  | Riley Warring | SQD |
| DC1-RPP-L2-1280 |  | DH2100 RPP-E21-05 A/B L2 Checklist | 3d | 2026-02-25 | 2026-02-27 | QTS - 3260 | 9d | 8d | Riley Warring | SQD |
| DC1-RPP-L2-1290 |  | DH2100 RPP-E21-06 A/B L2 Checklist | 3d | 2026-02-25 | 2026-02-27 | QTS - 3260 | 9d |  | Riley Warring | SQD |

Notes:
- DC1-RPP-L2-1060: Steps: EC Installation Checklist; CC Installation Checklist; Vendor Pre-Energization Checklist; CXA Pre-Energization Inspection; PEI/Clean-Walk
- DC1-RPP-L2-1070: Steps: EC Installation Checklist; CC Installation Checklist; Vendor Pre-Energization Checklist; CXA Pre-Energization Inspection; PEI/Clean-Walk
- DC1-RPP-L2-1080: Steps: EC Installation Checklist; CC Installation Checklist; Vendor Pre-Energization Checklist; CXA Pre-Energization Inspection; PEI/Clean-Walk
- DC1-RPP-L2-1090: Steps: EC Installation Checklist; CC Installation Checklist; Vendor Pre-Energization Checklist; CXA Pre-Energization Inspection; PEI/Clean-Walk
- DC1-RPP-L2-1100: Steps: EC Installation Checklist; CC Installation Checklist; Vendor Pre-Energization Checklist; CXA Pre-Energization Inspection; PEI/Clean-Walk
- DC1-RPP-L2-1110: Steps: EC Installation Checklist; CC Installation Checklist; Vendor Pre-Energization Checklist; CXA Pre-Energization Inspection; PEI/Clean-Walk
- DC1-RPP-L2-1120: Steps: EC Installation Checklist; CC Installation Checklist; Vendor Pre-Energization Checklist; CXA Pre-Energization Inspection; PEI/Clean-Walk
- DC1-RPP-L2-1130: Steps: EC Installation Checklist; CC Installation Checklist; Vendor Pre-Energization Checklist; CXA Pre-Energization Inspection; PEI/Clean-Walk
- DC1-RPP-L2-1140: Steps: EC Installation Checklist; CC Installation Checklist; Vendor Pre-Energization Checklist; CXA Pre-Energization Inspection; PEI/Clean-Walk
- DC1-RPP-L2-1150: Steps: EC Installation Checklist; CC Installation Checklist; Vendor Pre-Energization Checklist; CXA Pre-Energization Inspection; PEI/Clean-Walk
- DC1-RPP-L2-1160: Steps: EC Installation Checklist; CC Installation Checklist; Vendor Pre-Energization Checklist; CXA Pre-Energization Inspection; PEI/Clean-Walk
- DC1-RPP-L2-1170: Steps: EC Installation Checklist; CC Installation Checklist; Vendor Pre-Energization Checklist; CXA Pre-Energization Inspection; PEI/Clean-Walk
- DC1-RPP-L2-1180: Steps: EC Installation Checklist; CC Installation Checklist; Vendor Pre-Energization Checklist; CXA Pre-Energization Inspection; PEI/Clean-Walk
- DC1-RPP-L2-1190: Steps: EC Installation Checklist; CC Installation Checklist; Vendor Pre-Energization Checklist; CXA Pre-Energization Inspection; PEI/Clean-Walk
- DC1-RPP-L2-1200: Steps: EC Installation Checklist; CC Installation Checklist; Vendor Pre-Energization Checklist; CXA Pre-Energization Inspection; PEI/Clean-Walk
- DC1-RPP-L2-1210: Steps: EC Installation Checklist; CC Installation Checklist; Vendor Pre-Energization Checklist; CXA Pre-Energization Inspection; PEI/Clean-Walk
- DC1-RPP-L2-1220: Steps: EC Installation Checklist; CC Installation Checklist; Vendor Pre-Energization Checklist; CXA Pre-Energization Inspection; PEI/Clean-Walk
- DC1-RPP-L2-1230: Steps: EC Installation Checklist; CC Installation Checklist; Vendor Pre-Energization Checklist; CXA Pre-Energization Inspection; PEI/Clean-Walk
- DC1-RPP-L2-1240: Steps: EC Installation Checklist; CC Installation Checklist; Vendor Pre-Energization Checklist; CXA Pre-Energization Inspection; PEI/Clean-Walk
- DC1-RPP-L2-1250: Steps: EC Installation Checklist; CC Installation Checklist; Vendor Pre-Energization Checklist; CXA Pre-Energization Inspection; PEI/Clean-Walk
- DC1-RPP-L2-1260: Steps: EC Installation Checklist; CC Installation Checklist; Vendor Pre-Energization Checklist; CXA Pre-Energization Inspection; PEI/Clean-Walk
- DC1-RPP-L2-1270: Steps: EC Installation Checklist; CC Installation Checklist; Vendor Pre-Energization Checklist; CXA Pre-Energization Inspection; PEI/Clean-Walk
- DC1-RPP-L2-1280: Steps: EC Installation Checklist; CC Installation Checklist; Vendor Pre-Energization Checklist; CXA Pre-Energization Inspection; PEI/Clean-Walk
- DC1-RPP-L2-1290: Steps: EC Installation Checklist; CC Installation Checklist; Vendor Pre-Energization Checklist; CXA Pre-Energization Inspection; PEI/Clean-Walk

| ID | WBS | Activity | Duration | Start | Finish | Predecessors | Total float | Free float | Layton Responsible Party | Vendor Responsible Party |
| --- | --- | --- | --- | --- | --- | --- | --- | --- | --- | --- |
|  | 06 | **DC1-DH2100 RPP F21 Cx L2** |  | 2026-02-25 | 2026-02-27 |  |  |  |  |  |
| DC1-RPP-L2-1300 |  | DH2100 RPP-F21-01 A/B L2 Checklist | 3d | 2026-02-25 | 2026-02-27 | QTS - 3260 | 9d | 8d | Riley Warring | SQD |
| DC1-RPP-L2-1310 |  | DH2100 RPP-F21-02 A/B L2 Checklist | 3d | 2026-02-25 | 2026-02-27 | QTS - 3260 | 9d |  | Riley Warring | SQD |
| DC1-RPP-L2-1320 |  | DH2100 RPP-F21-03 A/B L2 Checklist | 3d | 2026-02-25 | 2026-02-27 | QTS - 3260 | 9d | 8d | Riley Warring | SQD |
| DC1-RPP-L2-1330 |  | DH2100 RPP-F21-04 A/B L2 Checklist | 3d | 2026-02-25 | 2026-02-27 | QTS - 3260 | 9d |  | Riley Warring | SQD |
| DC1-RPP-L2-1340 |  | DH2100 RPP-F21-05 A/B L2 Checklist | 3d | 2026-02-25 | 2026-02-27 | QTS - 3260 | 9d | 8d | Riley Warring | SQD |
| DC1-RPP-L2-1350 |  | DH2100 RPP-F21-06 A/B L2 Checklist | 3d | 2026-02-25 | 2026-02-27 | QTS - 3260 | 9d |  | Riley Warring | SQD |
|  | 08 | **DC1-DH2100 MOD-02 Cx L2** |  | 2026-02-12 | 2026-03-04 |  |  |  |  |  |
| DC1-MOD02-L2-1000 |  | DH2100 MOD-A21-02 L2 Checklist | 3d | 2026-02-12 | 2026-02-16 | QTS-43681, QTS-25651, QTS-24181, QTS-25171, QTS-44391 | 11d | 0d | Riley Warring | PHE |
| DC1-MOD02-L2-1010 |  | DH2100 MOD-B21-02 L2 Checklist | 3d | 2026-02-12 | 2026-02-16 | DC1-MOD02-L2-1000 SS, QTS-25651, QTS-24181, QTS-25171, QTS-44391 | 11d | 0d | Riley Warring | PHE |
| DC1-MOD02-L2-1020 |  | DH2100 MOD-C21-02 L2 Checklist | 3d | 2026-02-17 | 2026-02-19 | DC1-MOD02-L2-1010, QTS-25651, QTS-24181, QTS-25171, QTS-44391 | 11d | 0d | Riley Warring | PHE |
| DC1-MOD02-L2-1030 |  | DH2100 MOD-D21-02 L2 Checklist | 3d | 2026-02-17 | 2026-02-19 | DC1-MOD02-L2-1020 SS, QTS-25651, QTS-24181, QTS-25171, QTS-44391 | 11d | 0d | Riley Warring | PHE |
| DC1-MOD02-L2-1040 |  | DH2100 MOD-E21-02 L2 Checklist | 3d | 2026-02-20 | 2026-02-24 | DC1-MOD02-L2-1030, QTS-25651, QTS-24181, QTS-25171, QTS-44391 | 11d | 0d | Riley Warring | PHE |
| DC1-MOD02-L2-1050 |  | DH2100 MOD-F21-02 L2 Checklist | 3d | 2026-02-25 | 2026-02-27 | DC1-MOD02-L2-1040, QTS-25651, QTS-24181, QTS-25171, QTS-44391 | 11d | 0d | Riley Warring | PHE |
| DC1-MOD02-L2-1060 |  | DH2100 MOD-R21-02 L2 Checklist | 3d | 2026-03-02 | 2026-03-04 | DC1-MOD02-L2-1050, QTS-25651, QTS-24181, QTS-25171, QTS-44391 | 11d | 0d | Riley Warring | PHE |
|  | 09 | **DC1-DH2100 MOD-03 Cx L2** |  | 2026-02-12 | 2026-03-12 |  |  |  |  |  |
| DC1-MOD03-L2-1000 |  | DH2100 MOD-A21-03 L2 Checklist | 3d | 2026-02-12 | 2026-02-16 | QTS - 1230, QTS - 3320, QTS-25651, QTS-24181, QTS-25171, QTS-44391 | 10d | 0d |  | PHE |
| DC1-MOD03-L2-1010 |  | DH2100 MOD-B21-03 L2 Checklist | 3d | 2026-02-17 | 2026-02-19 | DC1-MOD03-L2-1000, QTS - 1230, QTS - 3320, QTS-25651, QTS-24181, QTS-25171, QTS-44391 | 10d | 0d |  | PHE |
| DC1-MOD03-L2-1020 |  | DH2100 MOD-C21-03 L2 Checklist | 3d | 2026-02-20 | 2026-02-24 | DC1-MOD03-L2-1010, QTS - 1230, QTS - 3320, QTS-25651, QTS-24181, QTS-25171, QTS-44391 | 10d | 0d |  | PHE |
| DC1-MOD03-L2-1030 |  | DH2100 MOD-D21-03 L2 Checklist | 3d | 2026-02-25 | 2026-02-27 | DC1-MOD03-L2-1020, QTS - 1230, QTS - 3320, QTS-25651, QTS-24181, QTS-25171, QTS-44391 | 10d | 0d |  | PHE |
| DC1-MOD03-L2-1040 |  | DH2100 MOD-E21-03 L2 Checklist | 3d | 2026-03-02 | 2026-03-04 | DC1-MOD03-L2-1030, QTS - 1230, QTS - 3320, QTS-25651, QTS-24181, QTS-25171, QTS-44391 | 10d | 0d |  | PHE |
| DC1-MOD03-L2-1050 |  | DH2100 MOD-F21-03 L2 Checklist | 3d | 2026-03-05 | 2026-03-09 | DC1-MOD03-L2-1040, QTS - 1230, QTS - 3320, QTS-25651, QTS-24181, QTS-25171, QTS-44391 | 10d | 0d |  | PHE |
| DC1-MOD03-L2-1060 |  | DH2100 MOD-R21-03 L2 Checklist | 3d | 2026-03-10 | 2026-03-12 | DC1-MOD03-L2-1050, QTS - 1230, QTS - 3320, QTS-25651, QTS-24181, QTS-25171, QTS-44391 | 10d | 0d |  | PHE |
|  | 10 | **DC1-DH2100 CDUs Cx L2** |  | 2026-02-16 | 2026-03-06 |  |  |  |  |  |
| DC1-CDU-L2-1000 |  | CDU-DH2100-01 L2 Checklist | 3d | 2026-02-16 | 2026-02-18 | QTS - 1270, QTS - 1360 | 48d | 1d |  | VER |
| DC1-CDU-L2-1010 |  | CDU-DH2100-02 L2 Checklist | 3d | 2026-02-16 | 2026-02-18 | QTS - 1270, QTS - 1360 | 48d | 1d |  | VER |
| DC1-CDU-L2-1020 |  | CDU-DH2100-03 L2 Checklist | 3d | 2026-02-16 | 2026-02-18 | QTS - 1270, QTS - 1360 | 48d | 1d |  | VER |
| DC1-CDU-L2-1100 |  | CDU-DH2100-10 L2 Checklist | 3d | 2026-02-16 | 2026-02-18 | QTS - 3370, QTS - 3510 | 48d | 2d |  | VER |
| DC1-CDU-L2-1110 |  | CDU-DH2100-11 L2 Checklist | 3d | 2026-02-16 | 2026-02-18 | QTS - 3370, QTS - 3510 | 48d | 2d |  | VER |
| DC1-CDU-L2-1120 |  | CDU-DH2100-12 L2 Checklist | 3d | 2026-02-16 | 2026-02-18 | QTS - 3370, QTS - 3510 | 48d | 2d |  | VER |
| DC1-CDU-L2-1030 |  | CDU-DH2100-04 L2 Checklist | 3d | 2026-02-24 | 2026-02-26 | QTS - 3370, QTS - 3640 | 42d | 0d |  | VER |
| DC1-CDU-L2-1040 |  | CDU-DH2100-05 L2 Checklist | 3d | 2026-02-24 | 2026-02-26 | QTS - 3370, QTS - 3640 | 42d | 0d |  | VER |
| DC1-CDU-L2-1050 |  | CDU-DH2100-06 L2 Checklist | 3d | 2026-02-24 | 2026-02-26 | QTS - 3370, QTS - 3640 | 42d | 0d |  | VER |
| DC1-CDU-L2-1070 |  | CDU-DH2100-07 L2 Checklist | 3d | 2026-02-24 | 2026-02-26 | QTS - 1270, QTS - 3640 | 42d | 0d |  | VER |
| DC1-CDU-L2-1080 |  | CDU-DH2100-08 L2 Checklist | 3d | 2026-02-24 | 2026-02-26 | QTS - 1270, QTS - 3640 | 42d | 0d |  | VER |
| DC1-CDU-L2-1090 |  | CDU-DH2100-09 L2 Checklist | 3d | 2026-02-24 | 2026-02-26 | QTS - 1270, QTS - 3640 | 42d | 0d |  | VER |
| DC1-CDU-L2-1140 |  | CDU-DH2100-13 L2 Checklist | 3d | 2026-02-24 | 2026-02-26 | QTS - 1270, QTS - 3530 | 42d | 0d |  | VER |
| DC1-CDU-L2-1150 |  | CDU-DH2100-14 L2 Checklist | 3d | 2026-02-24 | 2026-02-26 | QTS - 1270, QTS - 3530 | 42d | 0d |  | VER |
| DC1-CDU-L2-1160 |  | CDU-DH2100-15 L2 Checklist | 3d | 2026-02-24 | 2026-02-26 | QTS - 1270, QTS - 3530 | 42d | 0d |  | VER |
| DC1-CDU-L2-1170 |  | CDU-DH2100-16 L2 Checklist | 3d | 2026-03-04 | 2026-03-06 | QTS - 3370, QTS - 3540 | 36d | 0d | Riley Warring | VER |
| DC1-CDU-L2-1180 |  | CDU-DH2100-17 L2 Checklist | 3d | 2026-03-04 | 2026-03-06 | QTS - 3370, QTS - 3540 | 36d | 0d | Riley Warring | VER |
| DC1-CDU-L2-1190 |  | CDU-DH2100-18 L2 Checklist | 3d | 2026-03-04 | 2026-03-06 | QTS - 3370, QTS - 3540 | 36d | 0d | Riley Warring | VER |

Notes:
- DC1-RPP-L2-1300: Steps: EC Installation Checklist; CC Installation Checklist; Vendor Pre-Energization Checklist; CXA Pre-Energization Inspection; PEI/Clean-Walk
- DC1-RPP-L2-1310: Steps: EC Installation Checklist; CC Installation Checklist; Vendor Pre-Energization Checklist; CXA Pre-Energization Inspection; PEI/Clean-Walk
- DC1-RPP-L2-1320: Steps: EC Installation Checklist; CC Installation Checklist; Vendor Pre-Energization Checklist; CXA Pre-Energization Inspection; PEI/Clean-Walk
- DC1-RPP-L2-1330: Steps: EC Installation Checklist; CC Installation Checklist; Vendor Pre-Energization Checklist; CXA Pre-Energization Inspection; PEI/Clean-Walk
- DC1-RPP-L2-1340: Steps: EC Installation Checklist; CC Installation Checklist; Vendor Pre-Energization Checklist; CXA Pre-Energization Inspection; PEI/Clean-Walk
- DC1-RPP-L2-1350: Steps: EC Installation Checklist; CC Installation Checklist; Vendor Pre-Energization Checklist; CXA Pre-Energization Inspection; PEI/Clean-Walk
- DC1-MOD02-L2-1000: Steps: EC Installation Checklist; CC Installation Checklist; Vendor Pre-Energization Checklist; CXA Pre-Energization Inspection; PEI/Clean-Walk
- DC1-MOD02-L2-1010: Steps: EC Installation Checklist; CC Installation Checklist; Vendor Pre-Energization Checklist; CXA Pre-Energization Inspection; PEI/Clean-Walk
- DC1-MOD02-L2-1020: Steps: EC Installation Checklist; CC Installation Checklist; Vendor Pre-Energization Checklist; CXA Pre-Energization Inspection; PEI/Clean-Walk
- DC1-MOD02-L2-1030: Steps: EC Installation Checklist; CC Installation Checklist; Vendor Pre-Energization Checklist; CXA Pre-Energization Inspection; PEI/Clean-Walk
- DC1-MOD02-L2-1040: Steps: EC Installation Checklist; CC Installation Checklist; Vendor Pre-Energization Checklist; CXA Pre-Energization Inspection; PEI/Clean-Walk
- DC1-MOD02-L2-1050: Steps: EC Installation Checklist; CC Installation Checklist; Vendor Pre-Energization Checklist; CXA Pre-Energization Inspection; PEI/Clean-Walk
- DC1-MOD02-L2-1060: Steps: EC Installation Checklist; CC Installation Checklist; Vendor Pre-Energization Checklist; CXA Pre-Energization Inspection; PEI/Clean-Walk
- DC1-MOD03-L2-1000: Steps: EC Installation Checklist; CC Installation Checklist; Vendor Pre-Energization Checklist; CXA Pre-Energization Inspection; PEI/Clean-Walk
- DC1-MOD03-L2-1010: Steps: EC Installation Checklist; CC Installation Checklist; Vendor Pre-Energization Checklist; CXA Pre-Energization Inspection; PEI/Clean-Walk
- DC1-MOD03-L2-1020: Steps: EC Installation Checklist; CC Installation Checklist; Vendor Pre-Energization Checklist; CXA Pre-Energization Inspection; PEI/Clean-Walk
- DC1-MOD03-L2-1030: Steps: EC Installation Checklist; CC Installation Checklist; Vendor Pre-Energization Checklist; CXA Pre-Energization Inspection; PEI/Clean-Walk
- DC1-MOD03-L2-1040: Steps: EC Installation Checklist; CC Installation Checklist; Vendor Pre-Energization Checklist; CXA Pre-Energization Inspection; PEI/Clean-Walk
- DC1-MOD03-L2-1050: Steps: EC Installation Checklist; CC Installation Checklist; Vendor Pre-Energization Checklist; CXA Pre-Energization Inspection; PEI/Clean-Walk
- DC1-MOD03-L2-1060: Steps: EC Installation Checklist; CC Installation Checklist; Vendor Pre-Energization Checklist; CXA Pre-Energization Inspection; PEI/Clean-Walk
- DC1-CDU-L2-1000: Steps: EC Installation Checklist; MC Installation Checklist; CC Installation Checklist; Vendor Pre-Energization Checklist; CXA Pre-Energization Inspection; PEI/Clean-Walk
- DC1-CDU-L2-1010: Steps: EC Installation Checklist; MC Installation Checklist; CC Installation Checklist; Vendor Pre-Energization Checklist; CXA Pre-Energization Inspection; PEI/Clean-Walk
- DC1-CDU-L2-1020: Steps: EC Installation Checklist; CC Installation Checklist; MC Installation Checklist; Vendor Pre-Energization Checklist; CXA Pre-Energization Inspection; PEI/Clean-Walk
- DC1-CDU-L2-1100: Steps: EC Installation Checklist; MC Installation Checklist; CC Installation Checklist; Vendor Pre-Energization Checklist; CXA Pre-Energization Inspection; PEI/Clean-Walk
- DC1-CDU-L2-1110: Steps: EC Installation Checklist; MC Installation Checklist; CC Installation Checklist; Vendor Pre-Energization Checklist; CXA Pre-Energization Inspection; PEI/Clean-Walk
- DC1-CDU-L2-1120: Steps: EC Installation Checklist; MC Installation Checklist; CC Installation Checklist; Vendor Pre-Energization Checklist; CXA Pre-Energization Inspection; PEI/Clean-Walk
- DC1-CDU-L2-1030: Steps: EC Installation Checklist; MC Installation Checklist; CC Installation Checklist; Vendor Pre-Energization Checklist; CXA Pre-Energization Inspection; PEI/Clean-Walk
- DC1-CDU-L2-1040: Steps: EC Installation Checklist; MC Installation Checklist; CC Installation Checklist; Vendor Pre-Energization Checklist; CXA Pre-Energization Inspection; PEI/Clean-Walk
- DC1-CDU-L2-1050: Steps: EC Installation Checklist; MC Installation Checklist; CC Installation Checklist; Vendor Pre-Energization Checklist; CXA Pre-Energization Inspection; PEI/Clean-Walk
- DC1-CDU-L2-1070: Steps: EC Installation Checklist; MC Installation Checklist; CC Installation Checklist; Vendor Pre-Energization Checklist; CXA Pre-Energization Inspection; PEI/Clean-Walk
- DC1-CDU-L2-1080: Steps: EC Installation Checklist; MC Installation Checklist; CC Installation Checklist; Vendor Pre-Energization Checklist; CXA Pre-Energization Inspection; PEI/Clean-Walk
- DC1-CDU-L2-1090: Steps: EC Installation Checklist; MC Installation Checklist; CC Installation Checklist; Vendor Pre-Energization Checklist; CXA Pre-Energization Inspection; PEI/Clean-Walk
- DC1-CDU-L2-1140: Steps: EC Installation Checklist; MC Installation Checklist; CC Installation Checklist; Vendor Pre-Energization Checklist; CXA Pre-Energization Inspection; PEI/Clean-Walk
- DC1-CDU-L2-1150: Steps: EC Installation Checklist; MC Installation Checklist; CC Installation Checklist; Vendor Pre-Energization Checklist; CXA Pre-Energization Inspection; PEI/Clean-Walk
- DC1-CDU-L2-1160: Steps: EC Installation Checklist; MC Installation Checklist; CC Installation Checklist; Vendor Pre-Energization Checklist; CXA Pre-Energization Inspection; PEI/Clean-Walk
- DC1-CDU-L2-1170: Steps: EC Installation Checklist; MC Installation Checklist; CC Installation Checklist; Vendor Pre-Energization Checklist; CXA Pre-Energization Inspection; PEI/Clean-Walk
- DC1-CDU-L2-1180: Steps: EC Installation Checklist; MC Installation Checklist; CC Installation Checklist; Vendor Pre-Energization Checklist; CXA Pre-Energization Inspection; PEI/Clean-Walk
- DC1-CDU-L2-1190: Steps: EC Installation Checklist; MC Installation Checklist; CC Installation Checklist; Vendor Pre-Energization Checklist; CXA Pre-Energization Inspection; PEI/Clean-Walk

| ID | WBS | Activity | Duration | Start | Finish | Predecessors | Total float | Free float | Vendor Responsible Party | Allucent CSI Group | Notes |
| --- | --- | --- | --- | --- | --- | --- | --- | --- | --- | --- | --- |
|  | 11 | **DC1-DH2100 CHLR Cx L2** |  | 2026-01-23 | 2026-02-11 |  |  |  |  |  |  |
| DC1-CHLR-L2-1000 |  | DH2100 CHLR-1RT40-A21 L2 Checklist | 3d | 2026-01-23 | 2026-01-27 | QTS-39752 | 16d | 0d | TAS |  |  |
| DC1-CHLR-L2-1010 |  | DH2100 CHLR-1RT40-B21 L2 Checklist | 3d | 2026-01-28 | 2026-01-30 | DC1-CHLR-L2-1000 | 16d | 0d | TAS |  |  |
| DC1-CHLR-L2-1040 |  | DH2100 CHLR-1RT40-E21 L2 Checklist | 3d | 2026-01-30 | 2026-02-03 | QTS-26191 | 14d | 0d | TAS | 01ADMIN |  |
| DC1-CHLR-L2-1020 |  | DH2100 CHLR-1RT40-C21 L2 Checklist | 3d | 2026-02-02 | 2026-02-04 | DC1-CHLR-L2-1010 | 16d | 0d | TAS |  |  |
| DC1-CHLR-L2-1050 |  | DH2100 CHLR-1RT40-F21 L2 Checklist | 3d | 2026-02-04 | 2026-02-06 | DC1-CHLR-L2-1040 | 14d | 0d | TAS |  |  |
| DC1-CHLR-L2-1030 |  | DH2100 CHLR-1RT40-D21 L2 Checklist | 3d | 2026-02-05 | 2026-02-09 | DC1-CHLR-L2-1020 | 16d | 2d | TAS | 01ADMIN |  |
| DC1-CHLR-L2-1060 |  | DH2100 CHLR-1RT40-R21 L2 Checklist | 3d | 2026-02-09 | 2026-02-11 | DC1-CHLR-L2-1050 | 14d | 0d | TAS |  |  |
|  | 12 | **DC1-DH2100 CHWP Cx L2** |  | 2026-01-26 | 2026-02-13 |  |  |  |  |  |  |
| DC1-CHWP-L2-Cx-1000 |  | DH2100 CHWP-1RT40-A21 L2 Checklist | 3d | 2026-01-26 | 2026-01-28 | QTS-39772 | 10d | 0d | LAY |  |  |
| DC1-CHWP-L2-Cx-1030 |  | DH2100 CHWP-1RT40-D21 L2 Checklist | 3d | 2026-01-26 | 2026-01-28 | QTS-39772 | 7d | 3d | LAY | 01ADMIN |  |
| DC1-CHWP-L2-Cx-1010 |  | DH2100 CHWP-1RT40-B21 L2 Checklist | 3d | 2026-01-29 | 2026-02-02 | DC1-CHWP-L2-Cx-1000 | 10d | 0d | LAY |  |  |
| DC1-CHWP-L2-Cx-1020 |  | DH2100 CHWP-1RT40-C21 L2 Checklist | 3d | 2026-02-03 | 2026-02-05 | DC1-CHWP-L2-Cx-1010 | 10d | 9d | LAY |  |  |
| DC1-CHWP-L2-Cx-1040 |  | DH2100 CHWP-1RT40-E21 L2 Checklist | 3d | 2026-02-03 | 2026-02-05 | QTS-27361, DC1-CHWP-L2-Cx-1030 | 4d | 0d | LAY |  |  |
| DC1-CHWP-L2-Cx-1050 |  | DH2100 CHWP-1RT40-F21 L2 Checklist | 3d | 2026-02-06 | 2026-02-10 | DC1-CHWP-L2-Cx-1040 | 4d | 0d | LAY |  | CFCI |
| DC1-CHWP-L2-Cx-1060 |  | DH2100 CHWP-1RT40-R21 L2 Checklist | 3d | 2026-02-11 | 2026-02-13 | DC1-CHWP-L2-Cx-1050 | 4d | 3d | LAY |  | CFCI |
|  | 13 | **DC1-DH2100 CRAH/DOAS Cx L2** |  | 2026-01-27 | 2026-02-09 |  |  |  |  |  |  |
| DC1-CRAH-L2-1000 |  | DH2100 CRAH-DH-01 L2 Checklist | 3d | 2026-01-27 | 2026-01-29 | QTS-23971, QTS-45721, QTS-23981, QTS-24321 | 35d | 24d | UMAS |  |  |
| DC1-CRAH-L2-1010 |  | DH2100 CRAH-DH-02 L2 Checklist | 3d | 2026-01-27 | 2026-01-29 | QTS-45721, QTS-23971, QTS-23981, QTS-24321 | 35d | 21d | UMAS |  |  |
| DC1-CRAH-L2-1020 |  | DH2100 CRAH-DH-03 L2 Checklist | 3d | 2026-01-27 | 2026-01-29 | QTS-45721, QTS-23971, QTS-23981, QTS-24321 | 35d | 18d | UMAS |  |  |
| DC1-CRAH-L2-1030 |  | DH2100 CRAH-DH-04 L2 Checklist | 3d | 2026-01-27 | 2026-01-29 | QTS-45721, QTS-23971, QTS-23981, QTS-24321 | 35d | 15d | UMAS |  |  |
| DC1-CRAH-L2-1040 |  | DH2100 CRAH-DH-05 L2 Checklist | 3d | 2026-01-27 | 2026-01-29 | QTS-45721, QTS-23971, QTS-23981, QTS-24321 | 35d | 24d | UMAS |  |  |
| DC1-CRAH-L2-1050 |  | DH2100 CRAH-DH-06 L2 Checklist | 3d | 2026-01-27 | 2026-01-29 | QTS-45721, QTS-23971, QTS-23981, QTS-24321 | 35d | 21d | UMAS |  |  |
| DC1-CRAH-L2-1060 |  | DH2100 CRAH-DH-07 L2 Checklist | 3d | 2026-01-27 | 2026-01-29 | QTS-45721, QTS-23971, QTS-23981, QTS-24321 | 35d | 18d | UMAS |  |  |
| DC1-CRAH-L2-1070 |  | DH2100 CRAH-DH-08 L2 Checklist | 3d | 2026-01-27 | 2026-01-29 | QTS-45721, QTS-23971, QTS-23981, QTS-24321 | 35d | 24d | UMAS |  |  |
| DC1-CRAH-L2-1080 |  | DH2100 CRAH-DH-09 L2 Checklist | 3d | 2026-01-27 | 2026-01-29 | QTS-45721, QTS-23971, QTS-23981, QTS-24321 | 35d | 21d | UMAS |  |  |
| DC1-CRAH-L2-1090 |  | DH2100 CRAH-DH-10 L2 Checklist | 3d | 2026-01-27 | 2026-01-29 | QTS-45721, QTS-23971, QTS-23981, QTS-24321 | 35d | 18d | UMAS |  |  |
| DC1-CRAH-L2-1100 |  | DH2100 CRAH-DH-11 L2 Checklist | 3d | 2026-01-27 | 2026-01-29 | QTS-45721, QTS-23971, QTS-23981, QTS-24321 | 35d | 24d | UMAS |  |  |
| DC1-CRAH-L2-1110 |  | DH2100 CRAH-DH-12 L2 Checklist | 3d | 2026-01-27 | 2026-01-29 | QTS-45721, QTS-23971, QTS-23981, QTS-24321 | 35d | 21d | UMAS |  |  |
| DC1-CRAH-L2-1120 |  | DH2100 CRAH-DH-13 L2 Checklist | 3d | 2026-01-27 | 2026-01-29 | QTS-45721, QTS-23971, QTS-23981, QTS-24321 | 35d | 18d | UMAS |  |  |
| DC1-CRAH-L2-1130 |  | DH2100 CRAH-DH-14 L2 Checklist | 3d | 2026-01-27 | 2026-01-29 | QTS-45721, QTS-23971, QTS-23981, QTS-24321 | 35d | 15d | UMAS |  |  |
| DC1-CRAH-L2-1140 |  | DH2100 CRAH-DH-15 L2 Checklist | 3d | 2026-01-27 | 2026-01-29 | QTS-45721, QTS-24311, QTS-23981, QTS-24321 | 35d | 12d | UMAS |  |  |
| DC1-CRAH-L2-1150 |  | DH2100 CRAH-DH-16 L2 Checklist | 3d | 2026-01-27 | 2026-01-29 | QTS-45721, QTS-24311, QTS-23981, QTS-24321 | 35d | 15d | UMAS |  |  |
| DC1-CRAH-L2-1160 |  | DH2100 CRAH-DH-17 L2 Checklist | 3d | 2026-01-27 | 2026-01-29 | QTS-45721, QTS-24311, QTS-23981, QTS-24321 | 35d | 15d | UMAS |  |  |
| DC1-CRAH-L2-1170 |  | DH2100 CRAH-DH-18 L2 Checklist | 3d | 2026-01-27 | 2026-01-29 | QTS-45721, QTS-24311, QTS-23981, QTS-24321 | 35d | 18d | UMAS |  |  |
| DC1-CRAH-L2-1180 |  | DH2100 CRAH-DH-19 L2 Checklist | 3d | 2026-01-27 | 2026-01-29 | QTS-45721, QTS-24311, QTS-23981, QTS-24321 | 35d | 21d | UMAS |  |  |
| DC1-CRAH-L2-1190 |  | DH2100 CRAH-DH-20 L2 Checklist | 3d | 2026-01-27 | 2026-01-29 | QTS-45721, QTS-24311, QTS-23981, QTS-24321 | 35d | 24d | UMAS |  |  |
| DC1-CRAH-L2-1200 |  | DH2100 CRAH-DH-21 L2 Checklist | 3d | 2026-01-27 | 2026-01-29 | QTS-45721, QTS-24311, QTS-23981, QTS-24321 | 35d | 24d | UMAS |  |  |
| DC1-CRAH-L2-1210 |  | DH2100 CRAH-DH-22 L2 Checklist | 3d | 2026-01-27 | 2026-01-29 | QTS-45721, QTS-24311, QTS-23981, QTS-24321 | 35d | 15d | UMAS |  |  |
| DC1-CRAH-L2-1220 |  | DH2100 CRAH-DH-23 L2 Checklist | 3d | 2026-01-27 | 2026-01-29 | QTS-45721, QTS-24311, QTS-23981, QTS-24321 | 35d | 15d | UMAS |  |  |
| DC1-CRAH-L2-1230 |  | DH2100 CRAH-DH-24 L2 Checklist | 3d | 2026-01-27 | 2026-01-29 | QTS-45721, QTS-24311, QTS-23981, QTS-24321 | 35d | 18d | UMAS |  |  |
| DC1-CRAH-L2-1240 |  | DH2100 CRAH-DH-25 L2 Checklist | 3d | 2026-01-27 | 2026-01-29 | QTS-45721, QTS-24311, QTS-23981, QTS-24321 | 35d | 21d | UMAS |  |  |
| DC1-CRAH-L2-1250 |  | DH2100 CRAH-DH-26 L2 Checklist | 3d | 2026-01-27 | 2026-01-29 | QTS-45721, QTS-24311, QTS-23981, QTS-24321 | 35d | 24d | UMAS |  |  |
| DC1-CRAH-L2-1260 |  | DH2100 CRAH-DH-27 L2 Checklist | 3d | 2026-01-27 | 2026-01-29 | QTS-45721, QTS-24311, QTS-23981, QTS-24321 | 35d | 21d | UMAS |  |  |
| DC1-CRAH-L2-1270 |  | DH2100 CRAH-DH-28 L2 Checklist | 3d | 2026-01-27 | 2026-01-29 | QTS-45721, QTS-24311, QTS-23981, QTS-24321 | 35d | 24d | UMAS |  |  |
| DC1-CRAH-L2-1280 |  | DH2100 CRAH-EG2102-01 L2 Checklist | 3d | 2026-01-27 | 2026-01-29 | QTS-45721, QTS-46431, QTS-23981, QTS-24321 | 35d | 21d | VER |  |  |
| DC1-CRAH-L2-1290 |  | DH2100 CRAH-EG2102-02 L2 Checklist | 3d | 2026-01-27 | 2026-01-29 | QTS-45721, QTS-46431, QTS-23981, QTS-24321 | 35d | 15d | VER |  |  |
| DC1-CRAH-L2-1300 |  | DH2100 CRAH-EG2102-03 L2 Checklist | 3d | 2026-01-27 | 2026-01-29 | QTS-45721, QTS-46431, QTS-23981, QTS-24321 | 35d | 15d | VER |  |  |
| DC1-CRAH-L2-1310 |  | DH2100 CRAH-EG2102-04 L2 Checklist | 3d | 2026-01-27 | 2026-01-29 | QTS-45721, QTS-46431, QTS-23981, QTS-24321 | 35d | 12d | VER |  |  |
| DC1-DOAS-L2-1000 |  | DH2100 DOAS-01 L2 Checklist | 3d | 2026-02-05 | 2026-02-09 | QTS-45711, QTS-100180 | 28d | 5d | TAS |  |  |
| DC1-DOAS-L2-1010 |  | DH2100 DOAS-02 L2 Checklist | 3d | 2026-02-05 | 2026-02-09 | QTS-45711, QTS-100180 | 28d | 17d | TAS |  |  |

Notes:
- DC1-CHLR-L2-1000: Steps: EC Installation Checklist; MC Installation Checklist; CC Installation Checklist; Vendor Pre-Energization Checklist; CXA Pre-Energization Inspection; PEI/Clean-Walk
- DC1-CHLR-L2-1010: Steps: EC Installation Checklist; MC Installation Checklist; CC Installation Checklist; Vendor Pre-Energization Checklist; CXA Pre-Energization Inspection; PEI/Clean-Walk
- DC1-CHLR-L2-1040: Steps: EC Installation Checklist; MC Installation Checklist; CC Installation Checklist; Vendor Pre-Energization Checklist; CXA Pre-Energization Inspection; PEI/Clean-Walk
- DC1-CHLR-L2-1020: Steps: EC Installation Checklist; MC Installation Checklist; CC Installation Checklist; Vendor Pre-Energization Checklist; CXA Pre-Energization Inspection; PEI/Clean-Walk
- DC1-CHLR-L2-1050: Steps: EC Installation Checklist; MC Installation Checklist; CC Installation Checklist; Vendor Pre-Energization Checklist; CXA Pre-Energization Inspection; PEI/Clean-Walk
- DC1-CHLR-L2-1030: Steps: EC Installation Checklist; MC Installation Checklist; CC Installation Checklist; Vendor Pre-Energization Checklist; CXA Pre-Energization Inspection; PEI/Clean-Walk
- DC1-CHLR-L2-1060: Steps: EC Installation Checklist; MC Installation Checklist; CC Installation Checklist; Vendor Pre-Energization Checklist; CXA Pre-Energization Inspection; PEI/Clean-Walk
- DC1-CHWP-L2-Cx-1000: Steps: EC Installation Checklist; MC Installation Checklist; CC Installation Checklist; Vendor Pre-Energization Checklist; CXA Pre-Energization Inspection; PEI/Clean-Walk
- DC1-CHWP-L2-Cx-1030: Steps: EC Installation Checklist; MC Installation Checklist; CC Installation Checklist; Vendor Pre-Energization Checklist; CXA Pre-Energization Inspection; PEI/Clean-Walk
- DC1-CHWP-L2-Cx-1010: Steps: EC Installation Checklist; MC Installation Checklist; CC Installation Checklist; Vendor Pre-Energization Checklist; CXA Pre-Energization Inspection; PEI/Clean-Walk
- DC1-CHWP-L2-Cx-1020: Steps: EC Installation Checklist; MC Installation Checklist; CC Installation Checklist; Vendor Pre-Energization Checklist; CXA Pre-Energization Inspection; PEI/Clean-Walk
- DC1-CHWP-L2-Cx-1040: Steps: EC Installation Checklist; MC Installation Checklist; CC Installation Checklist; Vendor Pre-Energization Checklist; CXA Pre-Energization Inspection; PEI/Clean-Walk
- DC1-CHWP-L2-Cx-1050: Steps: EC Installation Checklist; MC Installation Checklist; CC Installation Checklist; Vendor Pre-Energization Checklist; CXA Pre-Energization Inspection; PEI/Clean-Walk
- DC1-CHWP-L2-Cx-1060: Steps: EC Installation Checklist; MC Installation Checklist; CC Installation Checklist; Vendor Pre-Energization Checklist; CXA Pre-Energization Inspection; PEI/Clean-Walk
- DC1-CRAH-L2-1000: Steps: EC Installation Checklist; MC Installation Checklist; CC Installation Checklist; Vendor Pre-Energization Checklist; CXA Pre-Energization Inspection; PEI/Clean-Walk
- DC1-CRAH-L2-1010: Steps: EC Installation Checklist; MC Installation Checklist; CC Installation Checklist; Vendor Pre-Energization Checklist; CXA Pre-Energization Inspection; PEI/Clean-Walk
- DC1-CRAH-L2-1020: Steps: EC Installation Checklist; MC Installation Checklist; CC Installation Checklist; Vendor Pre-Energization Checklist; CXA Pre-Energization Inspection; PEI/Clean-Walk
- DC1-CRAH-L2-1030: Steps: EC Installation Checklist; MC Installation Checklist; CC Installation Checklist; Vendor Pre-Energization Checklist; CXA Pre-Energization Inspection; PEI/Clean-Walk
- DC1-CRAH-L2-1040: Steps: EC Installation Checklist; MC Installation Checklist; CC Installation Checklist; Vendor Pre-Energization Checklist; CXA Pre-Energization Inspection; PEI/Clean-Walk
- DC1-CRAH-L2-1050: Steps: EC Installation Checklist; MC Installation Checklist; CC Installation Checklist; Vendor Pre-Energization Checklist; CXA Pre-Energization Inspection; PEI/Clean-Walk
- DC1-CRAH-L2-1060: Steps: EC Installation Checklist; MC Installation Checklist; CC Installation Checklist; Vendor Pre-Energization Checklist; CXA Pre-Energization Inspection; PEI/Clean-Walk
- DC1-CRAH-L2-1070: Steps: EC Installation Checklist; MC Installation Checklist; CC Installation Checklist; Vendor Pre-Energization Checklist; CXA Pre-Energization Inspection; PEI/Clean-Walk
- DC1-CRAH-L2-1080: Steps: EC Installation Checklist; MC Installation Checklist; CC Installation Checklist; Vendor Pre-Energization Checklist; CXA Pre-Energization Inspection; PEI/Clean-Walk
- DC1-CRAH-L2-1090: Steps: EC Installation Checklist; MC Installation Checklist; CC Installation Checklist; Vendor Pre-Energization Checklist; CXA Pre-Energization Inspection; PEI/Clean-Walk
- DC1-CRAH-L2-1100: Steps: EC Installation Checklist; MC Installation Checklist; CC Installation Checklist; Vendor Pre-Energization Checklist; CXA Pre-Energization Inspection; PEI/Clean-Walk
- DC1-CRAH-L2-1110: Steps: EC Installation Checklist; MC Installation Checklist; CC Installation Checklist; Vendor Pre-Energization Checklist; CXA Pre-Energization Inspection; PEI/Clean-Walk
- DC1-CRAH-L2-1120: Steps: EC Installation Checklist; MC Installation Checklist; CC Installation Checklist; Vendor Pre-Energization Checklist; CXA Pre-Energization Inspection; PEI/Clean-Walk
- DC1-CRAH-L2-1130: Steps: EC Installation Checklist; MC Installation Checklist; CC Installation Checklist; Vendor Pre-Energization Checklist; CXA Pre-Energization Inspection; PEI/Clean-Walk
- DC1-CRAH-L2-1140: Steps: EC Installation Checklist; MC Installation Checklist; CC Installation Checklist; Vendor Pre-Energization Checklist; CXA Pre-Energization Inspection; PEI/Clean-Walk
- DC1-CRAH-L2-1150: Steps: EC Installation Checklist; MC Installation Checklist; CC Installation Checklist; Vendor Pre-Energization Checklist; CXA Pre-Energization Inspection; PEI/Clean-Walk
- DC1-CRAH-L2-1160: Steps: EC Installation Checklist; MC Installation Checklist; CC Installation Checklist; Vendor Pre-Energization Checklist; CXA Pre-Energization Inspection; PEI/Clean-Walk
- DC1-CRAH-L2-1170: Steps: EC Installation Checklist; MC Installation Checklist; CC Installation Checklist; Vendor Pre-Energization Checklist; CXA Pre-Energization Inspection; PEI/Clean-Walk
- DC1-CRAH-L2-1180: Steps: EC Installation Checklist; MC Installation Checklist; CC Installation Checklist; Vendor Pre-Energization Checklist; CXA Pre-Energization Inspection; PEI/Clean-Walk
- DC1-CRAH-L2-1190: Steps: EC Installation Checklist; MC Installation Checklist; CC Installation Checklist; Vendor Pre-Energization Checklist; CXA Pre-Energization Inspection; PEI/Clean-Walk
- DC1-CRAH-L2-1200: Steps: EC Installation Checklist; MC Installation Checklist; CC Installation Checklist; Vendor Pre-Energization Checklist; CXA Pre-Energization Inspection; PEI/Clean-Walk
- DC1-CRAH-L2-1210: Steps: EC Installation Checklist; MC Installation Checklist; CC Installation Checklist; Vendor Pre-Energization Checklist; CXA Pre-Energization Inspection; PEI/Clean-Walk
- DC1-CRAH-L2-1220: Steps: EC Installation Checklist; MC Installation Checklist; CC Installation Checklist; Vendor Pre-Energization Checklist; CXA Pre-Energization Inspection; PEI/Clean-Walk
- DC1-CRAH-L2-1230: Steps: EC Installation Checklist; MC Installation Checklist; CC Installation Checklist; Vendor Pre-Energization Checklist; CXA Pre-Energization Inspection; PEI/Clean-Walk
- DC1-CRAH-L2-1240: Steps: EC Installation Checklist; MC Installation Checklist; CC Installation Checklist; Vendor Pre-Energization Checklist; CXA Pre-Energization Inspection; PEI/Clean-Walk
- DC1-CRAH-L2-1250: Steps: EC Installation Checklist; MC Installation Checklist; CC Installation Checklist; Vendor Pre-Energization Checklist; CXA Pre-Energization Inspection; PEI/Clean-Walk
- DC1-CRAH-L2-1260: Steps: EC Installation Checklist; MC Installation Checklist; CC Installation Checklist; Vendor Pre-Energization Checklist; CXA Pre-Energization Inspection; PEI/Clean-Walk
- DC1-CRAH-L2-1270: Steps: EC Installation Checklist; MC Installation Checklist; CC Installation Checklist; Vendor Pre-Energization Checklist; CXA Pre-Energization Inspection; PEI/Clean-Walk
- DC1-CRAH-L2-1280: Steps: EC Installation Checklist; MC Installation Checklist; CC Installation Checklist; Vendor Pre-Energization Checklist; CXA Pre-Energization Inspection; PEI/Clean-Walk
- DC1-CRAH-L2-1290: Steps: EC Installation Checklist; MC Installation Checklist; CC Installation Checklist; Vendor Pre-Energization Checklist; CXA Pre-Energization Inspection; PEI/Clean-Walk
- DC1-CRAH-L2-1300: Steps: EC Installation Checklist; MC Installation Checklist; CC Installation Checklist; Vendor Pre-Energization Checklist; CXA Pre-Energization Inspection; PEI/Clean-Walk
- DC1-CRAH-L2-1310: Steps: EC Installation Checklist; MC Installation Checklist; CC Installation Checklist; Vendor Pre-Energization Checklist; CXA Pre-Energization Inspection; PEI/Clean-Walk
- DC1-DOAS-L2-1000: Steps: EC Installation Checklist; MC Installation Checklist; CC Installation Checklist; Vendor Pre-Energization Checklist; CXA Pre-Energization Inspection; PEI/Clean-Walk
- DC1-DOAS-L2-1010: Steps: EC Installation Checklist; MC Installation Checklist; CC Installation Checklist; Vendor Pre-Energization Checklist; CXA Pre-Energization Inspection; PEI/Clean-Walk

| ID | WBS | Activity | Duration | Start | Finish | Predecessors | Total float | Free float | Layton Responsible Party | Vendor Responsible Party |
| --- | --- | --- | --- | --- | --- | --- | --- | --- | --- | --- |
|  | 03 | **Data Hall 2100 Cx L3** |  | 2026-01-29 | 2026-05-26 |  |  |  |  |  |
|  | 01 | **DC1-DH2100 Generators Cx L3** |  | 2026-02-23 | 2026-03-24 |  |  |  |  |  |
|  | 01 | **DC1-DH2100-GEN-A21 Cx L3** |  | 2026-02-23 | 2026-02-26 |  |  |  |  |  |
| DC1-GEN-L3-CX-1000 |  | DC1-GEN-A21 FTE | 1d | 2026-02-23 | 2026-02-23 | DC1-GEN-L2-1000, DC1-SWD-L3-CX-1000 | 24d | 0d | Riley Warring | ROS |
| DC1-GEN-L3-CX-1010 |  | DC1-GEN-A21 L3 Startup | 2d | 2026-02-24 | 2026-02-25 | DC1-GEN-L3-CX-1000 | 24d | 0d | Riley Warring | HLT |
| DC1-GEN-L3-CX-1020 |  | DC1-GEN-A21 BMS/EPMS | 1d | 2026-02-26 | 2026-02-26 | DC1-GEN-L3-CX-1010 | 24d | 18d | Riley Warring | PRM |
|  | 02 | **DC1-DH2100-GEN-B21 Cx L3** |  | 2026-02-26 | 2026-03-03 |  |  |  |  |  |
| DC1-GEN-L3-CX-1030 |  | DC1-GEN-B21 FTE | 1d | 2026-02-26 | 2026-02-26 | DC1-GEN-L2-1010, DC1-SWD-L3-CX-1030 | 21d | 0d | Riley Warring | ROS |
| DC1-GEN-L3-CX-1040 |  | DC1-GEN-B21 L3 Startup | 2d | 2026-02-27 | 2026-03-02 | DC1-GEN-L3-CX-1030 | 21d | 0d | Riley Warring | HLT |
| DC1-GEN-L3-CX-1050 |  | DC1-GEN-B21 BMS/EPMS | 1d | 2026-03-03 | 2026-03-03 | DC1-GEN-L3-CX-1040 | 21d | 15d | Riley Warring | PRM |
|  | 03 | **DC1-DH2100-GEN-C21 Cx L3** |  | 2026-03-03 | 2026-03-06 |  |  |  |  |  |
| DC1-GEN-L3-CX-1060 |  | DC1-GEN-C21 FTE | 1d | 2026-03-03 | 2026-03-03 | DC1-GEN-L2-1020, DC1-SWD-L3-CX-1060 | 18d | 0d | Riley Warring | ROS |
| DC1-GEN-L3-CX-1070 |  | DC1-GEN-C21 L3 Startup | 2d | 2026-03-04 | 2026-03-05 | DC1-GEN-L3-CX-1060 | 18d | 0d | Riley Warring | HLT |
| DC1-GEN-L3-CX-1080 |  | DC1-GEN-C21 BMS/EPMS | 1d | 2026-03-06 | 2026-03-06 | DC1-GEN-L3-CX-1070 | 18d | 12d | Riley Warring | PRM |
|  | 04 | **DC1-DH2100-GEN-D21 Cx L3** |  | 2026-03-06 | 2026-03-11 |  |  |  |  |  |
| DC1-GEN-L3-CX-1090 |  | DC1-GEN-D21 FTE | 1d | 2026-03-06 | 2026-03-06 | DC1-GEN-L2-1030, DC1-SWD-L3-CX-1090 | 15d | 0d | Riley Warring | ROS |
| DC1-GEN-L3-CX-1100 |  | DC1-GEN-D21 L3 Startup | 2d | 2026-03-09 | 2026-03-10 | DC1-GEN-L3-CX-1090 | 15d | 0d | Riley Warring | HLT |
| DC1-GEN-L3-CX-1110 |  | DC1-GEN-D21 BMS/EPMS | 1d | 2026-03-11 | 2026-03-11 | DC1-GEN-L3-CX-1100 | 15d | 9d | Riley Warring | PRM |
|  | 05 | **DC1-DH2100-GEN-E21 Cx L3** |  | 2026-03-11 | 2026-03-16 |  |  |  |  |  |
| DC1-GEN-L3-CX-1120 |  | DC1-GEN-E21 FTE | 1d | 2026-03-11 | 2026-03-11 | DC1-GEN-L2-1040, DC1-SWD-L3-CX-1120 | 12d | 0d | Riley Warring | ROS |
| DC1-GEN-L3-CX-1130 |  | DC1-GEN-E21 L3 Startup | 2d | 2026-03-12 | 2026-03-13 | DC1-GEN-L3-CX-1120 | 12d | 0d | Riley Warring | HLT |
| DC1-GEN-L3-CX-1140 |  | DC1-GEN-E21 BMS/EPMS | 1d | 2026-03-16 | 2026-03-16 | DC1-GEN-L3-CX-1130 | 12d | 6d | Riley Warring | PRM |
|  | 06 | **DC1-DH2100-GEN-F21 Cx L3** |  | 2026-03-16 | 2026-03-19 |  |  |  |  |  |
| DC1-GEN-L3-CX-1150 |  | DC1-GEN-F21 FTE | 1d | 2026-03-16 | 2026-03-16 | DC1-GEN-L2-1050, DC1-SWD-L3-CX-1150 | 9d | 0d | Riley Warring | ROS |
| DC1-GEN-L3-CX-1160 |  | DC1-GEN-F21 L3 Startup | 2d | 2026-03-17 | 2026-03-18 | DC1-GEN-L3-CX-1150 | 9d | 0d | Riley Warring | HLT |
| DC1-GEN-L3-CX-1170 |  | DC1-GEN-F21 BMS/EPMS | 1d | 2026-03-19 | 2026-03-19 | DC1-GEN-L3-CX-1160 | 9d | 3d | Riley Warring | PRM |

Notes:
- DC1-GEN-L3-CX-1010: Steps: EC Startup Report; Vendor Startup
- DC1-GEN-L3-CX-1040: Steps: EC Startup Report; Vendor Startup
- DC1-GEN-L3-CX-1070: Steps: EC Startup Report; Vendor Startup
- DC1-GEN-L3-CX-1100: Steps: EC Startup Report; Vendor Startup
- DC1-GEN-L3-CX-1130: Steps: EC Startup Report; Vendor Startup
- DC1-GEN-L3-CX-1160: Steps: EC Startup Report; Vendor Startup

| ID | WBS | Activity | Duration | Start | Finish | Predecessors | Total float | Free float | Layton Responsible Party | Vendor Responsible Party | Notes |
| --- | --- | --- | --- | --- | --- | --- | --- | --- | --- | --- | --- |
|  | 07 | **DC1-DH2100-GEN-R21 Cx L3** |  | 2026-03-19 | 2026-03-24 |  |  |  |  |  |  |
| DC1-GEN-L3-CX-1180 |  | DC1-GEN-R21 FTE | 1d | 2026-03-19 | 2026-03-19 | DC1-GEN-L2-1060, DC1-SWD-L3-CX-1180 | 6d | 0d | Riley Warring | ROS |  |
| DC1-GEN-L3-CX-1190 |  | DC1-GEN-R21 L3 Startup | 2d | 2026-03-20 | 2026-03-23 | DC1-GEN-L3-CX-1180 | 6d | 0d | Riley Warring | HLT |  |
| DC1-GEN-L3-CX-1200 |  | DC1-GEN-R21 BMS/EPMS | 1d | 2026-03-24 | 2026-03-24 | DC1-GEN-L3-CX-1190 | 6d | 0d | Riley Warring | PRM |  |
|  | 02 | **DC1-DH2100 MV XFMRs Cx L3** |  | 2026-01-29 | 2026-02-13 |  |  |  |  |  |  |
|  | 01 | **DC1-DH2100 MV-XFMR-A21 Cx L3** |  | 2026-02-10 | 2026-02-13 |  |  |  |  |  |  |
| DC1-XFM-L3-CX-1000 |  | DC1-XFMR-A21 FTE | 1d | 2026-02-10 | 2026-02-10 | DC1-XFMR-L2-1000, DC1-SWD-L2-1000, DC1-XFMR-L2-1050, QTS-1101 | 3d | 0d |  | ROS | MVG FTE Pred |
| DC1-XFM-L3-CX-1010 |  | DC1-XFMR-A21 L3 Startup | 2d | 2026-02-11 | 2026-02-12 | DC1-XFM-L3-CX-1000 | 33d | 0d |  | VTC |  |
| DC1-XFM-L3-CX-1020 |  | DC1-XFMR-A21 BMS/EPMS | 1d | 2026-02-13 | 2026-02-13 | DC1-XFM-L3-CX-1010 | 33d | 27d |  | PRM |  |
|  | 02 | **DC1-DH2100 MV-XFMR-B21 Cx L3** |  | 2026-01-29 | 2026-02-03 |  |  |  |  |  |  |
| DC1-XFM-L3-CX-1030 |  | DC1-XFMR-B21 FTE | 1d | 2026-01-29 | 2026-01-29 | DC1-XFMR-L2-1010, DC1-SWD-L2-1010, DC1-SWD-L2-1050, DC1-XFMR-L2-1050 | 11d | 0d |  | ROS | MVG FTE Pred |
| DC1-XFM-L3-CX-1040 |  | DC1-XFMR-B21 L3 Startup | 2d | 2026-01-30 | 2026-02-02 | DC1-XFM-L3-CX-1030 | 41d | 0d |  | VTC |  |
| DC1-XFM-L3-CX-1050 |  | DC1-XFMR-B21 BMS/EPMS | 1d | 2026-02-03 | 2026-02-03 | DC1-XFM-L3-CX-1040 | 41d | 35d |  | PRM |  |
|  | 03 | **DC1-DH2100 MV-XFMR-C21 Cx L3** |  | 2026-01-29 | 2026-02-03 |  |  |  |  |  |  |
| DC1-XFM-L3-CX-1060 |  | DC1-XFMR-C21 FTE | 1d | 2026-01-29 | 2026-01-29 | DC1-XFMR-L2-1020, DC1-SWD-L2-1020, DC1-SWD-L2-1050, DC1-XFMR-L2-1050 | 11d | 0d |  | ROS | MVG FTE Pred |
| DC1-XFM-L3-CX-1070 |  | DC1-XFMR-C21 L3 Startup | 2d | 2026-01-30 | 2026-02-02 | DC1-XFM-L3-CX-1060 | 41d | 0d |  | VTC |  |
| DC1-XFM-L3-CX-1080 |  | DC1-XFMR-C21 BMS/EPMS | 1d | 2026-02-03 | 2026-02-03 | DC1-XFM-L3-CX-1070 | 41d | 35d |  | PRM |  |
|  | 04 | **DC1-DH2100 MV-XFMR-D21 Cx L3** |  | 2026-01-29 | 2026-02-03 |  |  |  |  |  |  |
| DC1-XFM-L3-CX-1090 |  | DC1-XFMR-D21 FTE | 1d | 2026-01-29 | 2026-01-29 | DC1-XFMR-L2-1030, DC1-SWD-L2-1030, DC1-SWD-L2-1050, DC1-XFMR-L2-1050 | 11d | 0d |  | ROS | MVG FTE Pred |
| DC1-XFM-L3-CX-1100 |  | DC1-XFMR-D21 L3 Startup | 2d | 2026-01-30 | 2026-02-02 | DC1-XFM-L3-CX-1090 | 41d | 0d |  | VTC |  |
| DC1-XFM-L3-CX-1110 |  | DC1-XFMR-D21 BMS/EPMS | 1d | 2026-02-03 | 2026-02-03 | DC1-XFM-L3-CX-1100 | 41d | 35d |  | PRM |  |
|  | 05 | **DC1-DH2100 MV-XFMR-E21 Cx L3** |  | 2026-01-29 | 2026-02-03 |  |  |  |  |  |  |
| DC1-XFM-L3-CX-1120 |  | DC1-XFMR-E21 FTE | 1d | 2026-01-29 | 2026-01-29 | DC1-XFMR-L2-1040, DC1-SWD-L2-1040, DC1-SWD-L2-1050, DC1-XFMR-L2-1050 | 11d | 0d |  | ROS | MVG FTE Pred |
| DC1-XFM-L3-CX-1130 |  | DC1-XFMR-E21 L3 Startup | 2d | 2026-01-30 | 2026-02-02 | DC1-XFM-L3-CX-1120 | 41d | 0d |  | VTC |  |
| DC1-XFM-L3-CX-1140 |  | DC1-XFMR-E21 BMS/EPMS | 1d | 2026-02-03 | 2026-02-03 | DC1-XFM-L3-CX-1130 | 41d | 35d |  | PRM |  |

Notes:
- DC1-GEN-L3-CX-1190: Steps: EC Startup Report; Vendor Startup
- DC1-XFM-L3-CX-1010: Steps: EC Startup Report; Vendor Startup
- DC1-XFM-L3-CX-1040: Steps: EC Startup Report; Vendor Startup
- DC1-XFM-L3-CX-1070: Steps: EC Startup Report; Vendor Startup
- DC1-XFM-L3-CX-1100: Steps: EC Startup Report; Vendor Startup
- DC1-XFM-L3-CX-1130: Steps: EC Startup Report; Vendor Startup

| ID | WBS | Activity | Duration | Start | Finish | Predecessors | Total float | Free float | Notes | Vendor Responsible Party | Layton Responsible Party |
| --- | --- | --- | --- | --- | --- | --- | --- | --- | --- | --- | --- |
|  | 06 | **DC1-DH2100 MV-XFMR-F21 Cx L3** |  | 2026-01-29 | 2026-02-03 |  |  |  |  |  |  |
| DC1-XFM-L3-CX-1150 |  | DC1-XFMR-F21 FTE | 1d | 2026-01-29 | 2026-01-29 | DC1-XFMR-L2-1050, DC1-SWD-L2-1050, DC1-SWD-L2-1050 FF, DC1-XFMR-L2-1050 FF | 11d | 0d | MVG FTE Pred | ROS |  |
| DC1-XFM-L3-CX-1160 |  | DC1-XFMR-F21 L3 Startup | 2d | 2026-01-30 | 2026-02-02 | DC1-XFM-L3-CX-1150 | 41d | 0d |  | VTC |  |
| DC1-XFM-L3-CX-1170 |  | DC1-XFMR-F21 BMS/EPMS | 1d | 2026-02-03 | 2026-02-03 | DC1-XFM-L3-CX-1160 | 41d | 35d |  | PRM |  |
|  | 07 | **DC1-DH2100 MV-XFMR-R21 Cx L3** |  | 2026-01-29 | 2026-02-03 |  |  |  |  |  |  |
| DC1-XFM-L3-CX-1180 |  | DC1-XFMR-R21 FTE | 1d | 2026-01-29 | 2026-01-29 | DC1-XFMR-L2-1060, DC1-SWD-L2-1060, DC1-SWD-L2-1050, DC1-XFMR-L2-1050 | 11d | 0d | MVG FTE Pred | ROS |  |
| DC1-XFM-L3-CX-1190 |  | DC1-XFMR-R21 L3 Startup | 2d | 2026-01-30 | 2026-02-02 | DC1-XFM-L3-CX-1180 | 41d | 0d |  | VTC |  |
| DC1-XFM-L3-CX-1200 |  | DC1-XFMR-R21 BMS/EPMS | 1d | 2026-02-03 | 2026-02-03 | DC1-XFM-L3-CX-1190 | 41d | 35d |  | PRM |  |
|  | 03 | **DC1-DH2100 PODS Cx L3** |  | 2026-02-12 | 2026-02-23 |  |  |  |  |  |  |
|  | 01 | **DC1-DH2100 SWDs Cx L3** |  | 2026-02-12 | 2026-02-17 |  |  |  |  |  |  |
|  | 01 | **DC1-DH2100-SWD-A21 Cx L3** |  | 2026-02-12 | 2026-02-17 |  |  |  |  |  |  |
| DC1-SWD-L3-CX-1000 |  | DC1-SWD-A21 FTE | 1d | 2026-02-12 | 2026-02-12 | QTS-1001600, DC1-SWD-L2-1000, DC1-XFM-L3-CX-1000 SS, QTS-1100 | 1d | 0d |  | ROS | Riley Warring |
| DC1-SWD-L3-CX-1010 |  | DC1-SWD-A21 L3 Startup | 2d | 2026-02-13 | 2026-02-16 | DC1-SWD-L3-CX-1000, QTS-27331 | 31d | 0d |  | SIE | Riley Warring |
| DC1-SWD-L3-CX-1020 |  | DC1-SWD-A21 BMS/EPMS | 1d | 2026-02-17 | 2026-02-17 | DC1-SWD-L3-CX-1010 | 31d | 25d |  | PRM | Riley Warring |
|  | 02 | **DC1-DH2100-SWD-B21 Cx L3** |  | 2026-02-12 | 2026-02-17 |  |  |  |  |  |  |
| DC1-SWD-L3-CX-1030 |  | DC1-SWD-B21 FTE | 1d | 2026-02-12 | 2026-02-12 | QTS-1001600, DC1-SWD-L2-1010, DC1-XFM-L3-CX-1030 SS, QTS-1100 | 1d | 0d |  | ROS | Riley Warring |
| DC1-SWD-L3-CX-1040 |  | DC1-SWD-B21 L3 Startup | 2d | 2026-02-13 | 2026-02-16 | DC1-SWD-L3-CX-1030, QTS-27331 | 31d | 0d |  | SIE | Riley Warring |
| DC1-SWD-L3-CX-1050 |  | DC1-SWD-B21 BMS/EPMS | 1d | 2026-02-17 | 2026-02-17 | DC1-SWD-L3-CX-1040 | 31d | 25d |  | PRM | Riley Warring |
|  | 03 | **DC1-DH2100-SWD-C21 Cx L3** |  | 2026-02-12 | 2026-02-17 |  |  |  |  |  |  |
| DC1-SWD-L3-CX-1060 |  | DC1-SWD-C21 FTE | 1d | 2026-02-12 | 2026-02-12 | QTS-1001600, DC1-SWD-L2-1020, DC1-XFM-L3-CX-1060 SS, QTS-1100 | 1d | 0d |  | ROS | Riley Warring |
| DC1-SWD-L3-CX-1070 |  | DC1-SWD-C21 L3 Startup | 2d | 2026-02-13 | 2026-02-16 | DC1-SWD-L3-CX-1060, QTS-27331 | 31d | 0d |  | SIE | Riley Warring |
| DC1-SWD-L3-CX-1080 |  | DC1-SWD-C21 BMS/EPMS | 1d | 2026-02-17 | 2026-02-17 | DC1-SWD-L3-CX-1070 | 31d | 25d |  | PRM | Riley Warring |
|  | 04 | **DC1-DH2100-SWD-D21 Cx L3** |  | 2026-02-12 | 2026-02-17 |  |  |  |  |  |  |
| DC1-SWD-L3-CX-1090 |  | DC1-SWD-D21 FTE | 1d | 2026-02-12 | 2026-02-12 | QTS-1001600, DC1-SWD-L2-1030, DC1-XFM-L3-CX-1090 SS, QTS-1100 | 1d | 0d |  | ROS | Riley Warring |
| DC1-SWD-L3-CX-1100 |  | DC1-SWD-D21 L3 Startup | 2d | 2026-02-13 | 2026-02-16 | DC1-SWD-L3-CX-1090, QTS-27331 | 31d | 0d |  | SIE | Riley Warring |
| DC1-SWD-L3-CX-1110 |  | DC1-SWD-D21 BMS/EPMS | 1d | 2026-02-17 | 2026-02-17 | DC1-SWD-L3-CX-1100 | 31d | 25d |  | PRM | Riley Warring |

Notes:
- DC1-XFM-L3-CX-1160: Steps: EC Startup Report; Vendor Startup
- DC1-XFM-L3-CX-1190: Steps: EC Startup Report; Vendor Startup
- DC1-SWD-L3-CX-1010: Steps: EC Startup Report; Vendor Startup
- DC1-SWD-L3-CX-1040: Steps: EC Startup Report; Vendor Startup
- DC1-SWD-L3-CX-1070: Steps: EC Startup Report; Vendor Startup
- DC1-SWD-L3-CX-1100: Steps: EC Startup Report; Vendor Startup

| ID | WBS | Activity | Duration | Start | Finish | Predecessors | Total float | Free float | Layton Responsible Party | Vendor Responsible Party | Notes |
| --- | --- | --- | --- | --- | --- | --- | --- | --- | --- | --- | --- |
|  | 05 | **DC1-DH2100-SWD-E21 Cx L3** |  | 2026-02-12 | 2026-02-17 |  |  |  |  |  |  |
| DC1-SWD-L3-CX-1120 |  | DC1-SWD-E21 FTE | 1d | 2026-02-12 | 2026-02-12 | QTS-1001600, DC1-SWD-L2-1040, DC1-XFM-L3-CX-1120 SS, QTS-1100 | 1d | 0d | Riley Warring | ROS |  |
| DC1-SWD-L3-CX-1130 |  | DC1-SWD-E21 L3 Startup | 2d | 2026-02-13 | 2026-02-16 | DC1-SWD-L3-CX-1120, QTS-27331 | 31d | 0d | Riley Warring | SIE |  |
| DC1-SWD-L3-CX-1140 |  | DC1-SWD-E21 BMS/EPMS | 1d | 2026-02-17 | 2026-02-17 | DC1-SWD-L3-CX-1130 | 31d | 25d | Riley Warring | PRM |  |
|  | 06 | **DC1-DH2100-SWD-F21 Cx L3** |  | 2026-02-12 | 2026-02-17 |  |  |  |  |  |  |
| DC1-SWD-L3-CX-1150 |  | DC1-SWD-F21 FTE | 1d | 2026-02-12 | 2026-02-12 | QTS-1001600, DC1-SWD-L2-1050, DC1-XFM-L3-CX-1150 SS, QTS-1100 | 1d | 0d | Riley Warring | ROS |  |
| DC1-SWD-L3-CX-1160 |  | DC1-SWD-F21 L3 Startup | 2d | 2026-02-13 | 2026-02-16 | DC1-SWD-L3-CX-1150, QTS-27331 | 31d | 0d | Riley Warring | SIE |  |
| DC1-SWD-L3-CX-1170 |  | DC1-SWD-F21 BMS/EPMS | 1d | 2026-02-17 | 2026-02-17 | DC1-SWD-L3-CX-1160 | 31d | 25d | Riley Warring | PRM |  |
|  | 07 | **DC1-DH2100-SWD-R21 Cx L3** |  | 2026-02-12 | 2026-02-17 |  |  |  |  |  |  |
| DC1-SWD-L3-CX-1180 |  | DC1-SWD-R21 FTE | 1d | 2026-02-12 | 2026-02-12 | QTS-1001600, DC1-SWD-L2-1060, DC1-XFM-L3-CX-1180 SS, QTS-1100 | 1d | 0d | Riley Warring | ROS |  |
| DC1-SWD-L3-CX-1190 |  | DC1-SWD-R21 L3 Startup | 2d | 2026-02-13 | 2026-02-16 | DC1-SWD-L3-CX-1180, QTS-27331 | 31d | 0d | Riley Warring | SIE |  |
| DC1-SWD-L3-CX-1200 |  | DC1-SWD-R21 BMS/EPMS | 1d | 2026-02-17 | 2026-02-17 | DC1-SWD-L3-CX-1190 | 31d | 25d | Riley Warring | PRM |  |
|  | 02 | **DC1-DH2100 MOD-01s Cx L3** |  | 2026-02-12 | 2026-02-17 |  |  |  |  |  |  |
|  | 01 | **DC1-DH2100-MOD-A21-01 Cx L3** |  | 2026-02-12 | 2026-02-17 |  |  |  |  |  |  |
| DC1-MOD1-L3-CX-1000 |  | DC1-MOD-01-A21 FTE | 1d | 2026-02-12 | 2026-02-12 | DC1-SWD-L3-CX-1000 SS | 1d | 0d | Riley Warring | ROS |  |
| DC1-MOD1-L3-CX-1010 |  | DC1-MOD-01-A21 L3 Startup | 2d | 2026-02-13 | 2026-02-16 | DC1-MOD1-L3-CX-1000 | 31d | 0d | Riley Warring | PHE | Vendor Only |
| DC1-MOD1-L3-CX-1020 |  | DC1-MOD-01-A21 BMS/EPMS | 1d | 2026-02-17 | 2026-02-17 | DC1-MOD1-L3-CX-1010 | 31d | 25d | Riley Warring | PRM |  |
|  | 02 | **DC1-DH2100-MOD-B21-01 Cx L3** |  | 2026-02-12 | 2026-02-17 |  |  |  |  |  |  |
| DC1-MOD1-L3-CX-1030 |  | DC1-MOD-01-B21 FTE | 1d | 2026-02-12 | 2026-02-12 | DC1-SWD-L3-CX-1030 SS | 1d | 0d | Riley Warring | ROS |  |
| DC1-MOD1-L3-CX-1040 |  | DC1-MOD-01-B21 L3 Startup | 2d | 2026-02-13 | 2026-02-16 | DC1-MOD1-L3-CX-1030 | 31d | 0d | Riley Warring | PHE | Vendor Only |
| DC1-MOD1-L3-CX-1050 |  | DC1-MOD-01-B21 BMS/EPMS | 1d | 2026-02-17 | 2026-02-17 | DC1-MOD1-L3-CX-1040 | 31d | 25d | Riley Warring | PRM |  |
|  | 03 | **DC1-DH2100-MOD-C21-01 Cx L3** |  | 2026-02-12 | 2026-02-17 |  |  |  |  |  |  |
| DC1-MOD1-L3-CX-1060 |  | DC1-MOD-01-C21 FTE | 1d | 2026-02-12 | 2026-02-12 | DC1-SWD-L3-CX-1060 SS | 1d | 0d | Riley Warring | ROS |  |
| DC1-MOD1-L3-CX-1070 |  | DC1-MOD-01-C21 L3 Startup | 2d | 2026-02-13 | 2026-02-16 | DC1-MOD1-L3-CX-1060 | 31d | 0d | Riley Warring | PHE | Vendor Only |
| DC1-MOD1-L3-CX-1080 |  | DC1-MOD-01-C21 BMS/EPMS | 1d | 2026-02-17 | 2026-02-17 | DC1-MOD1-L3-CX-1070 | 31d | 25d | Riley Warring | PRM |  |

Notes:
- DC1-SWD-L3-CX-1130: Steps: EC Startup Report; Vendor Startup
- DC1-SWD-L3-CX-1160: Steps: EC Startup Report; Vendor Startup
- DC1-SWD-L3-CX-1190: Steps: EC Startup Report; Vendor Startup

| ID | WBS | Activity | Duration | Start | Finish | Predecessors | Total float | Free float | Layton Responsible Party | Vendor Responsible Party | Notes |
| --- | --- | --- | --- | --- | --- | --- | --- | --- | --- | --- | --- |
|  | 04 | **DC1-DH2100-MOD-D21-01 Cx L3** |  | 2026-02-12 | 2026-02-17 |  |  |  |  |  |  |
| DC1-MOD1-L3-CX-1090 |  | DC1-MOD-01-D21 FTE | 1d | 2026-02-12 | 2026-02-12 | DC1-SWD-L3-CX-1090 SS | 1d | 0d | Riley Warring | ROS |  |
| DC1-MOD1-L3-CX-1100 |  | DC1-MOD-01-D21 L3 Startup | 2d | 2026-02-13 | 2026-02-16 | DC1-MOD1-L3-CX-1090 | 31d | 0d | Riley Warring | PHE | Vendor Only |
| DC1-MOD1-L3-CX-1110 |  | DC1-MOD-01-D21 BMS/EPMS | 1d | 2026-02-17 | 2026-02-17 | DC1-MOD1-L3-CX-1100 | 31d | 25d | Riley Warring | PRM |  |
|  | 05 | **DC1-DH2100-MOD-E21-01 Cx L3** |  | 2026-02-12 | 2026-02-17 |  |  |  |  |  |  |
| DC1-MOD1-L3-CX-1120 |  | DC1-MOD-01-E21 FTE | 1d | 2026-02-12 | 2026-02-12 | DC1-SWD-L3-CX-1120 SS | 1d | 0d | Riley Warring | ROS |  |
| DC1-MOD1-L3-CX-1130 |  | DC1-MOD-01-E21 L3 Startup | 2d | 2026-02-13 | 2026-02-16 | DC1-MOD1-L3-CX-1120 | 31d | 0d | Riley Warring | PHE | Vendor Only |
| DC1-MOD1-L3-CX-1140 |  | DC1-MOD-01-E21 BMS/EPMS | 1d | 2026-02-17 | 2026-02-17 | DC1-MOD1-L3-CX-1130 | 31d | 25d | Riley Warring | PRM |  |
|  | 06 | **DC1-DH2100-MOD-F21-01 Cx L3** |  | 2026-02-12 | 2026-02-17 |  |  |  |  |  |  |
| DC1-MOD1-L3-CX-1150 |  | DC1-MOD-01-F21 FTE | 1d | 2026-02-12 | 2026-02-12 | DC1-SWD-L3-CX-1150 SS | 1d | 0d | Riley Warring | ROS |  |
| DC1-MOD1-L3-CX-1160 |  | DC1-MOD-01-F21 L3 Startup | 2d | 2026-02-13 | 2026-02-16 | DC1-MOD1-L3-CX-1150 | 31d | 0d | Riley Warring | PHE | Vendor Only |
| DC1-MOD1-L3-CX-1170 |  | DC1-MOD-01-F21 BMS/EPMS | 1d | 2026-02-17 | 2026-02-17 | DC1-MOD1-L3-CX-1160 | 31d | 25d | Riley Warring | PRM |  |
|  | 07 | **DC1-DH2100-MOD-R21-01 Cx L3** |  | 2026-02-12 | 2026-02-17 |  |  |  |  |  |  |
| DC1-MOD1-L3-CX-1180 |  | DC1-MOD-01-R21 FTE | 1d | 2026-02-12 | 2026-02-12 | DC1-SWD-L3-CX-1180 SS | 1d | 0d | Riley Warring | ROS |  |
| DC1-MOD1-L3-CX-1190 |  | DC1-MOD-01-R21 L3 Startup | 2d | 2026-02-13 | 2026-02-16 | DC1-MOD1-L3-CX-1180 | 31d | 0d | Riley Warring | PHE | Vendor Only |
| DC1-MOD1-L3-CX-1200 |  | DC1-MOD-01-R21 BMS/EPMS | 1d | 2026-02-17 | 2026-02-17 | DC1-MOD1-L3-CX-1190 | 31d | 25d | Riley Warring | PRM |  |
|  | 03 | **DC1-DH2100 UPS-M Cx L3** |  | 2026-02-18 | 2026-02-23 |  |  |  |  |  |  |
|  | 01 | **DC1-DH2100-UPS-M-A21-01 Cx L3** |  | 2026-02-18 | 2026-02-23 |  |  |  |  |  |  |
| DC1-UPSM-L3-CX-1000 |  | DC1-UPS-M-A21 FTE | 1d | 2026-02-18 | 2026-02-18 | DC1-UPS-M-L2-1000, DC1-COMP-L3-CX-1010, DC1-FAN-L3-CX-1010, DC1-MOD1-L3-CX-1000 | 1d | 0d | Riley Warring | ROS |  |
| DC1-UPSM-L3-CX-1010 |  | DC1-UPS-M-A21 L3 Startup | 2d | 2026-02-19 | 2026-02-20 | DC1-UPSM-L3-CX-1000 | 27d | 0d | Riley Warring | VER |  |
| DC1-UPSM-L3-CX-1020 |  | DC1-UPS-M-A21 BMS/EPMS | 1d | 2026-02-23 | 2026-02-23 | DC1-UPSM-L3-CX-1010 | 27d | 21d | Riley Warring | PRM |  |
|  | 02 | **DC1-DH2100-UPS-M-B21-01 Cx L3** |  | 2026-02-18 | 2026-02-23 |  |  |  |  |  |  |
| DC1-UPSM-L3-CX-1030 |  | DC1-UPS-M-B21 FTE | 1d | 2026-02-18 | 2026-02-18 | DC1-UPS-M-L2-1010, DC1-COMP-L3-CX-1040, DC1-FAN-L3-CX-1040, DC1-MOD1-L3-CX-1030 | 1d | 0d | Riley Warring | ROS |  |
| DC1-UPSM-L3-CX-1040 |  | DC1-UPS-M-B21 L3 Startup | 2d | 2026-02-19 | 2026-02-20 | DC1-UPSM-L3-CX-1030 | 27d | 0d | Riley Warring | VER |  |
| DC1-UPSM-L3-CX-1050 |  | DC1-UPS-M-B21 BMS/EPMS | 1d | 2026-02-23 | 2026-02-23 | DC1-UPSM-L3-CX-1040 | 27d | 21d | Riley Warring | PRM |  |

Notes:
- DC1-UPSM-L3-CX-1010: Steps: EC Startup Report; Vendor Startup
- DC1-UPSM-L3-CX-1040: Steps: EC Startup Report; Vendor Startup

| ID | WBS | Activity | Duration | Start | Finish | Predecessors | Total float | Free float | Layton Responsible Party | Vendor Responsible Party | Notes |
| --- | --- | --- | --- | --- | --- | --- | --- | --- | --- | --- | --- |
|  | 03 | **DC1-DH2100-UPS-M-C21-01 Cx L3** |  | 2026-02-18 | 2026-02-23 |  |  |  |  |  |  |
| DC1-UPSM-L3-CX-1060 |  | DC1-UPS-M-C21 FTE | 1d | 2026-02-18 | 2026-02-18 | DC1-UPS-M-L2-1020, DC1-COMP-L3-CX-1070, DC1-FAN-L3-CX-1070, DC1-MOD1-L3-CX-1060 | 1d | 0d | Riley Warring | ROS |  |
| DC1-UPSM-L3-CX-1070 |  | DC1-UPS-M-C21 L3 Startup | 2d | 2026-02-19 | 2026-02-20 | DC1-UPSM-L3-CX-1060 | 27d | 0d | Riley Warring | VER |  |
| DC1-UPSM-L3-CX-1080 |  | DC1-UPS-M-C21 BMS/EPMS | 1d | 2026-02-23 | 2026-02-23 | DC1-UPSM-L3-CX-1070 | 27d | 21d | Riley Warring | PRM |  |
|  | 04 | **DC1-DH2100-UPS-M-D21-01 Cx L3** |  | 2026-02-18 | 2026-02-23 |  |  |  |  |  |  |
| DC1-UPSM-L3-CX-1090 |  | DC1-UPS-M-D21 FTE | 1d | 2026-02-18 | 2026-02-18 | DC1-UPS-M-L2-1030, DC1-COMP-L3-CX-1100, DC1-FAN-L3-CX-1100, DC1-MOD1-L3-CX-1090 | 1d | 0d | Riley Warring | ROS |  |
| DC1-UPSM-L3-CX-1100 |  | DC1-UPS-M-D21 L3 Startup | 2d | 2026-02-19 | 2026-02-20 | DC1-UPSM-L3-CX-1090 | 27d | 0d | Riley Warring | VER |  |
| DC1-UPSM-L3-CX-1110 |  | DC1-UPS-M-D21 BMS/EPMS | 1d | 2026-02-23 | 2026-02-23 | DC1-UPSM-L3-CX-1100 | 27d | 21d | Riley Warring | PRM |  |
|  | 05 | **DC1-DH2100-UPS-M-E21-01 Cx L3** |  | 2026-02-18 | 2026-02-23 |  |  |  |  |  |  |
| DC1-UPSM-L3-CX-1120 |  | DC1-UPS-M-E21 FTE | 1d | 2026-02-18 | 2026-02-18 | DC1-UPS-M-L2-1040, DC1-COMP-L3-CX-1130, DC1-FAN-L3-CX-1130, DC1-MOD1-L3-CX-1120 | 1d | 0d | Riley Warring | ROS |  |
| DC1-UPSM-L3-CX-1130 |  | DC1-UPS-M-E21 L3 Startup | 2d | 2026-02-19 | 2026-02-20 | DC1-UPSM-L3-CX-1120 | 27d | 0d | Riley Warring | VER |  |
| DC1-UPSM-L3-CX-1140 |  | DC1-UPS-M-E21 BMS/EPMS | 1d | 2026-02-23 | 2026-02-23 | DC1-UPSM-L3-CX-1130 | 27d | 21d | Riley Warring | PRM |  |
|  | 06 | **DC1-DH2100-UPS-M-F21-01 Cx L3** |  | 2026-02-18 | 2026-02-23 |  |  |  |  |  |  |
| DC1-UPSM-L3-CX-1150 |  | DC1-UPS-M-F21 FTE | 1d | 2026-02-18 | 2026-02-18 | DC1-UPS-M-L2-1050, DC1-COMP-L3-CX-1160, DC1-FAN-L3-CX-1160, DC1-MOD1-L3-CX-1150 | 1d | 0d | Riley Warring | ROS |  |
| DC1-UPSM-L3-CX-1160 |  | DC1-UPS-M-F21 L3 Startup | 2d | 2026-02-19 | 2026-02-20 | DC1-UPSM-L3-CX-1150 | 27d | 0d | Riley Warring | VER |  |
| DC1-UPSM-L3-CX-1170 |  | DC1-UPS-M-F21 BMS/EPMS | 1d | 2026-02-23 | 2026-02-23 | DC1-UPSM-L3-CX-1160 | 27d | 21d | Riley Warring | PRM |  |
|  | 07 | **DC1-DH2100-UPS-M-R21-01 Cx L3** |  | 2026-02-18 | 2026-02-23 |  |  |  |  |  |  |
| DC1-UPSM-L3-CX-1180 |  | DC1-UPS-M-R21 FTE | 1d | 2026-02-18 | 2026-02-18 | DC1-UPS-M-L2-1060, DC1-COMP-L3-CX-1190, DC1-FAN-L3-CX-1190, DC1-MOD1-L3-CX-1180 | 1d | 0d | Riley Warring | ROS |  |
| DC1-UPSM-L3-CX-1190 |  | DC1-UPS-M-R21 L3 Startup | 2d | 2026-02-19 | 2026-02-20 | DC1-UPSM-L3-CX-1180 | 27d | 0d | Riley Warring | VER |  |
| DC1-UPSM-L3-CX-1200 |  | DC1-UPS-M-R21 BMS/EPMS | 1d | 2026-02-23 | 2026-02-23 | DC1-UPSM-L3-CX-1190 | 27d | 21d | Riley Warring | PRM |  |
|  | 04 | **DC1-DH2100 COMPRESSOR/FAN UNITS Cx L3** |  | 2026-02-13 | 2026-02-18 |  |  |  |  |  |  |
|  | 01 | **DC1-DH2100 POD-AC UNITS A21 Cx L3** |  | 2026-02-13 | 2026-02-18 |  |  |  |  |  |  |
| DC1-COMP-L3-CX-1000 |  | DC1-COMP-A21-01 FTE (2) | 1d | 2026-02-13 | 2026-02-13 | DC1-MOD1-L3-CX-1000 | 1d | 0d | Riley Warring | ROS |  |
| DC1-FAN-L3-CX-1000 |  | DC1-FAN-A21-01 FTE (2) | 1d | 2026-02-13 | 2026-02-13 | DC1-MOD1-L3-CX-1000 | 1d | 0d | Riley Warring | ROS |  |
| DC1-COMP-L3-CX-1010 |  | DC1-COMP-A21-01 L3 Startup (2) | 2d | 2026-02-16 | 2026-02-17 | DC1-COMP-L3-CX-1000 | 1d | 0d | Riley Warring | CAP | Vendor Only |
| DC1-FAN-L3-CX-1010 |  | DC1-FAN-A21-01 L3 Startup (2) | 2d | 2026-02-16 | 2026-02-17 | DC1-FAN-L3-CX-1000 | 1d | 0d | Riley Warring | FBB | Vendor Only |
| DC1-COMP-L3-CX-1020 |  | DC1-COMP-A21-01 BMS/EPMS (2) | 1d | 2026-02-18 | 2026-02-18 | DC1-COMP-L3-CX-1010 | 30d |  | Riley Warring | PRM |  |
| DC1-FAN-L3-CX-1020 |  | DC1-FAN-A21-01 BMS/EPMS (2) | 1d | 2026-02-18 | 2026-02-18 | DC1-FAN-L3-CX-1010 | 30d |  | Riley Warring | PRM |  |

Notes:
- DC1-UPSM-L3-CX-1070: Steps: EC Startup Report; Vendor Startup
- DC1-UPSM-L3-CX-1100: Steps: EC Startup Report; Vendor Startup
- DC1-UPSM-L3-CX-1130: Steps: EC Startup Report; Vendor Startup
- DC1-UPSM-L3-CX-1160: Steps: EC Startup Report; Vendor Startup
- DC1-UPSM-L3-CX-1190: Steps: EC Startup Report; Vendor Startup

| ID | WBS | Activity | Duration | Start | Finish | Predecessors | Total float | Free float | Layton Responsible Party | Vendor Responsible Party | Notes |
| --- | --- | --- | --- | --- | --- | --- | --- | --- | --- | --- | --- |
|  | 02 | **DC1-DH2100 POD-AC UNITS B21 Cx L3** |  | 2026-02-13 | 2026-02-18 |  |  |  |  |  |  |
| DC1-COMP-L3-CX-1030 |  | DC1-COMP-B21-01 FTE (2) | 1d | 2026-02-13 | 2026-02-13 | DC1-MOD1-L3-CX-1030 | 1d | 0d | Riley Warring | ROS |  |
| DC1-FAN-L3-CX-1030 |  | DC1-FAN-B21-01 FTE (2) | 1d | 2026-02-13 | 2026-02-13 | DC1-MOD1-L3-CX-1030 | 1d | 0d | Riley Warring | ROS |  |
| DC1-COMP-L3-CX-1040 |  | DC1-COMP-B21-01 L3 Startup (2) | 2d | 2026-02-16 | 2026-02-17 | DC1-COMP-L3-CX-1030 | 1d | 0d | Riley Warring | CAP | Vendor Only |
| DC1-FAN-L3-CX-1040 |  | DC1-FAN-B21-01 L3 Startup (2) | 2d | 2026-02-16 | 2026-02-17 | DC1-FAN-L3-CX-1030 | 1d | 0d | Riley Warring | FBB | Vendor Only |
| DC1-COMP-L3-CX-1050 |  | DC1-COMP-B21-01 BMS/EPMS (2) | 1d | 2026-02-18 | 2026-02-18 | DC1-COMP-L3-CX-1040 | 30d |  | Riley Warring | PRM |  |
| DC1-FAN-L3-CX-1050 |  | DC1-FAN-B21-01 BMS/EPMS (2) | 1d | 2026-02-18 | 2026-02-18 | DC1-FAN-L3-CX-1040 | 30d |  | Riley Warring | PRM |  |
|  | 03 | **DC1-DH2100 POD-AC UNITS C21 Cx L3** |  | 2026-02-13 | 2026-02-18 |  |  |  |  |  |  |
| DC1-COMP-L3-CX-1060 |  | DC1-COMP-C21-01 FTE (2) | 1d | 2026-02-13 | 2026-02-13 | DC1-MOD1-L3-CX-1060 | 1d | 0d | Riley Warring | ROS |  |
| DC1-FAN-L3-CX-1060 |  | DC1-FAN-C21-01 FTE (2) | 1d | 2026-02-13 | 2026-02-13 | DC1-MOD1-L3-CX-1060 | 1d | 0d | Riley Warring | ROS |  |
| DC1-COMP-L3-CX-1070 |  | DC1-COMP-C21-01 L3 Startup (2) | 2d | 2026-02-16 | 2026-02-17 | DC1-COMP-L3-CX-1060 | 1d | 0d | Riley Warring | CAP | Vendor Only |
| DC1-FAN-L3-CX-1070 |  | DC1-FAN-C21-01 L3 Startup (2) | 2d | 2026-02-16 | 2026-02-17 | DC1-FAN-L3-CX-1060 | 1d | 0d | Riley Warring | FBB | Vendor Only |
| DC1-COMP-L3-CX-1080 |  | DC1-COMP-C21-01 BMS/EPMS (2) | 1d | 2026-02-18 | 2026-02-18 | DC1-COMP-L3-CX-1070 | 30d |  | Riley Warring | PRM |  |
| DC1-FAN-L3-CX-1080 |  | DC1-FAN-C21-01 BMS/EPMS (2) | 1d | 2026-02-18 | 2026-02-18 | DC1-FAN-L3-CX-1070 | 30d |  | Riley Warring | PRM |  |
|  | 04 | **DC1-DH2100 POD-AC UNITS D21 Cx L3** |  | 2026-02-13 | 2026-02-18 |  |  |  |  |  |  |
| DC1-COMP-L3-CX-1090 |  | DC1-COMP-D21-01 FTE (2) | 1d | 2026-02-13 | 2026-02-13 | DC1-MOD1-L3-CX-1090 | 1d | 0d | Riley Warring | ROS |  |
| DC1-FAN-L3-CX-1090 |  | DC1-FAN-D21-01 FTE (2) | 1d | 2026-02-13 | 2026-02-13 | DC1-MOD1-L3-CX-1090 | 1d | 0d | Riley Warring | ROS |  |
| DC1-COMP-L3-CX-1100 |  | DC1-COMP-D21-01 L3 Startup (2) | 2d | 2026-02-16 | 2026-02-17 | DC1-COMP-L3-CX-1090 | 1d | 0d | Riley Warring | CAP | Vendor Only |
| DC1-FAN-L3-CX-1100 |  | DC1-FAN-D21-01 L3 Startup (2) | 2d | 2026-02-16 | 2026-02-17 | DC1-FAN-L3-CX-1090 | 1d | 0d | Riley Warring | FBB | Vendor Only |
| DC1-COMP-L3-CX-1110 |  | DC1-COMP-D21-01 BMS/EPMS (2) | 1d | 2026-02-18 | 2026-02-18 | DC1-COMP-L3-CX-1100 | 30d |  | Riley Warring | PRM |  |
| DC1-FAN-L3-CX-1110 |  | DC1-FAN-D21-01 BMS/EPMS (2) | 1d | 2026-02-18 | 2026-02-18 | DC1-FAN-L3-CX-1100 | 30d |  | Riley Warring | PRM |  |
|  | 05 | **DC1-DH2100 POD-AC UNITS E21 Cx L3** |  | 2026-02-13 | 2026-02-18 |  |  |  |  |  |  |
| DC1-COMP-L3-CX-1120 |  | DC1-COMP-E21-01 FTE (2) | 1d | 2026-02-13 | 2026-02-13 | DC1-MOD1-L3-CX-1120 | 1d | 0d | Riley Warring | ROS |  |
| DC1-FAN-L3-CX-1120 |  | DC1-FAN-E21-01 FTE (2) | 1d | 2026-02-13 | 2026-02-13 | DC1-MOD1-L3-CX-1120 | 1d | 0d | Riley Warring | ROS |  |
| DC1-COMP-L3-CX-1130 |  | DC1-COMP-E21-01 L3 Startup (2) | 2d | 2026-02-16 | 2026-02-17 | DC1-COMP-L3-CX-1120 | 1d | 0d | Riley Warring | CAP | Vendor Only |
| DC1-FAN-L3-CX-1130 |  | DC1-FAN-E21-01 L3 Startup (2) | 2d | 2026-02-16 | 2026-02-17 | DC1-FAN-L3-CX-1120 | 1d | 0d | Riley Warring | FBB | Vendor Only |
| DC1-COMP-L3-CX-1140 |  | DC1-COMP-E21-01 BMS/EPMS (2) | 1d | 2026-02-18 | 2026-02-18 | DC1-COMP-L3-CX-1130 | 30d |  | Riley Warring | PRM |  |
| DC1-FAN-L3-CX-1140 |  | DC1-FAN-E21-01 BMS/EPMS (2) | 1d | 2026-02-18 | 2026-02-18 | DC1-FAN-L3-CX-1130 | 30d |  | Riley Warring | PRM |  |

| ID | WBS | Activity | Duration | Start | Finish | Predecessors | Total float | Free float | Layton Responsible Party | Vendor Responsible Party | Notes |
| --- | --- | --- | --- | --- | --- | --- | --- | --- | --- | --- | --- |
|  | 06 | **DC1-DH2100 POD-AC UNITS F21 Cx L3** |  | 2026-02-13 | 2026-02-18 |  |  |  |  |  |  |
| DC1-COMP-L3-CX-1150 |  | DC1-COMP-F21-01 FTE (2) | 1d | 2026-02-13 | 2026-02-13 | DC1-MOD1-L3-CX-1150 | 1d | 0d | Riley Warring | ROS |  |
| DC1-FAN-L3-CX-1150 |  | DC1-FAN-F21-01 FTE (2) | 1d | 2026-02-13 | 2026-02-13 | DC1-MOD1-L3-CX-1150 | 1d | 0d | Riley Warring | ROS |  |
| DC1-COMP-L3-CX-1160 |  | DC1-COMP-F21-01 L3 Startup (2) | 2d | 2026-02-16 | 2026-02-17 | DC1-COMP-L3-CX-1150 | 1d | 0d | Riley Warring | CAP | Vendor Only |
| DC1-FAN-L3-CX-1160 |  | DC1-FAN-F21-01 L3 Startup (2) | 2d | 2026-02-16 | 2026-02-17 | DC1-FAN-L3-CX-1150 | 1d | 0d | Riley Warring | FBB | Vendor Only |
| DC1-COMP-L3-CX-1170 |  | DC1-COMP-F21-01 BMS/EPMS (2) | 1d | 2026-02-18 | 2026-02-18 | DC1-COMP-L3-CX-1160 | 30d |  | Riley Warring | PRM |  |
| DC1-FAN-L3-CX-1170 |  | DC1-FAN-F21-01 BMS/EPMS (2) | 1d | 2026-02-18 | 2026-02-18 | DC1-FAN-L3-CX-1160 | 30d |  | Riley Warring | PRM |  |
|  | 07 | **DC1-DH2100 POD-AC UNITS R21 Cx L3** |  | 2026-02-13 | 2026-02-18 |  |  |  |  |  |  |
| DC1-COMP-L3-CX-1180 |  | DC1-COMP-R21-01 FTE (2) | 1d | 2026-02-13 | 2026-02-13 | DC1-MOD1-L3-CX-1180 | 1d | 0d | Riley Warring | ROS |  |
| DC1-FAN-L3-CX-1180 |  | DC1-FAN-R21-01 FTE (2) | 1d | 2026-02-13 | 2026-02-13 | DC1-MOD1-L3-CX-1180 | 1d | 0d | Riley Warring | ROS |  |
| DC1-COMP-L3-CX-1190 |  | DC1-COMP-R21-01 L3 Startup (2) | 2d | 2026-02-16 | 2026-02-17 | DC1-COMP-L3-CX-1180 | 1d | 0d | Riley Warring | CAP | Vendor Only |
| DC1-FAN-L3-CX-1190 |  | DC1-FAN-R21-01 L3 Startup (2) | 2d | 2026-02-16 | 2026-02-17 | DC1-FAN-L3-CX-1180 | 1d | 0d | Riley Warring | FBB | Vendor Only |
| DC1-COMP-L3-CX-1200 |  | DC1-COMP-R21-01 BMS/EPMS (2) | 1d | 2026-02-18 | 2026-02-18 | DC1-COMP-L3-CX-1190 | 30d |  | Riley Warring | PRM |  |
| DC1-FAN-L3-CX-1200 |  | DC1-FAN-R21-01 BMS/EPMS (2) | 1d | 2026-02-18 | 2026-02-18 | DC1-FAN-L3-CX-1190 | 30d |  | Riley Warring | PRM |  |
|  | 04 | **DC1-DH2100 BUS-R1X/BUS-R2X Cx L3** |  | 2026-03-10 | 2026-03-13 |  |  |  |  |  |  |
|  | 01 | **DC1-DH2100 BUS-R2 MAINTENANCE BUS DUCT Cx L3** |  | 2026-03-10 | 2026-03-13 |  |  |  |  |  |  |
| DC1-BUS-L3-CX-1000 |  | DC1-DH2100-BUS-R2 (R21) MAINTENANCE BUS FTE | 1d | 2026-03-10 | 2026-03-10 | DC1-BUS-L2-1000, DC1-SWD-L3-CX-1180 SS | 0d |  | Riley Warring | ROS | CFCI |
| DC1-BUS-L3-CX-1010 |  | DC1-DH2100-BUS-R2 (R21) MAINTENANCE BUS L3 Startup | 2d | 2026-03-11 | 2026-03-12 | DC1-BUS-L3-CX-1000 | 13d | 0d | Riley Warring | LAY | CFCI |
| DC1-BUS-L3-CX-1020 |  | DC1-DH2100-BUS-R2 (R21) MAINTENANCE BUS BMS/EPMS | 1d | 2026-03-13 | 2026-03-13 | DC1-BUS-L3-CX-1010 | 13d | 7d | Riley Warring | PRM | CFCI |
|  | 02 | **DC1-DH2100 BUS-R1 CATCHER BUS DUCT Cx L3** |  | 2026-03-10 | 2026-03-13 |  |  |  |  |  |  |
| DC1-BUS-L3-CX-1030 |  | DC1-DH2100-BUS-R1 (R11) CATCHER BUS FTE | 1d | 2026-03-10 | 2026-03-10 | DC1-BUS-L2-CX-2010, DC1-BUS-L3-CX-1000 SS, DC1-BUS-L2-1010, DC1-BUS-L3-CX-2030 SS, DC1-SWD-L3-CX-2180 | 0d |  | Riley Warring | ROS | CFCI |
| DC1-BUS-L3-CX-1040 |  | DC1-DH2100-BUS-R1 (R11) CATCHER BUS L3 Startup | 2d | 2026-03-11 | 2026-03-12 | DC1-BUS-L3-CX-1030 | 13d | 0d | Riley Warring | LAY | CFCI |
| DC1-BUS-L3-CX-1050 |  | DC1-DH2100-BUS-R1 (R11) CATCHER BUS BMS/EPMS | 1d | 2026-03-13 | 2026-03-13 | DC1-BUS-L3-CX-1040 | 13d | 7d | Riley Warring | PRM | CFCI |
|  | 05 | **DC1-DH2100 ATS Cx L3** |  | 2026-03-10 | 2026-03-16 |  |  |  |  |  |  |
|  | 01 | **DC1-DH2100 ATS-A21 Cx L3** |  | 2026-03-10 | 2026-03-13 |  |  |  |  |  |  |
|  | 01 | **DC1-DH2100-ATS-A21-01 Cx L3** |  | 2026-03-10 | 2026-03-13 |  |  |  |  |  |  |
| DC1-ATS-L3-CX-1000 |  | DC1-ATS-A21-01 FTE | 1d | 2026-03-10 | 2026-03-10 | DC1-ATS-L2-1000, DC1-BUS-L3-CX-1000 SS, DC1-SWD-L3-CX-1000 SS | 1d | 0d | Riley Warring | ROS | SWD - FS |
| DC1-ATS-L3-CX-1005 |  | DC1-ATS-A21-01 L3 Startup | 2d | 2026-03-11 | 2026-03-12 | DC1-ATS-L3-CX-1000 | 13d | 0d | Riley Warring | MAV |  |
| DC1-ATS-L3-CX-1010 |  | DC1-ATS-A21-01 BMS/EPMS | 1d | 2026-03-13 | 2026-03-13 | DC1-ATS-L3-CX-1005 | 13d | 7d | Riley Warring | PRM |  |

Notes:
- DC1-BUS-L3-CX-1010: Steps: EC Startup Report; Vendor Startup
- DC1-BUS-L3-CX-1040: Steps: EC Startup Report; Vendor Startup
- DC1-ATS-L3-CX-1005: Steps: EC Startup Report; Vendor Startup

| ID | WBS | Activity | Duration | Start | Finish | Predecessors | Total float | Free float | Notes | Layton Responsible Party | Vendor Responsible Party |
| --- | --- | --- | --- | --- | --- | --- | --- | --- | --- | --- | --- |
|  | 02 | **DC1-DH2100-ATS-A21-02 Cx L3** |  | 2026-03-10 | 2026-03-13 |  |  |  |  |  |  |
| DC1-ATS-L3-CX-1015 |  | DC1-ATS-A21-02 FTE | 1d | 2026-03-10 | 2026-03-10 | DC1-ATS-L2-1010, DC1-BUS-L3-CX-1000 SS, DC1-BUS-L3-CX-1030 SS | 1d | 0d | SWD - FS | Riley Warring | ROS |
| DC1-ATS-L3-CX-1020 |  | DC1-ATS-A21-02 L3 Startup | 2d | 2026-03-11 | 2026-03-12 | DC1-ATS-L3-CX-1015 | 13d | 0d |  | Riley Warring | MAV |
| DC1-ATS-L3-CX-1025 |  | DC1-ATS-A21-02 BMS/EPMS | 1d | 2026-03-13 | 2026-03-13 | DC1-ATS-L3-CX-1020 | 13d | 7d |  | Riley Warring | PRM |
|  | 03 | **DC1-DH2100-ATS-A21-03 Cx L3** |  | 2026-03-10 | 2026-03-13 |  |  |  |  |  |  |
| DC1-ATS-L3-CX-1030 |  | DC1-ATS-A21-03 FTE | 1d | 2026-03-10 | 2026-03-10 | DC1-ATS-L2-1020, DC1-BUS-L3-CX-1000 SS, DC1-SWD-L3-CX-1000 SS | 1d | 0d | SWD - FS | Riley Warring | ROS |
| DC1-ATS-L3-CX-1035 |  | DC1-ATS-A21-03 L3 Startup | 2d | 2026-03-11 | 2026-03-12 | DC1-ATS-L3-CX-1030 | 13d | 0d |  | Riley Warring | MAV |
| DC1-ATS-L3-CX-1040 |  | DC1-ATS-A21-03 BMS/EPMS | 1d | 2026-03-13 | 2026-03-13 | DC1-ATS-L3-CX-1035 | 13d | 7d |  | Riley Warring | PRM |
|  | 04 | **DC1-DH2100-ATS-A21-04 Cx L3** |  | 2026-03-10 | 2026-03-13 |  |  |  |  |  |  |
| DC1-ATS-L3-CX-1045 |  | DC1-ATS-A21-04 FTE | 1d | 2026-03-10 | 2026-03-10 | DC1-ATS-L2-1030, DC1-BUS-L3-CX-1000 SS, DC1-BUS-L3-CX-1030 SS | 1d | 0d | SWD - FS | Riley Warring | ROS |
| DC1-ATS-L3-CX-1050 |  | DC1-ATS-A21-04 L3 Startup | 2d | 2026-03-11 | 2026-03-12 | DC1-ATS-L3-CX-1045 | 13d | 0d |  | Riley Warring | MAV |
| DC1-ATS-L3-CX-1055 |  | DC1-ATS-A21-04 BMS/EPMS | 1d | 2026-03-13 | 2026-03-13 | DC1-ATS-L3-CX-1050 | 13d | 7d |  | Riley Warring | PRM |
|  | 05 | **DC1-DH2100-ATS-A21-05 Cx L3** |  | 2026-03-10 | 2026-03-13 |  |  |  |  |  |  |
| DC1-ATS-L3-CX-1060 |  | DC1-ATS-A21-05 FTE | 1d | 2026-03-10 | 2026-03-10 | DC1-ATS-L2-1040, DC1-BUS-L3-CX-1000 SS, DC1-SWD-L3-CX-1000 SS | 1d | 0d | SWD - FS | Riley Warring | ROS |
| DC1-ATS-L3-CX-1065 |  | DC1-ATS-A21-05 L3 Startup | 2d | 2026-03-11 | 2026-03-12 | DC1-ATS-L3-CX-1060 | 13d | 0d |  | Riley Warring | MAV |
| DC1-ATS-L3-CX-1070 |  | DC1-ATS-A21-05 BMS/EPMS | 1d | 2026-03-13 | 2026-03-13 | DC1-ATS-L3-CX-1065 | 13d | 7d |  | Riley Warring | PRM |
|  | 06 | **DC1-DH2100-ATS-A21-06 Cx L3** |  | 2026-03-10 | 2026-03-13 |  |  |  |  |  |  |
| DC1-ATS-L3-CX-1075 |  | DC1-ATS-A21-06 FTE | 1d | 2026-03-10 | 2026-03-10 | DC1-BUS-L3-CX-1000 SS, DC1-BUS-L3-CX-1030 SS, DC1-ATS-L2-1050 | 1d | 0d | SWD - FS | Riley Warring | ROS |
| DC1-ATS-L3-CX-1080 |  | DC1-ATS-A21-06 L3 Startup | 2d | 2026-03-11 | 2026-03-12 | DC1-ATS-L3-CX-1075 | 13d | 0d |  | Riley Warring | MAV |
| DC1-ATS-L3-CX-1085 |  | DC1-ATS-A21-06 BMS/EPMS | 1d | 2026-03-13 | 2026-03-13 | DC1-ATS-L3-CX-1080 | 13d | 7d |  | Riley Warring | PRM |
|  | 02 | **DC1-DH2100 ATS-B21 Cx L3** |  | 2026-03-10 | 2026-03-16 |  |  |  |  |  |  |
|  | 01 | **DC1-DH2100-ATS-B21-01 Cx L3** |  | 2026-03-10 | 2026-03-13 |  |  |  |  |  |  |
| DC1-ATS-L3-CX-1090 |  | DC1-ATS-B21-01 FTE | 1d | 2026-03-10 | 2026-03-10 | DC1-ATS-L2-1060, DC1-BUS-L3-CX-1000 SS, DC1-SWD-L3-CX-1030 SS | 1d | 0d |  | Riley Warring | ROS |
| DC1-ATS-L3-CX-1095 |  | DC1-ATS-B21-01 L3 Startup | 2d | 2026-03-11 | 2026-03-12 | DC1-ATS-L3-CX-1090 | 13d | 0d |  | Riley Warring | MAV |
| DC1-ATS-L3-CX-1100 |  | DC1-ATS-B21-01 BMS/EPMS | 1d | 2026-03-13 | 2026-03-13 | DC1-ATS-L3-CX-1095 | 13d | 7d |  | Riley Warring | PRM |

Notes:
- DC1-ATS-L3-CX-1020: Steps: EC Startup Report; Vendor Startup
- DC1-ATS-L3-CX-1035: Steps: EC Startup Report; Vendor Startup
- DC1-ATS-L3-CX-1050: Steps: EC Startup Report; Vendor Startup
- DC1-ATS-L3-CX-1065: Steps: EC Startup Report; Vendor Startup
- DC1-ATS-L3-CX-1080: Steps: EC Startup Report; Vendor Startup
- DC1-ATS-L3-CX-1095: Steps: EC Startup Report; Vendor Startup

| ID | WBS | Activity | Duration | Start | Finish | Predecessors | Total float | Free float | Layton Responsible Party | Vendor Responsible Party |
| --- | --- | --- | --- | --- | --- | --- | --- | --- | --- | --- |
|  | 02 | **DC1-DH2100-ATS-B21-02 Cx L3** |  | 2026-03-11 | 2026-03-16 |  |  |  |  |  |
| DC1-ATS-L3-CX-1105 |  | DC1-ATS-B21-02 FTE | 1d | 2026-03-11 | 2026-03-11 | DC1-ATS-L2-1070, DC1-BUS-L3-CX-1000 SS, DC1-BUS-L3-CX-1030 | 0d |  | Riley Warring | ROS |
| DC1-ATS-L3-CX-1110 |  | DC1-ATS-B21-02 L3 Startup | 2d | 2026-03-12 | 2026-03-13 | DC1-ATS-L3-CX-1105 | 12d | 0d | Riley Warring | MAV |
| DC1-ATS-L3-CX-1115 |  | DC1-ATS-B21-02 BMS/EPMS | 1d | 2026-03-16 | 2026-03-16 | DC1-ATS-L3-CX-1110 | 12d | 6d | Riley Warring | PRM |
|  | 03 | **DC1-DH2100-ATS-B21-03 Cx L3** |  | 2026-03-10 | 2026-03-13 |  |  |  |  |  |
| DC1-ATS-L3-CX-1120 |  | DC1-ATS-B21-03 FTE | 1d | 2026-03-10 | 2026-03-10 | DC1-ATS-L2-1080, DC1-BUS-L3-CX-1000 SS, DC1-SWD-L3-CX-1030 SS | 1d | 0d | Riley Warring | ROS |
| DC1-ATS-L3-CX-1125 |  | DC1-ATS-B21-03 L3 Startup | 2d | 2026-03-11 | 2026-03-12 | DC1-ATS-L3-CX-1120 | 13d | 0d | Riley Warring | MAV |
| DC1-ATS-L3-CX-1130 |  | DC1-ATS-B21-03 BMS/EPMS | 1d | 2026-03-13 | 2026-03-13 | DC1-ATS-L3-CX-1125 | 13d | 7d | Riley Warring | PRM |
|  | 04 | **DC1-DH2100-ATS-B21-04 Cx L3** |  | 2026-03-11 | 2026-03-16 |  |  |  |  |  |
| DC1-ATS-L3-CX-1135 |  | DC1-ATS-B21-04 FTE | 1d | 2026-03-11 | 2026-03-11 | DC1-ATS-L2-1090, DC1-BUS-L3-CX-1000 SS, DC1-BUS-L3-CX-1030 | 0d |  | Riley Warring | ROS |
| DC1-ATS-L3-CX-1140 |  | DC1-ATS-B21-04 L3 Startup | 2d | 2026-03-12 | 2026-03-13 | DC1-ATS-L3-CX-1135 | 12d | 0d | Riley Warring | MAV |
| DC1-ATS-L3-CX-1145 |  | DC1-ATS-B21-04 BMS/EPMS | 1d | 2026-03-16 | 2026-03-16 | DC1-ATS-L3-CX-1140 | 12d | 6d | Riley Warring | PRM |
|  | 05 | **DC1-DH2100-ATS-B21-05 Cx L3** |  | 2026-03-10 | 2026-03-13 |  |  |  |  |  |
| DC1-ATS-L3-CX-1150 |  | DC1-ATS-B21-05 FTE | 1d | 2026-03-10 | 2026-03-10 | DC1-ATS-L2-1100, DC1-BUS-L3-CX-1000 SS, DC1-SWD-L3-CX-1030 SS | 1d | 0d | Riley Warring | ROS |
| DC1-ATS-L3-CX-1155 |  | DC1-ATS-B21-05 L3 Startup | 2d | 2026-03-11 | 2026-03-12 | DC1-ATS-L3-CX-1150 | 13d | 0d | Riley Warring | MAV |
| DC1-ATS-L3-CX-1160 |  | DC1-ATS-B21-05 BMS/EPMS | 1d | 2026-03-13 | 2026-03-13 | DC1-ATS-L3-CX-1155 | 13d | 7d | Riley Warring | PRM |
|  | 06 | **DC1-DH2100-ATS-B21-06 Cx L3** |  | 2026-03-11 | 2026-03-16 |  |  |  |  |  |
| DC1-ATS-L3-CX-1165 |  | DC1-ATS-B21-06 FTE | 1d | 2026-03-11 | 2026-03-11 | DC1-ATS-L2-1110, DC1-BUS-L3-CX-1000 SS, DC1-BUS-L3-CX-1030 | 0d |  | Riley Warring | ROS |
| DC1-ATS-L3-CX-1170 |  | DC1-ATS-B21-06 L3 Startup | 2d | 2026-03-12 | 2026-03-13 | DC1-ATS-L3-CX-1165 | 12d | 0d | Riley Warring | MAV |
| DC1-ATS-L3-CX-1175 |  | DC1-ATS-B21-06 BMS/EPMS | 1d | 2026-03-16 | 2026-03-16 | DC1-ATS-L3-CX-1170 | 12d | 6d | Riley Warring | PRM |
|  | 03 | **DC1-DH2100 ATS-C21 Cx L3** |  | 2026-03-10 | 2026-03-16 |  |  |  |  |  |
|  | 01 | **DC1-DH2100-ATS-C21-01 Cx L3** |  | 2026-03-10 | 2026-03-13 |  |  |  |  |  |
| DC1-ATS-L3-CX-1180 |  | DC1-ATS-C21-01 FTE | 1d | 2026-03-10 | 2026-03-10 | DC1-ATS-L2-1120, DC1-BUS-L3-CX-1000 SS, DC1-SWD-L3-CX-1060 SS | 1d | 0d | Riley Warring | ROS |
| DC1-ATS-L3-CX-1185 |  | DC1-ATS-C21-01 L3 Startup | 2d | 2026-03-11 | 2026-03-12 | DC1-ATS-L3-CX-1180 | 13d | 0d | Riley Warring | MAV |
| DC1-ATS-L3-CX-1190 |  | DC1-ATS-C21-01 BMS/EPMS | 1d | 2026-03-13 | 2026-03-13 | DC1-ATS-L3-CX-1185 | 13d | 7d | Riley Warring | PRM |

Notes:
- DC1-ATS-L3-CX-1110: Steps: EC Startup Report; Vendor Startup
- DC1-ATS-L3-CX-1125: Steps: EC Startup Report; Vendor Startup
- DC1-ATS-L3-CX-1140: Steps: EC Startup Report; Vendor Startup
- DC1-ATS-L3-CX-1155: Steps: EC Startup Report; Vendor Startup
- DC1-ATS-L3-CX-1170: Steps: EC Startup Report; Vendor Startup
- DC1-ATS-L3-CX-1185: Steps: EC Startup Report; Vendor Startup

| ID | WBS | Activity | Duration | Start | Finish | Predecessors | Total float | Free float | Layton Responsible Party | Vendor Responsible Party |
| --- | --- | --- | --- | --- | --- | --- | --- | --- | --- | --- |
|  | 02 | **DC1-DH2100-ATS-C21-02 Cx L3** |  | 2026-03-11 | 2026-03-16 |  |  |  |  |  |
| DC1-ATS-L3-CX-1195 |  | DC1-ATS-C21-02 FTE | 1d | 2026-03-11 | 2026-03-11 | DC1-ATS-L2-1130, DC1-BUS-L3-CX-1000 SS, DC1-BUS-L3-CX-1030 | 0d |  | Riley Warring | ROS |
| DC1-ATS-L3-CX-1200 |  | DC1-ATS-C21-02 L3 Startup | 2d | 2026-03-12 | 2026-03-13 | DC1-ATS-L3-CX-1195 | 12d | 0d | Riley Warring | MAV |
| DC1-ATS-L3-CX-1205 |  | DC1-ATS-C21-02 BMS/EPMS | 1d | 2026-03-16 | 2026-03-16 | DC1-ATS-L3-CX-1200 | 12d | 6d | Riley Warring | PRM |
|  | 03 | **DC1-DH2100-ATS-C21-03 Cx L3** |  | 2026-03-10 | 2026-03-13 |  |  |  |  |  |
| DC1-ATS-L3-CX-1210 |  | DC1-ATS-C21-03 FTE | 1d | 2026-03-10 | 2026-03-10 | DC1-ATS-L2-1140, DC1-BUS-L3-CX-1000 SS, DC1-SWD-L3-CX-1060 SS | 1d | 0d | Riley Warring | ROS |
| DC1-ATS-L3-CX-1215 |  | DC1-ATS-C21-03 L3 Startup | 2d | 2026-03-11 | 2026-03-12 | DC1-ATS-L3-CX-1210 | 13d | 0d | Riley Warring | MAV |
| DC1-ATS-L3-CX-1220 |  | DC1-ATS-C21-03 BMS/EPMS | 1d | 2026-03-13 | 2026-03-13 | DC1-ATS-L3-CX-1215 | 13d | 7d | Riley Warring | PRM |
|  | 04 | **DC1-DH2100-ATS-C21-04 Cx L3** |  | 2026-03-11 | 2026-03-16 |  |  |  |  |  |
| DC1-ATS-L3-CX-1225 |  | DC1-ATS-C21-04 FTE | 1d | 2026-03-11 | 2026-03-11 | DC1-ATS-L2-1150, DC1-BUS-L3-CX-1000 SS, DC1-BUS-L3-CX-1030 | 0d |  | Riley Warring | ROS |
| DC1-ATS-L3-CX-1230 |  | DC1-ATS-C21-04 L3 Startup | 2d | 2026-03-12 | 2026-03-13 | DC1-ATS-L3-CX-1225 | 12d | 0d | Riley Warring | MAV |
| DC1-ATS-L3-CX-1235 |  | DC1-ATS-C21-04 BMS/EPMS | 1d | 2026-03-16 | 2026-03-16 | DC1-ATS-L3-CX-1230 | 12d | 6d | Riley Warring | PRM |
|  | 05 | **DC1-DH2100-ATS-C21-05 Cx L3** |  | 2026-03-10 | 2026-03-13 |  |  |  |  |  |
| DC1-ATS-L3-CX-1240 |  | DC1-ATS-C21-05 FTE | 1d | 2026-03-10 | 2026-03-10 | DC1-ATS-L2-1160, DC1-BUS-L3-CX-1000 SS, DC1-SWD-L3-CX-1060 SS | 1d | 0d | Riley Warring | ROS |
| DC1-ATS-L3-CX-1245 |  | DC1-ATS-C21-05 L3 Startup | 2d | 2026-03-11 | 2026-03-12 | DC1-ATS-L3-CX-1240 | 13d | 0d | Riley Warring | MAV |
| DC1-ATS-L3-CX-1250 |  | DC1-ATS-C21-05 BMS/EPMS | 1d | 2026-03-13 | 2026-03-13 | DC1-ATS-L3-CX-1245 | 13d | 7d | Riley Warring | PRM |
|  | 06 | **DC1-DH2100-ATS-C21-06 Cx L3** |  | 2026-03-11 | 2026-03-16 |  |  |  |  |  |
| DC1-ATS-L3-CX-1255 |  | DC1-ATS-C21-06 FTE | 1d | 2026-03-11 | 2026-03-11 | DC1-ATS-L2-1170, DC1-BUS-L3-CX-1000 SS, DC1-BUS-L3-CX-1030 | 0d |  | Riley Warring | ROS |
| DC1-ATS-L3-CX-1260 |  | DC1-ATS-C21-06 L3 Startup | 2d | 2026-03-12 | 2026-03-13 | DC1-ATS-L3-CX-1255 | 12d | 0d | Riley Warring | MAV |
| DC1-ATS-L3-CX-1265 |  | DC1-ATS-C21-06 BMS/EPMS | 1d | 2026-03-16 | 2026-03-16 | DC1-ATS-L3-CX-1260 | 12d | 6d | Riley Warring | PRM |
|  | 04 | **DC1-DH2100 ATS-D21 Cx L3** |  | 2026-03-10 | 2026-03-16 |  |  |  |  |  |
|  | 01 | **DC1-DH2100-ATS-D21-01 Cx L3** |  | 2026-03-10 | 2026-03-13 |  |  |  |  |  |
| DC1-ATS-L3-CX-1270 |  | DC1-ATS-D21-01 FTE | 1d | 2026-03-10 | 2026-03-10 | DC1-ATS-L2-1180, DC1-BUS-L3-CX-1000 SS, DC1-SWD-L3-CX-1090 SS | 1d | 0d | Riley Warring | ROS |
| DC1-ATS-L3-CX-1275 |  | DC1-ATS-D21-01 L3 Startup | 2d | 2026-03-11 | 2026-03-12 | DC1-ATS-L3-CX-1270 | 13d | 0d | Riley Warring | MAV |
| DC1-ATS-L3-CX-1280 |  | DC1-ATS-D21-01 BMS/EPMS | 1d | 2026-03-13 | 2026-03-13 | DC1-ATS-L3-CX-1275 | 13d | 7d | Riley Warring | PRM |

Notes:
- DC1-ATS-L3-CX-1200: Steps: EC Startup Report; Vendor Startup
- DC1-ATS-L3-CX-1215: Steps: EC Startup Report; Vendor Startup
- DC1-ATS-L3-CX-1230: Steps: EC Startup Report; Vendor Startup
- DC1-ATS-L3-CX-1245: Steps: EC Startup Report; Vendor Startup
- DC1-ATS-L3-CX-1260: Steps: EC Startup Report; Vendor Startup
- DC1-ATS-L3-CX-1275: Steps: EC Startup Report; Vendor Startup

| ID | WBS | Activity | Duration | Start | Finish | Predecessors | Total float | Free float | Layton Responsible Party | Vendor Responsible Party |
| --- | --- | --- | --- | --- | --- | --- | --- | --- | --- | --- |
|  | 02 | **DC1-DH2100-ATS-D21-02 Cx L3** |  | 2026-03-11 | 2026-03-16 |  |  |  |  |  |
| DC1-ATS-L3-CX-1285 |  | DC1-ATS-D21-02 FTE | 1d | 2026-03-11 | 2026-03-11 | DC1-ATS-L2-1190, DC1-BUS-L3-CX-1000 SS, DC1-BUS-L3-CX-1030 | 0d |  | Riley Warring | ROS |
| DC1-ATS-L3-CX-1290 |  | DC1-ATS-D21-02 L3 Startup | 2d | 2026-03-12 | 2026-03-13 | DC1-ATS-L3-CX-1285 | 12d | 0d | Riley Warring | MAV |
| DC1-ATS-L3-CX-1295 |  | DC1-ATS-D21-02 BMS/EPMS | 1d | 2026-03-16 | 2026-03-16 | DC1-ATS-L3-CX-1290 | 12d | 6d | Riley Warring | PRM |
|  | 03 | **DC1-DH2100-ATS-D21-03 Cx L3** |  | 2026-03-10 | 2026-03-13 |  |  |  |  |  |
| DC1-ATS-L3-CX-1300 |  | DC1-ATS-D21-03 FTE | 1d | 2026-03-10 | 2026-03-10 | DC1-ATS-L2-1200, DC1-BUS-L3-CX-1000 SS, DC1-SWD-L3-CX-1090 SS | 1d | 0d | Riley Warring | ROS |
| DC1-ATS-L3-CX-1305 |  | DC1-ATS-D21-03 L3 Startup | 2d | 2026-03-11 | 2026-03-12 | DC1-ATS-L3-CX-1300 | 13d | 0d | Riley Warring | MAV |
| DC1-ATS-L3-CX-1310 |  | DC1-ATS-D21-03 BMS/EPMS | 1d | 2026-03-13 | 2026-03-13 | DC1-ATS-L3-CX-1305 | 13d | 7d | Riley Warring | PRM |
|  | 04 | **DC1-DH2100-ATS-D21-04 Cx L3** |  | 2026-03-11 | 2026-03-16 |  |  |  |  |  |
| DC1-ATS-L3-CX-1315 |  | DC1-ATS-D21-04 FTE | 1d | 2026-03-11 | 2026-03-11 | DC1-ATS-L2-1210, DC1-BUS-L3-CX-1000 SS, DC1-BUS-L3-CX-1030 | 0d |  | Riley Warring | ROS |
| DC1-ATS-L3-CX-1320 |  | DC1-ATS-D21-04 L3 Startup | 2d | 2026-03-12 | 2026-03-13 | DC1-ATS-L3-CX-1315 | 12d | 0d | Riley Warring | MAV |
| DC1-ATS-L3-CX-1325 |  | DC1-ATS-D21-04 BMS/EPMS | 1d | 2026-03-16 | 2026-03-16 | DC1-ATS-L3-CX-1320 | 12d | 6d | Riley Warring | PRM |
|  | 05 | **DC1-DH2100-ATS-D21-05 Cx L3** |  | 2026-03-10 | 2026-03-13 |  |  |  |  |  |
| DC1-ATS-L3-CX-1330 |  | DC1-ATS-D21-05 FTE | 1d | 2026-03-10 | 2026-03-10 | DC1-ATS-L2-1220, DC1-BUS-L3-CX-1000 SS, DC1-SWD-L3-CX-1090 SS | 1d | 0d | Riley Warring | ROS |
| DC1-ATS-L3-CX-1335 |  | DC1-ATS-D21-05 L3 Startup | 2d | 2026-03-11 | 2026-03-12 | DC1-ATS-L3-CX-1330 | 13d | 0d | Riley Warring | MAV |
| DC1-ATS-L3-CX-1340 |  | DC1-ATS-D21-05 BMS/EPMS | 1d | 2026-03-13 | 2026-03-13 | DC1-ATS-L3-CX-1335 | 13d | 7d | Riley Warring | PRM |
|  | 06 | **DC1-DH2100-ATS-D21-06 Cx L3** |  | 2026-03-11 | 2026-03-16 |  |  |  |  |  |
| DC1-ATS-L3-CX-1345 |  | DC1-ATS-D21-06 FTE | 1d | 2026-03-11 | 2026-03-11 | DC1-ATS-L2-1230, DC1-BUS-L3-CX-1000 SS, DC1-BUS-L3-CX-1030 | 0d |  | Riley Warring | ROS |
| DC1-ATS-L3-CX-1350 |  | DC1-ATS-D21-06 L3 Startup | 2d | 2026-03-12 | 2026-03-13 | DC1-ATS-L3-CX-1345 | 12d | 0d | Riley Warring | MAV |
| DC1-ATS-L3-CX-1355 |  | DC1-ATS-D21-06 BMS/EPMS | 1d | 2026-03-16 | 2026-03-16 | DC1-ATS-L3-CX-1350 | 12d | 6d | Riley Warring | PRM |
|  | 05 | **DC1-DH2100 ATS-E21 Cx L3** |  | 2026-03-10 | 2026-03-16 |  |  |  |  |  |
|  | 01 | **DC1-DH2100-ATS-E21-01 Cx L3** |  | 2026-03-10 | 2026-03-13 |  |  |  |  |  |
| DC1-ATS-L3-CX-1360 |  | DC1-ATS-E21-01 FTE | 1d | 2026-03-10 | 2026-03-10 | DC1-ATS-L2-1240, DC1-BUS-L3-CX-1000 SS, DC1-SWD-L3-CX-1120 SS | 1d | 0d | Riley Warring | ROS |
| DC1-ATS-L3-CX-1365 |  | DC1-ATS-E21-01 L3 Startup | 2d | 2026-03-11 | 2026-03-12 | DC1-ATS-L3-CX-1360 | 13d | 0d | Riley Warring | MAV |
| DC1-ATS-L3-CX-1370 |  | DC1-ATS-E21-01 BMS/EPMS | 1d | 2026-03-13 | 2026-03-13 | DC1-ATS-L3-CX-1365 | 13d | 7d | Riley Warring | PRM |

Notes:
- DC1-ATS-L3-CX-1290: Steps: EC Startup Report; Vendor Startup
- DC1-ATS-L3-CX-1305: Steps: EC Startup Report; Vendor Startup
- DC1-ATS-L3-CX-1320: Steps: EC Startup Report; Vendor Startup
- DC1-ATS-L3-CX-1335: Steps: EC Startup Report; Vendor Startup
- DC1-ATS-L3-CX-1350: Steps: EC Startup Report; Vendor Startup
- DC1-ATS-L3-CX-1365: Steps: EC Startup Report; Vendor Startup

| ID | WBS | Activity | Duration | Start | Finish | Predecessors | Total float | Free float | Layton Responsible Party | Vendor Responsible Party |
| --- | --- | --- | --- | --- | --- | --- | --- | --- | --- | --- |
|  | 02 | **DC1-DH2100-ATS-E21-02 Cx L3** |  | 2026-03-11 | 2026-03-16 |  |  |  |  |  |
| DC1-ATS-L3-CX-1375 |  | DC1-ATS-E21-02 FTE | 1d | 2026-03-11 | 2026-03-11 | DC1-ATS-L2-1250, DC1-BUS-L3-CX-1000 SS, DC1-BUS-L3-CX-1030 | 0d |  | Riley Warring | ROS |
| DC1-ATS-L3-CX-1380 |  | DC1-ATS-E21-02 L3 Startup | 2d | 2026-03-12 | 2026-03-13 | DC1-ATS-L3-CX-1375 | 12d | 0d | Riley Warring | MAV |
| DC1-ATS-L3-CX-1385 |  | DC1-ATS-E21-02 BMS/EPMS | 1d | 2026-03-16 | 2026-03-16 | DC1-ATS-L3-CX-1380 | 12d | 6d | Riley Warring | PRM |
|  | 03 | **DC1-DH2100-ATS-E21-03 Cx L3** |  | 2026-03-10 | 2026-03-13 |  |  |  |  |  |
| DC1-ATS-L3-CX-1390 |  | DC1-ATS-E21-03 FTE | 1d | 2026-03-10 | 2026-03-10 | DC1-ATS-L2-1260, DC1-BUS-L3-CX-1000 SS, DC1-SWD-L3-CX-1120 SS | 1d | 0d | Riley Warring | ROS |
| DC1-ATS-L3-CX-1395 |  | DC1-ATS-E21-03 L3 Startup | 2d | 2026-03-11 | 2026-03-12 | DC1-ATS-L3-CX-1390 | 13d | 0d | Riley Warring | MAV |
| DC1-ATS-L3-CX-1400 |  | DC1-ATS-E21-03 BMS/EPMS | 1d | 2026-03-13 | 2026-03-13 | DC1-ATS-L3-CX-1395 | 13d | 7d | Riley Warring | PRM |
|  | 04 | **DC1-DH2100-ATS-E21-04 Cx L3** |  | 2026-03-11 | 2026-03-16 |  |  |  |  |  |
| DC1-ATS-L3-CX-1405 |  | DC1-ATS-E21-04 FTE | 1d | 2026-03-11 | 2026-03-11 | DC1-ATS-L2-1270, DC1-BUS-L3-CX-1000 SS, DC1-BUS-L3-CX-1030 | 0d |  | Riley Warring | ROS |
| DC1-ATS-L3-CX-1410 |  | DC1-ATS-E21-04 L3 Startup | 2d | 2026-03-12 | 2026-03-13 | DC1-ATS-L3-CX-1405 | 12d | 0d | Riley Warring | MAV |
| DC1-ATS-L3-CX-1415 |  | DC1-ATS-E21-04 BMS/EPMS | 1d | 2026-03-16 | 2026-03-16 | DC1-ATS-L3-CX-1410 | 12d | 6d | Riley Warring | PRM |
|  | 05 | **DC1-DH2100-ATS-E21-05 Cx L3** |  | 2026-03-10 | 2026-03-13 |  |  |  |  |  |
| DC1-ATS-L3-CX-1420 |  | DC1-ATS-E21-05 FTE | 1d | 2026-03-10 | 2026-03-10 | DC1-ATS-L2-1280, DC1-BUS-L3-CX-1000 SS, DC1-SWD-L3-CX-1120 SS | 1d | 0d | Riley Warring | ROS |
| DC1-ATS-L3-CX-1425 |  | DC1-ATS-E21-05 L3 Startup | 2d | 2026-03-11 | 2026-03-12 | DC1-ATS-L3-CX-1420 | 13d | 0d | Riley Warring | MAV |
| DC1-ATS-L3-CX-1430 |  | DC1-ATS-E21-05 BMS/EPMS | 1d | 2026-03-13 | 2026-03-13 | DC1-ATS-L3-CX-1425 | 13d | 7d | Riley Warring | PRM |
|  | 06 | **DC1-DH2100-ATS-E21-06 Cx L3** |  | 2026-03-11 | 2026-03-16 |  |  |  |  |  |
| DC1-ATS-L3-CX-1435 |  | DC1-ATS-E21-06 FTE | 1d | 2026-03-11 | 2026-03-11 | DC1-ATS-L2-1290, DC1-BUS-L3-CX-1000 SS, DC1-BUS-L3-CX-1030 | 0d |  | Riley Warring | ROS |
| DC1-ATS-L3-CX-1440 |  | DC1-ATS-E21-06 L3 Startup | 2d | 2026-03-12 | 2026-03-13 | DC1-ATS-L3-CX-1435 | 12d | 0d | Riley Warring | MAV |
| DC1-ATS-L3-CX-1445 |  | DC1-ATS-E21-06 BMS/EPMS | 1d | 2026-03-16 | 2026-03-16 | DC1-ATS-L3-CX-1440 | 12d | 6d | Riley Warring | PRM |
|  | 06 | **DC1-DH2100 ATS-F21 Cx L3** |  | 2026-03-10 | 2026-03-16 |  |  |  |  |  |
|  | 01 | **DC1-DH2100-ATS-F21-01 Cx L3** |  | 2026-03-10 | 2026-03-13 |  |  |  |  |  |
| DC1-ATS-L3-CX-1450 |  | DC1-ATS-F21-01 FTE | 1d | 2026-03-10 | 2026-03-10 | DC1-ATS-L2-1300, DC1-BUS-L3-CX-1000 SS, DC1-SWD-L3-CX-1150 SS | 1d | 0d | Riley Warring | ROS |
| DC1-ATS-L3-CX-1455 |  | DC1-ATS-F21-01 L3 Startup | 2d | 2026-03-11 | 2026-03-12 | DC1-ATS-L3-CX-1450 | 13d | 0d | Riley Warring | MAV |
| DC1-ATS-L3-CX-1460 |  | DC1-ATS-F21-01 BMS/EPMS | 1d | 2026-03-13 | 2026-03-13 | DC1-ATS-L3-CX-1455 | 13d | 7d | Riley Warring | PRM |

Notes:
- DC1-ATS-L3-CX-1380: Steps: EC Startup Report; Vendor Startup
- DC1-ATS-L3-CX-1395: Steps: EC Startup Report; Vendor Startup
- DC1-ATS-L3-CX-1410: Steps: EC Startup Report; Vendor Startup
- DC1-ATS-L3-CX-1425: Steps: EC Startup Report; Vendor Startup
- DC1-ATS-L3-CX-1440: Steps: EC Startup Report; Vendor Startup
- DC1-ATS-L3-CX-1455: Steps: EC Startup Report; Vendor Startup

| ID | WBS | Activity | Duration | Start | Finish | Predecessors | Total float | Free float | Layton Responsible Party | Vendor Responsible Party |
| --- | --- | --- | --- | --- | --- | --- | --- | --- | --- | --- |
|  | 02 | **DC1-DH2100-ATS-F21-02 Cx L3** |  | 2026-03-11 | 2026-03-16 |  |  |  |  |  |
| DC1-ATS-L3-CX-1465 |  | DC1-ATS-F21-02 FTE | 1d | 2026-03-11 | 2026-03-11 | DC1-ATS-L2-1310, DC1-BUS-L3-CX-1000 SS, DC1-BUS-L3-CX-1030 | 0d |  | Riley Warring | ROS |
| DC1-ATS-L3-CX-1470 |  | DC1-ATS-F21-02 L3 Startup | 2d | 2026-03-12 | 2026-03-13 | DC1-ATS-L3-CX-1465 | 12d | 0d | Riley Warring | MAV |
| DC1-ATS-L3-CX-1475 |  | DC1-ATS-F21-02 BMS/EPMS | 1d | 2026-03-16 | 2026-03-16 | DC1-ATS-L3-CX-1470 | 12d | 6d | Riley Warring | PRM |
|  | 03 | **DC1-DH2100-ATS-F21-03 Cx L3** |  | 2026-03-10 | 2026-03-13 |  |  |  |  |  |
| DC1-ATS-L3-CX-1480 |  | DC1-ATS-F21-03 FTE | 1d | 2026-03-10 | 2026-03-10 | DC1-ATS-L2-1320, DC1-BUS-L3-CX-1000 SS, DC1-SWD-L3-CX-1150 SS | 1d | 0d | Riley Warring | ROS |
| DC1-ATS-L3-CX-1485 |  | DC1-ATS-F21-03 L3 Startup | 2d | 2026-03-11 | 2026-03-12 | DC1-ATS-L3-CX-1480 | 13d | 0d | Riley Warring | MAV |
| DC1-ATS-L3-CX-1490 |  | DC1-ATS-F21-03 BMS/EPMS | 1d | 2026-03-13 | 2026-03-13 | DC1-ATS-L3-CX-1485 | 13d | 7d | Riley Warring | PRM |
|  | 04 | **DC1-DH2100-ATS-F21-04 Cx L3** |  | 2026-03-11 | 2026-03-16 |  |  |  |  |  |
| DC1-ATS-L3-CX-1495 |  | DC1-ATS-F21-04 FTE | 1d | 2026-03-11 | 2026-03-11 | DC1-ATS-L2-1330, DC1-BUS-L3-CX-1000 SS, DC1-BUS-L3-CX-1030 | 0d |  | Riley Warring | ROS |
| DC1-ATS-L3-CX-1500 |  | DC1-ATS-F21-04 L3 Startup | 2d | 2026-03-12 | 2026-03-13 | DC1-ATS-L3-CX-1495 | 12d | 0d | Riley Warring | MAV |
| DC1-ATS-L3-CX-1505 |  | DC1-ATS-F21-04 BMS/EPMS | 1d | 2026-03-16 | 2026-03-16 | DC1-ATS-L3-CX-1500 | 12d | 6d | Riley Warring | PRM |
|  | 05 | **DC1-DH2100-ATS-F21-05 Cx L3** |  | 2026-03-10 | 2026-03-13 |  |  |  |  |  |
| DC1-ATS-L3-CX-1510 |  | DC1-ATS-F21-05 FTE | 1d | 2026-03-10 | 2026-03-10 | DC1-ATS-L2-1340, DC1-BUS-L3-CX-1000 SS, DC1-SWD-L3-CX-1150 SS | 1d | 0d | Riley Warring | ROS |
| DC1-ATS-L3-CX-1515 |  | DC1-ATS-F21-05 L3 Startup | 2d | 2026-03-11 | 2026-03-12 | DC1-ATS-L3-CX-1510 | 13d | 0d | Riley Warring | MAV |
| DC1-ATS-L3-CX-1520 |  | DC1-ATS-F21-05 BMS/EPMS | 1d | 2026-03-13 | 2026-03-13 | DC1-ATS-L3-CX-1515 | 13d | 7d | Riley Warring | PRM |
|  | 06 | **DC1-DH2100-ATS-F21-06 Cx L3** |  | 2026-03-11 | 2026-03-16 |  |  |  |  |  |
| DC1-ATS-L3-CX-1525 |  | DC1-ATS-F21-06 FTE | 1d | 2026-03-11 | 2026-03-11 | DC1-ATS-L2-1350, DC1-BUS-L3-CX-1000 SS, DC1-BUS-L3-CX-1030 | 0d |  | Riley Warring | ROS |
| DC1-ATS-L3-CX-1530 |  | DC1-ATS-F21-06 L3 Startup | 2d | 2026-03-12 | 2026-03-13 | DC1-ATS-L3-CX-1525 | 12d | 0d | Riley Warring | MAV |
| DC1-ATS-L3-CX-1535 |  | DC1-ATS-F21-06 BMS/EPMS | 1d | 2026-03-16 | 2026-03-16 | DC1-ATS-L3-CX-1530 | 12d | 6d | Riley Warring | PRM |
|  | 06 | **DC1-DH2100 CODs Cx L3** |  | 2026-03-11 | 2026-03-17 |  |  |  |  |  |
|  | 01 | **DC1-DH2100-COD-A21 Cx L3** |  | 2026-03-11 | 2026-03-16 |  |  |  |  |  |
|  | 01 | **DC1-DH2100-COD-A21-01 Cx L3** |  | 2026-03-11 | 2026-03-16 |  |  |  |  |  |
| DC1-COD-L3-CX-1000 |  | DC1-COD-A21-01 FTE | 1d | 2026-03-11 | 2026-03-11 | DC1-COD-L2-1000, DC1-ATS-L3-CX-1000, QTS-1080.1 FF | 1d | 0d | Riley Warring | ROS |
| DC1-COD-L3-CX-1005 |  | DC1-COD-A21-01 L3 Startup | 2d | 2026-03-12 | 2026-03-13 | DC1-COD-L3-CX-1000 | 12d | 0d | Riley Warring | SIE |
| DC1-COD-L3-CX-1010 |  | DC1-COD-A21-01 BMS/EPMS | 1d | 2026-03-16 | 2026-03-16 | DC1-COD-L3-CX-1005 | 12d | 1d | Riley Warring | PRM |

Notes:
- DC1-ATS-L3-CX-1470: Steps: EC Startup Report; Vendor Startup
- DC1-ATS-L3-CX-1485: Steps: EC Startup Report; Vendor Startup
- DC1-ATS-L3-CX-1500: Steps: EC Startup Report; Vendor Startup
- DC1-ATS-L3-CX-1515: Steps: EC Startup Report; Vendor Startup
- DC1-ATS-L3-CX-1530: Steps: EC Startup Report; Vendor Startup
- DC1-COD-L3-CX-1005: Steps: EC Startup Report; Vendor Startup

| ID | WBS | Activity | Duration | Start | Finish | Predecessors | Total float | Free float | Layton Responsible Party | Vendor Responsible Party |
| --- | --- | --- | --- | --- | --- | --- | --- | --- | --- | --- |
|  | 02 | **DC1-DH2100-COD-A21-02 Cx L3** |  | 2026-03-11 | 2026-03-16 |  |  |  |  |  |
| DC1-COD-L3-CX-1015 |  | DC1-COD-A21-02 FTE | 1d | 2026-03-11 | 2026-03-11 | DC1-COD-L2-1010, DC1-ATS-L3-CX-1015 | 1d | 0d | Riley Warring | ROS |
| DC1-COD-L3-CX-1020 |  | DC1-COD-A21-02 L3 Startup | 2d | 2026-03-12 | 2026-03-13 | DC1-COD-L3-CX-1015 | 12d | 0d | Riley Warring | SIE |
| DC1-COD-L3-CX-1025 |  | DC1-COD-A21-02 BMS/EPMS | 1d | 2026-03-16 | 2026-03-16 | DC1-COD-L3-CX-1020 | 12d | 1d | Riley Warring | PRM |
|  | 03 | **DC1-DH2100-COD-A21-03 Cx L3** |  | 2026-03-11 | 2026-03-16 |  |  |  |  |  |
| DC1-COD-L3-CX-1030 |  | DC1-COD-A21-03 FTE | 1d | 2026-03-11 | 2026-03-11 | DC1-COD-L2-1020, DC1-ATS-L3-CX-1030 | 1d | 0d | Riley Warring | ROS |
| DC1-COD-L3-CX-1035 |  | DC1-COD-A21-03 L3 Startup | 2d | 2026-03-12 | 2026-03-13 | DC1-COD-L3-CX-1030 | 12d | 0d | Riley Warring | SIE |
| DC1-COD-L3-CX-1040 |  | DC1-COD-A21-03 BMS/EPMS | 1d | 2026-03-16 | 2026-03-16 | DC1-COD-L3-CX-1035 | 12d | 1d | Riley Warring | PRM |
|  | 04 | **DC1-DH2100-COD-A21-04 Cx L3** |  | 2026-03-11 | 2026-03-16 |  |  |  |  |  |
| DC1-COD-L3-CX-1045 |  | DC1-COD-A21-04 FTE | 1d | 2026-03-11 | 2026-03-11 | DC1-COD-L2-1030, DC1-ATS-L3-CX-1045 | 1d | 0d | Riley Warring | ROS |
| DC1-COD-L3-CX-1050 |  | DC1-COD-A21-04 L3 Startup | 2d | 2026-03-12 | 2026-03-13 | DC1-COD-L3-CX-1045 | 12d | 0d | Riley Warring | SIE |
| DC1-COD-L3-CX-1055 |  | DC1-COD-A21-04 BMS/EPMS | 1d | 2026-03-16 | 2026-03-16 | DC1-COD-L3-CX-1050 | 12d | 1d | Riley Warring | PRM |
|  | 05 | **DC1-DH2100-COD-A21-05 Cx L3** |  | 2026-03-11 | 2026-03-16 |  |  |  |  |  |
| DC1-COD-L3-CX-1060 |  | DC1-COD-A21-05 FTE | 1d | 2026-03-11 | 2026-03-11 | DC1-COD-L2-1040, DC1-ATS-L3-CX-1060 | 1d | 0d | Riley Warring | ROS |
| DC1-COD-L3-CX-1065 |  | DC1-COD-A21-05 L3 Startup | 2d | 2026-03-12 | 2026-03-13 | DC1-COD-L3-CX-1060 | 12d | 0d | Riley Warring | SIE |
| DC1-COD-L3-CX-1070 |  | DC1-COD-A21-05 BMS/EPMS | 1d | 2026-03-16 | 2026-03-16 | DC1-COD-L3-CX-1065 | 12d | 1d | Riley Warring | PRM |
|  | 06 | **DC1-DH2100-COD-A21-06 Cx L3** |  | 2026-03-11 | 2026-03-16 |  |  |  |  |  |
| DC1-COD-L3-CX-1075 |  | DC1-COD-A21-06 FTE | 1d | 2026-03-11 | 2026-03-11 | DC1-COD-L2-1050, DC1-ATS-L3-CX-1075 | 1d | 0d | Riley Warring | ROS |
| DC1-COD-L3-CX-1080 |  | DC1-COD-A21-06 L3 Startup | 2d | 2026-03-12 | 2026-03-13 | DC1-COD-L3-CX-1075 | 12d | 0d | Riley Warring | SIE |
| DC1-COD-L3-CX-1085 |  | DC1-COD-A21-06 BMS/EPMS | 1d | 2026-03-16 | 2026-03-16 | DC1-COD-L3-CX-1080 | 12d | 1d | Riley Warring | PRM |
|  | 02 | **DC1-DH2100-COD-B21 Cx L3** |  | 2026-03-11 | 2026-03-17 |  |  |  |  |  |
|  | 01 | **DC1-DH2100-COD-B21-01 Cx L3** |  | 2026-03-11 | 2026-03-16 |  |  |  |  |  |
| DC1-COD-L3-CX-1090 |  | DC1-COD-B21-01 FTE | 1d | 2026-03-11 | 2026-03-11 | DC1-COD-L2-1060, DC1-ATS-L3-CX-1090, QTS-1080.1 FF | 1d | 0d | Riley Warring | ROS |
| DC1-COD-L3-CX-1095 |  | DC1-COD-B21-01 L3 Startup | 2d | 2026-03-12 | 2026-03-13 | DC1-COD-L3-CX-1090 | 12d | 0d | Riley Warring | SIE |
| DC1-COD-L3-CX-1100 |  | DC1-COD-B21-01 BMS/EPMS | 1d | 2026-03-16 | 2026-03-16 | DC1-COD-L3-CX-1095 | 12d | 1d | Riley Warring | PRM |

Notes:
- DC1-COD-L3-CX-1020: Steps: EC Startup Report; Vendor Startup
- DC1-COD-L3-CX-1035: Steps: EC Startup Report; Vendor Startup
- DC1-COD-L3-CX-1050: Steps: EC Startup Report; Vendor Startup
- DC1-COD-L3-CX-1065: Steps: EC Startup Report; Vendor Startup
- DC1-COD-L3-CX-1080: Steps: EC Startup Report; Vendor Startup
- DC1-COD-L3-CX-1095: Steps: EC Startup Report; Vendor Startup

| ID | WBS | Activity | Duration | Start | Finish | Predecessors | Total float | Free float | Layton Responsible Party | Vendor Responsible Party |
| --- | --- | --- | --- | --- | --- | --- | --- | --- | --- | --- |
|  | 02 | **DC1-DH2100-COD-B21-02 Cx L3** |  | 2026-03-12 | 2026-03-17 |  |  |  |  |  |
| DC1-COD-L3-CX-1105 |  | DC1-COD-B21-02 FTE | 1d | 2026-03-12 | 2026-03-12 | DC1-COD-L2-1070, DC1-ATS-L3-CX-1105 | 0d |  | Riley Warring | ROS |
| DC1-COD-L3-CX-1110 |  | DC1-COD-B21-02 L3 Startup | 2d | 2026-03-13 | 2026-03-16 | DC1-COD-L3-CX-1105 | 11d | 0d | Riley Warring | SIE |
| DC1-COD-L3-CX-1115 |  | DC1-COD-B21-02 BMS/EPMS | 1d | 2026-03-17 | 2026-03-17 | DC1-COD-L3-CX-1110 | 11d | 0d | Riley Warring | PRM |
|  | 03 | **DC1-DH2100-COD-B21-03 Cx L3** |  | 2026-03-11 | 2026-03-16 |  |  |  |  |  |
| DC1-COD-L3-CX-1120 |  | DC1-COD-B21-03 FTE | 1d | 2026-03-11 | 2026-03-11 | DC1-COD-L2-1080, DC1-ATS-L3-CX-1120 | 1d | 0d | Riley Warring | ROS |
| DC1-COD-L3-CX-1125 |  | DC1-COD-B21-03 L3 Startup | 2d | 2026-03-12 | 2026-03-13 | DC1-COD-L3-CX-1120 | 12d | 0d | Riley Warring | SIE |
| DC1-COD-L3-CX-1130 |  | DC1-COD-B21-03 BMS/EPMS | 1d | 2026-03-16 | 2026-03-16 | DC1-COD-L3-CX-1125 | 12d | 1d | Riley Warring | PRM |
|  | 04 | **DC1-DH2100-COD-B21-04 Cx L3** |  | 2026-03-12 | 2026-03-17 |  |  |  |  |  |
| DC1-COD-L3-CX-1135 |  | DC1-COD-B21-04 FTE | 1d | 2026-03-12 | 2026-03-12 | DC1-COD-L2-1090, DC1-ATS-L3-CX-1135 | 0d |  | Riley Warring | ROS |
| DC1-COD-L3-CX-1140 |  | DC1-COD-B21-04 L3 Startup | 2d | 2026-03-13 | 2026-03-16 | DC1-COD-L3-CX-1135 | 11d | 0d | Riley Warring | SIE |
| DC1-COD-L3-CX-1145 |  | DC1-COD-B21-04 BMS/EPMS | 1d | 2026-03-17 | 2026-03-17 | DC1-COD-L3-CX-1140 | 11d | 0d | Riley Warring | PRM |
|  | 05 | **DC1-DH2100-COD-B21-05 Cx L3** |  | 2026-03-11 | 2026-03-16 |  |  |  |  |  |
| DC1-COD-L3-CX-1150 |  | DC1-COD-B21-05 FTE | 1d | 2026-03-11 | 2026-03-11 | DC1-COD-L2-1100, DC1-ATS-L3-CX-1150 | 1d | 0d | Riley Warring | ROS |
| DC1-COD-L3-CX-1155 |  | DC1-COD-B21-05 L3 Startup | 2d | 2026-03-12 | 2026-03-13 | DC1-COD-L3-CX-1150 | 12d | 0d | Riley Warring | SIE |
| DC1-COD-L3-CX-1160 |  | DC1-COD-B21-05 BMS/EPMS | 1d | 2026-03-16 | 2026-03-16 | DC1-COD-L3-CX-1155 | 12d | 1d | Riley Warring | PRM |
|  | 06 | **DC1-DH2100-COD-B21-06 Cx L3** |  | 2026-03-12 | 2026-03-17 |  |  |  |  |  |
| DC1-COD-L3-CX-1165 |  | DC1-COD-B21-06 FTE | 1d | 2026-03-12 | 2026-03-12 | DC1-COD-L2-1110, DC1-ATS-L3-CX-1165 | 0d |  | Riley Warring | ROS |
| DC1-COD-L3-CX-1170 |  | DC1-COD-B21-06 L3 Startup | 2d | 2026-03-13 | 2026-03-16 | DC1-COD-L3-CX-1165 | 11d | 0d | Riley Warring | SIE |
| DC1-COD-L3-CX-1175 |  | DC1-COD-B21-06 BMS/EPMS | 1d | 2026-03-17 | 2026-03-17 | DC1-COD-L3-CX-1170 | 11d | 0d | Riley Warring | PRM |
|  | 03 | **DC1-DH2100-COD-C21 Cx L3** |  | 2026-03-11 | 2026-03-17 |  |  |  |  |  |
|  | 01 | **DC1-DH2100-COD-C21-01 Cx L3** |  | 2026-03-11 | 2026-03-16 |  |  |  |  |  |
| DC1-COD-L3-CX-1180 |  | DC1-COD-C21-01 FTE | 1d | 2026-03-11 | 2026-03-11 | DC1-COD-L2-1120, DC1-ATS-L3-CX-1180, QTS-1080.1 FF | 1d | 0d | Riley Warring | ROS |
| DC1-COD-L3-CX-1185 |  | DC1-COD-C21-01 L3 Startup | 2d | 2026-03-12 | 2026-03-13 | DC1-COD-L3-CX-1180 | 12d | 0d | Riley Warring | SIE |
| DC1-COD-L3-CX-1190 |  | DC1-COD-C21-01 BMS/EPMS | 1d | 2026-03-16 | 2026-03-16 | DC1-COD-L3-CX-1185 | 12d | 1d | Riley Warring | PRM |

Notes:
- DC1-COD-L3-CX-1110: Steps: EC Startup Report; Vendor Startup
- DC1-COD-L3-CX-1125: Steps: EC Startup Report; Vendor Startup
- DC1-COD-L3-CX-1140: Steps: EC Startup Report; Vendor Startup
- DC1-COD-L3-CX-1155: Steps: EC Startup Report; Vendor Startup
- DC1-COD-L3-CX-1170: Steps: EC Startup Report; Vendor Startup
- DC1-COD-L3-CX-1185: Steps: EC Startup Report; Vendor Startup

| ID | WBS | Activity | Duration | Start | Finish | Predecessors | Total float | Free float | Layton Responsible Party | Vendor Responsible Party |
| --- | --- | --- | --- | --- | --- | --- | --- | --- | --- | --- |
|  | 02 | **DC1-DH2100-COD-C21-02 Cx L3** |  | 2026-03-12 | 2026-03-17 |  |  |  |  |  |
| DC1-COD-L3-CX-1195 |  | DC1-COD-C21-02 FTE | 1d | 2026-03-12 | 2026-03-12 | DC1-COD-L2-1130, DC1-ATS-L3-CX-1195 | 0d |  | Riley Warring | ROS |
| DC1-COD-L3-CX-1200 |  | DC1-COD-C21-02 L3 Startup | 2d | 2026-03-13 | 2026-03-16 | DC1-COD-L3-CX-1195 | 11d | 0d | Riley Warring | SIE |
| DC1-COD-L3-CX-1205 |  | DC1-COD-C21-02 BMS/EPMS | 1d | 2026-03-17 | 2026-03-17 | DC1-COD-L3-CX-1200 | 11d | 0d | Riley Warring | PRM |
|  | 03 | **DC1-DH2100-COD-C21-03 Cx L3** |  | 2026-03-11 | 2026-03-16 |  |  |  |  |  |
| DC1-COD-L3-CX-1210 |  | DC1-COD-C21-03 FTE | 1d | 2026-03-11 | 2026-03-11 | DC1-COD-L2-1140, DC1-ATS-L3-CX-1210 | 1d | 0d | Riley Warring | ROS |
| DC1-COD-L3-CX-1215 |  | DC1-COD-C21-03 L3 Startup | 2d | 2026-03-12 | 2026-03-13 | DC1-COD-L3-CX-1210 | 12d | 0d | Riley Warring | SIE |
| DC1-COD-L3-CX-1220 |  | DC1-COD-C21-03 BMS/EPMS | 1d | 2026-03-16 | 2026-03-16 | DC1-COD-L3-CX-1215 | 12d | 1d | Riley Warring | PRM |
|  | 04 | **DC1-DH2100-COD-C21-04 Cx L3** |  | 2026-03-12 | 2026-03-17 |  |  |  |  |  |
| DC1-COD-L3-CX-1225 |  | DC1-COD-C21-04 FTE | 1d | 2026-03-12 | 2026-03-12 | DC1-COD-L2-1150, DC1-ATS-L3-CX-1225 | 0d |  | Riley Warring | ROS |
| DC1-COD-L3-CX-1230 |  | DC1-COD-C21-04 L3 Startup | 2d | 2026-03-13 | 2026-03-16 | DC1-COD-L3-CX-1225 | 11d | 0d | Riley Warring | SIE |
| DC1-COD-L3-CX-1235 |  | DC1-COD-C21-04 BMS/EPMS | 1d | 2026-03-17 | 2026-03-17 | DC1-COD-L3-CX-1230 | 11d | 0d | Riley Warring | PRM |
|  | 05 | **DC1-DH2100-COD-C21-05 Cx L3** |  | 2026-03-11 | 2026-03-16 |  |  |  |  |  |
| DC1-COD-L3-CX-1240 |  | DC1-COD-C21-05 FTE | 1d | 2026-03-11 | 2026-03-11 | DC1-COD-L2-1160, DC1-ATS-L3-CX-1240 | 1d | 0d | Riley Warring | ROS |
| DC1-COD-L3-CX-1245 |  | DC1-COD-C21-05 L3 Startup | 2d | 2026-03-12 | 2026-03-13 | DC1-COD-L3-CX-1240 | 12d | 0d | Riley Warring | SIE |
| DC1-COD-L3-CX-1250 |  | DC1-COD-C21-05 BMS/EPMS | 1d | 2026-03-16 | 2026-03-16 | DC1-COD-L3-CX-1245 | 12d | 1d | Riley Warring | PRM |
|  | 06 | **DC1-DH2100-COD-C21-06 Cx L3** |  | 2026-03-12 | 2026-03-17 |  |  |  |  |  |
| DC1-COD-L3-CX-1255 |  | DC1-COD-C21-06 FTE | 1d | 2026-03-12 | 2026-03-12 | DC1-COD-L2-1170, DC1-ATS-L3-CX-1255 | 0d |  | Riley Warring | ROS |
| DC1-COD-L3-CX-1260 |  | DC1-COD-C21-06 L3 Startup | 2d | 2026-03-13 | 2026-03-16 | DC1-COD-L3-CX-1255 | 11d | 0d | Riley Warring | SIE |
| DC1-COD-L3-CX-1265 |  | DC1-COD-C21-06 BMS/EPMS | 1d | 2026-03-17 | 2026-03-17 | DC1-COD-L3-CX-1260 | 11d | 0d | Riley Warring | PRM |
|  | 04 | **DC1-DH2100-COD-D21 Cx L3** |  | 2026-03-11 | 2026-03-17 |  |  |  |  |  |
|  | 01 | **DC1-DH2100-COD-D21-01 Cx L3** |  | 2026-03-11 | 2026-03-16 |  |  |  |  |  |
| DC1-COD-L3-CX-1270 |  | DC1-COD-D21-01 FTE | 1d | 2026-03-11 | 2026-03-11 | DC1-COD-L2-1180, DC1-ATS-L3-CX-1270, QTS-1080.1 FF | 1d | 0d | Riley Warring | ROS |
| DC1-COD-L3-CX-1275 |  | DC1-COD-D21-01 L3 Startup | 2d | 2026-03-12 | 2026-03-13 | DC1-COD-L3-CX-1270 | 12d | 0d | Riley Warring | SIE |
| DC1-COD-L3-CX-1280 |  | DC1-COD-D21-01 BMS/EPMS | 1d | 2026-03-16 | 2026-03-16 | DC1-COD-L3-CX-1275 | 12d | 1d | Riley Warring | PRM |

Notes:
- DC1-COD-L3-CX-1200: Steps: EC Startup Report; Vendor Startup
- DC1-COD-L3-CX-1215: Steps: EC Startup Report; Vendor Startup
- DC1-COD-L3-CX-1230: Steps: EC Startup Report; Vendor Startup
- DC1-COD-L3-CX-1245: Steps: EC Startup Report; Vendor Startup
- DC1-COD-L3-CX-1260: Steps: EC Startup Report; Vendor Startup
- DC1-COD-L3-CX-1275: Steps: EC Startup Report; Vendor Startup

| ID | WBS | Activity | Duration | Start | Finish | Predecessors | Total float | Free float | Layton Responsible Party | Vendor Responsible Party |
| --- | --- | --- | --- | --- | --- | --- | --- | --- | --- | --- |
|  | 02 | **DC1-DH2100-COD-D21-02 Cx L3** |  | 2026-03-12 | 2026-03-17 |  |  |  |  |  |
| DC1-COD-L3-CX-1285 |  | DC1-COD-D21-02 FTE | 1d | 2026-03-12 | 2026-03-12 | DC1-COD-L2-1190, DC1-ATS-L3-CX-1285 | 0d |  | Riley Warring | ROS |
| DC1-COD-L3-CX-1290 |  | DC1-COD-D21-02 L3 Startup | 2d | 2026-03-13 | 2026-03-16 | DC1-COD-L3-CX-1285 | 11d | 0d | Riley Warring | SIE |
| DC1-COD-L3-CX-1295 |  | DC1-COD-D21-02 BMS/EPMS | 1d | 2026-03-17 | 2026-03-17 | DC1-COD-L3-CX-1290 | 11d | 0d | Riley Warring | PRM |
|  | 03 | **DC1-DH2100-COD-D21-03 Cx L3** |  | 2026-03-11 | 2026-03-16 |  |  |  |  |  |
| DC1-COD-L3-CX-1300 |  | DC1-COD-D21-03 FTE | 1d | 2026-03-11 | 2026-03-11 | DC1-COD-L2-1200, DC1-ATS-L3-CX-1300 | 1d | 0d | Riley Warring | ROS |
| DC1-COD-L3-CX-1305 |  | DC1-COD-D21-03 L3 Startup | 2d | 2026-03-12 | 2026-03-13 | DC1-COD-L3-CX-1300 | 12d | 0d | Riley Warring | SIE |
| DC1-COD-L3-CX-1310 |  | DC1-COD-D21-03 BMS/EPMS | 1d | 2026-03-16 | 2026-03-16 | DC1-COD-L3-CX-1305 | 12d | 1d | Riley Warring | PRM |
|  | 04 | **DC1-DH2100-COD-D21-04 Cx L3** |  | 2026-03-12 | 2026-03-17 |  |  |  |  |  |
| DC1-COD-L3-CX-1315 |  | DC1-COD-D21-04 FTE | 1d | 2026-03-12 | 2026-03-12 | DC1-COD-L2-1210, DC1-ATS-L3-CX-1315 | 0d |  | Riley Warring | ROS |
| DC1-COD-L3-CX-1320 |  | DC1-COD-D21-04 L3 Startup | 2d | 2026-03-13 | 2026-03-16 | DC1-COD-L3-CX-1315 | 11d | 0d | Riley Warring | SIE |
| DC1-COD-L3-CX-1325 |  | DC1-COD-D21-04 BMS/EPMS | 1d | 2026-03-17 | 2026-03-17 | DC1-COD-L3-CX-1320 | 11d | 0d | Riley Warring | PRM |
|  | 05 | **DC1-DH2100-COD-D21-05 Cx L3** |  | 2026-03-11 | 2026-03-16 |  |  |  |  |  |
| DC1-COD-L3-CX-1330 |  | DC1-COD-D21-05 FTE | 1d | 2026-03-11 | 2026-03-11 | DC1-COD-L2-1220, DC1-ATS-L3-CX-1330 | 1d | 0d | Riley Warring | ROS |
| DC1-COD-L3-CX-1335 |  | DC1-COD-D21-05 L3 Startup | 2d | 2026-03-12 | 2026-03-13 | DC1-COD-L3-CX-1330 | 12d | 0d | Riley Warring | SIE |
| DC1-COD-L3-CX-1340 |  | DC1-COD-D21-05 BMS/EPMS | 1d | 2026-03-16 | 2026-03-16 | DC1-COD-L3-CX-1335 | 12d | 1d | Riley Warring | PRM |
|  | 06 | **DC1-DH2100-COD-D21-06 Cx L3** |  | 2026-03-12 | 2026-03-17 |  |  |  |  |  |
| DC1-COD-L3-CX-1345 |  | DC1-COD-D21-06 FTE | 1d | 2026-03-12 | 2026-03-12 | DC1-COD-L2-1230, DC1-ATS-L3-CX-1345 | 0d |  | Riley Warring | ROS |
| DC1-COD-L3-CX-1350 |  | DC1-COD-D21-06 L3 Startup | 2d | 2026-03-13 | 2026-03-16 | DC1-COD-L3-CX-1345 | 11d | 0d | Riley Warring | SIE |
| DC1-COD-L3-CX-1355 |  | DC1-COD-D21-06 BMS/EPMS | 1d | 2026-03-17 | 2026-03-17 | DC1-COD-L3-CX-1350 | 11d | 0d | Riley Warring | PRM |
|  | 05 | **DC1-DH2100-COD-E21 Cx L3** |  | 2026-03-11 | 2026-03-17 |  |  |  |  |  |
|  | 01 | **DC1-DH2100-ATS-E21-01 Cx L3** |  | 2026-03-11 | 2026-03-16 |  |  |  |  |  |
| DC1-COD-L3-CX-1360 |  | DC1-COD-E21-01 FTE | 1d | 2026-03-11 | 2026-03-11 | DC1-COD-L2-1240, DC1-ATS-L3-CX-1360, QTS-1080.1 FF | 1d | 0d | Riley Warring | ROS |
| DC1-COD-L3-CX-1365 |  | DC1-COD-E21-01 L3 Startup | 2d | 2026-03-12 | 2026-03-13 | DC1-COD-L3-CX-1360 | 12d | 0d | Riley Warring | SIE |
| DC1-COD-L3-CX-1370 |  | DC1-COD-E21-01 BMS/EPMS | 1d | 2026-03-16 | 2026-03-16 | DC1-COD-L3-CX-1365 | 12d | 1d | Riley Warring | PRM |

Notes:
- DC1-COD-L3-CX-1290: Steps: EC Startup Report; Vendor Startup
- DC1-COD-L3-CX-1305: Steps: EC Startup Report; Vendor Startup
- DC1-COD-L3-CX-1320: Steps: EC Startup Report; Vendor Startup
- DC1-COD-L3-CX-1335: Steps: EC Startup Report; Vendor Startup
- DC1-COD-L3-CX-1350: Steps: EC Startup Report; Vendor Startup
- DC1-COD-L3-CX-1365: Steps: EC Startup Report; Vendor Startup

| ID | WBS | Activity | Duration | Start | Finish | Predecessors | Total float | Free float | Layton Responsible Party | Vendor Responsible Party |
| --- | --- | --- | --- | --- | --- | --- | --- | --- | --- | --- |
|  | 02 | **DC1-DH2100-ATS-E21-02 Cx L3** |  | 2026-03-12 | 2026-03-17 |  |  |  |  |  |
| DC1-COD-L3-CX-1375 |  | DC1-COD-E21-02 FTE | 1d | 2026-03-12 | 2026-03-12 | DC1-COD-L2-1250, DC1-ATS-L3-CX-1375 | 0d |  | Riley Warring | ROS |
| DC1-COD-L3-CX-1380 |  | DC1-COD-E21-02 L3 Startup | 2d | 2026-03-13 | 2026-03-16 | DC1-COD-L3-CX-1375 | 11d | 0d | Riley Warring | SIE |
| DC1-COD-L3-CX-1385 |  | DC1-COD-E21-02 BMS/EPMS | 1d | 2026-03-17 | 2026-03-17 | DC1-COD-L3-CX-1380 | 11d | 0d | Riley Warring | PRM |
|  | 03 | **DC1-DH2100-ATS-E21-03 Cx L3** |  | 2026-03-11 | 2026-03-16 |  |  |  |  |  |
| DC1-COD-L3-CX-1390 |  | DC1-COD-E21-03 FTE | 1d | 2026-03-11 | 2026-03-11 | DC1-COD-L2-1260, DC1-ATS-L3-CX-1390 | 1d | 0d | Riley Warring | ROS |
| DC1-COD-L3-CX-1395 |  | DC1-COD-E21-03 L3 Startup | 2d | 2026-03-12 | 2026-03-13 | DC1-COD-L3-CX-1390 | 12d | 0d | Riley Warring | SIE |
| DC1-COD-L3-CX-1400 |  | DC1-COD-E21-03 BMS/EPMS | 1d | 2026-03-16 | 2026-03-16 | DC1-COD-L3-CX-1395 | 12d | 1d | Riley Warring | PRM |
|  | 04 | **DC1-DH2100-ATS-E21-04 Cx L3** |  | 2026-03-12 | 2026-03-17 |  |  |  |  |  |
| DC1-COD-L3-CX-1405 |  | DC1-COD-E21-04 FTE | 1d | 2026-03-12 | 2026-03-12 | DC1-COD-L2-1270, DC1-ATS-L3-CX-1405 | 0d |  | Riley Warring | ROS |
| DC1-COD-L3-CX-1410 |  | DC1-COD-E21-04 L3 Startup | 2d | 2026-03-13 | 2026-03-16 | DC1-COD-L3-CX-1405 | 11d | 0d | Riley Warring | SIE |
| DC1-COD-L3-CX-1415 |  | DC1-COD-E21-04 BMS/EPMS | 1d | 2026-03-17 | 2026-03-17 | DC1-COD-L3-CX-1410 | 11d | 0d | Riley Warring | PRM |
|  | 05 | **DC1-DH2100-ATS-E21-05 Cx L3** |  | 2026-03-11 | 2026-03-16 |  |  |  |  |  |
| DC1-COD-L3-CX-1420 |  | DC1-COD-E21-05 FTE | 1d | 2026-03-11 | 2026-03-11 | DC1-COD-L2-1280, DC1-ATS-L3-CX-1420 | 1d | 0d | Riley Warring | ROS |
| DC1-COD-L3-CX-1425 |  | DC1-COD-E21-05 L3 Startup | 2d | 2026-03-12 | 2026-03-13 | DC1-COD-L3-CX-1420 | 12d | 0d | Riley Warring | SIE |
| DC1-COD-L3-CX-1430 |  | DC1-COD-E21-05 BMS/EPMS | 1d | 2026-03-16 | 2026-03-16 | DC1-COD-L3-CX-1425 | 12d | 1d | Riley Warring | PRM |
|  | 06 | **DC1-DH2100-ATS-E21-06 Cx L3** |  | 2026-03-12 | 2026-03-17 |  |  |  |  |  |
| DC1-COD-L3-CX-1435 |  | DC1-COD-E21-06 FTE | 1d | 2026-03-12 | 2026-03-12 | DC1-COD-L2-1290, DC1-ATS-L3-CX-1435 | 0d |  | Riley Warring | ROS |
| DC1-COD-L3-CX-1440 |  | DC1-COD-E21-06 L3 Startup | 2d | 2026-03-13 | 2026-03-16 | DC1-COD-L3-CX-1435 | 11d | 0d | Riley Warring | SIE |
| DC1-COD-L3-CX-1445 |  | DC1-COD-E21-06 BMS/EPMS | 1d | 2026-03-17 | 2026-03-17 | DC1-COD-L3-CX-1440 | 11d | 0d | Riley Warring | PRM |
|  | 06 | **DC1-DH2100-COD-F21 Cx L3** |  | 2026-03-11 | 2026-03-17 |  |  |  |  |  |
|  | 01 | **DC1-DH2100-COD-F21-01 Cx L3** |  | 2026-03-11 | 2026-03-16 |  |  |  |  |  |
| DC1-COD-L3-CX-1450 |  | DC1-COD-F21-01 FTE | 1d | 2026-03-11 | 2026-03-11 | DC1-COD-L2-1300, DC1-ATS-L3-CX-1450, QTS-1080.1 FF | 1d | 0d | Riley Warring | ROS |
| DC1-COD-L3-CX-1455 |  | DC1-COD-F21-01 L3 Startup | 2d | 2026-03-12 | 2026-03-13 | DC1-COD-L3-CX-1450 | 12d | 0d | Riley Warring | SIE |
| DC1-COD-L3-CX-1460 |  | DC1-COD-F21-01 BMS/EPMS | 1d | 2026-03-16 | 2026-03-16 | DC1-COD-L3-CX-1455 | 12d | 1d | Riley Warring | PRM |

Notes:
- DC1-COD-L3-CX-1380: Steps: EC Startup Report; Vendor Startup
- DC1-COD-L3-CX-1395: Steps: EC Startup Report; Vendor Startup
- DC1-COD-L3-CX-1410: Steps: EC Startup Report; Vendor Startup
- DC1-COD-L3-CX-1425: Steps: EC Startup Report; Vendor Startup
- DC1-COD-L3-CX-1440: Steps: EC Startup Report; Vendor Startup
- DC1-COD-L3-CX-1455: Steps: EC Startup Report; Vendor Startup

| ID | WBS | Activity | Duration | Start | Finish | Predecessors | Total float | Free float | Layton Responsible Party | Vendor Responsible Party |
| --- | --- | --- | --- | --- | --- | --- | --- | --- | --- | --- |
|  | 02 | **DC1-DH2100-COD-F21-02 Cx L3** |  | 2026-03-12 | 2026-03-17 |  |  |  |  |  |
| DC1-COD-L3-CX-1465 |  | DC1-COD-F21-02 FTE | 1d | 2026-03-12 | 2026-03-12 | DC1-COD-L2-1310, DC1-ATS-L3-CX-1465 | 0d |  | Riley Warring | ROS |
| DC1-COD-L3-CX-1470 |  | DC1-COD-F21-02 L3 Startup | 2d | 2026-03-13 | 2026-03-16 | DC1-COD-L3-CX-1465 | 11d | 0d | Riley Warring | SIE |
| DC1-COD-L3-CX-1475 |  | DC1-COD-F21-02 BMS/EPMS | 1d | 2026-03-17 | 2026-03-17 | DC1-COD-L3-CX-1470 | 11d | 0d | Riley Warring | PRM |
|  | 03 | **DC1-DH2100-COD-F21-03 Cx L3** |  | 2026-03-11 | 2026-03-16 |  |  |  |  |  |
| DC1-COD-L3-CX-1480 |  | DC1-COD-F21-03 FTE | 1d | 2026-03-11 | 2026-03-11 | DC1-COD-L2-1320, DC1-ATS-L3-CX-1480 | 1d | 0d | Riley Warring | ROS |
| DC1-COD-L3-CX-1485 |  | DC1-COD-F21-03 L3 Startup | 2d | 2026-03-12 | 2026-03-13 | DC1-COD-L3-CX-1480 | 12d | 0d | Riley Warring | SIE |
| DC1-COD-L3-CX-1490 |  | DC1-COD-F21-03 BMS/EPMS | 1d | 2026-03-16 | 2026-03-16 | DC1-COD-L3-CX-1485 | 12d | 1d | Riley Warring | PRM |
|  | 04 | **DC1-DH2100-COD-F21-04 Cx L3** |  | 2026-03-12 | 2026-03-17 |  |  |  |  |  |
| DC1-COD-L3-CX-1495 |  | DC1-COD-F21-04 FTE | 1d | 2026-03-12 | 2026-03-12 | DC1-COD-L2-1330, DC1-ATS-L3-CX-1495 | 0d |  | Riley Warring | ROS |
| DC1-COD-L3-CX-1500 |  | DC1-COD-F21-04 L3 Startup | 2d | 2026-03-13 | 2026-03-16 | DC1-COD-L3-CX-1495 | 11d | 0d | Riley Warring | SIE |
| DC1-COD-L3-CX-1505 |  | DC1-COD-F21-04 BMS/EPMS | 1d | 2026-03-17 | 2026-03-17 | DC1-COD-L3-CX-1500 | 11d | 0d | Riley Warring | PRM |
|  | 05 | **DC1-DH2100-COD-F21-05 Cx L3** |  | 2026-03-11 | 2026-03-16 |  |  |  |  |  |
| DC1-COD-L3-CX-1510 |  | DC1-COD-F21-05 FTE | 1d | 2026-03-11 | 2026-03-11 | DC1-COD-L2-1340, DC1-ATS-L3-CX-1510 | 1d | 0d | Riley Warring | ROS |
| DC1-COD-L3-CX-1515 |  | DC1-COD-F21-05 L3 Startup | 2d | 2026-03-12 | 2026-03-13 | DC1-COD-L3-CX-1510 | 12d | 0d | Riley Warring | SIE |
| DC1-COD-L3-CX-1520 |  | DC1-COD-F21-05 BMS/EPMS | 1d | 2026-03-16 | 2026-03-16 | DC1-COD-L3-CX-1515 | 12d | 1d | Riley Warring | PRM |
|  | 06 | **DC1-DH2100-COD-F21-06 Cx L3** |  | 2026-03-12 | 2026-03-17 |  |  |  |  |  |
| DC1-COD-L3-CX-1525 |  | DC1-COD-F21-06 FTE | 1d | 2026-03-12 | 2026-03-12 | DC1-COD-L2-1350, DC1-ATS-L3-CX-1525 | 0d |  | Riley Warring | ROS |
| DC1-COD-L3-CX-1530 |  | DC1-COD-F21-06 L3 Startup | 2d | 2026-03-13 | 2026-03-16 | DC1-COD-L3-CX-1525 | 11d | 0d | Riley Warring | SIE |
| DC1-COD-L3-CX-1535 |  | DC1-COD-F21-06 BMS/EPMS | 1d | 2026-03-17 | 2026-03-17 | DC1-COD-L3-CX-1530 | 11d | 0d | Riley Warring | PRM |
|  | 07 | **DC1-DH2100 RPPs Cx L3** |  | 2026-03-12 | 2026-03-18 |  |  |  |  |  |
|  | 01 | **DC1-DH2100-RPP-A21 Cx L3** |  | 2026-03-12 | 2026-03-17 |  |  |  |  |  |
|  | 01 | **DC1-DH2100-RPP-A21-01 Cx L3** |  | 2026-03-12 | 2026-03-17 |  |  |  |  |  |
| DC1-RPP-L3-CX-1000 |  | DC1-RPP-A21-01 A/B FTE | 1d | 2026-03-12 | 2026-03-12 | DC1-RPP-L2-1000, DC1-COD-L3-CX-1000 | 1d | 0d | Riley Warring | ROS |
| DC1-RPP-L3-CX-1005 |  | DC1-RPP-A21-01 A/B L3 Startup | 2d | 2026-03-13 | 2026-03-16 | DC1-RPP-L3-CX-1000 | 33d | 0d | Riley Warring | SQD |
| DC1-RPP-L3-CX-1010 |  | DC1-RPP-A21-01 A/B BMS/EPMS | 1d | 2026-03-17 | 2026-03-17 | DC1-RPP-L3-CX-1005 | 33d |  | Riley Warring | PRM |

Notes:
- DC1-COD-L3-CX-1470: Steps: EC Startup Report; Vendor Startup
- DC1-COD-L3-CX-1485: Steps: EC Startup Report; Vendor Startup
- DC1-COD-L3-CX-1500: Steps: EC Startup Report; Vendor Startup
- DC1-COD-L3-CX-1515: Steps: EC Startup Report; Vendor Startup
- DC1-COD-L3-CX-1530: Steps: EC Startup Report; Vendor Startup
- DC1-RPP-L3-CX-1005: Steps: EC Startup Report; Vendor Startup

| ID | WBS | Activity | Duration | Start | Finish | Predecessors | Total float | Free float | Layton Responsible Party | Vendor Responsible Party |
| --- | --- | --- | --- | --- | --- | --- | --- | --- | --- | --- |
|  | 02 | **DC1-DH2100-RPP-A21-02 Cx L3** |  | 2026-03-12 | 2026-03-17 |  |  |  |  |  |
| DC1-RPP-L3-CX-1015 |  | DC1-RPP-A21-02 A/B FTE | 1d | 2026-03-12 | 2026-03-12 | DC1-RPP-L2-1010, DC1-COD-L3-CX-1015 | 1d | 0d | Riley Warring | ROS |
| DC1-RPP-L3-CX-1020 |  | DC1-RPP-A21-02 A/B L3 Startup | 2d | 2026-03-13 | 2026-03-16 | DC1-RPP-L3-CX-1015 | 33d | 0d | Riley Warring | SQD |
| DC1-RPP-L3-CX-1025 |  | DC1-RPP-A21-02 A/B BMS/EPMS | 1d | 2026-03-17 | 2026-03-17 | DC1-RPP-L3-CX-1020 | 33d |  | Riley Warring | PRM |
|  | 03 | **DC1-DH2100-RPP-A21-03 Cx L3** |  | 2026-03-12 | 2026-03-17 |  |  |  |  |  |
| DC1-RPP-L3-CX-1030 |  | DC1-RPP-A21-03 A/B FTE | 1d | 2026-03-12 | 2026-03-12 | DC1-RPP-L2-1020, DC1-COD-L3-CX-1030 | 1d | 0d | Riley Warring | ROS |
| DC1-RPP-L3-CX-1035 |  | DC1-RPP-A21-03 A/B L3 Startup | 2d | 2026-03-13 | 2026-03-16 | DC1-RPP-L3-CX-1030 | 33d | 0d | Riley Warring | SQD |
| DC1-RPP-L3-CX-1040 |  | DC1-RPP-A21-03 A/B BMS/EPMS | 1d | 2026-03-17 | 2026-03-17 | DC1-RPP-L3-CX-1035 | 33d |  | Riley Warring | PRM |
|  | 04 | **DC1-DH2100-RPP-A21-04 Cx L3** |  | 2026-03-12 | 2026-03-17 |  |  |  |  |  |
| DC1-RPP-L3-CX-1045 |  | DC1-RPP-A21-04 A/B FTE | 1d | 2026-03-12 | 2026-03-12 | DC1-RPP-L2-1030, DC1-COD-L3-CX-1045 | 1d | 0d | Riley Warring | ROS |
| DC1-RPP-L3-CX-1050 |  | DC1-RPP-A21-04 A/B L3 Startup | 2d | 2026-03-13 | 2026-03-16 | DC1-RPP-L3-CX-1045 | 33d | 0d | Riley Warring | SQD |
| DC1-RPP-L3-CX-1055 |  | DC1-RPP-A21-04 A/B BMS/EPMS | 1d | 2026-03-17 | 2026-03-17 | DC1-RPP-L3-CX-1050 | 33d |  | Riley Warring | PRM |
|  | 05 | **DC1-DH2100-RPP-A21-05 Cx L3** |  | 2026-03-12 | 2026-03-17 |  |  |  |  |  |
| DC1-RPP-L3-CX-1060 |  | DC1-RPP-A21-05 A/B FTE | 1d | 2026-03-12 | 2026-03-12 | DC1-RPP-L2-1040, DC1-COD-L3-CX-1060 | 1d | 0d | Riley Warring | ROS |
| DC1-RPP-L3-CX-1065 |  | DC1-RPP-A21-05 A/B L3 Startup | 2d | 2026-03-13 | 2026-03-16 | DC1-RPP-L3-CX-1060 | 33d | 0d | Riley Warring | SQD |
| DC1-RPP-L3-CX-1070 |  | DC1-RPP-A21-05 A/B BMS/EPMS | 1d | 2026-03-17 | 2026-03-17 | DC1-RPP-L3-CX-1065 | 33d |  | Riley Warring | PRM |
|  | 06 | **DC1-DH2100-RPP-A21-06 Cx L3** |  | 2026-03-12 | 2026-03-17 |  |  |  |  |  |
| DC1-RPP-L3-CX-1075 |  | DC1-RPP-A21-06 A/B FTE | 1d | 2026-03-12 | 2026-03-12 | DC1-RPP-L2-1050, DC1-COD-L3-CX-1075 | 1d | 0d | Riley Warring | ROS |
| DC1-RPP-L3-CX-1080 |  | DC1-RPP-A21-06 A/B L3 Startup | 2d | 2026-03-13 | 2026-03-16 | DC1-RPP-L3-CX-1075 | 33d | 0d | Riley Warring | SQD |
| DC1-RPP-L3-CX-1085 |  | DC1-RPP-A21-06 A/B BMS/EPMS | 1d | 2026-03-17 | 2026-03-17 | DC1-RPP-L3-CX-1080 | 33d |  | Riley Warring | PRM |
|  | 02 | **DC1-DH2100-RPP-B21 Cx L3** |  | 2026-03-12 | 2026-03-18 |  |  |  |  |  |
|  | 01 | **DC1-DH2100-RPP-B21-01 Cx L3** |  | 2026-03-12 | 2026-03-17 |  |  |  |  |  |
| DC1-RPP-L3-CX-1090 |  | DC1-RPP-B21-01 A/B FTE | 1d | 2026-03-12 | 2026-03-12 | DC1-RPP-L2-1060, DC1-COD-L3-CX-1090 | 1d | 0d | Riley Warring | ROS |
| DC1-RPP-L3-CX-1095 |  | DC1-RPP-B21-01 A/B L3 Startup | 2d | 2026-03-13 | 2026-03-16 | DC1-RPP-L3-CX-1090 | 33d | 0d | Riley Warring | SQD |
| DC1-RPP-L3-CX-1100 |  | DC1-RPP-B21-01 A/B BMS/EPMS | 1d | 2026-03-17 | 2026-03-17 | DC1-RPP-L3-CX-1095 | 33d |  | Riley Warring | PRM |

Notes:
- DC1-RPP-L3-CX-1020: Steps: EC Startup Report; Vendor Startup
- DC1-RPP-L3-CX-1035: Steps: EC Startup Report; Vendor Startup
- DC1-RPP-L3-CX-1050: Steps: EC Startup Report; Vendor Startup
- DC1-RPP-L3-CX-1065: Steps: EC Startup Report; Vendor Startup
- DC1-RPP-L3-CX-1080: Steps: EC Startup Report; Vendor Startup
- DC1-RPP-L3-CX-1095: Steps: EC Startup Report; Vendor Startup

| ID | WBS | Activity | Duration | Start | Finish | Predecessors | Total float | Free float | Layton Responsible Party | Vendor Responsible Party |
| --- | --- | --- | --- | --- | --- | --- | --- | --- | --- | --- |
|  | 02 | **DC1-DH2100-RPP-B21-02 Cx L3** |  | 2026-03-13 | 2026-03-18 |  |  |  |  |  |
| DC1-RPP-L3-CX-1105 |  | DC1-RPP-B21-02 A/B FTE | 1d | 2026-03-13 | 2026-03-13 | DC1-RPP-L2-1070, DC1-COD-L3-CX-1105 | 0d |  | Riley Warring | ROS |
| DC1-RPP-L3-CX-1110 |  | DC1-RPP-B21-02 A/B L3 Startup | 2d | 2026-03-16 | 2026-03-17 | DC1-RPP-L3-CX-1105 | 32d | 0d | Riley Warring | SQD |
| DC1-RPP-L3-CX-1115 |  | DC1-RPP-B21-02 A/B BMS/EPMS | 1d | 2026-03-18 | 2026-03-18 | DC1-RPP-L3-CX-1110 | 32d |  | Riley Warring | PRM |
|  | 03 | **DC1-DH2100-RPP-B21-03 Cx L3** |  | 2026-03-12 | 2026-03-17 |  |  |  |  |  |
| DC1-RPP-L3-CX-1120 |  | DC1-RPP-B21-03 A/B FTE | 1d | 2026-03-12 | 2026-03-12 | DC1-RPP-L2-1080, DC1-COD-L3-CX-1120 | 1d | 0d | Riley Warring | ROS |
| DC1-RPP-L3-CX-1125 |  | DC1-RPP-B21-03 A/B L3 Startup | 2d | 2026-03-13 | 2026-03-16 | DC1-RPP-L3-CX-1120 | 33d | 0d | Riley Warring | SQD |
| DC1-RPP-L3-CX-1130 |  | DC1-RPP-B21-03 A/B BMS/EPMS | 1d | 2026-03-17 | 2026-03-17 | DC1-RPP-L3-CX-1125 | 33d |  | Riley Warring | PRM |
|  | 04 | **DC1-DH2100-RPP-B21-04 Cx L3** |  | 2026-03-13 | 2026-03-18 |  |  |  |  |  |
| DC1-RPP-L3-CX-1135 |  | DC1-RPP-B21-04 A/B FTE | 1d | 2026-03-13 | 2026-03-13 | DC1-RPP-L2-1090, DC1-COD-L3-CX-1135 | 0d |  | Riley Warring | ROS |
| DC1-RPP-L3-CX-1140 |  | DC1-RPP-B21-04 A/B L3 Startup | 2d | 2026-03-16 | 2026-03-17 | DC1-RPP-L3-CX-1135 | 32d | 0d | Riley Warring | SQD |
| DC1-RPP-L3-CX-1145 |  | DC1-RPP-B21-04 A/B BMS/EPMS | 1d | 2026-03-18 | 2026-03-18 | DC1-RPP-L3-CX-1140 | 32d |  | Riley Warring | PRM |
|  | 05 | **DC1-DH2100-RPP-B21-05 Cx L3** |  | 2026-03-12 | 2026-03-17 |  |  |  |  |  |
| DC1-RPP-L3-CX-1150 |  | DC1-RPP-B21-05 A/B FTE | 1d | 2026-03-12 | 2026-03-12 | DC1-RPP-L2-1100, DC1-COD-L3-CX-1150 | 1d | 0d | Riley Warring | ROS |
| DC1-RPP-L3-CX-1155 |  | DC1-RPP-B21-05 A/B L3 Startup | 2d | 2026-03-13 | 2026-03-16 | DC1-RPP-L3-CX-1150 | 33d | 0d | Riley Warring | SQD |
| DC1-RPP-L3-CX-1160 |  | DC1-RPP-B21-05 A/B BMS/EPMS | 1d | 2026-03-17 | 2026-03-17 | DC1-RPP-L3-CX-1155 | 33d |  | Riley Warring | PRM |
|  | 06 | **DC1-DH2100-RPP-B21-06 Cx L3** |  | 2026-03-13 | 2026-03-18 |  |  |  |  |  |
| DC1-RPP-L3-CX-1165 |  | DC1-RPP-B21-06 A/B FTE | 1d | 2026-03-13 | 2026-03-13 | DC1-RPP-L2-1110, DC1-COD-L3-CX-1165 | 0d |  | Riley Warring | ROS |
| DC1-RPP-L3-CX-1170 |  | DC1-RPP-B21-06 A/B L3 Startup | 2d | 2026-03-16 | 2026-03-17 | DC1-RPP-L3-CX-1165 | 32d | 0d | Riley Warring | SQD |
| DC1-RPP-L3-CX-1175 |  | DC1-RPP-B21-06 A/B BMS/EPMS | 1d | 2026-03-18 | 2026-03-18 | DC1-RPP-L3-CX-1170 | 32d |  | Riley Warring | PRM |
|  | 03 | **DC1-DH2100-RPP-C21 Cx L3** |  | 2026-03-12 | 2026-03-18 |  |  |  |  |  |
|  | 01 | **DC1-DH2100-RPP-C21-01 Cx L3** |  | 2026-03-12 | 2026-03-17 |  |  |  |  |  |
| DC1-RPP-L3-CX-1180 |  | DC1-RPP-C21-01 A/B FTE | 1d | 2026-03-12 | 2026-03-12 | DC1-RPP-L2-1120, DC1-COD-L3-CX-1180 | 1d | 0d | Riley Warring | ROS |
| DC1-RPP-L3-CX-1185 |  | DC1-RPP-C21-01 A/B L3 Startup | 2d | 2026-03-13 | 2026-03-16 | DC1-RPP-L3-CX-1180 | 33d | 0d | Riley Warring | SQD |
| DC1-RPP-L3-CX-1190 |  | DC1-RPP-C21-01 A/B BMS/EPMS | 1d | 2026-03-17 | 2026-03-17 | DC1-RPP-L3-CX-1185 | 33d |  | Riley Warring | PRM |

Notes:
- DC1-RPP-L3-CX-1110: Steps: EC Startup Report; Vendor Startup
- DC1-RPP-L3-CX-1125: Steps: EC Startup Report; Vendor Startup
- DC1-RPP-L3-CX-1140: Steps: EC Startup Report; Vendor Startup
- DC1-RPP-L3-CX-1155: Steps: EC Startup Report; Vendor Startup
- DC1-RPP-L3-CX-1170: Steps: EC Startup Report; Vendor Startup
- DC1-RPP-L3-CX-1185: Steps: EC Startup Report; Vendor Startup

| ID | WBS | Activity | Duration | Start | Finish | Predecessors | Total float | Free float | Layton Responsible Party | Vendor Responsible Party |
| --- | --- | --- | --- | --- | --- | --- | --- | --- | --- | --- |
|  | 02 | **DC1-DH2100-RPP-C21-02 Cx L3** |  | 2026-03-13 | 2026-03-18 |  |  |  |  |  |
| DC1-RPP-L3-CX-1195 |  | DC1-RPP-C21-02 A/B FTE | 1d | 2026-03-13 | 2026-03-13 | DC1-RPP-L2-1130, DC1-COD-L3-CX-1195 | 0d |  | Riley Warring | ROS |
| DC1-RPP-L3-CX-1200 |  | DC1-RPP-C21-02 A/B L3 Startup | 2d | 2026-03-16 | 2026-03-17 | DC1-RPP-L3-CX-1195 | 32d | 0d | Riley Warring | SQD |
| DC1-RPP-L3-CX-1205 |  | DC1-RPP-C21-02 A/B BMS/EPMS | 1d | 2026-03-18 | 2026-03-18 | DC1-RPP-L3-CX-1200 | 32d |  | Riley Warring | PRM |
|  | 03 | **DC1-DH2100-RPP-C21-03 Cx L3** |  | 2026-03-12 | 2026-03-17 |  |  |  |  |  |
| DC1-RPP-L3-CX-1210 |  | DC1-RPP-C21-03 A/B FTE | 1d | 2026-03-12 | 2026-03-12 | DC1-RPP-L2-1140, DC1-COD-L3-CX-1210 | 1d | 0d | Riley Warring | ROS |
| DC1-RPP-L3-CX-1215 |  | DC1-RPP-C21-03 A/B L3 Startup | 2d | 2026-03-13 | 2026-03-16 | DC1-RPP-L3-CX-1210 | 33d | 0d | Riley Warring | SQD |
| DC1-RPP-L3-CX-1220 |  | DC1-RPP-C21-03 A/B BMS/EPMS | 1d | 2026-03-17 | 2026-03-17 | DC1-RPP-L3-CX-1215 | 33d |  | Riley Warring | PRM |
|  | 04 | **DC1-DH2100-RPP-C21-04 Cx L3** |  | 2026-03-13 | 2026-03-18 |  |  |  |  |  |
| DC1-RPP-L3-CX-1225 |  | DC1-RPP-C21-04 A/B FTE | 1d | 2026-03-13 | 2026-03-13 | DC1-RPP-L2-1150, DC1-COD-L3-CX-1225 | 0d |  | Riley Warring | ROS |
| DC1-RPP-L3-CX-1230 |  | DC1-RPP-C21-04 A/B L3 Startup | 2d | 2026-03-16 | 2026-03-17 | DC1-RPP-L3-CX-1225 | 32d | 0d | Riley Warring | SQD |
| DC1-RPP-L3-CX-1235 |  | DC1-RPP-C21-04 A/B BMS/EPMS | 1d | 2026-03-18 | 2026-03-18 | DC1-RPP-L3-CX-1230 | 32d |  | Riley Warring | PRM |
|  | 05 | **DC1-DH2100-RPP-C21-05 Cx L3** |  | 2026-03-12 | 2026-03-17 |  |  |  |  |  |
| DC1-RPP-L3-CX-1240 |  | DC1-RPP-C21-05 A/B FTE | 1d | 2026-03-12 | 2026-03-12 | DC1-RPP-L2-1160, DC1-COD-L3-CX-1240 | 1d | 0d | Riley Warring | ROS |
| DC1-RPP-L3-CX-1245 |  | DC1-RPP-C21-05 A/B L3 Startup | 2d | 2026-03-13 | 2026-03-16 | DC1-RPP-L3-CX-1240 | 33d | 0d | Riley Warring | SQD |
| DC1-RPP-L3-CX-1250 |  | DC1-RPP-C21-05 A/B BMS/EPMS | 1d | 2026-03-17 | 2026-03-17 | DC1-RPP-L3-CX-1245 | 33d |  | Riley Warring | PRM |
|  | 06 | **DC1-DH2100-RPP-C21-06 Cx L3** |  | 2026-03-13 | 2026-03-18 |  |  |  |  |  |
| DC1-RPP-L3-CX-1255 |  | DC1-RPP-C21-06 A/B FTE | 1d | 2026-03-13 | 2026-03-13 | DC1-RPP-L2-1170, DC1-COD-L3-CX-1255 | 0d |  | Riley Warring | ROS |
| DC1-RPP-L3-CX-1260 |  | DC1-RPP-C21-06 A/B L3 Startup | 2d | 2026-03-16 | 2026-03-17 | DC1-RPP-L3-CX-1255 | 32d | 0d | Riley Warring | SQD |
| DC1-RPP-L3-CX-1265 |  | DC1-RPP-C21-06 A/B BMS/EPMS | 1d | 2026-03-18 | 2026-03-18 | DC1-RPP-L3-CX-1260 | 32d |  | Riley Warring | PRM |
|  | 04 | **DC1-DH2100-RPP-D21 Cx L3** |  | 2026-03-12 | 2026-03-18 |  |  |  |  |  |
|  | 01 | **DC1-DH2100-RPP-D21-01 Cx L3** |  | 2026-03-12 | 2026-03-17 |  |  |  |  |  |
| DC1-RPP-L3-CX-1270 |  | DC1-RPP-D21-01 A/B FTE | 1d | 2026-03-12 | 2026-03-12 | DC1-RPP-L2-1180, DC1-COD-L3-CX-1270 | 1d | 0d | Riley Warring | ROS |
| DC1-RPP-L3-CX-1275 |  | DC1-RPP-D21-01 A/B L3 Startup | 2d | 2026-03-13 | 2026-03-16 | DC1-RPP-L3-CX-1270 | 33d | 0d | Riley Warring | SQD |
| DC1-RPP-L3-CX-1280 |  | DC1-RPP-D21-01 A/B BMS/EPMS | 1d | 2026-03-17 | 2026-03-17 | DC1-RPP-L3-CX-1275 | 33d |  | Riley Warring | PRM |

Notes:
- DC1-RPP-L3-CX-1200: Steps: EC Startup Report; Vendor Startup
- DC1-RPP-L3-CX-1215: Steps: EC Startup Report; Vendor Startup
- DC1-RPP-L3-CX-1230: Steps: EC Startup Report; Vendor Startup
- DC1-RPP-L3-CX-1245: Steps: EC Startup Report; Vendor Startup
- DC1-RPP-L3-CX-1260: Steps: EC Startup Report; Vendor Startup
- DC1-RPP-L3-CX-1275: Steps: EC Startup Report; Vendor Startup

| ID | WBS | Activity | Duration | Start | Finish | Predecessors | Total float | Free float | Layton Responsible Party | Vendor Responsible Party |
| --- | --- | --- | --- | --- | --- | --- | --- | --- | --- | --- |
|  | 02 | **DC1-DH2100-RPP-D21-02 Cx L3** |  | 2026-03-13 | 2026-03-18 |  |  |  |  |  |
| DC1-RPP-L3-CX-1285 |  | DC1-RPP-D21-02 A/B FTE | 1d | 2026-03-13 | 2026-03-13 | DC1-RPP-L2-1190, DC1-COD-L3-CX-1285 | 0d |  | Riley Warring | ROS |
| DC1-RPP-L3-CX-1290 |  | DC1-RPP-D21-02 A/B L3 Startup | 2d | 2026-03-16 | 2026-03-17 | DC1-RPP-L3-CX-1285 | 32d | 0d | Riley Warring | SQD |
| DC1-RPP-L3-CX-1295 |  | DC1-RPP-D21-02 A/B BMS/EPMS | 1d | 2026-03-18 | 2026-03-18 | DC1-RPP-L3-CX-1290 | 32d |  | Riley Warring | PRM |
|  | 03 | **DC1-DH2100-RPP-D21-03 Cx L3** |  | 2026-03-12 | 2026-03-17 |  |  |  |  |  |
| DC1-RPP-L3-CX-1300 |  | DC1-RPP-D21-03 A/B FTE | 1d | 2026-03-12 | 2026-03-12 | DC1-RPP-L2-1200, DC1-COD-L3-CX-1300 | 1d | 0d | Riley Warring | ROS |
| DC1-RPP-L3-CX-1305 |  | DC1-RPP-D21-03 A/B L3 Startup | 2d | 2026-03-13 | 2026-03-16 | DC1-RPP-L3-CX-1300 | 33d | 0d | Riley Warring | SQD |
| DC1-RPP-L3-CX-1310 |  | DC1-RPP-D21-03 A/B BMS/EPMS | 1d | 2026-03-17 | 2026-03-17 | DC1-RPP-L3-CX-1305 | 33d |  | Riley Warring | PRM |
|  | 04 | **DC1-DH2100-RPP-D21-04 Cx L3** |  | 2026-03-13 | 2026-03-18 |  |  |  |  |  |
| DC1-RPP-L3-CX-1315 |  | DC1-RPP-D21-04 A/B FTE | 1d | 2026-03-13 | 2026-03-13 | DC1-RPP-L2-1210, DC1-COD-L3-CX-1315 | 0d |  | Riley Warring | ROS |
| DC1-RPP-L3-CX-1320 |  | DC1-RPP-D21-04 A/B L3 Startup | 2d | 2026-03-16 | 2026-03-17 | DC1-RPP-L3-CX-1315 | 32d | 0d | Riley Warring | SQD |
| DC1-RPP-L3-CX-1325 |  | DC1-RPP-D21-04 A/B BMS/EPMS | 1d | 2026-03-18 | 2026-03-18 | DC1-RPP-L3-CX-1320 | 32d |  | Riley Warring | PRM |
|  | 05 | **DC1-DH2100-RPP-D21-05 Cx L3** |  | 2026-03-12 | 2026-03-17 |  |  |  |  |  |
| DC1-RPP-L3-CX-1330 |  | DC1-RPP-D21-05 A/B FTE | 1d | 2026-03-12 | 2026-03-12 | DC1-RPP-L2-1220, DC1-COD-L3-CX-1330 | 1d | 0d | Riley Warring | ROS |
| DC1-RPP-L3-CX-1335 |  | DC1-RPP-D21-05 A/B L3 Startup | 2d | 2026-03-13 | 2026-03-16 | DC1-RPP-L3-CX-1330 | 33d | 0d | Riley Warring | SQD |
| DC1-RPP-L3-CX-1340 |  | DC1-RPP-D21-05 A/B BMS/EPMS | 1d | 2026-03-17 | 2026-03-17 | DC1-RPP-L3-CX-1335 | 33d |  | Riley Warring | PRM |
|  | 06 | **DC1-DH2100-RPP-D21-06 Cx L3** |  | 2026-03-13 | 2026-03-18 |  |  |  |  |  |
| DC1-RPP-L3-CX-1345 |  | DC1-RPP-D21-06 A/B FTE | 1d | 2026-03-13 | 2026-03-13 | DC1-RPP-L2-1230, DC1-COD-L3-CX-1345 | 0d |  | Riley Warring | ROS |
| DC1-RPP-L3-CX-1350 |  | DC1-RPP-D21-06 A/B L3 Startup | 2d | 2026-03-16 | 2026-03-17 | DC1-RPP-L3-CX-1345 | 32d | 0d | Riley Warring | SQD |
| DC1-RPP-L3-CX-1355 |  | DC1-RPP-D21-06 A/B BMS/EPMS | 1d | 2026-03-18 | 2026-03-18 | DC1-RPP-L3-CX-1350 | 32d |  | Riley Warring | PRM |
|  | 05 | **DC1-DH2100-RPP-E21 Cx L3** |  | 2026-03-12 | 2026-03-18 |  |  |  |  |  |
|  | 01 | **DC1-DH2100-RPP-E21-01 Cx L3** |  | 2026-03-12 | 2026-03-17 |  |  |  |  |  |
| DC1-RPP-L3-CX-1360 |  | DC1-RPP-E21-01 A/B FTE | 1d | 2026-03-12 | 2026-03-12 | DC1-RPP-L2-1240, DC1-COD-L3-CX-1360 | 1d | 0d | Riley Warring | ROS |
| DC1-RPP-L3-CX-1365 |  | DC1-RPP-E21-01 A/B L3 Startup | 2d | 2026-03-13 | 2026-03-16 | DC1-RPP-L3-CX-1360 | 33d | 0d | Riley Warring | SQD |
| DC1-RPP-L3-CX-1370 |  | DC1-RPP-E21-01 A/B BMS/EPMS | 1d | 2026-03-17 | 2026-03-17 | DC1-RPP-L3-CX-1365 | 33d |  | Riley Warring | PRM |

Notes:
- DC1-RPP-L3-CX-1290: Steps: EC Startup Report; Vendor Startup
- DC1-RPP-L3-CX-1305: Steps: EC Startup Report; Vendor Startup
- DC1-RPP-L3-CX-1320: Steps: EC Startup Report; Vendor Startup
- DC1-RPP-L3-CX-1335: Steps: EC Startup Report; Vendor Startup
- DC1-RPP-L3-CX-1350: Steps: EC Startup Report; Vendor Startup
- DC1-RPP-L3-CX-1365: Steps: EC Startup Report; Vendor Startup

| ID | WBS | Activity | Duration | Start | Finish | Predecessors | Total float | Free float | Layton Responsible Party | Vendor Responsible Party |
| --- | --- | --- | --- | --- | --- | --- | --- | --- | --- | --- |
|  | 02 | **DC1-DH2100-RPP-E21-02 Cx L3** |  | 2026-03-13 | 2026-03-18 |  |  |  |  |  |
| DC1-RPP-L3-CX-1375 |  | DC1-RPP-E21-02 A/B FTE | 1d | 2026-03-13 | 2026-03-13 | DC1-RPP-L2-1250, DC1-COD-L3-CX-1375 | 0d |  | Riley Warring | ROS |
| DC1-RPP-L3-CX-1380 |  | DC1-RPP-E21-02 A/B L3 Startup | 2d | 2026-03-16 | 2026-03-17 | DC1-RPP-L3-CX-1375 | 32d | 0d | Riley Warring | SQD |
| DC1-RPP-L3-CX-1385 |  | DC1-RPP-E21-02 A/B BMS/EPMS | 1d | 2026-03-18 | 2026-03-18 | DC1-RPP-L3-CX-1380 | 32d |  | Riley Warring | PRM |
|  | 03 | **DC1-DH2100-RPP-E21-03 Cx L3** |  | 2026-03-12 | 2026-03-17 |  |  |  |  |  |
| DC1-RPP-L3-CX-1390 |  | DC1-RPP-E21-03 A/B FTE | 1d | 2026-03-12 | 2026-03-12 | DC1-RPP-L2-1260, DC1-COD-L3-CX-1390 | 1d | 0d | Riley Warring | ROS |
| DC1-RPP-L3-CX-1395 |  | DC1-RPP-E21-03 A/B L3 Startup | 2d | 2026-03-13 | 2026-03-16 | DC1-RPP-L3-CX-1390 | 33d | 0d | Riley Warring | SQD |
| DC1-RPP-L3-CX-1400 |  | DC1-RPP-E21-03 A/B BMS/EPMS | 1d | 2026-03-17 | 2026-03-17 | DC1-RPP-L3-CX-1395 | 33d |  | Riley Warring | PRM |
|  | 04 | **DC1-DH2100-RPP-E21-04 Cx L3** |  | 2026-03-13 | 2026-03-18 |  |  |  |  |  |
| DC1-RPP-L3-CX-1405 |  | DC1-RPP-E21-04 A/B FTE | 1d | 2026-03-13 | 2026-03-13 | DC1-RPP-L2-1270, DC1-COD-L3-CX-1405 | 0d |  | Riley Warring | ROS |
| DC1-RPP-L3-CX-1410 |  | DC1-RPP-E21-04 A/B L3 Startup | 2d | 2026-03-16 | 2026-03-17 | DC1-RPP-L3-CX-1405 | 32d | 0d | Riley Warring | SQD |
| DC1-RPP-L3-CX-1415 |  | DC1-RPP-E21-04 A/B BMS/EPMS | 1d | 2026-03-18 | 2026-03-18 | DC1-RPP-L3-CX-1410 | 32d |  | Riley Warring | PRM |
|  | 05 | **DC1-DH2100-RPP-E21-05 Cx L3** |  | 2026-03-12 | 2026-03-17 |  |  |  |  |  |
| DC1-RPP-L3-CX-1420 |  | DC1-RPP-E21-05 A/B FTE | 1d | 2026-03-12 | 2026-03-12 | DC1-RPP-L2-1280, DC1-COD-L3-CX-1420 | 1d | 0d | Riley Warring | ROS |
| DC1-RPP-L3-CX-1425 |  | DC1-RPP-E21-05 A/B L3 Startup | 2d | 2026-03-13 | 2026-03-16 | DC1-RPP-L3-CX-1420 | 33d | 0d | Riley Warring | SQD |
| DC1-RPP-L3-CX-1430 |  | DC1-RPP-E21-05 A/B BMS/EPMS | 1d | 2026-03-17 | 2026-03-17 | DC1-RPP-L3-CX-1425 | 33d |  | Riley Warring | PRM |
|  | 06 | **DC1-DH2100-RPP-E21-06 Cx L3** |  | 2026-03-13 | 2026-03-18 |  |  |  |  |  |
| DC1-RPP-L3-CX-1435 |  | DC1-RPP-E21-06 A/B FTE | 1d | 2026-03-13 | 2026-03-13 | DC1-RPP-L2-1290, DC1-COD-L3-CX-1435 | 0d |  | Riley Warring | ROS |
| DC1-RPP-L3-CX-1440 |  | DC1-RPP-E21-06 A/B L3 Startup | 2d | 2026-03-16 | 2026-03-17 | DC1-RPP-L3-CX-1435 | 32d | 0d | Riley Warring | SQD |
| DC1-RPP-L3-CX-1445 |  | DC1-RPP-E21-06 A/B BMS/EPMS | 1d | 2026-03-18 | 2026-03-18 | DC1-RPP-L3-CX-1440 | 32d |  | Riley Warring | PRM |
|  | 06 | **DC1-DH2100-RPP-F21 Cx L3** |  | 2026-03-12 | 2026-03-18 |  |  |  |  |  |
|  | 01 | **DC1-DH2100-RPP-F21-01 Cx L3** |  | 2026-03-12 | 2026-03-17 |  |  |  |  |  |
| DC1-RPP-L3-CX-1450 |  | DC1-RPP-F21-01 A/B FTE | 1d | 2026-03-12 | 2026-03-12 | DC1-RPP-L2-1300, DC1-COD-L3-CX-1450 | 1d | 0d | Riley Warring | ROS |
| DC1-RPP-L3-CX-1455 |  | DC1-RPP-F21-01 A/B L3 Startup | 2d | 2026-03-13 | 2026-03-16 | DC1-RPP-L3-CX-1450 | 33d | 0d | Riley Warring | SQD |
| DC1-RPP-L3-CX-1460 |  | DC1-RPP-F21-01 A/B BMS/EPMS | 1d | 2026-03-17 | 2026-03-17 | DC1-RPP-L3-CX-1455 | 33d |  | Riley Warring | PRM |

Notes:
- DC1-RPP-L3-CX-1380: Steps: EC Startup Report; Vendor Startup
- DC1-RPP-L3-CX-1395: Steps: EC Startup Report; Vendor Startup
- DC1-RPP-L3-CX-1410: Steps: EC Startup Report; Vendor Startup
- DC1-RPP-L3-CX-1425: Steps: EC Startup Report; Vendor Startup
- DC1-RPP-L3-CX-1440: Steps: EC Startup Report; Vendor Startup
- DC1-RPP-L3-CX-1455: Steps: EC Startup Report; Vendor Startup

| ID | WBS | Activity | Duration | Start | Finish | Predecessors | Total float | Free float | Layton Responsible Party | Vendor Responsible Party |
| --- | --- | --- | --- | --- | --- | --- | --- | --- | --- | --- |
|  | 02 | **DC1-DH2100-RPP-F21-02 Cx L3** |  | 2026-03-13 | 2026-03-18 |  |  |  |  |  |
| DC1-RPP-L3-CX-1465 |  | DC1-RPP-F21-02 A/B FTE | 1d | 2026-03-13 | 2026-03-13 | DC1-RPP-L2-1310, DC1-COD-L3-CX-1465 | 0d |  | Riley Warring | ROS |
| DC1-RPP-L3-CX-1470 |  | DC1-RPP-F21-02 A/B L3 Startup | 2d | 2026-03-16 | 2026-03-17 | DC1-RPP-L3-CX-1465 | 32d | 0d | Riley Warring | SQD |
| DC1-RPP-L3-CX-1475 |  | DC1-RPP-F21-02 A/B BMS/EPMS | 1d | 2026-03-18 | 2026-03-18 | DC1-RPP-L3-CX-1470 | 32d |  | Riley Warring | PRM |
|  | 03 | **DC1-DH2100-RPP-F21-03 Cx L3** |  | 2026-03-12 | 2026-03-17 |  |  |  |  |  |
| DC1-RPP-L3-CX-1480 |  | DC1-RPP-F21-03 A/B FTE | 1d | 2026-03-12 | 2026-03-12 | DC1-RPP-L2-1320, DC1-COD-L3-CX-1480 | 1d | 0d | Riley Warring | ROS |
| DC1-RPP-L3-CX-1485 |  | DC1-RPP-F21-03 A/B L3 Startup | 2d | 2026-03-13 | 2026-03-16 | DC1-RPP-L3-CX-1480 | 33d | 0d | Riley Warring | SQD |
| DC1-RPP-L3-CX-1490 |  | DC1-RPP-F21-03 A/B BMS/EPMS | 1d | 2026-03-17 | 2026-03-17 | DC1-RPP-L3-CX-1485 | 33d |  | Riley Warring | PRM |
|  | 04 | **DC1-DH2100-RPP-F21-04 Cx L3** |  | 2026-03-13 | 2026-03-18 |  |  |  |  |  |
| DC1-RPP-L3-CX-1495 |  | DC1-RPP-F21-04 A/B FTE | 1d | 2026-03-13 | 2026-03-13 | DC1-RPP-L2-1330, DC1-COD-L3-CX-1495 | 0d |  | Riley Warring | ROS |
| DC1-RPP-L3-CX-1500 |  | DC1-RPP-F21-04 A/B L3 Startup | 2d | 2026-03-16 | 2026-03-17 | DC1-RPP-L3-CX-1495 | 32d | 0d | Riley Warring | SQD |
| DC1-RPP-L3-CX-1505 |  | DC1-RPP-F21-04 A/B BMS/EPMS | 1d | 2026-03-18 | 2026-03-18 | DC1-RPP-L3-CX-1500 | 32d |  | Riley Warring | PRM |
|  | 05 | **DC1-DH2100-RPP-F21-05 Cx L3** |  | 2026-03-12 | 2026-03-17 |  |  |  |  |  |
| DC1-RPP-L3-CX-1510 |  | DC1-RPP-F21-05 A/B FTE | 1d | 2026-03-12 | 2026-03-12 | DC1-RPP-L2-1340, DC1-COD-L3-CX-1510 | 1d | 0d | Riley Warring | ROS |
| DC1-RPP-L3-CX-1515 |  | DC1-RPP-F21-05 A/B L3 Startup | 2d | 2026-03-13 | 2026-03-16 | DC1-RPP-L3-CX-1510 | 33d | 0d | Riley Warring | SQD |
| DC1-RPP-L3-CX-1520 |  | DC1-RPP-F21-05 A/B BMS/EPMS | 1d | 2026-03-17 | 2026-03-17 | DC1-RPP-L3-CX-1515 | 33d |  | Riley Warring | PRM |
|  | 06 | **DC1-DH2100-RPP-F21-06 Cx L3** |  | 2026-03-13 | 2026-03-18 |  |  |  |  |  |
| DC1-RPP-L3-CX-1525 |  | DC1-RPP-F21-06 A/B FTE | 1d | 2026-03-13 | 2026-03-13 | DC1-RPP-L2-1350, DC1-COD-L3-CX-1525 | 0d |  | Riley Warring | ROS |
| DC1-RPP-L3-CX-1530 |  | DC1-RPP-F21-06 A/B L3 Startup | 2d | 2026-03-16 | 2026-03-17 | DC1-RPP-L3-CX-1525 | 32d | 0d | Riley Warring | SQD |
| DC1-RPP-L3-CX-1535 |  | DC1-RPP-F21-06 A/B BMS/EPMS | 1d | 2026-03-18 | 2026-03-18 | DC1-RPP-L3-CX-1530 | 32d |  | Riley Warring | PRM |
|  | 08 | **DC1-DH2100 MOD-02 Cx L3** |  | 2026-02-17 | 2026-03-10 |  |  |  |  |  |
|  | 01 | **DC1-DH2100 MOD-A21-02 Cx L3** |  | 2026-02-17 | 2026-02-20 |  |  |  |  |  |
| DC1-MOD2-L3-Cx-1000 |  | DC1-MOD-A21-02 FTE | 1d | 2026-02-17 | 2026-02-17 | DC1-MOD02-L2-1000, DC1-SWD-L3-CX-1000 | 23d | 0d | Riley Warring | ROS |
| DC1-MOD2-L3-Cx-1010 |  | DC1-MOD-A21-02 L3 Startup | 2d | 2026-02-18 | 2026-02-19 | DC1-MOD2-L3-Cx-1000 | 28d | 0d | Riley Warring | PHE |
| DC1-MOD2-L3-Cx-1020 |  | DC1-MOD-A21-02 BMS/EPMS | 1d | 2026-02-20 | 2026-02-20 | DC1-MOD2-L3-Cx-1010 | 28d | 22d | Riley Warring | PRM |

Notes:
- DC1-RPP-L3-CX-1470: Steps: EC Startup Report; Vendor Startup
- DC1-RPP-L3-CX-1485: Steps: EC Startup Report; Vendor Startup
- DC1-RPP-L3-CX-1500: Steps: EC Startup Report; Vendor Startup
- DC1-RPP-L3-CX-1515: Steps: EC Startup Report; Vendor Startup
- DC1-RPP-L3-CX-1530: Steps: EC Startup Report; Vendor Startup
- DC1-MOD2-L3-Cx-1010: Steps: EC Startup Report; Vendor Startup

| ID | WBS | Activity | Duration | Start | Finish | Predecessors | Total float | Free float | Layton Responsible Party | Vendor Responsible Party |
| --- | --- | --- | --- | --- | --- | --- | --- | --- | --- | --- |
|  | 02 | **DC1-DH2100 MOD-B21-02 Cx L3** |  | 2026-02-17 | 2026-02-20 |  |  |  |  |  |
| DC1-MOD2-L3-Cx-1030 |  | DC1-MOD-B21-02 FTE | 1d | 2026-02-17 | 2026-02-17 | DC1-MOD02-L2-1010, DC1-SWD-L3-CX-1030 | 23d | 0d | Riley Warring | ROS |
| DC1-MOD2-L3-Cx-1040 |  | DC1-MOD-B21-02 L3 Startup | 2d | 2026-02-18 | 2026-02-19 | DC1-MOD2-L3-Cx-1030 | 28d | 0d | Riley Warring | PHE |
| DC1-MOD2-L3-Cx-1050 |  | DC1-MOD-B21-02 BMS/EPMS | 1d | 2026-02-20 | 2026-02-20 | DC1-MOD2-L3-Cx-1040 | 28d | 22d | Riley Warring | PRM |
|  | 03 | **DC1-DH2100 MOD-C21-02 Cx L3** |  | 2026-02-20 | 2026-02-25 |  |  |  |  |  |
| DC1-MOD2-L3-Cx-1060 |  | DC1-MOD-C21-02 FTE | 1d | 2026-02-20 | 2026-02-20 | DC1-MOD02-L2-1020, DC1-SWD-L3-CX-1060 | 20d | 0d | Riley Warring | ROS |
| DC1-MOD2-L3-Cx-1070 |  | DC1-MOD-C21-02 L3 Startup | 2d | 2026-02-23 | 2026-02-24 | DC1-MOD2-L3-Cx-1060 | 25d | 0d | Riley Warring | PHE |
| DC1-MOD2-L3-Cx-1080 |  | DC1-MOD-C21-02 BMS/EPMS | 1d | 2026-02-25 | 2026-02-25 | DC1-MOD2-L3-Cx-1070 | 25d | 19d | Riley Warring | PRM |
|  | 04 | **DC1-DH2100 MOD-D21-02 Cx L3** |  | 2026-02-20 | 2026-02-25 |  |  |  |  |  |
| DC1-MOD2-L3-Cx-1090 |  | DC1-MOD-D21-02 FTE | 1d | 2026-02-20 | 2026-02-20 | DC1-MOD02-L2-1030, DC1-SWD-L3-CX-1090 | 20d | 0d | Riley Warring | ROS |
| DC1-MOD2-L3-Cx-1100 |  | DC1-MOD-D21-02 L3 Startup | 2d | 2026-02-23 | 2026-02-24 | DC1-MOD2-L3-Cx-1090 | 25d | 0d | Riley Warring | PHE |
| DC1-MOD2-L3-Cx-1110 |  | DC1-MOD-D21-02 BMS/EPMS | 1d | 2026-02-25 | 2026-02-25 | DC1-MOD2-L3-Cx-1100 | 25d | 19d | Riley Warring | PRM |
|  | 05 | **DC1-DH2100 MOD-E21-02 Cx L3** |  | 2026-02-25 | 2026-03-02 |  |  |  |  |  |
| DC1-MOD2-L3-Cx-1120 |  | DC1-MOD-E21-02 FTE | 1d | 2026-02-25 | 2026-02-25 | DC1-MOD02-L2-1040, DC1-SWD-L3-CX-1120 | 17d | 0d | Riley Warring | ROS |
| DC1-MOD2-L3-Cx-1130 |  | DC1-MOD-E21-02 L3 Startup | 2d | 2026-02-26 | 2026-02-27 | DC1-MOD2-L3-Cx-1120 | 22d | 0d | Riley Warring | PHE |
| DC1-MOD2-L3-Cx-1140 |  | DC1-MOD-E21-02 BMS/EPMS | 1d | 2026-03-02 | 2026-03-02 | DC1-MOD2-L3-Cx-1130 | 22d | 16d | Riley Warring | PRM |
|  | 06 | **DC1-DH2100 MOD-F21-02 Cx L3** |  | 2026-03-02 | 2026-03-05 |  |  |  |  |  |
| DC1-MOD2-L3-Cx-1150 |  | DC1-MOD-F21-02 FTE | 1d | 2026-03-02 | 2026-03-02 | DC1-MOD02-L2-1050, DC1-SWD-L3-CX-1150 | 14d | 0d | Riley Warring | ROS |
| DC1-MOD2-L3-Cx-1160 |  | DC1-MOD-F21-02 L3 Startup | 2d | 2026-03-03 | 2026-03-04 | DC1-MOD2-L3-Cx-1150 | 19d | 0d | Riley Warring | PHE |
| DC1-MOD2-L3-Cx-1170 |  | DC1-MOD-F21-02 BMS/EPMS | 1d | 2026-03-05 | 2026-03-05 | DC1-MOD2-L3-Cx-1160 | 19d | 13d | Riley Warring | PRM |
|  | 07 | **DC1-DH2100 MOD-R21-02 Cx L3** |  | 2026-03-05 | 2026-03-10 |  |  |  |  |  |
| DC1-MOD2-L3-Cx-1180 |  | DC1-MOD-R21-02 FTE | 1d | 2026-03-05 | 2026-03-05 | DC1-MOD02-L2-1060, DC1-SWD-L3-CX-1180 | 11d | 0d | Riley Warring | ROS |
| DC1-MOD2-L3-Cx-1190 |  | DC1-MOD-R21-02 L3 Startup | 2d | 2026-03-06 | 2026-03-09 | DC1-MOD2-L3-Cx-1180 | 16d | 0d | Riley Warring | PHE |
| DC1-MOD2-L3-Cx-1200 |  | DC1-MOD-R21-02 BMS/EPMS | 1d | 2026-03-10 | 2026-03-10 | DC1-MOD2-L3-Cx-1190 | 16d | 10d | Riley Warring | PRM |

Notes:
- DC1-MOD2-L3-Cx-1040: Steps: EC Startup Report; Vendor Startup
- DC1-MOD2-L3-Cx-1070: Steps: EC Startup Report; Vendor Startup
- DC1-MOD2-L3-Cx-1100: Steps: EC Startup Report; Vendor Startup
- DC1-MOD2-L3-Cx-1130: Steps: EC Startup Report; Vendor Startup
- DC1-MOD2-L3-Cx-1160: Steps: EC Startup Report; Vendor Startup
- DC1-MOD2-L3-Cx-1190: Steps: EC Startup Report; Vendor Startup

| ID | WBS | Activity | Duration | Start | Finish | Predecessors | Total float | Free float | Layton Responsible Party | Vendor Responsible Party |
| --- | --- | --- | --- | --- | --- | --- | --- | --- | --- | --- |
|  | 09 | **DC1-DH2100 MOD-03 Cx L3** |  | 2026-02-19 | 2026-03-18 |  |  |  |  |  |
|  | 01 | **DC1-DH2100 MOD-A21-03 Cx L3** |  | 2026-02-19 | 2026-02-24 |  |  |  |  |  |
| DC1-MOD3-L3-Cx-1000 |  | DC1-MOD-A21-03 FTE | 1d | 2026-02-19 | 2026-02-19 | DC1-MOD03-L2-1000, DC1-UPSM-L3-CX-1000 | 26d | 0d | Riley Warring | ROS |
| DC1-MOD3-L3-Cx-1010 |  | DC1-MOD-A21-03 L3 Startup | 2d | 2026-02-20 | 2026-02-23 | DC1-MOD3-L3-Cx-1000 | 26d | 0d | Riley Warring | PHE |
| DC1-MOD3-L3-Cx-1020 |  | DC1-MOD-A21-03 BMS/EPMS | 1d | 2026-02-24 | 2026-02-24 | DC1-MOD3-L3-Cx-1010 | 26d | 20d | Riley Warring | PRM |
|  | 02 | **DC1-DH2100 MOD-B21-03 Cx L3** |  | 2026-02-20 | 2026-02-25 |  |  |  |  |  |
| DC1-MOD3-L3-Cx-1030 |  | DC1-MOD-B21-03 FTE | 1d | 2026-02-20 | 2026-02-20 | DC1-MOD03-L2-1010, DC1-UPSM-L3-CX-1030 | 25d | 0d | Riley Warring | ROS |
| DC1-MOD3-L3-Cx-1040 |  | DC1-MOD-B21-03 L3 Startup | 2d | 2026-02-23 | 2026-02-24 | DC1-MOD3-L3-Cx-1030 | 25d | 0d | Riley Warring | PHE |
| DC1-MOD3-L3-Cx-1050 |  | DC1-MOD-B21-03 BMS/EPMS | 1d | 2026-02-25 | 2026-02-25 | DC1-MOD3-L3-Cx-1040 | 25d | 19d | Riley Warring | PRM |
|  | 03 | **DC1-DH2100 MOD-C21-03 Cx L3** |  | 2026-02-25 | 2026-03-02 |  |  |  |  |  |
| DC1-MOD3-L3-Cx-1060 |  | DC1-MOD-C21-03 FTE | 1d | 2026-02-25 | 2026-02-25 | DC1-MOD03-L2-1020, DC1-UPSM-L3-CX-1060 | 22d | 0d | Riley Warring | ROS |
| DC1-MOD3-L3-Cx-1070 |  | DC1-MOD-C21-03 L3 Startup | 2d | 2026-02-26 | 2026-02-27 | DC1-MOD3-L3-Cx-1060 | 22d | 0d | Riley Warring | PHE |
| DC1-MOD3-L3-Cx-1080 |  | DC1-MOD-C21-03 BMS/EPMS | 1d | 2026-03-02 | 2026-03-02 | DC1-MOD3-L3-Cx-1070 | 22d | 16d | Riley Warring | PRM |
|  | 04 | **DC1-DH2100 MOD-D21-03 Cx L3** |  | 2026-03-02 | 2026-03-05 |  |  |  |  |  |
| DC1-MOD3-L3-Cx-1090 |  | DC1-MOD-D21-03 FTE | 1d | 2026-03-02 | 2026-03-02 | DC1-MOD03-L2-1030, DC1-UPSM-L3-CX-1090 | 19d | 0d | Riley Warring | ROS |
| DC1-MOD3-L3-Cx-1100 |  | DC1-MOD-D21-03 L3 Startup | 2d | 2026-03-03 | 2026-03-04 | DC1-MOD3-L3-Cx-1090 | 19d | 0d | Riley Warring | PHE |
| DC1-MOD3-L3-Cx-1110 |  | DC1-MOD-D21-03 BMS/EPMS | 1d | 2026-03-05 | 2026-03-05 | DC1-MOD3-L3-Cx-1100 | 19d | 13d | Riley Warring | PRM |
|  | 05 | **DC1-DH2100 MOD-E21-03 Cx L3** |  | 2026-03-05 | 2026-03-10 |  |  |  |  |  |
| DC1-MOD3-L3-Cx-1120 |  | DC1-MOD-E21-03 FTE | 1d | 2026-03-05 | 2026-03-05 | DC1-MOD03-L2-1040, DC1-UPSM-L3-CX-1120 | 16d | 0d | Riley Warring | ROS |
| DC1-MOD3-L3-Cx-1130 |  | DC1-MOD-E21-03 L3 Startup | 2d | 2026-03-06 | 2026-03-09 | DC1-MOD3-L3-Cx-1120 | 16d | 0d | Riley Warring | PHE |
| DC1-MOD3-L3-Cx-1140 |  | DC1-MOD-E21-03 BMS/EPMS | 1d | 2026-03-10 | 2026-03-10 | DC1-MOD3-L3-Cx-1130 | 16d | 10d | Riley Warring | PRM |
|  | 06 | **DC1-DH2100 MOD-F21-03 Cx L3** |  | 2026-03-10 | 2026-03-13 |  |  |  |  |  |
| DC1-MOD3-L3-Cx-1150 |  | DC1-MOD-F21-03 FTE | 1d | 2026-03-10 | 2026-03-10 | DC1-MOD03-L2-1050, DC1-UPSM-L3-CX-1150 | 13d | 0d | Riley Warring | ROS |
| DC1-MOD3-L3-Cx-1160 |  | DC1-MOD-F21-03 L3 Startup | 2d | 2026-03-11 | 2026-03-12 | DC1-MOD3-L3-Cx-1150 | 13d | 0d | Riley Warring | PHE |
| DC1-MOD3-L3-Cx-1170 |  | DC1-MOD-F21-03 BMS/EPMS | 1d | 2026-03-13 | 2026-03-13 | DC1-MOD3-L3-Cx-1160 | 13d | 7d | Riley Warring | PRM |

Notes:
- DC1-MOD3-L3-Cx-1010: Steps: EC Startup Report; Vendor Startup
- DC1-MOD3-L3-Cx-1040: Steps: EC Startup Report; Vendor Startup
- DC1-MOD3-L3-Cx-1070: Steps: EC Startup Report; Vendor Startup
- DC1-MOD3-L3-Cx-1100: Steps: EC Startup Report; Vendor Startup
- DC1-MOD3-L3-Cx-1130: Steps: EC Startup Report; Vendor Startup
- DC1-MOD3-L3-Cx-1160: Steps: EC Startup Report; Vendor Startup

| ID | WBS | Activity | Duration | Start | Finish | Predecessors | Total float | Free float | Layton Responsible Party | Vendor Responsible Party | Notes |
| --- | --- | --- | --- | --- | --- | --- | --- | --- | --- | --- | --- |
|  | 07 | **DC1-DH2100 MOD-R21-03 Cx L3** |  | 2026-03-13 | 2026-03-18 |  |  |  |  |  |  |
| DC1-MOD3-L3-Cx-1180 |  | DC1-MOD-R21-03 FTE | 1d | 2026-03-13 | 2026-03-13 | DC1-MOD03-L2-1060, DC1-UPSM-L3-CX-1180 | 10d | 0d | Riley Warring | ROS |  |
| DC1-MOD3-L3-Cx-1190 |  | DC1-MOD-R21-03 L3 Startup | 2d | 2026-03-16 | 2026-03-17 | DC1-MOD3-L3-Cx-1180 | 10d | 0d | Riley Warring | PHE |  |
| DC1-MOD3-L3-Cx-1200 |  | DC1-MOD-R21-03 BMS/EPMS | 1d | 2026-03-18 | 2026-03-18 | DC1-MOD3-L3-Cx-1190 | 10d | 4d | Riley Warring | PRM |  |
|  | 10 | **DC1-DH2100 CHLR-1RT40 Cx L3** |  | 2026-02-12 | 2026-04-01 |  |  |  |  |  |  |
|  | 01 | **DC1-DH2100 CHLR-1RT40-A21 Cx L3** |  | 2026-02-12 | 2026-03-24 |  |  |  |  |  |  |
| DC1-CHLR-L3-Cx-1000 |  | DC1-CHLR-1RT40-A21 FTE | 1d | 2026-02-12 | 2026-02-12 | DC1-SWD-L3-CX-1000 SS, DC1-CHLR-L2-1000 | 14d | 0d | Riley Warring | ROS |  |
| DC1-CHLR-L3-Cx-1005 |  | DC1-CHLR-1RT40-A21 Heat Up | 2d | 2026-02-13 | 2026-02-16 | DC1-CHLR-L3-Cx-1000 | 14d | 1d | Riley Warring | LAY |  |
| DC1-CHLR-L3-Cx-1010 |  | DC1-CHLR-1RT40-A21 L3 Startup | 2d | 2026-03-20 | 2026-03-23 | DC1-CHLR-L3-Cx-1005, DC1-DH2100-LB-1010 SS+4d | 0d |  | Riley Warring | TAS |  |
| DC1-CHLR-L3-Cx-1020 |  | DC1-CHLR-1RT40-A21 BMS/EPMS | 1d | 2026-03-24 | 2026-03-24 | DC1-CHLR-L3-Cx-1010 | 0d |  | Riley Warring | PRM | Changed from 3 to 1 day |
|  | 02 | **DC1-DH2100 CHLR-1RT40-B21 Cx L3** |  | 2026-02-12 | 2026-03-25 |  |  |  |  |  |  |
| DC1-CHLR-L3-Cx-1030 |  | DC1-CHLR-1RT40-B21 FTE | 1d | 2026-02-12 | 2026-02-12 | DC1-SWD-L3-CX-1030 SS, DC1-CHLR-L2-1010 | 14d | 0d | Riley Warring | ROS |  |
| DC1-CHLR-L3-Cx-1035 |  | DC1-CHLR-1RT40-B21 Heat Up | 2d | 2026-02-13 | 2026-02-16 | DC1-CHLR-L3-Cx-1030 | 14d | 1d | Riley Warring | LAY |  |
| DC1-CHLR-L3-Cx-1040 |  | DC1-CHLR-1RT40-B21 L3 Startup | 2d | 2026-03-16 | 2026-03-17 | DC1-CHLR-L3-Cx-1035, DC1-DH2100-LB-1010 SS | 5d | 0d | Riley Warring | TAS |  |
| DC1-CHLR-L3-Cx-1050 |  | DC1-CHLR-1RT40-B21 BMS/EPMS | 1d | 2026-03-25 | 2026-03-25 | DC1-CHLR-L3-Cx-1040, DC1-CHLR-L3-Cx-1020 | 0d |  | Riley Warring | PRM | Changed from 3 to 1 day |
|  | 03 | **DC1-DH2100 CHLR-1RT40-C21 Cx L3** |  | 2026-02-12 | 2026-03-26 |  |  |  |  |  |  |
| DC1-CHLR-L3-Cx-1060 |  | DC1-CHLR-1RT40-C21 FTE | 1d | 2026-02-12 | 2026-02-12 | DC1-SWD-L3-CX-1060 SS, DC1-CHLR-L2-1020 | 14d | 0d | Riley Warring | ROS |  |
| DC1-CHLR-L3-Cx-1065 |  | DC1-CHLR-1RT40-C21 Heat Up | 2d | 2026-02-13 | 2026-02-16 | DC1-CHLR-L3-Cx-1060 | 14d | 1d | Riley Warring | LAY |  |
| DC1-CHLR-L3-Cx-1070 |  | DC1-CHLR-1RT40-C21 L3 Startup | 2d | 2026-03-16 | 2026-03-17 | DC1-CHLR-L3-Cx-1065, DC1-DH2100-LB-1010 SS, DC1-CHLR-L3-Cx-1040 SS | 6d | 0d | Riley Warring | TAS |  |
| DC1-CHLR-L3-Cx-1080 |  | DC1-CHLR-1RT40-C21 BMS/EPMS | 1d | 2026-03-26 | 2026-03-26 | DC1-CHLR-L3-Cx-1070, DC1-CHLR-L3-Cx-1050 | 0d |  | Riley Warring | PRM | Changed from 3 to 1 day |
|  | 04 | **DC1-DH2100 CHLR-1RT40-D21 Cx L3** |  | 2026-02-12 | 2026-03-27 |  |  |  |  |  |  |
| DC1-CHLR-L3-Cx-1090 |  | DC1-CHLR-1RT40-D21 FTE | 1d | 2026-02-12 | 2026-02-12 | DC1-SWD-L3-CX-1090 SS, DC1-CHLR-L2-1030 | 14d | 0d | Riley Warring | ROS |  |
| DC1-CHLR-L3-Cx-1095 |  | DC1-CHLR-1RT40-D21 Heat Up | 2d | 2026-02-13 | 2026-02-16 | DC1-CHLR-L3-Cx-1090 | 14d | 1d | Riley Warring | LAY |  |
| DC1-CHLR-L3-Cx-1100 |  | DC1-CHLR-1RT40-D21 L3 Startup | 2d | 2026-03-16 | 2026-03-17 | DC1-CHLR-L3-Cx-1095, DC1-DH2100-LB-1010 SS, DC1-CHLR-L3-Cx-1070 SS | 6d | 0d | Riley Warring | TAS |  |
| DC1-CHLR-L3-Cx-1110 |  | DC1-CHLR-1RT40-D21 BMS/EPMS | 1d | 2026-03-27 | 2026-03-27 | DC1-CHLR-L3-Cx-1100, DC1-CHLR-L3-Cx-1080 | 0d |  | Riley Warring | PRM | Changed from 3 to 1 day |

Notes:
- DC1-MOD3-L3-Cx-1190: Steps: EC Startup Report; Vendor Startup
- DC1-CHLR-L3-Cx-1010: Steps: EC Startup Report; MC Startup Report; Vendor Startup
- DC1-CHLR-L3-Cx-1040: Steps: EC Startup Report; MC Startup Report; Vendor Startup
- DC1-CHLR-L3-Cx-1070: Steps: EC Startup Report; MC Startup Report; Vendor Startup
- DC1-CHLR-L3-Cx-1100: Steps: EC Startup Report; MC Startup Report; Vendor Startup

| ID | WBS | Activity | Duration | Start | Finish | Predecessors | Total float | Free float | Layton Responsible Party | Vendor Responsible Party | Notes |
| --- | --- | --- | --- | --- | --- | --- | --- | --- | --- | --- | --- |
|  | 05 | **DC1-DH2100 CHLR-1RT40-E21 Cx L3** |  | 2026-02-12 | 2026-03-30 |  |  |  |  |  |  |
| DC1-CHLR-L3-Cx-1120 |  | DC1-CHLR-1RT40-E21 FTE | 1d | 2026-02-12 | 2026-02-12 | DC1-SWD-L3-CX-1120 SS, DC1-CHLR-L2-1040 | 14d | 0d | Riley Warring | ROS |  |
| DC1-CHLR-L3-Cx-1125 |  | DC1-CHLR-1RT40-E21 Heat Up | 2d | 2026-02-13 | 2026-02-16 | DC1-CHLR-L3-Cx-1120 | 14d | 1d | Riley Warring | LAY |  |
| DC1-CHLR-L3-Cx-1130 |  | DC1-CHLR-1RT40-E21 L3 Startup | 2d | 2026-03-18 | 2026-03-19 | DC1-CHLR-L3-Cx-1125, DC1-DH2100-LB-1010 SS, DC1-CHLR-L3-Cx-1100 | 6d | 0d | Riley Warring | TAS |  |
| DC1-CHLR-L3-Cx-1140 |  | DC1-CHLR-1RT40-E21 BMS/EPMS | 1d | 2026-03-30 | 2026-03-30 | DC1-CHLR-L3-Cx-1130, DC1-CHLR-L3-Cx-1110 | 0d |  | Riley Warring | PRM | Changed from 3 to 1 day |
|  | 06 | **DC1-DH2100 CHLR-1RT40-F21 Cx L3** |  | 2026-02-12 | 2026-03-31 |  |  |  |  |  |  |
| DC1-CHLR-L3-Cx-1150 |  | DC1-CHLR-1RT40-F21 FTE | 1d | 2026-02-12 | 2026-02-12 | DC1-SWD-L3-CX-1150 SS, DC1-CHLR-L2-1050 | 14d | 0d | Riley Warring | ROS |  |
| DC1-CHLR-L3-Cx-1155 |  | DC1-CHLR-1RT40-F21 Heat Up | 2d | 2026-02-13 | 2026-02-16 | DC1-CHLR-L3-Cx-1150 | 14d | 1d | Riley Warring | LAY |  |
| DC1-CHLR-L3-Cx-1160 |  | DC1-CHLR-1RT40-F21 L3 Startup | 2d | 2026-03-18 | 2026-03-19 | DC1-CHLR-L3-Cx-1155, DC1-DH2100-LB-1010 SS, DC1-CHLR-L3-Cx-1130 SS | 6d | 0d | Riley Warring | TAS |  |
| DC1-CHLR-L3-Cx-1170 |  | DC1-CHLR-1RT40-F21 BMS/EPMS | 1d | 2026-03-31 | 2026-03-31 | DC1-CHLR-L3-Cx-1160, DC1-CHLR-L3-Cx-1140 | 0d |  | Riley Warring | PRM | Changed from 3 to 1 day |
|  | 07 | **DC1-DH2100 CHLR-1RT40-R21 Cx L3** |  | 2026-02-12 | 2026-04-01 |  |  |  |  |  |  |
| DC1-CHLR-L3-Cx-1180 |  | DC1-CHLR-1RT40-R21 FTE | 1d | 2026-02-12 | 2026-02-12 | DC1-SWD-L3-CX-1180 SS, DC1-CHLR-L2-1060 | 14d | 0d | Riley Warring | ROS |  |
| DC1-CHLR-L3-Cx-1185 |  | DC1-CHLR-1RT40-R21 Heat Up | 2d | 2026-02-13 | 2026-02-16 | DC1-CHLR-L3-Cx-1180 | 14d | 1d | Riley Warring | LAY |  |
| DC1-CHLR-L3-Cx-1190 |  | DC1-CHLR-1RT40-R21 L3 Startup | 2d | 2026-03-20 | 2026-03-23 | DC1-CHLR-L3-Cx-1185, DC1-DH2100-LB-1010 SS, DC1-CHLR-L3-Cx-1160 | 6d |  | Riley Warring | TAS |  |
| DC1-CHLR-L3-Cx-1200 |  | DC1-CHLR-1RT40-R21 BMS/EPMS | 1d | 2026-04-01 | 2026-04-01 | DC1-CHLR-L3-Cx-1190, DC1-CHLR-L3-Cx-1170 | 0d |  | Riley Warring | PRM | Changed from 3 to 1 day |
|  | 11 | **DC1-DH2100 CHWP-1RT40 Cx L3** |  | 2026-02-19 | 2026-02-24 |  |  |  |  |  |  |
|  | 01 | **DC1-DH2100 CHWP-1RT40-A21 Cx L3** |  | 2026-02-19 | 2026-02-24 |  |  |  |  |  |  |
| DC1-CHWP-L3-Cx-1000 |  | DC1-CHWP-1RT40-A21 FTE | 1d | 2026-02-19 | 2026-02-19 | DC1-UPSM-L3-CX-1000, DC1-CHWP-L2-Cx-1000 | 1d | 0d | Riley Warring | ROS | CFCI |
| DC1-CHWP-L3-Cx-1010 |  | DC1-CHWP1RT40-A21 L3 Startup | 2d | 2026-02-20 | 2026-02-23 | DC1-CHWP-L3-Cx-1000, QTS-100300 | 1d | 0d | Riley Warring | LAY | CFCI |
| DC1-CHWP-L3-Cx-1020 |  | DC1-CHWP-1RT40-A21 BMS/EPMS | 1d | 2026-02-24 | 2026-02-24 | DC1-CHWP-L3-Cx-1010 | 1d | 0d | Riley Warring | PRM | CFCI |
|  | 02 | **DC1-DH2100 CHWP-1RT40-B21 Cx L3** |  | 2026-02-19 | 2026-02-24 |  |  |  |  |  |  |
| DC1-CHWP-L3-Cx-1030 |  | DC1-CHWP-1RT40-B21 FTE | 1d | 2026-02-19 | 2026-02-19 | DC1-UPSM-L3-CX-1030, DC1-CHWP-L2-Cx-1010 | 1d | 0d | Riley Warring | ROS | CFCI |
| DC1-CHWP-L3-Cx-1040 |  | DC1-CHWP-1RT40-B21 L3 Startup | 2d | 2026-02-20 | 2026-02-23 | DC1-CHWP-L3-Cx-1030, QTS-100300 | 1d | 0d | Riley Warring | LAY | CFCI |
| DC1-CHWP-L3-Cx-1050 |  | DC1-CHWP-1RT40-B21 BMS/EPMS | 1d | 2026-02-24 | 2026-02-24 | DC1-CHWP-L3-Cx-1040 | 1d | 0d | Riley Warring | PRM | CFCI |

Notes:
- DC1-CHLR-L3-Cx-1130: Steps: EC Startup Report; MC Startup Report; Vendor Startup
- DC1-CHLR-L3-Cx-1160: Steps: EC Startup Report; MC Startup Report; Vendor Startup
- DC1-CHLR-L3-Cx-1190: Steps: EC Startup Report; MC Startup Report; Vendor Startup
- DC1-CHWP-L3-Cx-1010: Steps: EC Startup Report; MC Startup Report; Vendor Startup
- DC1-CHWP-L3-Cx-1040: Steps: EC Startup Report; MC Startup Report; Vendor Startup

| ID | WBS | Activity | Duration | Start | Finish | Predecessors | Total float | Free float | Notes | Layton Responsible Party | Vendor Responsible Party |
| --- | --- | --- | --- | --- | --- | --- | --- | --- | --- | --- | --- |
|  | 03 | **DC1-DH2100 CHWP-1RT40-C21 Cx L3** |  | 2026-02-19 | 2026-02-24 |  |  |  |  |  |  |
| DC1-CHWP-L3-Cx-1060 |  | DC1-CHWP-1RT40-C21 FTE | 1d | 2026-02-19 | 2026-02-19 | DC1-UPSM-L3-CX-1060, DC1-CHWP-L2-Cx-1020 | 1d | 0d | CFCI | Riley Warring | ROS |
| DC1-CHWP-L3-Cx-1070 |  | DC1-CHWP-1RT40-C21 L3 Startup | 2d | 2026-02-20 | 2026-02-23 | DC1-CHWP-L3-Cx-1060, QTS-100300 | 1d | 0d | CFCI | Riley Warring | LAY |
| DC1-CHWP-L3-Cx-1080 |  | DC1-CHWP-1RT40-C21 BMS/EPMS | 1d | 2026-02-24 | 2026-02-24 | DC1-CHWP-L3-Cx-1070 | 1d | 0d | CFCI | Riley Warring | PRM |
|  | 04 | **DC1-DH2100 CHWP-1RT40-D21 Cx L3** |  | 2026-02-19 | 2026-02-24 |  |  |  |  |  |  |
| DC1-CHWP-L3-Cx-1090 |  | DC1-CHWP-1RT40-D21 FTE | 1d | 2026-02-19 | 2026-02-19 | DC1-UPSM-L3-CX-1090, DC1-CHWP-L2-Cx-1030 | 1d | 0d | CFCI | Riley Warring | ROS |
| DC1-CHWP-L3-Cx-1100 |  | DC1-CHWP-1RT40-D21 L3 Startup | 2d | 2026-02-20 | 2026-02-23 | DC1-CHWP-L3-Cx-1090, QTS-100300 | 1d | 0d | CFCI | Riley Warring | LAY |
| DC1-CHWP-L3-Cx-1110 |  | DC1-CHWP-1RT40-D21 BMS/EPMS | 1d | 2026-02-24 | 2026-02-24 | DC1-CHWP-L3-Cx-1100 | 1d | 0d | CFCI | Riley Warring | PRM |
|  | 05 | **DC1-DH2100 CHWP-1RT40-E21 Cx L3** |  | 2026-02-19 | 2026-02-24 |  |  |  |  |  |  |
| DC1-CHWP-L3-Cx-1120 |  | DC1-CHWP-1RT40-E21 FTE | 1d | 2026-02-19 | 2026-02-19 | DC1-UPSM-L3-CX-1120, DC1-CHWP-L2-Cx-1040 | 1d | 0d | CFCI | Riley Warring | ROS |
| DC1-CHWP-L3-Cx-1130 |  | DC1-CHWP-1RT40-E21 L3 Startup | 2d | 2026-02-20 | 2026-02-23 | DC1-CHWP-L3-Cx-1120, QTS-100300 | 1d | 0d | CFCI | Riley Warring | LAY |
| DC1-CHWP-L3-Cx-1140 |  | DC1-CHWP-1RT40-E21 BMS/EPMS | 1d | 2026-02-24 | 2026-02-24 | DC1-CHWP-L3-Cx-1130 | 1d | 0d | CFCI | Riley Warring | PRM |
|  | 06 | **DC1-DH2100 CHWP-1RT40-F21 Cx L3** |  | 2026-02-19 | 2026-02-24 |  |  |  |  |  |  |
| DC1-CHWP-L3-Cx-1150 |  | DC1-CHWP-1RT40-F21 FTE | 1d | 2026-02-19 | 2026-02-19 | DC1-UPSM-L3-CX-1150, DC1-CHWP-L2-Cx-1050 | 1d | 0d | CFCI | Riley Warring | ROS |
| DC1-CHWP-L3-Cx-1160 |  | DC1-CHWP-1RT40-F21 L3 Startup | 2d | 2026-02-20 | 2026-02-23 | DC1-CHWP-L3-Cx-1150, QTS-100300 | 1d | 0d | CFCI | Riley Warring | LAY |
| DC1-CHWP-L3-Cx-1170 |  | DC1-CHWP-1RT40-F21 BMS/EPMS | 1d | 2026-02-24 | 2026-02-24 | DC1-CHWP-L3-Cx-1160 | 1d | 0d | CFCI | Riley Warring | PRM |
|  | 07 | **DC1-DH2100 CHWP-1RT40-R21 Cx L3** |  | 2026-02-19 | 2026-02-24 |  |  |  |  |  |  |
| DC1-CHWP-L3-Cx-1180 |  | DC1-CHWP-1RT40-R21 FTE | 1d | 2026-02-19 | 2026-02-19 | DC1-UPSM-L3-CX-1180, DC1-CHWP-L2-Cx-1060 | 1d | 0d | CFCI | Riley Warring | ROS |
| DC1-CHWP-L3-Cx-1190 |  | DC1-CHWP-1RT40-R21 L3 Startup | 2d | 2026-02-20 | 2026-02-23 | DC1-CHWP-L3-Cx-1180, QTS-100300 | 1d | 0d | CFCI | Riley Warring | LAY |
| DC1-CHWP-L3-Cx-1200 |  | DC1-CHWP-1RT40-R21 BMS/EPMS | 1d | 2026-02-24 | 2026-02-24 | DC1-CHWP-L3-Cx-1190 | 1d | 0d | CFCI | Riley Warring | PRM |
|  | 12 | **DC1-DH2100 CDUs Cx L3** |  | 2026-02-20 | 2026-04-06 |  |  |  |  |  |  |
|  | 01 | **DC1-DH2100-CDU-A21 Cx L3** |  | 2026-02-20 | 2026-04-06 |  |  |  |  |  |  |
|  | 01 | **DC1-CDU-DH2100-01 Cx L3** |  | 2026-02-20 | 2026-02-25 |  |  |  |  |  |  |
| DC1-CDU-L3-CX-1000 |  | CDU-DH2100-01 FTE | 1d | 2026-02-20 | 2026-02-20 | DC1-CDU-L2-1000, DC1-MOD3-L3-Cx-1000 | 47d | 0d |  | Riley Warring | ROS |
| DC1-CDU-L3-CX-1005 |  | CDU-DH2100-01 L3 Startup | 2d | 2026-02-23 | 2026-02-24 | DC1-CDU-L3-CX-1000 | 47d | 0d |  | Riley Warring | VER |
| DC1-CDU-L3-CX-1010 |  | CDU-DH2100-01 BMS/EPMS | 1d | 2026-02-25 | 2026-02-25 | DC1-CDU-L3-CX-1005 | 47d |  |  | Riley Warring | PRM |

Notes:
- DC1-CHWP-L3-Cx-1070: Steps: EC Startup Report; MC Startup Report; Vendor Startup
- DC1-CHWP-L3-Cx-1100: Steps: EC Startup Report; MC Startup Report; Vendor Startup
- DC1-CHWP-L3-Cx-1130: Steps: EC Startup Report; MC Startup Report; Vendor Startup
- DC1-CHWP-L3-Cx-1160: Steps: EC Startup Report; MC Startup Report; Vendor Startup
- DC1-CHWP-L3-Cx-1190: Steps: EC Startup Report; MC Startup Report; Vendor Startup
- DC1-CDU-L3-CX-1005: Steps: EC Startup Report; MC Installation Checklist; Vendor Startup

| ID | WBS | Activity | Duration | Start | Finish | Predecessors | Total float | Free float | Layton Responsible Party | Vendor Responsible Party |
| --- | --- | --- | --- | --- | --- | --- | --- | --- | --- | --- |
|  | 02 | **DC1-CDU-DH2100-02 Cx L3** |  | 2026-02-20 | 2026-02-25 |  |  |  |  |  |
| DC1-CDU-L3-CX-1015 |  | CDU-DH2100-02 FTE | 1d | 2026-02-20 | 2026-02-20 | DC1-CDU-L2-1010, DC1-MOD3-L3-Cx-1000 | 47d | 0d | Riley Warring | ROS |
| DC1-CDU-L3-CX-1020 |  | CDU-DH2100-02 L3 Startup | 2d | 2026-02-23 | 2026-02-24 | DC1-CDU-L3-CX-1015 | 47d | 0d | Riley Warring | VER |
| DC1-CDU-L3-CX-1025 |  | CDU-DH2100-02 BMS/EPMS | 1d | 2026-02-25 | 2026-02-25 | DC1-CDU-L3-CX-1020 | 47d |  | Riley Warring | PRM |
|  | 03 | **DC1-CDU-DH2100-03 Cx L3** |  | 2026-02-20 | 2026-04-06 |  |  |  |  |  |
| DC1-CDU-L3-CX-1030 |  | CDU-DH2100-03 FTE | 1d | 2026-02-20 | 2026-02-20 | DC1-CDU-L2-1020, DC1-MOD3-L3-Cx-1000 | 47d | 28d | Riley Warring | ROS |
| DC1-CDU-L3-CX-1035 |  | CDU-DH2100-03 L3 Startup | 2d | 2026-04-02 | 2026-04-03 | DC1-CDU-L3-CX-1030, DC1-CHLR-L3-Cx-1200 | 19d | 0d | Riley Warring | VER |
| DC1-CDU-L3-CX-1040 |  | CDU-DH2100-03 BMS/EPMS | 1d | 2026-04-06 | 2026-04-06 | DC1-CDU-L3-CX-1035 | 19d |  | Riley Warring | PRM |
|  | 04 | **DC1-CDU-DH2100-04 Cx L3** |  | 2026-02-27 | 2026-04-06 |  |  |  |  |  |
| DC1-CDU-L3-CX-1045 |  | CDU-DH2100-04 FTE | 1d | 2026-02-27 | 2026-02-27 | DC1-CDU-L2-1030, DC1-MOD3-L3-Cx-1000 | 42d | 23d | Riley Warring | ROS |
| DC1-CDU-L3-CX-1050 |  | CDU-DH2100-04 L3 Startup | 2d | 2026-04-02 | 2026-04-03 | DC1-CDU-L3-CX-1045, DC1-CHLR-L3-Cx-1200 | 19d | 0d | Riley Warring | VER |
| DC1-CDU-L3-CX-1055 |  | CDU-DH2100-04 BMS/EPMS | 1d | 2026-04-06 | 2026-04-06 | DC1-CDU-L3-CX-1050 | 19d |  | Riley Warring | PRM |
|  | 05 | **DC1-CDU-DH2100-05 Cx L3** |  | 2026-02-27 | 2026-04-06 |  |  |  |  |  |
| DC1-CDU-L3-CX-1060 |  | CDU-DH2100-05 FTE | 1d | 2026-02-27 | 2026-02-27 | DC1-CDU-L2-1040, DC1-MOD3-L3-Cx-1000 | 42d | 23d | Riley Warring | ROS |
| DC1-CDU-L3-CX-1065 |  | CDU-DH2100-05 L3 Startup | 2d | 2026-04-02 | 2026-04-03 | DC1-CDU-L3-CX-1060, DC1-CHLR-L3-Cx-1200 | 19d | 0d | Riley Warring | VER |
| DC1-CDU-L3-CX-1070 |  | CDU-DH2100-05 BMS/EPMS | 1d | 2026-04-06 | 2026-04-06 | DC1-CDU-L3-CX-1065 | 19d |  | Riley Warring | PRM |
|  | 06 | **DC1-CDU-DH2100-06 Cx L3** |  | 2026-02-27 | 2026-04-06 |  |  |  |  |  |
| DC1-CDU-L3-CX-1075 |  | CDU-DH2100-06 FTE | 1d | 2026-02-27 | 2026-02-27 | DC1-CDU-L2-1050, DC1-MOD3-L3-Cx-1000 | 42d | 23d | Riley Warring | ROS |
| DC1-CDU-L3-CX-1080 |  | CDU-DH2100-06 L3 Startup | 2d | 2026-04-02 | 2026-04-03 | DC1-CDU-L3-CX-1075, DC1-CHLR-L3-Cx-1200 | 19d | 0d | Riley Warring | VER |
| DC1-CDU-L3-CX-1085 |  | CDU-DH2100-06 BMS/EPMS | 1d | 2026-04-06 | 2026-04-06 | DC1-CDU-L3-CX-1080 | 19d |  | Riley Warring | PRM |
|  | 07 | **DC1-CDU-DH2100-07 Cx L3** |  | 2026-02-27 | 2026-04-06 |  |  |  |  |  |
| DC1-CDU-L3-CX-1105 |  | CDU-DH2100-07 FTE | 1d | 2026-02-27 | 2026-02-27 | DC1-CDU-L2-1070, DC1-MOD3-L3-Cx-1030 | 42d | 23d | Riley Warring | ROS |
| DC1-CDU-L3-CX-1110 |  | CDU-DH2100-07 L3 Startup | 2d | 2026-04-02 | 2026-04-03 | DC1-CDU-L3-CX-1105, DC1-CHLR-L3-Cx-1200 | 19d | 0d | Riley Warring | VER |
| DC1-CDU-L3-CX-1115 |  | CDU-DH2100-07 BMS/EPMS | 1d | 2026-04-06 | 2026-04-06 | DC1-CDU-L3-CX-1110 | 19d |  | Riley Warring | PRM |

Notes:
- DC1-CDU-L3-CX-1020: Steps: EC Startup Report; MC Installation Checklist; Vendor Startup
- DC1-CDU-L3-CX-1035: Steps: EC Startup Report; MC Installation Checklist; Vendor Startup
- DC1-CDU-L3-CX-1050: Steps: EC Startup Report; MC Installation Checklist; Vendor Startup
- DC1-CDU-L3-CX-1065: Steps: EC Startup Report; MC Installation Checklist; Vendor Startup
- DC1-CDU-L3-CX-1080: Steps: EC Startup Report; MC Installation Checklist; Vendor Startup
- DC1-CDU-L3-CX-1110: Steps: EC Startup Report; MC Installation Checklist; Vendor Startup

| ID | WBS | Activity | Duration | Start | Finish | Predecessors | Total float | Free float | Layton Responsible Party | Vendor Responsible Party |
| --- | --- | --- | --- | --- | --- | --- | --- | --- | --- | --- |
|  | 08 | **DC1-CDU-DH2100-08 Cx L3** |  | 2026-02-27 | 2026-04-06 |  |  |  |  |  |
| DC1-CDU-L3-CX-1120 |  | CDU-DH2100-08 FTE | 1d | 2026-02-27 | 2026-02-27 | DC1-CDU-L2-1080, DC1-MOD3-L3-Cx-1030 | 42d | 23d | Riley Warring | ROS |
| DC1-CDU-L3-CX-1125 |  | CDU-DH2100-08 L3 Startup | 2d | 2026-04-02 | 2026-04-03 | DC1-CDU-L3-CX-1120, DC1-CHLR-L3-Cx-1200 | 19d | 0d | Riley Warring | VER |
| DC1-CDU-L3-CX-1130 |  | CDU-DH2100-08 BMS/EPMS | 1d | 2026-04-06 | 2026-04-06 | DC1-CDU-L3-CX-1125 | 19d |  | Riley Warring | PRM |
|  | 09 | **DC1-CDU-DH2100-09 Cx L3** |  | 2026-02-27 | 2026-04-06 |  |  |  |  |  |
| DC1-CDU-L3-CX-1135 |  | CDU-DH2100-09 FTE | 1d | 2026-02-27 | 2026-02-27 | DC1-CDU-L2-1090, DC1-MOD3-L3-Cx-1030 | 42d | 23d | Riley Warring | ROS |
| DC1-CDU-L3-CX-1140 |  | CDU-DH2100-09 L3 Startup | 2d | 2026-04-02 | 2026-04-03 | DC1-CDU-L3-CX-1135, DC1-CHLR-L3-Cx-1200 | 19d | 0d | Riley Warring | VER |
| DC1-CDU-L3-CX-1145 |  | CDU-DH2100-09 BMS/EPMS | 1d | 2026-04-06 | 2026-04-06 | DC1-CDU-L3-CX-1140 | 19d |  | Riley Warring | PRM |
|  | 10 | **DC1-CDU-DH2100-10 Cx L3** |  | 2026-02-23 | 2026-04-06 |  |  |  |  |  |
| DC1-CDU-L3-CX-1150 |  | CDU-DH2100-10 FTE | 1d | 2026-02-23 | 2026-02-23 | DC1-CDU-L2-1100, DC1-MOD3-L3-Cx-1030 | 46d | 27d | Riley Warring | ROS |
| DC1-CDU-L3-CX-1155 |  | CDU-DH2100-10 L3 Startup | 2d | 2026-04-02 | 2026-04-03 | DC1-CDU-L3-CX-1150, DC1-CHLR-L3-Cx-1200 | 19d | 0d | Riley Warring | VER |
| DC1-CDU-L3-CX-1160 |  | CDU-DH2100-10 BMS/EPMS | 1d | 2026-04-06 | 2026-04-06 | DC1-CDU-L3-CX-1155 | 19d |  | Riley Warring | PRM |
|  | 11 | **DC1-CDU-DH2100-11 Cx L3** |  | 2026-02-23 | 2026-04-06 |  |  |  |  |  |
| DC1-CDU-L3-CX-1165 |  | CDU-DH2100-11 FTE | 1d | 2026-02-23 | 2026-02-23 | DC1-CDU-L2-1110, DC1-MOD3-L3-Cx-1030 | 46d | 27d | Riley Warring | ROS |
| DC1-CDU-L3-CX-1170 |  | CDU-DH2100-11 L3 Startup | 2d | 2026-04-02 | 2026-04-03 | DC1-CDU-L3-CX-1165, DC1-CHLR-L3-Cx-1200 | 19d | 0d | Riley Warring | VER |
| DC1-CDU-L3-CX-1175 |  | CDU-DH2100-11 BMS/EPMS | 1d | 2026-04-06 | 2026-04-06 | DC1-CDU-L3-CX-1170 | 19d |  | Riley Warring | PRM |
|  | 12 | **DC1-CDU-DH2100-12 Cx L3** |  | 2026-02-23 | 2026-04-06 |  |  |  |  |  |
| DC1-CDU-L3-CX-1180 |  | CDU-DH2100-12 FTE | 1d | 2026-02-23 | 2026-02-23 | DC1-CDU-L2-1120, DC1-MOD3-L3-Cx-1030 | 46d | 27d | Riley Warring | ROS |
| DC1-CDU-L3-CX-1185 |  | CDU-DH2100-12 L3 Startup | 2d | 2026-04-02 | 2026-04-03 | DC1-CDU-L3-CX-1180, DC1-CHLR-L3-Cx-1200 | 19d | 0d | Riley Warring | VER |
| DC1-CDU-L3-CX-1190 |  | CDU-DH2100-12 BMS/EPMS | 1d | 2026-04-06 | 2026-04-06 | DC1-CDU-L3-CX-1185 | 19d |  | Riley Warring | PRM |
|  | 13 | **DC1-CDU-DH2100-13 Cx L3** |  | 2026-02-27 | 2026-04-06 |  |  |  |  |  |
| DC1-CDU-L3-CX-1210 |  | CDU-DH2100-13 FTE | 1d | 2026-02-27 | 2026-02-27 | DC1-CDU-L2-1140, DC1-MOD3-L3-Cx-1060 | 42d | 23d | Riley Warring | ROS |
| DC1-CDU-L3-CX-1215 |  | CDU-DH2100-13 L3 Startup | 2d | 2026-04-02 | 2026-04-03 | DC1-CDU-L3-CX-1210, DC1-CHLR-L3-Cx-1200 | 19d | 0d | Riley Warring | VER |
| DC1-CDU-L3-CX-1220 |  | CDU-DH2100-13 BMS/EPMS | 1d | 2026-04-06 | 2026-04-06 | DC1-CDU-L3-CX-1215 | 19d |  | Riley Warring | PRM |

Notes:
- DC1-CDU-L3-CX-1125: Steps: EC Startup Report; MC Installation Checklist; Vendor Startup
- DC1-CDU-L3-CX-1140: Steps: EC Startup Report; MC Installation Checklist; Vendor Startup
- DC1-CDU-L3-CX-1155: Steps: EC Startup Report; MC Installation Checklist; Vendor Startup
- DC1-CDU-L3-CX-1170: Steps: EC Startup Report; MC Installation Checklist; Vendor Startup
- DC1-CDU-L3-CX-1185: Steps: EC Startup Report; MC Installation Checklist; Vendor Startup
- DC1-CDU-L3-CX-1215: Steps: EC Startup Report; MC Installation Checklist; Vendor Startup

| ID | WBS | Activity | Duration | Start | Finish | Predecessors | Total float | Free float | Layton Responsible Party | Vendor Responsible Party |
| --- | --- | --- | --- | --- | --- | --- | --- | --- | --- | --- |
|  | 14 | **DC1-CDU-DH2100-14 Cx L3** |  | 2026-02-27 | 2026-04-06 |  |  |  |  |  |
| DC1-CDU-L3-CX-1225 |  | CDU-DH2100-14 FTE | 1d | 2026-02-27 | 2026-02-27 | DC1-CDU-L2-1150, DC1-MOD3-L3-Cx-1060 | 42d | 23d | Riley Warring | ROS |
| DC1-CDU-L3-CX-1230 |  | CDU-DH2100-14 L3 Startup | 2d | 2026-04-02 | 2026-04-03 | DC1-CDU-L3-CX-1225, DC1-CHLR-L3-Cx-1200 | 19d | 0d | Riley Warring | VER |
| DC1-CDU-L3-CX-1235 |  | CDU-DH2100-14 BMS/EPMS | 1d | 2026-04-06 | 2026-04-06 | DC1-CDU-L3-CX-1230 | 19d |  | Riley Warring | PRM |
|  | 15 | **DC1-CDU-DH2100-15 Cx L3** |  | 2026-02-27 | 2026-04-06 |  |  |  |  |  |
| DC1-CDU-L3-CX-1240 |  | CDU-DH2100-15 FTE | 1d | 2026-02-27 | 2026-02-27 | DC1-CDU-L2-1160, DC1-MOD3-L3-Cx-1060 | 42d | 23d | Riley Warring | ROS |
| DC1-CDU-L3-CX-1245 |  | CDU-DH2100-15 L3 Startup | 2d | 2026-04-02 | 2026-04-03 | DC1-CDU-L3-CX-1240, DC1-CHLR-L3-Cx-1200 | 19d | 0d | Riley Warring | VER |
| DC1-CDU-L3-CX-1250 |  | CDU-DH2100-15 BMS/EPMS | 1d | 2026-04-06 | 2026-04-06 | DC1-CDU-L3-CX-1245 | 19d |  | Riley Warring | PRM |
|  | 16 | **DC1-CDU-DH2100-16 Cx L3** |  | 2026-03-09 | 2026-04-06 |  |  |  |  |  |
| DC1-CDU-L3-CX-1255 |  | CDU-DH2100-16 FTE | 1d | 2026-03-09 | 2026-03-09 | DC1-CDU-L2-1170, DC1-MOD3-L3-Cx-1060 | 36d | 17d | Riley Warring | ROS |
| DC1-CDU-L3-CX-1260 |  | CDU-DH2100-16 L3 Startup | 2d | 2026-04-02 | 2026-04-03 | DC1-CDU-L3-CX-1255, DC1-CHLR-L3-Cx-1200 | 19d | 0d | Riley Warring | VER |
| DC1-CDU-L3-CX-1265 |  | CDU-DH2100-16 BMS/EPMS | 1d | 2026-04-06 | 2026-04-06 | DC1-CDU-L3-CX-1260 | 19d |  | Riley Warring | PRM |
|  | 17 | **DC1-CDU-DH2100-17 Cx L3** |  | 2026-03-09 | 2026-04-06 |  |  |  |  |  |
| DC1-CDU-L3-CX-1270 |  | CDU-DH2100-17 FTE | 1d | 2026-03-09 | 2026-03-09 | DC1-CDU-L2-1180, DC1-MOD3-L3-Cx-1060 | 36d | 17d | Riley Warring | ROS |
| DC1-CDU-L3-CX-1275 |  | CDU-DH2100-17 L3 Startup | 2d | 2026-04-02 | 2026-04-03 | DC1-CDU-L3-CX-1270, DC1-CHLR-L3-Cx-1200 | 19d | 0d | Riley Warring | VER |
| DC1-CDU-L3-CX-1280 |  | CDU-DH2100-17 BMS/EPMS | 1d | 2026-04-06 | 2026-04-06 | DC1-CDU-L3-CX-1275 | 19d |  | Riley Warring | PRM |
|  | 18 | **DC1-CDU-DH2100-18 Cx L3** |  | 2026-03-09 | 2026-04-06 |  |  |  |  |  |
| DC1-CDU-L3-CX-1285 |  | CDU-DH2100-18 FTE | 1d | 2026-03-09 | 2026-03-09 | DC1-CDU-L2-1190, DC1-MOD3-L3-Cx-1060 | 36d | 17d | Riley Warring | ROS |
| DC1-CDU-L3-CX-1290 |  | CDU-DH2100-18 L3 Startup | 2d | 2026-04-02 | 2026-04-03 | DC1-CDU-L3-CX-1285, DC1-CHLR-L3-Cx-1200 | 19d | 0d | Riley Warring | VER |
| DC1-CDU-L3-CX-1295 |  | CDU-DH2100-18 BMS/EPMS | 1d | 2026-04-06 | 2026-04-06 | DC1-CDU-L3-CX-1290 | 19d |  | Riley Warring | PRM |
|  | 02 | **DC1-DH2100-CDU-B21 Cx L3** |  |  |  |  |  |  |  |  |
|  | 03 | **DC1-DH2100-CDU-C21 Cx L3** |  |  |  |  |  |  |  |  |
|  | 13 | **DC1-DH2100 CRAH/DOAS Cx L3** |  | 2026-02-17 | 2026-03-10 |  |  |  |  |  |
|  | 01 | **DH2100 CRAH-DH-01 L3** |  | 2026-03-05 | 2026-03-10 |  |  |  |  |  |
| DC1-CRAH-L3-Cx-1000 |  | DC1-DH2100-CRAH-DH-01 FTE | 1d | 2026-03-05 | 2026-03-05 | DC1-MOD2-L3-Cx-1180 SS, DC1-MOD2-L3-Cx-1090 SS, DC1-CRAH-L2-1000 | 11d | 0d | Riley Warring | ROS |
| DC1-CRAH-L3-Cx-1010 |  | DC1-DH2100-CRAH-DH-01 L3 Startup | 2d | 2026-03-06 | 2026-03-09 | DC1-CRAH-L3-Cx-1000 | 11d | 0d | Riley Warring | UMAS |
| DC1-CRAH-L3-Cx-1020 |  | DC1-DH2100-CRAH-DH-01 BMS/EPMS | 1d | 2026-03-10 | 2026-03-10 | DC1-CRAH-L3-Cx-1010 | 11d | 5d | Riley Warring | PRM |

Notes:
- DC1-CDU-L3-CX-1230: Steps: EC Startup Report; MC Installation Checklist; Vendor Startup
- DC1-CDU-L3-CX-1245: Steps: EC Startup Report; MC Installation Checklist; Vendor Startup
- DC1-CDU-L3-CX-1260: Steps: EC Startup Report; MC Installation Checklist; Vendor Startup
- DC1-CDU-L3-CX-1275: Steps: EC Startup Report; MC Installation Checklist; Vendor Startup
- DC1-CDU-L3-CX-1290: Steps: EC Startup Report; MC Installation Checklist; Vendor Startup
- DC1-CRAH-L3-Cx-1010: Steps: EC Startup Checklist; MC Startup Checklist; Vendor Startup

| ID | WBS | Activity | Duration | Start | Finish | Predecessors | Total float | Free float | Layton Responsible Party | Vendor Responsible Party |
| --- | --- | --- | --- | --- | --- | --- | --- | --- | --- | --- |
|  | 02 | **DH2100 CRAH-DH-02 L3** |  | 2026-03-02 | 2026-03-05 |  |  |  |  |  |
| DC1-CRAH-L3-Cx-1030 |  | DC1-DH2100-CRAH-DH-02 FTE | 1d | 2026-03-02 | 2026-03-02 | DC1-MOD2-L3-Cx-1060 SS, DC1-MOD2-L3-Cx-1150 SS, DC1-CRAH-L2-1010 | 14d | 0d | Riley Warring | ROS |
| DC1-CRAH-L3-Cx-1040 |  | DC1-DH2100-CRAH-DH-02 L3 Startup | 2d | 2026-03-03 | 2026-03-04 | DC1-CRAH-L3-Cx-1030 | 14d | 0d | Riley Warring | UMAS |
| DC1-CRAH-L3-Cx-1050 |  | DC1-DH2100-CRAH-DH-02 BMS/EPMS | 1d | 2026-03-05 | 2026-03-05 | DC1-CRAH-L3-Cx-1040 | 14d | 8d | Riley Warring | PRM |
|  | 03 | **DH2100 CRAH-DH-03 L3** |  | 2026-02-25 | 2026-03-02 |  |  |  |  |  |
| DC1-CRAH-L3-Cx-1060 |  | DC1-DH2100-CRAH-DH-03 FTE | 1d | 2026-02-25 | 2026-02-25 | DC1-MOD2-L3-Cx-1030 SS, DC1-MOD2-L3-Cx-1120 SS, DC1-CRAH-L2-1020 | 17d | 0d | Riley Warring | ROS |
| DC1-CRAH-L3-Cx-1070 |  | DC1-DH2100-CRAH-DH-03 L3 Startup | 2d | 2026-02-26 | 2026-02-27 | DC1-CRAH-L3-Cx-1060 | 17d | 0d | Riley Warring | UMAS |
| DC1-CRAH-L3-Cx-1080 |  | DC1-DH2100-CRAH-DH-03 BMS/EPMS | 1d | 2026-03-02 | 2026-03-02 | DC1-CRAH-L3-Cx-1070 | 17d | 11d | Riley Warring | PRM |
|  | 04 | **DH2100 CRAH-DH-04 L3** |  | 2026-02-20 | 2026-02-25 |  |  |  |  |  |
| DC1-CRAH-L3-Cx-1090 |  | DC1-DH2100-CRAH-DH-04 FTE | 1d | 2026-02-20 | 2026-02-20 | DC1-MOD2-L3-Cx-1000 SS, DC1-MOD2-L3-Cx-1090 SS, DC1-CRAH-L2-1030 | 20d | 0d | Riley Warring | ROS |
| DC1-CRAH-L3-Cx-1100 |  | DC1-DH2100-CRAH-DH-04 L3 Startup | 2d | 2026-02-23 | 2026-02-24 | DC1-CRAH-L3-Cx-1090 | 20d | 0d | Riley Warring | UMAS |
| DC1-CRAH-L3-Cx-1110 |  | DC1-DH2100-CRAH-DH-04 BMS/EPMS | 1d | 2026-02-25 | 2026-02-25 | DC1-CRAH-L3-Cx-1100 | 20d | 14d | Riley Warring | PRM |
|  | 05 | **DH2100 CRAH-DH-05 L3** |  | 2026-03-05 | 2026-03-10 |  |  |  |  |  |
| DC1-CRAH-L3-Cx-1120 |  | DC1-DH2100-CRAH-DH-05 FTE | 1d | 2026-03-05 | 2026-03-05 | DC1-MOD2-L3-Cx-1180 SS, DC1-MOD2-L3-Cx-1060 SS, DC1-CRAH-L2-1040 | 11d | 0d | Riley Warring | ROS |
| DC1-CRAH-L3-Cx-1130 |  | DC1-DH2100-CRAH-DH-05 L3 Startup | 2d | 2026-03-06 | 2026-03-09 | DC1-CRAH-L3-Cx-1120 | 11d | 0d | Riley Warring | UMAS |
| DC1-CRAH-L3-Cx-1140 |  | DC1-DH2100-CRAH-DH-05 BMS/EPMS | 1d | 2026-03-10 | 2026-03-10 | DC1-CRAH-L3-Cx-1130 | 11d | 5d | Riley Warring | PRM |
|  | 06 | **DH2100 CRAH-DH-06 L3** |  | 2026-03-02 | 2026-03-05 |  |  |  |  |  |
| DC1-CRAH-L3-Cx-1150 |  | DC1-DH2100-CRAH-DH-06 FTE | 1d | 2026-03-02 | 2026-03-02 | DC1-MOD2-L3-Cx-1030 SS, DC1-MOD2-L3-Cx-1150 SS, DC1-CRAH-L2-1050 | 14d | 0d | Riley Warring | ROS |
| DC1-CRAH-L3-Cx-1160 |  | DC1-DH2100-CRAH-DH-06 L3 Startup | 2d | 2026-03-03 | 2026-03-04 | DC1-CRAH-L3-Cx-1150 | 14d | 0d | Riley Warring | UMAS |
| DC1-CRAH-L3-Cx-1170 |  | DC1-DH2100-CRAH-DH-06 BMS/EPMS | 1d | 2026-03-05 | 2026-03-05 | DC1-CRAH-L3-Cx-1160 | 14d | 8d | Riley Warring | PRM |
|  | 07 | **DH2100 CRAH-DH-07 L3** |  | 2026-02-25 | 2026-03-02 |  |  |  |  |  |
| DC1-CRAH-L3-Cx-1180 |  | DC1-DH2100-CRAH-DH-07 FTE | 1d | 2026-02-25 | 2026-02-25 | DC1-MOD2-L3-Cx-1000 SS, DC1-MOD2-L3-Cx-1120 SS, DC1-CRAH-L2-1060 | 17d | 0d | Riley Warring | ROS |
| DC1-CRAH-L3-Cx-1190 |  | DC1-DH2100-CRAH-DH-07 L3 Startup | 2d | 2026-02-26 | 2026-02-27 | DC1-CRAH-L3-Cx-1180 | 17d | 0d | Riley Warring | UMAS |
| DC1-CRAH-L3-Cx-1200 |  | DC1-DH2100-CRAH-DH-07 BMS/EPMS | 1d | 2026-03-02 | 2026-03-02 | DC1-CRAH-L3-Cx-1190 | 17d | 11d | Riley Warring | PRM |

Notes:
- DC1-CRAH-L3-Cx-1040: Steps: EC Startup Checklist; MC Startup Checklist; Vendor Startup
- DC1-CRAH-L3-Cx-1070: Steps: EC Startup Checklist; MC Startup Checklist; Vendor Startup
- DC1-CRAH-L3-Cx-1100: Steps: EC Startup Checklist; MC Startup Checklist; Vendor Startup
- DC1-CRAH-L3-Cx-1130: Steps: EC Startup Checklist; MC Startup Checklist; Vendor Startup
- DC1-CRAH-L3-Cx-1160: Steps: EC Startup Checklist; MC Startup Checklist; Vendor Startup
- DC1-CRAH-L3-Cx-1190: Steps: EC Startup Checklist; MC Startup Checklist; Vendor Startup

| ID | WBS | Activity | Duration | Start | Finish | Predecessors | Total float | Free float | Layton Responsible Party | Vendor Responsible Party |
| --- | --- | --- | --- | --- | --- | --- | --- | --- | --- | --- |
|  | 08 | **DH2100 CRAH-DH-08 L3** |  | 2026-03-05 | 2026-03-10 |  |  |  |  |  |
| DC1-CRAH-L3-Cx-1210 |  | DC1-DH2100-CRAH-DH-08 FTE | 1d | 2026-03-05 | 2026-03-05 | DC1-MOD2-L3-Cx-1180 SS, DC1-MOD2-L3-Cx-1060 SS, DC1-CRAH-L2-1070 | 11d | 0d | Riley Warring | ROS |
| DC1-CRAH-L3-Cx-1220 |  | DC1-DH2100-CRAH-DH-08 L3 Startup | 2d | 2026-03-06 | 2026-03-09 | DC1-CRAH-L3-Cx-1210 | 11d | 0d | Riley Warring | UMAS |
| DC1-CRAH-L3-Cx-1230 |  | DC1-DH2100-CRAH-DH-08 BMS/EPMS | 1d | 2026-03-10 | 2026-03-10 | DC1-CRAH-L3-Cx-1220 | 11d | 5d | Riley Warring | PRM |
|  | 09 | **DH2100 CRAH-DH-09 L3** |  | 2026-03-02 | 2026-03-05 |  |  |  |  |  |
| DC1-CRAH-L3-Cx-1240 |  | DC1-DH2100-CRAH-DH-09 FTE | 1d | 2026-03-02 | 2026-03-02 | DC1-MOD2-L3-Cx-1030 SS, DC1-MOD2-L3-Cx-1150 SS, DC1-CRAH-L2-1080 | 14d | 0d | Riley Warring | ROS |
| DC1-CRAH-L3-Cx-1250 |  | DC1-DH2100-CRAH-DH-09 L3 Startup | 2d | 2026-03-03 | 2026-03-04 | DC1-CRAH-L3-Cx-1240 | 14d | 0d | Riley Warring | UMAS |
| DC1-CRAH-L3-Cx-1260 |  | DC1-DH2100-CRAH-DH-09 BMS/EPMS | 1d | 2026-03-05 | 2026-03-05 | DC1-CRAH-L3-Cx-1250 | 14d | 8d | Riley Warring | PRM |
|  | 10 | **DH2100 CRAH-DH-10 L3** |  | 2026-02-25 | 2026-03-02 |  |  |  |  |  |
| DC1-CRAH-L3-Cx-1270 |  | DC1-DH2100-CRAH-DH-10 FTE | 1d | 2026-02-25 | 2026-02-25 | DC1-MOD2-L3-Cx-1000 SS, DC1-MOD2-L3-Cx-1120 SS, DC1-CRAH-L2-1090 | 17d | 0d | Riley Warring | ROS |
| DC1-CRAH-L3-Cx-1280 |  | DC1-DH2100-CRAH-DH-10 L3 Startup | 2d | 2026-02-26 | 2026-02-27 | DC1-CRAH-L3-Cx-1270 | 17d | 0d | Riley Warring | UMAS |
| DC1-CRAH-L3-Cx-1290 |  | DC1-DH2100-CRAH-DH-10 BMS/EPMS | 1d | 2026-03-02 | 2026-03-02 | DC1-CRAH-L3-Cx-1280 | 17d | 11d | Riley Warring | PRM |
|  | 11 | **DH2100 CRAH-DH-11 L3** |  | 2026-03-05 | 2026-03-10 |  |  |  |  |  |
| DC1-CRAH-L3-Cx-1300 |  | DC1-DH2100-CRAH-DH-11 FTE | 1d | 2026-03-05 | 2026-03-05 | DC1-MOD2-L3-Cx-1180 SS, DC1-MOD2-L3-Cx-1090 SS, DC1-CRAH-L2-1100 | 11d | 0d | Riley Warring | ROS |
| DC1-CRAH-L3-Cx-1310 |  | DC1-DH2100-CRAH-DH-11 L3 Startup | 2d | 2026-03-06 | 2026-03-09 | DC1-CRAH-L3-Cx-1300 | 11d | 0d | Riley Warring | UMAS |
| DC1-CRAH-L3-Cx-1320 |  | DC1-DH2100-CRAH-DH-11 BMS/EPMS | 1d | 2026-03-10 | 2026-03-10 | DC1-CRAH-L3-Cx-1310 | 11d | 5d | Riley Warring | PRM |
|  | 12 | **DH2100 CRAH-DH-12 L3** |  | 2026-03-02 | 2026-03-05 |  |  |  |  |  |
| DC1-CRAH-L3-Cx-1330 |  | DC1-DH2100-CRAH-DH-12 FTE | 1d | 2026-03-02 | 2026-03-02 | DC1-MOD2-L3-Cx-1060 SS, DC1-MOD2-L3-Cx-1150 SS, DC1-CRAH-L2-1110 | 14d | 0d | Riley Warring | ROS |
| DC1-CRAH-L3-Cx-1340 |  | DC1-DH2100-CRAH-DH-12 L3 Startup | 2d | 2026-03-03 | 2026-03-04 | DC1-CRAH-L3-Cx-1330 | 14d | 0d | Riley Warring | UMAS |
| DC1-CRAH-L3-Cx-1350 |  | DC1-DH2100-CRAH-DH-12 BMS/EPMS | 1d | 2026-03-05 | 2026-03-05 | DC1-CRAH-L3-Cx-1340 | 14d | 8d | Riley Warring | PRM |
|  | 13 | **DH2100 CRAH-DH-13 L3** |  | 2026-02-25 | 2026-03-02 |  |  |  |  |  |
| DC1-CRAH-L3-Cx-1360 |  | DC1-DH2100-CRAH-DH-13 FTE | 1d | 2026-02-25 | 2026-02-25 | DC1-MOD2-L3-Cx-1030 SS, DC1-MOD2-L3-Cx-1120 SS, DC1-CRAH-L2-1120 | 17d | 0d | Riley Warring | ROS |
| DC1-CRAH-L3-Cx-1370 |  | DC1-DH2100-CRAH-DH-13 L3 Startup | 2d | 2026-02-26 | 2026-02-27 | DC1-CRAH-L3-Cx-1360 | 17d | 0d | Riley Warring | UMAS |
| DC1-CRAH-L3-Cx-1380 |  | DC1-DH2100-CRAH-DH-13 BMS/EPMS | 1d | 2026-03-02 | 2026-03-02 | DC1-CRAH-L3-Cx-1370 | 17d | 11d | Riley Warring | PRM |

Notes:
- DC1-CRAH-L3-Cx-1220: Steps: EC Startup Checklist; MC Startup Checklist; Vendor Startup
- DC1-CRAH-L3-Cx-1250: Steps: EC Startup Checklist; MC Startup Checklist; Vendor Startup
- DC1-CRAH-L3-Cx-1280: Steps: EC Startup Checklist; MC Startup Checklist; Vendor Startup
- DC1-CRAH-L3-Cx-1310: Steps: EC Startup Checklist; MC Startup Checklist; Vendor Startup
- DC1-CRAH-L3-Cx-1340: Steps: EC Startup Checklist; MC Startup Checklist; Vendor Startup
- DC1-CRAH-L3-Cx-1370: Steps: EC Startup Checklist; MC Startup Checklist; Vendor Startup

| ID | WBS | Activity | Duration | Start | Finish | Predecessors | Total float | Free float | Layton Responsible Party | Vendor Responsible Party |
| --- | --- | --- | --- | --- | --- | --- | --- | --- | --- | --- |
|  | 14 | **DH2100 CRAH-DH-14 L3** |  | 2026-02-20 | 2026-02-25 |  |  |  |  |  |
| DC1-CRAH-L3-Cx-1390 |  | DC1-DH2100-CRAH-DH-14 FTE | 1d | 2026-02-20 | 2026-02-20 | DC1-MOD2-L3-Cx-1000 SS, DC1-MOD2-L3-Cx-1090 SS, DC1-CRAH-L2-1130 | 20d | 0d | Riley Warring | ROS |
| DC1-CRAH-L3-Cx-1400 |  | DC1-DH2100-CRAH-DH-14 L3 Startup | 2d | 2026-02-23 | 2026-02-24 | DC1-CRAH-L3-Cx-1390 | 20d | 0d | Riley Warring | UMAS |
| DC1-CRAH-L3-Cx-1410 |  | DC1-DH2100-CRAH-DH-14 BMS/EPMS | 1d | 2026-02-25 | 2026-02-25 | DC1-CRAH-L3-Cx-1400 | 20d | 14d | Riley Warring | PRM |
|  | 15 | **DH2100 CRAH-DH-15 L3** |  | 2026-02-17 | 2026-02-20 |  |  |  |  |  |
| DC1-CRAH-L3-Cx-1420 |  | DC1-DH2100-CRAH-DH-15 FTE | 1d | 2026-02-17 | 2026-02-17 | DC1-MOD2-L3-Cx-1000 SS, DC1-MOD2-L3-Cx-1030 SS, DC1-CRAH-L2-1140 | 23d | 0d | Riley Warring | ROS |
| DC1-CRAH-L3-Cx-1430 |  | DC1-DH2100-CRAH-DH-15 L3 Startup | 2d | 2026-02-18 | 2026-02-19 | DC1-CRAH-L3-Cx-1420 | 23d | 0d | Riley Warring | UMAS |
| DC1-CRAH-L3-Cx-1440 |  | DC1-DH2100-CRAH-DH-15 BMS/EPMS | 1d | 2026-02-20 | 2026-02-20 | DC1-CRAH-L3-Cx-1430 | 23d | 17d | Riley Warring | PRM |
|  | 16 | **DH2100 CRAH-DH-16 L3** |  | 2026-02-20 | 2026-02-25 |  |  |  |  |  |
| DC1-CRAH-L3-Cx-1450 |  | DC1-DH2100-CRAH-DH-16 FTE | 1d | 2026-02-20 | 2026-02-20 | DC1-MOD2-L3-Cx-1030 SS, DC1-MOD2-L3-Cx-1060 SS, DC1-CRAH-L2-1150 | 20d | 0d | Riley Warring | ROS |
| DC1-CRAH-L3-Cx-1460 |  | DC1-DH2100-CRAH-DH-16 L3 Startup | 2d | 2026-02-23 | 2026-02-24 | DC1-CRAH-L3-Cx-1450 | 20d | 0d | Riley Warring | UMAS |
| DC1-CRAH-L3-Cx-1470 |  | DC1-DH2100-CRAH-DH-16 BMS/EPMS | 1d | 2026-02-25 | 2026-02-25 | DC1-CRAH-L3-Cx-1460 | 20d | 14d | Riley Warring | PRM |
|  | 17 | **DH2100 CRAH-DH-17 L3** |  | 2026-02-20 | 2026-02-25 |  |  |  |  |  |
| DC1-CRAH-L3-Cx-1480 |  | DC1-DH2100-CRAH-DH-17 FTE | 1d | 2026-02-20 | 2026-02-20 | DC1-MOD2-L3-Cx-1060 SS, DC1-MOD2-L3-Cx-1090 SS, DC1-CRAH-L2-1160 | 20d | 0d | Riley Warring | ROS |
| DC1-CRAH-L3-Cx-1490 |  | DC1-DH2100-CRAH-DH-17 L3 Startup | 2d | 2026-02-23 | 2026-02-24 | DC1-CRAH-L3-Cx-1480 | 20d | 0d | Riley Warring | UMAS |
| DC1-CRAH-L3-Cx-1500 |  | DC1-DH2100-CRAH-DH-17 BMS/EPMS | 1d | 2026-02-25 | 2026-02-25 | DC1-CRAH-L3-Cx-1490 | 20d | 14d | Riley Warring | PRM |
|  | 18 | **DH2100 CRAH-DH-18 L3** |  | 2026-02-25 | 2026-03-02 |  |  |  |  |  |
| DC1-CRAH-L3-Cx-1510 |  | DC1-DH2100-CRAH-DH-18 FTE | 1d | 2026-02-25 | 2026-02-25 | DC1-MOD2-L3-Cx-1090 SS, DC1-MOD2-L3-Cx-1120 SS, DC1-CRAH-L2-1170 | 17d | 0d | Riley Warring | ROS |
| DC1-CRAH-L3-Cx-1520 |  | DC1-DH2100-CRAH-DH-18 L3 Startup | 2d | 2026-02-26 | 2026-02-27 | DC1-CRAH-L3-Cx-1510 | 17d | 0d | Riley Warring | UMAS |
| DC1-CRAH-L3-Cx-1530 |  | DC1-DH2100-CRAH-DH-18 BMS/EPMS | 1d | 2026-03-02 | 2026-03-02 | DC1-CRAH-L3-Cx-1520 | 17d | 11d | Riley Warring | PRM |
|  | 19 | **DH2100 CRAH-DH-19 L3** |  | 2026-03-02 | 2026-03-05 |  |  |  |  |  |
| DC1-CRAH-L3-Cx-1540 |  | DC1-DH2100-CRAH-DH-19 FTE | 1d | 2026-03-02 | 2026-03-02 | DC1-MOD2-L3-Cx-1120 SS, DC1-MOD2-L3-Cx-1150 SS, DC1-CRAH-L2-1180 | 14d | 0d | Riley Warring | ROS |
| DC1-CRAH-L3-Cx-1550 |  | DC1-DH2100-CRAH-DH-19 L3 Startup | 2d | 2026-03-03 | 2026-03-04 | DC1-CRAH-L3-Cx-1540 | 14d | 0d | Riley Warring | UMAS |
| DC1-CRAH-L3-Cx-1560 |  | DC1-DH2100-CRAH-DH-19 BMS/EPMS | 1d | 2026-03-05 | 2026-03-05 | DC1-CRAH-L3-Cx-1550 | 14d | 8d | Riley Warring | PRM |

Notes:
- DC1-CRAH-L3-Cx-1400: Steps: EC Startup Checklist; MC Startup Checklist; Vendor Startup
- DC1-CRAH-L3-Cx-1430: Steps: EC Startup Checklist; MC Startup Checklist; Vendor Startup
- DC1-CRAH-L3-Cx-1460: Steps: EC Startup Checklist; MC Startup Checklist; Vendor Startup
- DC1-CRAH-L3-Cx-1490: Steps: EC Startup Checklist; MC Startup Checklist; Vendor Startup
- DC1-CRAH-L3-Cx-1520: Steps: EC Startup Checklist; MC Startup Checklist; Vendor Startup
- DC1-CRAH-L3-Cx-1550: Steps: EC Startup Checklist; MC Startup Checklist; Vendor Startup

| ID | WBS | Activity | Duration | Start | Finish | Predecessors | Total float | Free float | Layton Responsible Party | Vendor Responsible Party |
| --- | --- | --- | --- | --- | --- | --- | --- | --- | --- | --- |
|  | 20 | **DH2100 CRAH-DH-20 L3** |  | 2026-03-05 | 2026-03-10 |  |  |  |  |  |
| DC1-CRAH-L3-Cx-1570 |  | DC1-DH2100-CRAH-DH-20 FTE | 1d | 2026-03-05 | 2026-03-05 | DC1-MOD2-L3-Cx-1180 SS, DC1-MOD2-L3-Cx-1150 SS, DC1-CRAH-L2-1190 | 11d | 0d | Riley Warring | ROS |
| DC1-CRAH-L3-Cx-1580 |  | DC1-DH2100-CRAH-DH-20 L3 Startup | 2d | 2026-03-06 | 2026-03-09 | DC1-CRAH-L3-Cx-1570 | 11d | 0d | Riley Warring | UMAS |
| DC1-CRAH-L3-Cx-1590 |  | DC1-DH2100-CRAH-DH-20 BMS/EPMS | 1d | 2026-03-10 | 2026-03-10 | DC1-CRAH-L3-Cx-1580 | 11d | 5d | Riley Warring | PRM |
|  | 21 | **DH2100 CRAH-DH-21 L3** |  | 2026-03-05 | 2026-03-10 |  |  |  |  |  |
| DC1-CRAH-L3-Cx-1600 |  | DC1-DH2100-CRAH-DH-21 FTE | 1d | 2026-03-05 | 2026-03-05 | DC1-MOD2-L3-Cx-1000 SS, DC1-CRAH-L2-1200, DC1-MOD2-L3-Cx-1180 SS | 11d | 0d | Riley Warring | ROS |
| DC1-CRAH-L3-Cx-1610 |  | DC1-DH2100-CRAH-DH-21 L3 Startup | 2d | 2026-03-06 | 2026-03-09 | DC1-CRAH-L3-Cx-1600 | 11d | 0d | Riley Warring | UMAS |
| DC1-CRAH-L3-Cx-1620 |  | DC1-DH2100-CRAH-DH-21 BMS/EPMS | 1d | 2026-03-10 | 2026-03-10 | DC1-CRAH-L3-Cx-1610 | 11d | 5d | Riley Warring | PRM |
|  | 22 | **DH2100 CRAH-DH-22 L3** |  | 2026-02-20 | 2026-02-25 |  |  |  |  |  |
| DC1-CRAH-L3-Cx-1630 |  | DC1-DH2100-CRAH-DH-22 FTE | 1d | 2026-02-20 | 2026-02-20 | DC1-MOD2-L3-Cx-1000 SS, DC1-MOD2-L3-Cx-1060 SS, DC1-CRAH-L2-1210 | 20d | 0d | Riley Warring | ROS |
| DC1-CRAH-L3-Cx-1640 |  | DC1-DH2100-CRAH-DH-22 L3 Startup | 2d | 2026-02-23 | 2026-02-24 | DC1-CRAH-L3-Cx-1630 | 20d | 0d | Riley Warring | UMAS |
| DC1-CRAH-L3-Cx-1650 |  | DC1-DH2100-CRAH-DH-22 BMS/EPMS | 1d | 2026-02-25 | 2026-02-25 | DC1-CRAH-L3-Cx-1640 | 20d | 14d | Riley Warring | PRM |
|  | 23 | **DH2100 CRAH-DH-23 L3** |  | 2026-02-20 | 2026-02-25 |  |  |  |  |  |
| DC1-CRAH-L3-Cx-1660 |  | DC1-DH2100-CRAH-DH-23 FTE | 1d | 2026-02-20 | 2026-02-20 | DC1-MOD2-L3-Cx-1030 SS, DC1-MOD2-L3-Cx-1090 SS, DC1-CRAH-L2-1220 | 20d | 0d | Riley Warring | ROS |
| DC1-CRAH-L3-Cx-1670 |  | DC1-DH2100-CRAH-DH-23 L3 Startup | 2d | 2026-02-23 | 2026-02-24 | DC1-CRAH-L3-Cx-1660 | 20d | 0d | Riley Warring | UMAS |
| DC1-CRAH-L3-Cx-1680 |  | DC1-DH2100-CRAH-DH-23 BMS/EPMS | 1d | 2026-02-25 | 2026-02-25 | DC1-CRAH-L3-Cx-1670 | 20d | 14d | Riley Warring | PRM |
|  | 24 | **DH2100 CRAH-DH-24 L3** |  | 2026-02-25 | 2026-03-02 |  |  |  |  |  |
| DC1-CRAH-L3-Cx-1690 |  | DC1-DH2100-CRAH-DH-24 FTE | 1d | 2026-02-25 | 2026-02-25 | DC1-MOD2-L3-Cx-1060 SS, DC1-MOD2-L3-Cx-1120 SS, DC1-CRAH-L2-1230 | 17d | 0d | Riley Warring | ROS |
| DC1-CRAH-L3-Cx-1700 |  | DC1-DH2100-CRAH-DH-24 L3 Startup | 2d | 2026-02-26 | 2026-02-27 | DC1-CRAH-L3-Cx-1690 | 17d | 0d | Riley Warring | UMAS |
| DC1-CRAH-L3-Cx-1710 |  | DC1-DH2100-CRAH-DH-24 BMS/EPMS | 1d | 2026-03-02 | 2026-03-02 | DC1-CRAH-L3-Cx-1700 | 17d | 11d | Riley Warring | PRM |
|  | 25 | **DH2100 CRAH-DH-25 L3** |  | 2026-03-02 | 2026-03-05 |  |  |  |  |  |
| DC1-CRAH-L3-Cx-1720 |  | DC1-DH2100-CRAH-DH-25 FTE | 1d | 2026-03-02 | 2026-03-02 | DC1-MOD2-L3-Cx-1090 SS, DC1-MOD2-L3-Cx-1150 SS, DC1-CRAH-L2-1240 | 14d | 0d | Riley Warring | ROS |
| DC1-CRAH-L3-Cx-1730 |  | DC1-DH2100-CRAH-DH-25 L3 Startup | 2d | 2026-03-03 | 2026-03-04 | DC1-CRAH-L3-Cx-1720 | 14d | 0d | Riley Warring | UMAS |
| DC1-CRAH-L3-Cx-1740 |  | DC1-DH2100-CRAH-DH-25 BMS/EPMS | 1d | 2026-03-05 | 2026-03-05 | DC1-CRAH-L3-Cx-1730 | 14d | 8d | Riley Warring | PRM |

Notes:
- DC1-CRAH-L3-Cx-1580: Steps: EC Startup Checklist; MC Startup Checklist; Vendor Startup
- DC1-CRAH-L3-Cx-1610: Steps: EC Startup Checklist; MC Startup Checklist; Vendor Startup
- DC1-CRAH-L3-Cx-1640: Steps: EC Startup Checklist; MC Startup Checklist; Vendor Startup
- DC1-CRAH-L3-Cx-1670: Steps: EC Startup Checklist; MC Startup Checklist; Vendor Startup
- DC1-CRAH-L3-Cx-1700: Steps: EC Startup Checklist; MC Startup Checklist; Vendor Startup
- DC1-CRAH-L3-Cx-1730: Steps: EC Startup Checklist; MC Startup Checklist; Vendor Startup

| ID | WBS | Activity | Duration | Start | Finish | Predecessors | Total float | Free float | Layton Responsible Party | Vendor Responsible Party |
| --- | --- | --- | --- | --- | --- | --- | --- | --- | --- | --- |
|  | 26 | **DH2100 CRAH-DH-26 L3** |  | 2026-03-05 | 2026-03-10 |  |  |  |  |  |
| DC1-CRAH-L3-Cx-1750 |  | DC1-DH2100-CRAH-DH-26 FTE | 1d | 2026-03-05 | 2026-03-05 | DC1-MOD2-L3-Cx-1180 SS, DC1-MOD2-L3-Cx-1120 SS, DC1-CRAH-L2-1250 | 11d | 0d | Riley Warring | ROS |
| DC1-CRAH-L3-Cx-1760 |  | DC1-DH2100-CRAH-DH-26 L3 Startup | 2d | 2026-03-06 | 2026-03-09 | DC1-CRAH-L3-Cx-1750 | 11d | 0d | Riley Warring | UMAS |
| DC1-CRAH-L3-Cx-1770 |  | DC1-DH2100-CRAH-DH-26 BMS/EPMS | 1d | 2026-03-10 | 2026-03-10 | DC1-CRAH-L3-Cx-1760 | 11d | 5d | Riley Warring | PRM |
|  | 27 | **DH2100 CRAH-DH-27 L3** |  | 2026-03-02 | 2026-03-05 |  |  |  |  |  |
| DC1-CRAH-L3-Cx-1780 |  | DC1-DH2100-CRAH-DH-27 FTE | 1d | 2026-03-02 | 2026-03-02 | DC1-MOD2-L3-Cx-1000 SS, DC1-MOD2-L3-Cx-1150 SS, DC1-CRAH-L2-1260 | 14d | 0d | Riley Warring | ROS |
| DC1-CRAH-L3-Cx-1790 |  | DC1-DH2100-CRAH-DH-27 L3 Startup | 2d | 2026-03-03 | 2026-03-04 | DC1-CRAH-L3-Cx-1780 | 14d | 0d | Riley Warring | UMAS |
| DC1-CRAH-L3-Cx-1800 |  | DC1-DH2100-CRAH-DH-27 BMS/EPMS | 1d | 2026-03-05 | 2026-03-05 | DC1-CRAH-L3-Cx-1790 | 14d | 8d | Riley Warring | PRM |
|  | 28 | **DH2100 CRAH-DH-28 L3** |  | 2026-03-05 | 2026-03-10 |  |  |  |  |  |
| DC1-CRAH-L3-Cx-1810 |  | DC1-DH2100-CRAH-DH-28 FTE | 1d | 2026-03-05 | 2026-03-05 | DC1-MOD2-L3-Cx-1030 SS, DC1-CRAH-L2-1270, DC1-MOD2-L3-Cx-1180 SS | 11d | 0d | Riley Warring | ROS |
| DC1-CRAH-L3-Cx-1820 |  | DC1-DH2100-CRAH-DH-28 L3 Startup | 2d | 2026-03-06 | 2026-03-09 | DC1-CRAH-L3-Cx-1810 | 11d | 0d | Riley Warring | UMAS |
| DC1-CRAH-L3-Cx-1830 |  | DC1-DH2100-CRAH-DH-28 BMS/EPMS | 1d | 2026-03-10 | 2026-03-10 | DC1-CRAH-L3-Cx-1820 | 11d | 5d | Riley Warring | PRM |
|  | 29 | **DH2100 CRAH-EG-01 L3** |  | 2026-03-02 | 2026-03-05 |  |  |  |  |  |
| DC1-CRAH-L3-Cx-1840 |  | DC1-DH2100-CRAH-EG-2102-01 FTE | 1d | 2026-03-02 | 2026-03-02 | DC1-CRAH-L2-1280, DC1-MOD2-L3-Cx-1150 SS | 14d | 0d | Riley Warring | ROS |
| DC1-CRAH-L3-Cx-1850 |  | DC1-DH2100-CRAH-EG-2102-01 L3 Startup | 2d | 2026-03-03 | 2026-03-04 | DC1-CRAH-L3-Cx-1840 | 14d | 0d | Riley Warring | VER |
| DC1-CRAH-L3-Cx-1860 |  | DC1-DH2100-CRAH-EG-2102-01 BMS/EPMS | 1d | 2026-03-05 | 2026-03-05 | DC1-CRAH-L3-Cx-1850 | 14d | 8d | Riley Warring | PRM |
|  | 30 | **DH2100 CRAH-EG-02 L3** |  | 2026-02-20 | 2026-02-25 |  |  |  |  |  |
| DC1-CRAH-L3-Cx-1870 |  | DC1-DH2100-CRAH-EG-2102-02 FTE | 1d | 2026-02-20 | 2026-02-20 | DC1-MOD2-L3-Cx-1090 SS, DC1-CRAH-L2-1290 | 20d | 0d | Riley Warring | ROS |
| DC1-CRAH-L3-Cx-1880 |  | DC1-DH2100-CRAH-EG-2102-02 L3 Startup | 2d | 2026-02-23 | 2026-02-24 | DC1-CRAH-L3-Cx-1870 | 20d | 0d | Riley Warring | VER |
| DC1-CRAH-L3-Cx-1890 |  | DC1-DH2100-CRAH-EG-2102-02 BMS/EPMS | 1d | 2026-02-25 | 2026-02-25 | DC1-CRAH-L3-Cx-1880 | 20d | 14d | Riley Warring | PRM |
|  | 31 | **DH2100 CRAH-EG-03 L3** |  | 2026-02-20 | 2026-02-25 |  |  |  |  |  |
| DC1-CRAH-L3-Cx-1900 |  | DC1-DH2100-CRAH-EG-2102-03 FTE | 1d | 2026-02-20 | 2026-02-20 | DC1-MOD2-L3-Cx-1060 SS, DC1-CRAH-L2-1300 | 20d | 0d | Riley Warring | ROS |
| DC1-CRAH-L3-Cx-1910 |  | DC1-DH2100-CRAH-EG-2102-03 L3 Startup | 2d | 2026-02-23 | 2026-02-24 | DC1-CRAH-L3-Cx-1900 | 20d | 0d | Riley Warring | VER |
| DC1-CRAH-L3-Cx-1920 |  | DC1-DH2100-CRAH-EG-2102-03 BMS/EPMS | 1d | 2026-02-25 | 2026-02-25 | DC1-CRAH-L3-Cx-1910 | 20d | 14d | Riley Warring | PRM |

Notes:
- DC1-CRAH-L3-Cx-1760: Steps: EC Startup Checklist; MC Startup Checklist; Vendor Startup
- DC1-CRAH-L3-Cx-1790: Steps: EC Startup Checklist; MC Startup Checklist; Vendor Startup
- DC1-CRAH-L3-Cx-1820: Steps: EC Startup Checklist; MC Startup Checklist; Vendor Startup
- DC1-CRAH-L3-Cx-1850: Steps: EC Startup Checklist; MC Startup Checklist; Vendor Startup
- DC1-CRAH-L3-Cx-1880: Steps: EC Startup Checklist; MC Startup Checklist; Vendor Startup
- DC1-CRAH-L3-Cx-1910: Steps: EC Startup Checklist; MC Startup Checklist; Vendor Startup

| ID | WBS | Activity | Duration | Start | Finish | Predecessors | Total float | Free float | Calendar | Layton Responsible Party | Vendor Responsible Party | Notes |
| --- | --- | --- | --- | --- | --- | --- | --- | --- | --- | --- | --- | --- |
|  | 32 | **DH2100 CRAH-EG-04 L3** |  | 2026-02-17 | 2026-02-20 |  |  |  |  |  |  |  |
| DC1-CRAH-L3-Cx-1930 |  | DC1-DH2100-CRAH-EG-2102-04 FTE | 1d | 2026-02-17 | 2026-02-17 | DC1-CRAH-L2-1310, DC1-MOD2-L3-Cx-1000 SS | 23d | 0d |  | Riley Warring | ROS |  |
| DC1-CRAH-L3-Cx-1940 |  | DC1-DH2100-CRAH-EG-2102-04 L3 Startup | 2d | 2026-02-18 | 2026-02-19 | DC1-CRAH-L3-Cx-1930 | 23d | 0d |  | Riley Warring | VER |  |
| DC1-CRAH-L3-Cx-1950 |  | DC1-DH2100-CRAH-EG-2102-04 BMS/EPMS | 1d | 2026-02-20 | 2026-02-20 | DC1-CRAH-L3-Cx-1940 | 23d | 17d |  | Riley Warring | PRM |  |
|  | 33 | **DC1-DH2100-DOAS-RT-01 L3** |  | 2026-02-17 | 2026-02-20 |  |  |  |  |  |  |  |
| DC1-DOAS-L3-Cx-1000 |  | DC1-DH2100-DOAS-RT-01 FTE | 1d | 2026-02-17 | 2026-02-17 | DC1-MOD2-L3-Cx-1000 SS, DC1-DOAS-L2-1000 | 23d | 0d |  | Riley Warring | ROS |  |
| DC1-DOAS-L3-Cx-1010 |  | DC1-DH2100-DOAS-RT-01 L3 Startup | 2d | 2026-02-18 | 2026-02-19 | DC1-DOAS-L3-Cx-1000 | 23d | 0d |  | Riley Warring | TAS |  |
| DC1-DOAS-L3-Cx-1020 |  | DC1-DH2100-DOAS-RT-01 BMS/EPMS | 1d | 2026-02-20 | 2026-02-20 | DC1-DOAS-L3-Cx-1010 | 23d | 17d |  | Riley Warring | PRM |  |
|  | 34 | **DC1-DH2100-DOAS-RT-02 L3** |  | 2026-03-05 | 2026-03-10 |  |  |  |  |  |  |  |
| DC1-DOAS-L3-Cx-1030 |  | DC1-DH2100-DOAS-RT-02 FTE | 1d | 2026-03-05 | 2026-03-05 | DC1-MOD2-L3-Cx-1180 SS, DC1-DOAS-L2-1010 | 11d | 0d |  | Riley Warring | ROS |  |
| DC1-DOAS-L3-Cx-1040 |  | DC1-DH2100-DOAS-RT-02 L3 Startup | 2d | 2026-03-06 | 2026-03-09 | DC1-DOAS-L3-Cx-1030 | 11d | 0d |  | Riley Warring | TAS |  |
| DC1-DOAS-L3-Cx-1050 |  | DC1-DH2100-DOAS-RT-02 BMS/EPMS | 1d | 2026-03-10 | 2026-03-10 | DC1-DOAS-L3-Cx-1040 | 11d | 5d |  | Riley Warring | PRM |  |
|  | 14 | **DC1-DH2100 LOADBANK** |  | 2026-02-18 | 2026-05-26 |  |  |  |  |  |  |  |
| DC1-DH2100-LB-1000 |  | DC1-DH2100 Connect Loadbanks (Connect to RPP, Maybe CODs Extra Breaker) | 5d | 2026-02-18 | 2026-02-24 | DC1-CHLR-L3-Cx-1005, DC1-CHLR-L3-Cx-1035, DC1-CHLR-L3-Cx-1065, DC1-CHLR-L3-Cx-1095, DC1-CHLR-L3-Cx-1125, DC1-CHLR-L3-Cx-1155, DC1-CHLR-L3-Cx-1185, QTS - 1290 FF, QTS - 3030 FF, QTS - 3260 FF | 13d |  |  | Riley Warring | PHE |  |
| DC1-DH2100-LB-1010 |  | DC1-DH2100 Burn in Chillers | 5d | 2026-03-16 | 2026-03-20 | DC1-RPP-L3-CX-1525, DC1-RPP-L3-CX-1510, DC1-RPP-L3-CX-1495, DC1-RPP-L3-CX-1480, DC1-RPP-L3-CX-1465, DC1-RPP-L3-CX-1450, DC1-RPP-L3-CX-1435, DC1-RPP-L3-CX-1420, DC1-RPP-L3-CX-1405, DC1-RPP-L3-CX-1390, DC1-RPP-L3-CX-1375, DC1-RPP-L3-CX-1360, DC1-RPP-L3-CX-1345, DC1-RPP-L3-CX-1330, DC1-RPP-L3-CX-1315, DC1-RPP-L3-CX-1300, DC1-RPP-L3-CX-1285, DC1-RPP-L3-CX-1270, DC1-RPP-L3-CX-1255, DC1-RPP-L3-CX-1240, DC1-RPP-L3-CX-1225, DC1-RPP-L3-CX-1210, DC1-RPP-L3-CX-1195, DC1-RPP-L3-CX-1180, DC1-RPP-L3-CX-1165, DC1-RPP-L3-CX-1150, DC1-RPP-L3-CX-1135, DC1-RPP-L3-CX-1120, DC1-RPP-L3-CX-1105, DC1-RPP-L3-CX-1090, DC1-RPP-L3-CX-1075, DC1-RPP-L3-CX-1060, DC1-RPP-L3-CX-1045, DC1-RPP-L3-CX-1030, DC1-RPP-L3-CX-1015, DC1-RPP-L3-CX-1000, DC1-DH2100-LB-1000 | 0d |  |  | Riley Warring | LAY | Connected to RPPs |
| DC1-DH2100-LB-1020 |  | DC1-DH2100 Water Load Bank (Secondary Side) | 12d | 2026-05-02 | 2026-05-13 | DC1-IST-1000, DC1-CDU-L3-CX-1000, DC1-CDU-L3-CX-1015, DC1-CDU-L3-CX-1030, DC1-CDU-L3-CX-1045, DC1-CDU-L3-CX-1060, DC1-CDU-L3-CX-1075, DC1-CDU-L3-CX-1105, DC1-CDU-L3-CX-1120, DC1-CDU-L3-CX-1135, DC1-CDU-L3-CX-1150, DC1-CDU-L3-CX-1165, DC1-CDU-L3-CX-1180, DC1-CDU-L3-CX-1210, DC1-CDU-L3-CX-1225, DC1-CDU-L3-CX-1240, DC1-CDU-L3-CX-1255, DC1-CDU-L3-CX-1270, DC1-CDU-L3-CX-1285 | 2d |  | QTS-PHX3 DC1 - 7 day No Holidays | Riley Warring | LAY |  |
| DC1-DH2100-LB-1040 |  | DC1-DH2100 10% Continuity Testing RPP Whips | 2d | 2026-05-21 | 2026-05-22 | DC1-DH2100-LB-1020, QTS - 10360, QTS - 3610, QTS - 3620 | 4d | 0d |  | Riley Warring | PHE |  |
| DC1-DH2100-LB-1050 |  | DC1-DH2100 Install DanFoss Connectors | 2d | 2026-05-22 | 2026-05-26 | DC1-DH2100-LB-1040 SS+1d, DC1-DH2100-LB-1020 | 4d |  |  | Riley Warring | LAY |  |
|  | 15 | **DC1-DH2100 TAB** |  | 2026-02-25 | 2026-03-24 |  |  |  |  |  |  |  |
| DC1-DH2100-TAB-1000 |  | DC1-DH2100 Water Tab (Industrial Loop) | 10d | 2026-02-25 | 2026-03-10 | QTS-100630, DC1-CHWP-L3-Cx-1020, DC1-CHWP-L3-Cx-1050, DC1-CHWP-L3-Cx-1080, DC1-CHWP-L3-Cx-1110, DC1-CHWP-L3-Cx-1140, DC1-CHWP-L3-Cx-1170, DC1-CHWP-L3-Cx-1200 | 1d | 0d |  | Riley Warring | LAY |  |
| DC1-DH2100-TAB-1010 |  | DC1-DH2100 Air Tab | 5d | 2026-03-18 | 2026-03-24 | QTS-101880, QTS-25521, DC1-CRAH-L3-Cx-1020, DC1-CRAH-L3-Cx-1050, DC1-CRAH-L3-Cx-1080, DC1-CRAH-L3-Cx-1110, DC1-CRAH-L3-Cx-1140, DC1-CRAH-L3-Cx-1170, DC1-CRAH-L3-Cx-1200, DC1-CRAH-L3-Cx-1230, DC1-CRAH-L3-Cx-1260, DC1-CRAH-L3-Cx-1290, DC1-CRAH-L3-Cx-1320, DC1-CRAH-L3-Cx-1350, DC1-CRAH-L3-Cx-1380, DC1-CRAH-L3-Cx-1410, DC1-CRAH-L3-Cx-1440, DC1-CRAH-L3-Cx-1470, DC1-CRAH-L3-Cx-1500, DC1-CRAH-L3-Cx-1530, DC1-CRAH-L3-Cx-1560, DC1-CRAH-L3-Cx-1590, DC1-CRAH-L3-Cx-1620, DC1-CRAH-L3-Cx-1650, DC1-CRAH-L3-Cx-1680, DC1-CRAH-L3-Cx-1710, DC1-CRAH-L3-Cx-1740, DC1-CRAH-L3-Cx-1770, DC1-CRAH-L3-Cx-1800, DC1-CRAH-L3-Cx-1830, DC1-CRAH-L3-Cx-1860, DC1-CRAH-L3-Cx-1890, DC1-CRAH-L3-Cx-1920, DC1-CRAH-L3-Cx-1950, DC1-DOAS-L3-Cx-1020, DC1-DOAS-L3-Cx-1050 | 6d |  |  | Riley Warring | LAY | Removed Water TAB as Pred. |
|  | 04 | **Data Hall 2100 Cx L4** |  | 2026-02-27 | 2026-06-01 |  |  |  |  |  |  |  |
| DC1-L4-Cx-1080 |  | DC1 Data Hall 2100 BMS/EPMS Integration | 15d | 2026-03-11 | 2026-03-31 | DC1-DH2100-TAB-1000 | 1d |  | **GLOBAL - 5 Day Workweek w/ Basic Holidays |  | LAY |  |
| DC1-L4-Cx-1000 |  | DC1 Data Hall 2100 Electrical L4 | 20d | 2026-03-25 | 2026-04-21 | DC1-GEN-L3-CX-1020, DC1-GEN-L3-CX-1050, DC1-GEN-L3-CX-1080, DC1-GEN-L3-CX-1110, DC1-GEN-L3-CX-1140, DC1-GEN-L3-CX-1170, DC1-GEN-L3-CX-1200, DC1-XFM-L3-CX-1020, DC1-XFM-L3-CX-1050, DC1-XFM-L3-CX-1080, DC1-XFM-L3-CX-1110, DC1-XFM-L3-CX-1140, DC1-XFM-L3-CX-1170, DC1-XFM-L3-CX-1200, DC1-SWD-L3-CX-1020, DC1-SWD-L3-CX-1050, DC1-SWD-L3-CX-1080, DC1-SWD-L3-CX-1110, DC1-SWD-L3-CX-1140, DC1-SWD-L3-CX-1170, DC1-SWD-L3-CX-1200, DC1-MOD1-L3-CX-1020, DC1-MOD1-L3-CX-1050, DC1-MOD1-L3-CX-1080, DC1-MOD1-L3-CX-1110, DC1-MOD1-L3-CX-1140, DC1-MOD1-L3-CX-1170, DC1-MOD1-L3-CX-1200, DC1-UPSM-L3-CX-1020, DC1-UPSM-L3-CX-1050, DC1-UPSM-L3-CX-1080, DC1-UPSM-L3-CX-1110, DC1-UPSM-L3-CX-1140, DC1-UPSM-L3-CX-1170, DC1-UPSM-L3-CX-1200, DC1-ATS-L3-CX-1010, DC1-ATS-L3-CX-1025, DC1-ATS-L3-CX-1040, DC1-ATS-L3-CX-1055, DC1-ATS-L3-CX-1070, DC1-ATS-L3-CX-1085, DC1-ATS-L3-CX-1100, DC1-ATS-L3-CX-1115, DC1-ATS-L3-CX-1130, DC1-ATS-L3-CX-1145, DC1-ATS-L3-CX-1160, DC1-ATS-L3-CX-1175, DC1-ATS-L3-CX-1190, DC1-ATS-L3-CX-1205, DC1-ATS-L3-CX-1220, DC1-ATS-L3-CX-1235, DC1-ATS-L3-CX-1250, DC1-ATS-L3-CX-1265, DC1-ATS-L3-CX-1280, DC1-ATS-L3-CX-1295, DC1-ATS-L3-CX-1310, DC1-ATS-L3-CX-1325, DC1-ATS-L3-CX-1340, DC1-ATS-L3-CX-1355, DC1-ATS-L3-CX-1370, DC1-ATS-L3-CX-1385, DC1-ATS-L3-CX-1400, DC1-ATS-L3-CX-1415, DC1-ATS-L3-CX-1430, DC1-ATS-L3-CX-1445, DC1-ATS-L3-CX-1460, DC1-ATS-L3-CX-1475, DC1-ATS-L3-CX-1490, DC1-ATS-L3-CX-1505, DC1-ATS-L3-CX-1520, DC1-ATS-L3-CX-1535, DC1-COD-L3-CX-1010, DC1-COD-L3-CX-1025, DC1-COD-L3-CX-1040, DC1-COD-L3-CX-1055, DC1-COD-L3-CX-1070, DC1-COD-L3-CX-1085, DC1-COD-L3-CX-1100, DC1-COD-L3-CX-1115, DC1-COD-L3-CX-1130, DC1-COD-L3-CX-1145, DC1-COD-L3-CX-1160, DC1-COD-L3-CX-1175, DC1-COD-L3-CX-1190, DC1-COD-L3-CX-1205, DC1-COD-L3-CX-1220, DC1-COD-L3-CX-1235, DC1-COD-L3-CX-1250, DC1-COD-L3-CX-1265, DC1-COD-L3-CX-1280, DC1-COD-L3-CX-1295, DC1-COD-L3-CX-1310, DC1-COD-L3-CX-1325, DC1-COD-L3-CX-1340, DC1-COD-L3-CX-1355, DC1-COD-L3-CX-1370, DC1-COD-L3-CX-1385, DC1-COD-L3-CX-1400, DC1-COD-L3-CX-1415, DC1-COD-L3-CX-1430, DC1-COD-L3-CX-1445, DC1-COD-L3-CX-1460, DC1-COD-L3-CX-1475, DC1-COD-L3-CX-1490, DC1-COD-L3-CX-1505, DC1-COD-L3-CX-1520, DC1-COD-L3-CX-1535, DC1-MOD2-L3-Cx-1020, DC1-MOD2-L3-Cx-1050, DC1-MOD2-L3-Cx-1080, DC1-MOD2-L3-Cx-1110, DC1-MOD2-L3-Cx-1140, DC1-MOD2-L3-Cx-1170, DC1-MOD2-L3-Cx-1200, DC1-MOD3-L3-Cx-1020, DC1-MOD3-L3-Cx-1050, DC1-MOD3-L3-Cx-1080, DC1-MOD3-L3-Cx-1110, DC1-MOD3-L3-Cx-1140, DC1-MOD3-L3-Cx-1170, DC1-MOD3-L3-Cx-1200, DC1-BUS-L3-CX-1020, DC1-BUS-L3-CX-1050, DC1-L4-Cx-1050 FF, QTS-44381, QTS-1091 | 6d |  |  | Riley Warring | LAY |  |
| DC1-L4-Cx-1010 |  | DC1 Data Hall 2100 Mechanical L4 | 20d | 2026-04-02 | 2026-04-29 | QTS-24811, DC1-L4-Cx-1080, DC1-DOAS-L3-Cx-1050, DC1-CHLR-L3-Cx-1020, DC1-CHLR-L3-Cx-1050, DC1-CHLR-L3-Cx-1080, DC1-CHLR-L3-Cx-1110, DC1-CHLR-L3-Cx-1140, DC1-CHLR-L3-Cx-1170, DC1-CHLR-L3-Cx-1200, DC1-CHWP-L3-Cx-1020, DC1-CHWP-L3-Cx-1050, DC1-CHWP-L3-Cx-1080, DC1-CHWP-L3-Cx-1110, DC1-CHWP-L3-Cx-1140, DC1-CHWP-L3-Cx-1170, DC1-CHWP-L3-Cx-1200, DC1-CRAH-L3-Cx-1020, DC1-CRAH-L3-Cx-1050, DC1-CRAH-L3-Cx-1080, DC1-CRAH-L3-Cx-1110, DC1-CRAH-L3-Cx-1140, DC1-CRAH-L3-Cx-1170, DC1-CRAH-L3-Cx-1200, DC1-CRAH-L3-Cx-1230, DC1-CRAH-L3-Cx-1260, DC1-CRAH-L3-Cx-1290, DC1-CRAH-L3-Cx-1320, DC1-CRAH-L3-Cx-1350, DC1-CRAH-L3-Cx-1380, DC1-CRAH-L3-Cx-1410, DC1-CRAH-L3-Cx-1440, DC1-CRAH-L3-Cx-1470, DC1-CRAH-L3-Cx-1500, DC1-CRAH-L3-Cx-1530, DC1-CRAH-L3-Cx-1560, DC1-CRAH-L3-Cx-1590, DC1-CRAH-L3-Cx-1620, DC1-CRAH-L3-Cx-1650, DC1-CRAH-L3-Cx-1680, DC1-CRAH-L3-Cx-1710, DC1-CRAH-L3-Cx-1740, DC1-CRAH-L3-Cx-1770, DC1-CRAH-L3-Cx-1800, DC1-CRAH-L3-Cx-1830, DC1-CRAH-L3-Cx-1860, DC1-CRAH-L3-Cx-1890, DC1-CRAH-L3-Cx-1920, DC1-CRAH-L3-Cx-1950, DC1-DOAS-L3-Cx-1020, DC1-DOAS-L3-Cx-1050 FF, DC1-COMP-L3-CX-1020, DC1-FAN-L3-CX-1020, DC1-COMP-L3-CX-1050, DC1-FAN-L3-CX-1050, DC1-COMP-L3-CX-1080, DC1-FAN-L3-CX-1080, DC1-COMP-L3-CX-1110, DC1-FAN-L3-CX-1110, DC1-COMP-L3-CX-1140, DC1-FAN-L3-CX-1140, DC1-COMP-L3-CX-1170, DC1-FAN-L3-CX-1170, DC1-COMP-L3-CX-1200, DC1-FAN-L3-CX-1200, DC1-SS-L3-Cx-3370, DC1-SS-L3-Cx-5080, DC1-SS-L3-Cx-3350, DC1-SS-L3-Cx-3330, DC1-SS-L3-Cx-3310, DC1-SS-L3-Cx-3270, DC1-SS-L3-Cx-3250, DC1-SS-L3-Cx-3230, DC1-SS-L3-Cx-3210, DC1-SS-L3-Cx-5060, DC1-SS-L3-Cx-3190, DC1-SS-L3-Cx-3170, DC1-SS-L3-Cx-3150, DC1-SS-L3-Cx-3130, DC1-SS-L3-Cx-3110, DC1-SS-L3-Cx-3090, DC1-SS-L3-Cx-3075, DC1-SS-L3-Cx-3050, DC1-SS-L3-Cx-3030, DC1-SS-L2-Cx-2780, DC1-SS-L3-Cx-5110, DC1-DH2100-TAB-1010, QTS-23701, QTS-23351, QTS-1091, DC1-DH2100-TAB-1000 | 0d |  |  | Riley Warring | LAY |  |
| DC1-L4-Cx-1060 |  | DC1 Data Hall 2100 Mechanical L4 (TFO) | 20d | 2026-05-04 | 2026-06-01 | DC1-DH2100-LB-1020 SS, DC1-CDU-L3-CX-1010, DC1-CDU-L3-CX-1025, DC1-CDU-L3-CX-1040, DC1-CDU-L3-CX-1055, DC1-CDU-L3-CX-1070, DC1-CDU-L3-CX-1085, DC1-CDU-L3-CX-1115, DC1-CDU-L3-CX-1130, DC1-CDU-L3-CX-1145, DC1-CDU-L3-CX-1160, DC1-CDU-L3-CX-1175, DC1-CDU-L3-CX-1190, DC1-CDU-L3-CX-1220, DC1-CDU-L3-CX-1235, DC1-CDU-L3-CX-1250, DC1-CDU-L3-CX-1265, DC1-CDU-L3-CX-1280, DC1-CDU-L3-CX-1295, QTS - 1350, QTS - 3420, QTS - 3440, QTS - 3040, QTS - 3270, QTS - 15210, QTS - 24671, QTS - 1240, QTS - 3390, QTS - 3280, QTS - 3050, QTS - 1330, QTS - 2620, QTS-23701, QTS-23351, QTS-1091 | 0d |  |  | Riley Warring | LAY |  |
| DC1-L4-Cx-1070 |  | DC1 Data Hall 2100 Electrical L4 (TFO) | 20d | 2026-05-04 | 2026-06-01 | DC1-IST-1000, DC1-RPP-L3-CX-1010, DC1-RPP-L3-CX-1025, DC1-RPP-L3-CX-1040, DC1-RPP-L3-CX-1055, DC1-RPP-L3-CX-1070, DC1-RPP-L3-CX-1085, DC1-RPP-L3-CX-1100, DC1-RPP-L3-CX-1115, DC1-RPP-L3-CX-1130, DC1-RPP-L3-CX-1145, DC1-RPP-L3-CX-1160, DC1-RPP-L3-CX-1175, DC1-RPP-L3-CX-1190, DC1-RPP-L3-CX-1205, DC1-RPP-L3-CX-1220, DC1-RPP-L3-CX-1235, DC1-RPP-L3-CX-1250, DC1-RPP-L3-CX-1265, DC1-RPP-L3-CX-1280, DC1-RPP-L3-CX-1295, DC1-RPP-L3-CX-1310, DC1-RPP-L3-CX-1325, DC1-RPP-L3-CX-1355, DC1-RPP-L3-CX-1340, DC1-RPP-L3-CX-1370, DC1-RPP-L3-CX-1385, DC1-RPP-L3-CX-1400, DC1-RPP-L3-CX-1415, DC1-RPP-L3-CX-1430, DC1-RPP-L3-CX-1445, DC1-RPP-L3-CX-1460, DC1-RPP-L3-CX-1475, DC1-RPP-L3-CX-1490, DC1-RPP-L3-CX-1505, DC1-RPP-L3-CX-1520, DC1-RPP-L3-CX-1535, QTS - 1350, QTS - 3420, QTS - 3440, QTS - 3040, QTS - 3270, QTS - 15210, QTS - 24671, QTS - 3050, QTS - 3280, QTS - 1330, QTS - 3430, QTS - 10180, QTS - 3410, DC1-CDU-L3-CX-1010, DC1-CDU-L3-CX-1025, DC1-CDU-L3-CX-1040, DC1-CDU-L3-CX-1055, DC1-CDU-L3-CX-1070, DC1-CDU-L3-CX-1085, DC1-CDU-L3-CX-1115, DC1-CDU-L3-CX-1130, DC1-CDU-L3-CX-1145, DC1-CDU-L3-CX-1160, DC1-CDU-L3-CX-1175, DC1-CDU-L3-CX-1190, DC1-CDU-L3-CX-1220, DC1-CDU-L3-CX-1235, DC1-CDU-L3-CX-1250, DC1-CDU-L3-CX-1265, DC1-CDU-L3-CX-1280, DC1-CDU-L3-CX-1295, QTS - 2620 | 0d |  |  | Riley Warring | LAY |  |

Notes:
- DC1-CRAH-L3-Cx-1940: Steps: EC Startup Checklist; MC Startup Checklist; Vendor Startup
- DC1-DOAS-L3-Cx-1010: Steps: EC Startup Checklist; MC Startup Checklist; Vendor Startup
- DC1-DOAS-L3-Cx-1040: Steps: EC Startup Checklist; MC Startup Checklist; Vendor Startup
- DC1-DH2100-LB-1050: Scheduler's Notes: Made aware of this item 1/16/26. Need procurement information to be / provided by QTS.

| ID | WBS | Activity | Duration | Start | Finish | Predecessors | Total float | Free float | Vendor Responsible Party | Layton Responsible Party | Allucent CSI Group |
| --- | --- | --- | --- | --- | --- | --- | --- | --- | --- | --- | --- |
|  | 01 | **Data Hall 2100 Electrical Cx L4** |  | 2026-02-27 | 2026-03-20 |  |  |  |  |  |  |
| DC1-L4-Cx-1020 |  | DC1 Data Hall 2100 Generator Burns A21 & B21 | 1d | 2026-02-27 | 2026-02-27 | DC1-GEN-L3-CX-1000, DC1-GEN-L3-CX-1030 | 40d | 5d | HLT |  |  |
| DC1-L4-Cx-1030 |  | DC1 Data Hall 2100 Generator Burns C21 & D21 | 1d | 2026-03-09 | 2026-03-09 | DC1-L4-Cx-1020, DC1-GEN-L3-CX-1060, DC1-GEN-L3-CX-1090 | 35d | 5d | HLT |  |  |
| DC1-L4-Cx-1040 |  | DC1 Data Hall 2100 Generator Burns E21 & F21 | 1d | 2026-03-17 | 2026-03-17 | DC1-L4-Cx-1030, DC1-GEN-L3-CX-1120, DC1-GEN-L3-CX-1150 | 30d | 2d | HLT |  |  |
| DC1-L4-Cx-1050 |  | DC1 Data Hall 2100 Generator Burns R21 & FOH HSE | 1d | 2026-03-20 | 2026-03-20 | DC1-L4-Cx-1040, DC1-GEN-L3-CX-1180, DC1-GEN-HSE-L3-1000 | 28d | 22d | HLT |  |  |
|  | 02 | **Data Hall 2100 Mechanical Cx L4** |  |  |  |  |  |  |  |  |  |
|  | 05 | **Data Hall 2100 Cx L5** |  | 2026-04-30 | 2026-05-01 |  |  |  |  |  |  |
| DC1-IST-1000 |  | DC1 Data Hall 2100 IST (5/1/26) | 2d | 2026-04-30 | 2026-05-01 | DC1-L4-Cx-1000, DC1-L4-Cx-1010 | 0d |  | LAY | Riley Warring |  |
|  | 03 | **Data Hall 1100 Commissioning** |  | 2026-01-14 | 2026-06-01 |  |  |  |  |  |  |
|  | 02 | **Data Hall 1100 Cx L2** |  | 2026-01-14 | 2026-03-13 |  |  |  |  |  |  |
|  | 01 | **DC1-DH1100 Generators Cx L2** |  | 2026-02-18 | 2026-02-26 |  |  |  |  |  |  |
| DC1-GEN-L2-2000 |  | DH1100 GEN-A11 L2 Checklist | 1d | 2026-02-18 | 2026-02-18 | QTS-1004490, QTS-17351, QTS-1000280, QTS-1001190 | 20d | 0d | HLT |  | 01ADMIN |
| DC1-GEN-L2-2010 |  | DH1100 GEN-B11 L2 Checklist | 1d | 2026-02-19 | 2026-02-19 | QTS-1004490, DC1-GEN-L2-2000, QTS-1000280, QTS-1001190 | 20d | 0d | HLT |  | 01ADMIN |
| DC1-GEN-L2-2020 |  | DH1100 GEN-C11 L2 Checklist | 1d | 2026-02-20 | 2026-02-20 | QTS-1004490, DC1-GEN-L2-2010, QTS-1000280, QTS-1001190 | 20d | 0d | HLT |  |  |
| DC1-GEN-L2-2030 |  | DH1100 GEN-D11 L2 Checklist | 1d | 2026-02-23 | 2026-02-23 | QTS-1004490, DC1-GEN-L2-2020, QTS-1000280, QTS-1001190 | 20d | 0d | HLT |  |  |
| DC1-GEN-L2-2040 |  | DH1100 GEN-E11 L2 Checklist | 1d | 2026-02-24 | 2026-02-24 | QTS-1004490, DC1-GEN-L2-2030, QTS-1000280, QTS-1001190 | 20d | 0d | HLT |  |  |
| DC1-GEN-L2-2050 |  | DH1100 GEN-F11 L2 Checklist | 1d | 2026-02-25 | 2026-02-25 | QTS-1004490, DC1-GEN-L2-2040, QTS-1000280, QTS-1001190 | 20d | 0d | HLT |  |  |
| DC1-GEN-L2-2060 |  | DH1100 GEN-R11 L2 Checklist | 1d | 2026-02-26 | 2026-02-26 | QTS-1004490, DC1-GEN-L2-2050, QTS-1000280, QTS-1001190 | 20d | 0d | HLT |  |  |
|  | 02 | **DC1-DH1100 MV XFMRs Cx L2** |  | 2026-01-15 | 2026-01-28 |  |  |  |  |  |  |
| DC1-XFMR-L2-2060 |  | DH1100 XFMR-R11 L2 Checklist | 3d | 2026-01-15 | 2026-01-20 | QTS-1004480 FF+1d, QTS-15841, QTS-42781 | 13d | 0d | VTC |  |  |
| DC1-XFMR-L2-2000 |  | DH1100 XFMR-A11 L2 Checklist | 3d | 2026-01-16 | 2026-01-21 | QTS-1004480 FF+1d, DC1-XFMR-L2-2060 SS+1d, QTS-42781 | 13d | 0d | VTC |  |  |
| DC1-XFMR-L2-2010 |  | DH1100 XFMR-B11 L2 Checklist | 3d | 2026-01-20 | 2026-01-22 | QTS-1004480 FF+1d, DC1-XFMR-L2-2000 SS+1d, QTS-42781 | 13d | 0d | VTC |  |  |
| DC1-XFMR-L2-2020 |  | DH1100 XFMR-C11 L2 Checklist | 3d | 2026-01-21 | 2026-01-23 | QTS-1004480 FF+1d, DC1-XFMR-L2-2010 SS+1d, QTS-42781 | 13d | 0d | VTC |  |  |
| DC1-XFMR-L2-2030 |  | DH1100 XFMR-D11 L2 Checklist | 3d | 2026-01-22 | 2026-01-26 | QTS-1004480 FF+1d, DC1-XFMR-L2-2020 SS+1d, QTS-42781 | 13d | 0d | VTC |  |  |
| DC1-XFMR-L2-2040 |  | DH1100 XFMR-E11 L2 Checklist | 3d | 2026-01-23 | 2026-01-27 | QTS-1004480 FF+1d, DC1-XFMR-L2-2030 SS+1d, QTS-42781 | 13d | 0d | VTC |  |  |
| DC1-XFMR-L2-2050 |  | DH1100 XFMR-F11 L2 Checklist | 3d | 2026-01-26 | 2026-01-28 | QTS-1004480 FF+1d, DC1-XFMR-L2-2040 SS+1d, QTS-42781 | 13d | 0d | VTC |  |  |

Notes:
- DC1-GEN-L2-2000: Steps: EC Installation Checklist; MC Installation Checklist; CC Installation Checklist; Vendor Pre-Energization Checklist; CXA Pre-Energization Inspection; PEI/Clean-Walk
- DC1-GEN-L2-2010: Steps: EC Installation Checklist; MC Installation Checklist; CC Installation Checklist; Vendor Pre-Energization Checklist; CXA Pre-Energization Inspection; PEI/Clean-Walk
- DC1-GEN-L2-2020: Steps: EC Installation Checklist; MC Installation Checklist; CC Installation Checklist; Vendor Pre-Energization Checklist; CXA Pre-Energization Inspection; PEI/Clean-Walk
- DC1-GEN-L2-2030: Steps: EC Installation Checklist; MC Installation Checklist; CC Installation Checklist; Vendor Pre-Energization Checklist; CXA Pre-Energization Inspection; PEI/Clean-Walk
- DC1-GEN-L2-2040: Steps: EC Installation Checklist; MC Installation Checklist; CC Installation Checklist; Vendor Pre-Energization Checklist; CXA Pre-Energization Inspection; PEI/Clean-Walk
- DC1-GEN-L2-2050: Steps: EC Installation Checklist; MC Installation Checklist; CC Installation Checklist; Vendor Pre-Energization Checklist; CXA Pre-Energization Inspection; PEI/Clean-Walk
- DC1-GEN-L2-2060: Steps: EC Installation Checklist; MC Installation Checklist; CC Installation Checklist; Vendor Pre-Energization Checklist; CXA Pre-Energization Inspection; PEI/Clean-Walk
- DC1-XFMR-L2-2060: Steps: EC Installation Checklist; CC Installation Checklist; Vendor Pre-Energization Checklist; CXA Pre-Energization Inspection; PEI/Clean-Walk
- DC1-XFMR-L2-2000: Steps: EC Installation Checklist; CC Installation Checklist; Vendor Pre-Energization Checklist; CXA Pre-Energization Inspection; PEI/Clean-Walk
- DC1-XFMR-L2-2010: Steps: EC Installation Checklist; CC Installation Checklist; Vendor Pre-Energization Checklist; CXA Pre-Energization Inspection; PEI/Clean-Walk
- DC1-XFMR-L2-2020: Steps: EC Installation Checklist; CC Installation Checklist; Vendor Pre-Energization Checklist; CXA Pre-Energization Inspection; PEI/Clean-Walk
- DC1-XFMR-L2-2030: Steps: EC Installation Checklist; CC Installation Checklist; Vendor Pre-Energization Checklist; CXA Pre-Energization Inspection; PEI/Clean-Walk
- DC1-XFMR-L2-2040: Steps: EC Installation Checklist; CC Installation Checklist; Vendor Pre-Energization Checklist; CXA Pre-Energization Inspection; PEI/Clean-Walk
- DC1-XFMR-L2-2050: Steps: EC Installation Checklist; CC Installation Checklist; Vendor Pre-Energization Checklist; CXA Pre-Energization Inspection; PEI/Clean-Walk

| ID | WBS | Activity | Duration | Start | Finish | Predecessors | Total float | Free float | Constraint | Layton Responsible Party | Vendor Responsible Party | Allucent CSI Group |
| --- | --- | --- | --- | --- | --- | --- | --- | --- | --- | --- | --- | --- |
|  | 03 | **DC1-DH1100 PODS** |  | 2026-01-14 | 2026-02-03 |  |  |  |  |  |  |  |
|  | 01 | **DC1-DH1100 SWDs Cx L2** |  | 2026-01-20 | 2026-02-03 |  |  |  |  |  |  |  |
| DC1-SWD-L2-2000 |  | DH1100 SWD-A11 L2 Checklist | 1d | 2026-01-20 | 2026-01-20 | QTS-1004480 FF+1d, QTS-18621, QTS-24911, QTS-25591 | 14d | 0d |  | Riley Warring | SIE |  |
| DC1-SWD-L2-2010 |  | DH1100 SWD-B11 L2 Checklist | 1d | 2026-01-21 | 2026-01-21 | QTS-1004480 FF+1d, QTS-18621, DC1-SWD-L2-2000 | 14d | 0d |  | Riley Warring | SIE |  |
| DC1-SWD-L2-2020 |  | DH1100 SWD-C11 L2 Checklist | 1d | 2026-01-22 | 2026-01-22 | QTS-1004480 FF+1d, QTS-18621, DC1-SWD-L2-2010 | 14d | 0d |  | Riley Warring | SIE |  |
| DC1-SWD-L2-2030 |  | DH1100 SWD-D11 L2 Checklist | 1d | 2026-01-23 | 2026-01-23 | QTS-1004480 FF+1d, QTS-18621, DC1-SWD-L2-2020 | 14d | 0d |  | Riley Warring | SIE |  |
| DC1-SWD-L2-2040 |  | DH1100 SWD-E11 L2 Checklist | 1d | 2026-01-26 | 2026-01-26 | QTS-1004480 FF+1d, QTS-43721, DC1-SWD-L2-2030 | 14d | 0d |  | Riley Warring | SIE |  |
| DC1-SWD-L2-2050 |  | DH1100 SWD-F11 L2 Checklist | 1d | 2026-01-27 | 2026-01-27 | QTS-1004480 FF+1d, QTS-43721, DC1-SWD-L2-2040 | 14d | 1d |  | Riley Warring | SIE |  |
| DC1-SWD-L2-2060 |  | DH1100 SWD-R11 L2 Checklist | 1d | 2026-02-03 | 2026-02-03 | QTS-1004480 FF+1d, QTS-15841, QTS-17351, QTS-43721 | 12d | 6d |  | Riley Warring | SIE |  |
|  | 02 | **DC1-DH1100 MOD-01s Cx L2** |  | 2026-01-14 | 2026-01-16 |  |  |  |  |  |  |  |
| DC1-MOD01-L2-2000 |  | DH1100 MOD-A11-01 L2 Checklist | 3d | 2026-01-14 | 2026-01-16 | QTS-13541 | 20d | 17d | start on or after 2026-01-07 |  | PHE | 01ADMIN |
| DC1-MOD01-L2-2010 |  | DH1100 MOD-B11-01 L2 Checklist | 3d | 2026-01-14 | 2026-01-16 | QTS-13541 | 22d | 17d | start on or after 2026-01-07 |  | PHE | 01ADMIN |
| DC1-MOD01-L2-2020 |  | DH1100 MOD-C11-01 L2 Checklist | 3d | 2026-01-14 | 2026-01-16 | QTS-13541 | 22d | 17d | start on or after 2026-01-07 |  | PHE | 01ADMIN |
| DC1-MOD01-L2-2030 |  | DH1100 MOD-D11-01 L2 Checklist | 3d | 2026-01-14 | 2026-01-16 | QTS-13541 | 22d | 17d | start on or after 2026-01-07 |  | PHE | 01ADMIN |
| DC1-MOD01-L2-2040 |  | DH1100 MOD-E11-01 L2 Checklist | 3d | 2026-01-14 | 2026-01-16 | QTS-13541 | 22d | 17d | start on or after 2026-01-07 |  | PHE | 01ADMIN |
| DC1-MOD01-L2-2050 |  | DH1100 MOD-F11-01 L2 Checklist | 3d | 2026-01-14 | 2026-01-16 | QTS-13541 | 22d | 17d | start on or after 2026-01-07 |  | PHE | 01ADMIN |
| DC1-MOD01-L2-2060 |  | DH1100 MOD-R11-01 L2 Checklist | 3d | 2026-01-14 | 2026-01-16 | QTS-13541 | 23d | 17d | start on or after 2026-01-05 |  | PHE | 01ADMIN |
|  | 03 | **DC1-DH1100 UPS-M Cx L2** |  | 2026-01-27 | 2026-02-03 |  |  |  |  |  |  |  |
| DC1-UPS-M-L2-2000 |  | DH1100 UPS-M-A11 L2 Checklist | 1d | 2026-01-27 | 2026-01-27 | QTS-18951, QTS-43691 | 17d | 0d |  | Riley Warring | VER |  |
| DC1-UPS-M-L2-2010 |  | DH1100 UPS-M-B11 L2 Checklist | 1d | 2026-01-27 | 2026-01-27 | QTS-18951, DC1-UPS-M-L2-2000 SS | 17d | 0d |  | Riley Warring | VER |  |
| DC1-UPS-M-L2-2020 |  | DH1100 UPS-M-C11 L2 Checklist | 1d | 2026-01-28 | 2026-01-28 | QTS-18951, DC1-UPS-M-L2-2010 | 17d | 0d |  | Riley Warring | VER |  |
| DC1-UPS-M-L2-2030 |  | DH1100 UPS-M-D11 L2 Checklist | 1d | 2026-01-28 | 2026-01-28 | QTS-18951, DC1-UPS-M-L2-2020 SS | 17d | 2d |  | Riley Warring | VER |  |
| DC1-UPS-M-L2-2040 |  | DH1100 UPS-M-E11 L2 Checklist | 1d | 2026-02-02 | 2026-02-02 | QTS-43731, DC1-UPS-M-L2-2030 | 15d | 0d |  | Riley Warring | VER |  |
| DC1-UPS-M-L2-2050 |  | DH1100 UPS-M-F11 L2 Checklist | 1d | 2026-02-02 | 2026-02-02 | QTS-43731, DC1-UPS-M-L2-2040 SS | 15d | 0d |  | Riley Warring | VER |  |
| DC1-UPS-M-L2-2060 |  | DH1100 UPS-M-R11 L2 Checklist | 1d | 2026-02-03 | 2026-02-03 | QTS-43731, DC1-UPS-M-L2-2050 | 15d | 9d |  | Riley Warring | VER |  |

Notes:
- DC1-SWD-L2-2000: Steps: Vendor Pre-Energization Checklist; CXA Pre-Energization Inspection; PEI/Clean-Walk
- DC1-SWD-L2-2010: Steps: Vendor Pre-Energization Checklist; CXA Pre-Energization Inspection; PEI/Clean-Walk
- DC1-SWD-L2-2020: Steps: Vendor Pre-Energization Checklist; CXA Pre-Energization Inspection; PEI/Clean-Walk
- DC1-SWD-L2-2030: Steps: Vendor Pre-Energization Checklist; CXA Pre-Energization Inspection; PEI/Clean-Walk
- DC1-SWD-L2-2040: Steps: Vendor Pre-Energization Checklist; CXA Pre-Energization Inspection; PEI/Clean-Walk
- DC1-SWD-L2-2050: Steps: Vendor Pre-Energization Checklist; CXA Pre-Energization Inspection; PEI/Clean-Walk
- DC1-SWD-L2-2060: Steps: Vendor Pre-Energization Checklist; CXA Pre-Energization Inspection; PEI/Clean-Walk
- DC1-MOD01-L2-2000: allucent_notes_20251230_164549: Jason Johnston on 2025-12-09 15:16: Need to confirm who is responsible for updating this / Riley Warring on 2025-12-16 14:35: Not started as of 12/16 / Riley Warring on 2025-12-16 14:36: Not started as of 12/16 / Riley Warring on 2025-12-29 12:11: Checklist not started in Cx Alloy / allucent_notes_20251209_203830: Jason Johnston on 2025-12-09 15:16: Need to confirm who is responsible for updating this / allucent_notes_20251216_165335: Jason Johnston on 2025-12-09 15:16: Need to confirm who is responsible for updating this / Riley Warring on 2025-12-16 14:35: Not started as of 12/16 / Riley Warring on 2025-12-16 14:36: Not started as of 12/16 / Steps: Vendor Pre-Energization Checklist; CXA Pre-Energization Inspection; PEI/Clean-Walk / allucent_notes: 2025-12-09 15:16 - User: Jason Johnston - Date Added: 2025-12-09 15:16 - Note: Need to confirm who is responsible for updating this / 2025-12-16 14:35 - User: Riley Warring - Date Added: 2025-12-16 14:35 - Note: Not started as of 12/16 / 2025-12-16 14:3
- DC1-MOD01-L2-2010: allucent_notes_20251230_164549: Jason Johnston on 2025-12-09 15:16: Need to confirm who is responsible for updating this / Riley Warring on 2025-12-16 14:36: Not started as of 12/16 / Riley Warring on 2025-12-29 12:12: Checklist not started in Cx Alloy / allucent_notes_20251209_203830: Jason Johnston on 2025-12-09 15:16: Need to confirm who is responsible for updating this / allucent_notes_20251216_165335: Jason Johnston on 2025-12-09 15:16: Need to confirm who is responsible for updating this / Riley Warring on 2025-12-16 14:36: Not started as of 12/16 / Steps: Vendor Pre-Energization Checklist; CXA Pre-Energization Inspection; PEI/Clean-Walk / allucent_notes: 2025-12-09 15:16 - User: Jason Johnston - Date Added: 2025-12-09 15:16 - Note: Need to confirm who is responsible for updating this / 2025-12-16 14:36 - User: Riley Warring - Date Added: 2025-12-16 14:36 - Note: Not started as of 12/16 / 2025-12-29 12:1
- DC1-MOD01-L2-2020: allucent_notes_20251230_164549: Jason Johnston on 2025-12-09 15:16: Need to confirm who is responsible for updating this / Riley Warring on 2025-12-16 14:35: Not started as of 12/16 / Riley Warring on 2025-12-29 12:12: Checklist not started in Cx Alloy / allucent_notes_20251209_203830: Jason Johnston on 2025-12-09 15:16: Need to confirm who is responsible for updating this / allucent_notes_20251216_165335: Jason Johnston on 2025-12-09 15:16: Need to confirm who is responsible for updating this / Riley Warring on 2025-12-16 14:35: Not started as of 12/16 / Steps: Vendor Pre-Energization Checklist; CXA Pre-Energization Inspection; PEI/Clean-Walk / allucent_notes: 2025-12-09 15:16 - User: Jason Johnston - Date Added: 2025-12-09 15:16 - Note: Need to confirm who is responsible for updating this / 2025-12-16 14:35 - User: Riley Warring - Date Added: 2025-12-16 14:35 - Note: Not started as of 12/16 / 2025-12-29 12:1
- DC1-MOD01-L2-2030: allucent_notes_20251230_164549: Jason Johnston on 2025-12-09 15:16: Need to confirm who is responsible for updating this / Riley Warring on 2025-12-16 14:36: Not started as of 12/16 / Riley Warring on 2025-12-29 12:12: Checklist not started in Cx Alloy / allucent_notes_20251209_203830: Jason Johnston on 2025-12-09 15:16: Need to confirm who is responsible for updating this / allucent_notes_20251216_165335: Jason Johnston on 2025-12-09 15:16: Need to confirm who is responsible for updating this / Riley Warring on 2025-12-16 14:36: Not started as of 12/16 / Steps: Vendor Pre-Energization Checklist; CXA Pre-Energization Inspection; PEI/Clean-Walk / allucent_notes: 2025-12-09 15:16 - User: Jason Johnston - Date Added: 2025-12-09 15:16 - Note: Need to confirm who is responsible for updating this / 2025-12-16 14:36 - User: Riley Warring - Date Added: 2025-12-16 14:36 - Note: Not started as of 12/16 / 2025-12-29 12:1
- DC1-MOD01-L2-2040: allucent_notes_20251230_164549: Jason Johnston on 2025-12-09 15:16: Need to confirm who is responsible for updating this / Riley Warring on 2025-12-16 14:36: Not started as of 12/16 / Riley Warring on 2025-12-29 12:12: Checklist not started in Cx Alloy / allucent_notes_20251209_203830: Jason Johnston on 2025-12-09 15:16: Need to confirm who is responsible for updating this / allucent_notes_20251216_165335: Jason Johnston on 2025-12-09 15:16: Need to confirm who is responsible for updating this / Riley Warring on 2025-12-16 14:36: Not started as of 12/16 / Steps: Vendor Pre-Energization Checklist; CXA Pre-Energization Inspection; PEI/Clean-Walk / allucent_notes: 2025-12-09 15:16 - User: Jason Johnston - Date Added: 2025-12-09 15:16 - Note: Need to confirm who is responsible for updating this / 2025-12-16 14:36 - User: Riley Warring - Date Added: 2025-12-16 14:36 - Note: Not started as of 12/16 / 2025-12-29 12:1
- DC1-MOD01-L2-2050: allucent_notes_20251230_164549: Jason Johnston on 2025-12-09 15:16: Need to confirm who is responsible for updating this / Riley Warring on 2025-12-16 14:36: Not started as of 12/16 / Riley Warring on 2025-12-29 12:12: Checklist not started in Cx Alloy / allucent_notes_20251209_203830: Jason Johnston on 2025-12-09 15:16: Need to confirm who is responsible for updating this / allucent_notes_20251216_165335: Jason Johnston on 2025-12-09 15:16: Need to confirm who is responsible for updating this / Riley Warring on 2025-12-16 14:36: Not started as of 12/16 / Steps: Vendor Pre-Energization Checklist; CXA Pre-Energization Inspection; PEI/Clean-Walk / allucent_notes: 2025-12-09 15:16 - User: Jason Johnston - Date Added: 2025-12-09 15:16 - Note: Need to confirm who is responsible for updating this / 2025-12-16 14:36 - User: Riley Warring - Date Added: 2025-12-16 14:36 - Note: Not started as of 12/16 / 2025-12-29 12:1
- DC1-MOD01-L2-2060: allucent_notes_20251230_164549: Jason Johnston on 2025-12-09 15:17: Need to confirm who is responsible for updating this / Riley Warring on 2025-12-16 14:36: Not started as of 12/16 / Riley Warring on 2025-12-29 12:12: Checklist not started in Cx Alloy / allucent_notes_20251209_203830: Jason Johnston on 2025-12-09 15:17: Need to confirm who is responsible for updating this / allucent_notes_20251216_165335: Jason Johnston on 2025-12-09 15:17: Need to confirm who is responsible for updating this / Riley Warring on 2025-12-16 14:36: Not started as of 12/16 / Steps: Vendor Pre-Energization Checklist; CXA Pre-Energization Inspection; PEI/Clean-Walk / allucent_notes: 2025-12-09 15:17 - User: Jason Johnston - Date Added: 2025-12-09 15:17 - Note: Need to confirm who is responsible for updating this / 2025-12-16 14:36 - User: Riley Warring - Date Added: 2025-12-16 14:36 - Note: Not started as of 12/16 / 2025-12-29 12:1
- DC1-UPS-M-L2-2000: Steps: EC Installation Checklist; Vendor Pre-Energization Checklist; CXA Pre-Energization Inspection; PEI/Clean-Walk
- DC1-UPS-M-L2-2010: Steps: EC Installation Checklist; Vendor Pre-Energization Checklist; CXA Pre-Energization Inspection; PEI/Clean-Walk
- DC1-UPS-M-L2-2020: Steps: EC Installation Checklist; Vendor Pre-Energization Checklist; CXA Pre-Energization Inspection; PEI/Clean-Walk
- DC1-UPS-M-L2-2030: Steps: EC Installation Checklist; Vendor Pre-Energization Checklist; CXA Pre-Energization Inspection; PEI/Clean-Walk
- DC1-UPS-M-L2-2040: Steps: EC Installation Checklist; Vendor Pre-Energization Checklist; CXA Pre-Energization Inspection; PEI/Clean-Walk
- DC1-UPS-M-L2-2050: Steps: EC Installation Checklist; Vendor Pre-Energization Checklist; CXA Pre-Energization Inspection; PEI/Clean-Walk
- DC1-UPS-M-L2-2060: Steps: EC Installation Checklist; Vendor Pre-Energization Checklist; CXA Pre-Energization Inspection; PEI/Clean-Walk

| ID | WBS | Activity | Duration | Start | Finish | Predecessors | Total float | Free float | Vendor Responsible Party | Notes | Layton Responsible Party |
| --- | --- | --- | --- | --- | --- | --- | --- | --- | --- | --- | --- |
|  | 04 | **DC1-DH1100 COMPRESSOR/FAN UNITS Cx L2** |  |  |  |  |  |  |  |  |  |
|  | 01 | **DC1-DH1100 POD-AC UNITS A11 Cx L2** |  |  |  |  |  |  |  |  |  |
|  | 02 | **DC1-DH1100 POD-AC UNITS B11 Cx L2** |  |  |  |  |  |  |  |  |  |
|  | 03 | **DC1-DH1100 POD-AC UNITS C11 Cx L2** |  |  |  |  |  |  |  |  |  |
|  | 04 | **DC1-DH1100 POD-AC UNITS D11 Cx L2** |  |  |  |  |  |  |  |  |  |
|  | 05 | **DC1-DH1100 POD-AC UNITS E11 Cx L2** |  |  |  |  |  |  |  |  |  |
|  | 06 | **DC1-DH1100 POD-AC UNITS F11 Cx L2** |  |  |  |  |  |  |  |  |  |
|  | 07 | **DC1-DH1100 POD-AC UNITS R11 Cx L2** |  |  |  |  |  |  |  |  |  |
|  | 04 | **DC1-DH1100 BUS-R1X/BUS-R2X Cx L2** |  | 2026-02-04 | 2026-03-12 |  |  |  |  |  |  |
| DC1-BUS-L2-CX-2010 |  | DH1100 BUS-R1 (R11) MAINTENANCE BUS Duct L2 Checklist | 5d | 2026-02-04 | 2026-02-10 | QTS-7081, QTS-8891 | 19d | 7d | LAY |  |  |
| DC1-BUS-L2-CX-2000 |  | DH1100 BUS-R2 (R21) CATCHER BUS Duct L2 Checklist | 5d | 2026-03-06 | 2026-03-12 | QTS-7031, QTS-8731 | 8d | 0d | LAY | CFCI - Bus duct complete (PRED) | Riley Warring |
|  | 05 | **DC1-DH1100 ATS Cx L2** |  | 2026-02-04 | 2026-02-18 |  |  |  |  |  |  |
|  | 01 | **DC1-DH1100 ATS-A11 Cx L2** |  | 2026-02-04 | 2026-02-06 |  |  |  |  |  |  |
| DC1-ATS-L2-2000 |  | DH1100 ATS-A11-01 L2 Checklist | 3d | 2026-02-04 | 2026-02-06 | QTS-18091 | 33d | 4d | MAV |  |  |
| DC1-ATS-L2-2010 |  | DH1100 ATS-A11-02 L2 Checklist | 3d | 2026-02-04 | 2026-02-06 | QTS-18091 | 33d | 24d | MAV |  |  |
| DC1-ATS-L2-2020 |  | DH1100 ATS-A11-03 L2 Checklist | 3d | 2026-02-04 | 2026-02-06 | QTS-18091 | 33d | 4d | MAV |  |  |
| DC1-ATS-L2-2030 |  | DH1100 ATS-A11-04 L2 Checklist | 3d | 2026-02-04 | 2026-02-06 | QTS-18091 | 33d | 24d | MAV |  |  |
| DC1-ATS-L2-2040 |  | DH1100 ATS-A11-05 L2 Checklist | 3d | 2026-02-04 | 2026-02-06 | QTS-18091 | 33d | 4d | MAV |  |  |
| DC1-ATS-L2-2050 |  | DH1100 ATS-A11-06 L2 Checklist | 3d | 2026-02-04 | 2026-02-06 | QTS-18091 | 33d | 24d | MAV |  |  |
|  | 02 | **DC1-DH1100 ATS-B11 Cx L2** |  | 2026-02-06 | 2026-02-10 |  |  |  |  |  |  |
| DC1-ATS-L2-2060 |  | DH1100 ATS-B11-01 L2 Checklist | 3d | 2026-02-06 | 2026-02-10 | QTS-8911 | 31d | 2d | MAV |  |  |
| DC1-ATS-L2-2070 |  | DH1100 ATS-B11-02 L2 Checklist | 3d | 2026-02-06 | 2026-02-10 | QTS-8911 | 31d | 23d | MAV |  |  |
| DC1-ATS-L2-2080 |  | DH1100 ATS-B11-03 L2 Checklist | 3d | 2026-02-06 | 2026-02-10 | QTS-8911 | 31d | 2d | MAV |  |  |
| DC1-ATS-L2-2090 |  | DH1100 ATS-B11-04 L2 Checklist | 3d | 2026-02-06 | 2026-02-10 | QTS-8911 | 31d | 23d | MAV |  |  |
| DC1-ATS-L2-2100 |  | DH1100 ATS-B11-05 L2 Checklist | 3d | 2026-02-06 | 2026-02-10 | QTS-8911 | 31d | 2d | MAV |  |  |
| DC1-ATS-L2-2110 |  | DH1100 ATS-B11-06 L2 Checklist | 3d | 2026-02-06 | 2026-02-10 | QTS-8911 | 31d | 22d | MAV |  |  |

Notes:
- DC1-BUS-L2-CX-2010: Steps: EC Pre-Energization Checklist; Vendor Pre-Energization Checklist; CXA Pre-Energization Inspection; PEI/Clean-Walk
- DC1-BUS-L2-CX-2000: Steps: EC Pre-Energization Checklist; Vendor Pre-Energization Checklist; CXA Pre-Energization Inspection; PEI/Clean-Walk
- DC1-ATS-L2-2000: Steps: EC Installation Checklist; CC Installation Checklist; Vendor Pre-Energization Checklist; CXA Pre-Energization Inspection; PEI/Clean-Walk
- DC1-ATS-L2-2010: Steps: EC Installation Checklist; CC Installation Checklist; Vendor Pre-Energization Checklist; CXA Pre-Energization Inspection; PEI/Clean-Walk
- DC1-ATS-L2-2020: Steps: EC Installation Checklist; CC Installation Checklist; Vendor Pre-Energization Checklist; CXA Pre-Energization Inspection; PEI/Clean-Walk
- DC1-ATS-L2-2030: Steps: EC Installation Checklist; CC Installation Checklist; Vendor Pre-Energization Checklist; CXA Pre-Energization Inspection; PEI/Clean-Walk
- DC1-ATS-L2-2040: Steps: EC Installation Checklist; CC Installation Checklist; Vendor Pre-Energization Checklist; CXA Pre-Energization Inspection; PEI/Clean-Walk
- DC1-ATS-L2-2050: Steps: EC Installation Checklist; CC Installation Checklist; Vendor Pre-Energization Checklist; CXA Pre-Energization Inspection; PEI/Clean-Walk
- DC1-ATS-L2-2060: Steps: EC Installation Checklist; CC Installation Checklist; Vendor Pre-Energization Checklist; CXA Pre-Energization Inspection; PEI/Clean-Walk
- DC1-ATS-L2-2070: Steps: EC Installation Checklist; CC Installation Checklist; Vendor Pre-Energization Checklist; CXA Pre-Energization Inspection; PEI/Clean-Walk
- DC1-ATS-L2-2080: Steps: EC Installation Checklist; CC Installation Checklist; Vendor Pre-Energization Checklist; CXA Pre-Energization Inspection; PEI/Clean-Walk
- DC1-ATS-L2-2090: Steps: EC Installation Checklist; CC Installation Checklist; Vendor Pre-Energization Checklist; CXA Pre-Energization Inspection; PEI/Clean-Walk
- DC1-ATS-L2-2100: Steps: EC Installation Checklist; CC Installation Checklist; Vendor Pre-Energization Checklist; CXA Pre-Energization Inspection; PEI/Clean-Walk
- DC1-ATS-L2-2110: Steps: EC Installation Checklist; CC Installation Checklist; Vendor Pre-Energization Checklist; CXA Pre-Energization Inspection; PEI/Clean-Walk

| ID | WBS | Activity | Duration | Start | Finish | Predecessors | Total float | Free float | Vendor Responsible Party |
| --- | --- | --- | --- | --- | --- | --- | --- | --- | --- |
|  | 03 | **DC1-DH1100 ATS-C11 Cx L2** |  | 2026-02-10 | 2026-02-12 |  |  |  |  |
| DC1-ATS-L2-2120 |  | DH1100 ATS-C11-01 L2 Checklist | 3d | 2026-02-10 | 2026-02-12 | QTS-8941 | 29d | 0d | MAV |
| DC1-ATS-L2-2130 |  | DH1100 ATS-C11-02 L2 Checklist | 3d | 2026-02-10 | 2026-02-12 | QTS-8941 | 29d | 20d | MAV |
| DC1-ATS-L2-2140 |  | DH1100 ATS-C11-03 L2 Checklist | 3d | 2026-02-10 | 2026-02-12 | QTS-8941 | 29d | 0d | MAV |
| DC1-ATS-L2-2150 |  | DH1100 ATS-C11-04 L2 Checklist | 3d | 2026-02-10 | 2026-02-12 | QTS-8941 | 29d | 20d | MAV |
| DC1-ATS-L2-2160 |  | DH1100 ATS-C11-05 L2 Checklist | 3d | 2026-02-10 | 2026-02-12 | QTS-8941 | 29d | 0d | MAV |
| DC1-ATS-L2-2170 |  | DH1100 ATS-C11-06 L2 Checklist | 3d | 2026-02-10 | 2026-02-12 | QTS-8941 | 29d | 20d | MAV |
|  | 04 | **DC1-DH1100 ATS-D11 Cx L2** |  | 2026-02-12 | 2026-02-16 |  |  |  |  |
| DC1-ATS-L2-2180 |  | DH1100 ATS-D11-01 L2 Checklist | 3d | 2026-02-12 | 2026-02-16 | QTS-8971 | 27d | 0d | MAV |
| DC1-ATS-L2-2190 |  | DH1100 ATS-D11-02 L2 Checklist | 3d | 2026-02-12 | 2026-02-16 | QTS-8971 | 27d | 18d | MAV |
| DC1-ATS-L2-2200 |  | DH1100 ATS-D11-03 L2 Checklist | 3d | 2026-02-12 | 2026-02-16 | QTS-8971 | 27d | 0d | MAV |
| DC1-ATS-L2-2210 |  | DH1100 ATS-D11-04 L2 Checklist | 3d | 2026-02-12 | 2026-02-16 | QTS-8971 | 27d | 18d | MAV |
| DC1-ATS-L2-2220 |  | DH1100 ATS-D11-05 L2 Checklist | 3d | 2026-02-12 | 2026-02-16 | QTS-8971 | 27d | 0d | MAV |
| DC1-ATS-L2-2230 |  | DH1100 ATS-D11-06 L2 Checklist | 3d | 2026-02-12 | 2026-02-16 | QTS-8971 | 27d | 18d | MAV |
|  | 05 | **DC1-DH1100 ATS-E11 Cx L2** |  | 2026-02-16 | 2026-02-18 |  |  |  |  |
| DC1-ATS-L2-2240 |  | DH1100 ATS-E11-01 L2 Checklist | 3d | 2026-02-16 | 2026-02-18 | QTS-9001 | 25d | 0d | MAV |
| DC1-ATS-L2-2250 |  | DH1100 ATS-E11-02 L2 Checklist | 3d | 2026-02-16 | 2026-02-18 | QTS-9001 | 25d | 16d | MAV |
| DC1-ATS-L2-2260 |  | DH1100 ATS-E11-03 L2 Checklist | 3d | 2026-02-16 | 2026-02-18 | QTS-9001 | 25d | 0d | MAV |
| DC1-ATS-L2-2270 |  | DH1100 ATS-E11-04 L2 Checklist | 3d | 2026-02-16 | 2026-02-18 | QTS-9001 | 25d | 16d | MAV |
| DC1-ATS-L2-2280 |  | DH1100 ATS-E11-05 L2 Checklist | 3d | 2026-02-16 | 2026-02-18 | QTS-9001 | 25d | 0d | MAV |
| DC1-ATS-L2-2290 |  | DH1100 ATS-E11-06 L2 Checklist | 3d | 2026-02-16 | 2026-02-18 | QTS-9001 | 25d | 16d | MAV |
|  | 06 | **DC1-DH1100 ATS-F11 Cx L2** |  | 2026-02-16 | 2026-02-18 |  |  |  |  |
| DC1-ATS-L2-2300 |  | DH1100 ATS-F11-01 L2 Checklist | 3d | 2026-02-16 | 2026-02-18 | QTS-9031 | 25d | 0d | MAV |
| DC1-ATS-L2-2310 |  | DH1100 ATS-F11-02 L2 Checklist | 3d | 2026-02-16 | 2026-02-18 | QTS-9031 | 25d | 16d | MAV |
| DC1-ATS-L2-2320 |  | DH1100 ATS-F11-03 L2 Checklist | 3d | 2026-02-16 | 2026-02-18 | QTS-9031 | 25d | 0d | MAV |
| DC1-ATS-L2-2330 |  | DH1100 ATS-F11-04 L2 Checklist | 3d | 2026-02-16 | 2026-02-18 | QTS-9031 | 25d | 16d | MAV |
| DC1-ATS-L2-2340 |  | DH1100 ATS-F11-05 L2 Checklist | 3d | 2026-02-16 | 2026-02-18 | QTS-9031 | 25d | 0d | MAV |
| DC1-ATS-L2-2350 |  | DH1100 ATS-F11-06 L2 Checklist | 3d | 2026-02-16 | 2026-02-18 | QTS-9031 | 25d | 16d | MAV |

Notes:
- DC1-ATS-L2-2120: Steps: EC Installation Checklist; CC Installation Checklist; Vendor Pre-Energization Checklist; CXA Pre-Energization Inspection; PEI/Clean-Walk
- DC1-ATS-L2-2130: Steps: EC Installation Checklist; CC Installation Checklist; Vendor Pre-Energization Checklist; CXA Pre-Energization Inspection; PEI/Clean-Walk
- DC1-ATS-L2-2140: Steps: EC Installation Checklist; CC Installation Checklist; Vendor Pre-Energization Checklist; CXA Pre-Energization Inspection; PEI/Clean-Walk
- DC1-ATS-L2-2150: Steps: EC Installation Checklist; CC Installation Checklist; Vendor Pre-Energization Checklist; CXA Pre-Energization Inspection; PEI/Clean-Walk
- DC1-ATS-L2-2160: Steps: EC Installation Checklist; CC Installation Checklist; Vendor Pre-Energization Checklist; CXA Pre-Energization Inspection; PEI/Clean-Walk
- DC1-ATS-L2-2170: Steps: EC Installation Checklist; CC Installation Checklist; Vendor Pre-Energization Checklist; CXA Pre-Energization Inspection; PEI/Clean-Walk
- DC1-ATS-L2-2180: Steps: EC Installation Checklist; CC Installation Checklist; Vendor Pre-Energization Checklist; CXA Pre-Energization Inspection; PEI/Clean-Walk
- DC1-ATS-L2-2190: Steps: EC Installation Checklist; CC Installation Checklist; Vendor Pre-Energization Checklist; CXA Pre-Energization Inspection; PEI/Clean-Walk
- DC1-ATS-L2-2200: Steps: EC Installation Checklist; CC Installation Checklist; Vendor Pre-Energization Checklist; CXA Pre-Energization Inspection; PEI/Clean-Walk
- DC1-ATS-L2-2210: Steps: EC Installation Checklist; CC Installation Checklist; Vendor Pre-Energization Checklist; CXA Pre-Energization Inspection; PEI/Clean-Walk
- DC1-ATS-L2-2220: Steps: EC Installation Checklist; CC Installation Checklist; Vendor Pre-Energization Checklist; CXA Pre-Energization Inspection; PEI/Clean-Walk
- DC1-ATS-L2-2230: Steps: EC Installation Checklist; CC Installation Checklist; Vendor Pre-Energization Checklist; CXA Pre-Energization Inspection; PEI/Clean-Walk
- DC1-ATS-L2-2240: Steps: EC Installation Checklist; CC Installation Checklist; Vendor Pre-Energization Checklist; CXA Pre-Energization Inspection; PEI/Clean-Walk
- DC1-ATS-L2-2250: Steps: EC Installation Checklist; CC Installation Checklist; Vendor Pre-Energization Checklist; CXA Pre-Energization Inspection; PEI/Clean-Walk
- DC1-ATS-L2-2260: Steps: EC Installation Checklist; CC Installation Checklist; Vendor Pre-Energization Checklist; CXA Pre-Energization Inspection; PEI/Clean-Walk
- DC1-ATS-L2-2270: Steps: EC Installation Checklist; CC Installation Checklist; Vendor Pre-Energization Checklist; CXA Pre-Energization Inspection; PEI/Clean-Walk
- DC1-ATS-L2-2280: Steps: EC Installation Checklist; CC Installation Checklist; Vendor Pre-Energization Checklist; CXA Pre-Energization Inspection; PEI/Clean-Walk
- DC1-ATS-L2-2290: Steps: EC Installation Checklist; CC Installation Checklist; Vendor Pre-Energization Checklist; CXA Pre-Energization Inspection; PEI/Clean-Walk
- DC1-ATS-L2-2300: Steps: EC Installation Checklist; CC Installation Checklist; Vendor Pre-Energization Checklist; CXA Pre-Energization Inspection; PEI/Clean-Walk
- DC1-ATS-L2-2310: Steps: EC Installation Checklist; CC Installation Checklist; Vendor Pre-Energization Checklist; CXA Pre-Energization Inspection; PEI/Clean-Walk
- DC1-ATS-L2-2320: Steps: EC Installation Checklist; CC Installation Checklist; Vendor Pre-Energization Checklist; CXA Pre-Energization Inspection; PEI/Clean-Walk
- DC1-ATS-L2-2330: Steps: EC Installation Checklist; CC Installation Checklist; Vendor Pre-Energization Checklist; CXA Pre-Energization Inspection; PEI/Clean-Walk
- DC1-ATS-L2-2340: Steps: EC Installation Checklist; CC Installation Checklist; Vendor Pre-Energization Checklist; CXA Pre-Energization Inspection; PEI/Clean-Walk
- DC1-ATS-L2-2350: Steps: EC Installation Checklist; CC Installation Checklist; Vendor Pre-Energization Checklist; CXA Pre-Energization Inspection; PEI/Clean-Walk

| ID | WBS | Activity | Duration | Start | Finish | Predecessors | Total float | Free float | Layton Responsible Party | Vendor Responsible Party |
| --- | --- | --- | --- | --- | --- | --- | --- | --- | --- | --- |
|  | 06 | **DC1-DH1100 CODs Cx L2** |  | 2026-02-10 | 2026-02-18 |  |  |  |  |  |
|  | 01 | **DC1-DH1100 COD A11 Cx L2** |  | 2026-02-12 | 2026-02-16 |  |  |  |  |  |
| DC1-COD-L2-2000 |  | DH1100 COD-A11-01 L2 Checklist | 3d | 2026-02-12 | 2026-02-16 | QTS - 3780, QTS-18101 | 28d | 0d | Riley Warring | SIE |
| DC1-COD-L2-2010 |  | DH1100 COD-A11-02 L2 Checklist | 3d | 2026-02-12 | 2026-02-16 | DC1-COD-L2-2000 SS, QTS - 3780, QTS-18101 | 28d | 0d | Riley Warring | SIE |
| DC1-COD-L2-2020 |  | DH1100 COD-A11-03 L2 Checklist | 3d | 2026-02-12 | 2026-02-16 | DC1-COD-L2-2010 SS, QTS - 3780, QTS-18101 | 28d | 0d | Riley Warring | SIE |
| DC1-COD-L2-2030 |  | DH1100 COD-A11-04 L2 Checklist | 3d | 2026-02-12 | 2026-02-16 | DC1-COD-L2-2020 SS, QTS - 3780, QTS-18101 | 28d | 0d | Riley Warring | SIE |
| DC1-COD-L2-2040 |  | DH1100 COD-A11-05 L2 Checklist | 3d | 2026-02-12 | 2026-02-16 | DC1-COD-L2-2030 SS, QTS - 3780, QTS-18101 | 28d | 0d | Riley Warring | SIE |
| DC1-COD-L2-2050 |  | DH1100 COD-A11-06 L2 Checklist | 3d | 2026-02-12 | 2026-02-16 | DC1-COD-L2-2040 SS, QTS - 3780, QTS-18101 | 28d | 19d | Riley Warring | SIE |
|  | 02 | **DC1-DH1100 COD B11 Cx L2** |  | 2026-02-12 | 2026-02-16 |  |  |  |  |  |
| DC1-COD-L2-2060 |  | DH1100 COD-B11-01 L2 Checklist | 3d | 2026-02-12 | 2026-02-16 | QTS - 3780, QTS-8921 | 28d | 0d | Riley Warring | SIE |
| DC1-COD-L2-2070 |  | DH1100 COD-B11-02 L2 Checklist | 3d | 2026-02-12 | 2026-02-16 | QTS - 3780, QTS-8921 | 28d | 20d | Riley Warring | SIE |
| DC1-COD-L2-2080 |  | DH1100 COD-B11-03 L2 Checklist | 3d | 2026-02-12 | 2026-02-16 | QTS - 3780, QTS-8921 | 28d | 0d | Riley Warring | SIE |
| DC1-COD-L2-2090 |  | DH1100 COD-B11-04 L2 Checklist | 3d | 2026-02-12 | 2026-02-16 | QTS - 3780, QTS-8921 | 28d | 20d | Riley Warring | SIE |
| DC1-COD-L2-2100 |  | DH1100 COD-B11-05 L2 Checklist | 3d | 2026-02-12 | 2026-02-16 | QTS - 3780, QTS-8921 | 28d | 0d | Riley Warring | SIE |
| DC1-COD-L2-2110 |  | DH1100 COD-B11-06 L2 Checklist | 3d | 2026-02-12 | 2026-02-16 | QTS - 3780, QTS-8921 | 28d | 19d | Riley Warring | SIE |
|  | 03 | **DC1-DH1100 COD C11 Cx L2** |  | 2026-02-10 | 2026-02-12 |  |  |  |  |  |
| DC1-COD-L2-2120 |  | DH1100 COD-C11-01 L2 Checklist | 3d | 2026-02-10 | 2026-02-12 | QTS - 15230, QTS-8951 | 30d | 1d | Riley Warring | SIE |
| DC1-COD-L2-2130 |  | DH1100 COD-C11-02 L2 Checklist | 3d | 2026-02-10 | 2026-02-12 | QTS - 15230, QTS-8951 | 30d | 21d | Riley Warring | SIE |
| DC1-COD-L2-2140 |  | DH1100 COD-C11-03 L2 Checklist | 3d | 2026-02-10 | 2026-02-12 | QTS - 15230, QTS-8951 | 30d | 1d | Riley Warring | SIE |
| DC1-COD-L2-2150 |  | DH1100 COD-C11-04 L2 Checklist | 3d | 2026-02-10 | 2026-02-12 | QTS - 15230, QTS-8951 | 30d | 21d | Riley Warring | SIE |
| DC1-COD-L2-2160 |  | DH1100 COD-C11-05 L2 Checklist | 3d | 2026-02-10 | 2026-02-12 | QTS - 15230, QTS-8951 | 30d | 1d | Riley Warring | SIE |
| DC1-COD-L2-2170 |  | DH1100 COD-C11-06 L2 Checklist | 3d | 2026-02-10 | 2026-02-12 | QTS - 15230, QTS-8951 | 30d | 21d | Riley Warring | SIE |
|  | 04 | **DC1-DH1100 COD D11 Cx L2** |  | 2026-02-12 | 2026-02-16 |  |  |  |  |  |
| DC1-COD-L2-2180 |  | DH1100 COD-D11-01 L2 Checklist | 3d | 2026-02-12 | 2026-02-16 | QTS - 15230, QTS-8981 | 28d | 1d | Riley Warring | SIE |
| DC1-COD-L2-2190 |  | DH1100 COD-D11-02 L2 Checklist | 3d | 2026-02-12 | 2026-02-16 | QTS - 15230, QTS-8981 | 28d | 19d | Riley Warring | SIE |
| DC1-COD-L2-2200 |  | DH1100 COD-D11-03 L2 Checklist | 3d | 2026-02-12 | 2026-02-16 | QTS - 15230, QTS-8981 | 28d | 1d | Riley Warring | SIE |
| DC1-COD-L2-2210 |  | DH1100 COD-D11-04 L2 Checklist | 3d | 2026-02-12 | 2026-02-16 | QTS - 15230, QTS-8981 | 28d | 19d | Riley Warring | SIE |
| DC1-COD-L2-2220 |  | DH1100 COD-D11-05 L2 Checklist | 3d | 2026-02-12 | 2026-02-16 | QTS - 15230, QTS-8981 | 28d | 1d | Riley Warring | SIE |
| DC1-COD-L2-2230 |  | DH1100 COD-D11-06 L2 Checklist | 3d | 2026-02-12 | 2026-02-16 | QTS - 15230, QTS-8981 | 28d | 19d | Riley Warring | SIE |

Notes:
- DC1-COD-L2-2000: Steps: EC Installation Checklist; CC Installation Checklist; Vendor Pre-Energization Checklist; CXA Pre-Energization Inspection; PEI/Clean-Walk
- DC1-COD-L2-2010: Steps: EC Installation Checklist; CC Installation Checklist; Vendor Pre-Energization Checklist; CXA Pre-Energization Inspection; PEI/Clean-Walk
- DC1-COD-L2-2020: Steps: EC Installation Checklist; CC Installation Checklist; Vendor Pre-Energization Checklist; CXA Pre-Energization Inspection; PEI/Clean-Walk
- DC1-COD-L2-2030: Steps: EC Installation Checklist; CC Installation Checklist; Vendor Pre-Energization Checklist; CXA Pre-Energization Inspection; PEI/Clean-Walk
- DC1-COD-L2-2040: Steps: EC Installation Checklist; CC Installation Checklist; Vendor Pre-Energization Checklist; CXA Pre-Energization Inspection; PEI/Clean-Walk
- DC1-COD-L2-2050: Steps: EC Installation Checklist; CC Installation Checklist; Vendor Pre-Energization Checklist; CXA Pre-Energization Inspection; PEI/Clean-Walk
- DC1-COD-L2-2060: Steps: EC Installation Checklist; CC Installation Checklist; Vendor Pre-Energization Checklist; CXA Pre-Energization Inspection; PEI/Clean-Walk
- DC1-COD-L2-2070: Steps: EC Installation Checklist; CC Installation Checklist; Vendor Pre-Energization Checklist; CXA Pre-Energization Inspection; PEI/Clean-Walk
- DC1-COD-L2-2080: Steps: EC Installation Checklist; CC Installation Checklist; Vendor Pre-Energization Checklist; CXA Pre-Energization Inspection; PEI/Clean-Walk
- DC1-COD-L2-2090: Steps: EC Installation Checklist; CC Installation Checklist; Vendor Pre-Energization Checklist; CXA Pre-Energization Inspection; PEI/Clean-Walk
- DC1-COD-L2-2100: Steps: EC Installation Checklist; CC Installation Checklist; Vendor Pre-Energization Checklist; CXA Pre-Energization Inspection; PEI/Clean-Walk
- DC1-COD-L2-2110: Steps: EC Installation Checklist; CC Installation Checklist; Vendor Pre-Energization Checklist; CXA Pre-Energization Inspection; PEI/Clean-Walk
- DC1-COD-L2-2120: Steps: EC Installation Checklist; CC Installation Checklist; Vendor Pre-Energization Checklist; CXA Pre-Energization Inspection; PEI/Clean-Walk
- DC1-COD-L2-2130: Steps: EC Installation Checklist; CC Installation Checklist; Vendor Pre-Energization Checklist; CXA Pre-Energization Inspection; PEI/Clean-Walk
- DC1-COD-L2-2140: Steps: EC Installation Checklist; CC Installation Checklist; Vendor Pre-Energization Checklist; CXA Pre-Energization Inspection; PEI/Clean-Walk
- DC1-COD-L2-2150: Steps: EC Installation Checklist; CC Installation Checklist; Vendor Pre-Energization Checklist; CXA Pre-Energization Inspection; PEI/Clean-Walk
- DC1-COD-L2-2160: Steps: EC Installation Checklist; CC Installation Checklist; Vendor Pre-Energization Checklist; CXA Pre-Energization Inspection; PEI/Clean-Walk
- DC1-COD-L2-2170: Steps: EC Installation Checklist; CC Installation Checklist; Vendor Pre-Energization Checklist; CXA Pre-Energization Inspection; PEI/Clean-Walk
- DC1-COD-L2-2180: Steps: EC Installation Checklist; CC Installation Checklist; Vendor Pre-Energization Checklist; CXA Pre-Energization Inspection; PEI/Clean-Walk
- DC1-COD-L2-2190: Steps: EC Installation Checklist; CC Installation Checklist; Vendor Pre-Energization Checklist; CXA Pre-Energization Inspection; PEI/Clean-Walk
- DC1-COD-L2-2200: Steps: EC Installation Checklist; CC Installation Checklist; Vendor Pre-Energization Checklist; CXA Pre-Energization Inspection; PEI/Clean-Walk
- DC1-COD-L2-2210: Steps: EC Installation Checklist; CC Installation Checklist; Vendor Pre-Energization Checklist; CXA Pre-Energization Inspection; PEI/Clean-Walk
- DC1-COD-L2-2220: Steps: EC Installation Checklist; CC Installation Checklist; Vendor Pre-Energization Checklist; CXA Pre-Energization Inspection; PEI/Clean-Walk
- DC1-COD-L2-2230: Steps: EC Installation Checklist; CC Installation Checklist; Vendor Pre-Energization Checklist; CXA Pre-Energization Inspection; PEI/Clean-Walk

| ID | WBS | Activity | Duration | Start | Finish | Predecessors | Total float | Free float | Layton Responsible Party | Vendor Responsible Party |
| --- | --- | --- | --- | --- | --- | --- | --- | --- | --- | --- |
|  | 05 | **DC1-DH1100 COD E11 Cx L2** |  | 2026-02-16 | 2026-02-18 |  |  |  |  |  |
| DC1-COD-L2-2240 |  | DH1100 COD-E11-01 L2 Checklist | 3d | 2026-02-16 | 2026-02-18 | QTS - 24691, QTS-9011 | 26d | 1d | Riley Warring | SIE |
| DC1-COD-L2-2250 |  | DH1100 COD-E11-02 L2 Checklist | 3d | 2026-02-16 | 2026-02-18 | QTS - 24691, QTS-9011 | 26d | 17d | Riley Warring | SIE |
| DC1-COD-L2-2260 |  | DH1100 COD-E11-03 L2 Checklist | 3d | 2026-02-16 | 2026-02-18 | QTS - 24691, QTS-9011 | 26d | 1d | Riley Warring | SIE |
| DC1-COD-L2-2270 |  | DH1100 COD-E11-04 L2 Checklist | 3d | 2026-02-16 | 2026-02-18 | QTS - 24691, QTS-9011 | 26d | 17d | Riley Warring | SIE |
| DC1-COD-L2-2280 |  | DH1100 COD-E11-05 L2 Checklist | 3d | 2026-02-16 | 2026-02-18 | QTS - 24691, QTS-9011 | 26d | 1d | Riley Warring | SIE |
| DC1-COD-L2-2290 |  | DH1100 COD-E11-06 L2 Checklist | 3d | 2026-02-16 | 2026-02-18 | QTS - 24691, QTS-9011 | 26d | 17d | Riley Warring | SIE |
|  | 06 | **DC1-DH1100 COD F11 Cx L2** |  | 2026-02-16 | 2026-02-18 |  |  |  |  |  |
| DC1-COD-L2-2300 |  | DH1100 COD-F11-01 L2 Checklist | 3d | 2026-02-16 | 2026-02-18 | QTS - 24691, QTS-9041 | 26d | 1d | Riley Warring | SIE |
| DC1-COD-L2-2310 |  | DH1100 COD-F11-02 L2 Checklist | 3d | 2026-02-16 | 2026-02-18 | QTS - 24691, QTS-9041 | 26d | 17d | Riley Warring | SIE |
| DC1-COD-L2-2320 |  | DH1100 COD-F11-03 L2 Checklist | 3d | 2026-02-16 | 2026-02-18 | QTS - 24691, QTS-9041 | 26d | 1d | Riley Warring | SIE |
| DC1-COD-L2-2330 |  | DH1100 COD-F11-04 L2 Checklist | 3d | 2026-02-16 | 2026-02-18 | QTS - 24691, QTS-9041 | 26d | 17d | Riley Warring | SIE |
| DC1-COD-L2-2340 |  | DH1100 COD-F11-05 L2 Checklist | 3d | 2026-02-16 | 2026-02-18 | QTS - 24691, QTS-9041 | 26d | 1d | Riley Warring | SIE |
| DC1-COD-L2-2350 |  | DH1100 COD-F11-06 L2 Checklist | 3d | 2026-02-16 | 2026-02-18 | QTS - 24691, QTS-9041 | 26d | 17d | Riley Warring | SIE |
|  | 1 | **DC1-DH1100 RPPs Cx L2** |  | 2026-02-05 | 2026-02-16 |  |  |  |  |  |
|  | 01 | **DC1-DH1100 RPP A11 Cx L2** |  | 2026-02-12 | 2026-02-16 |  |  |  |  |  |
| DC1-RPP-L2-2000 |  | DH1100 RPP-A11-01 A/B L2 Checklist | 3d | 2026-02-12 | 2026-02-16 | QTS - 3780 | 50d | 1d | Riley Warring | SQD |
| DC1-RPP-L2-2010 |  | DH1100 RPP-A11-02 A/B L2 Checklist | 3d | 2026-02-12 | 2026-02-16 | QTS - 3780 | 50d | 20d | Riley Warring | SQD |
| DC1-RPP-L2-2020 |  | DH1100 RPP-A11-03 A/B L2 Checklist | 3d | 2026-02-12 | 2026-02-16 | QTS - 3780 | 50d | 1d | Riley Warring | SQD |
| DC1-RPP-L2-2030 |  | DH1100 RPP-A11-04 A/B L2 Checklist | 3d | 2026-02-12 | 2026-02-16 | QTS - 3780 | 50d | 20d | Riley Warring | SQD |
| DC1-RPP-L2-2040 |  | DH1100 RPP-A11-05 A/B L2 Checklist | 3d | 2026-02-12 | 2026-02-16 | QTS - 3780 | 50d | 1d | Riley Warring | SQD |
| DC1-RPP-L2-2050 |  | DH1100 RPP-A11-06 A/B L2 Checklist | 3d | 2026-02-12 | 2026-02-16 | QTS - 3780 | 50d | 20d | Riley Warring | SQD |
|  | 02 | **DC1-DH1100 RPP B11 Cx L2** |  | 2026-02-12 | 2026-02-16 |  |  |  |  |  |
| DC1-RPP-L2-2060 |  | DH1100 RPP-B11-01 A/B L2 Checklist | 3d | 2026-02-12 | 2026-02-16 | QTS - 3780 | 50d | 1d | Riley Warring | SQD |
| DC1-RPP-L2-2070 |  | DH1100 RPP-B11-02 A/B L2 Checklist | 3d | 2026-02-12 | 2026-02-16 | QTS - 3780 | 50d | 21d | Riley Warring | SQD |
| DC1-RPP-L2-2080 |  | DH1100 RPP-B11-03 A/B L2 Checklist | 3d | 2026-02-12 | 2026-02-16 | QTS - 3780 | 50d | 1d | Riley Warring | SQD |
| DC1-RPP-L2-2090 |  | DH1100 RPP-B11-04 A/B L2 Checklist | 3d | 2026-02-12 | 2026-02-16 | QTS - 3780 | 50d | 21d | Riley Warring | SQD |
| DC1-RPP-L2-2100 |  | DH1100 RPP-B11-05 A/B L2 Checklist | 3d | 2026-02-12 | 2026-02-16 | QTS - 3780 | 50d | 1d | Riley Warring | SQD |
| DC1-RPP-L2-2110 |  | DH1100 RPP-B11-06 A/B L2 Checklist | 3d | 2026-02-12 | 2026-02-16 | QTS - 3780 | 50d | 20d | Riley Warring | SQD |

Notes:
- DC1-COD-L2-2240: Steps: EC Installation Checklist; CC Installation Checklist; Vendor Pre-Energization Checklist; CXA Pre-Energization Inspection; PEI/Clean-Walk
- DC1-COD-L2-2250: Steps: EC Installation Checklist; CC Installation Checklist; Vendor Pre-Energization Checklist; CXA Pre-Energization Inspection; PEI/Clean-Walk
- DC1-COD-L2-2260: Steps: EC Installation Checklist; CC Installation Checklist; Vendor Pre-Energization Checklist; CXA Pre-Energization Inspection; PEI/Clean-Walk
- DC1-COD-L2-2270: Steps: EC Installation Checklist; CC Installation Checklist; Vendor Pre-Energization Checklist; CXA Pre-Energization Inspection; PEI/Clean-Walk
- DC1-COD-L2-2280: Steps: EC Installation Checklist; CC Installation Checklist; Vendor Pre-Energization Checklist; CXA Pre-Energization Inspection; PEI/Clean-Walk
- DC1-COD-L2-2290: Steps: EC Installation Checklist; CC Installation Checklist; Vendor Pre-Energization Checklist; CXA Pre-Energization Inspection; PEI/Clean-Walk
- DC1-COD-L2-2300: Steps: EC Installation Checklist; CC Installation Checklist; Vendor Pre-Energization Checklist; CXA Pre-Energization Inspection; PEI/Clean-Walk
- DC1-COD-L2-2310: Steps: EC Installation Checklist; CC Installation Checklist; Vendor Pre-Energization Checklist; CXA Pre-Energization Inspection; PEI/Clean-Walk
- DC1-COD-L2-2320: Steps: EC Installation Checklist; CC Installation Checklist; Vendor Pre-Energization Checklist; CXA Pre-Energization Inspection; PEI/Clean-Walk
- DC1-COD-L2-2330: Steps: EC Installation Checklist; CC Installation Checklist; Vendor Pre-Energization Checklist; CXA Pre-Energization Inspection; PEI/Clean-Walk
- DC1-COD-L2-2340: Steps: EC Installation Checklist; CC Installation Checklist; Vendor Pre-Energization Checklist; CXA Pre-Energization Inspection; PEI/Clean-Walk
- DC1-COD-L2-2350: Steps: EC Installation Checklist; CC Installation Checklist; Vendor Pre-Energization Checklist; CXA Pre-Energization Inspection; PEI/Clean-Walk
- DC1-RPP-L2-2000: Steps: EC Installation Checklist; CC Installation Checklist; Vendor Pre-Energization Checklist; CXA Pre-Energization Inspection; PEI/Clean-Walk
- DC1-RPP-L2-2010: Steps: EC Installation Checklist; CC Installation Checklist; Vendor Pre-Energization Checklist; CXA Pre-Energization Inspection; PEI/Clean-Walk
- DC1-RPP-L2-2020: Steps: EC Installation Checklist; CC Installation Checklist; Vendor Pre-Energization Checklist; CXA Pre-Energization Inspection; PEI/Clean-Walk
- DC1-RPP-L2-2030: Steps: EC Installation Checklist; CC Installation Checklist; Vendor Pre-Energization Checklist; CXA Pre-Energization Inspection; PEI/Clean-Walk
- DC1-RPP-L2-2040: Steps: EC Installation Checklist; CC Installation Checklist; Vendor Pre-Energization Checklist; CXA Pre-Energization Inspection; PEI/Clean-Walk
- DC1-RPP-L2-2050: Steps: EC Installation Checklist; CC Installation Checklist; Vendor Pre-Energization Checklist; CXA Pre-Energization Inspection; PEI/Clean-Walk
- DC1-RPP-L2-2060: Steps: EC Installation Checklist; CC Installation Checklist; Vendor Pre-Energization Checklist; CXA Pre-Energization Inspection; PEI/Clean-Walk
- DC1-RPP-L2-2070: Steps: EC Installation Checklist; CC Installation Checklist; Vendor Pre-Energization Checklist; CXA Pre-Energization Inspection; PEI/Clean-Walk
- DC1-RPP-L2-2080: Steps: EC Installation Checklist; CC Installation Checklist; Vendor Pre-Energization Checklist; CXA Pre-Energization Inspection; PEI/Clean-Walk
- DC1-RPP-L2-2090: Steps: EC Installation Checklist; CC Installation Checklist; Vendor Pre-Energization Checklist; CXA Pre-Energization Inspection; PEI/Clean-Walk
- DC1-RPP-L2-2100: Steps: EC Installation Checklist; CC Installation Checklist; Vendor Pre-Energization Checklist; CXA Pre-Energization Inspection; PEI/Clean-Walk
- DC1-RPP-L2-2110: Steps: EC Installation Checklist; CC Installation Checklist; Vendor Pre-Energization Checklist; CXA Pre-Energization Inspection; PEI/Clean-Walk

| ID | WBS | Activity | Duration | Start | Finish | Predecessors | Total float | Free float | Layton Responsible Party | Vendor Responsible Party |
| --- | --- | --- | --- | --- | --- | --- | --- | --- | --- | --- |
|  | 03 | **DC1-DH1100 RPP C11 Cx L2** |  | 2026-02-05 | 2026-02-09 |  |  |  |  |  |
| DC1-RPP-L2-2120 |  | DH1100 RPP-C11-01 A/B L2 Checklist | 3d | 2026-02-05 | 2026-02-09 | QTS - 15230 | 55d | 5d | Riley Warring | SQD |
| DC1-RPP-L2-2130 |  | DH1100 RPP-C11-02 A/B L2 Checklist | 3d | 2026-02-05 | 2026-02-09 | QTS - 15230 | 55d | 25d | Riley Warring | SQD |
| DC1-RPP-L2-2140 |  | DH1100 RPP-C11-03 A/B L2 Checklist | 3d | 2026-02-05 | 2026-02-09 | QTS - 15230 | 55d | 5d | Riley Warring | SQD |
| DC1-RPP-L2-2150 |  | DH1100 RPP-C11-04 A/B L2 Checklist | 3d | 2026-02-05 | 2026-02-09 | QTS - 15230 | 55d | 25d | Riley Warring | SQD |
| DC1-RPP-L2-2160 |  | DH1100 RPP-C11-05 A/B L2 Checklist | 3d | 2026-02-05 | 2026-02-09 | QTS - 15230 | 55d | 5d | Riley Warring | SQD |
| DC1-RPP-L2-2170 |  | DH1100 RPP-C11-06 A/B L2 Checklist | 3d | 2026-02-05 | 2026-02-09 | QTS - 15230 | 55d | 25d | Riley Warring | SQD |
|  | 04 | **DC1-DH1100 RPP D11 Cx L2** |  | 2026-02-05 | 2026-02-09 |  |  |  |  |  |
| DC1-RPP-L2-2180 |  | DH1100 RPP-D11-01 A/B L2 Checklist | 3d | 2026-02-05 | 2026-02-09 | QTS - 15230 | 55d | 7d | Riley Warring | SQD |
| DC1-RPP-L2-2190 |  | DH1100 RPP-D11-02 A/B L2 Checklist | 3d | 2026-02-05 | 2026-02-09 | QTS - 15230 | 55d | 25d | Riley Warring | SQD |
| DC1-RPP-L2-2200 |  | DH1100 RPP-D11-03 A/B L2 Checklist | 3d | 2026-02-05 | 2026-02-09 | QTS - 15230 | 55d | 7d | Riley Warring | SQD |
| DC1-RPP-L2-2210 |  | DH1100 RPP-D11-04 A/B L2 Checklist | 3d | 2026-02-05 | 2026-02-09 | QTS - 15230 | 55d | 25d | Riley Warring | SQD |
| DC1-RPP-L2-2220 |  | DH1100 RPP-D11-05 A/B L2 Checklist | 3d | 2026-02-05 | 2026-02-09 | QTS - 15230 | 55d | 7d | Riley Warring | SQD |
| DC1-RPP-L2-2230 |  | DH1100 RPP-D11-06 A/B L2 Checklist | 3d | 2026-02-05 | 2026-02-09 | QTS - 15230 | 55d | 25d | Riley Warring | SQD |
|  | 05 | **DC1-DH1100 RPP E11 Cx L2** |  | 2026-02-09 | 2026-02-11 |  |  |  |  |  |
| DC1-RPP-L2-2240 |  | DH1100 RPP-E11-01 A/B L2 Checklist | 3d | 2026-02-09 | 2026-02-11 | QTS - 24691 | 53d | 7d | Riley Warring | SQD |
| DC1-RPP-L2-2250 |  | DH1100 RPP-E11-02 A/B L2 Checklist | 3d | 2026-02-09 | 2026-02-11 | QTS - 24691 | 53d | 23d | Riley Warring | SQD |
| DC1-RPP-L2-2260 |  | DH1100 RPP-E11-03 A/B L2 Checklist | 3d | 2026-02-09 | 2026-02-11 | QTS - 24691 | 53d | 7d | Riley Warring | SQD |
| DC1-RPP-L2-2270 |  | DH1100 RPP-E11-04 A/B L2 Checklist | 3d | 2026-02-09 | 2026-02-11 | QTS - 24691 | 53d | 23d | Riley Warring | SQD |
| DC1-RPP-L2-2280 |  | DH1100 RPP-E11-05 A/B L2 Checklist | 3d | 2026-02-09 | 2026-02-11 | QTS - 24691 | 53d | 7d | Riley Warring | SQD |
| DC1-RPP-L2-2290 |  | DH1100 RPP-E11-06 A/B L2 Checklist | 3d | 2026-02-09 | 2026-02-11 | QTS - 24691 | 53d | 23d | Riley Warring | SQD |
|  | 06 | **DC1-DH1100 RPP F11 Cx L2** |  | 2026-02-09 | 2026-02-11 |  |  |  |  |  |
| DC1-RPP-L2-2300 |  | DH1100 RPP-F11-01 A/B L2 Checklist | 3d | 2026-02-09 | 2026-02-11 | QTS - 24691 | 53d | 7d | Riley Warring | SQD |
| DC1-RPP-L2-2310 |  | DH1100 RPP-F11-02 A/B L2 Checklist | 3d | 2026-02-09 | 2026-02-11 | QTS - 24691 | 53d | 23d | Riley Warring | SQD |
| DC1-RPP-L2-2320 |  | DH1100 RPP-F11-03 A/B L2 Checklist | 3d | 2026-02-09 | 2026-02-11 | QTS - 24691 | 53d | 7d | Riley Warring | SQD |
| DC1-RPP-L2-2330 |  | DH1100 RPP-F11-04 A/B L2 Checklist | 3d | 2026-02-09 | 2026-02-11 | QTS - 24691 | 53d | 23d | Riley Warring | SQD |
| DC1-RPP-L2-2340 |  | DH1100 RPP-F11-05 A/B L2 Checklist | 3d | 2026-02-09 | 2026-02-11 | QTS - 24691 | 53d | 7d | Riley Warring | SQD |
| DC1-RPP-L2-2350 |  | DH1100 RPP-F11-06 A/B L2 Checklist | 3d | 2026-02-09 | 2026-02-11 | QTS - 24691 | 53d | 23d | Riley Warring | SQD |

Notes:
- DC1-RPP-L2-2120: Steps: EC Installation Checklist; CC Installation Checklist; Vendor Pre-Energization Checklist; CXA Pre-Energization Inspection; PEI/Clean-Walk
- DC1-RPP-L2-2130: Steps: EC Installation Checklist; CC Installation Checklist; Vendor Pre-Energization Checklist; CXA Pre-Energization Inspection; PEI/Clean-Walk
- DC1-RPP-L2-2140: Steps: EC Installation Checklist; CC Installation Checklist; Vendor Pre-Energization Checklist; CXA Pre-Energization Inspection; PEI/Clean-Walk
- DC1-RPP-L2-2150: Steps: EC Installation Checklist; CC Installation Checklist; Vendor Pre-Energization Checklist; CXA Pre-Energization Inspection; PEI/Clean-Walk
- DC1-RPP-L2-2160: Steps: EC Installation Checklist; CC Installation Checklist; Vendor Pre-Energization Checklist; CXA Pre-Energization Inspection; PEI/Clean-Walk
- DC1-RPP-L2-2170: Steps: EC Installation Checklist; CC Installation Checklist; Vendor Pre-Energization Checklist; CXA Pre-Energization Inspection; PEI/Clean-Walk
- DC1-RPP-L2-2180: Steps: EC Installation Checklist; CC Installation Checklist; Vendor Pre-Energization Checklist; CXA Pre-Energization Inspection; PEI/Clean-Walk
- DC1-RPP-L2-2190: Steps: EC Installation Checklist; CC Installation Checklist; Vendor Pre-Energization Checklist; CXA Pre-Energization Inspection; PEI/Clean-Walk
- DC1-RPP-L2-2200: Steps: EC Installation Checklist; CC Installation Checklist; Vendor Pre-Energization Checklist; CXA Pre-Energization Inspection; PEI/Clean-Walk
- DC1-RPP-L2-2210: Steps: EC Installation Checklist; CC Installation Checklist; Vendor Pre-Energization Checklist; CXA Pre-Energization Inspection; PEI/Clean-Walk
- DC1-RPP-L2-2220: Steps: EC Installation Checklist; CC Installation Checklist; Vendor Pre-Energization Checklist; CXA Pre-Energization Inspection; PEI/Clean-Walk
- DC1-RPP-L2-2230: Steps: EC Installation Checklist; CC Installation Checklist; Vendor Pre-Energization Checklist; CXA Pre-Energization Inspection; PEI/Clean-Walk
- DC1-RPP-L2-2240: Steps: EC Installation Checklist; CC Installation Checklist; Vendor Pre-Energization Checklist; CXA Pre-Energization Inspection; PEI/Clean-Walk
- DC1-RPP-L2-2250: Steps: EC Installation Checklist; CC Installation Checklist; Vendor Pre-Energization Checklist; CXA Pre-Energization Inspection; PEI/Clean-Walk
- DC1-RPP-L2-2260: Steps: EC Installation Checklist; CC Installation Checklist; Vendor Pre-Energization Checklist; CXA Pre-Energization Inspection; PEI/Clean-Walk
- DC1-RPP-L2-2270: Steps: EC Installation Checklist; CC Installation Checklist; Vendor Pre-Energization Checklist; CXA Pre-Energization Inspection; PEI/Clean-Walk
- DC1-RPP-L2-2280: Steps: EC Installation Checklist; CC Installation Checklist; Vendor Pre-Energization Checklist; CXA Pre-Energization Inspection; PEI/Clean-Walk
- DC1-RPP-L2-2290: Steps: EC Installation Checklist; CC Installation Checklist; Vendor Pre-Energization Checklist; CXA Pre-Energization Inspection; PEI/Clean-Walk
- DC1-RPP-L2-2300: Steps: EC Installation Checklist; CC Installation Checklist; Vendor Pre-Energization Checklist; CXA Pre-Energization Inspection; PEI/Clean-Walk
- DC1-RPP-L2-2310: Steps: EC Installation Checklist; CC Installation Checklist; Vendor Pre-Energization Checklist; CXA Pre-Energization Inspection; PEI/Clean-Walk
- DC1-RPP-L2-2320: Steps: EC Installation Checklist; CC Installation Checklist; Vendor Pre-Energization Checklist; CXA Pre-Energization Inspection; PEI/Clean-Walk
- DC1-RPP-L2-2330: Steps: EC Installation Checklist; CC Installation Checklist; Vendor Pre-Energization Checklist; CXA Pre-Energization Inspection; PEI/Clean-Walk
- DC1-RPP-L2-2340: Steps: EC Installation Checklist; CC Installation Checklist; Vendor Pre-Energization Checklist; CXA Pre-Energization Inspection; PEI/Clean-Walk
- DC1-RPP-L2-2350: Steps: EC Installation Checklist; CC Installation Checklist; Vendor Pre-Energization Checklist; CXA Pre-Energization Inspection; PEI/Clean-Walk

| ID | WBS | Activity | Duration | Start | Finish | Predecessors | Total float | Free float | Vendor Responsible Party | Layton Responsible Party |
| --- | --- | --- | --- | --- | --- | --- | --- | --- | --- | --- |
|  | 07 | **DC1-DH1100 MOD-02 Cx L2** |  | 2026-02-18 | 2026-02-25 |  |  |  |  |  |
| DC1-MOD02-L2-2000 |  | DH1100 MOD-A11-02 L2 Checklist | 3d | 2026-02-18 | 2026-02-20 | QTS-43691, QTS-16051, QTS-18511, QTS-17941, QTS-44441 | 16d | 0d | PHE |  |
| DC1-MOD02-L2-2010 |  | DH1100 MOD-B11-02 L2 Checklist | 3d | 2026-02-18 | 2026-02-20 | DC1-MOD02-L2-2000 SS, QTS-16051, QTS-18511, QTS-17941, QTS-44441 | 16d | 0d | PHE |  |
| DC1-MOD02-L2-2020 |  | DH1100 MOD-C11-02 L2 Checklist | 3d | 2026-02-23 | 2026-02-25 | DC1-MOD02-L2-2010, QTS-16051, QTS-18511, QTS-17941, QTS-44441 | 16d | 0d | PHE |  |
| DC1-MOD02-L2-2030 |  | DH1100 MOD-D11-02 L2 Checklist | 3d | 2026-02-23 | 2026-02-25 | DC1-MOD02-L2-2020 SS, QTS-16051, QTS-18511, QTS-17941, QTS-44441 | 16d | 0d | PHE |  |
| DC1-MOD02-L2-2040 |  | DH1100 MOD-E11-02 L2 Checklist | 3d | 2026-02-23 | 2026-02-25 | DC1-MOD02-L2-2030 SS, QTS-16051, QTS-18511, QTS-17941, QTS-44441 | 16d | 0d | PHE |  |
| DC1-MOD02-L2-2050 |  | DH1100 MOD-F11-02 L2 Checklist | 3d | 2026-02-23 | 2026-02-25 | DC1-MOD02-L2-2040 SS, QTS-16051, QTS-18511, QTS-17941, QTS-44441 | 16d | 0d | PHE |  |
| DC1-MOD02-L2-2060 |  | DH1100 MOD-R11-02 L2 Checklist | 3d | 2026-02-23 | 2026-02-25 | DC1-MOD02-L2-2050 SS, QTS-16051, QTS-18511, QTS-17941, QTS-44441 | 16d | 0d | PHE |  |
|  | 08 | **DC1-DH1100 MOD-03 Cx L2** |  | 2026-02-18 | 2026-03-13 |  |  |  |  |  |
| DC1-MOD03-L2-2000 |  | DH1100 MOD-A11-03 L2 Checklist | 3d | 2026-02-18 | 2026-02-20 | QTS - 4810, QTS - 4620, QTS-18511, QTS-17941, QTS-44441 | 9d | 0d | PHE |  |
| DC1-MOD03-L2-2010 |  | DH1100 MOD-B11-03 L2 Checklist | 3d | 2026-02-23 | 2026-02-25 | DC1-MOD03-L2-2000, QTS - 4810, QTS - 4620, QTS-18511, QTS-17941, QTS-44441 | 9d | 0d | PHE |  |
| DC1-MOD03-L2-2020 |  | DH1100 MOD-C11-03 L2 Checklist | 3d | 2026-02-23 | 2026-02-25 | DC1-MOD03-L2-2010 SS, QTS - 4810, QTS - 4620, QTS-18511, QTS-17941, QTS-44441 | 9d | 0d | PHE |  |
| DC1-MOD03-L2-2030 |  | DH1100 MOD-D11-03 L2 Checklist | 3d | 2026-02-26 | 2026-03-02 | DC1-MOD03-L2-2020, QTS - 4810, QTS - 4620, QTS-18511, QTS-17941, QTS-44441 | 9d | 0d | PHE |  |
| DC1-MOD03-L2-2040 |  | DH1100 MOD-E11-03 L2 Checklist | 3d | 2026-03-03 | 2026-03-05 | DC1-MOD03-L2-2030, QTS - 4810, QTS - 4620, QTS-18511, QTS-17941, QTS-44441 | 9d | 0d | PHE |  |
| DC1-MOD03-L2-2050 |  | DH1100 MOD-F11-03 L2 Checklist | 3d | 2026-03-06 | 2026-03-10 | DC1-MOD03-L2-2040, QTS - 4810, QTS - 4620, QTS-18511, QTS-17941, QTS-44441 | 9d | 0d | PHE |  |
| DC1-MOD03-L2-2060 |  | DH1100 MOD-R11-03 L2 Checklist | 3d | 2026-03-11 | 2026-03-13 | DC1-MOD03-L2-2050, QTS - 4810, QTS - 4620, QTS-18511, QTS-17941, QTS-44441 | 9d | 0d | PHE |  |
|  | 2 | **DC1-DH1100 CDUs Cx L2** |  | 2026-03-03 | 2026-03-05 |  |  |  |  |  |
| DC1-CDU-L2-2000 |  | CDU-DH1100-01 L2 Checklist | 3d | 2026-03-03 | 2026-03-05 | QTS - 4810, QTS - 4930 | 37d | 0d | VER |  |
| DC1-CDU-L2-2010 |  | CDU-DH1100-02 L2 Checklist | 3d | 2026-03-03 | 2026-03-05 | QTS - 4810, QTS - 4930 | 37d | 0d | VER |  |
| DC1-CDU-L2-2020 |  | CDU-DH1100-03 L2 Checklist | 3d | 2026-03-03 | 2026-03-05 | QTS - 4810, QTS - 4930 | 37d | 0d | VER |  |
| DC1-CDU-L2-2030 |  | CDU-DH1100-04 L2 Checklist | 3d | 2026-03-03 | 2026-03-05 | QTS - 4620, QTS - 4740 | 37d | 0d | VER |  |
| DC1-CDU-L2-2040 |  | CDU-DH1100-05 L2 Checklist | 3d | 2026-03-03 | 2026-03-05 | QTS - 4620, QTS - 4740 | 37d | 0d | VER |  |
| DC1-CDU-L2-2050 |  | CDU-DH1100-06 L2 Checklist | 3d | 2026-03-03 | 2026-03-05 | QTS - 4620, QTS - 4740 | 37d | 0d | VER |  |
|  | 09 | **DC1-DH1100 CHLR Cx L2** |  | 2026-01-20 | 2026-02-17 |  |  |  |  |  |
| DC1-CHLR-L2-Cx-2000 |  | DH1100 CHLR-1RT40-A11 L2 Checklist | 3d | 2026-01-20 | 2026-01-22 | QTS-18621 | 25d | 0d | TAS | Riley Warring |
| DC1-CHLR-L2-Cx-2010 |  | DH1100 CHLR-1RT40-B11 L2 Checklist | 3d | 2026-01-23 | 2026-01-27 | DC1-CHLR-L2-Cx-2000 | 25d | 0d | TAS | Riley Warring |
| DC1-CHLR-L2-Cx-2020 |  | DH1100 CHLR-1RT40-C11 L2 Checklist | 3d | 2026-01-28 | 2026-01-30 | DC1-CHLR-L2-Cx-2010 | 25d | 0d | TAS | Riley Warring |
| DC1-CHLR-L2-Cx-2030 |  | DH1100 CHLR-1RT40-D11 L2 Checklist | 3d | 2026-02-02 | 2026-02-04 | DC1-CHLR-L2-Cx-2020 | 25d | 0d | TAS | Riley Warring |
| DC1-CHLR-L2-Cx-2040 |  | DH1100 CHLR-1RT40-E11 L2 Checklist | 3d | 2026-02-05 | 2026-02-09 | DC1-CHLR-L2-Cx-2030 | 25d | 0d | TAS | Riley Warring |
| DC1-CHLR-L2-Cx-2050 |  | DH1100 CHLR-1RT40-F11 L2 Checklist | 3d | 2026-02-10 | 2026-02-12 | DC1-CHLR-L2-Cx-2040 | 25d | 0d | TAS | Riley Warring |
| DC1-CHLR-L2-Cx-2060 |  | DH1100 CHLR-1RT40-R11 L2 Checklist | 3d | 2026-02-13 | 2026-02-17 | DC1-CHLR-L2-Cx-2050 | 25d | 0d | TAS | Riley Warring |

Notes:
- DC1-MOD02-L2-2000: Steps: EC Installation Checklist; CC Installation Checklist; Vendor Pre-Energization Checklist; CXA Pre-Energization Inspection; PEI/Clean-Walk
- DC1-MOD02-L2-2010: Steps: EC Installation Checklist; CC Installation Checklist; Vendor Pre-Energization Checklist; CXA Pre-Energization Inspection; PEI/Clean-Walk
- DC1-MOD02-L2-2020: Steps: EC Installation Checklist; CC Installation Checklist; Vendor Pre-Energization Checklist; CXA Pre-Energization Inspection; PEI/Clean-Walk
- DC1-MOD02-L2-2030: Steps: EC Installation Checklist; CC Installation Checklist; Vendor Pre-Energization Checklist; CXA Pre-Energization Inspection; PEI/Clean-Walk
- DC1-MOD02-L2-2040: Steps: EC Installation Checklist; CC Installation Checklist; Vendor Pre-Energization Checklist; CXA Pre-Energization Inspection; PEI/Clean-Walk
- DC1-MOD02-L2-2050: Steps: EC Installation Checklist; CC Installation Checklist; Vendor Pre-Energization Checklist; CXA Pre-Energization Inspection; PEI/Clean-Walk
- DC1-MOD02-L2-2060: Steps: EC Installation Checklist; CC Installation Checklist; Vendor Pre-Energization Checklist; CXA Pre-Energization Inspection; PEI/Clean-Walk
- DC1-MOD03-L2-2000: Steps: EC Installation Checklist; CC Installation Checklist; Vendor Pre-Energization Checklist; CXA Pre-Energization Inspection; PEI/Clean-Walk
- DC1-MOD03-L2-2010: Steps: EC Installation Checklist; CC Installation Checklist; Vendor Pre-Energization Checklist; CXA Pre-Energization Inspection; PEI/Clean-Walk
- DC1-MOD03-L2-2020: Steps: EC Installation Checklist; CC Installation Checklist; Vendor Pre-Energization Checklist; CXA Pre-Energization Inspection; PEI/Clean-Walk
- DC1-MOD03-L2-2030: Steps: EC Installation Checklist; CC Installation Checklist; Vendor Pre-Energization Checklist; CXA Pre-Energization Inspection; PEI/Clean-Walk
- DC1-MOD03-L2-2040: Steps: EC Installation Checklist; CC Installation Checklist; Vendor Pre-Energization Checklist; CXA Pre-Energization Inspection; PEI/Clean-Walk
- DC1-MOD03-L2-2050: Steps: EC Installation Checklist; CC Installation Checklist; Vendor Pre-Energization Checklist; CXA Pre-Energization Inspection; PEI/Clean-Walk
- DC1-MOD03-L2-2060: Steps: EC Installation Checklist; CC Installation Checklist; Vendor Pre-Energization Checklist; CXA Pre-Energization Inspection; PEI/Clean-Walk
- DC1-CDU-L2-2000: Steps: EC Installation Checklist; MC Installation Checklist; CC Installation Checklist; Vendor Pre-Energization Checklist; CXA Pre-Energization Inspection; PEI/Clean-Walk
- DC1-CDU-L2-2010: Steps: EC Installation Checklist; MC Installation Checklist; CC Installation Checklist; Vendor Pre-Energization Checklist; CXA Pre-Energization Inspection; PEI/Clean-Walk
- DC1-CDU-L2-2020: Steps: EC Installation Checklist; MC Installation Checklist; CC Installation Checklist; Vendor Pre-Energization Checklist; CXA Pre-Energization Inspection; PEI/Clean-Walk
- DC1-CDU-L2-2030: Steps: EC Installation Checklist; MC Installation Checklist; CC Installation Checklist; Vendor Pre-Energization Checklist; CXA Pre-Energization Inspection; PEI/Clean-Walk
- DC1-CDU-L2-2040: Steps: EC Installation Checklist; MC Installation Checklist; CC Installation Checklist; Vendor Pre-Energization Checklist; CXA Pre-Energization Inspection; PEI/Clean-Walk
- DC1-CDU-L2-2050: Steps: EC Installation Checklist; MC Installation Checklist; CC Installation Checklist; Vendor Pre-Energization Checklist; CXA Pre-Energization Inspection; PEI/Clean-Walk
- DC1-CHLR-L2-Cx-2000: Steps: EC Installation Checklist; MC Installation Checklist; CC Installation Checklist; Vendor Pre-Energization Checklist; CXA Pre-Energization Inspection; PEI/Clean-Walk
- DC1-CHLR-L2-Cx-2010: Steps: EC Installation Checklist; MC Installation Checklist; CC Installation Checklist; Vendor Pre-Energization Checklist; CXA Pre-Energization Inspection; PEI/Clean-Walk
- DC1-CHLR-L2-Cx-2020: Steps: EC Installation Checklist; MC Installation Checklist; CC Installation Checklist; Vendor Pre-Energization Checklist; CXA Pre-Energization Inspection; PEI/Clean-Walk
- DC1-CHLR-L2-Cx-2030: Steps: EC Installation Checklist; MC Installation Checklist; CC Installation Checklist; Vendor Pre-Energization Checklist; CXA Pre-Energization Inspection; PEI/Clean-Walk
- DC1-CHLR-L2-Cx-2040: Steps: EC Installation Checklist; MC Installation Checklist; CC Installation Checklist; Vendor Pre-Energization Checklist; CXA Pre-Energization Inspection; PEI/Clean-Walk
- DC1-CHLR-L2-Cx-2050: Steps: EC Installation Checklist; MC Installation Checklist; CC Installation Checklist; Vendor Pre-Energization Checklist; CXA Pre-Energization Inspection; PEI/Clean-Walk
- DC1-CHLR-L2-Cx-2060: Steps: EC Installation Checklist; MC Installation Checklist; CC Installation Checklist; Vendor Pre-Energization Checklist; CXA Pre-Energization Inspection; PEI/Clean-Walk

| ID | WBS | Activity | Duration | Start | Finish | Predecessors | Total float | Free float | Layton Responsible Party | Vendor Responsible Party | Notes |
| --- | --- | --- | --- | --- | --- | --- | --- | --- | --- | --- | --- |
|  | 10 | **DC1-DH1100 CHWP Cx L2** |  | 2026-01-26 | 2026-02-05 |  |  |  |  |  |  |
| DC1-CHWP-L2-Cx-2000 |  | DH1100 CHWP-1RT40-A11 L2 Checklist | 1d | 2026-01-26 | 2026-01-26 | QTS-18951 | 15d | 0d | Riley Warring | LAY |  |
| DC1-CHWP-L2-Cx-2010 |  | DH1100 CHWP-1RT40-B11 L2 Checklist | 1d | 2026-01-27 | 2026-01-27 | DC1-CHWP-L2-Cx-2000 | 15d | 0d | Riley Warring | LAY |  |
| DC1-CHWP-L2-Cx-2020 |  | DH1100 CHWP-1RT40-C11 L2 Checklist | 1d | 2026-01-28 | 2026-01-28 | DC1-CHWP-L2-Cx-2010 | 15d | 2d | Riley Warring | LAY |  |
| DC1-CHWP-L2-Cx-2030 |  | DH1100 CHWP-1RT40-D11 L2 Checklist | 1d | 2026-02-02 | 2026-02-02 | QTS-43731, DC1-CHWP-L2-Cx-2020 | 13d | 0d | Riley Warring | LAY |  |
| DC1-CHWP-L2-Cx-2040 |  | DH1100 CHWP-1RT40-E11 L2 Checklist | 1d | 2026-02-03 | 2026-02-03 | QTS-43731, DC1-CHWP-L2-Cx-2030 | 13d | 0d | Riley Warring | LAY |  |
| DC1-CHWP-L2-Cx-2050 |  | DH1100 CHWP-1RT40-F11 L2 Checklist | 1d | 2026-02-04 | 2026-02-04 | QTS-43731, DC1-CHWP-L2-Cx-2040 | 13d | 0d | Riley Warring | LAY |  |
| DC1-CHWP-L2-Cx-2060 |  | DH1100 CHWP-1RT40-R11 L2 Checklist | 1d | 2026-02-05 | 2026-02-05 | QTS-18951, DC1-CHWP-L2-Cx-2050 | 13d | 7d | Riley Warring | LAY | CFCI |
|  | 11 | **DC1-DH1100 CRAH/DOAS Cx L2** |  | 2026-02-02 | 2026-02-09 |  |  |  |  |  |  |
| DC1-CRAH-L2-2000 |  | DH1100 CRAH-DH-01 L2 Checklist | 3d | 2026-02-02 | 2026-02-04 | QTS-15441, QTS-46521, QTS-16241, QTS-17081 | 31d | 15d |  | UMAS |  |
| DC1-CRAH-L2-2010 |  | DH1100 CRAH-DH-02 L2 Checklist | 3d | 2026-02-02 | 2026-02-04 | QTS-46521, QTS-15441, QTS-16241, QTS-17081 | 31d | 15d |  | UMAS |  |
| DC1-CRAH-L2-2020 |  | DH1100 CRAH-DH-03 L2 Checklist | 3d | 2026-02-02 | 2026-02-04 | QTS-46521, QTS-15441, QTS-16241, QTS-17081 | 31d | 15d |  | UMAS |  |
| DC1-CRAH-L2-2030 |  | DH1100 CRAH-DH-04 L2 Checklist | 3d | 2026-02-02 | 2026-02-04 | QTS-46521, QTS-15441, QTS-16241, QTS-17081 | 31d | 15d |  | UMAS |  |
| DC1-CRAH-L2-2040 |  | DH1100 CRAH-DH-05 L2 Checklist | 3d | 2026-02-02 | 2026-02-04 | QTS-46521, QTS-15441, QTS-16241, QTS-17081 | 31d | 15d |  | UMAS |  |
| DC1-CRAH-L2-2050 |  | DH1100 CRAH-DH-06 L2 Checklist | 3d | 2026-02-02 | 2026-02-04 | QTS-46521, QTS-15441, QTS-16241, QTS-17081 | 31d | 15d |  | UMAS |  |
| DC1-CRAH-L2-2060 |  | DH1100 CRAH-DH-07 L2 Checklist | 3d | 2026-02-02 | 2026-02-04 | QTS-46521, QTS-15441, QTS-16241, QTS-17081 | 31d | 15d |  | UMAS |  |
| DC1-CRAH-L2-2070 |  | DH1100 CRAH-DH-08 L2 Checklist | 3d | 2026-02-02 | 2026-02-04 | QTS-46521, QTS-15441, QTS-16241, QTS-17081 | 31d | 15d |  | UMAS |  |
| DC1-CRAH-L2-2080 |  | DH1100 CRAH-DH-09 L2 Checklist | 3d | 2026-02-02 | 2026-02-04 | QTS-46521, QTS-15441, QTS-16241, QTS-17081 | 31d | 15d |  | UMAS |  |
| DC1-CRAH-L2-2090 |  | DH1100 CRAH-DH-10 L2 Checklist | 3d | 2026-02-02 | 2026-02-04 | QTS-46521, QTS-15441, QTS-16241, QTS-17081 | 31d | 15d |  | UMAS |  |
| DC1-CRAH-L2-2100 |  | DH1100 CRAH-DH-11 L2 Checklist | 3d | 2026-02-02 | 2026-02-04 | QTS-46521, QTS-15441, QTS-16241, QTS-17081 | 31d | 15d |  | UMAS |  |
| DC1-CRAH-L2-2110 |  | DH1100 CRAH-DH-12 L2 Checklist | 3d | 2026-02-02 | 2026-02-04 | QTS-46521, QTS-15441, QTS-16241, QTS-17081 | 31d | 15d |  | UMAS |  |
| DC1-CRAH-L2-2120 |  | DH1100 CRAH-DH-13 L2 Checklist | 3d | 2026-02-02 | 2026-02-04 | QTS-46521, QTS-15441, QTS-16241, QTS-17081 | 31d | 15d |  | UMAS |  |
| DC1-CRAH-L2-2130 |  | DH1100 CRAH-DH-14 L2 Checklist | 3d | 2026-02-02 | 2026-02-04 | QTS-46521, QTS-15441, QTS-16241, QTS-17081 | 31d | 15d |  | UMAS |  |
| DC1-CRAH-L2-2140 |  | DH1100 CRAH-DH-15 L2 Checklist | 3d | 2026-02-02 | 2026-02-04 | QTS-46521, QTS-16231, QTS-16241, QTS-17081 | 31d | 12d |  | UMAS |  |
| DC1-CRAH-L2-2150 |  | DH1100 CRAH-DH-16 L2 Checklist | 3d | 2026-02-02 | 2026-02-04 | QTS-46521, QTS-16231, QTS-16241, QTS-17081 | 31d | 15d |  | UMAS |  |
| DC1-CRAH-L2-2160 |  | DH1100 CRAH-DH-17 L2 Checklist | 3d | 2026-02-02 | 2026-02-04 | QTS-46521, QTS-16231, QTS-16241, QTS-17081 | 31d | 15d |  | UMAS |  |
| DC1-CRAH-L2-2170 |  | DH1100 CRAH-DH-18 L2 Checklist | 3d | 2026-02-02 | 2026-02-04 | QTS-46521, QTS-16231, QTS-16241, QTS-17081 | 31d | 15d |  | UMAS |  |
| DC1-CRAH-L2-2180 |  | DH1100 CRAH-DH-19 L2 Checklist | 3d | 2026-02-02 | 2026-02-04 | QTS-46521, QTS-16231, QTS-16241, QTS-17081 | 31d | 15d |  | UMAS |  |
| DC1-CRAH-L2-2190 |  | DH1100 CRAH-DH-20 L2 Checklist | 3d | 2026-02-02 | 2026-02-04 | QTS-46521, QTS-16231, QTS-16241, QTS-17081 | 31d | 15d |  | UMAS |  |
| DC1-CRAH-L2-2200 |  | DH1100 CRAH-DH-21 L2 Checklist | 3d | 2026-02-02 | 2026-02-04 | QTS-46521, QTS-16231, QTS-16241, QTS-17081 | 31d | 15d |  | UMAS |  |
| DC1-CRAH-L2-2210 |  | DH1100 CRAH-DH-22 L2 Checklist | 3d | 2026-02-02 | 2026-02-04 | QTS-46521, QTS-16231, QTS-16241, QTS-17081 | 31d | 15d |  | UMAS |  |
| DC1-CRAH-L2-2220 |  | DH1100 CRAH-DH-23 L2 Checklist | 3d | 2026-02-02 | 2026-02-04 | QTS-46521, QTS-16231, QTS-16241, QTS-17081 | 31d | 15d |  | UMAS |  |
| DC1-CRAH-L2-2230 |  | DH1100 CRAH-DH-24 L2 Checklist | 3d | 2026-02-02 | 2026-02-04 | QTS-46521, QTS-16231, QTS-16241, QTS-17081 | 31d | 15d |  | UMAS |  |
| DC1-CRAH-L2-2240 |  | DH1100 CRAH-DH-25 L2 Checklist | 3d | 2026-02-02 | 2026-02-04 | QTS-46521, QTS-16231, QTS-16241, QTS-17081 | 31d | 15d |  | UMAS |  |
| DC1-CRAH-L2-2250 |  | DH1100 CRAH-DH-26 L2 Checklist | 3d | 2026-02-02 | 2026-02-04 | QTS-46521, QTS-16231, QTS-16241, QTS-17081 | 31d | 15d |  | UMAS |  |
| DC1-CRAH-L2-2260 |  | DH1100 CRAH-DH-27 L2 Checklist | 3d | 2026-02-02 | 2026-02-04 | QTS-46521, QTS-16231, QTS-16241, QTS-17081 | 31d | 15d |  | UMAS |  |
| DC1-CRAH-L2-2270 |  | DH1100 CRAH-DH-28 L2 Checklist | 3d | 2026-02-02 | 2026-02-04 | QTS-46521, QTS-16231, QTS-16241, QTS-17081 | 31d | 15d |  | UMAS |  |
| DC1-CRAH-L2-2280 |  | DH1100 CRAH-EG1102-01 L2 Checklist | 3d | 2026-02-02 | 2026-02-04 | QTS-46521, QTS-46511, QTS-16241, QTS-17081 | 31d | 12d |  | VER |  |
| DC1-CRAH-L2-2290 |  | DH1100 CRAH-EG1102-02 L2 Checklist | 3d | 2026-02-02 | 2026-02-04 | QTS-46521, QTS-46511, QTS-16241, QTS-17081 | 31d | 15d |  | VER |  |
| DC1-CRAH-L2-2300 |  | DH1100 CRAH-EG1102-03 L2 Checklist | 3d | 2026-02-02 | 2026-02-04 | QTS-46521, QTS-46511, QTS-16241, QTS-17081 | 31d | 15d |  | VER |  |
| DC1-CRAH-L2-2310 |  | DH1100 CRAH-EG1102-04 L2 Checklist | 3d | 2026-02-02 | 2026-02-04 | QTS-46521, QTS-46511, QTS-16241, QTS-17081 | 31d | 15d |  | VER |  |
| DC1-DOAS-L2-2000 |  | DH1100 DOAS-RT-01 L2 Checklist | 3d | 2026-02-05 | 2026-02-09 | QTS-46531, QTS-100420 | 28d | 12d |  | TAS |  |
| DC1-DOAS-L2-2010 |  | DH1100 DOAS-RT-02 L2 Checklist | 3d | 2026-02-05 | 2026-02-09 | QTS-46531, QTS-100420 | 28d | 12d |  | TAS |  |

Notes:
- DC1-CHWP-L2-Cx-2000: Steps: EC Installation Checklist; MC Installation Checklist; CC Installation Checklist; Vendor Pre-Energization Checklist; CXA Pre-Energization Inspection; PEI/Clean-Walk
- DC1-CHWP-L2-Cx-2010: Steps: EC Installation Checklist; MC Installation Checklist; CC Installation Checklist; Vendor Pre-Energization Checklist; CXA Pre-Energization Inspection; PEI/Clean-Walk
- DC1-CHWP-L2-Cx-2020: Steps: EC Installation Checklist; MC Installation Checklist; CC Installation Checklist; Vendor Pre-Energization Checklist; CXA Pre-Energization Inspection; PEI/Clean-Walk
- DC1-CHWP-L2-Cx-2030: Steps: EC Installation Checklist; MC Installation Checklist; CC Installation Checklist; Vendor Pre-Energization Checklist; CXA Pre-Energization Inspection; PEI/Clean-Walk
- DC1-CHWP-L2-Cx-2040: Steps: EC Installation Checklist; MC Installation Checklist; CC Installation Checklist; Vendor Pre-Energization Checklist; CXA Pre-Energization Inspection; PEI/Clean-Walk
- DC1-CHWP-L2-Cx-2050: Steps: EC Installation Checklist; MC Installation Checklist; CC Installation Checklist; Vendor Pre-Energization Checklist; CXA Pre-Energization Inspection; PEI/Clean-Walk
- DC1-CHWP-L2-Cx-2060: Steps: EC Installation Checklist; MC Installation Checklist; CC Installation Checklist; Vendor Pre-Energization Checklist; CXA Pre-Energization Inspection; PEI/Clean-Walk
- DC1-CRAH-L2-2000: Steps: EC Installation Checklist; MC Installation Checklist; CC Installation Checklist; Vendor Pre-Energization Checklist; CXA Pre-Energization Inspection; PEI/Clean-Walk
- DC1-CRAH-L2-2010: Steps: EC Installation Checklist; MC Installation Checklist; CC Installation Checklist; Vendor Pre-Energization Checklist; CXA Pre-Energization Inspection; PEI/Clean-Walk
- DC1-CRAH-L2-2020: Steps: EC Installation Checklist; MC Installation Checklist; CC Installation Checklist; Vendor Pre-Energization Checklist; CXA Pre-Energization Inspection; PEI/Clean-Walk
- DC1-CRAH-L2-2030: Steps: EC Installation Checklist; MC Installation Checklist; CC Installation Checklist; Vendor Pre-Energization Checklist; CXA Pre-Energization Inspection; PEI/Clean-Walk
- DC1-CRAH-L2-2040: Steps: EC Installation Checklist; MC Installation Checklist; CC Installation Checklist; Vendor Pre-Energization Checklist; CXA Pre-Energization Inspection; PEI/Clean-Walk
- DC1-CRAH-L2-2050: Steps: EC Installation Checklist; MC Installation Checklist; CC Installation Checklist; Vendor Pre-Energization Checklist; CXA Pre-Energization Inspection; PEI/Clean-Walk
- DC1-CRAH-L2-2060: Steps: EC Installation Checklist; MC Installation Checklist; CC Installation Checklist; Vendor Pre-Energization Checklist; CXA Pre-Energization Inspection; PEI/Clean-Walk
- DC1-CRAH-L2-2070: Steps: EC Installation Checklist; MC Installation Checklist; CC Installation Checklist; Vendor Pre-Energization Checklist; CXA Pre-Energization Inspection; PEI/Clean-Walk
- DC1-CRAH-L2-2080: Steps: EC Installation Checklist; MC Installation Checklist; CC Installation Checklist; Vendor Pre-Energization Checklist; CXA Pre-Energization Inspection; PEI/Clean-Walk
- DC1-CRAH-L2-2090: Steps: EC Installation Checklist; MC Installation Checklist; CC Installation Checklist; Vendor Pre-Energization Checklist; CXA Pre-Energization Inspection; PEI/Clean-Walk
- DC1-CRAH-L2-2100: Steps: EC Installation Checklist; MC Installation Checklist; CC Installation Checklist; Vendor Pre-Energization Checklist; CXA Pre-Energization Inspection; PEI/Clean-Walk
- DC1-CRAH-L2-2110: Steps: EC Installation Checklist; MC Installation Checklist; CC Installation Checklist; Vendor Pre-Energization Checklist; CXA Pre-Energization Inspection; PEI/Clean-Walk
- DC1-CRAH-L2-2120: Steps: EC Installation Checklist; MC Installation Checklist; CC Installation Checklist; Vendor Pre-Energization Checklist; CXA Pre-Energization Inspection; PEI/Clean-Walk
- DC1-CRAH-L2-2130: Steps: EC Installation Checklist; MC Installation Checklist; CC Installation Checklist; Vendor Pre-Energization Checklist; CXA Pre-Energization Inspection; PEI/Clean-Walk
- DC1-CRAH-L2-2140: Steps: EC Installation Checklist; MC Installation Checklist; CC Installation Checklist; Vendor Pre-Energization Checklist; CXA Pre-Energization Inspection; PEI/Clean-Walk
- DC1-CRAH-L2-2150: Steps: EC Installation Checklist; MC Installation Checklist; CC Installation Checklist; Vendor Pre-Energization Checklist; CXA Pre-Energization Inspection; PEI/Clean-Walk
- DC1-CRAH-L2-2160: Steps: EC Installation Checklist; MC Installation Checklist; CC Installation Checklist; Vendor Pre-Energization Checklist; CXA Pre-Energization Inspection; PEI/Clean-Walk
- DC1-CRAH-L2-2170: Steps: EC Installation Checklist; MC Installation Checklist; CC Installation Checklist; Vendor Pre-Energization Checklist; CXA Pre-Energization Inspection; PEI/Clean-Walk
- DC1-CRAH-L2-2180: Steps: EC Installation Checklist; MC Installation Checklist; CC Installation Checklist; Vendor Pre-Energization Checklist; CXA Pre-Energization Inspection; PEI/Clean-Walk
- DC1-CRAH-L2-2190: Steps: EC Installation Checklist; MC Installation Checklist; CC Installation Checklist; Vendor Pre-Energization Checklist; CXA Pre-Energization Inspection; PEI/Clean-Walk
- DC1-CRAH-L2-2200: Steps: EC Installation Checklist; MC Installation Checklist; CC Installation Checklist; Vendor Pre-Energization Checklist; CXA Pre-Energization Inspection; PEI/Clean-Walk
- DC1-CRAH-L2-2210: Steps: EC Installation Checklist; MC Installation Checklist; CC Installation Checklist; Vendor Pre-Energization Checklist; CXA Pre-Energization Inspection; PEI/Clean-Walk
- DC1-CRAH-L2-2220: Steps: EC Installation Checklist; MC Installation Checklist; CC Installation Checklist; Vendor Pre-Energization Checklist; CXA Pre-Energization Inspection; PEI/Clean-Walk
- DC1-CRAH-L2-2230: Steps: EC Installation Checklist; MC Installation Checklist; CC Installation Checklist; Vendor Pre-Energization Checklist; CXA Pre-Energization Inspection; PEI/Clean-Walk
- DC1-CRAH-L2-2240: Steps: EC Installation Checklist; MC Installation Checklist; CC Installation Checklist; Vendor Pre-Energization Checklist; CXA Pre-Energization Inspection; PEI/Clean-Walk
- DC1-CRAH-L2-2250: Steps: EC Installation Checklist; MC Installation Checklist; CC Installation Checklist; Vendor Pre-Energization Checklist; CXA Pre-Energization Inspection; PEI/Clean-Walk
- DC1-CRAH-L2-2260: Steps: EC Installation Checklist; MC Installation Checklist; CC Installation Checklist; Vendor Pre-Energization Checklist; CXA Pre-Energization Inspection; PEI/Clean-Walk
- DC1-CRAH-L2-2270: Steps: EC Installation Checklist; MC Installation Checklist; CC Installation Checklist; Vendor Pre-Energization Checklist; CXA Pre-Energization Inspection; PEI/Clean-Walk
- DC1-CRAH-L2-2280: Steps: EC Installation Checklist; MC Installation Checklist; CC Installation Checklist; Vendor Pre-Energization Checklist; CXA Pre-Energization Inspection; PEI/Clean-Walk
- DC1-CRAH-L2-2290: Steps: EC Installation Checklist; MC Installation Checklist; CC Installation Checklist; Vendor Pre-Energization Checklist; CXA Pre-Energization Inspection; PEI/Clean-Walk
- DC1-CRAH-L2-2300: Steps: EC Installation Checklist; MC Installation Checklist; CC Installation Checklist; Vendor Pre-Energization Checklist; CXA Pre-Energization Inspection; PEI/Clean-Walk
- DC1-CRAH-L2-2310: Steps: EC Installation Checklist; MC Installation Checklist; CC Installation Checklist; Vendor Pre-Energization Checklist; CXA Pre-Energization Inspection; PEI/Clean-Walk
- DC1-DOAS-L2-2000: Steps: EC Installation Checklist; MC Installation Checklist; CC Installation Checklist; Vendor Pre-Energization Checklist; CXA Pre-Energization Inspection; PEI/Clean-Walk
- DC1-DOAS-L2-2010: Steps: EC Installation Checklist; MC Installation Checklist; CC Installation Checklist; Vendor Pre-Energization Checklist; CXA Pre-Energization Inspection; PEI/Clean-Walk

| ID | WBS | Activity | Duration | Start | Finish | Predecessors | Total float | Free float | Layton Responsible Party | Vendor Responsible Party |
| --- | --- | --- | --- | --- | --- | --- | --- | --- | --- | --- |
|  | 03 | **Data Hall 1100 Cx L3** |  | 2026-01-29 | 2026-05-11 |  |  |  |  |  |
|  | 01 | **DC1-DH1100 Generators Cx L3** |  | 2026-02-19 | 2026-03-04 |  |  |  |  |  |
|  | 01 | **DC1-DH1100-GEN-A11 Cx L3** |  | 2026-02-19 | 2026-02-24 |  |  |  |  |  |
| DC1-GEN-L3-CX-2000 |  | DC1-GEN-A11 FTE | 1d | 2026-02-19 | 2026-02-19 | DC1-GEN-L2-2000, DC1-SWD-L3-CX-2000 | 26d | 0d | Riley Warring | ROS |
| DC1-GEN-L3-CX-2010 |  | DC1-GEN-A11 L3 Startup | 2d | 2026-02-20 | 2026-02-23 | DC1-GEN-L3-CX-2000 | 26d | 0d | Riley Warring | HLT |
| DC1-GEN-L3-CX-2020 |  | DC1-GEN-A11 BMS/EPMS | 1d | 2026-02-24 | 2026-02-24 | DC1-GEN-L3-CX-2010 | 26d | 18d | Riley Warring | PRM |
|  | 02 | **DC1-DH1100-GEN-B11 Cx L3** |  | 2026-02-20 | 2026-02-25 |  |  |  |  |  |
| DC1-GEN-L3-CX-2030 |  | DC1-GEN-B11 FTE | 1d | 2026-02-20 | 2026-02-20 | DC1-GEN-L2-2010, DC1-SWD-L3-CX-2030 | 25d | 0d | Riley Warring | ROS |
| DC1-GEN-L3-CX-2040 |  | DC1-GEN-B11 L3 Startup | 2d | 2026-02-23 | 2026-02-24 | DC1-GEN-L3-CX-2030 | 25d | 0d | Riley Warring | HLT |
| DC1-GEN-L3-CX-2050 |  | DC1-GEN-B11 BMS/EPMS | 1d | 2026-02-25 | 2026-02-25 | DC1-GEN-L3-CX-2040 | 25d | 17d | Riley Warring | PRM |
|  | 03 | **DC1-DH1100-GEN-C11 Cx L3** |  | 2026-02-23 | 2026-02-26 |  |  |  |  |  |
| DC1-GEN-L3-CX-2060 |  | DC1-GEN-C11 FTE | 1d | 2026-02-23 | 2026-02-23 | DC1-GEN-L2-2020, DC1-SWD-L3-CX-2060 | 24d | 0d | Riley Warring | ROS |
| DC1-GEN-L3-CX-2070 |  | DC1-GEN-C11 L3 Startup | 2d | 2026-02-24 | 2026-02-25 | DC1-GEN-L3-CX-2060 | 24d | 0d | Riley Warring | HLT |
| DC1-GEN-L3-CX-2080 |  | DC1-GEN-C11 BMS/EPMS | 1d | 2026-02-26 | 2026-02-26 | DC1-GEN-L3-CX-2070 | 24d | 16d | Riley Warring | PRM |
|  | 04 | **DC1-DH1100-GEN-D11 Cx L3** |  | 2026-02-24 | 2026-02-27 |  |  |  |  |  |
| DC1-GEN-L3-CX-2090 |  | DC1-GEN-D11 FTE | 1d | 2026-02-24 | 2026-02-24 | DC1-GEN-L2-2030, DC1-SWD-L3-CX-2090 | 23d | 0d | Riley Warring | ROS |
| DC1-GEN-L3-CX-2100 |  | DC1-GEN-D11 L3 Startup | 2d | 2026-02-25 | 2026-02-26 | DC1-GEN-L3-CX-2090 | 23d | 0d | Riley Warring | HLT |
| DC1-GEN-L3-CX-2110 |  | DC1-GEN-D11 BMS/EPMS | 1d | 2026-02-27 | 2026-02-27 | DC1-GEN-L3-CX-2100 | 23d | 15d | Riley Warring | PRM |
|  | 05 | **DC1-DH1100-GEN-E11 Cx L3** |  | 2026-02-25 | 2026-03-02 |  |  |  |  |  |
| DC1-GEN-L3-CX-2120 |  | DC1-GEN-E11 FTE | 1d | 2026-02-25 | 2026-02-25 | DC1-GEN-L2-2040, DC1-SWD-L3-CX-2120 | 22d | 0d | Riley Warring | ROS |
| DC1-GEN-L3-CX-2130 |  | DC1-GEN-E11 L3 Startup | 2d | 2026-02-26 | 2026-02-27 | DC1-GEN-L3-CX-2120 | 22d | 0d | Riley Warring | HLT |
| DC1-GEN-L3-CX-2140 |  | DC1-GEN-E11 BMS/EPMS | 1d | 2026-03-02 | 2026-03-02 | DC1-GEN-L3-CX-2130 | 22d | 14d | Riley Warring | PRM |
|  | 06 | **DC1-DH1100-GEN-F11 Cx L3** |  | 2026-02-26 | 2026-03-03 |  |  |  |  |  |
| DC1-GEN-L3-CX-2150 |  | DC1-GEN-F11 FTE | 1d | 2026-02-26 | 2026-02-26 | DC1-GEN-L2-2050, DC1-SWD-L3-CX-2150 | 21d | 0d | Riley Warring | ROS |
| DC1-GEN-L3-CX-2160 |  | DC1-GEN-F11 L3 Startup | 2d | 2026-02-27 | 2026-03-02 | DC1-GEN-L3-CX-2150 | 21d | 0d | Riley Warring | HLT |
| DC1-GEN-L3-CX-2170 |  | DC1-GEN-F11 BMS/EPMS | 1d | 2026-03-03 | 2026-03-03 | DC1-GEN-L3-CX-2160 | 21d | 13d | Riley Warring | PRM |

Notes:
- DC1-GEN-L3-CX-2010: Steps: EC Startup Report; Vendor Startup
- DC1-GEN-L3-CX-2040: Steps: EC Startup Report; Vendor Startup
- DC1-GEN-L3-CX-2070: Steps: EC Startup Report (done); Vendor Startup
- DC1-GEN-L3-CX-2100: Steps: EC Startup Report; Vendor Startup
- DC1-GEN-L3-CX-2130: Steps: EC Startup Report; Vendor Startup
- DC1-GEN-L3-CX-2160: Steps: EC Startup Report; Vendor Startup

| ID | WBS | Activity | Duration | Start | Finish | Predecessors | Total float | Free float | Layton Responsible Party | Vendor Responsible Party | Notes |
| --- | --- | --- | --- | --- | --- | --- | --- | --- | --- | --- | --- |
|  | 07 | **DC1-DH1100-GEN-R11 Cx L3** |  | 2026-02-27 | 2026-03-04 |  |  |  |  |  |  |
| DC1-GEN-L3-CX-2180 |  | DC1-GEN-R11 FTE | 1d | 2026-02-27 | 2026-02-27 | DC1-GEN-L2-2060, DC1-SWD-L3-CX-2180 | 20d | 0d | Riley Warring | ROS |  |
| DC1-GEN-L3-CX-2190 |  | DC1-GEN-R11 L3 Startup | 2d | 2026-03-02 | 2026-03-03 | DC1-GEN-L3-CX-2180 | 20d | 0d | Riley Warring | HLT |  |
| DC1-GEN-L3-CX-2200 |  | DC1-GEN-R11 BMS/EPMS | 1d | 2026-03-04 | 2026-03-04 | DC1-GEN-L3-CX-2190 | 20d | 12d | Riley Warring | PRM |  |
|  | 02 | **DC1-DH1100 MV XFMRs Cx L3** |  | 2026-01-29 | 2026-02-03 |  |  |  |  |  |  |
|  | 01 | **DC1-DH1100 MV-XFMR-A11 Cx L3** |  | 2026-01-29 | 2026-02-03 |  |  |  |  |  |  |
| DC1-XFMR-L3-CX-2000 |  | DC1-XFMR-A11 FTE | 1d | 2026-01-29 | 2026-01-29 | DC1-XFMR-L2-2000, DC1-XFMR-L2-2050, DC1-SWD-L2-2050 | 13d | 0d | Riley Warring | ROS | MGV-FTE |
| DC1-XFMR-L3-CX-2010 |  | DC1-XFMR-A11 L3 Startup | 2d | 2026-01-30 | 2026-02-02 | DC1-XFMR-L3-CX-2000 | 41d | 0d | Riley Warring | VTC |  |
| DC1-XFMR-L3-CX-2020 |  | DC1-XFMR-A11 BMS/EPMS | 1d | 2026-02-03 | 2026-02-03 | DC1-XFMR-L3-CX-2010 | 41d | 33d | Riley Warring | PRM |  |
|  | 02 | **DC1-DH1100 MV-XFMR-B11 Cx L3** |  | 2026-01-29 | 2026-02-03 |  |  |  |  |  |  |
| DC1-XFMR-L3-CX-2030 |  | DC1-XFMR-B11 FTE | 1d | 2026-01-29 | 2026-01-29 | DC1-XFMR-L2-2010 SS, DC1-SWD-L2-2010, DC1-XFMR-L3-CX-2000 SS | 15d | 0d | Riley Warring | ROS | MGV-FTE |
| DC1-XFMR-L3-CX-2040 |  | DC1-XFMR-B11 L3 Startup | 2d | 2026-01-30 | 2026-02-02 | DC1-XFMR-L3-CX-2030 | 41d | 0d | Riley Warring | VTC |  |
| DC1-XFMR-L3-CX-2050 |  | DC1-XFMR-B11 BMS/EPMS | 1d | 2026-02-03 | 2026-02-03 | DC1-XFMR-L3-CX-2040 | 41d | 33d | Riley Warring | PRM |  |
|  | 03 | **DC1-DH1100 MV-XFMR-C11 Cx L3** |  | 2026-01-29 | 2026-02-03 |  |  |  |  |  |  |
| DC1-XFMR-L3-CX-2060 |  | DC1-XFMR-C11 FTE | 1d | 2026-01-29 | 2026-01-29 | DC1-XFMR-L2-2020 SS, DC1-SWD-L2-2020, DC1-XFMR-L3-CX-2030 SS | 15d | 0d | Riley Warring | ROS | MGV-FTE |
| DC1-XFMR-L3-CX-2070 |  | DC1-XFMR-C11 L3 Startup | 2d | 2026-01-30 | 2026-02-02 | DC1-XFMR-L3-CX-2060 | 41d | 0d | Riley Warring | VTC |  |
| DC1-XFMR-L3-CX-2080 |  | DC1-XFMR-C11 BMS/EPMS | 1d | 2026-02-03 | 2026-02-03 | DC1-XFMR-L3-CX-2070 | 41d | 33d | Riley Warring | PRM |  |
|  | 04 | **DC1-DH1100 MV-XFMR-D11 Cx L3** |  | 2026-01-29 | 2026-02-03 |  |  |  |  |  |  |
| DC1-XFMR-L3-CX-2090 |  | DC1-XFMR-D11 FTE | 1d | 2026-01-29 | 2026-01-29 | DC1-XFMR-L2-2030 SS, DC1-SWD-L2-2030, DC1-XFMR-L3-CX-2060 SS | 15d | 0d | Riley Warring | ROS | MGV-FTE |
| DC1-XFMR-L3-CX-2100 |  | DC1-XFMR-D11 L3 Startup | 2d | 2026-01-30 | 2026-02-02 | DC1-XFMR-L3-CX-2090 | 41d | 0d | Riley Warring | VTC |  |
| DC1-XFMR-L3-CX-2110 |  | DC1-XFMR-D11 BMS/EPMS | 1d | 2026-02-03 | 2026-02-03 | DC1-XFMR-L3-CX-2100 | 41d | 33d | Riley Warring | PRM |  |
|  | 05 | **DC1-DH1100 MV-XFMR-E11 Cx L3** |  | 2026-01-29 | 2026-02-03 |  |  |  |  |  |  |
| DC1-XFMR-L3-CX-2120 |  | DC1-XFMR-E11 FTE | 1d | 2026-01-29 | 2026-01-29 | DC1-XFMR-L2-2040 SS, DC1-SWD-L2-2040, DC1-XFMR-L3-CX-2090 SS | 15d | 0d | Riley Warring | ROS | MGV-FTE |
| DC1-XFMR-L3-CX-2130 |  | DC1-XFMR-E11 L3 Startup | 2d | 2026-01-30 | 2026-02-02 | DC1-XFMR-L3-CX-2120 | 41d | 0d | Riley Warring | VTC |  |
| DC1-XFMR-L3-CX-2140 |  | DC1-XFMR-E11 BMS/EPMS | 1d | 2026-02-03 | 2026-02-03 | DC1-XFMR-L3-CX-2130 | 41d | 33d | Riley Warring | PRM |  |

Notes:
- DC1-GEN-L3-CX-2190: Steps: EC Startup Report; Vendor Startup
- DC1-XFMR-L3-CX-2010: Steps: EC Startup Report; Vendor Startup
- DC1-XFMR-L3-CX-2040: Steps: EC Startup Report; Vendor Startup
- DC1-XFMR-L3-CX-2070: Steps: EC Startup Report; Vendor Startup
- DC1-XFMR-L3-CX-2100: Steps: EC Startup Report; Vendor Startup
- DC1-XFMR-L3-CX-2130: Steps: EC Startup Report; Vendor Startup

| ID | WBS | Activity | Duration | Start | Finish | Predecessors | Total float | Free float | Notes | Layton Responsible Party | Vendor Responsible Party |
| --- | --- | --- | --- | --- | --- | --- | --- | --- | --- | --- | --- |
|  | 06 | **DC1-DH1100 MV-XFMR-F11 Cx L3** |  | 2026-01-29 | 2026-02-03 |  |  |  |  |  |  |
| DC1-XFMR-L3-CX-2150 |  | DC1-XFMR-F11 FTE | 1d | 2026-01-29 | 2026-01-29 | DC1-XFMR-L2-2050 SS, DC1-SWD-L2-2050 SS, DC1-XFMR-L3-CX-2120 SS | 15d | 0d | MGV-FTE | Riley Warring | ROS |
| DC1-XFMR-L3-CX-2160 |  | DC1-XFMR-F11 L3 Startup | 2d | 2026-01-30 | 2026-02-02 | DC1-XFMR-L3-CX-2150 | 41d | 0d |  | Riley Warring | VTC |
| DC1-XFMR-L3-CX-2170 |  | DC1-XFMR-F11 BMS/EPMS | 1d | 2026-02-03 | 2026-02-03 | DC1-XFMR-L3-CX-2160 | 41d | 33d |  | Riley Warring | PRM |
|  | 07 | **DC1-DH1100 MV-XFMR-R11 Cx L3** |  | 2026-01-29 | 2026-02-03 |  |  |  |  |  |  |
| DC1-XFMR-L3-CX-2180 |  | DC1-XFMR-R11 FTE | 1d | 2026-01-29 | 2026-01-29 | DC1-XFMR-L2-2060 SS, DC1-XFMR-L3-CX-2150 SS | 16d | 0d | MGV-FTE | Riley Warring | ROS |
| DC1-XFMR-L3-CX-2190 |  | DC1-XFMR-R11 L3 Startup | 2d | 2026-01-30 | 2026-02-02 | DC1-XFMR-L3-CX-2180 | 41d | 0d |  | Riley Warring | VTC |
| DC1-XFMR-L3-CX-2200 |  | DC1-XFMR-R11 BMS/EPMS | 1d | 2026-02-03 | 2026-02-03 | DC1-XFMR-L3-CX-2190 | 41d | 33d |  | Riley Warring | PRM |
|  | 03 | **DC1-DH1100 PODS Cx L3** |  | 2026-02-12 | 2026-02-23 |  |  |  |  |  |  |
|  | 01 | **DC1-DH1100 SWDs Cx L3** |  | 2026-02-12 | 2026-02-17 |  |  |  |  |  |  |
|  | 01 | **DC1-DH1100-SWD-A11 Cx L3** |  | 2026-02-12 | 2026-02-17 |  |  |  |  |  |  |
| DC1-SWD-L3-CX-2000 |  | DC1-SWD-A11 FTE | 1d | 2026-02-12 | 2026-02-12 | QTS-1001600, QTS-1100, DC1-SWD-L2-2000, DC1-XFMR-L3-CX-2000 SS | 3d | 0d |  | Riley Warring | ROS |
| DC1-SWD-L3-CX-2010 |  | DC1-SWD-A11 L3 Startup | 2d | 2026-02-13 | 2026-02-16 | DC1-SWD-L3-CX-2000, QTS-1671 | 31d | 0d |  | Riley Warring | SIE |
| DC1-SWD-L3-CX-2020 |  | DC1-SWD-A11 BMS/EPMS | 1d | 2026-02-17 | 2026-02-17 | DC1-SWD-L3-CX-2010 | 31d | 23d |  | Riley Warring | PRM |
|  | 02 | **DC1-DH1100-SWD-B11 Cx L3** |  | 2026-02-12 | 2026-02-17 |  |  |  |  |  |  |
| DC1-SWD-L3-CX-2030 |  | DC1-SWD-B11 FTE | 1d | 2026-02-12 | 2026-02-12 | QTS-1001600, QTS-1100, DC1-SWD-L2-2010, DC1-XFMR-L3-CX-2030 SS | 5d | 0d |  | Riley Warring | ROS |
| DC1-SWD-L3-CX-2040 |  | DC1-SWD-B11 L3 Startup | 2d | 2026-02-13 | 2026-02-16 | DC1-SWD-L3-CX-2030, QTS-1671 | 31d | 0d |  | Riley Warring | SIE |
| DC1-SWD-L3-CX-2050 |  | DC1-SWD-B11 BMS/EPMS | 1d | 2026-02-17 | 2026-02-17 | DC1-SWD-L3-CX-2040 | 31d | 23d |  | Riley Warring | PRM |
|  | 03 | **DC1-DH1100-SWD-C11 Cx L3** |  | 2026-02-12 | 2026-02-17 |  |  |  |  |  |  |
| DC1-SWD-L3-CX-2060 |  | DC1-SWD-C11 FTE | 1d | 2026-02-12 | 2026-02-12 | QTS-1001600, QTS-1100, DC1-SWD-L2-2020, DC1-XFMR-L3-CX-2060 SS | 5d | 0d |  | Riley Warring | ROS |
| DC1-SWD-L3-CX-2070 |  | DC1-SWD-C11 L3 Startup | 2d | 2026-02-13 | 2026-02-16 | DC1-SWD-L3-CX-2060, QTS-1671 | 31d | 0d |  | Riley Warring | SIE |
| DC1-SWD-L3-CX-2080 |  | DC1-SWD-C11 BMS/EPMS | 1d | 2026-02-17 | 2026-02-17 | DC1-SWD-L3-CX-2070 | 31d | 23d |  | Riley Warring | PRM |
|  | 04 | **DC1-DH1100-SWD-D11 Cx L3** |  | 2026-02-12 | 2026-02-17 |  |  |  |  |  |  |
| DC1-SWD-L3-CX-2090 |  | DC1-SWD-D11 FTE | 1d | 2026-02-12 | 2026-02-12 | QTS-1001600, QTS-1100, DC1-SWD-L2-2030, DC1-XFMR-L3-CX-2090 SS | 5d | 0d |  | Riley Warring | ROS |
| DC1-SWD-L3-CX-2100 |  | DC1-SWD-D11 L3 Startup | 2d | 2026-02-13 | 2026-02-16 | DC1-SWD-L3-CX-2090, QTS-1671 | 31d | 0d |  | Riley Warring | SIE |
| DC1-SWD-L3-CX-2110 |  | DC1-SWD-D11 BMS/EPMS | 1d | 2026-02-17 | 2026-02-17 | DC1-SWD-L3-CX-2100 | 31d | 23d |  | Riley Warring | PRM |

Notes:
- DC1-XFMR-L3-CX-2160: Steps: EC Startup Report; Vendor Startup
- DC1-XFMR-L3-CX-2190: Steps: EC Startup Report; Vendor Startup
- DC1-SWD-L3-CX-2010: Steps: EC Startup Report; Vendor Startup
- DC1-SWD-L3-CX-2040: Steps: EC Startup Report; Vendor Startup
- DC1-SWD-L3-CX-2070: Steps: EC Startup Report; Vendor Startup
- DC1-SWD-L3-CX-2100: Steps: EC Startup Report; Vendor Startup

| ID | WBS | Activity | Duration | Start | Finish | Predecessors | Total float | Free float | Layton Responsible Party | Vendor Responsible Party | Notes |
| --- | --- | --- | --- | --- | --- | --- | --- | --- | --- | --- | --- |
|  | 05 | **DC1-DH1100-SWD-E11 Cx L3** |  | 2026-02-12 | 2026-02-17 |  |  |  |  |  |  |
| DC1-SWD-L3-CX-2120 |  | DC1-SWD-E11 FTE | 1d | 2026-02-12 | 2026-02-12 | QTS-1001600, QTS-1100, DC1-SWD-L2-2040, DC1-XFMR-L3-CX-2120 SS | 5d | 0d | Riley Warring | ROS |  |
| DC1-SWD-L3-CX-2130 |  | DC1-SWD-E11 L3 Startup | 2d | 2026-02-13 | 2026-02-16 | DC1-SWD-L3-CX-2120, QTS-1671 | 31d | 0d | Riley Warring | SIE |  |
| DC1-SWD-L3-CX-2140 |  | DC1-SWD-E11 BMS/EPMS | 1d | 2026-02-17 | 2026-02-17 | DC1-SWD-L3-CX-2130 | 31d | 23d | Riley Warring | PRM |  |
|  | 06 | **DC1-DH1100-SWD-F11 Cx L3** |  | 2026-02-12 | 2026-02-17 |  |  |  |  |  |  |
| DC1-SWD-L3-CX-2150 |  | DC1-SWD-F11 FTE | 1d | 2026-02-12 | 2026-02-12 | QTS-1001600, QTS-1100, DC1-SWD-L2-2050, DC1-XFMR-L3-CX-2150 SS | 5d | 0d | Riley Warring | ROS |  |
| DC1-SWD-L3-CX-2160 |  | DC1-SWD-F11 L3 Startup | 2d | 2026-02-13 | 2026-02-16 | DC1-SWD-L3-CX-2150, QTS-1671 | 31d | 0d | Riley Warring | SIE |  |
| DC1-SWD-L3-CX-2170 |  | DC1-SWD-F11 BMS/EPMS | 1d | 2026-02-17 | 2026-02-17 | DC1-SWD-L3-CX-2160 | 31d | 23d | Riley Warring | PRM |  |
|  | 07 | **DC1-DH1100-SWD-R11 Cx L3** |  | 2026-02-12 | 2026-02-17 |  |  |  |  |  |  |
| DC1-SWD-L3-CX-2180 |  | DC1-SWD-R11 FTE | 1d | 2026-02-12 | 2026-02-12 | QTS-1001600, QTS-1100, DC1-SWD-L2-2060, DC1-XFMR-L3-CX-2180 SS | 6d | 0d | Riley Warring | ROS |  |
| DC1-SWD-L3-CX-2190 |  | DC1-SWD-R11 L3 Startup | 2d | 2026-02-13 | 2026-02-16 | DC1-SWD-L3-CX-2180, QTS-1671 | 31d | 0d | Riley Warring | SIE |  |
| DC1-SWD-L3-CX-2200 |  | DC1-SWD-R11 BMS/EPMS | 1d | 2026-02-17 | 2026-02-17 | DC1-SWD-L3-CX-2190 | 31d | 23d | Riley Warring | PRM |  |
|  | 02 | **DC1-DH1100 MOD-01s Cx L3** |  | 2026-02-12 | 2026-02-17 |  |  |  |  |  |  |
|  | 01 | **DC1-DH1100-MOD-A11-01 Cx L3** |  | 2026-02-12 | 2026-02-17 |  |  |  |  |  |  |
| DC1-MOD1-L3-CX-2000 |  | DC1-MOD-01-A11 FTE | 1d | 2026-02-12 | 2026-02-12 | DC1-MOD01-L2-2000, DC1-SWD-L3-CX-2000 SS | 3d | 0d | Riley Warring | ROS |  |
| DC1-MOD1-L3-CX-2010 |  | DC1-MOD-01-A11 L3 Startup | 2d | 2026-02-13 | 2026-02-16 | DC1-MOD1-L3-CX-2000 | 31d | 0d | Riley Warring | PHE | Vendor Only |
| DC1-MOD1-L3-CX-2020 |  | DC1-MOD-01-A11 BMS/EPMS | 1d | 2026-02-17 | 2026-02-17 | DC1-MOD1-L3-CX-2010 | 31d | 23d | Riley Warring | PRM |  |
|  | 02 | **DC1-DH1100-MOD-B11-01 Cx L3** |  | 2026-02-12 | 2026-02-17 |  |  |  |  |  |  |
| DC1-MOD1-L3-CX-2030 |  | DC1-MOD-01-B11 FTE | 1d | 2026-02-12 | 2026-02-12 | DC1-MOD01-L2-2010, DC1-SWD-L3-CX-2030 SS | 5d | 0d | Riley Warring | ROS |  |
| DC1-MOD1-L3-CX-2040 |  | DC1-MOD-01-B11 L3 Startup | 2d | 2026-02-13 | 2026-02-16 | DC1-MOD1-L3-CX-2030 | 31d | 0d | Riley Warring | PHE | Vendor Only |
| DC1-MOD1-L3-CX-2050 |  | DC1-MOD-01-B11 BMS/EPMS | 1d | 2026-02-17 | 2026-02-17 | DC1-MOD1-L3-CX-2040 | 31d | 23d | Riley Warring | PRM |  |
|  | 03 | **DC1-DH1100-MOD-C11-01 Cx L3** |  | 2026-02-12 | 2026-02-17 |  |  |  |  |  |  |
| DC1-MOD1-L3-CX-2060 |  | DC1-MOD-01-C11 FTE | 1d | 2026-02-12 | 2026-02-12 | DC1-MOD01-L2-2020, DC1-SWD-L3-CX-2060 SS | 5d | 0d | Riley Warring | ROS |  |
| DC1-MOD1-L3-CX-2070 |  | DC1-MOD-01-C11 L3 Startup | 2d | 2026-02-13 | 2026-02-16 | DC1-MOD1-L3-CX-2060 | 31d | 0d | Riley Warring | PHE | Vendor Only |
| DC1-MOD1-L3-CX-2080 |  | DC1-MOD-01-C11 BMS/EPMS | 1d | 2026-02-17 | 2026-02-17 | DC1-MOD1-L3-CX-2070 | 31d | 23d | Riley Warring | PRM |  |

Notes:
- DC1-SWD-L3-CX-2130: Steps: EC Startup Report; Vendor Startup
- DC1-SWD-L3-CX-2160: Steps: EC Startup Report; Vendor Startup
- DC1-SWD-L3-CX-2190: Steps: EC Startup Report; Vendor Startup

| ID | WBS | Activity | Duration | Start | Finish | Predecessors | Total float | Free float | Layton Responsible Party | Vendor Responsible Party | Notes |
| --- | --- | --- | --- | --- | --- | --- | --- | --- | --- | --- | --- |
|  | 04 | **DC1-DH1100-MOD-D11-01 Cx L3** |  | 2026-02-12 | 2026-02-17 |  |  |  |  |  |  |
| DC1-MOD1-L3-CX-2090 |  | DC1-MOD-01-D11 FTE | 1d | 2026-02-12 | 2026-02-12 | DC1-MOD01-L2-2030, DC1-SWD-L3-CX-2090 SS | 5d | 0d | Riley Warring | ROS |  |
| DC1-MOD1-L3-CX-2100 |  | DC1-MOD-01-D11 L3 Startup | 2d | 2026-02-13 | 2026-02-16 | DC1-MOD1-L3-CX-2090 | 31d | 0d | Riley Warring | PHE | Vendor Only |
| DC1-MOD1-L3-CX-2110 |  | DC1-MOD-01-D11 BMS/EPMS | 1d | 2026-02-17 | 2026-02-17 | DC1-MOD1-L3-CX-2100 | 31d | 23d | Riley Warring | PRM |  |
|  | 05 | **DC1-DH1100-MOD-E11-01 Cx L3** |  | 2026-02-12 | 2026-02-17 |  |  |  |  |  |  |
| DC1-MOD1-L3-CX-2120 |  | DC1-MOD-01-E11 FTE | 1d | 2026-02-12 | 2026-02-12 | DC1-MOD01-L2-2040, DC1-SWD-L3-CX-2120 SS | 5d | 0d | Riley Warring | ROS |  |
| DC1-MOD1-L3-CX-2130 |  | DC1-MOD-01-E11 L3 Startup | 2d | 2026-02-13 | 2026-02-16 | DC1-MOD1-L3-CX-2120 | 31d | 0d | Riley Warring | PHE | Vendor Only |
| DC1-MOD1-L3-CX-2140 |  | DC1-MOD-01-E11 BMS/EPMS | 1d | 2026-02-17 | 2026-02-17 | DC1-MOD1-L3-CX-2130 | 31d | 23d | Riley Warring | PRM |  |
|  | 06 | **DC1-DH1100-MOD-F11-01 Cx L3** |  | 2026-02-12 | 2026-02-17 |  |  |  |  |  |  |
| DC1-MOD1-L3-CX-2150 |  | DC1-MOD-01-F11 FTE | 1d | 2026-02-12 | 2026-02-12 | DC1-MOD01-L2-2050, DC1-SWD-L3-CX-2150 SS | 5d | 0d | Riley Warring | ROS |  |
| DC1-MOD1-L3-CX-2160 |  | DC1-MOD-01-F11 L3 Startup | 2d | 2026-02-13 | 2026-02-16 | DC1-MOD1-L3-CX-2150 | 31d | 0d | Riley Warring | PHE | Vendor Only |
| DC1-MOD1-L3-CX-2170 |  | DC1-MOD-01-F11 BMS/EPMS | 1d | 2026-02-17 | 2026-02-17 | DC1-MOD1-L3-CX-2160 | 31d | 23d | Riley Warring | PRM |  |
|  | 07 | **DC1-DH1100-MOD-R11-01 Cx L3** |  | 2026-02-12 | 2026-02-17 |  |  |  |  |  |  |
| DC1-MOD1-L3-CX-2180 |  | DC1-MOD-01-R11 FTE | 1d | 2026-02-12 | 2026-02-12 | DC1-MOD01-L2-2060, DC1-SWD-L3-CX-2180 SS | 6d | 0d | Riley Warring | ROS |  |
| DC1-MOD1-L3-CX-2190 |  | DC1-MOD-01-R11 L3 Startup | 2d | 2026-02-13 | 2026-02-16 | DC1-MOD1-L3-CX-2180 | 31d | 0d | Riley Warring | PHE | Vendor Only |
| DC1-MOD1-L3-CX-2200 |  | DC1-MOD-01-R11 BMS/EPMS | 1d | 2026-02-17 | 2026-02-17 | DC1-MOD1-L3-CX-2190 | 31d | 23d | Riley Warring | PRM |  |
|  | 03 | **DC1-DH1100 UPS-M Cx L3** |  | 2026-02-17 | 2026-02-23 |  |  |  |  |  |  |
|  | 01 | **DC1-DH1100-UPS-M-A11-01 Cx L3** |  | 2026-02-18 | 2026-02-23 |  |  |  |  |  |  |
| DC1-UPSM-L3-CX-2000 |  | DC1-UPS-M-A11 FTE | 1d | 2026-02-18 | 2026-02-18 | DC1-UPS-M-L2-2000, DC1-MOD1-L3-CX-2000, DC1-COMP-L3-CX-2010, DC1-FAN-L3-CX-2010 | 3d | 0d | Riley Warring | ROS |  |
| DC1-UPSM-L3-CX-2010 |  | DC1-UPS-M-A11 L3 Startup | 2d | 2026-02-19 | 2026-02-20 | DC1-UPSM-L3-CX-2000 | 27d | 0d | Riley Warring | VER |  |
| DC1-UPSM-L3-CX-2020 |  | DC1-UPS-M-A11 BMS/EPMS | 1d | 2026-02-23 | 2026-02-23 | DC1-UPSM-L3-CX-2010 | 27d | 19d | Riley Warring | PRM |  |
|  | 02 | **DC1-DH1100-UPS-M-B11-01 Cx L3** |  | 2026-02-17 | 2026-02-20 |  |  |  |  |  |  |
| DC1-UPSM-L3-CX-2030 |  | DC1-UPS-M-B11 FTE | 1d | 2026-02-17 | 2026-02-17 | DC1-UPS-M-L2-2010, DC1-MOD1-L3-CX-2030, DC1-COMP-L3-CX-2040, DC1-FAN-L3-CX-2040 | 5d | 0d | Riley Warring | ROS |  |
| DC1-UPSM-L3-CX-2040 |  | DC1-UPS-M-B11 L3 Startup | 2d | 2026-02-18 | 2026-02-19 | DC1-UPSM-L3-CX-2030 | 28d | 0d | Riley Warring | VER |  |
| DC1-UPSM-L3-CX-2050 |  | DC1-UPS-M-B11 BMS/EPMS | 1d | 2026-02-20 | 2026-02-20 | DC1-UPSM-L3-CX-2040 | 28d | 20d | Riley Warring | PRM |  |

Notes:
- DC1-UPSM-L3-CX-2010: Steps: EC Startup Report; Vendor Startup
- DC1-UPSM-L3-CX-2040: Steps: EC Startup Report; Vendor Startup

| ID | WBS | Activity | Duration | Start | Finish | Predecessors | Total float | Free float | Layton Responsible Party | Vendor Responsible Party | Notes |
| --- | --- | --- | --- | --- | --- | --- | --- | --- | --- | --- | --- |
|  | 03 | **DC1-DH1100-UPS-M-C11-01 Cx L3** |  | 2026-02-17 | 2026-02-20 |  |  |  |  |  |  |
| DC1-UPSM-L3-CX-2060 |  | DC1-UPS-M-C11 FTE | 1d | 2026-02-17 | 2026-02-17 | DC1-UPS-M-L2-2020, DC1-MOD1-L3-CX-2060, DC1-COMP-L3-CX-2070, DC1-FAN-L3-CX-2070 | 5d | 0d | Riley Warring | ROS |  |
| DC1-UPSM-L3-CX-2070 |  | DC1-UPS-M-C11 L3 Startup | 2d | 2026-02-18 | 2026-02-19 | DC1-UPSM-L3-CX-2060 | 28d | 0d | Riley Warring | VER |  |
| DC1-UPSM-L3-CX-2080 |  | DC1-UPS-M-C11 BMS/EPMS | 1d | 2026-02-20 | 2026-02-20 | DC1-UPSM-L3-CX-2070 | 28d | 20d | Riley Warring | PRM |  |
|  | 04 | **DC1-DH1100-UPS-M-D11-01 Cx L3** |  | 2026-02-17 | 2026-02-20 |  |  |  |  |  |  |
| DC1-UPSM-L3-CX-2090 |  | DC1-UPS-M-D11 FTE | 1d | 2026-02-17 | 2026-02-17 | DC1-UPS-M-L2-2030, DC1-MOD1-L3-CX-2090, DC1-COMP-L3-CX-2100, DC1-FAN-L3-CX-2100 | 5d | 0d | Riley Warring | ROS |  |
| DC1-UPSM-L3-CX-2100 |  | DC1-UPS-M-D11 L3 Startup | 2d | 2026-02-18 | 2026-02-19 | DC1-UPSM-L3-CX-2090 | 28d | 0d | Riley Warring | VER |  |
| DC1-UPSM-L3-CX-2110 |  | DC1-UPS-M-D11 BMS/EPMS | 1d | 2026-02-20 | 2026-02-20 | DC1-UPSM-L3-CX-2100 | 28d | 20d | Riley Warring | PRM |  |
|  | 05 | **DC1-DH1100-UPS-M-E11-01 Cx L3** |  | 2026-02-17 | 2026-02-20 |  |  |  |  |  |  |
| DC1-UPSM-L3-CX-2120 |  | DC1-UPS-M-E11 FTE | 1d | 2026-02-17 | 2026-02-17 | DC1-UPS-M-L2-2040, DC1-MOD1-L3-CX-2120, DC1-COMP-L3-CX-2130, DC1-FAN-L3-CX-2130 | 5d | 0d | Riley Warring | ROS |  |
| DC1-UPSM-L3-CX-2130 |  | DC1-UPS-M-E11 L3 Startup | 2d | 2026-02-18 | 2026-02-19 | DC1-UPSM-L3-CX-2120 | 28d | 0d | Riley Warring | VER |  |
| DC1-UPSM-L3-CX-2140 |  | DC1-UPS-M-E11 BMS/EPMS | 1d | 2026-02-20 | 2026-02-20 | DC1-UPSM-L3-CX-2130 | 28d | 20d | Riley Warring | PRM |  |
|  | 06 | **DC1-DH1100-UPS-M-F11-01 Cx L3** |  | 2026-02-17 | 2026-02-20 |  |  |  |  |  |  |
| DC1-UPSM-L3-CX-2150 |  | DC1-UPS-M-F11 FTE | 1d | 2026-02-17 | 2026-02-17 | DC1-UPS-M-L2-2050, DC1-MOD1-L3-CX-2150, DC1-COMP-L3-CX-2160, DC1-FAN-L3-CX-2160 | 5d | 0d | Riley Warring | ROS |  |
| DC1-UPSM-L3-CX-2160 |  | DC1-UPS-M-F11 L3 Startup | 2d | 2026-02-18 | 2026-02-19 | DC1-UPSM-L3-CX-2150 | 28d | 0d | Riley Warring | VER |  |
| DC1-UPSM-L3-CX-2170 |  | DC1-UPS-M-F11 BMS/EPMS | 1d | 2026-02-20 | 2026-02-20 | DC1-UPSM-L3-CX-2160 | 28d | 20d | Riley Warring | PRM |  |
|  | 07 | **DC1-DH1100-UPS-M-R11-01 Cx L3** |  | 2026-02-17 | 2026-02-20 |  |  |  |  |  |  |
| DC1-UPSM-L3-CX-2180 |  | DC1-UPS-M-R11 FTE | 1d | 2026-02-17 | 2026-02-17 | DC1-UPS-M-L2-2060, DC1-MOD1-L3-CX-2180, DC1-COMP-L3-CX-2190, DC1-FAN-L3-CX-2190 | 6d | 0d | Riley Warring | ROS |  |
| DC1-UPSM-L3-CX-2190 |  | DC1-UPS-M-R11 L3 Startup | 2d | 2026-02-18 | 2026-02-19 | DC1-UPSM-L3-CX-2180 | 28d | 0d | Riley Warring | VER |  |
| DC1-UPSM-L3-CX-2200 |  | DC1-UPS-M-R11 BMS/EPMS | 1d | 2026-02-20 | 2026-02-20 | DC1-UPSM-L3-CX-2190 | 28d | 20d | Riley Warring | PRM |  |
|  | 04 | **DC1-DH1100 COMPRESSOR/FAN UNITS Cx L3** |  | 2026-02-12 | 2026-02-18 |  |  |  |  |  |  |
|  | 01 | **DC1-DH1100 POD-AC UNITS A11 Cx L3** |  | 2026-02-12 | 2026-02-18 |  |  |  |  |  |  |
| DC1-FAN-L3-CX-2000 |  | DC1-FAN-A11-01 FTE (2) | 1d | 2026-02-12 | 2026-02-12 | DC1-MOD1-L3-CX-2000 SS | 4d | 0d | Riley Warring | ROS |  |
| DC1-COMP-L3-CX-2000 |  | DC1-COMP-A11-01 FTE (2) | 1d | 2026-02-13 | 2026-02-13 | DC1-MOD1-L3-CX-2000 | 3d | 0d | Riley Warring | ROS |  |
| DC1-FAN-L3-CX-2010 |  | DC1-FAN-A11-01 L3 Startup (2) | 2d | 2026-02-13 | 2026-02-16 | DC1-FAN-L3-CX-2000 | 4d | 0d | Riley Warring | FBB | Vendor Only |
| DC1-COMP-L3-CX-2010 |  | DC1-COMP-A11-01 L3 Startup (2) | 2d | 2026-02-16 | 2026-02-17 | DC1-COMP-L3-CX-2000 | 3d | 0d | Riley Warring | CAP | Vendor Only |
| DC1-FAN-L3-CX-2020 |  | DC1-FAN-A11-01 BMS/EPMS (2) | 1d | 2026-02-17 | 2026-02-17 | DC1-FAN-L3-CX-2010 | 31d | 28d | Riley Warring | PRM |  |
| DC1-COMP-L3-CX-2020 |  | DC1-COMP-A11-01 BMS/EPMS (2) | 1d | 2026-02-18 | 2026-02-18 | DC1-COMP-L3-CX-2010 | 30d | 27d | Riley Warring | PRM |  |

Notes:
- DC1-UPSM-L3-CX-2070: Steps: EC Startup Report; Vendor Startup
- DC1-UPSM-L3-CX-2100: Steps: EC Startup Report; Vendor Startup
- DC1-UPSM-L3-CX-2130: Steps: EC Startup Report; Vendor Startup
- DC1-UPSM-L3-CX-2160: Steps: EC Startup Report; Vendor Startup
- DC1-UPSM-L3-CX-2190: Steps: EC Startup Report; Vendor Startup

| ID | WBS | Activity | Duration | Start | Finish | Predecessors | Total float | Free float | Layton Responsible Party | Vendor Responsible Party | Notes |
| --- | --- | --- | --- | --- | --- | --- | --- | --- | --- | --- | --- |
|  | 02 | **DC1-DH1100 POD-AC UNITS B11 Cx L3** |  | 2026-02-12 | 2026-02-17 |  |  |  |  |  |  |
| DC1-COMP-L3-CX-2030 |  | DC1-COMP-B11-01 FTE (2) | 1d | 2026-02-12 | 2026-02-12 | DC1-MOD1-L3-CX-2030 SS | 5d | 0d | Riley Warring | ROS |  |
| DC1-FAN-L3-CX-2030 |  | DC1-FAN-B11-01 FTE (2) | 1d | 2026-02-12 | 2026-02-12 | DC1-MOD1-L3-CX-2030 SS | 5d | 0d | Riley Warring | ROS |  |
| DC1-COMP-L3-CX-2040 |  | DC1-COMP-B11-01 L3 Startup (2) | 2d | 2026-02-13 | 2026-02-16 | DC1-COMP-L3-CX-2030 | 5d | 0d | Riley Warring | CAP | Vendor Only |
| DC1-FAN-L3-CX-2040 |  | DC1-FAN-B11-01 L3 Startup (2) | 2d | 2026-02-13 | 2026-02-16 | DC1-FAN-L3-CX-2030 | 5d | 0d | Riley Warring | FBB | Vendor Only |
| DC1-COMP-L3-CX-2050 |  | DC1-COMP-B11-01 BMS/EPMS (2) | 1d | 2026-02-17 | 2026-02-17 | DC1-COMP-L3-CX-2040 | 31d | 28d | Riley Warring | PRM |  |
| DC1-FAN-L3-CX-2050 |  | DC1-FAN-B11-01 BMS/EPMS (2) | 1d | 2026-02-17 | 2026-02-17 | DC1-FAN-L3-CX-2040 | 31d | 28d | Riley Warring | PRM |  |
|  | 03 | **DC1-DH1100 POD-AC UNITS C11 Cx L3** |  | 2026-02-12 | 2026-02-17 |  |  |  |  |  |  |
| DC1-COMP-L3-CX-2060 |  | DC1-COMP-C11-01 FTE (2) | 1d | 2026-02-12 | 2026-02-12 | DC1-MOD1-L3-CX-2060 SS | 5d | 0d | Riley Warring | ROS |  |
| DC1-FAN-L3-CX-2060 |  | DC1-FAN-C11-01 FTE (2) | 1d | 2026-02-12 | 2026-02-12 | DC1-MOD1-L3-CX-2060 SS | 5d | 0d | Riley Warring | ROS |  |
| DC1-COMP-L3-CX-2070 |  | DC1-COMP-C11-01 L3 Startup (2) | 2d | 2026-02-13 | 2026-02-16 | DC1-COMP-L3-CX-2060 | 5d | 0d | Riley Warring | CAP | Vendor Only |
| DC1-FAN-L3-CX-2070 |  | DC1-FAN-C11-01 L3 Startup (2) | 2d | 2026-02-13 | 2026-02-16 | DC1-FAN-L3-CX-2060 | 5d | 0d | Riley Warring | FBB | Vendor Only |
| DC1-COMP-L3-CX-2080 |  | DC1-COMP-C11-01 BMS/EPMS (2) | 1d | 2026-02-17 | 2026-02-17 | DC1-COMP-L3-CX-2070 | 31d | 28d | Riley Warring | PRM |  |
| DC1-FAN-L3-CX-2080 |  | DC1-FAN-C11-01 BMS/EPMS (2) | 1d | 2026-02-17 | 2026-02-17 | DC1-FAN-L3-CX-2070 | 31d | 28d | Riley Warring | PRM |  |
|  | 04 | **DC1-DH1100 POD-AC UNITS D11 Cx L3** |  | 2026-02-12 | 2026-02-17 |  |  |  |  |  |  |
| DC1-COMP-L3-CX-2090 |  | DC1-COMP-D11-01 FTE (2) | 1d | 2026-02-12 | 2026-02-12 | DC1-MOD1-L3-CX-2090 SS | 5d | 0d | Riley Warring | ROS |  |
| DC1-FAN-L3-CX-2090 |  | DC1-FAN-D11-01 FTE (2) | 1d | 2026-02-12 | 2026-02-12 | DC1-MOD1-L3-CX-2090 SS | 5d | 0d | Riley Warring | ROS |  |
| DC1-COMP-L3-CX-2100 |  | DC1-COMP-D11-01 L3 Startup (2) | 2d | 2026-02-13 | 2026-02-16 | DC1-COMP-L3-CX-2090 | 5d | 0d | Riley Warring | CAP | Vendor Only |
| DC1-FAN-L3-CX-2100 |  | DC1-FAN-D11-01 L3 Startup (2) | 2d | 2026-02-13 | 2026-02-16 | DC1-FAN-L3-CX-2090 | 5d | 0d | Riley Warring | FBB | Vendor Only |
| DC1-COMP-L3-CX-2110 |  | DC1-COMP-D11-01 BMS/EPMS (2) | 1d | 2026-02-17 | 2026-02-17 | DC1-COMP-L3-CX-2100 | 31d | 28d | Riley Warring | PRM |  |
| DC1-FAN-L3-CX-2110 |  | DC1-FAN-D11-01 BMS/EPMS (2) | 1d | 2026-02-17 | 2026-02-17 | DC1-FAN-L3-CX-2100 | 31d | 28d | Riley Warring | PRM |  |
|  | 05 | **DC1-DH1100 POD-AC UNITS E11 Cx L3** |  | 2026-02-12 | 2026-02-17 |  |  |  |  |  |  |
| DC1-COMP-L3-CX-2120 |  | DC1-COMP-E11-01 FTE (2) | 1d | 2026-02-12 | 2026-02-12 | DC1-MOD1-L3-CX-2120 SS | 5d | 0d | Riley Warring | ROS |  |
| DC1-FAN-L3-CX-2120 |  | DC1-FAN-E11-01 FTE (2) | 1d | 2026-02-12 | 2026-02-12 | DC1-MOD1-L3-CX-2120 SS | 5d | 0d | Riley Warring | ROS |  |
| DC1-COMP-L3-CX-2130 |  | DC1-COMP-E11-01 L3 Startup (2) | 2d | 2026-02-13 | 2026-02-16 | DC1-COMP-L3-CX-2120 | 5d | 0d | Riley Warring | CAP | Vendor Only |
| DC1-FAN-L3-CX-2130 |  | DC1-FAN-E11-01 L3 Startup (2) | 2d | 2026-02-13 | 2026-02-16 | DC1-FAN-L3-CX-2120 | 5d | 0d | Riley Warring | FBB | Vendor Only |
| DC1-COMP-L3-CX-2140 |  | DC1-COMP-E11-01 BMS/EPMS (2) | 1d | 2026-02-17 | 2026-02-17 | DC1-COMP-L3-CX-2130 | 31d | 28d | Riley Warring | PRM |  |
| DC1-FAN-L3-CX-2140 |  | DC1-FAN-E11-01 BMS/EPMS (2) | 1d | 2026-02-17 | 2026-02-17 | DC1-FAN-L3-CX-2130 | 31d | 28d | Riley Warring | PRM |  |

| ID | WBS | Activity | Duration | Start | Finish | Predecessors | Total float | Free float | Layton Responsible Party | Vendor Responsible Party | Notes |
| --- | --- | --- | --- | --- | --- | --- | --- | --- | --- | --- | --- |
|  | 06 | **DC1-DH1100 POD-AC UNITS F11 Cx L3** |  | 2026-02-12 | 2026-02-17 |  |  |  |  |  |  |
| DC1-COMP-L3-CX-2150 |  | DC1-COMP-F11-01 FTE (2) | 1d | 2026-02-12 | 2026-02-12 | DC1-MOD1-L3-CX-2150 SS | 5d | 0d | Riley Warring | ROS |  |
| DC1-FAN-L3-CX-2150 |  | DC1-FAN-F11-01 FTE (2) | 1d | 2026-02-12 | 2026-02-12 | DC1-MOD1-L3-CX-2150 SS | 5d | 0d | Riley Warring | ROS |  |
| DC1-COMP-L3-CX-2160 |  | DC1-COMP-F11-01 L3 Startup (2) | 2d | 2026-02-13 | 2026-02-16 | DC1-COMP-L3-CX-2150 | 5d | 0d | Riley Warring | CAP | Vendor Only |
| DC1-FAN-L3-CX-2160 |  | DC1-FAN-F11-01 L3 Startup (2) | 2d | 2026-02-13 | 2026-02-16 | DC1-FAN-L3-CX-2150 | 5d | 0d | Riley Warring | FBB | Vendor Only |
| DC1-COMP-L3-CX-2170 |  | DC1-COMP-F11-01 BMS/EPMS (2) | 1d | 2026-02-17 | 2026-02-17 | DC1-COMP-L3-CX-2160 | 31d | 28d | Riley Warring | PRM |  |
| DC1-FAN-L3-CX-2170 |  | DC1-FAN-F11-01 BMS/EPMS (2) | 1d | 2026-02-17 | 2026-02-17 | DC1-FAN-L3-CX-2160 | 31d | 28d | Riley Warring | PRM |  |
|  | 07 | **DC1-DH1100 POD-AC UNITS R11 Cx L3** |  | 2026-02-12 | 2026-02-17 |  |  |  |  |  |  |
| DC1-COMP-L3-CX-2180 |  | DC1-COMP-R11-01 FTE (2) | 1d | 2026-02-12 | 2026-02-12 | DC1-MOD1-L3-CX-2180 SS | 6d | 0d | Riley Warring | ROS |  |
| DC1-FAN-L3-CX-2180 |  | DC1-FAN-R11-01 FTE (2) | 1d | 2026-02-12 | 2026-02-12 | DC1-MOD1-L3-CX-2180 SS | 6d | 0d | Riley Warring | ROS |  |
| DC1-COMP-L3-CX-2190 |  | DC1-COMP-R11-01 L3 Startup (2) | 2d | 2026-02-13 | 2026-02-16 | DC1-COMP-L3-CX-2180 | 6d | 0d | Riley Warring | CAP | Vendor Only |
| DC1-FAN-L3-CX-2190 |  | DC1-FAN-R11-01 L3 Startup (2) | 2d | 2026-02-13 | 2026-02-16 | DC1-FAN-L3-CX-2180 | 6d | 0d | Riley Warring | FBB | Vendor Only |
| DC1-COMP-L3-CX-2200 |  | DC1-COMP-R11-01 BMS/EPMS (2) | 1d | 2026-02-17 | 2026-02-17 | DC1-COMP-L3-CX-2190 | 31d | 28d | Riley Warring | PRM |  |
| DC1-FAN-L3-CX-2200 |  | DC1-FAN-R11-01 BMS/EPMS (2) | 1d | 2026-02-17 | 2026-02-17 | DC1-FAN-L3-CX-2190 | 31d | 28d | Riley Warring | PRM |  |
|  | 04 | **DC1-DH1100 BUS-R1X/BUS-R2X Cx L3** |  | 2026-02-13 | 2026-03-18 |  |  |  |  |  |  |
|  | 01 | **DC1-DH1100 BUS-R1 CATCHER BUS DUCT Cx L3** |  | 2026-03-13 | 2026-03-18 |  |  |  |  |  |  |
| DC1-BUS-L3-CX-2000 |  | DC1-DH1100-BUS-R1 (R21) CATCHER BUS FTE | 1d | 2026-03-13 | 2026-03-13 | DC1-BUS-L2-1000, DC1-BUS-L3-CX-1000 SS, DC1-BUS-L2-CX-2000, DC1-SWD-L3-CX-1180 SS | 8d | 0d | Riley Warring | ROS | CFCI |
| DC1-BUS-L3-CX-2010 |  | DC1-DH1100-BUS-R1 (R21) CATCHER BUS L3 Startup | 2d | 2026-03-16 | 2026-03-17 | DC1-BUS-L3-CX-2000 | 10d | 0d | Riley Warring | LAY | CFCI |
| DC1-BUS-L3-CX-2020 |  | DC1-DH1100-BUS-R1 (R21) CATCHER BUS BMS/EPMS | 1d | 2026-03-18 | 2026-03-18 | DC1-BUS-L3-CX-2010 | 10d | 2d | Riley Warring | PRM | CFCI |
|  | 02 | **DC1-DH1100 BUS-R2 MAINTENANCE BUS DUCT Cx L3** |  | 2026-02-13 | 2026-02-18 |  |  |  |  |  |  |
| DC1-BUS-L3-CX-2030 |  | DC1-DH1100-BUS-R2 (R11) MAINTENANCE BUS FTE | 1d | 2026-02-13 | 2026-02-13 | DC1-BUS-L2-CX-2010 SS, DC1-SWD-L3-CX-2180, DC1-BUS-L2-1010 | 17d | 0d | Riley Warring | ROS | CFCI |
| DC1-BUS-L3-CX-2040 |  | DC1-DH1100-BUS-R2 (R11) MAINTENANCE BUS L3 Startup | 2d | 2026-02-16 | 2026-02-17 | DC1-BUS-L3-CX-2030 | 30d | 0d | Riley Warring | LAY | CFCI |
| DC1-BUS-L3-CX-2050 |  | DC1-DH1100-BUS-R2 (R11) MAINTENANCE BUS BMS/EPMS | 1d | 2026-02-18 | 2026-02-18 | DC1-BUS-L3-CX-2040 | 30d | 22d | Riley Warring | PRM | CFCI |
|  | 05 | **DC1-DH1100 ATS Cx L3** |  | 2026-02-13 | 2026-03-19 |  |  |  |  |  |  |
|  | 01 | **DC1-DH1100 ATS-A11 Cx L3** |  | 2026-02-13 | 2026-03-18 |  |  |  |  |  |  |
|  | 01 | **DC1-DH1100-ATS-A11-01 Cx L3** |  | 2026-02-13 | 2026-02-18 |  |  |  |  |  |  |
| DC1-ATS-L3-CX-2000 |  | DC1-ATS-A11-01 FTE | 1d | 2026-02-13 | 2026-02-13 | DC1-ATS-L2-2000, DC1-BUS-L3-CX-2030 SS, DC1-SWD-L3-CX-2000 SS | 29d | 0d | Riley Warring | ROS |  |
| DC1-ATS-L3-CX-2005 |  | DC1-ATS-A11-01 L3 Startup | 2d | 2026-02-16 | 2026-02-17 | DC1-ATS-L3-CX-2000 | 30d | 0d | Riley Warring | MAV |  |
| DC1-ATS-L3-CX-2010 |  | DC1-ATS-A11-01 BMS/EPMS | 1d | 2026-02-18 | 2026-02-18 | DC1-ATS-L3-CX-2005 | 30d | 22d | Riley Warring | PRM |  |

Notes:
- DC1-BUS-L3-CX-2010: Steps: EC Startup Report; Vendor Startup
- DC1-BUS-L3-CX-2040: Steps: EC Startup Report; Vendor Startup
- DC1-ATS-L3-CX-2005: Steps: EC Startup Report; Vendor Startup

| ID | WBS | Activity | Duration | Start | Finish | Predecessors | Total float | Free float | Layton Responsible Party | Vendor Responsible Party |
| --- | --- | --- | --- | --- | --- | --- | --- | --- | --- | --- |
|  | 02 | **DC1-DH1100-ATS-A11-02 Cx L3** |  | 2026-03-13 | 2026-03-18 |  |  |  |  |  |
| DC1-ATS-L3-CX-2015 |  | DC1-ATS-A11-02 FTE | 1d | 2026-03-13 | 2026-03-13 | DC1-ATS-L2-2010, DC1-BUS-L3-CX-2000 SS, DC1-BUS-L3-CX-2030 SS | 9d | 0d | Riley Warring | ROS |
| DC1-ATS-L3-CX-2020 |  | DC1-ATS-A11-02 L3 Startup | 2d | 2026-03-16 | 2026-03-17 | DC1-ATS-L3-CX-2015 | 10d | 0d | Riley Warring | MAV |
| DC1-ATS-L3-CX-2025 |  | DC1-ATS-A11-02 BMS/EPMS | 1d | 2026-03-18 | 2026-03-18 | DC1-ATS-L3-CX-2020 | 10d | 2d | Riley Warring | PRM |
|  | 03 | **DC1-DH1100-ATS-A11-03 Cx L3** |  | 2026-02-13 | 2026-02-18 |  |  |  |  |  |
| DC1-ATS-L3-CX-2030 |  | DC1-ATS-A11-03 FTE | 1d | 2026-02-13 | 2026-02-13 | DC1-ATS-L2-2020, DC1-BUS-L3-CX-2030 SS, DC1-SWD-L3-CX-2000 SS | 29d | 0d | Riley Warring | ROS |
| DC1-ATS-L3-CX-2035 |  | DC1-ATS-A11-03 L3 Startup | 2d | 2026-02-16 | 2026-02-17 | DC1-ATS-L3-CX-2030 | 30d | 0d | Riley Warring | MAV |
| DC1-ATS-L3-CX-2040 |  | DC1-ATS-A11-03 BMS/EPMS | 1d | 2026-02-18 | 2026-02-18 | DC1-ATS-L3-CX-2035 | 30d | 22d | Riley Warring | PRM |
|  | 04 | **DC1-DH1100-ATS-A11-04 Cx L3** |  | 2026-03-13 | 2026-03-18 |  |  |  |  |  |
| DC1-ATS-L3-CX-2045 |  | DC1-ATS-A11-04 FTE | 1d | 2026-03-13 | 2026-03-13 | DC1-ATS-L2-2030, DC1-BUS-L3-CX-2000 SS, DC1-BUS-L3-CX-2030 SS | 9d | 0d | Riley Warring | ROS |
| DC1-ATS-L3-CX-2050 |  | DC1-ATS-A11-04 L3 Startup | 2d | 2026-03-16 | 2026-03-17 | DC1-ATS-L3-CX-2045 | 10d | 0d | Riley Warring | MAV |
| DC1-ATS-L3-CX-2055 |  | DC1-ATS-A11-04 BMS/EPMS | 1d | 2026-03-18 | 2026-03-18 | DC1-ATS-L3-CX-2050 | 10d | 2d | Riley Warring | PRM |
|  | 05 | **DC1-DH1100-ATS-A11-05 Cx L3** |  | 2026-02-13 | 2026-02-18 |  |  |  |  |  |
| DC1-ATS-L3-CX-2060 |  | DC1-ATS-A11-05 FTE | 1d | 2026-02-13 | 2026-02-13 | DC1-ATS-L2-2040, DC1-BUS-L3-CX-2030 SS, DC1-SWD-L3-CX-2000 SS | 29d | 0d | Riley Warring | ROS |
| DC1-ATS-L3-CX-2065 |  | DC1-ATS-A11-05 L3 Startup | 2d | 2026-02-16 | 2026-02-17 | DC1-ATS-L3-CX-2060 | 30d | 0d | Riley Warring | MAV |
| DC1-ATS-L3-CX-2070 |  | DC1-ATS-A11-05 BMS/EPMS | 1d | 2026-02-18 | 2026-02-18 | DC1-ATS-L3-CX-2065 | 30d | 22d | Riley Warring | PRM |
|  | 06 | **DC1-DH1100-ATS-A11-06 Cx L3** |  | 2026-03-13 | 2026-03-18 |  |  |  |  |  |
| DC1-ATS-L3-CX-2075 |  | DC1-ATS-A11-06 FTE | 1d | 2026-03-13 | 2026-03-13 | DC1-ATS-L2-2050, DC1-BUS-L3-CX-2000 SS, DC1-BUS-L3-CX-2030 SS | 9d | 0d | Riley Warring | ROS |
| DC1-ATS-L3-CX-2080 |  | DC1-ATS-A11-06 L3 Startup | 2d | 2026-03-16 | 2026-03-17 | DC1-ATS-L3-CX-2075 | 10d | 0d | Riley Warring | MAV |
| DC1-ATS-L3-CX-2085 |  | DC1-ATS-A11-06 BMS/EPMS | 1d | 2026-03-18 | 2026-03-18 | DC1-ATS-L3-CX-2080 | 10d | 2d | Riley Warring | PRM |
|  | 02 | **DC1-DH1100-ATS-B11 Cx L3** |  | 2026-02-13 | 2026-03-19 |  |  |  |  |  |
|  | 01 | **DC1-DH1100-ATS-B11-01 Cx L3** |  | 2026-02-13 | 2026-02-18 |  |  |  |  |  |
| DC1-ATS-L3-CX-2090 |  | DC1-ATS-B11-01 FTE | 1d | 2026-02-13 | 2026-02-13 | DC1-ATS-L2-2060, DC1-BUS-L3-CX-2030 SS, DC1-SWD-L3-CX-2030 SS | 29d | 0d | Riley Warring | ROS |
| DC1-ATS-L3-CX-2095 |  | DC1-ATS-B11-01 L3 Startup | 2d | 2026-02-16 | 2026-02-17 | DC1-ATS-L3-CX-2090 | 30d | 0d | Riley Warring | MAV |
| DC1-ATS-L3-CX-2100 |  | DC1-ATS-B11-01 BMS/EPMS | 1d | 2026-02-18 | 2026-02-18 | DC1-ATS-L3-CX-2095 | 30d | 22d | Riley Warring | PRM |

Notes:
- DC1-ATS-L3-CX-2020: Steps: EC Startup Report; Vendor Startup
- DC1-ATS-L3-CX-2035: Steps: EC Startup Report; Vendor Startup
- DC1-ATS-L3-CX-2050: Steps: EC Startup Report; Vendor Startup
- DC1-ATS-L3-CX-2065: Steps: EC Startup Report; Vendor Startup
- DC1-ATS-L3-CX-2080: Steps: EC Startup Report; Vendor Startup
- DC1-ATS-L3-CX-2095: Steps: EC Startup Report; Vendor Startup

| ID | WBS | Activity | Duration | Start | Finish | Predecessors | Total float | Free float | Layton Responsible Party | Vendor Responsible Party |
| --- | --- | --- | --- | --- | --- | --- | --- | --- | --- | --- |
|  | 02 | **DC1-DH1100-ATS-B11-02 Cx L3** |  | 2026-03-16 | 2026-03-19 |  |  |  |  |  |
| DC1-ATS-L3-CX-2105 |  | DC1-ATS-B11-02 FTE | 1d | 2026-03-16 | 2026-03-16 | DC1-ATS-L2-2070, DC1-BUS-L3-CX-2000, DC1-BUS-L3-CX-2030 SS | 8d | 0d | Riley Warring | ROS |
| DC1-ATS-L3-CX-2110 |  | DC1-ATS-B11-02 L3 Startup | 2d | 2026-03-17 | 2026-03-18 | DC1-ATS-L3-CX-2105 | 9d | 0d | Riley Warring | MAV |
| DC1-ATS-L3-CX-2115 |  | DC1-ATS-B11-02 BMS/EPMS | 1d | 2026-03-19 | 2026-03-19 | DC1-ATS-L3-CX-2110 | 9d | 1d | Riley Warring | PRM |
|  | 03 | **DC1-DH1100-ATS-B11-03 Cx L3** |  | 2026-02-13 | 2026-02-18 |  |  |  |  |  |
| DC1-ATS-L3-CX-2120 |  | DC1-ATS-B11-03 FTE | 1d | 2026-02-13 | 2026-02-13 | DC1-ATS-L2-2080, DC1-BUS-L3-CX-2030 SS, DC1-SWD-L3-CX-2030 SS | 29d | 0d | Riley Warring | ROS |
| DC1-ATS-L3-CX-2125 |  | DC1-ATS-B11-03 L3 Startup | 2d | 2026-02-16 | 2026-02-17 | DC1-ATS-L3-CX-2120 | 30d | 0d | Riley Warring | MAV |
| DC1-ATS-L3-CX-2130 |  | DC1-ATS-B11-03 BMS/EPMS | 1d | 2026-02-18 | 2026-02-18 | DC1-ATS-L3-CX-2125 | 30d | 22d | Riley Warring | PRM |
|  | 04 | **DC1-DH1100-ATS-B11-04 Cx L3** |  | 2026-03-16 | 2026-03-19 |  |  |  |  |  |
| DC1-ATS-L3-CX-2135 |  | DC1-ATS-B11-04 FTE | 1d | 2026-03-16 | 2026-03-16 | DC1-ATS-L2-2090, DC1-BUS-L3-CX-2000, DC1-BUS-L3-CX-2030 SS | 8d | 0d | Riley Warring | ROS |
| DC1-ATS-L3-CX-2140 |  | DC1-ATS-B11-04 L3 Startup | 2d | 2026-03-17 | 2026-03-18 | DC1-ATS-L3-CX-2135 | 9d | 0d | Riley Warring | MAV |
| DC1-ATS-L3-CX-2145 |  | DC1-ATS-B11-04 BMS/EPMS | 1d | 2026-03-19 | 2026-03-19 | DC1-ATS-L3-CX-2140 | 9d | 1d | Riley Warring | PRM |
|  | 05 | **DC1-DH1100-ATS-B11-05 Cx L3** |  | 2026-02-13 | 2026-02-18 |  |  |  |  |  |
| DC1-ATS-L3-CX-2150 |  | DC1-ATS-B11-05 FTE | 1d | 2026-02-13 | 2026-02-13 | DC1-ATS-L2-2100, DC1-BUS-L3-CX-2030 SS, DC1-SWD-L3-CX-2030 SS | 29d | 0d | Riley Warring | ROS |
| DC1-ATS-L3-CX-2155 |  | DC1-ATS-B11-05 L3 Startup | 2d | 2026-02-16 | 2026-02-17 | DC1-ATS-L3-CX-2150 | 30d | 0d | Riley Warring | MAV |
| DC1-ATS-L3-CX-2160 |  | DC1-ATS-B11-05 BMS/EPMS | 1d | 2026-02-18 | 2026-02-18 | DC1-ATS-L3-CX-2155 | 30d | 22d | Riley Warring | PRM |
|  | 06 | **DC1-DH1100-ATS-B11-06 Cx L3** |  | 2026-03-13 | 2026-03-18 |  |  |  |  |  |
| DC1-ATS-L3-CX-2165 |  | DC1-ATS-B11-06 FTE | 1d | 2026-03-13 | 2026-03-13 | DC1-ATS-L2-2110, DC1-BUS-L3-CX-2000 SS, DC1-BUS-L3-CX-2030 SS | 9d | 0d | Riley Warring | ROS |
| DC1-ATS-L3-CX-2170 |  | DC1-ATS-B11-06 L3 Startup | 2d | 2026-03-16 | 2026-03-17 | DC1-ATS-L3-CX-2165 | 10d | 0d | Riley Warring | MAV |
| DC1-ATS-L3-CX-2175 |  | DC1-ATS-B11-06 BMS/EPMS | 1d | 2026-03-18 | 2026-03-18 | DC1-ATS-L3-CX-2170 | 10d | 2d | Riley Warring | PRM |
|  | 03 | **DC1-DH1100 ATS-C11 Cx L3** |  | 2026-02-13 | 2026-03-18 |  |  |  |  |  |
|  | 01 | **DC1-DH1100-ATS-C11-01 Cx L3** |  | 2026-02-13 | 2026-02-18 |  |  |  |  |  |
| DC1-ATS-L3-CX-2180 |  | DC1-ATS-C11-01 FTE | 1d | 2026-02-13 | 2026-02-13 | DC1-ATS-L2-2120, DC1-BUS-L3-CX-2030 SS, DC1-SWD-L3-CX-2060 SS | 29d | 0d | Riley Warring | ROS |
| DC1-ATS-L3-CX-2185 |  | DC1-ATS-C11-01 L3 Startup | 2d | 2026-02-16 | 2026-02-17 | DC1-ATS-L3-CX-2180 | 30d | 0d | Riley Warring | MAV |
| DC1-ATS-L3-CX-2190 |  | DC1-ATS-C11-01 BMS/EPMS | 1d | 2026-02-18 | 2026-02-18 | DC1-ATS-L3-CX-2185 | 30d | 22d | Riley Warring | PRM |

Notes:
- DC1-ATS-L3-CX-2110: Steps: EC Startup Report; Vendor Startup
- DC1-ATS-L3-CX-2125: Steps: EC Startup Report; Vendor Startup
- DC1-ATS-L3-CX-2140: Steps: EC Startup Report; Vendor Startup
- DC1-ATS-L3-CX-2155: Steps: EC Startup Report; Vendor Startup
- DC1-ATS-L3-CX-2170: Steps: EC Startup Report; Vendor Startup
- DC1-ATS-L3-CX-2185: Steps: EC Startup Report; Vendor Startup

| ID | WBS | Activity | Duration | Start | Finish | Predecessors | Total float | Free float | Layton Responsible Party | Vendor Responsible Party |
| --- | --- | --- | --- | --- | --- | --- | --- | --- | --- | --- |
|  | 02 | **DC1-DH1100-ATS-C11-02 Cx L3** |  | 2026-03-13 | 2026-03-18 |  |  |  |  |  |
| DC1-ATS-L3-CX-2195 |  | DC1-ATS-C11-02 FTE | 1d | 2026-03-13 | 2026-03-13 | DC1-ATS-L2-2130, DC1-BUS-L3-CX-2000 SS, DC1-BUS-L3-CX-2030 SS | 9d | 0d | Riley Warring | ROS |
| DC1-ATS-L3-CX-2200 |  | DC1-ATS-C11-02 L3 Startup | 2d | 2026-03-16 | 2026-03-17 | DC1-ATS-L3-CX-2195 | 10d | 0d | Riley Warring | MAV |
| DC1-ATS-L3-CX-2205 |  | DC1-ATS-C11-02 BMS/EPMS | 1d | 2026-03-18 | 2026-03-18 | DC1-ATS-L3-CX-2200 | 10d | 2d | Riley Warring | PRM |
|  | 03 | **DC1-DH1100-ATS-C11-03 Cx L3** |  | 2026-02-13 | 2026-02-18 |  |  |  |  |  |
| DC1-ATS-L3-CX-2210 |  | DC1-ATS-C11-03 FTE | 1d | 2026-02-13 | 2026-02-13 | DC1-ATS-L2-2140, DC1-BUS-L3-CX-2030 SS, DC1-SWD-L3-CX-2060 SS | 29d | 0d | Riley Warring | ROS |
| DC1-ATS-L3-CX-2215 |  | DC1-ATS-C11-03 L3 Startup | 2d | 2026-02-16 | 2026-02-17 | DC1-ATS-L3-CX-2210 | 30d | 0d | Riley Warring | MAV |
| DC1-ATS-L3-CX-2220 |  | DC1-ATS-C11-03 BMS/EPMS | 1d | 2026-02-18 | 2026-02-18 | DC1-ATS-L3-CX-2215 | 30d | 22d | Riley Warring | PRM |
|  | 04 | **DC1-DH1100-ATS-C11-04 Cx L3** |  | 2026-03-13 | 2026-03-18 |  |  |  |  |  |
| DC1-ATS-L3-CX-2225 |  | DC1-ATS-C11-04 FTE | 1d | 2026-03-13 | 2026-03-13 | DC1-ATS-L2-2150, DC1-BUS-L3-CX-2000 SS, DC1-BUS-L3-CX-2030 SS | 9d | 0d | Riley Warring | ROS |
| DC1-ATS-L3-CX-2230 |  | DC1-ATS-C11-04 L3 Startup | 2d | 2026-03-16 | 2026-03-17 | DC1-ATS-L3-CX-2225 | 10d | 0d | Riley Warring | MAV |
| DC1-ATS-L3-CX-2235 |  | DC1-ATS-C11-04 BMS/EPMS | 1d | 2026-03-18 | 2026-03-18 | DC1-ATS-L3-CX-2230 | 10d | 2d | Riley Warring | PRM |
|  | 05 | **DC1-DH1100-ATS-C11-05 Cx L3** |  | 2026-02-13 | 2026-02-18 |  |  |  |  |  |
| DC1-ATS-L3-CX-2240 |  | DC1-ATS-C11-05 FTE | 1d | 2026-02-13 | 2026-02-13 | DC1-ATS-L2-2160, DC1-BUS-L3-CX-2030 SS, DC1-SWD-L3-CX-2060 SS | 29d | 0d | Riley Warring | ROS |
| DC1-ATS-L3-CX-2245 |  | DC1-ATS-C11-05 L3 Startup | 2d | 2026-02-16 | 2026-02-17 | DC1-ATS-L3-CX-2240 | 30d | 0d | Riley Warring | MAV |
| DC1-ATS-L3-CX-2250 |  | DC1-ATS-C11-05 BMS/EPMS | 1d | 2026-02-18 | 2026-02-18 | DC1-ATS-L3-CX-2245 | 30d | 22d | Riley Warring | PRM |
|  | 06 | **DC1-DH1100-ATS-C11-06 Cx L3** |  | 2026-03-13 | 2026-03-18 |  |  |  |  |  |
| DC1-ATS-L3-CX-2255 |  | DC1-ATS-C11-06 FTE | 1d | 2026-03-13 | 2026-03-13 | DC1-ATS-L2-2170, DC1-BUS-L3-CX-2000 SS, DC1-BUS-L3-CX-2030 SS | 9d | 0d | Riley Warring | ROS |
| DC1-ATS-L3-CX-2260 |  | DC1-ATS-C11-06 L3 Startup | 2d | 2026-03-16 | 2026-03-17 | DC1-ATS-L3-CX-2255 | 10d | 0d | Riley Warring | MAV |
| DC1-ATS-L3-CX-2265 |  | DC1-ATS-C11-06 BMS/EPMS | 1d | 2026-03-18 | 2026-03-18 | DC1-ATS-L3-CX-2260 | 10d | 2d | Riley Warring | PRM |
|  | 04 | **DC1-DH1100-ATS-D11 Cx L3** |  | 2026-02-17 | 2026-03-18 |  |  |  |  |  |
|  | 01 | **DC1-DH1100-ATS-D11-01 Cx L3** |  | 2026-02-17 | 2026-02-20 |  |  |  |  |  |
| DC1-ATS-L3-CX-2270 |  | DC1-ATS-D11-01 FTE | 1d | 2026-02-17 | 2026-02-17 | DC1-ATS-L2-2180, DC1-BUS-L3-CX-2030 SS, DC1-SWD-L3-CX-2090 SS | 27d | 0d | Riley Warring | ROS |
| DC1-ATS-L3-CX-2275 |  | DC1-ATS-D11-01 L3 Startup | 2d | 2026-02-18 | 2026-02-19 | DC1-ATS-L3-CX-2270 | 28d | 0d | Riley Warring | MAV |
| DC1-ATS-L3-CX-2280 |  | DC1-ATS-D11-01 BMS/EPMS | 1d | 2026-02-20 | 2026-02-20 | DC1-ATS-L3-CX-2275 | 28d | 20d | Riley Warring | PRM |

Notes:
- DC1-ATS-L3-CX-2200: Steps: EC Startup Report; Vendor Startup
- DC1-ATS-L3-CX-2215: Steps: EC Startup Report; Vendor Startup
- DC1-ATS-L3-CX-2230: Steps: EC Startup Report; Vendor Startup
- DC1-ATS-L3-CX-2245: Steps: EC Startup Report; Vendor Startup
- DC1-ATS-L3-CX-2260: Steps: EC Startup Report; Vendor Startup
- DC1-ATS-L3-CX-2275: Steps: EC Startup Report; Vendor Startup

| ID | WBS | Activity | Duration | Start | Finish | Predecessors | Total float | Free float | Layton Responsible Party | Vendor Responsible Party |
| --- | --- | --- | --- | --- | --- | --- | --- | --- | --- | --- |
|  | 02 | **DC1-DH1100-ATS-D11-02 Cx L3** |  | 2026-03-13 | 2026-03-18 |  |  |  |  |  |
| DC1-ATS-L3-CX-2285 |  | DC1-ATS-D11-02 FTE | 1d | 2026-03-13 | 2026-03-13 | DC1-ATS-L2-2190, DC1-BUS-L3-CX-2000 SS, DC1-BUS-L3-CX-2030 SS | 9d | 0d | Riley Warring | ROS |
| DC1-ATS-L3-CX-2290 |  | DC1-ATS-D11-02 L3 Startup | 2d | 2026-03-16 | 2026-03-17 | DC1-ATS-L3-CX-2285 | 10d | 0d | Riley Warring | MAV |
| DC1-ATS-L3-CX-2295 |  | DC1-ATS-D11-02 BMS/EPMS | 1d | 2026-03-18 | 2026-03-18 | DC1-ATS-L3-CX-2290 | 10d | 2d | Riley Warring | PRM |
|  | 03 | **DC1-DH1100-ATS-D11-03 Cx L3** |  | 2026-02-17 | 2026-02-20 |  |  |  |  |  |
| DC1-ATS-L3-CX-2300 |  | DC1-ATS-D11-03 FTE | 1d | 2026-02-17 | 2026-02-17 | DC1-ATS-L2-2200, DC1-BUS-L3-CX-2030 SS, DC1-SWD-L3-CX-2090 SS | 27d | 0d | Riley Warring | ROS |
| DC1-ATS-L3-CX-2305 |  | DC1-ATS-D11-03 L3 Startup | 2d | 2026-02-18 | 2026-02-19 | DC1-ATS-L3-CX-2300 | 28d | 0d | Riley Warring | MAV |
| DC1-ATS-L3-CX-2310 |  | DC1-ATS-D11-03 BMS/EPMS | 1d | 2026-02-20 | 2026-02-20 | DC1-ATS-L3-CX-2305 | 28d | 20d | Riley Warring | PRM |
|  | 04 | **DC1-DH1100-ATS-D11-04 Cx L3** |  | 2026-03-13 | 2026-03-18 |  |  |  |  |  |
| DC1-ATS-L3-CX-2315 |  | DC1-ATS-D11-04 FTE | 1d | 2026-03-13 | 2026-03-13 | DC1-ATS-L2-2210, DC1-BUS-L3-CX-2000 SS, DC1-BUS-L3-CX-2030 SS | 9d | 0d | Riley Warring | ROS |
| DC1-ATS-L3-CX-2320 |  | DC1-ATS-D11-04 L3 Startup | 2d | 2026-03-16 | 2026-03-17 | DC1-ATS-L3-CX-2315 | 10d | 0d | Riley Warring | MAV |
| DC1-ATS-L3-CX-2325 |  | DC1-ATS-D11-04 BMS/EPMS | 1d | 2026-03-18 | 2026-03-18 | DC1-ATS-L3-CX-2320 | 10d | 2d | Riley Warring | PRM |
|  | 05 | **DC1-DH1100-ATS-D11-05 Cx L3** |  | 2026-02-17 | 2026-02-20 |  |  |  |  |  |
| DC1-ATS-L3-CX-2330 |  | DC1-ATS-D11-05 FTE | 1d | 2026-02-17 | 2026-02-17 | DC1-ATS-L2-2220, DC1-BUS-L3-CX-2030 SS, DC1-SWD-L3-CX-2090 SS | 27d | 0d | Riley Warring | ROS |
| DC1-ATS-L3-CX-2335 |  | DC1-ATS-D11-05 L3 Startup | 2d | 2026-02-18 | 2026-02-19 | DC1-ATS-L3-CX-2330 | 28d | 0d | Riley Warring | MAV |
| DC1-ATS-L3-CX-2340 |  | DC1-ATS-D11-05 BMS/EPMS | 1d | 2026-02-20 | 2026-02-20 | DC1-ATS-L3-CX-2335 | 28d | 20d | Riley Warring | PRM |
|  | 06 | **DC1-DH1100-ATS-D11-06 Cx L3** |  | 2026-03-13 | 2026-03-18 |  |  |  |  |  |
| DC1-ATS-L3-CX-2345 |  | DC1-ATS-D11-06 FTE | 1d | 2026-03-13 | 2026-03-13 | DC1-ATS-L2-2230, DC1-BUS-L3-CX-2000 SS, DC1-BUS-L3-CX-2030 SS | 9d | 0d | Riley Warring | ROS |
| DC1-ATS-L3-CX-2350 |  | DC1-ATS-D11-06 L3 Startup | 2d | 2026-03-16 | 2026-03-17 | DC1-ATS-L3-CX-2345 | 10d | 0d | Riley Warring | MAV |
| DC1-ATS-L3-CX-2355 |  | DC1-ATS-D11-06 BMS/EPMS | 1d | 2026-03-18 | 2026-03-18 | DC1-ATS-L3-CX-2350 | 10d | 2d | Riley Warring | PRM |
|  | 05 | **DC1-DH1100 ATS-E11 Cx L3** |  | 2026-02-19 | 2026-03-18 |  |  |  |  |  |
|  | 01 | **DC1-DH1100-ATS-E11-01 Cx L3** |  | 2026-02-19 | 2026-02-24 |  |  |  |  |  |
| DC1-ATS-L3-CX-2360 |  | DC1-ATS-E11-01 FTE | 1d | 2026-02-19 | 2026-02-19 | DC1-ATS-L2-2240, DC1-BUS-L3-CX-2030 SS, DC1-SWD-L3-CX-2120 SS | 25d | 0d | Riley Warring | ROS |
| DC1-ATS-L3-CX-2365 |  | DC1-ATS-E11-01 L3 Startup | 2d | 2026-02-20 | 2026-02-23 | DC1-ATS-L3-CX-2360 | 26d | 0d | Riley Warring | MAV |
| DC1-ATS-L3-CX-2370 |  | DC1-ATS-E11-01 BMS/EPMS | 1d | 2026-02-24 | 2026-02-24 | DC1-ATS-L3-CX-2365 | 26d | 18d | Riley Warring | PRM |

Notes:
- DC1-ATS-L3-CX-2290: Steps: EC Startup Report; Vendor Startup
- DC1-ATS-L3-CX-2305: Steps: EC Startup Report; Vendor Startup
- DC1-ATS-L3-CX-2320: Steps: EC Startup Report; Vendor Startup
- DC1-ATS-L3-CX-2335: Steps: EC Startup Report; Vendor Startup
- DC1-ATS-L3-CX-2350: Steps: EC Startup Report; Vendor Startup
- DC1-ATS-L3-CX-2365: Steps: EC Startup Report; Vendor Startup

| ID | WBS | Activity | Duration | Start | Finish | Predecessors | Total float | Free float | Layton Responsible Party | Vendor Responsible Party |
| --- | --- | --- | --- | --- | --- | --- | --- | --- | --- | --- |
|  | 02 | **DC1-DH1100-ATS-E11-02 Cx L3** |  | 2026-03-13 | 2026-03-18 |  |  |  |  |  |
| DC1-ATS-L3-CX-2375 |  | DC1-ATS-E11-02 FTE | 1d | 2026-03-13 | 2026-03-13 | DC1-ATS-L2-2250, DC1-BUS-L3-CX-2000 SS, DC1-BUS-L3-CX-2030 SS | 9d | 0d | Riley Warring | ROS |
| DC1-ATS-L3-CX-2380 |  | DC1-ATS-E11-02 L3 Startup | 2d | 2026-03-16 | 2026-03-17 | DC1-ATS-L3-CX-2375 | 10d | 0d | Riley Warring | MAV |
| DC1-ATS-L3-CX-2385 |  | DC1-ATS-E11-02 BMS/EPMS | 1d | 2026-03-18 | 2026-03-18 | DC1-ATS-L3-CX-2380 | 10d | 2d | Riley Warring | PRM |
|  | 03 | **DC1-DH1100-ATS-E11-03 Cx L3** |  | 2026-02-19 | 2026-02-24 |  |  |  |  |  |
| DC1-ATS-L3-CX-2390 |  | DC1-ATS-E11-03 FTE | 1d | 2026-02-19 | 2026-02-19 | DC1-ATS-L2-2260, DC1-BUS-L3-CX-2030 SS, DC1-SWD-L3-CX-2120 SS | 25d | 0d | Riley Warring | ROS |
| DC1-ATS-L3-CX-2395 |  | DC1-ATS-E11-03 L3 Startup | 2d | 2026-02-20 | 2026-02-23 | DC1-ATS-L3-CX-2390 | 26d | 0d | Riley Warring | MAV |
| DC1-ATS-L3-CX-2400 |  | DC1-ATS-E11-03 BMS/EPMS | 1d | 2026-02-24 | 2026-02-24 | DC1-ATS-L3-CX-2395 | 26d | 18d | Riley Warring | PRM |
|  | 04 | **DC1-DH1100-ATS-E11-04 Cx L3** |  | 2026-03-13 | 2026-03-18 |  |  |  |  |  |
| DC1-ATS-L3-CX-2405 |  | DC1-ATS-E11-04 FTE | 1d | 2026-03-13 | 2026-03-13 | DC1-ATS-L2-2270, DC1-BUS-L3-CX-2000 SS, DC1-BUS-L3-CX-2030 SS | 9d | 0d | Riley Warring | ROS |
| DC1-ATS-L3-CX-2410 |  | DC1-ATS-E11-04 L3 Startup | 2d | 2026-03-16 | 2026-03-17 | DC1-ATS-L3-CX-2405 | 10d | 0d | Riley Warring | MAV |
| DC1-ATS-L3-CX-2415 |  | DC1-ATS-E11-04 BMS/EPMS | 1d | 2026-03-18 | 2026-03-18 | DC1-ATS-L3-CX-2410 | 10d | 2d | Riley Warring | PRM |
|  | 05 | **DC1-DH1100-ATS-E11-05 Cx L3** |  | 2026-02-19 | 2026-02-24 |  |  |  |  |  |
| DC1-ATS-L3-CX-2420 |  | DC1-ATS-E11-05 FTE | 1d | 2026-02-19 | 2026-02-19 | DC1-ATS-L2-2280, DC1-BUS-L3-CX-2030 SS, DC1-SWD-L3-CX-2120 SS | 25d | 0d | Riley Warring | ROS |
| DC1-ATS-L3-CX-2425 |  | DC1-ATS-E11-05 L3 Startup | 2d | 2026-02-20 | 2026-02-23 | DC1-ATS-L3-CX-2420 | 26d | 0d | Riley Warring | MAV |
| DC1-ATS-L3-CX-2430 |  | DC1-ATS-E11-05 BMS/EPMS | 1d | 2026-02-24 | 2026-02-24 | DC1-ATS-L3-CX-2425 | 26d | 18d | Riley Warring | PRM |
|  | 06 | **DC1-DH1100-ATS-E11-06 Cx L3** |  | 2026-03-13 | 2026-03-18 |  |  |  |  |  |
| DC1-ATS-L3-CX-2435 |  | DC1-ATS-E11-06 FTE | 1d | 2026-03-13 | 2026-03-13 | DC1-ATS-L2-2290, DC1-BUS-L3-CX-2000 SS, DC1-BUS-L3-CX-2030 SS | 9d | 0d | Riley Warring | ROS |
| DC1-ATS-L3-CX-2440 |  | DC1-ATS-E11-06 L3 Startup | 2d | 2026-03-16 | 2026-03-17 | DC1-ATS-L3-CX-2435 | 10d | 0d | Riley Warring | MAV |
| DC1-ATS-L3-CX-2445 |  | DC1-ATS-E11-06 BMS/EPMS | 1d | 2026-03-18 | 2026-03-18 | DC1-ATS-L3-CX-2440 | 10d | 2d | Riley Warring | PRM |
|  | 06 | **DC1-DH1100 ATS-F11 Cx L3** |  | 2026-02-19 | 2026-03-18 |  |  |  |  |  |
|  | 01 | **DC1-DH1100-ATS-F11-01 Cx L3** |  | 2026-02-19 | 2026-02-24 |  |  |  |  |  |
| DC1-ATS-L3-CX-2450 |  | DC1-ATS-F11-01 FTE | 1d | 2026-02-19 | 2026-02-19 | DC1-ATS-L2-2300, DC1-BUS-L3-CX-2030 SS, DC1-SWD-L3-CX-2150 SS | 25d | 0d | Riley Warring | ROS |
| DC1-ATS-L3-CX-2455 |  | DC1-ATS-F11-01 L3 Startup | 2d | 2026-02-20 | 2026-02-23 | DC1-ATS-L3-CX-2450 | 26d | 0d | Riley Warring | MAV |
| DC1-ATS-L3-CX-2460 |  | DC1-ATS-F11-01 BMS/EPMS | 1d | 2026-02-24 | 2026-02-24 | DC1-ATS-L3-CX-2455 | 26d | 18d | Riley Warring | PRM |

Notes:
- DC1-ATS-L3-CX-2380: Steps: EC Startup Report; Vendor Startup
- DC1-ATS-L3-CX-2395: Steps: EC Startup Report; Vendor Startup
- DC1-ATS-L3-CX-2410: Steps: EC Startup Report; Vendor Startup
- DC1-ATS-L3-CX-2425: Steps: EC Startup Report; Vendor Startup
- DC1-ATS-L3-CX-2440: Steps: EC Startup Report; Vendor Startup
- DC1-ATS-L3-CX-2455: Steps: EC Startup Report; Vendor Startup

| ID | WBS | Activity | Duration | Start | Finish | Predecessors | Total float | Free float | Layton Responsible Party | Vendor Responsible Party |
| --- | --- | --- | --- | --- | --- | --- | --- | --- | --- | --- |
|  | 02 | **DC1-DH1100-ATS-F11-02 Cx L3** |  | 2026-03-13 | 2026-03-18 |  |  |  |  |  |
| DC1-ATS-L3-CX-2465 |  | DC1-ATS-F11-02 FTE | 1d | 2026-03-13 | 2026-03-13 | DC1-ATS-L2-2310, DC1-BUS-L3-CX-2000 SS, DC1-BUS-L3-CX-2030 SS | 9d | 0d | Riley Warring | ROS |
| DC1-ATS-L3-CX-2470 |  | DC1-ATS-F11-02 L3 Startup | 2d | 2026-03-16 | 2026-03-17 | DC1-ATS-L3-CX-2465 | 10d | 0d | Riley Warring | MAV |
| DC1-ATS-L3-CX-2475 |  | DC1-ATS-F11-02 BMS/EPMS | 1d | 2026-03-18 | 2026-03-18 | DC1-ATS-L3-CX-2470 | 10d | 2d | Riley Warring | PRM |
|  | 03 | **DC1-DH1100-ATS-F11-03 Cx L3** |  | 2026-02-19 | 2026-02-24 |  |  |  |  |  |
| DC1-ATS-L3-CX-2480 |  | DC1-ATS-F11-03 FTE | 1d | 2026-02-19 | 2026-02-19 | DC1-ATS-L2-2320, DC1-BUS-L3-CX-2030 SS, DC1-SWD-L3-CX-2150 SS | 25d | 0d | Riley Warring | ROS |
| DC1-ATS-L3-CX-2485 |  | DC1-ATS-F11-03 L3 Startup | 2d | 2026-02-20 | 2026-02-23 | DC1-ATS-L3-CX-2480 | 26d | 0d | Riley Warring | MAV |
| DC1-ATS-L3-CX-2490 |  | DC1-ATS-F11-03 BMS/EPMS | 1d | 2026-02-24 | 2026-02-24 | DC1-ATS-L3-CX-2485 | 26d | 18d | Riley Warring | PRM |
|  | 04 | **DC1-DH1100-ATS-F11-04 Cx L3** |  | 2026-03-13 | 2026-03-18 |  |  |  |  |  |
| DC1-ATS-L3-CX-2495 |  | DC1-ATS-F11-04 FTE | 1d | 2026-03-13 | 2026-03-13 | DC1-ATS-L2-2330, DC1-BUS-L3-CX-2000 SS, DC1-BUS-L3-CX-2030 SS | 9d | 0d | Riley Warring | ROS |
| DC1-ATS-L3-CX-2500 |  | DC1-ATS-F11-04 L3 Startup | 2d | 2026-03-16 | 2026-03-17 | DC1-ATS-L3-CX-2495 | 10d | 0d | Riley Warring | MAV |
| DC1-ATS-L3-CX-2505 |  | DC1-ATS-F11-04 BMS/EPMS | 1d | 2026-03-18 | 2026-03-18 | DC1-ATS-L3-CX-2500 | 10d | 2d | Riley Warring | PRM |
|  | 05 | **DC1-DH1100-ATS-F11-05 Cx L3** |  | 2026-02-19 | 2026-02-24 |  |  |  |  |  |
| DC1-ATS-L3-CX-2510 |  | DC1-ATS-F11-05 FTE | 1d | 2026-02-19 | 2026-02-19 | DC1-ATS-L2-2340, DC1-BUS-L3-CX-2030 SS, DC1-SWD-L3-CX-2150 SS | 25d | 0d | Riley Warring | ROS |
| DC1-ATS-L3-CX-2515 |  | DC1-ATS-F11-05 L3 Startup | 2d | 2026-02-20 | 2026-02-23 | DC1-ATS-L3-CX-2510 | 26d | 0d | Riley Warring | MAV |
| DC1-ATS-L3-CX-2520 |  | DC1-ATS-F11-05 BMS/EPMS | 1d | 2026-02-24 | 2026-02-24 | DC1-ATS-L3-CX-2515 | 26d | 18d | Riley Warring | PRM |
|  | 06 | **DC1-DH1100-ATS-F11-06 Cx L3** |  | 2026-03-13 | 2026-03-18 |  |  |  |  |  |
| DC1-ATS-L3-CX-2525 |  | DC1-ATS-F11-06 FTE | 1d | 2026-03-13 | 2026-03-13 | DC1-ATS-L2-2350, DC1-BUS-L3-CX-2000 SS, DC1-BUS-L3-CX-2030 SS | 9d | 0d | Riley Warring | ROS |
| DC1-ATS-L3-CX-2530 |  | DC1-ATS-F11-06 L3 Startup | 2d | 2026-03-16 | 2026-03-17 | DC1-ATS-L3-CX-2525 | 10d | 0d | Riley Warring | MAV |
| DC1-ATS-L3-CX-2535 |  | DC1-ATS-F11-06 BMS/EPMS | 1d | 2026-03-18 | 2026-03-18 | DC1-ATS-L3-CX-2530 | 10d | 2d | Riley Warring | PRM |
|  | 06 | **DC1-DH1100 CODs Cx L3** |  | 2026-02-16 | 2026-03-20 |  |  |  |  |  |
|  | 01 | **DC1-DH1100-COD-A11 Cx L3** |  | 2026-02-17 | 2026-03-19 |  |  |  |  |  |
|  | 01 | **DC1-DH1100-COD-A11-01 Cx L3** |  | 2026-02-17 | 2026-02-20 |  |  |  |  |  |
| DC1-COD-L3-CX-2000 |  | DC1-COD-A11-01 FTE | 1d | 2026-02-17 | 2026-02-17 | DC1-COD-L2-2000, DC1-ATS-L3-CX-2000 | 28d | 0d | Riley Warring | ROS |
| DC1-COD-L3-CX-2005 |  | DC1-COD-A11-01 L3 Startup | 2d | 2026-02-18 | 2026-02-19 | DC1-COD-L3-CX-2000 | 28d | 0d | Riley Warring | SIE |
| DC1-COD-L3-CX-2010 |  | DC1-COD-A11-01 BMS/EPMS | 1d | 2026-02-20 | 2026-02-20 | DC1-COD-L3-CX-2005 | 28d | 20d | Riley Warring | PRM |

Notes:
- DC1-ATS-L3-CX-2470: Steps: EC Startup Report; Vendor Startup
- DC1-ATS-L3-CX-2485: Steps: EC Startup Report; Vendor Startup
- DC1-ATS-L3-CX-2500: Steps: EC Startup Report; Vendor Startup
- DC1-ATS-L3-CX-2515: Steps: EC Startup Report; Vendor Startup
- DC1-ATS-L3-CX-2530: Steps: EC Startup Report; Vendor Startup
- DC1-COD-L3-CX-2005: Steps: EC Startup Report; Vendor Startup

| ID | WBS | Activity | Duration | Start | Finish | Predecessors | Total float | Free float | Layton Responsible Party | Vendor Responsible Party |
| --- | --- | --- | --- | --- | --- | --- | --- | --- | --- | --- |
|  | 02 | **DC1-DH1100-COD-A11-02 Cx L3** |  | 2026-03-16 | 2026-03-19 |  |  |  |  |  |
| DC1-COD-L3-CX-2015 |  | DC1-COD-A11-02 FTE | 1d | 2026-03-16 | 2026-03-16 | DC1-COD-L2-2010, DC1-ATS-L3-CX-2015 | 9d | 0d | Riley Warring | ROS |
| DC1-COD-L3-CX-2020 |  | DC1-COD-A11-02 L3 Startup | 2d | 2026-03-17 | 2026-03-18 | DC1-COD-L3-CX-2015 | 9d | 0d | Riley Warring | SIE |
| DC1-COD-L3-CX-2025 |  | DC1-COD-A11-02 BMS/EPMS | 1d | 2026-03-19 | 2026-03-19 | DC1-COD-L3-CX-2020 | 9d | 1d | Riley Warring | PRM |
|  | 03 | **DC1-DH1100-COD-A11-03 Cx L3** |  | 2026-02-17 | 2026-02-20 |  |  |  |  |  |
| DC1-COD-L3-CX-2030 |  | DC1-COD-A11-03 FTE | 1d | 2026-02-17 | 2026-02-17 | DC1-COD-L2-2020, DC1-ATS-L3-CX-2030 | 28d | 0d | Riley Warring | ROS |
| DC1-COD-L3-CX-2035 |  | DC1-COD-A11-03 L3 Startup | 2d | 2026-02-18 | 2026-02-19 | DC1-COD-L3-CX-2030 | 28d | 0d | Riley Warring | SIE |
| DC1-COD-L3-CX-2040 |  | DC1-COD-A11-03 BMS/EPMS | 1d | 2026-02-20 | 2026-02-20 | DC1-COD-L3-CX-2035 | 28d | 20d | Riley Warring | PRM |
|  | 04 | **DC1-DH1100-COD-A11-04 Cx L3** |  | 2026-03-16 | 2026-03-19 |  |  |  |  |  |
| DC1-COD-L3-CX-2045 |  | DC1-COD-A11-04 FTE | 1d | 2026-03-16 | 2026-03-16 | DC1-COD-L2-2030, DC1-ATS-L3-CX-2045 | 9d | 0d | Riley Warring | ROS |
| DC1-COD-L3-CX-2050 |  | DC1-COD-A11-04 L3 Startup | 2d | 2026-03-17 | 2026-03-18 | DC1-COD-L3-CX-2045 | 9d | 0d | Riley Warring | SIE |
| DC1-COD-L3-CX-2055 |  | DC1-COD-A11-04 BMS/EPMS | 1d | 2026-03-19 | 2026-03-19 | DC1-COD-L3-CX-2050 | 9d | 1d | Riley Warring | PRM |
|  | 05 | **DC1-DH1100-COD-A11-05 Cx L3** |  | 2026-02-17 | 2026-02-20 |  |  |  |  |  |
| DC1-COD-L3-CX-2060 |  | DC1-COD-A11-05 FTE | 1d | 2026-02-17 | 2026-02-17 | DC1-COD-L2-2040, DC1-ATS-L3-CX-2060 | 28d | 0d | Riley Warring | ROS |
| DC1-COD-L3-CX-2065 |  | DC1-COD-A11-05 L3 Startup | 2d | 2026-02-18 | 2026-02-19 | DC1-COD-L3-CX-2060 | 28d | 0d | Riley Warring | SIE |
| DC1-COD-L3-CX-2070 |  | DC1-COD-A11-05 BMS/EPMS | 1d | 2026-02-20 | 2026-02-20 | DC1-COD-L3-CX-2065 | 28d | 20d | Riley Warring | PRM |
|  | 06 | **DC1-DH1100-COD-A11-06 Cx L3** |  | 2026-03-16 | 2026-03-19 |  |  |  |  |  |
| DC1-COD-L3-CX-2075 |  | DC1-COD-A11-06 FTE | 1d | 2026-03-16 | 2026-03-16 | DC1-COD-L2-2050, DC1-ATS-L3-CX-2075 | 9d | 0d | Riley Warring | ROS |
| DC1-COD-L3-CX-2080 |  | DC1-COD-A11-06 L3 Startup | 2d | 2026-03-17 | 2026-03-18 | DC1-COD-L3-CX-2075 | 9d | 0d | Riley Warring | SIE |
| DC1-COD-L3-CX-2085 |  | DC1-COD-A11-06 BMS/EPMS | 1d | 2026-03-19 | 2026-03-19 | DC1-COD-L3-CX-2080 | 9d | 1d | Riley Warring | PRM |
|  | 02 | **DC1-DH1100-COD-B11 Cx L3** |  | 2026-02-17 | 2026-03-20 |  |  |  |  |  |
|  | 01 | **DC1-DH1100-COD-B11-01 Cx L3** |  | 2026-02-17 | 2026-02-20 |  |  |  |  |  |
| DC1-COD-L3-CX-2090 |  | DC1-COD-B11-01 FTE | 1d | 2026-02-17 | 2026-02-17 | DC1-COD-L2-2060, DC1-ATS-L3-CX-2090 | 28d | 0d | Riley Warring | ROS |
| DC1-COD-L3-CX-2095 |  | DC1-COD-B11-01 L3 Startup | 2d | 2026-02-18 | 2026-02-19 | DC1-COD-L3-CX-2090 | 28d | 0d | Riley Warring | SIE |
| DC1-COD-L3-CX-2100 |  | DC1-COD-B11-01 BMS/EPMS | 1d | 2026-02-20 | 2026-02-20 | DC1-COD-L3-CX-2095 | 28d | 20d | Riley Warring | PRM |

Notes:
- DC1-COD-L3-CX-2020: Steps: EC Startup Report; Vendor Startup
- DC1-COD-L3-CX-2035: Steps: EC Startup Report; Vendor Startup
- DC1-COD-L3-CX-2050: Steps: EC Startup Report; Vendor Startup
- DC1-COD-L3-CX-2065: Steps: EC Startup Report; Vendor Startup
- DC1-COD-L3-CX-2080: Steps: EC Startup Report; Vendor Startup
- DC1-COD-L3-CX-2095: Steps: EC Startup Report; Vendor Startup

| ID | WBS | Activity | Duration | Start | Finish | Predecessors | Total float | Free float | Layton Responsible Party | Vendor Responsible Party |
| --- | --- | --- | --- | --- | --- | --- | --- | --- | --- | --- |
|  | 02 | **DC1-DH1100-COD-B11-02 Cx L3** |  | 2026-03-17 | 2026-03-20 |  |  |  |  |  |
| DC1-COD-L3-CX-2105 |  | DC1-COD-B11-02 FTE | 1d | 2026-03-17 | 2026-03-17 | DC1-COD-L2-2070, DC1-ATS-L3-CX-2105 | 8d | 0d | Riley Warring | ROS |
| DC1-COD-L3-CX-2110 |  | DC1-COD-B11-02 L3 Startup | 2d | 2026-03-18 | 2026-03-19 | DC1-COD-L3-CX-2105 | 8d | 0d | Riley Warring | SIE |
| DC1-COD-L3-CX-2115 |  | DC1-COD-B11-02 BMS/EPMS | 1d | 2026-03-20 | 2026-03-20 | DC1-COD-L3-CX-2110 | 8d | 0d | Riley Warring | PRM |
|  | 03 | **DC1-DH1100-COD-B11-03 Cx L3** |  | 2026-02-17 | 2026-02-20 |  |  |  |  |  |
| DC1-COD-L3-CX-2120 |  | DC1-COD-B11-03 FTE | 1d | 2026-02-17 | 2026-02-17 | DC1-COD-L2-2080, DC1-ATS-L3-CX-2120 | 28d | 0d | Riley Warring | ROS |
| DC1-COD-L3-CX-2125 |  | DC1-COD-B11-03 L3 Startup | 2d | 2026-02-18 | 2026-02-19 | DC1-COD-L3-CX-2120 | 28d | 0d | Riley Warring | SIE |
| DC1-COD-L3-CX-2130 |  | DC1-COD-B11-03 BMS/EPMS | 1d | 2026-02-20 | 2026-02-20 | DC1-COD-L3-CX-2125 | 28d | 20d | Riley Warring | PRM |
|  | 04 | **DC1-DH1100-COD-B11-04 Cx L3** |  | 2026-03-17 | 2026-03-20 |  |  |  |  |  |
| DC1-COD-L3-CX-2135 |  | DC1-COD-B11-04 FTE | 1d | 2026-03-17 | 2026-03-17 | DC1-COD-L2-2090, DC1-ATS-L3-CX-2135 | 8d | 0d | Riley Warring | ROS |
| DC1-COD-L3-CX-2140 |  | DC1-COD-B11-04 L3 Startup | 2d | 2026-03-18 | 2026-03-19 | DC1-COD-L3-CX-2135 | 8d | 0d | Riley Warring | SIE |
| DC1-COD-L3-CX-2145 |  | DC1-COD-B11-04 BMS/EPMS | 1d | 2026-03-20 | 2026-03-20 | DC1-COD-L3-CX-2140 | 8d | 0d | Riley Warring | PRM |
|  | 05 | **DC1-DH1100-COD-B11-05 Cx L3** |  | 2026-02-17 | 2026-02-20 |  |  |  |  |  |
| DC1-COD-L3-CX-2150 |  | DC1-COD-B11-05 FTE | 1d | 2026-02-17 | 2026-02-17 | DC1-COD-L2-2100, DC1-ATS-L3-CX-2150 | 28d | 0d | Riley Warring | ROS |
| DC1-COD-L3-CX-2155 |  | DC1-COD-B11-05 L3 Startup | 2d | 2026-02-18 | 2026-02-19 | DC1-COD-L3-CX-2150 | 28d | 0d | Riley Warring | SIE |
| DC1-COD-L3-CX-2160 |  | DC1-COD-B11-05 BMS/EPMS | 1d | 2026-02-20 | 2026-02-20 | DC1-COD-L3-CX-2155 | 28d | 20d | Riley Warring | PRM |
|  | 06 | **DC1-DH1100-COD-B11-06 Cx L3** |  | 2026-03-16 | 2026-03-19 |  |  |  |  |  |
| DC1-COD-L3-CX-2165 |  | DC1-COD-B11-06 FTE | 1d | 2026-03-16 | 2026-03-16 | DC1-COD-L2-2110, DC1-ATS-L3-CX-2165 | 9d | 0d | Riley Warring | ROS |
| DC1-COD-L3-CX-2170 |  | DC1-COD-B11-06 L3 Startup | 2d | 2026-03-17 | 2026-03-18 | DC1-COD-L3-CX-2165 | 9d | 0d | Riley Warring | SIE |
| DC1-COD-L3-CX-2175 |  | DC1-COD-B11-06 BMS/EPMS | 1d | 2026-03-19 | 2026-03-19 | DC1-COD-L3-CX-2170 | 9d | 1d | Riley Warring | PRM |
|  | 03 | **DC1-DH1100-COD-C11 Cx L3** |  | 2026-02-16 | 2026-03-19 |  |  |  |  |  |
|  | 01 | **DC1-DH1100-COD-C11-01 Cx L3** |  | 2026-02-16 | 2026-02-19 |  |  |  |  |  |
| DC1-COD-L3-CX-2180 |  | DC1-COD-C11-01 FTE | 1d | 2026-02-16 | 2026-02-16 | DC1-COD-L2-2120, DC1-ATS-L3-CX-2180 | 29d | 0d | Riley Warring | ROS |
| DC1-COD-L3-CX-2185 |  | DC1-COD-C11-01 L3 Startup | 2d | 2026-02-17 | 2026-02-18 | DC1-COD-L3-CX-2180 | 29d | 0d | Riley Warring | SIE |
| DC1-COD-L3-CX-2190 |  | DC1-COD-C11-01 BMS/EPMS | 1d | 2026-02-19 | 2026-02-19 | DC1-COD-L3-CX-2185 | 29d | 21d | Riley Warring | PRM |

Notes:
- DC1-COD-L3-CX-2110: Steps: EC Startup Report; Vendor Startup
- DC1-COD-L3-CX-2125: Steps: EC Startup Report; Vendor Startup
- DC1-COD-L3-CX-2140: Steps: EC Startup Report; Vendor Startup
- DC1-COD-L3-CX-2155: Steps: EC Startup Report; Vendor Startup
- DC1-COD-L3-CX-2170: Steps: EC Startup Report; Vendor Startup
- DC1-COD-L3-CX-2185: Steps: EC Startup Report; Vendor Startup

| ID | WBS | Activity | Duration | Start | Finish | Predecessors | Total float | Free float | Layton Responsible Party | Vendor Responsible Party |
| --- | --- | --- | --- | --- | --- | --- | --- | --- | --- | --- |
|  | 02 | **DC1-DH1100-COD-C11-02 Cx L3** |  | 2026-03-16 | 2026-03-19 |  |  |  |  |  |
| DC1-COD-L3-CX-2195 |  | DC1-COD-C11-02 FTE | 1d | 2026-03-16 | 2026-03-16 | DC1-COD-L2-2130, DC1-ATS-L3-CX-2195 | 9d | 0d | Riley Warring | ROS |
| DC1-COD-L3-CX-2200 |  | DC1-COD-C11-02 L3 Startup | 2d | 2026-03-17 | 2026-03-18 | DC1-COD-L3-CX-2195 | 9d | 0d | Riley Warring | SIE |
| DC1-COD-L3-CX-2205 |  | DC1-COD-C11-02 BMS/EPMS | 1d | 2026-03-19 | 2026-03-19 | DC1-COD-L3-CX-2200 | 9d | 1d | Riley Warring | PRM |
|  | 03 | **DC1-DH1100-COD-C11-03 Cx L3** |  | 2026-02-16 | 2026-02-19 |  |  |  |  |  |
| DC1-COD-L3-CX-2210 |  | DC1-COD-C11-03 FTE | 1d | 2026-02-16 | 2026-02-16 | DC1-COD-L2-2140, DC1-ATS-L3-CX-2210 | 29d | 0d | Riley Warring | ROS |
| DC1-COD-L3-CX-2215 |  | DC1-COD-C11-03 L3 Startup | 2d | 2026-02-17 | 2026-02-18 | DC1-COD-L3-CX-2210 | 29d | 0d | Riley Warring | SIE |
| DC1-COD-L3-CX-2220 |  | DC1-COD-C11-03 BMS/EPMS | 1d | 2026-02-19 | 2026-02-19 | DC1-COD-L3-CX-2215 | 29d | 21d | Riley Warring | PRM |
|  | 04 | **DC1-DH1100-COD-C11-04 Cx L3** |  | 2026-03-16 | 2026-03-19 |  |  |  |  |  |
| DC1-COD-L3-CX-2225 |  | DC1-COD-C11-04 FTE | 1d | 2026-03-16 | 2026-03-16 | DC1-COD-L2-2150, DC1-ATS-L3-CX-2225 | 9d | 0d | Riley Warring | ROS |
| DC1-COD-L3-CX-2230 |  | DC1-COD-C11-04 L3 Startup | 2d | 2026-03-17 | 2026-03-18 | DC1-COD-L3-CX-2225 | 9d | 0d | Riley Warring | SIE |
| DC1-COD-L3-CX-2235 |  | DC1-COD-C11-04 BMS/EPMS | 1d | 2026-03-19 | 2026-03-19 | DC1-COD-L3-CX-2230 | 9d | 1d | Riley Warring | PRM |
|  | 05 | **DC1-DH1100-COD-C11-05 Cx L3** |  | 2026-02-16 | 2026-02-19 |  |  |  |  |  |
| DC1-COD-L3-CX-2240 |  | DC1-COD-C11-05 FTE | 1d | 2026-02-16 | 2026-02-16 | DC1-COD-L2-2160, DC1-ATS-L3-CX-2240 | 29d | 0d | Riley Warring | ROS |
| DC1-COD-L3-CX-2245 |  | DC1-COD-C11-05 L3 Startup | 2d | 2026-02-17 | 2026-02-18 | DC1-COD-L3-CX-2240 | 29d | 0d | Riley Warring | SIE |
| DC1-COD-L3-CX-2250 |  | DC1-COD-C11-05 BMS/EPMS | 1d | 2026-02-19 | 2026-02-19 | DC1-COD-L3-CX-2245 | 29d | 21d | Riley Warring | PRM |
|  | 06 | **DC1-DH1100-COD-C11-06 Cx L3** |  | 2026-03-16 | 2026-03-19 |  |  |  |  |  |
| DC1-COD-L3-CX-2255 |  | DC1-COD-C11-06 FTE | 1d | 2026-03-16 | 2026-03-16 | DC1-COD-L2-2170, DC1-ATS-L3-CX-2255 | 9d | 0d | Riley Warring | ROS |
| DC1-COD-L3-CX-2260 |  | DC1-COD-C11-06 L3 Startup | 2d | 2026-03-17 | 2026-03-18 | DC1-COD-L3-CX-2255 | 9d | 0d | Riley Warring | SIE |
| DC1-COD-L3-CX-2265 |  | DC1-COD-C11-06 BMS/EPMS | 1d | 2026-03-19 | 2026-03-19 | DC1-COD-L3-CX-2260 | 9d | 1d | Riley Warring | PRM |
|  | 04 | **DC1-DH1100-COD-D11 Cx L3** |  | 2026-02-18 | 2026-03-19 |  |  |  |  |  |
|  | 01 | **DC1-DH1100-COD-D11-01 Cx L3** |  | 2026-02-18 | 2026-02-23 |  |  |  |  |  |
| DC1-COD-L3-CX-2270 |  | DC1-COD-D11-01 FTE | 1d | 2026-02-18 | 2026-02-18 | DC1-COD-L2-2180, DC1-ATS-L3-CX-2270, QTS-1080.2 FF | 27d | 0d | Riley Warring | ROS |
| DC1-COD-L3-CX-2275 |  | DC1-COD-D11-01 L3 Startup | 2d | 2026-02-19 | 2026-02-20 | DC1-COD-L3-CX-2270 | 27d | 0d | Riley Warring | SIE |
| DC1-COD-L3-CX-2280 |  | DC1-COD-D11-01 BMS/EPMS | 1d | 2026-02-23 | 2026-02-23 | DC1-COD-L3-CX-2275 | 27d | 19d | Riley Warring | PRM |

Notes:
- DC1-COD-L3-CX-2200: Steps: EC Startup Report; Vendor Startup
- DC1-COD-L3-CX-2215: Steps: EC Startup Report; Vendor Startup
- DC1-COD-L3-CX-2230: Steps: EC Startup Report; Vendor Startup
- DC1-COD-L3-CX-2245: Steps: EC Startup Report; Vendor Startup
- DC1-COD-L3-CX-2260: Steps: EC Startup Report; Vendor Startup
- DC1-COD-L3-CX-2275: Steps: EC Startup Report; Vendor Startup

| ID | WBS | Activity | Duration | Start | Finish | Predecessors | Total float | Free float | Layton Responsible Party | Vendor Responsible Party |
| --- | --- | --- | --- | --- | --- | --- | --- | --- | --- | --- |
|  | 02 | **DC1-DH1100-COD-D11-02 Cx L3** |  | 2026-03-16 | 2026-03-19 |  |  |  |  |  |
| DC1-COD-L3-CX-2285 |  | DC1-COD-D11-02 FTE | 1d | 2026-03-16 | 2026-03-16 | DC1-COD-L2-2190, DC1-ATS-L3-CX-2285 | 9d | 0d | Riley Warring | ROS |
| DC1-COD-L3-CX-2290 |  | DC1-COD-D11-02 L3 Startup | 2d | 2026-03-17 | 2026-03-18 | DC1-COD-L3-CX-2285 | 9d | 0d | Riley Warring | SIE |
| DC1-COD-L3-CX-2295 |  | DC1-COD-D11-02 BMS/EPMS | 1d | 2026-03-19 | 2026-03-19 | DC1-COD-L3-CX-2290 | 9d | 1d | Riley Warring | PRM |
|  | 03 | **DC1-DH1100-COD-D11-03 Cx L3** |  | 2026-02-18 | 2026-02-23 |  |  |  |  |  |
| DC1-COD-L3-CX-2300 |  | DC1-COD-D11-03 FTE | 1d | 2026-02-18 | 2026-02-18 | DC1-COD-L2-2200, DC1-ATS-L3-CX-2300 | 27d | 0d | Riley Warring | ROS |
| DC1-COD-L3-CX-2305 |  | DC1-COD-D11-03 L3 Startup | 2d | 2026-02-19 | 2026-02-20 | DC1-COD-L3-CX-2300 | 27d | 0d | Riley Warring | SIE |
| DC1-COD-L3-CX-2310 |  | DC1-COD-D11-03 BMS/EPMS | 1d | 2026-02-23 | 2026-02-23 | DC1-COD-L3-CX-2305 | 27d | 19d | Riley Warring | PRM |
|  | 04 | **DC1-DH1100-COD-D11-04 Cx L3** |  | 2026-03-16 | 2026-03-19 |  |  |  |  |  |
| DC1-COD-L3-CX-2315 |  | DC1-COD-D11-04 FTE | 1d | 2026-03-16 | 2026-03-16 | DC1-COD-L2-2210, DC1-ATS-L3-CX-2315 | 9d | 0d | Riley Warring | ROS |
| DC1-COD-L3-CX-2320 |  | DC1-COD-D11-04 L3 Startup | 2d | 2026-03-17 | 2026-03-18 | DC1-COD-L3-CX-2315 | 9d | 0d | Riley Warring | SIE |
| DC1-COD-L3-CX-2325 |  | DC1-COD-D11-04 BMS/EPMS | 1d | 2026-03-19 | 2026-03-19 | DC1-COD-L3-CX-2320 | 9d | 1d | Riley Warring | PRM |
|  | 05 | **DC1-DH1100-COD-D11-05 Cx L3** |  | 2026-02-18 | 2026-02-23 |  |  |  |  |  |
| DC1-COD-L3-CX-2330 |  | DC1-COD-D11-05 FTE | 1d | 2026-02-18 | 2026-02-18 | DC1-COD-L2-2220, DC1-ATS-L3-CX-2330 | 27d | 0d | Riley Warring | ROS |
| DC1-COD-L3-CX-2335 |  | DC1-COD-D11-05 L3 Startup | 2d | 2026-02-19 | 2026-02-20 | DC1-COD-L3-CX-2330 | 27d | 0d | Riley Warring | SIE |
| DC1-COD-L3-CX-2340 |  | DC1-COD-D11-05 BMS/EPMS | 1d | 2026-02-23 | 2026-02-23 | DC1-COD-L3-CX-2335 | 27d | 19d | Riley Warring | PRM |
|  | 06 | **DC1-DH1100-COD-D11-06 Cx L3** |  | 2026-03-16 | 2026-03-19 |  |  |  |  |  |
| DC1-COD-L3-CX-2345 |  | DC1-COD-D11-06 FTE | 1d | 2026-03-16 | 2026-03-16 | DC1-COD-L2-2230, DC1-ATS-L3-CX-2345 | 9d | 0d | Riley Warring | ROS |
| DC1-COD-L3-CX-2350 |  | DC1-COD-D11-06 L3 Startup | 2d | 2026-03-17 | 2026-03-18 | DC1-COD-L3-CX-2345 | 9d | 0d | Riley Warring | SIE |
| DC1-COD-L3-CX-2355 |  | DC1-COD-D11-06 BMS/EPMS | 1d | 2026-03-19 | 2026-03-19 | DC1-COD-L3-CX-2350 | 9d | 1d | Riley Warring | PRM |
|  | 05 | **DC1-DH1100-COD-E11 Cx L3** |  | 2026-02-20 | 2026-03-19 |  |  |  |  |  |
|  | 01 | **DC1-DH1100-ATS-E11-01 Cx L3** |  | 2026-02-20 | 2026-02-25 |  |  |  |  |  |
| DC1-COD-L3-CX-2360 |  | DC1-COD-E11-01 FTE | 1d | 2026-02-20 | 2026-02-20 | DC1-COD-L2-2240, DC1-ATS-L3-CX-2360, QTS-1080.2 | 25d | 0d | Riley Warring | ROS |
| DC1-COD-L3-CX-2365 |  | DC1-COD-E11-01 L3 Startup | 2d | 2026-02-23 | 2026-02-24 | DC1-COD-L3-CX-2360 | 25d | 0d | Riley Warring | SIE |
| DC1-COD-L3-CX-2370 |  | DC1-COD-E11-01 BMS/EPMS | 1d | 2026-02-25 | 2026-02-25 | DC1-COD-L3-CX-2365 | 25d | 17d | Riley Warring | PRM |

Notes:
- DC1-COD-L3-CX-2290: Steps: EC Startup Report; Vendor Startup
- DC1-COD-L3-CX-2305: Steps: EC Startup Report; Vendor Startup
- DC1-COD-L3-CX-2320: Steps: EC Startup Report; Vendor Startup
- DC1-COD-L3-CX-2335: Steps: EC Startup Report; Vendor Startup
- DC1-COD-L3-CX-2350: Steps: EC Startup Report; Vendor Startup
- DC1-COD-L3-CX-2365: Steps: EC Startup Report; Vendor Startup

| ID | WBS | Activity | Duration | Start | Finish | Predecessors | Total float | Free float | Layton Responsible Party | Vendor Responsible Party |
| --- | --- | --- | --- | --- | --- | --- | --- | --- | --- | --- |
|  | 02 | **DC1-DH1100-ATS-E11-02 Cx L3** |  | 2026-03-16 | 2026-03-19 |  |  |  |  |  |
| DC1-COD-L3-CX-2375 |  | DC1-COD-E11-02 FTE | 1d | 2026-03-16 | 2026-03-16 | DC1-COD-L2-2250, DC1-ATS-L3-CX-2375 | 9d | 0d | Riley Warring | ROS |
| DC1-COD-L3-CX-2380 |  | DC1-COD-E11-02 L3 Startup | 2d | 2026-03-17 | 2026-03-18 | DC1-COD-L3-CX-2375 | 9d | 0d | Riley Warring | SIE |
| DC1-COD-L3-CX-2385 |  | DC1-COD-E11-02 BMS/EPMS | 1d | 2026-03-19 | 2026-03-19 | DC1-COD-L3-CX-2380 | 9d | 1d | Riley Warring | PRM |
|  | 03 | **DC1-DH1100-ATS-E11-03 Cx L3** |  | 2026-02-20 | 2026-02-25 |  |  |  |  |  |
| DC1-COD-L3-CX-2390 |  | DC1-COD-E11-03 FTE | 1d | 2026-02-20 | 2026-02-20 | DC1-COD-L2-2260, DC1-ATS-L3-CX-2390 | 25d | 0d | Riley Warring | ROS |
| DC1-COD-L3-CX-2395 |  | DC1-COD-E11-03 L3 Startup | 2d | 2026-02-23 | 2026-02-24 | DC1-COD-L3-CX-2390 | 25d | 0d | Riley Warring | SIE |
| DC1-COD-L3-CX-2400 |  | DC1-COD-E11-03 BMS/EPMS | 1d | 2026-02-25 | 2026-02-25 | DC1-COD-L3-CX-2395 | 25d | 17d | Riley Warring | PRM |
|  | 04 | **DC1-DH1100-ATS-E11-04 Cx L3** |  | 2026-03-16 | 2026-03-19 |  |  |  |  |  |
| DC1-COD-L3-CX-2405 |  | DC1-COD-E11-04 FTE | 1d | 2026-03-16 | 2026-03-16 | DC1-COD-L2-2270, DC1-ATS-L3-CX-2405 | 9d | 0d | Riley Warring | ROS |
| DC1-COD-L3-CX-2410 |  | DC1-COD-E11-04 L3 Startup | 2d | 2026-03-17 | 2026-03-18 | DC1-COD-L3-CX-2405 | 9d | 0d | Riley Warring | SIE |
| DC1-COD-L3-CX-2415 |  | DC1-COD-E11-04 BMS/EPMS | 1d | 2026-03-19 | 2026-03-19 | DC1-COD-L3-CX-2410 | 9d | 1d | Riley Warring | PRM |
|  | 05 | **DC1-DH1100-ATS-E11-05 Cx L3** |  | 2026-02-20 | 2026-02-25 |  |  |  |  |  |
| DC1-COD-L3-CX-2420 |  | DC1-COD-E11-05 FTE | 1d | 2026-02-20 | 2026-02-20 | DC1-COD-L2-2280, DC1-ATS-L3-CX-2420 | 25d | 0d | Riley Warring | ROS |
| DC1-COD-L3-CX-2425 |  | DC1-COD-E11-05 L3 Startup | 2d | 2026-02-23 | 2026-02-24 | DC1-COD-L3-CX-2420 | 25d | 0d | Riley Warring | SIE |
| DC1-COD-L3-CX-2430 |  | DC1-COD-E11-05 BMS/EPMS | 1d | 2026-02-25 | 2026-02-25 | DC1-COD-L3-CX-2425 | 25d | 17d | Riley Warring | PRM |
|  | 06 | **DC1-DH1100-ATS-E11-06 Cx L3** |  | 2026-03-16 | 2026-03-19 |  |  |  |  |  |
| DC1-COD-L3-CX-2435 |  | DC1-COD-E11-06 FTE | 1d | 2026-03-16 | 2026-03-16 | DC1-COD-L2-2290, DC1-ATS-L3-CX-2435 | 9d | 0d | Riley Warring | ROS |
| DC1-COD-L3-CX-2440 |  | DC1-COD-E11-06 L3 Startup | 2d | 2026-03-17 | 2026-03-18 | DC1-COD-L3-CX-2435 | 9d | 0d | Riley Warring | SIE |
| DC1-COD-L3-CX-2445 |  | DC1-COD-E11-06 BMS/EPMS | 1d | 2026-03-19 | 2026-03-19 | DC1-COD-L3-CX-2440 | 9d | 1d | Riley Warring | PRM |
|  | 06 | **DC1-DH1100-COD-F11 Cx L3** |  | 2026-02-20 | 2026-03-19 |  |  |  |  |  |
|  | 01 | **DC1-DH1100-COD-F11-01 Cx L3** |  | 2026-02-20 | 2026-02-25 |  |  |  |  |  |
| DC1-COD-L3-CX-2450 |  | DC1-COD-F11-01 FTE | 1d | 2026-02-20 | 2026-02-20 | DC1-COD-L2-2300, DC1-ATS-L3-CX-2450, QTS-1080.2 | 25d | 0d | Riley Warring | ROS |
| DC1-COD-L3-CX-2455 |  | DC1-COD-F11-01 L3 Startup | 2d | 2026-02-23 | 2026-02-24 | DC1-COD-L3-CX-2450 | 25d | 0d | Riley Warring | SIE |
| DC1-COD-L3-CX-2460 |  | DC1-COD-F11-01 BMS/EPMS | 1d | 2026-02-25 | 2026-02-25 | DC1-COD-L3-CX-2455 | 25d | 17d | Riley Warring | PRM |

Notes:
- DC1-COD-L3-CX-2380: Steps: EC Startup Report; Vendor Startup
- DC1-COD-L3-CX-2395: Steps: EC Startup Report; Vendor Startup
- DC1-COD-L3-CX-2410: Steps: EC Startup Report; Vendor Startup
- DC1-COD-L3-CX-2425: Steps: EC Startup Report; Vendor Startup
- DC1-COD-L3-CX-2440: Steps: EC Startup Report; Vendor Startup
- DC1-COD-L3-CX-2455: Steps: EC Startup Report; Vendor Startup

| ID | WBS | Activity | Duration | Start | Finish | Predecessors | Total float | Free float | Layton Responsible Party | Vendor Responsible Party |
| --- | --- | --- | --- | --- | --- | --- | --- | --- | --- | --- |
|  | 02 | **DC1-DH1100-COD-F11-02 Cx L3** |  | 2026-03-16 | 2026-03-19 |  |  |  |  |  |
| DC1-COD-L3-CX-2465 |  | DC1-COD-F11-02 FTE | 1d | 2026-03-16 | 2026-03-16 | DC1-COD-L2-2310, DC1-ATS-L3-CX-2465 | 9d | 0d | Riley Warring | ROS |
| DC1-COD-L3-CX-2470 |  | DC1-COD-F11-02 L3 Startup | 2d | 2026-03-17 | 2026-03-18 | DC1-COD-L3-CX-2465 | 9d | 0d | Riley Warring | SIE |
| DC1-COD-L3-CX-2475 |  | DC1-COD-F11-02 BMS/EPMS | 1d | 2026-03-19 | 2026-03-19 | DC1-COD-L3-CX-2470 | 9d | 1d | Riley Warring | PRM |
|  | 03 | **DC1-DH1100-COD-F11-03 Cx L3** |  | 2026-02-20 | 2026-02-25 |  |  |  |  |  |
| DC1-COD-L3-CX-2480 |  | DC1-COD-F11-03 FTE | 1d | 2026-02-20 | 2026-02-20 | DC1-COD-L2-2320, DC1-ATS-L3-CX-2480 | 25d | 0d | Riley Warring | ROS |
| DC1-COD-L3-CX-2485 |  | DC1-COD-F11-03 L3 Startup | 2d | 2026-02-23 | 2026-02-24 | DC1-COD-L3-CX-2480 | 25d | 0d | Riley Warring | SIE |
| DC1-COD-L3-CX-2490 |  | DC1-COD-F11-03 BMS/EPMS | 1d | 2026-02-25 | 2026-02-25 | DC1-COD-L3-CX-2485 | 25d | 17d | Riley Warring | PRM |
|  | 04 | **DC1-DH1100-COD-F11-04 Cx L3** |  | 2026-03-16 | 2026-03-19 |  |  |  |  |  |
| DC1-COD-L3-CX-2495 |  | DC1-COD-F11-04 FTE | 1d | 2026-03-16 | 2026-03-16 | DC1-COD-L2-2330, DC1-ATS-L3-CX-2495 | 9d | 0d | Riley Warring | ROS |
| DC1-COD-L3-CX-2500 |  | DC1-COD-F11-04 L3 Startup | 2d | 2026-03-17 | 2026-03-18 | DC1-COD-L3-CX-2495 | 9d | 0d | Riley Warring | SIE |
| DC1-COD-L3-CX-2505 |  | DC1-COD-F11-04 BMS/EPMS | 1d | 2026-03-19 | 2026-03-19 | DC1-COD-L3-CX-2500 | 9d | 1d | Riley Warring | PRM |
|  | 05 | **DC1-DH1100-COD-F11-05 Cx L3** |  | 2026-02-20 | 2026-02-25 |  |  |  |  |  |
| DC1-COD-L3-CX-2510 |  | DC1-COD-F11-05 FTE | 1d | 2026-02-20 | 2026-02-20 | DC1-COD-L2-2340, DC1-ATS-L3-CX-2510 | 25d | 0d | Riley Warring | ROS |
| DC1-COD-L3-CX-2515 |  | DC1-COD-F11-05 L3 Startup | 2d | 2026-02-23 | 2026-02-24 | DC1-COD-L3-CX-2510 | 25d | 0d | Riley Warring | SIE |
| DC1-COD-L3-CX-2520 |  | DC1-COD-F11-05 BMS/EPMS | 1d | 2026-02-25 | 2026-02-25 | DC1-COD-L3-CX-2515 | 25d | 17d | Riley Warring | PRM |
|  | 06 | **DC1-DH1100-COD-F11-06 Cx L3** |  | 2026-03-16 | 2026-03-19 |  |  |  |  |  |
| DC1-COD-L3-CX-2525 |  | DC1-COD-F11-06 FTE | 1d | 2026-03-16 | 2026-03-16 | DC1-COD-L2-2350, DC1-ATS-L3-CX-2525 | 9d | 0d | Riley Warring | ROS |
| DC1-COD-L3-CX-2530 |  | DC1-COD-F11-06 L3 Startup | 2d | 2026-03-17 | 2026-03-18 | DC1-COD-L3-CX-2525 | 9d | 0d | Riley Warring | SIE |
| DC1-COD-L3-CX-2535 |  | DC1-COD-F11-06 BMS/EPMS | 1d | 2026-03-19 | 2026-03-19 | DC1-COD-L3-CX-2530 | 9d | 1d | Riley Warring | PRM |
|  | 07 | **DC1-DH1100 RPPs Cx L3** |  | 2026-02-17 | 2026-03-23 |  |  |  |  |  |
|  | 01 | **DC1-DH1100-RPP-A11 Cx L3** |  | 2026-02-18 | 2026-03-20 |  |  |  |  |  |
|  | 01 | **DC1-DH1100-RPP-A11-01 Cx L3** |  | 2026-02-18 | 2026-02-23 |  |  |  |  |  |
| DC1-RPP-L3-CX-2000 |  | DC1-RPP-A11-01 A/B FTE | 1d | 2026-02-18 | 2026-02-18 | DC1-COD-L3-CX-2000, DC1-RPP-L2-2000 | 49d | 0d | Riley Warring | ROS |
| DC1-RPP-L3-CX-2005 |  | DC1-RPP-A11-01 A/B L3 Startup | 2d | 2026-02-19 | 2026-02-20 | DC1-RPP-L3-CX-2000 | 49d | 0d | Riley Warring | SQD |
| DC1-RPP-L3-CX-2010 |  | DC1-RPP-A11-01 A/B BMS/EPMS | 1d | 2026-02-23 | 2026-02-23 | DC1-RPP-L3-CX-2005 | 49d |  | Riley Warring | PRM |

Notes:
- DC1-COD-L3-CX-2470: Steps: EC Startup Report; Vendor Startup
- DC1-COD-L3-CX-2485: Steps: EC Startup Report; Vendor Startup
- DC1-COD-L3-CX-2500: Steps: EC Startup Report; Vendor Startup
- DC1-COD-L3-CX-2515: Steps: EC Startup Report; Vendor Startup
- DC1-COD-L3-CX-2530: Steps: EC Startup Report; Vendor Startup
- DC1-RPP-L3-CX-2005: Steps: EC Startup Report; Vendor Startup

| ID | WBS | Activity | Duration | Start | Finish | Predecessors | Total float | Free float | Layton Responsible Party | Vendor Responsible Party |
| --- | --- | --- | --- | --- | --- | --- | --- | --- | --- | --- |
|  | 02 | **DC1-DH1100-RPP-A11-02 Cx L3** |  | 2026-03-17 | 2026-03-20 |  |  |  |  |  |
| DC1-RPP-L3-CX-2015 |  | DC1-RPP-A11-02 A/B FTE | 1d | 2026-03-17 | 2026-03-17 | DC1-COD-L3-CX-2015, DC1-RPP-L2-2010 | 30d | 0d | Riley Warring | ROS |
| DC1-RPP-L3-CX-2020 |  | DC1-RPP-A11-02 A/B L3 Startup | 2d | 2026-03-18 | 2026-03-19 | DC1-RPP-L3-CX-2015 | 30d | 0d | Riley Warring | SQD |
| DC1-RPP-L3-CX-2025 |  | DC1-RPP-A11-02 A/B BMS/EPMS | 1d | 2026-03-20 | 2026-03-20 | DC1-RPP-L3-CX-2020 | 30d |  | Riley Warring | PRM |
|  | 03 | **DC1-DH1100-RPP-A11-03 Cx L3** |  | 2026-02-18 | 2026-02-23 |  |  |  |  |  |
| DC1-RPP-L3-CX-2030 |  | DC1-RPP-A11-03 A/B FTE | 1d | 2026-02-18 | 2026-02-18 | DC1-COD-L3-CX-2030, DC1-RPP-L2-2020 | 49d | 0d | Riley Warring | ROS |
| DC1-RPP-L3-CX-2035 |  | DC1-RPP-A11-03 A/B L3 Startup | 2d | 2026-02-19 | 2026-02-20 | DC1-RPP-L3-CX-2030 | 49d | 0d | Riley Warring | SQD |
| DC1-RPP-L3-CX-2040 |  | DC1-RPP-A11-03 A/B BMS/EPMS | 1d | 2026-02-23 | 2026-02-23 | DC1-RPP-L3-CX-2035 | 49d |  | Riley Warring | PRM |
|  | 04 | **DC1-DH1100-RPP-A11-04 Cx L3** |  | 2026-03-17 | 2026-03-20 |  |  |  |  |  |
| DC1-RPP-L3-CX-2045 |  | DC1-RPP-A11-04 A/B FTE | 1d | 2026-03-17 | 2026-03-17 | DC1-COD-L3-CX-2045, DC1-RPP-L2-2030 | 30d | 0d | Riley Warring | ROS |
| DC1-RPP-L3-CX-2050 |  | DC1-RPP-A11-04 A/B L3 Startup | 2d | 2026-03-18 | 2026-03-19 | DC1-RPP-L3-CX-2045 | 30d | 0d | Riley Warring | SQD |
| DC1-RPP-L3-CX-2055 |  | DC1-RPP-A11-04 A/B BMS/EPMS | 1d | 2026-03-20 | 2026-03-20 | DC1-RPP-L3-CX-2050 | 30d |  | Riley Warring | PRM |
|  | 05 | **DC1-DH1100-RPP-A11-05 Cx L3** |  | 2026-02-18 | 2026-02-23 |  |  |  |  |  |
| DC1-RPP-L3-CX-2060 |  | DC1-RPP-A11-05 A/B FTE | 1d | 2026-02-18 | 2026-02-18 | DC1-COD-L3-CX-2060, DC1-RPP-L2-2040 | 49d | 0d | Riley Warring | ROS |
| DC1-RPP-L3-CX-2065 |  | DC1-RPP-A11-05 A/B L3 Startup | 2d | 2026-02-19 | 2026-02-20 | DC1-RPP-L3-CX-2060 | 49d | 0d | Riley Warring | SQD |
| DC1-RPP-L3-CX-2070 |  | DC1-RPP-A11-05 A/B BMS/EPMS | 1d | 2026-02-23 | 2026-02-23 | DC1-RPP-L3-CX-2065 | 49d |  | Riley Warring | PRM |
|  | 06 | **DC1-DH1100-RPP-A11-06 Cx L3** |  | 2026-03-17 | 2026-03-20 |  |  |  |  |  |
| DC1-RPP-L3-CX-2075 |  | DC1-RPP-A11-06 A/B FTE | 1d | 2026-03-17 | 2026-03-17 | DC1-COD-L3-CX-2075, DC1-RPP-L2-2050 | 30d | 0d | Riley Warring | ROS |
| DC1-RPP-L3-CX-2080 |  | DC1-RPP-A11-06 A/B L3 Startup | 2d | 2026-03-18 | 2026-03-19 | DC1-RPP-L3-CX-2075 | 30d | 0d | Riley Warring | SQD |
| DC1-RPP-L3-CX-2085 |  | DC1-RPP-A11-06 A/B BMS/EPMS | 1d | 2026-03-20 | 2026-03-20 | DC1-RPP-L3-CX-2080 | 30d |  | Riley Warring | PRM |
|  | 02 | **DC1-DH1100-RPP-B11 Cx L3** |  | 2026-02-18 | 2026-03-23 |  |  |  |  |  |
|  | 01 | **DC1-DH1100-RPP-B11-01 Cx L3** |  | 2026-02-18 | 2026-02-23 |  |  |  |  |  |
| DC1-RPP-L3-CX-2090 |  | DC1-RPP-B11-01 A/B FTE | 1d | 2026-02-18 | 2026-02-18 | DC1-COD-L3-CX-2090, DC1-RPP-L2-2060 | 49d | 0d | Riley Warring | ROS |
| DC1-RPP-L3-CX-2095 |  | DC1-RPP-B11-01 A/B L3 Startup | 2d | 2026-02-19 | 2026-02-20 | DC1-RPP-L3-CX-2090 | 49d | 0d | Riley Warring | SQD |
| DC1-RPP-L3-CX-2100 |  | DC1-RPP-B11-01 A/B BMS/EPMS | 1d | 2026-02-23 | 2026-02-23 | DC1-RPP-L3-CX-2095 | 49d |  | Riley Warring | PRM |

Notes:
- DC1-RPP-L3-CX-2020: Steps: EC Startup Report; Vendor Startup
- DC1-RPP-L3-CX-2035: Steps: EC Startup Report; Vendor Startup
- DC1-RPP-L3-CX-2050: Steps: EC Startup Report; Vendor Startup
- DC1-RPP-L3-CX-2065: Steps: EC Startup Report; Vendor Startup
- DC1-RPP-L3-CX-2080: Steps: EC Startup Report; Vendor Startup
- DC1-RPP-L3-CX-2095: Steps: EC Startup Report; Vendor Startup

| ID | WBS | Activity | Duration | Start | Finish | Predecessors | Total float | Free float | Layton Responsible Party | Vendor Responsible Party |
| --- | --- | --- | --- | --- | --- | --- | --- | --- | --- | --- |
|  | 02 | **DC1-DH1100-RPP-B11-02 Cx L3** |  | 2026-03-18 | 2026-03-23 |  |  |  |  |  |
| DC1-RPP-L3-CX-2105 |  | DC1-RPP-B11-02 A/B FTE | 1d | 2026-03-18 | 2026-03-18 | DC1-COD-L3-CX-2105, DC1-RPP-L2-2070 | 29d | 0d | Riley Warring | ROS |
| DC1-RPP-L3-CX-2110 |  | DC1-RPP-B11-02 A/B L3 Startup | 2d | 2026-03-19 | 2026-03-20 | DC1-RPP-L3-CX-2105 | 29d | 0d | Riley Warring | SQD |
| DC1-RPP-L3-CX-2115 |  | DC1-RPP-B11-02 A/B BMS/EPMS | 1d | 2026-03-23 | 2026-03-23 | DC1-RPP-L3-CX-2110 | 29d |  | Riley Warring | PRM |
|  | 03 | **DC1-DH1100-RPP-B11-03 Cx L3** |  | 2026-02-18 | 2026-02-23 |  |  |  |  |  |
| DC1-RPP-L3-CX-2120 |  | DC1-RPP-B11-03 A/B FTE | 1d | 2026-02-18 | 2026-02-18 | DC1-COD-L3-CX-2120, DC1-RPP-L2-2080 | 49d | 0d | Riley Warring | ROS |
| DC1-RPP-L3-CX-2125 |  | DC1-RPP-B11-03 A/B L3 Startup | 2d | 2026-02-19 | 2026-02-20 | DC1-RPP-L3-CX-2120 | 49d | 0d | Riley Warring | SQD |
| DC1-RPP-L3-CX-2130 |  | DC1-RPP-B11-03 A/B BMS/EPMS | 1d | 2026-02-23 | 2026-02-23 | DC1-RPP-L3-CX-2125 | 49d |  | Riley Warring | PRM |
|  | 04 | **DC1-DH1100-RPP-B11-04 Cx L3** |  | 2026-03-18 | 2026-03-23 |  |  |  |  |  |
| DC1-RPP-L3-CX-2135 |  | DC1-RPP-B11-04 A/B FTE | 1d | 2026-03-18 | 2026-03-18 | DC1-COD-L3-CX-2135, DC1-RPP-L2-2090 | 29d | 0d | Riley Warring | ROS |
| DC1-RPP-L3-CX-2140 |  | DC1-RPP-B11-04 A/B L3 Startup | 2d | 2026-03-19 | 2026-03-20 | DC1-RPP-L3-CX-2135 | 29d | 0d | Riley Warring | SQD |
| DC1-RPP-L3-CX-2145 |  | DC1-RPP-B11-04 A/B BMS/EPMS | 1d | 2026-03-23 | 2026-03-23 | DC1-RPP-L3-CX-2140 | 29d |  | Riley Warring | PRM |
|  | 05 | **DC1-DH1100-RPP-B11-05 Cx L3** |  | 2026-02-18 | 2026-02-23 |  |  |  |  |  |
| DC1-RPP-L3-CX-2150 |  | DC1-RPP-B11-05 A/B FTE | 1d | 2026-02-18 | 2026-02-18 | DC1-COD-L3-CX-2150, DC1-RPP-L2-2100 | 49d | 0d | Riley Warring | ROS |
| DC1-RPP-L3-CX-2155 |  | DC1-RPP-B11-05 A/B L3 Startup | 2d | 2026-02-19 | 2026-02-20 | DC1-RPP-L3-CX-2150 | 49d | 0d | Riley Warring | SQD |
| DC1-RPP-L3-CX-2160 |  | DC1-RPP-B11-05 A/B BMS/EPMS | 1d | 2026-02-23 | 2026-02-23 | DC1-RPP-L3-CX-2155 | 49d |  | Riley Warring | PRM |
|  | 06 | **DC1-DH1100-RPP-B11-06 Cx L3** |  | 2026-03-17 | 2026-03-20 |  |  |  |  |  |
| DC1-RPP-L3-CX-2165 |  | DC1-RPP-B11-06 A/B FTE | 1d | 2026-03-17 | 2026-03-17 | DC1-COD-L3-CX-2165, DC1-RPP-L2-2110 | 30d | 0d | Riley Warring | ROS |
| DC1-RPP-L3-CX-2170 |  | DC1-RPP-B11-06 A/B L3 Startup | 2d | 2026-03-18 | 2026-03-19 | DC1-RPP-L3-CX-2165 | 30d | 0d | Riley Warring | SQD |
| DC1-RPP-L3-CX-2175 |  | DC1-RPP-B11-06 A/B BMS/EPMS | 1d | 2026-03-20 | 2026-03-20 | DC1-RPP-L3-CX-2170 | 30d |  | Riley Warring | PRM |
|  | 03 | **DC1-DH1100-RPP-C11 Cx L3** |  | 2026-02-17 | 2026-03-20 |  |  |  |  |  |
|  | 01 | **DC1-DH1100-RPP-C11-01 Cx L3** |  | 2026-02-17 | 2026-02-20 |  |  |  |  |  |
| DC1-RPP-L3-CX-2180 |  | DC1-RPP-C11-01 A/B FTE | 1d | 2026-02-17 | 2026-02-17 | DC1-COD-L3-CX-2180, DC1-RPP-L2-2120 | 50d | 0d | Riley Warring | ROS |
| DC1-RPP-L3-CX-2185 |  | DC1-RPP-C11-01 A/B L3 Startup | 2d | 2026-02-18 | 2026-02-19 | DC1-RPP-L3-CX-2180 | 50d | 0d | Riley Warring | SQD |
| DC1-RPP-L3-CX-2190 |  | DC1-RPP-C11-01 A/B BMS/EPMS | 1d | 2026-02-20 | 2026-02-20 | DC1-RPP-L3-CX-2185 | 50d |  | Riley Warring | PRM |

Notes:
- DC1-RPP-L3-CX-2110: Steps: EC Startup Report; Vendor Startup
- DC1-RPP-L3-CX-2125: Steps: EC Startup Report; Vendor Startup
- DC1-RPP-L3-CX-2140: Steps: EC Startup Report; Vendor Startup
- DC1-RPP-L3-CX-2155: Steps: EC Startup Report; Vendor Startup
- DC1-RPP-L3-CX-2170: Steps: EC Startup Report; Vendor Startup
- DC1-RPP-L3-CX-2185: Steps: EC Startup Report; Vendor Startup

| ID | WBS | Activity | Duration | Start | Finish | Predecessors | Total float | Free float | Layton Responsible Party | Vendor Responsible Party |
| --- | --- | --- | --- | --- | --- | --- | --- | --- | --- | --- |
|  | 02 | **DC1-DH1100-RPP-C11-02 Cx L3** |  | 2026-03-17 | 2026-03-20 |  |  |  |  |  |
| DC1-RPP-L3-CX-2195 |  | DC1-RPP-C11-02 A/B FTE | 1d | 2026-03-17 | 2026-03-17 | DC1-COD-L3-CX-2195, DC1-RPP-L2-2130 | 30d | 0d | Riley Warring | ROS |
| DC1-RPP-L3-CX-2200 |  | DC1-RPP-C11-02 A/B L3 Startup | 2d | 2026-03-18 | 2026-03-19 | DC1-RPP-L3-CX-2195 | 30d | 0d | Riley Warring | SQD |
| DC1-RPP-L3-CX-2205 |  | DC1-RPP-C11-02 A/B BMS/EPMS | 1d | 2026-03-20 | 2026-03-20 | DC1-RPP-L3-CX-2200 | 30d |  | Riley Warring | PRM |
|  | 03 | **DC1-DH1100-RPP-C11-03 Cx L3** |  | 2026-02-17 | 2026-02-20 |  |  |  |  |  |
| DC1-RPP-L3-CX-2210 |  | DC1-RPP-C11-03 A/B FTE | 1d | 2026-02-17 | 2026-02-17 | DC1-COD-L3-CX-2210, DC1-RPP-L2-2140 | 50d | 0d | Riley Warring | ROS |
| DC1-RPP-L3-CX-2215 |  | DC1-RPP-C11-03 A/B L3 Startup | 2d | 2026-02-18 | 2026-02-19 | DC1-RPP-L3-CX-2210 | 50d | 0d | Riley Warring | SQD |
| DC1-RPP-L3-CX-2220 |  | DC1-RPP-C11-03 A/B BMS/EPMS | 1d | 2026-02-20 | 2026-02-20 | DC1-RPP-L3-CX-2215 | 50d |  | Riley Warring | PRM |
|  | 04 | **DC1-DH1100-RPP-C11-04 Cx L3** |  | 2026-03-17 | 2026-03-20 |  |  |  |  |  |
| DC1-RPP-L3-CX-2225 |  | DC1-RPP-C11-04 A/B FTE | 1d | 2026-03-17 | 2026-03-17 | DC1-COD-L3-CX-2225, DC1-RPP-L2-2150 | 30d | 0d | Riley Warring | ROS |
| DC1-RPP-L3-CX-2230 |  | DC1-RPP-C11-04 A/B L3 Startup | 2d | 2026-03-18 | 2026-03-19 | DC1-RPP-L3-CX-2225 | 30d | 0d | Riley Warring | SQD |
| DC1-RPP-L3-CX-2235 |  | DC1-RPP-C11-04 A/B BMS/EPMS | 1d | 2026-03-20 | 2026-03-20 | DC1-RPP-L3-CX-2230 | 30d |  | Riley Warring | PRM |
|  | 05 | **DC1-DH1100-RPP-C11-05 Cx L3** |  | 2026-02-17 | 2026-02-20 |  |  |  |  |  |
| DC1-RPP-L3-CX-2240 |  | DC1-RPP-C11-05 A/B FTE | 1d | 2026-02-17 | 2026-02-17 | DC1-COD-L3-CX-2240, DC1-RPP-L2-2160 | 50d | 0d | Riley Warring | ROS |
| DC1-RPP-L3-CX-2245 |  | DC1-RPP-C11-05 A/B L3 Startup | 2d | 2026-02-18 | 2026-02-19 | DC1-RPP-L3-CX-2240 | 50d | 0d | Riley Warring | SQD |
| DC1-RPP-L3-CX-2250 |  | DC1-RPP-C11-05 A/B BMS/EPMS | 1d | 2026-02-20 | 2026-02-20 | DC1-RPP-L3-CX-2245 | 50d |  | Riley Warring | PRM |
|  | 06 | **DC1-DH1100-RPP-C11-06 Cx L3** |  | 2026-03-17 | 2026-03-20 |  |  |  |  |  |
| DC1-RPP-L3-CX-2255 |  | DC1-RPP-C11-06 A/B FTE | 1d | 2026-03-17 | 2026-03-17 | DC1-COD-L3-CX-2255, DC1-RPP-L2-2170 | 30d | 0d | Riley Warring | ROS |
| DC1-RPP-L3-CX-2260 |  | DC1-RPP-C11-06 A/B L3 Startup | 2d | 2026-03-18 | 2026-03-19 | DC1-RPP-L3-CX-2255 | 30d | 0d | Riley Warring | SQD |
| DC1-RPP-L3-CX-2265 |  | DC1-RPP-C11-06 A/B BMS/EPMS | 1d | 2026-03-20 | 2026-03-20 | DC1-RPP-L3-CX-2260 | 30d |  | Riley Warring | PRM |
|  | 04 | **DC1-DH1100-RPP-D11 Cx L3** |  | 2026-02-19 | 2026-03-20 |  |  |  |  |  |
|  | 01 | **DC1-DH1100-RPP-D11-01 Cx L3** |  | 2026-02-19 | 2026-02-24 |  |  |  |  |  |
| DC1-RPP-L3-CX-2270 |  | DC1-RPP-D11-01 A/B FTE | 1d | 2026-02-19 | 2026-02-19 | DC1-COD-L3-CX-2270, DC1-RPP-L2-2180 | 48d | 0d | Riley Warring | ROS |
| DC1-RPP-L3-CX-2275 |  | DC1-RPP-D11-01 A/B L3 Startup | 2d | 2026-02-20 | 2026-02-23 | DC1-RPP-L3-CX-2270 | 48d | 0d | Riley Warring | SQD |
| DC1-RPP-L3-CX-2280 |  | DC1-RPP-D11-01 A/B BMS/EPMS | 1d | 2026-02-24 | 2026-02-24 | DC1-RPP-L3-CX-2275 | 48d |  | Riley Warring | PRM |

Notes:
- DC1-RPP-L3-CX-2200: Steps: EC Startup Report; Vendor Startup
- DC1-RPP-L3-CX-2215: Steps: EC Startup Report; Vendor Startup
- DC1-RPP-L3-CX-2230: Steps: EC Startup Report; Vendor Startup
- DC1-RPP-L3-CX-2245: Steps: EC Startup Report; Vendor Startup
- DC1-RPP-L3-CX-2260: Steps: EC Startup Report; Vendor Startup
- DC1-RPP-L3-CX-2275: Steps: EC Startup Report; Vendor Startup

| ID | WBS | Activity | Duration | Start | Finish | Predecessors | Total float | Free float | Layton Responsible Party | Vendor Responsible Party |
| --- | --- | --- | --- | --- | --- | --- | --- | --- | --- | --- |
|  | 02 | **DC1-DH1100-RPP-D11-02 Cx L3** |  | 2026-03-17 | 2026-03-20 |  |  |  |  |  |
| DC1-RPP-L3-CX-2285 |  | DC1-RPP-D11-02 A/B FTE | 1d | 2026-03-17 | 2026-03-17 | DC1-COD-L3-CX-2285, DC1-RPP-L2-2190 | 30d | 0d | Riley Warring | ROS |
| DC1-RPP-L3-CX-2290 |  | DC1-RPP-D11-02 A/B L3 Startup | 2d | 2026-03-18 | 2026-03-19 | DC1-RPP-L3-CX-2285 | 30d | 0d | Riley Warring | SQD |
| DC1-RPP-L3-CX-2295 |  | DC1-RPP-D11-02 A/B BMS/EPMS | 1d | 2026-03-20 | 2026-03-20 | DC1-RPP-L3-CX-2290 | 30d |  | Riley Warring | PRM |
|  | 03 | **DC1-DH1100-RPP-D11-03 Cx L3** |  | 2026-02-19 | 2026-02-24 |  |  |  |  |  |
| DC1-RPP-L3-CX-2300 |  | DC1-RPP-D11-03 A/B FTE | 1d | 2026-02-19 | 2026-02-19 | DC1-COD-L3-CX-2300, DC1-RPP-L2-2200 | 48d | 0d | Riley Warring | ROS |
| DC1-RPP-L3-CX-2305 |  | DC1-RPP-D11-03 A/B L3 Startup | 2d | 2026-02-20 | 2026-02-23 | DC1-RPP-L3-CX-2300 | 48d | 0d | Riley Warring | SQD |
| DC1-RPP-L3-CX-2310 |  | DC1-RPP-D11-03 A/B BMS/EPMS | 1d | 2026-02-24 | 2026-02-24 | DC1-RPP-L3-CX-2305 | 48d |  | Riley Warring | PRM |
|  | 04 | **DC1-DH1100-RPP-D11-04 Cx L3** |  | 2026-03-17 | 2026-03-20 |  |  |  |  |  |
| DC1-RPP-L3-CX-2315 |  | DC1-RPP-D11-04 A/B FTE | 1d | 2026-03-17 | 2026-03-17 | DC1-COD-L3-CX-2315, DC1-RPP-L2-2210 | 30d | 0d | Riley Warring | ROS |
| DC1-RPP-L3-CX-2320 |  | DC1-RPP-D11-04 A/B L3 Startup | 2d | 2026-03-18 | 2026-03-19 | DC1-RPP-L3-CX-2315 | 30d | 0d | Riley Warring | SQD |
| DC1-RPP-L3-CX-2325 |  | DC1-RPP-D11-04 A/B BMS/EPMS | 1d | 2026-03-20 | 2026-03-20 | DC1-RPP-L3-CX-2320 | 30d |  | Riley Warring | PRM |
|  | 05 | **DC1-DH1100-RPP-D11-05 Cx L3** |  | 2026-02-19 | 2026-02-24 |  |  |  |  |  |
| DC1-RPP-L3-CX-2330 |  | DC1-RPP-D11-05 A/B FTE | 1d | 2026-02-19 | 2026-02-19 | DC1-COD-L3-CX-2330, DC1-RPP-L2-2220 | 48d | 0d | Riley Warring | ROS |
| DC1-RPP-L3-CX-2335 |  | DC1-RPP-D11-05 A/B L3 Startup | 2d | 2026-02-20 | 2026-02-23 | DC1-RPP-L3-CX-2330 | 48d | 0d | Riley Warring | SQD |
| DC1-RPP-L3-CX-2340 |  | DC1-RPP-D11-05 A/B BMS/EPMS | 1d | 2026-02-24 | 2026-02-24 | DC1-RPP-L3-CX-2335 | 48d |  | Riley Warring | PRM |
|  | 06 | **DC1-DH1100-RPP-D11-06 Cx L3** |  | 2026-03-17 | 2026-03-20 |  |  |  |  |  |
| DC1-RPP-L3-CX-2345 |  | DC1-RPP-D11-06 A/B FTE | 1d | 2026-03-17 | 2026-03-17 | DC1-COD-L3-CX-2345, DC1-RPP-L2-2230 | 30d | 0d | Riley Warring | ROS |
| DC1-RPP-L3-CX-2350 |  | DC1-RPP-D11-06 A/B L3 Startup | 2d | 2026-03-18 | 2026-03-19 | DC1-RPP-L3-CX-2345 | 30d | 0d | Riley Warring | SQD |
| DC1-RPP-L3-CX-2355 |  | DC1-RPP-D11-06 A/B BMS/EPMS | 1d | 2026-03-20 | 2026-03-20 | DC1-RPP-L3-CX-2350 | 30d |  | Riley Warring | PRM |
|  | 05 | **DC1-DH1100-RPP-E11 Cx L3** |  | 2026-02-23 | 2026-03-20 |  |  |  |  |  |
|  | 01 | **DC1-DH1100-RPP-E11-01 Cx L3** |  | 2026-02-23 | 2026-02-26 |  |  |  |  |  |
| DC1-RPP-L3-CX-2360 |  | DC1-RPP-E11-01 A/B FTE | 1d | 2026-02-23 | 2026-02-23 | DC1-COD-L3-CX-2360, DC1-RPP-L2-2240 | 46d | 0d | Riley Warring | ROS |
| DC1-RPP-L3-CX-2365 |  | DC1-RPP-E11-01 A/B L3 Startup | 2d | 2026-02-24 | 2026-02-25 | DC1-RPP-L3-CX-2360 | 46d | 0d | Riley Warring | SQD |
| DC1-RPP-L3-CX-2370 |  | DC1-RPP-E11-01 A/B BMS/EPMS | 1d | 2026-02-26 | 2026-02-26 | DC1-RPP-L3-CX-2365 | 46d |  | Riley Warring | PRM |

Notes:
- DC1-RPP-L3-CX-2290: Steps: EC Startup Report; Vendor Startup
- DC1-RPP-L3-CX-2305: Steps: EC Startup Report; Vendor Startup
- DC1-RPP-L3-CX-2320: Steps: EC Startup Report; Vendor Startup
- DC1-RPP-L3-CX-2335: Steps: EC Startup Report; Vendor Startup
- DC1-RPP-L3-CX-2350: Steps: EC Startup Report; Vendor Startup
- DC1-RPP-L3-CX-2365: Steps: EC Startup Report; Vendor Startup

| ID | WBS | Activity | Duration | Start | Finish | Predecessors | Total float | Free float | Layton Responsible Party | Vendor Responsible Party |
| --- | --- | --- | --- | --- | --- | --- | --- | --- | --- | --- |
|  | 02 | **DC1-DH1100-RPP-E11-02 Cx L3** |  | 2026-03-17 | 2026-03-20 |  |  |  |  |  |
| DC1-RPP-L3-CX-2375 |  | DC1-RPP-E11-02 A/B FTE | 1d | 2026-03-17 | 2026-03-17 | DC1-COD-L3-CX-2375, DC1-RPP-L2-2250 | 30d | 0d | Riley Warring | ROS |
| DC1-RPP-L3-CX-2380 |  | DC1-RPP-E11-02 A/B L3 Startup | 2d | 2026-03-18 | 2026-03-19 | DC1-RPP-L3-CX-2375 | 30d | 0d | Riley Warring | SQD |
| DC1-RPP-L3-CX-2385 |  | DC1-RPP-E11-02 A/B BMS/EPMS | 1d | 2026-03-20 | 2026-03-20 | DC1-RPP-L3-CX-2380 | 30d |  | Riley Warring | PRM |
|  | 03 | **DC1-DH1100-RPP-E11-03 Cx L3** |  | 2026-02-23 | 2026-02-26 |  |  |  |  |  |
| DC1-RPP-L3-CX-2390 |  | DC1-RPP-E11-03 A/B FTE | 1d | 2026-02-23 | 2026-02-23 | DC1-COD-L3-CX-2390, DC1-RPP-L2-2260 | 46d | 0d | Riley Warring | ROS |
| DC1-RPP-L3-CX-2395 |  | DC1-RPP-E11-03 A/B L3 Startup | 2d | 2026-02-24 | 2026-02-25 | DC1-RPP-L3-CX-2390 | 46d | 0d | Riley Warring | SQD |
| DC1-RPP-L3-CX-2400 |  | DC1-RPP-E11-03 A/B BMS/EPMS | 1d | 2026-02-26 | 2026-02-26 | DC1-RPP-L3-CX-2395 | 46d |  | Riley Warring | PRM |
|  | 04 | **DC1-DH1100-RPP-E11-04 Cx L3** |  | 2026-03-17 | 2026-03-20 |  |  |  |  |  |
| DC1-RPP-L3-CX-2405 |  | DC1-RPP-E11-04 A/B FTE | 1d | 2026-03-17 | 2026-03-17 | DC1-COD-L3-CX-2405, DC1-RPP-L2-2270 | 30d | 0d | Riley Warring | ROS |
| DC1-RPP-L3-CX-2410 |  | DC1-RPP-E11-04 A/B L3 Startup | 2d | 2026-03-18 | 2026-03-19 | DC1-RPP-L3-CX-2405 | 30d | 0d | Riley Warring | SQD |
| DC1-RPP-L3-CX-2415 |  | DC1-RPP-E11-04 A/B BMS/EPMS | 1d | 2026-03-20 | 2026-03-20 | DC1-RPP-L3-CX-2410 | 30d |  | Riley Warring | PRM |
|  | 05 | **DC1-DH1100-RPP-E11-05 Cx L3** |  | 2026-02-23 | 2026-02-26 |  |  |  |  |  |
| DC1-RPP-L3-CX-2420 |  | DC1-RPP-E11-05 A/B FTE | 1d | 2026-02-23 | 2026-02-23 | DC1-COD-L3-CX-2420, DC1-RPP-L2-2280 | 46d | 0d | Riley Warring | ROS |
| DC1-RPP-L3-CX-2425 |  | DC1-RPP-E11-05 A/B L3 Startup | 2d | 2026-02-24 | 2026-02-25 | DC1-RPP-L3-CX-2420 | 46d | 0d | Riley Warring | SQD |
| DC1-RPP-L3-CX-2430 |  | DC1-RPP-E11-05 A/B BMS/EPMS | 1d | 2026-02-26 | 2026-02-26 | DC1-RPP-L3-CX-2425 | 46d |  | Riley Warring | PRM |
|  | 06 | **DC1-DH1100-RPP-E11-06 Cx L3** |  | 2026-03-17 | 2026-03-20 |  |  |  |  |  |
| DC1-RPP-L3-CX-2435 |  | DC1-RPP-E11-06 A/B FTE | 1d | 2026-03-17 | 2026-03-17 | DC1-COD-L3-CX-2435, DC1-RPP-L2-2290 | 30d | 0d | Riley Warring | ROS |
| DC1-RPP-L3-CX-2440 |  | DC1-RPP-E11-06 A/B L3 Startup | 2d | 2026-03-18 | 2026-03-19 | DC1-RPP-L3-CX-2435 | 30d | 0d | Riley Warring | SQD |
| DC1-RPP-L3-CX-2445 |  | DC1-RPP-E11-06 A/B BMS/EPMS | 1d | 2026-03-20 | 2026-03-20 | DC1-RPP-L3-CX-2440 | 30d |  | Riley Warring | PRM |
|  | 06 | **DC1-DH1100-RPP-F11 Cx L3** |  | 2026-02-23 | 2026-03-20 |  |  |  |  |  |
|  | 01 | **DC1-DH1100-RPP-F11-01 Cx L3** |  | 2026-02-23 | 2026-02-26 |  |  |  |  |  |
| DC1-RPP-L3-CX-2450 |  | DC1-RPP-F11-01 A/B FTE | 1d | 2026-02-23 | 2026-02-23 | DC1-COD-L3-CX-2450, DC1-RPP-L2-2300 | 46d | 0d | Riley Warring | ROS |
| DC1-RPP-L3-CX-2455 |  | DC1-RPP-F11-01 A/B L3 Startup | 2d | 2026-02-24 | 2026-02-25 | DC1-RPP-L3-CX-2450 | 46d | 0d | Riley Warring | SQD |
| DC1-RPP-L3-CX-2460 |  | DC1-RPP-F11-01 A/B BMS/EPMS | 1d | 2026-02-26 | 2026-02-26 | DC1-RPP-L3-CX-2455 | 46d |  | Riley Warring | PRM |

Notes:
- DC1-RPP-L3-CX-2380: Steps: EC Startup Report; Vendor Startup
- DC1-RPP-L3-CX-2395: Steps: EC Startup Report; Vendor Startup
- DC1-RPP-L3-CX-2410: Steps: EC Startup Report; Vendor Startup
- DC1-RPP-L3-CX-2425: Steps: EC Startup Report; Vendor Startup
- DC1-RPP-L3-CX-2440: Steps: EC Startup Report; Vendor Startup
- DC1-RPP-L3-CX-2455: Steps: EC Startup Report; Vendor Startup

| ID | WBS | Activity | Duration | Start | Finish | Predecessors | Total float | Free float | Layton Responsible Party | Vendor Responsible Party |
| --- | --- | --- | --- | --- | --- | --- | --- | --- | --- | --- |
|  | 02 | **DC1-DH1100-RPP-F11-02 Cx L3** |  | 2026-03-17 | 2026-03-20 |  |  |  |  |  |
| DC1-RPP-L3-CX-2465 |  | DC1-RPP-F11-02 A/B FTE | 1d | 2026-03-17 | 2026-03-17 | DC1-COD-L3-CX-2465, DC1-RPP-L2-2310 | 30d | 0d | Riley Warring | ROS |
| DC1-RPP-L3-CX-2470 |  | DC1-RPP-F11-02 A/B L3 Startup | 2d | 2026-03-18 | 2026-03-19 | DC1-RPP-L3-CX-2465 | 30d | 0d | Riley Warring | SQD |
| DC1-RPP-L3-CX-2475 |  | DC1-RPP-F11-02 A/B BMS/EPMS | 1d | 2026-03-20 | 2026-03-20 | DC1-RPP-L3-CX-2470 | 30d |  | Riley Warring | PRM |
|  | 03 | **DC1-DH1100-RPP-F11-03 Cx L3** |  | 2026-02-23 | 2026-02-26 |  |  |  |  |  |
| DC1-RPP-L3-CX-2480 |  | DC1-RPP-F11-03 A/B FTE | 1d | 2026-02-23 | 2026-02-23 | DC1-COD-L3-CX-2480, DC1-RPP-L2-2320 | 46d | 0d | Riley Warring | ROS |
| DC1-RPP-L3-CX-2485 |  | DC1-RPP-F11-03 A/B L3 Startup | 2d | 2026-02-24 | 2026-02-25 | DC1-RPP-L3-CX-2480 | 46d | 0d | Riley Warring | SQD |
| DC1-RPP-L3-CX-2490 |  | DC1-RPP-F11-03 A/B BMS/EPMS | 1d | 2026-02-26 | 2026-02-26 | DC1-RPP-L3-CX-2485 | 46d |  | Riley Warring | PRM |
|  | 04 | **DC1-DH1100-RPP-F11-04 Cx L3** |  | 2026-03-17 | 2026-03-20 |  |  |  |  |  |
| DC1-RPP-L3-CX-2495 |  | DC1-RPP-F11-04 A/B FTE | 1d | 2026-03-17 | 2026-03-17 | DC1-COD-L3-CX-2495, DC1-RPP-L2-2330 | 30d | 0d | Riley Warring | ROS |
| DC1-RPP-L3-CX-2500 |  | DC1-RPP-F11-04 A/B L3 Startup | 2d | 2026-03-18 | 2026-03-19 | DC1-RPP-L3-CX-2495 | 30d | 0d | Riley Warring | SQD |
| DC1-RPP-L3-CX-2505 |  | DC1-RPP-F11-04 A/B BMS/EPMS | 1d | 2026-03-20 | 2026-03-20 | DC1-RPP-L3-CX-2500 | 30d |  | Riley Warring | PRM |
|  | 05 | **DC1-DH1100-RPP-F11-05 Cx L3** |  | 2026-02-23 | 2026-02-26 |  |  |  |  |  |
| DC1-RPP-L3-CX-2510 |  | DC1-RPP-F11-05 A/B FTE | 1d | 2026-02-23 | 2026-02-23 | DC1-COD-L3-CX-2510, DC1-RPP-L2-2340 | 46d | 0d | Riley Warring | ROS |
| DC1-RPP-L3-CX-2515 |  | DC1-RPP-F11-05 A/B L3 Startup | 2d | 2026-02-24 | 2026-02-25 | DC1-RPP-L3-CX-2510 | 46d | 0d | Riley Warring | SQD |
| DC1-RPP-L3-CX-2520 |  | DC1-RPP-F11-05 A/B BMS/EPMS | 1d | 2026-02-26 | 2026-02-26 | DC1-RPP-L3-CX-2515 | 46d |  | Riley Warring | PRM |
|  | 06 | **DC1-DH1100-RPP-F11-06 Cx L3** |  | 2026-03-17 | 2026-03-20 |  |  |  |  |  |
| DC1-RPP-L3-CX-2525 |  | DC1-RPP-F11-06 A/B FTE | 1d | 2026-03-17 | 2026-03-17 | DC1-COD-L3-CX-2525, DC1-RPP-L2-2350, DC1-MOD3-L3-Cx-2000 | 30d | 0d | Riley Warring | ROS |
| DC1-RPP-L3-CX-2530 |  | DC1-RPP-F11-06 A/B L3 Startup | 2d | 2026-03-18 | 2026-03-19 | DC1-RPP-L3-CX-2525 | 30d | 0d | Riley Warring | SQD |
| DC1-RPP-L3-CX-2535 |  | DC1-RPP-F11-06 A/B BMS/EPMS | 1d | 2026-03-20 | 2026-03-20 | DC1-RPP-L3-CX-2530 | 30d |  | Riley Warring | PRM |
|  | 08 | **DC1-DH1100 MOD-02 Cx L3** |  | 2026-02-23 | 2026-03-03 |  |  |  |  |  |
|  | 01 | **DC1-DH1100 MOD-A11-02 Cx L3** |  | 2026-02-23 | 2026-02-26 |  |  |  |  |  |
| DC1-MOD2-L3-Cx-2000 |  | DC1-MOD-A11-02 FTE | 1d | 2026-02-23 | 2026-02-23 | DC1-MOD02-L2-2000, DC1-SWD-L3-CX-2000 | 19d | 0d | Riley Warring | ROS |
| DC1-MOD2-L3-Cx-2010 |  | DC1-MOD-A11-02 L3 Startup | 2d | 2026-02-24 | 2026-02-25 | DC1-MOD2-L3-Cx-2000 | 24d | 0d | Riley Warring | PHE |
| DC1-MOD2-L3-Cx-2020 |  | DC1-MOD-A11-02 BMS/EPMS | 1d | 2026-02-26 | 2026-02-26 | DC1-MOD2-L3-Cx-2010 | 24d | 16d | Riley Warring | PRM |

Notes:
- DC1-RPP-L3-CX-2470: Steps: EC Startup Report; Vendor Startup
- DC1-RPP-L3-CX-2485: Steps: EC Startup Report; Vendor Startup
- DC1-RPP-L3-CX-2500: Steps: EC Startup Report; Vendor Startup
- DC1-RPP-L3-CX-2515: Steps: EC Startup Report; Vendor Startup
- DC1-RPP-L3-CX-2530: Steps: EC Startup Report; Vendor Startup
- DC1-MOD2-L3-Cx-2010: Steps: EC Startup Report; Vendor Startup

| ID | WBS | Activity | Duration | Start | Finish | Predecessors | Total float | Free float | Layton Responsible Party | Vendor Responsible Party |
| --- | --- | --- | --- | --- | --- | --- | --- | --- | --- | --- |
|  | 02 | **DC1-DH1100 MOD-B11-02 Cx L3** |  | 2026-02-23 | 2026-02-26 |  |  |  |  |  |
| DC1-MOD2-L3-Cx-2030 |  | DC1-MOD-B11-02 FTE | 1d | 2026-02-23 | 2026-02-23 | DC1-MOD02-L2-2010, DC1-SWD-L3-CX-2030 | 19d | 0d | Riley Warring | ROS |
| DC1-MOD2-L3-Cx-2040 |  | DC1-MOD-B11-02 L3 Startup | 2d | 2026-02-24 | 2026-02-25 | DC1-MOD2-L3-Cx-2030 | 24d | 0d | Riley Warring | PHE |
| DC1-MOD2-L3-Cx-2050 |  | DC1-MOD-B11-02 BMS/EPMS | 1d | 2026-02-26 | 2026-02-26 | DC1-MOD2-L3-Cx-2040 | 24d | 16d | Riley Warring | PRM |
|  | 03 | **DC1-DH1100 MOD-C11-02 Cx L3** |  | 2026-02-26 | 2026-03-03 |  |  |  |  |  |
| DC1-MOD2-L3-Cx-2060 |  | DC1-MOD-C11-02 FTE | 1d | 2026-02-26 | 2026-02-26 | DC1-MOD02-L2-2020, DC1-SWD-L3-CX-2060 | 16d | 0d | Riley Warring | ROS |
| DC1-MOD2-L3-Cx-2070 |  | DC1-MOD-C11-02 L3 Startup | 2d | 2026-02-27 | 2026-03-02 | DC1-MOD2-L3-Cx-2060 | 21d | 0d | Riley Warring | PHE |
| DC1-MOD2-L3-Cx-2080 |  | DC1-MOD-C11-02 BMS/EPMS | 1d | 2026-03-03 | 2026-03-03 | DC1-MOD2-L3-Cx-2070 | 21d | 13d | Riley Warring | PRM |
|  | 04 | **DC1-DH1100 MOD-D11-02 Cx L3** |  | 2026-02-26 | 2026-03-03 |  |  |  |  |  |
| DC1-MOD2-L3-Cx-2090 |  | DC1-MOD-D11-02 FTE | 1d | 2026-02-26 | 2026-02-26 | DC1-MOD02-L2-2030, DC1-SWD-L3-CX-2090 | 16d | 0d | Riley Warring | ROS |
| DC1-MOD2-L3-Cx-2100 |  | DC1-MOD-D11-02 L3 Startup | 2d | 2026-02-27 | 2026-03-02 | DC1-MOD2-L3-Cx-2090 | 21d | 0d | Riley Warring | PHE |
| DC1-MOD2-L3-Cx-2110 |  | DC1-MOD-D11-02 BMS/EPMS | 1d | 2026-03-03 | 2026-03-03 | DC1-MOD2-L3-Cx-2100 | 21d | 13d | Riley Warring | PRM |
|  | 05 | **DC1-DH1100 MOD-E11-02 Cx L3** |  | 2026-02-26 | 2026-03-03 |  |  |  |  |  |
| DC1-MOD2-L3-Cx-2120 |  | DC1-MOD-E11-02 FTE | 1d | 2026-02-26 | 2026-02-26 | DC1-MOD02-L2-2040, DC1-SWD-L3-CX-2120 | 16d | 0d | Riley Warring | ROS |
| DC1-MOD2-L3-Cx-2130 |  | DC1-MOD-E11-02 L3 Startup | 2d | 2026-02-27 | 2026-03-02 | DC1-MOD2-L3-Cx-2120 | 21d | 0d | Riley Warring | PHE |
| DC1-MOD2-L3-Cx-2140 |  | DC1-MOD-E11-02 BMS/EPMS | 1d | 2026-03-03 | 2026-03-03 | DC1-MOD2-L3-Cx-2130 | 21d | 13d | Riley Warring | PRM |
|  | 06 | **DC1-DH1100 MOD-F11-02 Cx L3** |  | 2026-02-26 | 2026-03-03 |  |  |  |  |  |
| DC1-MOD2-L3-Cx-2150 |  | DC1-MOD-F11-02 FTE | 1d | 2026-02-26 | 2026-02-26 | DC1-MOD02-L2-2050, DC1-SWD-L3-CX-2150 | 16d | 0d | Riley Warring | ROS |
| DC1-MOD2-L3-Cx-2160 |  | DC1-MOD-F11-02 L3 Startup | 2d | 2026-02-27 | 2026-03-02 | DC1-MOD2-L3-Cx-2150 | 21d | 0d | Riley Warring | PHE |
| DC1-MOD2-L3-Cx-2170 |  | DC1-MOD-F11-02 BMS/EPMS | 1d | 2026-03-03 | 2026-03-03 | DC1-MOD2-L3-Cx-2160 | 21d | 13d | Riley Warring | PRM |
|  | 07 | **DC1-DH1100 MOD-R11-02 Cx L3** |  | 2026-02-26 | 2026-03-03 |  |  |  |  |  |
| DC1-MOD2-L3-Cx-2180 |  | DC1-MOD-R11-02 FTE | 1d | 2026-02-26 | 2026-02-26 | DC1-MOD02-L2-2060, DC1-SWD-L3-CX-2180 | 16d | 0d | Riley Warring | ROS |
| DC1-MOD2-L3-Cx-2190 |  | DC1-MOD-R11-02 L3 Startup | 2d | 2026-02-27 | 2026-03-02 | DC1-MOD2-L3-Cx-2180 | 21d | 0d | Riley Warring | PHE |
| DC1-MOD2-L3-Cx-2200 |  | DC1-MOD-R11-02 BMS/EPMS | 1d | 2026-03-03 | 2026-03-03 | DC1-MOD2-L3-Cx-2190 | 21d | 13d | Riley Warring | PRM |

Notes:
- DC1-MOD2-L3-Cx-2040: Steps: EC Startup Report; Vendor Startup
- DC1-MOD2-L3-Cx-2070: Steps: EC Startup Report; Vendor Startup
- DC1-MOD2-L3-Cx-2100: Steps: EC Startup Report; Vendor Startup
- DC1-MOD2-L3-Cx-2130: Steps: EC Startup Report; Vendor Startup
- DC1-MOD2-L3-Cx-2160: Steps: EC Startup Report; Vendor Startup
- DC1-MOD2-L3-Cx-2190: Steps: EC Startup Report; Vendor Startup

| ID | WBS | Activity | Duration | Start | Finish | Predecessors | Total float | Free float | Layton Responsible Party | Vendor Responsible Party |
| --- | --- | --- | --- | --- | --- | --- | --- | --- | --- | --- |
|  | 09 | **DC1-DH1100 MOD-03 Cx L3** |  | 2026-02-23 | 2026-03-19 |  |  |  |  |  |
|  | 01 | **DC1-DH1100 MOD-A11-03 Cx L3** |  | 2026-02-23 | 2026-02-26 |  |  |  |  |  |
| DC1-MOD3-L3-Cx-2000 |  | DC1-MOD-A11-03 FTE | 1d | 2026-02-23 | 2026-02-23 | DC1-MOD03-L2-2000, DC1-UPSM-L3-CX-2000 | 24d | 0d | Riley Warring | ROS |
| DC1-MOD3-L3-Cx-2010 |  | DC1-MOD-A11-03 L3 Startup | 2d | 2026-02-24 | 2026-02-25 | DC1-MOD3-L3-Cx-2000 | 24d | 0d | Riley Warring | PHE |
| DC1-MOD3-L3-Cx-2020 |  | DC1-MOD-A11-03 BMS/EPMS | 1d | 2026-02-26 | 2026-02-26 | DC1-MOD3-L3-Cx-2010 | 24d | 16d | Riley Warring | PRM |
|  | 02 | **DC1-DH1100 MOD-B11-03 Cx L3** |  | 2026-02-26 | 2026-03-03 |  |  |  |  |  |
| DC1-MOD3-L3-Cx-2030 |  | DC1-MOD-B11-03 FTE | 1d | 2026-02-26 | 2026-02-26 | DC1-MOD03-L2-2010, DC1-UPSM-L3-CX-2030 | 21d | 0d | Riley Warring | ROS |
| DC1-MOD3-L3-Cx-2040 |  | DC1-MOD-B11-03 L3 Startup | 2d | 2026-02-27 | 2026-03-02 | DC1-MOD3-L3-Cx-2030 | 21d | 0d | Riley Warring | PHE |
| DC1-MOD3-L3-Cx-2050 |  | DC1-MOD-B11-03 BMS/EPMS | 1d | 2026-03-03 | 2026-03-03 | DC1-MOD3-L3-Cx-2040 | 21d | 13d | Riley Warring | PRM |
|  | 03 | **DC1-DH1100 MOD-C11-03 Cx L3** |  | 2026-02-26 | 2026-03-03 |  |  |  |  |  |
| DC1-MOD3-L3-Cx-2060 |  | DC1-MOD-C11-03 FTE | 1d | 2026-02-26 | 2026-02-26 | DC1-MOD03-L2-2020, DC1-UPSM-L3-CX-2060 | 21d | 0d | Riley Warring | ROS |
| DC1-MOD3-L3-Cx-2070 |  | DC1-MOD-C11-03 L3 Startup | 2d | 2026-02-27 | 2026-03-02 | DC1-MOD3-L3-Cx-2060 | 21d | 0d | Riley Warring | PHE |
| DC1-MOD3-L3-Cx-2080 |  | DC1-MOD-C11-03 BMS/EPMS | 1d | 2026-03-03 | 2026-03-03 | DC1-MOD3-L3-Cx-2070 | 21d | 13d | Riley Warring | PRM |
|  | 04 | **DC1-DH1100 MOD-D11-03 Cx L3** |  | 2026-03-03 | 2026-03-06 |  |  |  |  |  |
| DC1-MOD3-L3-Cx-2090 |  | DC1-MOD-D11-03 FTE | 1d | 2026-03-03 | 2026-03-03 | DC1-MOD03-L2-2030, DC1-UPSM-L3-CX-2090 | 18d | 0d | Riley Warring | ROS |
| DC1-MOD3-L3-Cx-2100 |  | DC1-MOD-D11-03 L3 Startup | 2d | 2026-03-04 | 2026-03-05 | DC1-MOD3-L3-Cx-2090 | 18d | 0d | Riley Warring | PHE |
| DC1-MOD3-L3-Cx-2110 |  | DC1-MOD-D11-03 BMS/EPMS | 1d | 2026-03-06 | 2026-03-06 | DC1-MOD3-L3-Cx-2100 | 18d | 10d | Riley Warring | PRM |
|  | 05 | **DC1-DH1100 MOD-E11-03 Cx L3** |  | 2026-03-06 | 2026-03-11 |  |  |  |  |  |
| DC1-MOD3-L3-Cx-2120 |  | DC1-MOD-E11-03 FTE | 1d | 2026-03-06 | 2026-03-06 | DC1-MOD03-L2-2040, DC1-UPSM-L3-CX-2120 | 15d | 0d | Riley Warring | ROS |
| DC1-MOD3-L3-Cx-2130 |  | DC1-MOD-E11-03 L3 Startup | 2d | 2026-03-09 | 2026-03-10 | DC1-MOD3-L3-Cx-2120 | 15d | 0d | Riley Warring | PHE |
| DC1-MOD3-L3-Cx-2140 |  | DC1-MOD-E11-03 BMS/EPMS | 1d | 2026-03-11 | 2026-03-11 | DC1-MOD3-L3-Cx-2130 | 15d | 7d | Riley Warring | PRM |
|  | 06 | **DC1-DH1100 MOD-F11-03 Cx L3** |  | 2026-03-11 | 2026-03-16 |  |  |  |  |  |
| DC1-MOD3-L3-Cx-2150 |  | DC1-MOD-F11-03 FTE | 1d | 2026-03-11 | 2026-03-11 | DC1-MOD03-L2-2050, DC1-UPSM-L3-CX-2150 | 12d | 0d | Riley Warring | ROS |
| DC1-MOD3-L3-Cx-2160 |  | DC1-MOD-F11-03 L3 Startup | 2d | 2026-03-12 | 2026-03-13 | DC1-MOD3-L3-Cx-2150 | 12d | 0d | Riley Warring | PHE |
| DC1-MOD3-L3-Cx-2170 |  | DC1-MOD-F11-03 BMS/EPMS | 1d | 2026-03-16 | 2026-03-16 | DC1-MOD3-L3-Cx-2160 | 12d | 4d | Riley Warring | PRM |

Notes:
- DC1-MOD3-L3-Cx-2010: Steps: EC Startup Report; Vendor Startup
- DC1-MOD3-L3-Cx-2040: Steps: EC Startup Report; Vendor Startup
- DC1-MOD3-L3-Cx-2070: Steps: EC Startup Report; Vendor Startup
- DC1-MOD3-L3-Cx-2100: Steps: EC Startup Report; Vendor Startup
- DC1-MOD3-L3-Cx-2130: Steps: EC Startup Report; Vendor Startup
- DC1-MOD3-L3-Cx-2160: Steps: EC Startup Report; Vendor Startup

| ID | WBS | Activity | Duration | Start | Finish | Predecessors | Total float | Free float | Layton Responsible Party | Vendor Responsible Party |
| --- | --- | --- | --- | --- | --- | --- | --- | --- | --- | --- |
|  | 07 | **DC1-DH1100 MOD-R11-03 Cx L3** |  | 2026-03-16 | 2026-03-19 |  |  |  |  |  |
| DC1-MOD3-L3-Cx-2180 |  | DC1-MOD-R11-03 FTE | 1d | 2026-03-16 | 2026-03-16 | DC1-MOD03-L2-2060, DC1-UPSM-L3-CX-2180 | 9d | 0d | Riley Warring | ROS |
| DC1-MOD3-L3-Cx-2190 |  | DC1-MOD-R11-03 L3 Startup | 2d | 2026-03-17 | 2026-03-18 | DC1-MOD3-L3-Cx-2180 | 9d | 0d | Riley Warring | PHE |
| DC1-MOD3-L3-Cx-2200 |  | DC1-MOD-R11-03 BMS/EPMS | 1d | 2026-03-19 | 2026-03-19 | DC1-MOD3-L3-Cx-2190 | 9d | 1d | Riley Warring | PRM |
|  | 10 | **DC1-DH1100 CDUs Cx L3** |  | 2026-03-06 | 2026-03-11 |  |  |  |  |  |
|  | 01 | **DC1-CDU-DH1100-01 Cx L3** |  | 2026-03-06 | 2026-03-11 |  |  |  |  |  |
|  | 01 | **DC1-CDU-DH1100-01 Cx L3** |  | 2026-03-06 | 2026-03-11 |  |  |  |  |  |
| DC1-CDU-L3-CX-2000 |  | CDU-DH1100-01 FTE | 1d | 2026-03-06 | 2026-03-06 | DC1-MOD3-L3-Cx-2000, DC1-CDU-L2-2000 | 37d | 0d | Riley Warring | ROS |
| DC1-CDU-L3-CX-2005 |  | CDU-DH1100-01 L3 Startup | 2d | 2026-03-09 | 2026-03-10 | DC1-CDU-L3-CX-2000 | 37d | 0d | Riley Warring | VER |
| DC1-CDU-L3-CX-2010 |  | CDU-DH1100-01 BMS/EPMS | 1d | 2026-03-11 | 2026-03-11 | DC1-CDU-L3-CX-2005 | 37d |  | Riley Warring | PRM |
|  | 02 | **DC1-CDU-DH1100-02 Cx L3** |  | 2026-03-06 | 2026-03-11 |  |  |  |  |  |
| DC1-CDU-L3-CX-2015 |  | CDU-DH1100-02 FTE | 1d | 2026-03-06 | 2026-03-06 | DC1-MOD3-L3-Cx-2000, DC1-CDU-L2-2010 | 37d | 0d | Riley Warring | ROS |
| DC1-CDU-L3-CX-2020 |  | CDU-DH1100-02 L3 Startup | 2d | 2026-03-09 | 2026-03-10 | DC1-CDU-L3-CX-2015 | 37d | 0d | Riley Warring | VER |
| DC1-CDU-L3-CX-2025 |  | CDU-DH1100-02 BMS/EPMS | 1d | 2026-03-11 | 2026-03-11 | DC1-CDU-L3-CX-2020 | 37d |  | Riley Warring | PRM |
|  | 03 | **DC1-CDU-DH1100-03 Cx L3** |  | 2026-03-06 | 2026-03-11 |  |  |  |  |  |
| DC1-CDU-L3-CX-2030 |  | CDU-DH1100-03 FTE | 1d | 2026-03-06 | 2026-03-06 | DC1-MOD3-L3-Cx-2000, DC1-CDU-L2-2020 | 37d | 0d | Riley Warring | ROS |
| DC1-CDU-L3-CX-2035 |  | CDU-DH1100-03 L3 Startup | 2d | 2026-03-09 | 2026-03-10 | DC1-CDU-L3-CX-2030 | 37d | 0d | Riley Warring | VER |
| DC1-CDU-L3-CX-2040 |  | CDU-DH1100-03 BMS/EPMS | 1d | 2026-03-11 | 2026-03-11 | DC1-CDU-L3-CX-2035 | 37d |  | Riley Warring | PRM |
|  | 04 | **DC1-CDU-DH1100-04 Cx L3** |  | 2026-03-06 | 2026-03-11 |  |  |  |  |  |
| DC1-CDU-L3-CX-2045 |  | CDU-DH1100-04 FTE | 1d | 2026-03-06 | 2026-03-06 | DC1-MOD3-L3-Cx-2000, DC1-CDU-L2-2030 | 37d | 0d | Riley Warring | ROS |
| DC1-CDU-L3-CX-2050 |  | CDU-DH1100-04 L3 Startup | 2d | 2026-03-09 | 2026-03-10 | DC1-CDU-L3-CX-2045 | 37d | 0d | Riley Warring | VER |
| DC1-CDU-L3-CX-2055 |  | CDU-DH1100-04 BMS/EPMS | 1d | 2026-03-11 | 2026-03-11 | DC1-CDU-L3-CX-2050 | 37d |  | Riley Warring | PRM |
|  | 05 | **DC1-CDU-DH1100-05 Cx L3** |  | 2026-03-06 | 2026-03-11 |  |  |  |  |  |
| DC1-CDU-L3-CX-2060 |  | CDU-DH1100-05 FTE | 1d | 2026-03-06 | 2026-03-06 | DC1-MOD3-L3-Cx-2000, DC1-CDU-L2-2040 | 37d | 0d | Riley Warring | ROS |
| DC1-CDU-L3-CX-2065 |  | CDU-DH1100-05 L3 Startup | 2d | 2026-03-09 | 2026-03-10 | DC1-CDU-L3-CX-2060 | 37d | 0d | Riley Warring | VER |
| DC1-CDU-L3-CX-2070 |  | CDU-DH1100-05 BMS/EPMS | 1d | 2026-03-11 | 2026-03-11 | DC1-CDU-L3-CX-2065 | 37d |  | Riley Warring | PRM |

Notes:
- DC1-MOD3-L3-Cx-2190: Steps: EC Startup Report; Vendor Startup
- DC1-CDU-L3-CX-2005: Steps: EC Startup Report; MC Installation Checklist; Vendor Startup
- DC1-CDU-L3-CX-2020: Steps: EC Startup Report; MC Installation Checklist; Vendor Startup
- DC1-CDU-L3-CX-2035: Steps: EC Startup Report; MC Installation Checklist; Vendor Startup
- DC1-CDU-L3-CX-2050: Steps: EC Startup Report; MC Installation Checklist; Vendor Startup
- DC1-CDU-L3-CX-2065: Steps: EC Startup Report; MC Installation Checklist; Vendor Startup

| ID | WBS | Activity | Duration | Start | Finish | Predecessors | Total float | Free float | Layton Responsible Party | Vendor Responsible Party |
| --- | --- | --- | --- | --- | --- | --- | --- | --- | --- | --- |
|  | 06 | **DC1-CDU-DH1100-06 Cx L3** |  | 2026-03-06 | 2026-03-11 |  |  |  |  |  |
| DC1-CDU-L3-CX-2075 |  | CDU-DH1100-06 FTE | 1d | 2026-03-06 | 2026-03-06 | DC1-MOD3-L3-Cx-2000, DC1-CDU-L2-2050 | 37d | 0d | Riley Warring | ROS |
| DC1-CDU-L3-CX-2080 |  | CDU-DH1100-06 L3 Startup | 2d | 2026-03-09 | 2026-03-10 | DC1-CDU-L3-CX-2075 | 37d | 0d | Riley Warring | VER |
| DC1-CDU-L3-CX-2085 |  | CDU-DH1100-06 BMS/EPMS | 1d | 2026-03-11 | 2026-03-11 | DC1-CDU-L3-CX-2080 | 37d |  | Riley Warring | PRM |
|  | 11 | **DC1-DH1100 CHLR-1RT40 Cx L3** |  | 2026-02-12 | 2026-03-18 |  |  |  |  |  |
|  | 01 | **DC1-DH1100 CHLR-1RT40-A11 Cx L3** |  | 2026-02-12 | 2026-03-18 |  |  |  |  |  |
| DC1-CHLR-L3-Cx-2000 |  | DC1-CHLR-1RT40-A11 FTE | 1d | 2026-02-12 | 2026-02-12 | DC1-SWD-L3-CX-2000 SS, DC1-CHLR-L2-Cx-2000 | 29d | 0d | Riley Warring | ROS |
| DC1-CHLR-L3-Cx-2005 |  | DC1-CHLR-1RT40-A11 Heat Up | 2d | 2026-02-13 | 2026-02-16 | DC1-CHLR-L3-Cx-2000 | 29d | 19d | Riley Warring | LAY |
| DC1-CHLR-L3-Cx-2010 |  | DC1-CHLR-1RT40-A11 L3 Startup | 2d | 2026-03-16 | 2026-03-17 | DC1-CHLR-L3-Cx-2005, DC1-DH1100-LB-1010 SS | 10d | 0d | Riley Warring | TAS |
| DC1-CHLR-L3-Cx-2020 |  | DC1-CHLR-1RT40-A11 BMS/EPMS | 1d | 2026-03-18 | 2026-03-18 | DC1-CHLR-L3-Cx-2010 | 10d | 7d | Riley Warring | PRM |
|  | 02 | **DC1-DH1100 CHLR-1RT40-B11 Cx L3** |  | 2026-02-12 | 2026-03-18 |  |  |  |  |  |
| DC1-CHLR-L3-Cx-2030 |  | DC1-CHLR-1RT40-B11 FTE | 1d | 2026-02-12 | 2026-02-12 | DC1-SWD-L3-CX-2030 SS, DC1-CHLR-L2-Cx-2010 | 29d | 0d | Riley Warring | ROS |
| DC1-CHLR-L3-Cx-2035 |  | DC1-CHLR-1RT40-B11 Heat Up | 2d | 2026-02-13 | 2026-02-16 | DC1-CHLR-L3-Cx-2030 | 29d | 19d | Riley Warring | LAY |
| DC1-CHLR-L3-Cx-2040 |  | DC1-CHLR-1RT40-B11 L3 Startup | 2d | 2026-03-16 | 2026-03-17 | DC1-CHLR-L3-Cx-2035, DC1-DH1100-LB-1010 SS | 10d | 0d | Riley Warring | TAS |
| DC1-CHLR-L3-Cx-2050 |  | DC1-CHLR-1RT40-B11 BMS/EPMS | 1d | 2026-03-18 | 2026-03-18 | DC1-CHLR-L3-Cx-2040 | 10d | 7d | Riley Warring | PRM |
|  | 03 | **DC1-DH1100 CHLR-1RT40-C11 Cx L3** |  | 2026-02-12 | 2026-03-18 |  |  |  |  |  |
| DC1-CHLR-L3-Cx-2060 |  | DC1-CHLR-1RT40-C11 FTE | 1d | 2026-02-12 | 2026-02-12 | DC1-SWD-L3-CX-2060 SS, DC1-CHLR-L2-Cx-2020 | 29d | 0d | Riley Warring | ROS |
| DC1-CHLR-L3-Cx-2065 |  | DC1-CHLR-1RT40-C11 Heat Up | 2d | 2026-02-13 | 2026-02-16 | DC1-CHLR-L3-Cx-2060 | 29d | 19d | Riley Warring | LAY |
| DC1-CHLR-L3-Cx-2070 |  | DC1-CHLR-1RT40-C11 L3 Startup | 2d | 2026-03-16 | 2026-03-17 | DC1-CHLR-L3-Cx-2065, DC1-DH1100-LB-1010 SS | 10d | 0d | Riley Warring | TAS |
| DC1-CHLR-L3-Cx-2080 |  | DC1-CHLR-1RT40-C11 BMS/EPMS | 1d | 2026-03-18 | 2026-03-18 | DC1-CHLR-L3-Cx-2070 | 10d | 7d | Riley Warring | PRM |
|  | 04 | **DC1-DH1100 CHLR-1RT40-D11 Cx L3** |  | 2026-02-12 | 2026-03-18 |  |  |  |  |  |
| DC1-CHLR-L3-Cx-2090 |  | DC1-CHLR-1RT40-D11 FTE | 1d | 2026-02-12 | 2026-02-12 | DC1-SWD-L3-CX-2090 SS, DC1-CHLR-L2-Cx-2030 | 29d | 0d | Riley Warring | ROS |
| DC1-CHLR-L3-Cx-2095 |  | DC1-CHLR-1RT40-D11 Heat Up | 2d | 2026-02-13 | 2026-02-16 | DC1-CHLR-L3-Cx-2090 | 29d | 19d | Riley Warring | LAY |
| DC1-CHLR-L3-Cx-2100 |  | DC1-CHLR-1RT40-D11 L3 Startup | 2d | 2026-03-16 | 2026-03-17 | DC1-CHLR-L3-Cx-2095, DC1-DH1100-LB-1010 SS | 10d | 0d | Riley Warring | TAS |
| DC1-CHLR-L3-Cx-2110 |  | DC1-CHLR-1RT40-D11 BMS/EPMS | 1d | 2026-03-18 | 2026-03-18 | DC1-CHLR-L3-Cx-2100 | 10d | 7d | Riley Warring | PRM |

Notes:
- DC1-CDU-L3-CX-2080: Steps: EC Startup Report; MC Installation Checklist; Vendor Startup
- DC1-CHLR-L3-Cx-2010: Steps: EC Startup Report; MC Startup Report; Vendor Startup
- DC1-CHLR-L3-Cx-2040: Steps: EC Startup Report; MC Startup Report; Vendor Startup
- DC1-CHLR-L3-Cx-2070: Steps: EC Startup Report; MC Startup Report; Vendor Startup
- DC1-CHLR-L3-Cx-2100: Steps: EC Startup Report; MC Startup Report; Vendor Startup

| ID | WBS | Activity | Duration | Start | Finish | Predecessors | Total float | Free float | Layton Responsible Party | Vendor Responsible Party | Notes |
| --- | --- | --- | --- | --- | --- | --- | --- | --- | --- | --- | --- |
|  | 05 | **DC1-DH1100 CHLR-1RT40-E11 Cx L3** |  | 2026-02-12 | 2026-03-18 |  |  |  |  |  |  |
| DC1-CHLR-L3-Cx-2120 |  | DC1-CHLR-1RT40-E11 FTE | 1d | 2026-02-12 | 2026-02-12 | DC1-SWD-L3-CX-2120 SS, DC1-CHLR-L2-Cx-2040 | 29d | 0d | Riley Warring | ROS |  |
| DC1-CHLR-L3-Cx-2125 |  | DC1-CHLR-1RT40-E11 Heat Up | 2d | 2026-02-13 | 2026-02-16 | DC1-CHLR-L3-Cx-2120 | 29d | 19d | Riley Warring | LAY |  |
| DC1-CHLR-L3-Cx-2130 |  | DC1-CHLR-1RT40-E11 L3 Startup | 2d | 2026-03-16 | 2026-03-17 | DC1-CHLR-L3-Cx-2125, DC1-DH1100-LB-1010 SS | 10d | 0d | Riley Warring | TAS |  |
| DC1-CHLR-L3-Cx-2140 |  | DC1-CHLR-1RT40-E11 BMS/EPMS | 1d | 2026-03-18 | 2026-03-18 | DC1-CHLR-L3-Cx-2130 | 10d | 7d | Riley Warring | PRM |  |
|  | 06 | **DC1-DH1100 CHLR-1RT40-F11 Cx L3** |  | 2026-02-13 | 2026-03-18 |  |  |  |  |  |  |
| DC1-CHLR-L3-Cx-2150 |  | DC1-CHLR-1RT40-F11 FTE | 1d | 2026-02-13 | 2026-02-13 | DC1-SWD-L3-CX-2150 SS, DC1-CHLR-L2-Cx-2050 | 28d | 0d | Riley Warring | ROS |  |
| DC1-CHLR-L3-Cx-2155 |  | DC1-CHLR-1RT40-F11 Heat Up | 2d | 2026-02-16 | 2026-02-17 | DC1-CHLR-L3-Cx-2150 | 28d | 18d | Riley Warring | LAY |  |
| DC1-CHLR-L3-Cx-2160 |  | DC1-CHLR-1RT40-F11 L3 Startup | 2d | 2026-03-16 | 2026-03-17 | DC1-CHLR-L3-Cx-2155, DC1-DH1100-LB-1010 SS | 10d | 0d | Riley Warring | TAS |  |
| DC1-CHLR-L3-Cx-2170 |  | DC1-CHLR-1RT40-F11 BMS/EPMS | 1d | 2026-03-18 | 2026-03-18 | DC1-CHLR-L3-Cx-2160 | 10d | 7d | Riley Warring | PRM |  |
|  | 07 | **DC1-DH1100 CHLR-1RT40-R11 Cx L3** |  | 2026-02-18 | 2026-03-18 |  |  |  |  |  |  |
| DC1-CHLR-L3-Cx-2180 |  | DC1-CHLR-1RT40-R11 FTE | 1d | 2026-02-18 | 2026-02-18 | DC1-SWD-L3-CX-2180 SS, DC1-CHLR-L2-Cx-2060 | 25d | 0d | Riley Warring | ROS |  |
| DC1-CHLR-L3-Cx-2185 |  | DC1-CHLR-1RT40-R11 Heat Up | 2d | 2026-02-19 | 2026-02-20 | DC1-CHLR-L3-Cx-2180 | 25d | 15d | Riley Warring | LAY |  |
| DC1-CHLR-L3-Cx-2190 |  | DC1-CHLR-1RT40-R11 L3 Startup | 2d | 2026-03-16 | 2026-03-17 | DC1-CHLR-L3-Cx-2185, DC1-DH1100-LB-1010 SS | 10d | 0d | Riley Warring | TAS |  |
| DC1-CHLR-L3-Cx-2200 |  | DC1-CHLR-1RT40-R11 BMS/EPMS | 1d | 2026-03-18 | 2026-03-18 | DC1-CHLR-L3-Cx-2190 | 10d | 7d | Riley Warring | PRM |  |
|  | 12 | **DC1-DH1100 CHWP-1RT40 Cx L3** |  | 2026-02-17 | 2026-02-24 |  |  |  |  |  |  |
|  | 01 | **DC1-DH1100 CHWP-1RT40-A11 Cx L3** |  | 2026-02-19 | 2026-02-24 |  |  |  |  |  |  |
| DC1-CHWP-L3-Cx-2000 |  | DC1-CHWP-1RT40-A11 FTE | 1d | 2026-02-19 | 2026-02-19 | DC1-UPSM-L3-CX-2000, DC1-CHWP-L2-Cx-2000 | 3d | 0d | Riley Warring | ROS | CFCI |
| DC1-CHWP-L3-Cx-2010 |  | DC1-CHWP1RT40-A11 L3 Startup | 2d | 2026-02-20 | 2026-02-23 | DC1-CHWP-L3-Cx-2000, QTS-100550 | 3d | 0d | Riley Warring | LAY | CFCI |
| DC1-CHWP-L3-Cx-2020 |  | DC1-CHWP-1RT40-A11 BMS/EPMS | 1d | 2026-02-24 | 2026-02-24 | DC1-CHWP-L3-Cx-2010 | 3d | 0d | Riley Warring | PRM | CFCI |
|  | 02 | **DC1-DH1100 CHWP-1RT40-B11 Cx L3** |  | 2026-02-17 | 2026-02-20 |  |  |  |  |  |  |
| DC1-CHWP-L3-Cx-2030 |  | DC1-CHWP-1RT40-B11 FTE | 1d | 2026-02-17 | 2026-02-17 | DC1-UPSM-L3-CX-2030 SS, DC1-CHWP-L2-Cx-2010 | 5d | 0d | Riley Warring | ROS | CFCI |
| DC1-CHWP-L3-Cx-2040 |  | DC1-CHWP-1RT40-B11 L3 Startup | 2d | 2026-02-18 | 2026-02-19 | DC1-CHWP-L3-Cx-2030, QTS-100550 | 5d | 0d | Riley Warring | LAY | CFCI |
| DC1-CHWP-L3-Cx-2050 |  | DC1-CHWP-1RT40-B11 BMS/EPMS | 1d | 2026-02-20 | 2026-02-20 | DC1-CHWP-L3-Cx-2040 | 5d | 2d | Riley Warring | PRM | CFCI |

Notes:
- DC1-CHLR-L3-Cx-2130: Steps: EC Startup Report; MC Startup Report; Vendor Startup
- DC1-CHLR-L3-Cx-2160: Steps: EC Startup Report; MC Startup Report; Vendor Startup
- DC1-CHLR-L3-Cx-2190: Steps: EC Startup Report; MC Startup Report; Vendor Startup
- DC1-CHWP-L3-Cx-2010: Steps: EC Startup Report; MC Startup Report; Vendor Startup
- DC1-CHWP-L3-Cx-2040: Steps: EC Startup Report; MC Startup Report; Vendor Startup

| ID | WBS | Activity | Duration | Start | Finish | Predecessors | Total float | Free float | Notes | Layton Responsible Party | Vendor Responsible Party |
| --- | --- | --- | --- | --- | --- | --- | --- | --- | --- | --- | --- |
|  | 03 | **DC1-DH1100 CHWP-1RT40-C11 Cx L3** |  | 2026-02-17 | 2026-02-20 |  |  |  |  |  |  |
| DC1-CHWP-L3-Cx-2060 |  | DC1-CHWP-1RT40-C11 FTE | 1d | 2026-02-17 | 2026-02-17 | DC1-UPSM-L3-CX-2060 SS, DC1-CHWP-L2-Cx-2020 | 5d | 0d | CFCI | Riley Warring | ROS |
| DC1-CHWP-L3-Cx-2070 |  | DC1-CHWP-1RT40-C11 L3 Startup | 2d | 2026-02-18 | 2026-02-19 | DC1-CHWP-L3-Cx-2060, QTS-100550 | 5d | 0d | CFCI | Riley Warring | LAY |
| DC1-CHWP-L3-Cx-2080 |  | DC1-CHWP-1RT40-C11 BMS/EPMS | 1d | 2026-02-20 | 2026-02-20 | DC1-CHWP-L3-Cx-2070 | 5d | 2d | CFCI | Riley Warring | PRM |
|  | 04 | **DC1-DH1100 CHWP-1RT40-D11 Cx L3** |  | 2026-02-17 | 2026-02-20 |  |  |  |  |  |  |
| DC1-CHWP-L3-Cx-2090 |  | DC1-CHWP-1RT40-D11 FTE | 1d | 2026-02-17 | 2026-02-17 | DC1-UPSM-L3-CX-2090 SS, DC1-CHWP-L2-Cx-2030 | 5d | 0d | CFCI | Riley Warring | ROS |
| DC1-CHWP-L3-Cx-2100 |  | DC1-CHWP-1RT40-D11 L3 Startup | 2d | 2026-02-18 | 2026-02-19 | DC1-CHWP-L3-Cx-2090, QTS-100550 | 5d | 0d | CFCI | Riley Warring | LAY |
| DC1-CHWP-L3-Cx-2110 |  | DC1-CHWP-1RT40-D11 BMS/EPMS | 1d | 2026-02-20 | 2026-02-20 | DC1-CHWP-L3-Cx-2100 | 5d | 2d | CFCI | Riley Warring | PRM |
|  | 05 | **DC1-DH1100 CHWP-1RT40-E11 Cx L3** |  | 2026-02-17 | 2026-02-20 |  |  |  |  |  |  |
| DC1-CHWP-L3-Cx-2120 |  | DC1-CHWP-1RT40-E11 FTE | 1d | 2026-02-17 | 2026-02-17 | DC1-UPSM-L3-CX-2120 SS, DC1-CHWP-L2-Cx-2040 | 5d | 0d | CFCI | Riley Warring | ROS |
| DC1-CHWP-L3-Cx-2130 |  | DC1-CHWP-1RT40-E11 L3 Startup | 2d | 2026-02-18 | 2026-02-19 | DC1-CHWP-L3-Cx-2120, QTS-100550 | 5d | 0d | CFCI | Riley Warring | LAY |
| DC1-CHWP-L3-Cx-2140 |  | DC1-CHWP-1RT40-E11 BMS/EPMS | 1d | 2026-02-20 | 2026-02-20 | DC1-CHWP-L3-Cx-2130 | 5d | 2d | CFCI | Riley Warring | PRM |
|  | 06 | **DC1-DH1100 CHWP-1RT40-F11 Cx L3** |  | 2026-02-17 | 2026-02-20 |  |  |  |  |  |  |
| DC1-CHWP-L3-Cx-2150 |  | DC1-CHWP-1RT40-F11 FTE | 1d | 2026-02-17 | 2026-02-17 | DC1-UPSM-L3-CX-2150 SS, DC1-CHWP-L2-Cx-2050 | 5d | 0d | CFCI | Riley Warring | ROS |
| DC1-CHWP-L3-Cx-2160 |  | DC1-CHWP-1RT40-F11 L3 Startup | 2d | 2026-02-18 | 2026-02-19 | DC1-CHWP-L3-Cx-2150, QTS-100550 | 5d | 0d | CFCI | Riley Warring | LAY |
| DC1-CHWP-L3-Cx-2170 |  | DC1-CHWP-1RT40-F11 BMS/EPMS | 1d | 2026-02-20 | 2026-02-20 | DC1-CHWP-L3-Cx-2160 | 5d | 2d | CFCI | Riley Warring | PRM |
|  | 07 | **DC1-DH1100 CHWP-1RT40-R11 Cx L3** |  | 2026-02-17 | 2026-02-19 |  |  |  |  |  |  |
| DC1-CHWP-L3-Cx-2180 |  | DC1-CHWP-1RT40-R11 FTE | 1d | 2026-02-17 | 2026-02-17 | DC1-UPSM-L3-CX-2180 SS, DC1-CHWP-L2-Cx-2060 | 6d | 0d | CFCI | Riley Warring | ROS |
| DC1-CHWP-L3-Cx-2190 |  | DC1-CHWP-1RT40-R11 L3 Startup | 1d | 2026-02-18 | 2026-02-18 | DC1-CHWP-L3-Cx-2180, QTS-100550 | 6d | 0d | CFCI | Riley Warring | LAY |
| DC1-CHWP-L3-Cx-2200 |  | DC1-CHWP-1RT40-R11 BMS/EPMS | 1d | 2026-02-19 | 2026-02-19 | DC1-CHWP-L3-Cx-2190 | 6d | 3d | CFCI | Riley Warring | PRM |
|  | 13 | **DC1-DH1100 CRAH/DOAS Cx L3** |  | 2026-02-23 | 2026-03-03 |  |  |  |  |  |  |
|  | 01 | **DH1100 CRAH-DH-01 L3** |  | 2026-02-26 | 2026-03-03 |  |  |  |  |  |  |
| DC1-CRAH-L3-Cx-2000 |  | DC1-DH1100-CRAH-DH-01 FTE | 1d | 2026-02-26 | 2026-02-26 | DC1-CRAH-L2-2000, DC1-MOD2-L3-Cx-2090 SS, DC1-MOD2-L3-Cx-2180 SS | 16d | 0d |  | Riley Warring | ROS |
| DC1-CRAH-L3-Cx-2010 |  | DC1-DH1100-CRAH-DH-01 L3 Startup | 2d | 2026-02-27 | 2026-03-02 | DC1-CRAH-L3-Cx-2000 | 16d | 0d |  | Riley Warring | UMAS |
| DC1-CRAH-L3-Cx-2020 |  | DC1-DH1100-CRAH-DH-01 BMS/EPMS | 1d | 2026-03-03 | 2026-03-03 | DC1-CRAH-L3-Cx-2010 | 16d | 1d |  | Riley Warring | PRM |

Notes:
- DC1-CHWP-L3-Cx-2070: Steps: EC Startup Report; MC Startup Report; Vendor Startup
- DC1-CHWP-L3-Cx-2100: Steps: EC Startup Report; MC Startup Report; Vendor Startup
- DC1-CHWP-L3-Cx-2130: Steps: EC Startup Report; MC Startup Report; Vendor Startup
- DC1-CHWP-L3-Cx-2160: Steps: EC Startup Report; MC Startup Report; Vendor Startup
- DC1-CHWP-L3-Cx-2190: Steps: EC Startup Report; MC Startup Report; Vendor Startup
- DC1-CRAH-L3-Cx-2010: Steps: EC Startup Report; MC Startup Report; Vendor Startup

| ID | WBS | Activity | Duration | Start | Finish | Predecessors | Total float | Free float | Layton Responsible Party | Vendor Responsible Party |
| --- | --- | --- | --- | --- | --- | --- | --- | --- | --- | --- |
|  | 02 | **DH1100 CRAH-DH-02 L3** |  | 2026-02-26 | 2026-03-03 |  |  |  |  |  |
| DC1-CRAH-L3-Cx-2030 |  | DC1-DH1100-CRAH-DH-02 FTE | 1d | 2026-02-26 | 2026-02-26 | DC1-CRAH-L2-2010, DC1-MOD2-L3-Cx-2060 SS, DC1-MOD2-L3-Cx-2150 SS | 16d | 0d | Riley Warring | ROS |
| DC1-CRAH-L3-Cx-2040 |  | DC1-DH1100-CRAH-DH-02 L3 Startup | 2d | 2026-02-27 | 2026-03-02 | DC1-CRAH-L3-Cx-2030 | 16d | 0d | Riley Warring | UMAS |
| DC1-CRAH-L3-Cx-2050 |  | DC1-DH1100-CRAH-DH-02 BMS/EPMS | 1d | 2026-03-03 | 2026-03-03 | DC1-CRAH-L3-Cx-2040 | 16d | 1d | Riley Warring | PRM |
|  | 03 | **DH1100 CRAH-DH-03 L3** |  | 2026-02-26 | 2026-03-03 |  |  |  |  |  |
| DC1-CRAH-L3-Cx-2060 |  | DC1-DH1100-CRAH-DH-03 FTE | 1d | 2026-02-26 | 2026-02-26 | DC1-CRAH-L2-2020, DC1-MOD2-L3-Cx-2030 SS, DC1-MOD2-L3-Cx-2120 SS | 16d | 0d | Riley Warring | ROS |
| DC1-CRAH-L3-Cx-2070 |  | DC1-DH1100-CRAH-DH-03 L3 Startup | 2d | 2026-02-27 | 2026-03-02 | DC1-CRAH-L3-Cx-2060 | 16d | 0d | Riley Warring | UMAS |
| DC1-CRAH-L3-Cx-2080 |  | DC1-DH1100-CRAH-DH-03 BMS/EPMS | 1d | 2026-03-03 | 2026-03-03 | DC1-CRAH-L3-Cx-2070 | 16d | 1d | Riley Warring | PRM |
|  | 04 | **DH1100 CRAH-DH-04 L3** |  | 2026-02-26 | 2026-03-03 |  |  |  |  |  |
| DC1-CRAH-L3-Cx-2090 |  | DC1-DH1100-CRAH-DH-04 FTE | 1d | 2026-02-26 | 2026-02-26 | DC1-CRAH-L2-2030, DC1-MOD2-L3-Cx-2000 SS, DC1-MOD2-L3-Cx-2090 SS | 16d | 0d | Riley Warring | ROS |
| DC1-CRAH-L3-Cx-2100 |  | DC1-DH1100-CRAH-DH-04 L3 Startup | 2d | 2026-02-27 | 2026-03-02 | DC1-CRAH-L3-Cx-2090 | 16d | 0d | Riley Warring | UMAS |
| DC1-CRAH-L3-Cx-2110 |  | DC1-DH1100-CRAH-DH-04 BMS/EPMS | 1d | 2026-03-03 | 2026-03-03 | DC1-CRAH-L3-Cx-2100 | 16d | 1d | Riley Warring | PRM |
|  | 05 | **DH1100 CRAH-DH-05 L3** |  | 2026-02-26 | 2026-03-03 |  |  |  |  |  |
| DC1-CRAH-L3-Cx-2120 |  | DC1-DH1100-CRAH-DH-05 FTE | 1d | 2026-02-26 | 2026-02-26 | DC1-CRAH-L2-2040, DC1-MOD2-L3-Cx-2180 SS, DC1-MOD2-L3-Cx-2060 SS | 16d | 0d | Riley Warring | ROS |
| DC1-CRAH-L3-Cx-2130 |  | DC1-DH1100-CRAH-DH-05 L3 Startup | 2d | 2026-02-27 | 2026-03-02 | DC1-CRAH-L3-Cx-2120 | 16d | 0d | Riley Warring | UMAS |
| DC1-CRAH-L3-Cx-2140 |  | DC1-DH1100-CRAH-DH-05 BMS/EPMS | 1d | 2026-03-03 | 2026-03-03 | DC1-CRAH-L3-Cx-2130 | 16d | 1d | Riley Warring | PRM |
|  | 06 | **DH1100 CRAH-DH-06 L3** |  | 2026-02-26 | 2026-03-03 |  |  |  |  |  |
| DC1-CRAH-L3-Cx-2150 |  | DC1-DH1100-CRAH-DH-06 FTE | 1d | 2026-02-26 | 2026-02-26 | DC1-CRAH-L2-2050, DC1-MOD2-L3-Cx-2030 SS, DC1-MOD2-L3-Cx-2150 SS | 16d | 0d | Riley Warring | ROS |
| DC1-CRAH-L3-Cx-2160 |  | DC1-DH1100-CRAH-DH-06 L3 Startup | 2d | 2026-02-27 | 2026-03-02 | DC1-CRAH-L3-Cx-2150 | 16d | 0d | Riley Warring | UMAS |
| DC1-CRAH-L3-Cx-2170 |  | DC1-DH1100-CRAH-DH-06 BMS/EPMS | 1d | 2026-03-03 | 2026-03-03 | DC1-CRAH-L3-Cx-2160 | 16d | 1d | Riley Warring | PRM |
|  | 07 | **DH1100 CRAH-DH-07 L3** |  | 2026-02-26 | 2026-03-03 |  |  |  |  |  |
| DC1-CRAH-L3-Cx-2180 |  | DC1-DH1100-CRAH-DH-07 FTE | 1d | 2026-02-26 | 2026-02-26 | DC1-CRAH-L2-2060, DC1-MOD2-L3-Cx-2000 SS, DC1-MOD2-L3-Cx-2120 SS | 16d | 0d | Riley Warring | ROS |
| DC1-CRAH-L3-Cx-2190 |  | DC1-DH1100-CRAH-DH-07 L3 Startup | 2d | 2026-02-27 | 2026-03-02 | DC1-CRAH-L3-Cx-2180 | 16d | 0d | Riley Warring | UMAS |
| DC1-CRAH-L3-Cx-2200 |  | DC1-DH1100-CRAH-DH-07 BMS/EPMS | 1d | 2026-03-03 | 2026-03-03 | DC1-CRAH-L3-Cx-2190 | 16d | 1d | Riley Warring | PRM |

Notes:
- DC1-CRAH-L3-Cx-2040: Steps: EC Startup Report; MC Startup Report; Vendor Startup
- DC1-CRAH-L3-Cx-2070: Steps: EC Startup Report; MC Startup Report; Vendor Startup
- DC1-CRAH-L3-Cx-2100: Steps: EC Startup Report; MC Startup Report; Vendor Startup
- DC1-CRAH-L3-Cx-2130: Steps: EC Startup Report; MC Startup Report; Vendor Startup
- DC1-CRAH-L3-Cx-2160: Steps: EC Startup Report; MC Startup Report; Vendor Startup
- DC1-CRAH-L3-Cx-2190: Steps: EC Startup Report; MC Startup Report; Vendor Startup

| ID | WBS | Activity | Duration | Start | Finish | Predecessors | Total float | Free float | Layton Responsible Party | Vendor Responsible Party |
| --- | --- | --- | --- | --- | --- | --- | --- | --- | --- | --- |
|  | 08 | **DH1100 CRAH-DH-08 L3** |  | 2026-02-26 | 2026-03-03 |  |  |  |  |  |
| DC1-CRAH-L3-Cx-2210 |  | DC1-DH1100-CRAH-DH-08 FTE | 1d | 2026-02-26 | 2026-02-26 | DC1-CRAH-L2-2070, DC1-MOD2-L3-Cx-2060 SS, DC1-MOD2-L3-Cx-2180 SS | 16d | 0d | Riley Warring | ROS |
| DC1-CRAH-L3-Cx-2220 |  | DC1-DH1100-CRAH-DH-08 L3 Startup | 2d | 2026-02-27 | 2026-03-02 | DC1-CRAH-L3-Cx-2210 | 16d | 0d | Riley Warring | UMAS |
| DC1-CRAH-L3-Cx-2230 |  | DC1-DH1100-CRAH-DH-08 BMS/EPMS | 1d | 2026-03-03 | 2026-03-03 | DC1-CRAH-L3-Cx-2220 | 16d | 1d | Riley Warring | PRM |
|  | 09 | **DH1100 CRAH-DH-09 L3** |  | 2026-02-26 | 2026-03-03 |  |  |  |  |  |
| DC1-CRAH-L3-Cx-2240 |  | DC1-DH1100-CRAH-DH-09 FTE | 1d | 2026-02-26 | 2026-02-26 | DC1-CRAH-L2-2080, DC1-MOD2-L3-Cx-2030 SS, DC1-MOD2-L3-Cx-2150 SS | 16d | 0d | Riley Warring | ROS |
| DC1-CRAH-L3-Cx-2250 |  | DC1-DH1100-CRAH-DH-09 L3 Startup | 2d | 2026-02-27 | 2026-03-02 | DC1-CRAH-L3-Cx-2240 | 16d | 0d | Riley Warring | UMAS |
| DC1-CRAH-L3-Cx-2260 |  | DC1-DH1100-CRAH-DH-09 BMS/EPMS | 1d | 2026-03-03 | 2026-03-03 | DC1-CRAH-L3-Cx-2250 | 16d | 1d | Riley Warring | PRM |
|  | 10 | **DH1100 CRAH-DH-10 L3** |  | 2026-02-26 | 2026-03-03 |  |  |  |  |  |
| DC1-CRAH-L3-Cx-2270 |  | DC1-DH1100-CRAH-DH-10 FTE | 1d | 2026-02-26 | 2026-02-26 | DC1-CRAH-L2-2090, DC1-MOD2-L3-Cx-2000 SS, DC1-MOD2-L3-Cx-2120 SS | 16d | 0d | Riley Warring | ROS |
| DC1-CRAH-L3-Cx-2280 |  | DC1-DH1100-CRAH-DH-10 L3 Startup | 2d | 2026-02-27 | 2026-03-02 | DC1-CRAH-L3-Cx-2270 | 16d | 0d | Riley Warring | UMAS |
| DC1-CRAH-L3-Cx-2290 |  | DC1-DH1100-CRAH-DH-10 BMS/EPMS | 1d | 2026-03-03 | 2026-03-03 | DC1-CRAH-L3-Cx-2280 | 16d | 1d | Riley Warring | PRM |
|  | 11 | **DH1100 CRAH-DH-11 L3** |  | 2026-02-26 | 2026-03-03 |  |  |  |  |  |
| DC1-CRAH-L3-Cx-2300 |  | DC1-DH1100-CRAH-DH-11 FTE | 1d | 2026-02-26 | 2026-02-26 | DC1-CRAH-L2-2100, DC1-MOD2-L3-Cx-2090 SS, DC1-MOD2-L3-Cx-2180 SS | 16d | 0d | Riley Warring | ROS |
| DC1-CRAH-L3-Cx-2310 |  | DC1-DH1100-CRAH-DH-11 L3 Startup | 2d | 2026-02-27 | 2026-03-02 | DC1-CRAH-L3-Cx-2300 | 16d | 0d | Riley Warring | UMAS |
| DC1-CRAH-L3-Cx-2320 |  | DC1-DH1100-CRAH-DH-11 BMS/EPMS | 1d | 2026-03-03 | 2026-03-03 | DC1-CRAH-L3-Cx-2310 | 16d | 1d | Riley Warring | PRM |
|  | 12 | **DH1100 CRAH-DH-12 L3** |  | 2026-02-26 | 2026-03-03 |  |  |  |  |  |
| DC1-CRAH-L3-Cx-2330 |  | DC1-DH1100-CRAH-DH-12 FTE | 1d | 2026-02-26 | 2026-02-26 | DC1-CRAH-L2-2110, DC1-MOD2-L3-Cx-2150 SS, DC1-MOD2-L3-Cx-2060 SS | 16d | 0d | Riley Warring | ROS |
| DC1-CRAH-L3-Cx-2340 |  | DC1-DH1100-CRAH-DH-12 L3 Startup | 2d | 2026-02-27 | 2026-03-02 | DC1-CRAH-L3-Cx-2330 | 16d | 0d | Riley Warring | UMAS |
| DC1-CRAH-L3-Cx-2350 |  | DC1-DH1100-CRAH-DH-12 BMS/EPMS | 1d | 2026-03-03 | 2026-03-03 | DC1-CRAH-L3-Cx-2340 | 16d | 1d | Riley Warring | PRM |
|  | 13 | **DH1100 CRAH-DH-13 L3** |  | 2026-02-26 | 2026-03-03 |  |  |  |  |  |
| DC1-CRAH-L3-Cx-2360 |  | DC1-DH1100-CRAH-DH-13 FTE | 1d | 2026-02-26 | 2026-02-26 | DC1-CRAH-L2-2120, DC1-MOD2-L3-Cx-2030 SS, DC1-MOD2-L3-Cx-2120 SS | 16d | 0d | Riley Warring | ROS |
| DC1-CRAH-L3-Cx-2370 |  | DC1-DH1100-CRAH-DH-13 L3 Startup | 2d | 2026-02-27 | 2026-03-02 | DC1-CRAH-L3-Cx-2360 | 16d | 0d | Riley Warring | UMAS |
| DC1-CRAH-L3-Cx-2380 |  | DC1-DH1100-CRAH-DH-13 BMS/EPMS | 1d | 2026-03-03 | 2026-03-03 | DC1-CRAH-L3-Cx-2370 | 16d | 1d | Riley Warring | PRM |

Notes:
- DC1-CRAH-L3-Cx-2220: Steps: EC Startup Report; MC Startup Report; Vendor Startup
- DC1-CRAH-L3-Cx-2250: Steps: EC Startup Report; MC Startup Report; Vendor Startup
- DC1-CRAH-L3-Cx-2280: Steps: EC Startup Report; MC Startup Report; Vendor Startup
- DC1-CRAH-L3-Cx-2310: Steps: EC Startup Report; MC Startup Report; Vendor Startup
- DC1-CRAH-L3-Cx-2340: Steps: EC Startup Report; MC Startup Report; Vendor Startup
- DC1-CRAH-L3-Cx-2370: Steps: EC Startup Report; MC Startup Report; Vendor Startup

| ID | WBS | Activity | Duration | Start | Finish | Predecessors | Total float | Free float | Layton Responsible Party | Vendor Responsible Party |
| --- | --- | --- | --- | --- | --- | --- | --- | --- | --- | --- |
|  | 14 | **DH1100 CRAH-DH-14 L3** |  | 2026-02-26 | 2026-03-03 |  |  |  |  |  |
| DC1-CRAH-L3-Cx-2390 |  | DC1-DH1100-CRAH-DH-14 FTE | 1d | 2026-02-26 | 2026-02-26 | DC1-CRAH-L2-2130, DC1-MOD2-L3-Cx-2000 SS, DC1-MOD2-L3-Cx-2090 SS | 16d | 0d | Riley Warring | ROS |
| DC1-CRAH-L3-Cx-2400 |  | DC1-DH1100-CRAH-DH-14 L3 Startup | 2d | 2026-02-27 | 2026-03-02 | DC1-CRAH-L3-Cx-2390 | 16d | 0d | Riley Warring | UMAS |
| DC1-CRAH-L3-Cx-2410 |  | DC1-DH1100-CRAH-DH-14 BMS/EPMS | 1d | 2026-03-03 | 2026-03-03 | DC1-CRAH-L3-Cx-2400 | 16d | 1d | Riley Warring | PRM |
|  | 15 | **DH1100 CRAH-DH-15 L3** |  | 2026-02-23 | 2026-02-26 |  |  |  |  |  |
| DC1-CRAH-L3-Cx-2420 |  | DC1-DH1100-CRAH-DH-15 FTE | 1d | 2026-02-23 | 2026-02-23 | DC1-CRAH-L2-2140, DC1-MOD2-L3-Cx-2000 SS, DC1-MOD2-L3-Cx-2030 SS | 19d | 0d | Riley Warring | ROS |
| DC1-CRAH-L3-Cx-2430 |  | DC1-DH1100-CRAH-DH-15 L3 Startup | 2d | 2026-02-24 | 2026-02-25 | DC1-CRAH-L3-Cx-2420 | 19d | 0d | Riley Warring | UMAS |
| DC1-CRAH-L3-Cx-2440 |  | DC1-DH1100-CRAH-DH-15 BMS/EPMS | 1d | 2026-02-26 | 2026-02-26 | DC1-CRAH-L3-Cx-2430 | 19d | 4d | Riley Warring | PRM |
|  | 16 | **DH1100 CRAH-DH-16 L3** |  | 2026-02-26 | 2026-03-03 |  |  |  |  |  |
| DC1-CRAH-L3-Cx-2450 |  | DC1-DH1100-CRAH-DH-16 FTE | 1d | 2026-02-26 | 2026-02-26 | DC1-CRAH-L2-2150, DC1-MOD2-L3-Cx-2030 SS, DC1-MOD2-L3-Cx-2060 SS | 16d | 0d | Riley Warring | ROS |
| DC1-CRAH-L3-Cx-2460 |  | DC1-DH1100-CRAH-DH-16 L3 Startup | 2d | 2026-02-27 | 2026-03-02 | DC1-CRAH-L3-Cx-2450 | 16d | 0d | Riley Warring | UMAS |
| DC1-CRAH-L3-Cx-2470 |  | DC1-DH1100-CRAH-DH-16 BMS/EPMS | 1d | 2026-03-03 | 2026-03-03 | DC1-CRAH-L3-Cx-2460 | 16d | 1d | Riley Warring | PRM |
|  | 17 | **DH1100 CRAH-DH-17 L3** |  | 2026-02-26 | 2026-03-03 |  |  |  |  |  |
| DC1-CRAH-L3-Cx-2480 |  | DC1-DH1100-CRAH-DH-17 FTE | 1d | 2026-02-26 | 2026-02-26 | DC1-CRAH-L2-2160, DC1-MOD2-L3-Cx-2090 SS, DC1-MOD2-L3-Cx-2060 SS | 16d | 0d | Riley Warring | ROS |
| DC1-CRAH-L3-Cx-2490 |  | DC1-DH1100-CRAH-DH-17 L3 Startup | 2d | 2026-02-27 | 2026-03-02 | DC1-CRAH-L3-Cx-2480 | 16d | 0d | Riley Warring | UMAS |
| DC1-CRAH-L3-Cx-2500 |  | DC1-DH1100-CRAH-DH-17 BMS/EPMS | 1d | 2026-03-03 | 2026-03-03 | DC1-CRAH-L3-Cx-2490 | 16d | 1d | Riley Warring | PRM |
|  | 18 | **DH1100 CRAH-DH-18 L3** |  | 2026-02-26 | 2026-03-03 |  |  |  |  |  |
| DC1-CRAH-L3-Cx-2510 |  | DC1-DH1100-CRAH-DH-18 FTE | 1d | 2026-02-26 | 2026-02-26 | DC1-CRAH-L2-2170, DC1-MOD2-L3-Cx-2090 SS, DC1-MOD2-L3-Cx-2120 SS | 16d | 0d | Riley Warring | ROS |
| DC1-CRAH-L3-Cx-2520 |  | DC1-DH1100-CRAH-DH-18 L3 Startup | 2d | 2026-02-27 | 2026-03-02 | DC1-CRAH-L3-Cx-2510 | 16d | 0d | Riley Warring | UMAS |
| DC1-CRAH-L3-Cx-2530 |  | DC1-DH1100-CRAH-DH-18 BMS/EPMS | 1d | 2026-03-03 | 2026-03-03 | DC1-CRAH-L3-Cx-2520 | 16d | 1d | Riley Warring | PRM |
|  | 19 | **DH1100 CRAH-DH-19 L3** |  | 2026-02-26 | 2026-03-03 |  |  |  |  |  |
| DC1-CRAH-L3-Cx-2540 |  | DC1-DH1100-CRAH-DH-19 FTE | 1d | 2026-02-26 | 2026-02-26 | DC1-CRAH-L2-2180, DC1-MOD2-L3-Cx-2120 SS, DC1-MOD2-L3-Cx-2150 SS | 16d | 0d | Riley Warring | ROS |
| DC1-CRAH-L3-Cx-2550 |  | DC1-DH1100-CRAH-DH-19 L3 Startup | 2d | 2026-02-27 | 2026-03-02 | DC1-CRAH-L3-Cx-2540 | 16d | 0d | Riley Warring | UMAS |
| DC1-CRAH-L3-Cx-2560 |  | DC1-DH1100-CRAH-DH-19 BMS/EPMS | 1d | 2026-03-03 | 2026-03-03 | DC1-CRAH-L3-Cx-2550 | 16d | 1d | Riley Warring | PRM |

Notes:
- DC1-CRAH-L3-Cx-2400: Steps: EC Startup Report; MC Startup Report; Vendor Startup
- DC1-CRAH-L3-Cx-2430: Steps: EC Startup Report; MC Startup Report; Vendor Startup
- DC1-CRAH-L3-Cx-2460: Steps: EC Startup Report; MC Startup Report; Vendor Startup
- DC1-CRAH-L3-Cx-2490: Steps: EC Startup Report; MC Startup Report; Vendor Startup
- DC1-CRAH-L3-Cx-2520: Steps: EC Startup Report; MC Startup Report; Vendor Startup
- DC1-CRAH-L3-Cx-2550: Steps: EC Startup Report; MC Startup Report; Vendor Startup

| ID | WBS | Activity | Duration | Start | Finish | Predecessors | Total float | Free float | Layton Responsible Party | Vendor Responsible Party |
| --- | --- | --- | --- | --- | --- | --- | --- | --- | --- | --- |
|  | 20 | **DH1100 CRAH-DH-20 L3** |  | 2026-02-26 | 2026-03-03 |  |  |  |  |  |
| DC1-CRAH-L3-Cx-2570 |  | DC1-DH1100-CRAH-DH-20 FTE | 1d | 2026-02-26 | 2026-02-26 | DC1-CRAH-L2-2190, DC1-MOD2-L3-Cx-2150 SS, DC1-MOD2-L3-Cx-2180 SS | 16d | 0d | Riley Warring | ROS |
| DC1-CRAH-L3-Cx-2580 |  | DC1-DH1100-CRAH-DH-20 L3 Startup | 2d | 2026-02-27 | 2026-03-02 | DC1-CRAH-L3-Cx-2570 | 16d | 0d | Riley Warring | UMAS |
| DC1-CRAH-L3-Cx-2590 |  | DC1-DH1100-CRAH-DH-20 BMS/EPMS | 1d | 2026-03-03 | 2026-03-03 | DC1-CRAH-L3-Cx-2580 | 16d | 1d | Riley Warring | PRM |
|  | 21 | **DH1100 CRAH-DH-21 L3** |  | 2026-02-26 | 2026-03-03 |  |  |  |  |  |
| DC1-CRAH-L3-Cx-2600 |  | DC1-DH1100-CRAH-DH-21 FTE | 1d | 2026-02-26 | 2026-02-26 | DC1-CRAH-L2-2200, DC1-MOD2-L3-Cx-2000 SS, DC1-MOD2-L3-Cx-2180 SS | 16d | 0d | Riley Warring | ROS |
| DC1-CRAH-L3-Cx-2610 |  | DC1-DH1100-CRAH-DH-21 L3 Startup | 2d | 2026-02-27 | 2026-03-02 | DC1-CRAH-L3-Cx-2600 | 16d | 0d | Riley Warring | UMAS |
| DC1-CRAH-L3-Cx-2620 |  | DC1-DH1100-CRAH-DH-21 BMS/EPMS | 1d | 2026-03-03 | 2026-03-03 | DC1-CRAH-L3-Cx-2610 | 16d | 1d | Riley Warring | PRM |
|  | 22 | **DH1100 CRAH-DH-22 L3** |  | 2026-02-26 | 2026-03-03 |  |  |  |  |  |
| DC1-CRAH-L3-Cx-2630 |  | DC1-DH1100-CRAH-DH-22 FTE | 1d | 2026-02-26 | 2026-02-26 | DC1-CRAH-L2-2210, DC1-MOD2-L3-Cx-2000 SS, DC1-MOD2-L3-Cx-2060 SS | 16d | 0d | Riley Warring | ROS |
| DC1-CRAH-L3-Cx-2640 |  | DC1-DH1100-CRAH-DH-22 L3 Startup | 2d | 2026-02-27 | 2026-03-02 | DC1-CRAH-L3-Cx-2630 | 16d | 0d | Riley Warring | UMAS |
| DC1-CRAH-L3-Cx-2650 |  | DC1-DH1100-CRAH-DH-22 BMS/EPMS | 1d | 2026-03-03 | 2026-03-03 | DC1-CRAH-L3-Cx-2640 | 16d | 1d | Riley Warring | PRM |
|  | 23 | **DH1100 CRAH-DH-23 L3** |  | 2026-02-26 | 2026-03-03 |  |  |  |  |  |
| DC1-CRAH-L3-Cx-2660 |  | DC1-DH1100-CRAH-DH-23 FTE | 1d | 2026-02-26 | 2026-02-26 | DC1-CRAH-L2-2220, DC1-MOD2-L3-Cx-2030 SS, DC1-MOD2-L3-Cx-2090 SS | 16d | 0d | Riley Warring | ROS |
| DC1-CRAH-L3-Cx-2670 |  | DC1-DH1100-CRAH-DH-23 L3 Startup | 2d | 2026-02-27 | 2026-03-02 | DC1-CRAH-L3-Cx-2660 | 16d | 0d | Riley Warring | UMAS |
| DC1-CRAH-L3-Cx-2680 |  | DC1-DH1100-CRAH-DH-23 BMS/EPMS | 1d | 2026-03-03 | 2026-03-03 | DC1-CRAH-L3-Cx-2670 | 16d | 1d | Riley Warring | PRM |
|  | 24 | **DH1100 CRAH-DH-24 L3** |  | 2026-02-26 | 2026-03-03 |  |  |  |  |  |
| DC1-CRAH-L3-Cx-2690 |  | DC1-DH1100-CRAH-DH-24 FTE | 1d | 2026-02-26 | 2026-02-26 | DC1-CRAH-L2-2230, DC1-MOD2-L3-Cx-2120 SS, DC1-MOD2-L3-Cx-2060 SS | 16d | 0d | Riley Warring | ROS |
| DC1-CRAH-L3-Cx-2700 |  | DC1-DH1100-CRAH-DH-24 L3 Startup | 2d | 2026-02-27 | 2026-03-02 | DC1-CRAH-L3-Cx-2690 | 16d | 0d | Riley Warring | UMAS |
| DC1-CRAH-L3-Cx-2710 |  | DC1-DH1100-CRAH-DH-24 BMS/EPMS | 1d | 2026-03-03 | 2026-03-03 | DC1-CRAH-L3-Cx-2700 | 16d | 1d | Riley Warring | PRM |
|  | 25 | **DH1100 CRAH-DH-25 L3** |  | 2026-02-26 | 2026-03-03 |  |  |  |  |  |
| DC1-CRAH-L3-Cx-2720 |  | DC1-DH1100-CRAH-DH-25 FTE | 1d | 2026-02-26 | 2026-02-26 | DC1-CRAH-L2-2240, DC1-MOD2-L3-Cx-2090 SS, DC1-MOD2-L3-Cx-2150 SS | 16d | 0d | Riley Warring | ROS |
| DC1-CRAH-L3-Cx-2730 |  | DC1-DH1100-CRAH-DH-25 L3 Startup | 2d | 2026-02-27 | 2026-03-02 | DC1-CRAH-L3-Cx-2720 | 16d | 0d | Riley Warring | UMAS |
| DC1-CRAH-L3-Cx-2740 |  | DC1-DH1100-CRAH-DH-25 BMS/EPMS | 1d | 2026-03-03 | 2026-03-03 | DC1-CRAH-L3-Cx-2730 | 16d | 1d | Riley Warring | PRM |

Notes:
- DC1-CRAH-L3-Cx-2580: Steps: EC Startup Report; MC Startup Report; Vendor Startup
- DC1-CRAH-L3-Cx-2610: Steps: EC Startup Report; MC Startup Report; Vendor Startup
- DC1-CRAH-L3-Cx-2640: Steps: EC Startup Report; MC Startup Report; Vendor Startup
- DC1-CRAH-L3-Cx-2670: Steps: EC Startup Report; MC Startup Report; Vendor Startup
- DC1-CRAH-L3-Cx-2700: Steps: EC Startup Report; MC Startup Report; Vendor Startup
- DC1-CRAH-L3-Cx-2730: Steps: EC Startup Report; MC Startup Report; Vendor Startup

| ID | WBS | Activity | Duration | Start | Finish | Predecessors | Total float | Free float | Layton Responsible Party | Vendor Responsible Party |
| --- | --- | --- | --- | --- | --- | --- | --- | --- | --- | --- |
|  | 26 | **DH1100 CRAH-DH-26 L3** |  | 2026-02-26 | 2026-03-03 |  |  |  |  |  |
| DC1-CRAH-L3-Cx-2750 |  | DC1-DH1100-CRAH-DH-26 FTE | 1d | 2026-02-26 | 2026-02-26 | DC1-CRAH-L2-2250, DC1-MOD2-L3-Cx-2120 SS, DC1-MOD2-L3-Cx-2180 SS | 16d | 0d | Riley Warring | ROS |
| DC1-CRAH-L3-Cx-2760 |  | DC1-DH1100-CRAH-DH-26 L3 Startup | 2d | 2026-02-27 | 2026-03-02 | DC1-CRAH-L3-Cx-2750 | 16d | 0d | Riley Warring | UMAS |
| DC1-CRAH-L3-Cx-2770 |  | DC1-DH1100-CRAH-DH-26 BMS/EPMS | 1d | 2026-03-03 | 2026-03-03 | DC1-CRAH-L3-Cx-2760 | 16d | 1d | Riley Warring | PRM |
|  | 27 | **DH1100 CRAH-DH-27 L3** |  | 2026-02-26 | 2026-03-03 |  |  |  |  |  |
| DC1-CRAH-L3-Cx-2780 |  | DC1-DH1100-CRAH-DH-27 FTE | 1d | 2026-02-26 | 2026-02-26 | DC1-CRAH-L2-2260, DC1-MOD2-L3-Cx-2000 SS, DC1-MOD2-L3-Cx-2150 SS | 16d | 0d | Riley Warring | ROS |
| DC1-CRAH-L3-Cx-2790 |  | DC1-DH1100-CRAH-DH-27 L3 Startup | 2d | 2026-02-27 | 2026-03-02 | DC1-CRAH-L3-Cx-2780 | 16d | 0d | Riley Warring | UMAS |
| DC1-CRAH-L3-Cx-2800 |  | DC1-DH1100-CRAH-DH-27 BMS/EPMS | 1d | 2026-03-03 | 2026-03-03 | DC1-CRAH-L3-Cx-2790 | 16d | 1d | Riley Warring | PRM |
|  | 28 | **DH1100 CRAH-DH-28 L3** |  | 2026-02-26 | 2026-03-03 |  |  |  |  |  |
| DC1-CRAH-L3-Cx-2810 |  | DC1-DH1100-CRAH-DH-28 FTE | 1d | 2026-02-26 | 2026-02-26 | DC1-CRAH-L2-2270, DC1-MOD2-L3-Cx-2030 SS, DC1-MOD2-L3-Cx-2180 SS | 16d | 0d | Riley Warring | ROS |
| DC1-CRAH-L3-Cx-2820 |  | DC1-DH1100-CRAH-DH-28 L3 Startup | 2d | 2026-02-27 | 2026-03-02 | DC1-CRAH-L3-Cx-2810 | 16d | 0d | Riley Warring | UMAS |
| DC1-CRAH-L3-Cx-2830 |  | DC1-DH1100-CRAH-DH-28 BMS/EPMS | 1d | 2026-03-03 | 2026-03-03 | DC1-CRAH-L3-Cx-2820 | 16d | 1d | Riley Warring | PRM |
|  | 29 | **DH1100 CRAH-EG-01 L3** |  | 2026-02-23 | 2026-02-26 |  |  |  |  |  |
| DC1-CRAH-L3-Cx-2840 |  | DC1-DH1100-CRAH-EG-1102-01 FTE | 1d | 2026-02-23 | 2026-02-23 | DC1-CRAH-L2-2280, DC1-MOD2-L3-Cx-2000 SS | 19d | 0d | Riley Warring | ROS |
| DC1-CRAH-L3-Cx-2850 |  | DC1-DH1100-CRAH-EG-1102-01 L3 Startup | 2d | 2026-02-24 | 2026-02-25 | DC1-CRAH-L3-Cx-2840 | 19d | 0d | Riley Warring | VER |
| DC1-CRAH-L3-Cx-2860 |  | DC1-DH1100-CRAH-EG-1102-01 BMS/EPMS | 1d | 2026-02-26 | 2026-02-26 | DC1-CRAH-L3-Cx-2850 | 19d | 4d | Riley Warring | PRM |
|  | 30 | **DH1100 CRAH-EG-02 L3** |  | 2026-02-26 | 2026-03-03 |  |  |  |  |  |
| DC1-CRAH-L3-Cx-2870 |  | DC1-DH1100-CRAH-EG-1102-02 FTE | 1d | 2026-02-26 | 2026-02-26 | DC1-CRAH-L2-2290, DC1-MOD2-L3-Cx-2060 SS | 16d | 0d | Riley Warring | ROS |
| DC1-CRAH-L3-Cx-2880 |  | DC1-DH1100-CRAH-EG-1102-02 L3 Startup | 2d | 2026-02-27 | 2026-03-02 | DC1-CRAH-L3-Cx-2870 | 16d | 0d | Riley Warring | VER |
| DC1-CRAH-L3-Cx-2890 |  | DC1-DH1100-CRAH-EG-1102-02 BMS/EPMS | 1d | 2026-03-03 | 2026-03-03 | DC1-CRAH-L3-Cx-2880 | 16d | 1d | Riley Warring | PRM |
|  | 31 | **DH1100 CRAH-EG-03 L3** |  | 2026-02-26 | 2026-03-03 |  |  |  |  |  |
| DC1-CRAH-L3-Cx-2900 |  | DC1-DH1100-CRAH-EG-1102-03 FTE | 1d | 2026-02-26 | 2026-02-26 | DC1-CRAH-L2-2300, DC1-MOD2-L3-Cx-2090 SS | 16d | 0d | Riley Warring | ROS |
| DC1-CRAH-L3-Cx-2910 |  | DC1-DH1100-CRAH-EG-1102-03 L3 Startup | 2d | 2026-02-27 | 2026-03-02 | DC1-CRAH-L3-Cx-2900 | 16d | 0d | Riley Warring | VER |
| DC1-CRAH-L3-Cx-2920 |  | DC1-DH1100-CRAH-EG-1102-03 BMS/EPMS | 1d | 2026-03-03 | 2026-03-03 | DC1-CRAH-L3-Cx-2910 | 16d | 1d | Riley Warring | PRM |

Notes:
- DC1-CRAH-L3-Cx-2760: Steps: EC Startup Report; MC Startup Report; Vendor Startup
- DC1-CRAH-L3-Cx-2790: Steps: EC Startup Report; MC Startup Report; Vendor Startup
- DC1-CRAH-L3-Cx-2820: Steps: EC Startup Report; MC Startup Report; Vendor Startup
- DC1-CRAH-L3-Cx-2850: Steps: EC Startup Report; MC Startup Report; Vendor Startup
- DC1-CRAH-L3-Cx-2880: Steps: EC Startup Report; MC Startup Report; Vendor Startup
- DC1-CRAH-L3-Cx-2910: Steps: EC Startup Report; MC Startup Report; Vendor Startup

| ID | WBS | Activity | Duration | Start | Finish | Predecessors | Total float | Free float | Calendar | Layton Responsible Party | Vendor Responsible Party |
| --- | --- | --- | --- | --- | --- | --- | --- | --- | --- | --- | --- |
|  | 32 | **DH1100 CRAH-EG-04 L3** |  | 2026-02-26 | 2026-03-03 |  |  |  |  |  |  |
| DC1-CRAH-L3-Cx-2930 |  | DC1-DH1100-CRAH-EG-1102-04 FTE | 1d | 2026-02-26 | 2026-02-26 | DC1-CRAH-L2-2310, DC1-MOD2-L3-Cx-2150 SS | 16d | 0d |  | Riley Warring | ROS |
| DC1-CRAH-L3-Cx-2940 |  | DC1-DH1100-CRAH-EG-1102-04 L3 Startup | 2d | 2026-02-27 | 2026-03-02 | DC1-CRAH-L3-Cx-2930 | 16d | 0d |  | Riley Warring | VER |
| DC1-CRAH-L3-Cx-2950 |  | DC1-DH1100-CRAH-EG-1102-04 BMS/EPMS | 1d | 2026-03-03 | 2026-03-03 | DC1-CRAH-L3-Cx-2940 | 16d | 1d |  | Riley Warring | PRM |
|  | 33 | **DC1-DH1100-DOAS-RT-01 L3** |  | 2026-02-26 | 2026-03-03 |  |  |  |  |  |  |
| DC1-DOAS-L3-Cx-2000 |  | DC1-DH1100-DOAS-RT-01 FTE | 1d | 2026-02-26 | 2026-02-26 | DC1-DOAS-L2-2000, DC1-MOD2-L3-Cx-2180 SS | 16d | 0d |  | Riley Warring | ROS |
| DC1-DOAS-L3-Cx-2010 |  | DC1-DH1100-DOAS-RT-01 L3 Startup | 2d | 2026-02-27 | 2026-03-02 | DC1-DOAS-L3-Cx-2000 | 16d | 0d |  | Riley Warring | TAS |
| DC1-DOAS-L3-Cx-2020 |  | DC1-DH1100-DOAS-RT-01 BMS/EPMS | 1d | 2026-03-03 | 2026-03-03 | DC1-DOAS-L3-Cx-2010 | 16d | 1d |  | Riley Warring | PRM |
|  | 34 | **DC1-DH1100-DOAS-RT-02 L3** |  | 2026-02-26 | 2026-03-03 |  |  |  |  |  |  |
| DC1-DOAS-L3-Cx-2030 |  | DC1-DH1100-DOAS-RT-02 FTE | 1d | 2026-02-26 | 2026-02-26 | DC1-DOAS-L2-2010, DC1-MOD2-L3-Cx-2150 SS | 16d | 0d |  | Riley Warring | ROS |
| DC1-DOAS-L3-Cx-2040 |  | DC1-DH1100-DOAS-RT-02 L3 Startup | 2d | 2026-02-27 | 2026-03-02 | DC1-DOAS-L3-Cx-2030 | 16d | 0d |  | Riley Warring | TAS |
| DC1-DOAS-L3-Cx-2050 |  | DC1-DH1100-DOAS-RT-02 BMS/EPMS | 1d | 2026-03-03 | 2026-03-03 | DC1-DOAS-L3-Cx-2040 | 16d | 1d |  | Riley Warring | PRM |
|  | 14 | **DC1-DH1100 LOADBANK** |  | 2026-03-09 | 2026-05-11 |  |  |  |  |  |  |
| DC1-DH1100-LB-1000 |  | DC1-DH1100 Connect Loadbanks at RPPs | 5d | 2026-03-09 | 2026-03-13 | QTS - 4860, QTS - 4670 | 10d | 0d |  | Riley Warring | PHE |
| DC1-DH1100-LB-1010 |  | DC1-DH1100 Burn in Chillers | 5d | 2026-03-16 | 2026-03-20 | DC1-RPP-L3-CX-1525, DC1-RPP-L3-CX-1510, DC1-RPP-L3-CX-1495, DC1-RPP-L3-CX-1480, DC1-RPP-L3-CX-1465, DC1-RPP-L3-CX-1450, DC1-RPP-L3-CX-1435, DC1-RPP-L3-CX-1420, DC1-RPP-L3-CX-1405, DC1-RPP-L3-CX-1390, DC1-RPP-L3-CX-1375, DC1-RPP-L3-CX-1360, DC1-RPP-L3-CX-1345, DC1-RPP-L3-CX-1330, DC1-RPP-L3-CX-1315, DC1-RPP-L3-CX-1300, DC1-RPP-L3-CX-1285, DC1-RPP-L3-CX-1270, DC1-RPP-L3-CX-1255, DC1-RPP-L3-CX-1240, DC1-RPP-L3-CX-1225, DC1-RPP-L3-CX-1210, DC1-RPP-L3-CX-1195, DC1-RPP-L3-CX-1180, DC1-RPP-L3-CX-1165, DC1-RPP-L3-CX-1150, DC1-RPP-L3-CX-1135, DC1-RPP-L3-CX-1120, DC1-RPP-L3-CX-1105, DC1-RPP-L3-CX-1090, DC1-RPP-L3-CX-1075, DC1-RPP-L3-CX-1060, DC1-RPP-L3-CX-1045, DC1-RPP-L3-CX-1030, DC1-RPP-L3-CX-1015, DC1-RPP-L3-CX-1000, DC1-DH1100-LB-1000 | 10d | 0d |  | Riley Warring | LAY |
| DC1-DH1100-LB-1040 |  | DC1-DH1100 Water Load Bank (Secondary Side) | 6d | 2026-05-02 | 2026-05-07 | DC1-IST-2000, DC1-CDU-L3-CX-2000, DC1-CDU-L3-CX-2015, DC1-CDU-L3-CX-2030, DC1-CDU-L3-CX-2045, DC1-CDU-L3-CX-2060, DC1-CDU-L3-CX-2075 | 11d | 0d | QTS-PHX3 DC1 - 7 day No Holidays | Riley Warring | LAY |
| DC1-DH1100-LB-1030 |  | DC1-DH1100 10% Continuity Testing RPP Whips | 2d | 2026-05-08 | 2026-05-11 | QTS - 24681, QTS - 15220, QTS - 10380, DC1-DH1100-LB-1040 | 14d | 0d |  | Riley Warring | PHE |
| DC1-DH1100-LB-1050 |  | DC1-DH1100 Install DanFoss Connectors | 2d | 2026-05-09 | 2026-05-10 | DC1-DH1100-LB-1030 SS+1d | 22d |  | QTS-PHX3 DC1 - 7 day No Holidays | Riley Warring | LAY |
|  | 15 | **DC1-DH1100 TAB** |  | 2026-02-25 | 2026-03-11 |  |  |  |  |  |  |
| DC1-DH1100-TAB-1000 |  | DC1-DH1100 Water Tab (Industrial Loop) | 10d | 2026-02-25 | 2026-03-06 | QTS-100600, DC1-CHWP-L3-Cx-2020, DC1-CHWP-L3-Cx-2050, DC1-CHWP-L3-Cx-2080, DC1-CHWP-L3-Cx-2110, DC1-CHWP-L3-Cx-2140, DC1-CHWP-L3-Cx-2170, DC1-CHWP-L3-Cx-2200 | 5d | 2d | QTS-PHX3 DC1 - 7 day No Holidays | Riley Warring | LAY |
| DC1-DH1100-TAB-1010 |  | DC1-DH1100 Air Tab | 5d | 2026-03-05 | 2026-03-11 | DC1-CRAH-L3-Cx-2020, DC1-CRAH-L3-Cx-2050, DC1-CRAH-L3-Cx-2080, DC1-CRAH-L3-Cx-2110, DC1-CRAH-L3-Cx-2140, DC1-CRAH-L3-Cx-2170, DC1-CRAH-L3-Cx-2200, DC1-CRAH-L3-Cx-2230, DC1-CRAH-L3-Cx-2260, DC1-CRAH-L3-Cx-2290, DC1-CRAH-L3-Cx-2320, DC1-CRAH-L3-Cx-2350, DC1-CRAH-L3-Cx-2380, DC1-CRAH-L3-Cx-2410, DC1-CRAH-L3-Cx-2440, DC1-CRAH-L3-Cx-2470, DC1-CRAH-L3-Cx-2500, DC1-CRAH-L3-Cx-2530, DC1-CRAH-L3-Cx-2560, DC1-CRAH-L3-Cx-2590, DC1-CRAH-L3-Cx-2620, DC1-CRAH-L3-Cx-2650, DC1-CRAH-L3-Cx-2680, DC1-CRAH-L3-Cx-2710, DC1-CRAH-L3-Cx-2740, DC1-CRAH-L3-Cx-2770, DC1-CRAH-L3-Cx-2800, DC1-CRAH-L3-Cx-2830, DC1-CRAH-L3-Cx-2860, DC1-CRAH-L3-Cx-2890, DC1-CRAH-L3-Cx-2920, DC1-CRAH-L3-Cx-2950, DC1-DOAS-L3-Cx-2020, DC1-DOAS-L3-Cx-2050, QTS - 15000, QTS - 24461 | 15d | 12d |  | Riley Warring | LAY |
|  | 04 | **Data Hall 1100 Cx L4** |  | 2026-03-09 | 2026-06-01 |  |  |  |  |  |  |
| DC1-MECH-L4-Cx-1110 |  | DC1 Data Hall 1100 BMS/EPMS Integration | 15d | 2026-03-09 | 2026-03-27 | DC1-DH1100-TAB-1000 | 3d | 0d |  |  |  |
| DC1-ELEC-L4-Cx-1010 |  | DC1 Data Hall 1100 Electrical L4 | 20d | 2026-03-23 | 2026-04-17 | DC1-GEN-L3-CX-2020, DC1-GEN-L3-CX-2050, DC1-GEN-L3-CX-2080, DC1-GEN-L3-CX-2110, DC1-GEN-L3-CX-2140, DC1-GEN-L3-CX-2170, DC1-GEN-L3-CX-2200, DC1-XFMR-L3-CX-2020, DC1-XFMR-L3-CX-2050, DC1-XFMR-L3-CX-2080, DC1-XFMR-L3-CX-2110, DC1-XFMR-L3-CX-2140, DC1-XFMR-L3-CX-2170, DC1-XFMR-L3-CX-2200, DC1-SWD-L3-CX-2020, DC1-SWD-L3-CX-2050, DC1-SWD-L3-CX-2080, DC1-SWD-L3-CX-2110, DC1-SWD-L3-CX-2140, DC1-SWD-L3-CX-2170, DC1-SWD-L3-CX-2200, DC1-MOD1-L3-CX-2020, DC1-MOD1-L3-CX-2050, DC1-MOD1-L3-CX-2080, DC1-MOD1-L3-CX-2110, DC1-MOD1-L3-CX-2140, DC1-MOD1-L3-CX-2170, DC1-MOD1-L3-CX-2200, DC1-UPSM-L3-CX-2020, DC1-UPSM-L3-CX-2050, DC1-UPSM-L3-CX-2080, DC1-UPSM-L3-CX-2110, DC1-UPSM-L3-CX-2140, DC1-UPSM-L3-CX-2170, DC1-UPSM-L3-CX-2200, DC1-ATS-L3-CX-2010, DC1-ATS-L3-CX-2025, DC1-ATS-L3-CX-2040, DC1-ATS-L3-CX-2055, DC1-ATS-L3-CX-2070, DC1-ATS-L3-CX-2085, DC1-ATS-L3-CX-2100, DC1-ATS-L3-CX-2115, DC1-ATS-L3-CX-2130, DC1-ATS-L3-CX-2145, DC1-ATS-L3-CX-2160, DC1-ATS-L3-CX-2175, DC1-ATS-L3-CX-2190, DC1-ATS-L3-CX-2205, DC1-ATS-L3-CX-2220, DC1-ATS-L3-CX-2235, DC1-ATS-L3-CX-2250, DC1-ATS-L3-CX-2265, DC1-ATS-L3-CX-2280, DC1-ATS-L3-CX-2295, DC1-ATS-L3-CX-2310, DC1-ATS-L3-CX-2325, DC1-ATS-L3-CX-2340, DC1-ATS-L3-CX-2355, DC1-ATS-L3-CX-2370, DC1-ATS-L3-CX-2385, DC1-ATS-L3-CX-2400, DC1-ATS-L3-CX-2415, DC1-ATS-L3-CX-2430, DC1-ATS-L3-CX-2445, DC1-ATS-L3-CX-2460, DC1-ATS-L3-CX-2475, DC1-ATS-L3-CX-2490, DC1-ATS-L3-CX-2505, DC1-ATS-L3-CX-2520, DC1-ATS-L3-CX-2535, DC1-COD-L3-CX-2010, DC1-COD-L3-CX-2025, DC1-COD-L3-CX-2040, DC1-COD-L3-CX-2055, DC1-COD-L3-CX-2070, DC1-COD-L3-CX-2085, DC1-COD-L3-CX-2100, DC1-COD-L3-CX-2115, DC1-COD-L3-CX-2130, DC1-COD-L3-CX-2145, DC1-COD-L3-CX-2160, DC1-COD-L3-CX-2175, DC1-COD-L3-CX-2190, DC1-COD-L3-CX-2205, DC1-COD-L3-CX-2220, DC1-COD-L3-CX-2235, DC1-COD-L3-CX-2250, DC1-COD-L3-CX-2265, DC1-COD-L3-CX-2280, DC1-COD-L3-CX-2295, DC1-COD-L3-CX-2310, DC1-COD-L3-CX-2325, DC1-COD-L3-CX-2340, DC1-COD-L3-CX-2355, DC1-COD-L3-CX-2370, DC1-COD-L3-CX-2385, DC1-COD-L3-CX-2400, DC1-COD-L3-CX-2415, DC1-COD-L3-CX-2430, DC1-COD-L3-CX-2445, DC1-COD-L3-CX-2460, DC1-COD-L3-CX-2475, DC1-COD-L3-CX-2490, DC1-COD-L3-CX-2505, DC1-COD-L3-CX-2520, DC1-COD-L3-CX-2535, DC1-MOD2-L3-Cx-2020, DC1-MOD2-L3-Cx-2050, DC1-MOD2-L3-Cx-2080, DC1-MOD2-L3-Cx-2110, DC1-MOD2-L3-Cx-2140, DC1-MOD2-L3-Cx-2170, DC1-MOD2-L3-Cx-2200, DC1-MOD3-L3-Cx-2020, DC1-MOD3-L3-Cx-2050, DC1-MOD3-L3-Cx-2080, DC1-MOD3-L3-Cx-2110, DC1-MOD3-L3-Cx-2140, DC1-MOD3-L3-Cx-2170, DC1-MOD3-L3-Cx-2200, DC1-BUS-L3-CX-2050, DC1-BUS-L3-CX-2020, DC1-GEN-HSE-L3-1020, DC1-XFMR-HSE-L3-1020, DC1-SWBD-HSE-L3-1020, DC1-FOH-PNL-L3-1020, DC1-FOH-PNL-L3-1050, DC1-FOH-PNL-L3-1080, DC1-FOH-PNL-L3-1110, DC1-GEN-HSE-L3-1050, DC1-XFMR-HSE-L3-1050, DC1-SWBD-HSE-L3-1050, DC1-BOH-PNL-L3-1020, DC1-BOH-PNL-L3-1050, DC1-BOH-PNL-L3-1080, DC1-BOH-PNL-L3-1110, DC1-BOH-PNL-L3-1140, DC1-BOH-PNL-L3-1170, DC1-FOH-UPS-L3-1020, DC1-FOH-UPS-L3-1050, DC1-BOH-UPS-L3-1080, DC1-BOH-UPS-L3-1110, DC1-FOH-STS-L3-1020, DC1-FOH-STS-L3-1050, DC1-BOH-STS-L3-1080, DC1-BOH-STS-L3-1110, DC1-FOH-XFMR-L3-1020, DC1-FOH-XFMR-L3-1050, DC1-BOH-XFMR-L3-1080, DC1-BOH-XFMR-L3-1110, DC1-FOH-PNL-L3-2020, DC1-FOH-PNL-L3-2050, DC1-BOH-PNL-L3-2080, DC1-BOH-PNL-L3-2110, QTS-44451, QTS-1091 FF+15d | 8d |  |  | Riley Warring | LAY |
| DC1-MECH-L4-Cx-1010 |  | DC1 Data Hall 1100 Mechanical L4 | 20d | 2026-03-30 | 2026-04-24 | DC1-MECH-L4-Cx-1110, DC1-DOAS-L3-Cx-2050, DC1-CHLR-L3-Cx-2020, DC1-CHLR-L3-Cx-2050, DC1-CHLR-L3-Cx-2080, DC1-CHLR-L3-Cx-2110, DC1-CHLR-L3-Cx-2140, DC1-CHLR-L3-Cx-2170, DC1-CHLR-L3-Cx-2200, DC1-CHWP-L3-Cx-2020, DC1-CHWP-L3-Cx-2050, DC1-CHWP-L3-Cx-2080, DC1-CHWP-L3-Cx-2110, DC1-CHWP-L3-Cx-2140, DC1-CHWP-L3-Cx-2170, DC1-CHWP-L3-Cx-2200, DC1-CRAH-L3-Cx-2020, DC1-CRAH-L3-Cx-2050, DC1-CRAH-L3-Cx-2080, DC1-CRAH-L3-Cx-2110, DC1-CRAH-L3-Cx-2140, DC1-CRAH-L3-Cx-2170, DC1-CRAH-L3-Cx-2200, DC1-CRAH-L3-Cx-2230, DC1-CRAH-L3-Cx-2260, DC1-CRAH-L3-Cx-2290, DC1-CRAH-L3-Cx-2320, DC1-CRAH-L3-Cx-2350, DC1-CRAH-L3-Cx-2380, DC1-CRAH-L3-Cx-2410, DC1-CRAH-L3-Cx-2440, DC1-CRAH-L3-Cx-2470, DC1-CRAH-L3-Cx-2500, DC1-CRAH-L3-Cx-2530, DC1-CRAH-L3-Cx-2560, DC1-CRAH-L3-Cx-2590, DC1-CRAH-L3-Cx-2620, DC1-CRAH-L3-Cx-2650, DC1-CRAH-L3-Cx-2680, DC1-CRAH-L3-Cx-2710, DC1-CRAH-L3-Cx-2740, DC1-CRAH-L3-Cx-2770, DC1-CRAH-L3-Cx-2800, DC1-CRAH-L3-Cx-2830, DC1-CRAH-L3-Cx-2860, DC1-CRAH-L3-Cx-2890, DC1-CRAH-L3-Cx-2920, DC1-CRAH-L3-Cx-2950, DC1-DOAS-L3-Cx-2020, DC1-DOAS-L3-Cx-2050 FF, DC1-COMP-L3-CX-2020, DC1-FAN-L3-CX-2020, DC1-COMP-L3-CX-2050, DC1-FAN-L3-CX-2050, DC1-COMP-L3-CX-2080, DC1-FAN-L3-CX-2080, DC1-COMP-L3-CX-2110, DC1-FAN-L3-CX-2110, DC1-COMP-L3-CX-2140, DC1-FAN-L3-CX-2140, DC1-COMP-L3-CX-2170, DC1-FAN-L3-CX-2170, DC1-COMP-L3-CX-2200, DC1-FAN-L3-CX-2200, DC1-DH1100-TAB-1010, QTS-1091 | 3d |  |  | Riley Warring | LAY |
| DC1-MECH-L4-Cx-1100 |  | DC1 Data Hall 1100 Mechanical L4 (TFO) | 20d | 2026-05-02 | 2026-05-21 | DC1-DH1100-LB-1040 SS, QTS - 4670, QTS - 4730, QTS - 4720, QTS - 4860, QTS - 4910, QTS - 4920, DC1-CDU-L3-CX-2010, DC1-CDU-L3-CX-2025, DC1-CDU-L3-CX-2040, DC1-CDU-L3-CX-2055, DC1-CDU-L3-CX-2070, DC1-CDU-L3-CX-2085, QTS - 3820, QTS - 24471, QTS - 3830, QTS - 15010 | 11d |  | QTS-PHX3 DC1 - 7 day No Holidays | Riley Warring | LAY |
| DC1-ELEC-L4-Cx-1100 |  | DC1 Data Hall 1100 Electrical L4 (TFO) | 20d | 2026-05-04 | 2026-06-01 | DC1-IST-2000, DC1-CDU-L3-CX-2085, DC1-CDU-L3-CX-2070, DC1-CDU-L3-CX-2055, DC1-CDU-L3-CX-2040, DC1-CDU-L3-CX-2025, DC1-CDU-L3-CX-2010, QTS - 4670, QTS - 4730, QTS - 4720, QTS - 4860, QTS - 4910, QTS - 4920, QTS - 15010, QTS - 3820, QTS - 24471, QTS - 3830, DC1-RPP-L3-CX-2010, DC1-RPP-L3-CX-2025, DC1-RPP-L3-CX-2040, DC1-RPP-L3-CX-2055, DC1-RPP-L3-CX-2070, DC1-RPP-L3-CX-2085, DC1-RPP-L3-CX-2100, DC1-RPP-L3-CX-2115, DC1-RPP-L3-CX-2130, DC1-RPP-L3-CX-2145, DC1-RPP-L3-CX-2160, DC1-RPP-L3-CX-2175, DC1-RPP-L3-CX-2190, DC1-RPP-L3-CX-2205, DC1-RPP-L3-CX-2220, DC1-RPP-L3-CX-2235, DC1-RPP-L3-CX-2250, DC1-RPP-L3-CX-2265, DC1-RPP-L3-CX-2280, DC1-RPP-L3-CX-2295, DC1-RPP-L3-CX-2310, DC1-RPP-L3-CX-2325, DC1-RPP-L3-CX-2340, DC1-RPP-L3-CX-2355, DC1-RPP-L3-CX-2370, DC1-RPP-L3-CX-2385, DC1-RPP-L3-CX-2400, DC1-RPP-L3-CX-2415, DC1-RPP-L3-CX-2430, DC1-RPP-L3-CX-2445, DC1-RPP-L3-CX-2460, DC1-RPP-L3-CX-2475, DC1-RPP-L3-CX-2490, DC1-RPP-L3-CX-2505, DC1-RPP-L3-CX-2520, DC1-RPP-L3-CX-2535 | 0d |  |  | Riley Warring | LAY |

Notes:
- DC1-CRAH-L3-Cx-2940: Steps: EC Startup Report; MC Startup Report; Vendor Startup
- DC1-DOAS-L3-Cx-2010: Steps: EC Startup Report; MC Startup Report; Vendor Startup
- DC1-DOAS-L3-Cx-2040: Steps: EC Startup Report; MC Startup Report; Vendor Startup

| ID | WBS | Activity | Duration | Start | Finish | Predecessors | Total float | Free float | Layton Responsible Party | Vendor Responsible Party | Allucent CSI Group |
| --- | --- | --- | --- | --- | --- | --- | --- | --- | --- | --- | --- |
|  | 01 | **Data Hall 1100 Electrical Cx L4** |  |  |  |  |  |  |  |  |  |
|  | 02 | **Data Hall 1100 Mechanical Cx L4** |  |  |  |  |  |  |  |  |  |
|  | 05 | **Data Hall 1100 Cx L5** |  | 2026-04-30 | 2026-05-01 |  |  |  |  |  |  |
| DC1-IST-2000 |  | DC1 Data Hall 1100 IST (5/1/26) | 2d | 2026-04-30 | 2026-05-01 | DC1-MECH-L4-Cx-1010, DC1-ELEC-L4-Cx-1010, DC1-IST-1000 FF | 0d |  | Riley Warring | LAY |  |
|  | 04 | **Data Hall 2200 Commissioning** |  | 2026-01-14 | 2026-06-26 |  |  |  |  |  |  |
|  | 02 | **Data Hall 2200 Cx L2** |  | 2026-01-14 | 2026-04-15 |  |  |  |  |  |  |
|  | 01 | **DC1-DH2200 Generators Cx L2** |  | 2026-02-18 | 2026-03-18 |  |  |  |  |  |  |
| DC1-GEN-L2-2070 |  | DH2200 GEN-A22 L2 Checklist | 3d | 2026-02-18 | 2026-02-20 | QTS-1004490, QTS-17381, QTS-1000290, QTS-1001200 | 26d | 0d |  | HLT |  |
| DC1-GEN-L2-2080 |  | DH2200 GEN-B22 L2 Checklist | 3d | 2026-02-23 | 2026-02-25 | QTS-1004490, DC1-GEN-L2-2070, QTS-1000290, QTS-1001200 | 26d | 0d |  | HLT |  |
| DC1-GEN-L2-2090 |  | DH2200 GEN-C22 L2 Checklist | 3d | 2026-02-26 | 2026-03-02 | QTS-1004490, DC1-GEN-L2-2080, QTS-1000290, QTS-1001200 | 26d | 0d |  | HLT |  |
| DC1-GEN-L2-2100 |  | DH2200 GEN-D22 L2 Checklist | 3d | 2026-03-03 | 2026-03-05 | QTS-1004490, DC1-GEN-L2-2090, QTS-1000290, QTS-1001200 | 26d | 0d |  | HLT |  |
| DC1-GEN-L2-2110 |  | DH2200 GEN-E22 L2 Checklist | 3d | 2026-03-06 | 2026-03-10 | QTS-1004490, DC1-GEN-L2-2100, QTS-1000290, QTS-1001200 | 26d | 0d |  | HLT |  |
| DC1-GEN-L2-2120 |  | DH2200 GEN-F22 L2 Checklist | 3d | 2026-03-11 | 2026-03-13 | QTS-1004490, DC1-GEN-L2-2110, QTS-1000290, QTS-1001200 | 26d | 0d |  | HLT |  |
| DC1-GEN-L2-2130 |  | DH2200 GEN-R22 L2 Checklist | 3d | 2026-03-16 | 2026-03-18 | QTS-1004490, DC1-GEN-L2-2120, QTS-1000290, QTS-1001200 | 26d | 0d |  | HLT |  |
|  | 02 | **DC1-DH2200 MV XFMRs Cx L2** |  | 2026-02-03 | 2026-02-27 |  |  |  |  |  |  |
| DC1-XFMR-L2-2130 |  | DH2200 XFMR-R22 L2 Checklist | 3d | 2026-02-03 | 2026-02-05 | QTS-25591, QTS-42821, QTS-42851 | 17d | 7d | Riley Warring | VTC | 01ADMIN |
| DC1-XFMR-L2-2070 |  | DH2200 XFMR-A22 L2 Checklist | 3d | 2026-02-16 | 2026-02-18 | QTS-15871, DC1-XFMR-L2-2130 SS+2d, QTS-42821, QTS-42851 | 10d | 0d | Riley Warring | VTC |  |
| DC1-XFMR-L2-2080 |  | DH2200 XFMR-B22 L2 Checklist | 3d | 2026-02-18 | 2026-02-20 | DC1-XFMR-L2-2070 SS+2d, QTS-42821, QTS-42851 | 10d | 0d | Riley Warring | VTC |  |
| DC1-XFMR-L2-2090 |  | DH2200 XFMR-C22 L2 Checklist | 3d | 2026-02-20 | 2026-02-24 | DC1-XFMR-L2-2080 SS+2d, QTS-42821, QTS-42851 | 10d | 0d | Riley Warring | VTC |  |
| DC1-XFMR-L2-2100 |  | DH2200 XFMR-D22 L2 Checklist | 3d | 2026-02-23 | 2026-02-25 | DC1-XFMR-L2-2090 SS+1d, QTS-42821, QTS-42851 | 10d | 0d | Riley Warring | VTC |  |
| DC1-XFMR-L2-2110 |  | DH2200 XFMR-E22 L2 Checklist | 3d | 2026-02-24 | 2026-02-26 | DC1-XFMR-L2-2100 SS+1d, QTS-42821, QTS-42851 | 10d | 0d | Riley Warring | VTC |  |
| DC1-XFMR-L2-2120 |  | DH2200 XFMR-F22 L2 Checklist | 3d | 2026-02-25 | 2026-02-27 | DC1-XFMR-L2-2110 SS+1d, QTS-42821, QTS-42851 | 10d | 0d | Riley Warring | VTC |  |
|  | 03 | **DC1-DH2200 PODS** |  | 2026-01-14 | 2026-03-18 |  |  |  |  |  |  |
|  | 01 | **DC1-DH2200 SWDs Cx L2** |  | 2026-02-16 | 2026-02-26 |  |  |  |  |  |  |
| DC1-SWD-L2-2070 |  | DH2200 SWD-A22 L2 Checklist | 3d | 2026-02-16 | 2026-02-18 | QTS-17381, QTS-15871 | 14d | 0d | Riley Warring | SIE |  |
| DC1-SWD-L2-2080 |  | DH2200 SWD-B22 L2 Checklist | 3d | 2026-02-16 | 2026-02-18 | DC1-SWD-L2-2070 SS | 14d | 0d | Riley Warring | SIE |  |
| DC1-SWD-L2-2090 |  | DH2200 SWD-C22 L2 Checklist | 3d | 2026-02-18 | 2026-02-20 | DC1-SWD-L2-2080 SS+2d | 14d | 0d | Riley Warring | SIE |  |
| DC1-SWD-L2-2100 |  | DH2200 SWD-D22 L2 Checklist | 3d | 2026-02-18 | 2026-02-20 | DC1-SWD-L2-2090 SS | 14d | 3d | Riley Warring | SIE |  |
| DC1-SWD-L2-2110 |  | DH2200 SWD-E22 L2 Checklist | 3d | 2026-02-24 | 2026-02-26 | QTS-39792, DC1-SWD-L2-2100 SS+1d | 11d | 0d | Riley Warring | SIE |  |
| DC1-SWD-L2-2120 |  | DH2200 SWD-F22 L2 Checklist | 3d | 2026-02-24 | 2026-02-26 | DC1-SWD-L2-2110 SS | 11d | 0d | Riley Warring | SIE |  |
| DC1-SWD-L2-2130 |  | DH2200 SWD-R22 L2 Checklist | 3d | 2026-02-24 | 2026-02-26 | QTS-17381, QTS-15871, QTS-39792 | 11d | 0d | Riley Warring | SIE |  |

Notes:
- DC1-GEN-L2-2070: Steps: EC Installation Checklist; MC Installation Checklist; CC Installation Checklist; Vendor Pre-Energization Checklist; CXA Pre-Energization Inspection; PEI/Clean-Walk
- DC1-GEN-L2-2080: Steps: EC Installation Checklist; MC Installation Checklist; CC Installation Checklist; Vendor Pre-Energization Checklist; CXA Pre-Energization Inspection; PEI/Clean-Walk
- DC1-GEN-L2-2090: Steps: EC Installation Checklist; MC Installation Checklist; CC Installation Checklist; Vendor Pre-Energization Checklist; CXA Pre-Energization Inspection; PEI/Clean-Walk
- DC1-GEN-L2-2100: Steps: EC Installation Checklist; MC Installation Checklist; CC Installation Checklist; Vendor Pre-Energization Checklist; CXA Pre-Energization Inspection; PEI/Clean-Walk
- DC1-GEN-L2-2110: Steps: EC Installation Checklist; MC Installation Checklist; CC Installation Checklist; Vendor Pre-Energization Checklist; CXA Pre-Energization Inspection; PEI/Clean-Walk
- DC1-GEN-L2-2120: Steps: EC Installation Checklist; MC Installation Checklist; CC Installation Checklist; Vendor Pre-Energization Checklist; CXA Pre-Energization Inspection; PEI/Clean-Walk
- DC1-GEN-L2-2130: Steps: EC Installation Checklist; MC Installation Checklist; CC Installation Checklist; Vendor Pre-Energization Checklist; CXA Pre-Energization Inspection; PEI/Clean-Walk
- DC1-XFMR-L2-2130: Steps: EC Installation Checklist; CC Installation Checklist; Vendor Pre-Energization Checklist; CXA Pre-Energization Inspection; PEI/Clean-Walk
- DC1-XFMR-L2-2070: Steps: EC Installation Checklist; CC Installation Checklist; Vendor Pre-Energization Checklist; CXA Pre-Energization Inspection; PEI/Clean-Walk
- DC1-XFMR-L2-2080: Steps: EC Installation Checklist; CC Installation Checklist; Vendor Pre-Energization Checklist; CXA Pre-Energization Inspection; PEI/Clean-Walk
- DC1-XFMR-L2-2090: Steps: EC Installation Checklist; CC Installation Checklist; Vendor Pre-Energization Checklist; CXA Pre-Energization Inspection; PEI/Clean-Walk
- DC1-XFMR-L2-2100: Steps: EC Installation Checklist; CC Installation Checklist; Vendor Pre-Energization Checklist; CXA Pre-Energization Inspection; PEI/Clean-Walk
- DC1-XFMR-L2-2110: Steps: EC Installation Checklist; CC Installation Checklist; Vendor Pre-Energization Checklist; CXA Pre-Energization Inspection; PEI/Clean-Walk
- DC1-XFMR-L2-2120: Steps: EC Installation Checklist; CC Installation Checklist; Vendor Pre-Energization Checklist; CXA Pre-Energization Inspection; PEI/Clean-Walk
- DC1-SWD-L2-2070: Steps: EC Pre-Energization Checklist; Vendor Pre-Energization Checklist; CXA Pre-Energization Inspection; PEI/Clean-Walk
- DC1-SWD-L2-2080: Steps: EC Pre-Energization Checklist; Vendor Pre-Energization Checklist; CXA Pre-Energization Inspection; PEI/Clean-Walk
- DC1-SWD-L2-2090: Steps: EC Pre-Energization Checklist; Vendor Pre-Energization Checklist; CXA Pre-Energization Inspection; PEI/Clean-Walk
- DC1-SWD-L2-2100: Steps: EC Pre-Energization Checklist; Vendor Pre-Energization Checklist; CXA Pre-Energization Inspection; PEI/Clean-Walk
- DC1-SWD-L2-2110: Steps: EC Pre-Energization Checklist; Vendor Pre-Energization Checklist; CXA Pre-Energization Inspection; PEI/Clean-Walk
- DC1-SWD-L2-2120: Steps: EC Pre-Energization Checklist; Vendor Pre-Energization Checklist; CXA Pre-Energization Inspection; PEI/Clean-Walk
- DC1-SWD-L2-2130: Steps: EC Pre-Energization Checklist; Vendor Pre-Energization Checklist; CXA Pre-Energization Inspection; PEI/Clean-Walk

| ID | WBS | Activity | Duration | Start | Finish | Predecessors | Total float | Free float | Allucent CSI Group | Vendor Responsible Party | Notes | Layton Responsible Party |
| --- | --- | --- | --- | --- | --- | --- | --- | --- | --- | --- | --- | --- |
|  | 02 | **DC1-DH2200 MOD-01s Cx L2** |  | 2026-01-14 | 2026-02-18 |  |  |  |  |  |  |  |
| DC1-MOD01-L2-2080 |  | DH2200 MOD-B22-01 L2 Checklist | 3d | 2026-01-14 | 2026-01-16 | QTS-13551 | 39d | 29d | 01ADMIN | PHE |  |  |
| DC1-MOD01-L2-2090 |  | DH2200 MOD-C22-01 L2 Checklist | 3d | 2026-01-14 | 2026-01-16 | QTS-13551 | 39d | 29d | 01ADMIN | PHE |  |  |
| DC1-MOD01-L2-2100 |  | DH2200 MOD-D22-01 L2 Checklist | 3d | 2026-01-14 | 2026-01-16 | QTS-13551 | 39d | 29d | 01ADMIN | PHE |  |  |
| DC1-MOD01-L2-2110 |  | DH2200 MOD-E22-01 L2 Checklist | 3d | 2026-01-14 | 2026-01-16 | QTS-13551 | 39d | 29d | 01ADMIN | PHE |  |  |
| DC1-MOD01-L2-2120 |  | DH2200 MOD-F22-01 L2 Checklist | 3d | 2026-01-14 | 2026-01-16 | QTS-13551 | 39d | 29d | 01ADMIN | PHE |  |  |
| DC1-MOD01-L2-2130 |  | DH2200 MOD-R22-01 L2 Checklist | 3d | 2026-01-14 | 2026-01-16 | QTS-13551 | 39d | 28d | 01ADMIN | PHE |  |  |
| DC1-MOD01-L2-2070 |  | DH2200 MOD-A22-01 L2 Checklist | 3d | 2026-02-16 | 2026-02-18 | QTS-17381, QTS-15871, QTS-13551 | 17d | 7d | 01ADMIN | PHE |  |  |
|  | 03 | **DC1-DH2200 UPS-M Cx L2** |  | 2026-02-25 | 2026-03-18 |  |  |  |  |  |  |  |
| DC1-UPS-M-L2-2070 |  | DH2200 UPS-M-A22 L2 Checklist | 3d | 2026-02-25 | 2026-02-27 | QTS-43751, QTS-18961, QTS-13551 | 1d | 0d | 01ADMIN | VER |  |  |
| DC1-UPS-M-L2-2080 |  | DH2200 UPS-M-B22 L2 Checklist | 3d | 2026-03-02 | 2026-03-04 | DC1-UPS-M-L2-2070 | 1d | 0d | 01ADMIN | VER |  |  |
| DC1-UPS-M-L2-2090 |  | DH2200 UPS-M-C22 L2 Checklist | 3d | 2026-03-05 | 2026-03-09 | DC1-UPS-M-L2-2080 | 1d | 0d |  | VER |  |  |
| DC1-UPS-M-L2-2100 |  | DH2200 UPS-M-D22 L2 Checklist | 3d | 2026-03-10 | 2026-03-12 | DC1-UPS-M-L2-2090 | 1d | 0d |  | VER |  |  |
| DC1-UPS-M-L2-2110 |  | DH2200 UPS-M-E22 L2 Checklist | 3d | 2026-03-11 | 2026-03-13 | DC1-UPS-M-L2-2100 SS+1d, QTS-39792 | 1d | 0d |  | VER |  |  |
| DC1-UPS-M-L2-2120 |  | DH2200 UPS-M-F22 L2 Checklist | 3d | 2026-03-13 | 2026-03-17 | DC1-UPS-M-L2-2110 SS+2d | 1d | 0d |  | VER |  |  |
| DC1-UPS-M-L2-2130 |  | DH2200 UPS-M-R22 L2 Checklist | 3d | 2026-03-16 | 2026-03-18 | DC1-UPS-M-L2-2120 SS+1d | 1d | 0d |  | VER |  |  |
|  | 04 | **DC1-DH2200 COMPRESSOR/FAN UNITS Cx L2** |  |  |  |  |  |  |  |  |  |  |
|  | 01 | **DC1-DH2200 POD-AC UNITS A22 Cx L2** |  |  |  |  |  |  |  |  |  |  |
|  | 02 | **DC1-DH2200 POD-AC UNITS B22 Cx L2** |  |  |  |  |  |  |  |  |  |  |
|  | 03 | **DC1-DH2200 POD-AC UNITS C22 Cx L2** |  |  |  |  |  |  |  |  |  |  |
|  | 04 | **DC1-DH2200 POD-AC UNITS D22 Cx L2** |  |  |  |  |  |  |  |  |  |  |
|  | 05 | **DC1-DH2200 POD-AC UNITS E22 Cx L2** |  |  |  |  |  |  |  |  |  |  |
|  | 06 | **DC1-DH2200 POD-AC UNITS F22 Cx L2** |  |  |  |  |  |  |  |  |  |  |
|  | 07 | **DC1-DH2200 POD-AC UNITS R22 Cx L2** |  |  |  |  |  |  |  |  |  |  |
|  | 04 | **DC1-DH2200 BUS-R1X/BUS-R2X Cx L2** |  | 2026-02-12 | 2026-03-18 |  |  |  |  |  |  |  |
| DC1-BUS-L2-1030 |  | DH2200 BUS-R1 (R12) CATCHER BUS Duct L2 Checklist | 3d | 2026-02-12 | 2026-02-16 | QTS-7181 | 46d | 9d |  | LAY | CFCI | Riley Warring |
| DC1-BUS-L2-1020 |  | DH2200 BUS-R2 (R22) MAINTENANCE BUS Duct L2 Checklist | 3d | 2026-03-16 | 2026-03-18 | QTS-7131, QTS-9051 | 25d | 0d |  | LAY | CFCI - Bus duct complete (PRED) | Riley Warring |

Notes:
- DC1-MOD01-L2-2080: Steps: Vendor Pre-Energization Checklist; CXA Pre-Energization Inspection; PEI/Clean-Walk
- DC1-MOD01-L2-2090: Steps: Vendor Pre-Energization Checklist; CXA Pre-Energization Inspection; PEI/Clean-Walk
- DC1-MOD01-L2-2100: Steps: Vendor Pre-Energization Checklist; CXA Pre-Energization Inspection; PEI/Clean-Walk
- DC1-MOD01-L2-2110: Steps: Vendor Pre-Energization Checklist; CXA Pre-Energization Inspection; PEI/Clean-Walk
- DC1-MOD01-L2-2120: Steps: Vendor Pre-Energization Checklist; CXA Pre-Energization Inspection; PEI/Clean-Walk
- DC1-MOD01-L2-2130: Steps: Vendor Pre-Energization Checklist; CXA Pre-Energization Inspection; PEI/Clean-Walk
- DC1-MOD01-L2-2070: Steps: Vendor Pre-Energization Checklist; CXA Pre-Energization Inspection; PEI/Clean-Walk
- DC1-UPS-M-L2-2070: Steps: EC Pre-Energization Checklist; Vendor Pre-Energization Checklist; CXA Pre-Energization Inspection; PEI/Clean-Walk
- DC1-UPS-M-L2-2080: Steps: EC Pre-Energization Checklist; Vendor Pre-Energization Checklist; CXA Pre-Energization Inspection; PEI/Clean-Walk
- DC1-UPS-M-L2-2090: Steps: EC Pre-Energization Checklist; Vendor Pre-Energization Checklist; CXA Pre-Energization Inspection; PEI/Clean-Walk
- DC1-UPS-M-L2-2100: Steps: EC Pre-Energization Checklist; Vendor Pre-Energization Checklist; CXA Pre-Energization Inspection; PEI/Clean-Walk
- DC1-UPS-M-L2-2110: Steps: EC Pre-Energization Checklist; Vendor Pre-Energization Checklist; CXA Pre-Energization Inspection; PEI/Clean-Walk
- DC1-UPS-M-L2-2120: Steps: EC Pre-Energization Checklist; Vendor Pre-Energization Checklist; CXA Pre-Energization Inspection; PEI/Clean-Walk
- DC1-UPS-M-L2-2130: Steps: EC Pre-Energization Checklist; Vendor Pre-Energization Checklist; CXA Pre-Energization Inspection; PEI/Clean-Walk
- DC1-BUS-L2-1030: Steps: EC Pre-Energization Checklist; Vendor Pre-Energization Checklist; CXA Pre-Energization Inspection; PEI/Clean-Walk
- DC1-BUS-L2-1020: Steps: EC Pre-Energization Checklist; Vendor Pre-Energization Checklist; CXA Pre-Energization Inspection; PEI/Clean-Walk

| ID | WBS | Activity | Duration | Start | Finish | Predecessors | Total float | Free float | Layton Responsible Party | Vendor Responsible Party |
| --- | --- | --- | --- | --- | --- | --- | --- | --- | --- | --- |
|  | 05 | **DC1-DH2200 ATS Cx L2** |  | 2026-02-16 | 2026-03-09 |  |  |  |  |  |
|  | 01 | **DC1-DH2200 ATS-A22 Cx L2** |  | 2026-02-16 | 2026-02-16 |  |  |  |  |  |
| DC1-ATS-L2-2360 |  | DH2200 ATS-A22-01 L2 Checklist | 1d | 2026-02-16 | 2026-02-16 | QTS-18121 | 47d | 22d | Riley Warring | MAV |
| DC1-ATS-L2-2370 |  | DH2200 ATS-A22-02 L2 Checklist | 1d | 2026-02-16 | 2026-02-16 | QTS-18121 | 47d | 22d | Riley Warring | MAV |
| DC1-ATS-L2-2380 |  | DH2200 ATS-A22-03 L2 Checklist | 1d | 2026-02-16 | 2026-02-16 | QTS-18121 | 47d | 22d | Riley Warring | MAV |
| DC1-ATS-L2-2390 |  | DH2200 ATS-A22-04 L2 Checklist | 1d | 2026-02-16 | 2026-02-16 | QTS-18121 | 47d | 22d | Riley Warring | MAV |
| DC1-ATS-L2-2400 |  | DH2200 ATS-A22-05 L2 Checklist | 1d | 2026-02-16 | 2026-02-16 | QTS-18121 | 47d | 22d | Riley Warring | MAV |
| DC1-ATS-L2-2410 |  | DH2200 ATS-A22-06 L2 Checklist | 1d | 2026-02-16 | 2026-02-16 | QTS-18121 | 47d | 22d | Riley Warring | MAV |
|  | 02 | **DC1-DH2200 ATS-B22 Cx L2** |  | 2026-02-20 | 2026-02-20 |  |  |  |  |  |
| DC1-ATS-L2-2420 |  | DH2200 ATS-B22-01 L2 Checklist | 1d | 2026-02-20 | 2026-02-20 | QTS-9071 | 43d | 18d | Riley Warring | MAV |
| DC1-ATS-L2-2430 |  | DH2200 ATS-B22-02 L2 Checklist | 1d | 2026-02-20 | 2026-02-20 | QTS-9071 | 43d | 18d | Riley Warring | MAV |
| DC1-ATS-L2-2440 |  | DH2200 ATS-B22-03 L2 Checklist | 1d | 2026-02-20 | 2026-02-20 | QTS-9071 | 43d | 18d | Riley Warring | MAV |
| DC1-ATS-L2-2450 |  | DH2200 ATS-B22-04 L2 Checklist | 1d | 2026-02-20 | 2026-02-20 | QTS-9071 | 43d | 18d | Riley Warring | MAV |
| DC1-ATS-L2-2460 |  | DH2200 ATS-B22-05 L2 Checklist | 1d | 2026-02-20 | 2026-02-20 | QTS-9071 | 43d | 18d | Riley Warring | MAV |
| DC1-ATS-L2-2470 |  | DH2200 ATS-B22-06 L2 Checklist | 1d | 2026-02-20 | 2026-02-20 | QTS-9071 | 43d | 18d | Riley Warring | MAV |
|  | 03 | **DC1-DH2200 ATS-C22 Cx L2** |  | 2026-02-25 | 2026-02-25 |  |  |  |  |  |
| DC1-ATS-L2-2480 |  | DH2200 ATS-C22-01 L2 Checklist | 1d | 2026-02-25 | 2026-02-25 | QTS-9101 | 40d | 15d | Riley Warring | MAV |
| DC1-ATS-L2-2490 |  | DH2200 ATS-C22-02 L2 Checklist | 1d | 2026-02-25 | 2026-02-25 | QTS-9101 | 40d | 15d | Riley Warring | MAV |
| DC1-ATS-L2-2500 |  | DH2200 ATS-C22-03 L2 Checklist | 1d | 2026-02-25 | 2026-02-25 | QTS-9101 | 40d | 15d | Riley Warring | MAV |
| DC1-ATS-L2-2510 |  | DH2200 ATS-C22-04 L2 Checklist | 1d | 2026-02-25 | 2026-02-25 | QTS-9101 | 40d | 15d | Riley Warring | MAV |
| DC1-ATS-L2-2520 |  | DH2200 ATS-C22-05 L2 Checklist | 1d | 2026-02-25 | 2026-02-25 | QTS-9101 | 40d | 15d | Riley Warring | MAV |
| DC1-ATS-L2-2530 |  | DH2200 ATS-C22-06 L2 Checklist | 1d | 2026-02-25 | 2026-02-25 | QTS-9101 | 40d | 15d | Riley Warring | MAV |
|  | 04 | **DC1-DH2200 ATS-D22 Cx L2** |  | 2026-03-02 | 2026-03-02 |  |  |  |  |  |
| DC1-ATS-L2-2540 |  | DH2200 ATS-D22-01 L2 Checklist | 1d | 2026-03-02 | 2026-03-02 | QTS-9131 | 37d | 12d | Riley Warring | MAV |
| DC1-ATS-L2-2550 |  | DH2200 ATS-D22-02 L2 Checklist | 1d | 2026-03-02 | 2026-03-02 | QTS-9131 | 37d | 12d | Riley Warring | MAV |
| DC1-ATS-L2-2560 |  | DH2200 ATS-D22-03 L2 Checklist | 1d | 2026-03-02 | 2026-03-02 | QTS-9131 | 37d | 12d | Riley Warring | MAV |
| DC1-ATS-L2-2570 |  | DH2200 ATS-D22-04 L2 Checklist | 1d | 2026-03-02 | 2026-03-02 | QTS-9131 | 37d | 12d | Riley Warring | MAV |
| DC1-ATS-L2-2580 |  | DH2200 ATS-D22-05 L2 Checklist | 1d | 2026-03-02 | 2026-03-02 | QTS-9131 | 37d | 12d | Riley Warring | MAV |
| DC1-ATS-L2-2590 |  | DH2200 ATS-D22-06 L2 Checklist | 1d | 2026-03-02 | 2026-03-02 | QTS-9131 | 37d | 12d | Riley Warring | MAV |

Notes:
- DC1-ATS-L2-2360: Steps: EC Installation Checklist; CC Installation Checklist; Vendor Pre-Energization Checklist; CXA Pre-Energization Inspection; PEI/Clean-Walk
- DC1-ATS-L2-2370: Steps: EC Installation Checklist; CC Installation Checklist; Vendor Pre-Energization Checklist; CXA Pre-Energization Inspection; PEI/Clean-Walk
- DC1-ATS-L2-2380: Steps: EC Installation Checklist; CC Installation Checklist; Vendor Pre-Energization Checklist; CXA Pre-Energization Inspection; PEI/Clean-Walk
- DC1-ATS-L2-2390: Steps: EC Installation Checklist; CC Installation Checklist; Vendor Pre-Energization Checklist; CXA Pre-Energization Inspection; PEI/Clean-Walk
- DC1-ATS-L2-2400: Steps: EC Installation Checklist; CC Installation Checklist; Vendor Pre-Energization Checklist; CXA Pre-Energization Inspection; PEI/Clean-Walk
- DC1-ATS-L2-2410: Steps: EC Installation Checklist; CC Installation Checklist; Vendor Pre-Energization Checklist; CXA Pre-Energization Inspection; PEI/Clean-Walk
- DC1-ATS-L2-2420: Steps: EC Installation Checklist; CC Installation Checklist; Vendor Pre-Energization Checklist; CXA Pre-Energization Inspection; PEI/Clean-Walk
- DC1-ATS-L2-2430: Steps: EC Installation Checklist; CC Installation Checklist; Vendor Pre-Energization Checklist; CXA Pre-Energization Inspection; PEI/Clean-Walk
- DC1-ATS-L2-2440: Steps: EC Installation Checklist; CC Installation Checklist; Vendor Pre-Energization Checklist; CXA Pre-Energization Inspection; PEI/Clean-Walk
- DC1-ATS-L2-2450: Steps: EC Installation Checklist; CC Installation Checklist; Vendor Pre-Energization Checklist; CXA Pre-Energization Inspection; PEI/Clean-Walk
- DC1-ATS-L2-2460: Steps: EC Installation Checklist; CC Installation Checklist; Vendor Pre-Energization Checklist; CXA Pre-Energization Inspection; PEI/Clean-Walk
- DC1-ATS-L2-2470: Steps: EC Installation Checklist; CC Installation Checklist; Vendor Pre-Energization Checklist; CXA Pre-Energization Inspection; PEI/Clean-Walk
- DC1-ATS-L2-2480: Steps: EC Installation Checklist; CC Installation Checklist; Vendor Pre-Energization Checklist; CXA Pre-Energization Inspection; PEI/Clean-Walk
- DC1-ATS-L2-2490: Steps: EC Installation Checklist; CC Installation Checklist; Vendor Pre-Energization Checklist; CXA Pre-Energization Inspection; PEI/Clean-Walk
- DC1-ATS-L2-2500: Steps: EC Installation Checklist; CC Installation Checklist; Vendor Pre-Energization Checklist; CXA Pre-Energization Inspection; PEI/Clean-Walk
- DC1-ATS-L2-2510: Steps: EC Installation Checklist; CC Installation Checklist; Vendor Pre-Energization Checklist; CXA Pre-Energization Inspection; PEI/Clean-Walk
- DC1-ATS-L2-2520: Steps: EC Installation Checklist; CC Installation Checklist; Vendor Pre-Energization Checklist; CXA Pre-Energization Inspection; PEI/Clean-Walk
- DC1-ATS-L2-2530: Steps: EC Installation Checklist; CC Installation Checklist; Vendor Pre-Energization Checklist; CXA Pre-Energization Inspection; PEI/Clean-Walk
- DC1-ATS-L2-2540: Steps: EC Installation Checklist; CC Installation Checklist; Vendor Pre-Energization Checklist; CXA Pre-Energization Inspection; PEI/Clean-Walk
- DC1-ATS-L2-2550: Steps: EC Installation Checklist; CC Installation Checklist; Vendor Pre-Energization Checklist; CXA Pre-Energization Inspection; PEI/Clean-Walk
- DC1-ATS-L2-2560: Steps: EC Installation Checklist; CC Installation Checklist; Vendor Pre-Energization Checklist; CXA Pre-Energization Inspection; PEI/Clean-Walk
- DC1-ATS-L2-2570: Steps: EC Installation Checklist; CC Installation Checklist; Vendor Pre-Energization Checklist; CXA Pre-Energization Inspection; PEI/Clean-Walk
- DC1-ATS-L2-2580: Steps: EC Installation Checklist; CC Installation Checklist; Vendor Pre-Energization Checklist; CXA Pre-Energization Inspection; PEI/Clean-Walk
- DC1-ATS-L2-2590: Steps: EC Installation Checklist; CC Installation Checklist; Vendor Pre-Energization Checklist; CXA Pre-Energization Inspection; PEI/Clean-Walk

| ID | WBS | Activity | Duration | Start | Finish | Predecessors | Total float | Free float | Layton Responsible Party | Vendor Responsible Party |
| --- | --- | --- | --- | --- | --- | --- | --- | --- | --- | --- |
|  | 05 | **DC1-DH2200 ATS-E22 Cx L2** |  | 2026-03-06 | 2026-03-06 |  |  |  |  |  |
| DC1-ATS-L2-2600 |  | DH2200 ATS-E22-01 L2 Checklist | 1d | 2026-03-06 | 2026-03-06 | QTS-9161 | 33d | 8d | Riley Warring | MAV |
| DC1-ATS-L2-2610 |  | DH2200 ATS-E22-02 L2 Checklist | 1d | 2026-03-06 | 2026-03-06 | QTS-9161 | 33d | 8d | Riley Warring | MAV |
| DC1-ATS-L2-2620 |  | DH2200 ATS-E22-03 L2 Checklist | 1d | 2026-03-06 | 2026-03-06 | QTS-9161 | 33d | 8d | Riley Warring | MAV |
| DC1-ATS-L2-2630 |  | DH2200 ATS-E22-04 L2 Checklist | 1d | 2026-03-06 | 2026-03-06 | QTS-9161 | 33d | 8d | Riley Warring | MAV |
| DC1-ATS-L2-2640 |  | DH2200 ATS-E22-05 L2 Checklist | 1d | 2026-03-06 | 2026-03-06 | QTS-9161 | 33d | 8d | Riley Warring | MAV |
| DC1-ATS-L2-2650 |  | DH2200 ATS-E22-06 L2 Checklist | 1d | 2026-03-06 | 2026-03-06 | QTS-9161 | 33d | 8d | Riley Warring | MAV |
|  | 06 | **DC1-DH2200 ATS-F22 Cx L2** |  | 2026-03-09 | 2026-03-09 |  |  |  |  |  |
| DC1-ATS-L2-2660 |  | DH2200 ATS-F22-01 L2 Checklist | 1d | 2026-03-09 | 2026-03-09 | QTS-9191 | 32d | 7d | Riley Warring | MAV |
| DC1-ATS-L2-2670 |  | DH2200 ATS-F22-02 L2 Checklist | 1d | 2026-03-09 | 2026-03-09 | QTS-9191 | 32d | 7d | Riley Warring | MAV |
| DC1-ATS-L2-2680 |  | DH2200 ATS-F22-03 L2 Checklist | 1d | 2026-03-09 | 2026-03-09 | QTS-9191 | 32d | 7d | Riley Warring | MAV |
| DC1-ATS-L2-2690 |  | DH2200 ATS-F22-04 L2 Checklist | 1d | 2026-03-09 | 2026-03-09 | QTS-9191 | 32d | 7d | Riley Warring | MAV |
| DC1-ATS-L2-2700 |  | DH2200 ATS-F22-05 L2 Checklist | 1d | 2026-03-09 | 2026-03-09 | QTS-9191 | 32d | 7d | Riley Warring | MAV |
| DC1-ATS-L2-2710 |  | DH2200 ATS-F22-06 L2 Checklist | 1d | 2026-03-09 | 2026-03-09 | QTS-9191 | 32d | 7d | Riley Warring | MAV |
|  | 06 | **DC1-DH2200 CODs Cx L2** |  | 2026-03-12 | 2026-03-24 |  |  |  |  |  |
|  | 01 | **DC1-DH2200 COD A22 Cx L2** |  | 2026-03-12 | 2026-03-12 |  |  |  |  |  |
| DC1-COD-L2-2360 |  | DH2200 COD-A22-01 L2 Checklist | 1d | 2026-03-12 | 2026-03-12 | QTS - 5040, QTS-18131 | 30d | 5d | Riley Warring | SIE |
| DC1-COD-L2-2370 |  | DH2200 COD-A22-02 L2 Checklist | 1d | 2026-03-12 | 2026-03-12 | QTS - 5040, QTS-18131 | 30d | 5d | Riley Warring | SIE |
| DC1-COD-L2-2380 |  | DH2200 COD-A22-03 L2 Checklist | 1d | 2026-03-12 | 2026-03-12 | QTS - 5040, QTS-18131 | 30d | 5d | Riley Warring | SIE |
| DC1-COD-L2-2390 |  | DH2200 COD-A22-04 L2 Checklist | 1d | 2026-03-12 | 2026-03-12 | QTS - 5040, QTS-18131 | 30d | 5d | Riley Warring | SIE |
| DC1-COD-L2-2400 |  | DH2200 COD-A22-05 L2 Checklist | 1d | 2026-03-12 | 2026-03-12 | QTS - 5040, QTS-18131 | 30d | 5d | Riley Warring | SIE |
| DC1-COD-L2-2410 |  | DH2200 COD-A22-06 L2 Checklist | 1d | 2026-03-12 | 2026-03-12 | QTS - 5040, QTS-18131 | 30d | 5d | Riley Warring | SIE |
|  | 02 | **DC1-DH2200 COD B22 Cx L2** |  | 2026-03-12 | 2026-03-12 |  |  |  |  |  |
| DC1-COD-L2-2420 |  | DH2200 COD-B22-01 L2 Checklist | 1d | 2026-03-12 | 2026-03-12 | QTS - 5040, QTS-9081 | 30d | 5d | Riley Warring | SIE |
| DC1-COD-L2-2430 |  | DH2200 COD-B22-02 L2 Checklist | 1d | 2026-03-12 | 2026-03-12 | QTS - 5040, QTS-9081 | 30d | 5d | Riley Warring | SIE |
| DC1-COD-L2-2440 |  | DH2200 COD-B22-03 L2 Checklist | 1d | 2026-03-12 | 2026-03-12 | QTS - 5040, QTS-9081 | 30d | 5d | Riley Warring | SIE |
| DC1-COD-L2-2450 |  | DH2200 COD-B22-04 L2 Checklist | 1d | 2026-03-12 | 2026-03-12 | QTS - 5040, QTS-9081 | 30d | 5d | Riley Warring | SIE |
| DC1-COD-L2-2460 |  | DH2200 COD-B22-05 L2 Checklist | 1d | 2026-03-12 | 2026-03-12 | QTS - 5040, QTS-9081 | 30d | 5d | Riley Warring | SIE |
| DC1-COD-L2-2470 |  | DH2200 COD-B22-06 L2 Checklist | 1d | 2026-03-12 | 2026-03-12 | QTS - 5040, QTS-9081 | 30d | 5d | Riley Warring | SIE |

Notes:
- DC1-ATS-L2-2600: Steps: EC Installation Checklist; CC Installation Checklist; Vendor Pre-Energization Checklist; CXA Pre-Energization Inspection; PEI/Clean-Walk
- DC1-ATS-L2-2610: Steps: EC Installation Checklist; CC Installation Checklist; Vendor Pre-Energization Checklist; CXA Pre-Energization Inspection; PEI/Clean-Walk
- DC1-ATS-L2-2620: Steps: EC Installation Checklist; CC Installation Checklist; Vendor Pre-Energization Checklist; CXA Pre-Energization Inspection; PEI/Clean-Walk
- DC1-ATS-L2-2630: Steps: EC Installation Checklist; CC Installation Checklist; Vendor Pre-Energization Checklist; CXA Pre-Energization Inspection; PEI/Clean-Walk
- DC1-ATS-L2-2640: Steps: EC Installation Checklist; CC Installation Checklist; Vendor Pre-Energization Checklist; CXA Pre-Energization Inspection; PEI/Clean-Walk
- DC1-ATS-L2-2650: Steps: EC Installation Checklist; CC Installation Checklist; Vendor Pre-Energization Checklist; CXA Pre-Energization Inspection; PEI/Clean-Walk
- DC1-ATS-L2-2660: Steps: EC Installation Checklist; CC Installation Checklist; Vendor Pre-Energization Checklist; CXA Pre-Energization Inspection; PEI/Clean-Walk
- DC1-ATS-L2-2670: Steps: EC Installation Checklist; CC Installation Checklist; Vendor Pre-Energization Checklist; CXA Pre-Energization Inspection; PEI/Clean-Walk
- DC1-ATS-L2-2680: Steps: EC Installation Checklist; CC Installation Checklist; Vendor Pre-Energization Checklist; CXA Pre-Energization Inspection; PEI/Clean-Walk
- DC1-ATS-L2-2690: Steps: EC Installation Checklist; CC Installation Checklist; Vendor Pre-Energization Checklist; CXA Pre-Energization Inspection; PEI/Clean-Walk
- DC1-ATS-L2-2700: Steps: EC Installation Checklist; CC Installation Checklist; Vendor Pre-Energization Checklist; CXA Pre-Energization Inspection; PEI/Clean-Walk
- DC1-ATS-L2-2710: Steps: EC Installation Checklist; CC Installation Checklist; Vendor Pre-Energization Checklist; CXA Pre-Energization Inspection; PEI/Clean-Walk
- DC1-COD-L2-2360: Steps: EC Installation Checklist; CC Installation Checklist; Vendor Pre-Energization Checklist; CXA Pre-Energization Inspection; PEI/Clean-Walk
- DC1-COD-L2-2370: Steps: EC Installation Checklist; CC Installation Checklist; Vendor Pre-Energization Checklist; CXA Pre-Energization Inspection; PEI/Clean-Walk
- DC1-COD-L2-2380: Steps: EC Installation Checklist; CC Installation Checklist; Vendor Pre-Energization Checklist; CXA Pre-Energization Inspection; PEI/Clean-Walk
- DC1-COD-L2-2390: Steps: EC Installation Checklist; CC Installation Checklist; Vendor Pre-Energization Checklist; CXA Pre-Energization Inspection; PEI/Clean-Walk
- DC1-COD-L2-2400: Steps: EC Installation Checklist; CC Installation Checklist; Vendor Pre-Energization Checklist; CXA Pre-Energization Inspection; PEI/Clean-Walk
- DC1-COD-L2-2410: Steps: EC Installation Checklist; CC Installation Checklist; Vendor Pre-Energization Checklist; CXA Pre-Energization Inspection; PEI/Clean-Walk
- DC1-COD-L2-2420: Steps: EC Installation Checklist; CC Installation Checklist; Vendor Pre-Energization Checklist; CXA Pre-Energization Inspection; PEI/Clean-Walk
- DC1-COD-L2-2430: Steps: EC Installation Checklist; CC Installation Checklist; Vendor Pre-Energization Checklist; CXA Pre-Energization Inspection; PEI/Clean-Walk
- DC1-COD-L2-2440: Steps: EC Installation Checklist; CC Installation Checklist; Vendor Pre-Energization Checklist; CXA Pre-Energization Inspection; PEI/Clean-Walk
- DC1-COD-L2-2450: Steps: EC Installation Checklist; CC Installation Checklist; Vendor Pre-Energization Checklist; CXA Pre-Energization Inspection; PEI/Clean-Walk
- DC1-COD-L2-2460: Steps: EC Installation Checklist; CC Installation Checklist; Vendor Pre-Energization Checklist; CXA Pre-Energization Inspection; PEI/Clean-Walk
- DC1-COD-L2-2470: Steps: EC Installation Checklist; CC Installation Checklist; Vendor Pre-Energization Checklist; CXA Pre-Energization Inspection; PEI/Clean-Walk

| ID | WBS | Activity | Duration | Start | Finish | Predecessors | Total float | Free float | Layton Responsible Party | Vendor Responsible Party |
| --- | --- | --- | --- | --- | --- | --- | --- | --- | --- | --- |
|  | 03 | **DC1-DH2200 COD C22 Cx L2** |  | 2026-03-18 | 2026-03-18 |  |  |  |  |  |
| DC1-COD-L2-2480 |  | DH2200 COD-C22-01 L2 Checklist | 1d | 2026-03-18 | 2026-03-18 | QTS - 5500, QTS-9111 | 26d | 1d | Riley Warring | SIE |
| DC1-COD-L2-2490 |  | DH2200 COD-C22-02 L2 Checklist | 1d | 2026-03-18 | 2026-03-18 | QTS - 5500, QTS-9111 | 26d | 1d | Riley Warring | SIE |
| DC1-COD-L2-2500 |  | DH2200 COD-C22-03 L2 Checklist | 1d | 2026-03-18 | 2026-03-18 | QTS - 5500, QTS-9111 | 26d | 1d | Riley Warring | SIE |
| DC1-COD-L2-2510 |  | DH2200 COD-C22-04 L2 Checklist | 1d | 2026-03-18 | 2026-03-18 | QTS - 5500, QTS-9111 | 26d | 1d | Riley Warring | SIE |
| DC1-COD-L2-2520 |  | DH2200 COD-C22-05 L2 Checklist | 1d | 2026-03-18 | 2026-03-18 | QTS - 5500, QTS-9111 | 26d | 1d | Riley Warring | SIE |
| DC1-COD-L2-2530 |  | DH2200 COD-C22-06 L2 Checklist | 1d | 2026-03-18 | 2026-03-18 | QTS - 5500, QTS-9111 | 26d | 1d | Riley Warring | SIE |
|  | 04 | **DC1-DH2200 COD D22 Cx L2** |  | 2026-03-18 | 2026-03-18 |  |  |  |  |  |
| DC1-COD-L2-2540 |  | DH2200 COD-D22-01 L2 Checklist | 1d | 2026-03-18 | 2026-03-18 | QTS - 5500, QTS-9141 | 26d | 1d | Riley Warring | SIE |
| DC1-COD-L2-2550 |  | DH2200 COD-D22-02 L2 Checklist | 1d | 2026-03-18 | 2026-03-18 | QTS - 5500, QTS-9141 | 26d | 1d | Riley Warring | SIE |
| DC1-COD-L2-2560 |  | DH2200 COD-D22-03 L2 Checklist | 1d | 2026-03-18 | 2026-03-18 | QTS - 5500, QTS-9141 | 26d | 1d | Riley Warring | SIE |
| DC1-COD-L2-2570 |  | DH2200 COD-D22-04 L2 Checklist | 1d | 2026-03-18 | 2026-03-18 | QTS - 5500, QTS-9141 | 26d | 1d | Riley Warring | SIE |
| DC1-COD-L2-2580 |  | DH2200 COD-D22-05 L2 Checklist | 1d | 2026-03-18 | 2026-03-18 | QTS - 5500, QTS-9141 | 26d | 1d | Riley Warring | SIE |
| DC1-COD-L2-2590 |  | DH2200 COD-D22-06 L2 Checklist | 1d | 2026-03-18 | 2026-03-18 | QTS - 5500, QTS-9141 | 26d | 1d | Riley Warring | SIE |
|  | 05 | **DC1-DH2200 COD E22 Cx L2** |  | 2026-03-24 | 2026-03-24 |  |  |  |  |  |
| DC1-COD-L2-2600 |  | DH2200 COD-E22-01 L2 Checklist | 1d | 2026-03-24 | 2026-03-24 | QTS - 5730, QTS-9171 | 22d | 0d | Riley Warring | SIE |
| DC1-COD-L2-2610 |  | DH2200 COD-E22-02 L2 Checklist | 1d | 2026-03-24 | 2026-03-24 | QTS - 5730, QTS-9171 | 22d | 0d | Riley Warring | SIE |
| DC1-COD-L2-2620 |  | DH2200 COD-E22-03 L2 Checklist | 1d | 2026-03-24 | 2026-03-24 | QTS - 5730, QTS-9171 | 22d | 0d | Riley Warring | SIE |
| DC1-COD-L2-2630 |  | DH2200 COD-E22-04 L2 Checklist | 1d | 2026-03-24 | 2026-03-24 | QTS - 5730, QTS-9171 | 22d | 0d | Riley Warring | SIE |
| DC1-COD-L2-2640 |  | DH2200 COD-E22-05 L2 Checklist | 1d | 2026-03-24 | 2026-03-24 | QTS - 5730, QTS-9171 | 22d | 0d | Riley Warring | SIE |
| DC1-COD-L2-2650 |  | DH2200 COD-E22-06 L2 Checklist | 1d | 2026-03-24 | 2026-03-24 | QTS - 5730, QTS-9171 | 22d | 0d | Riley Warring | SIE |
|  | 06 | **DC1-DH2200 COD F22 Cx L2** |  | 2026-03-24 | 2026-03-24 |  |  |  |  |  |
| DC1-COD-L2-2660 |  | DH2200 COD-F22-01 L2 Checklist | 1d | 2026-03-24 | 2026-03-24 | QTS - 5730, QTS-9201 | 22d | 0d | Riley Warring | SIE |
| DC1-COD-L2-2670 |  | DH2200 COD-F22-02 L2 Checklist | 1d | 2026-03-24 | 2026-03-24 | QTS - 5730, QTS-9201 | 22d | 0d | Riley Warring | SIE |
| DC1-COD-L2-2680 |  | DH2200 COD-F22-03 L2 Checklist | 1d | 2026-03-24 | 2026-03-24 | QTS - 5730, QTS-9201 | 22d | 0d | Riley Warring | SIE |
| DC1-COD-L2-2690 |  | DH2200 COD-F22-04 L2 Checklist | 1d | 2026-03-24 | 2026-03-24 | QTS - 5730, QTS-9201 | 22d | 0d | Riley Warring | SIE |
| DC1-COD-L2-2700 |  | DH2200 COD-F22-05 L2 Checklist | 1d | 2026-03-24 | 2026-03-24 | QTS - 5730, QTS-9201 | 22d | 0d | Riley Warring | SIE |
| DC1-COD-L2-2710 |  | DH2200 COD-F22-06 L2 Checklist | 1d | 2026-03-24 | 2026-03-24 | QTS - 5730, QTS-9201 | 22d | 0d | Riley Warring | SIE |

Notes:
- DC1-COD-L2-2480: Steps: EC Installation Checklist; CC Installation Checklist; Vendor Pre-Energization Checklist; CXA Pre-Energization Inspection; PEI/Clean-Walk
- DC1-COD-L2-2490: Steps: EC Installation Checklist; CC Installation Checklist; Vendor Pre-Energization Checklist; CXA Pre-Energization Inspection; PEI/Clean-Walk
- DC1-COD-L2-2500: Steps: EC Installation Checklist; CC Installation Checklist; Vendor Pre-Energization Checklist; CXA Pre-Energization Inspection; PEI/Clean-Walk
- DC1-COD-L2-2510: Steps: EC Installation Checklist; CC Installation Checklist; Vendor Pre-Energization Checklist; CXA Pre-Energization Inspection; PEI/Clean-Walk
- DC1-COD-L2-2520: Steps: EC Installation Checklist; CC Installation Checklist; Vendor Pre-Energization Checklist; CXA Pre-Energization Inspection; PEI/Clean-Walk
- DC1-COD-L2-2530: Steps: EC Installation Checklist; CC Installation Checklist; Vendor Pre-Energization Checklist; CXA Pre-Energization Inspection; PEI/Clean-Walk
- DC1-COD-L2-2540: Steps: EC Installation Checklist; CC Installation Checklist; Vendor Pre-Energization Checklist; CXA Pre-Energization Inspection; PEI/Clean-Walk
- DC1-COD-L2-2550: Steps: EC Installation Checklist; CC Installation Checklist; Vendor Pre-Energization Checklist; CXA Pre-Energization Inspection; PEI/Clean-Walk
- DC1-COD-L2-2560: Steps: EC Installation Checklist; CC Installation Checklist; Vendor Pre-Energization Checklist; CXA Pre-Energization Inspection; PEI/Clean-Walk
- DC1-COD-L2-2570: Steps: EC Installation Checklist; CC Installation Checklist; Vendor Pre-Energization Checklist; CXA Pre-Energization Inspection; PEI/Clean-Walk
- DC1-COD-L2-2580: Steps: EC Installation Checklist; CC Installation Checklist; Vendor Pre-Energization Checklist; CXA Pre-Energization Inspection; PEI/Clean-Walk
- DC1-COD-L2-2590: Steps: EC Installation Checklist; CC Installation Checklist; Vendor Pre-Energization Checklist; CXA Pre-Energization Inspection; PEI/Clean-Walk
- DC1-COD-L2-2600: Steps: EC Installation Checklist; CC Installation Checklist; Vendor Pre-Energization Checklist; CXA Pre-Energization Inspection; PEI/Clean-Walk
- DC1-COD-L2-2610: Steps: EC Installation Checklist; CC Installation Checklist; Vendor Pre-Energization Checklist; CXA Pre-Energization Inspection; PEI/Clean-Walk
- DC1-COD-L2-2620: Steps: EC Installation Checklist; CC Installation Checklist; Vendor Pre-Energization Checklist; CXA Pre-Energization Inspection; PEI/Clean-Walk
- DC1-COD-L2-2630: Steps: EC Installation Checklist; CC Installation Checklist; Vendor Pre-Energization Checklist; CXA Pre-Energization Inspection; PEI/Clean-Walk
- DC1-COD-L2-2640: Steps: EC Installation Checklist; CC Installation Checklist; Vendor Pre-Energization Checklist; CXA Pre-Energization Inspection; PEI/Clean-Walk
- DC1-COD-L2-2650: Steps: EC Installation Checklist; CC Installation Checklist; Vendor Pre-Energization Checklist; CXA Pre-Energization Inspection; PEI/Clean-Walk
- DC1-COD-L2-2660: Steps: EC Installation Checklist; CC Installation Checklist; Vendor Pre-Energization Checklist; CXA Pre-Energization Inspection; PEI/Clean-Walk
- DC1-COD-L2-2670: Steps: EC Installation Checklist; CC Installation Checklist; Vendor Pre-Energization Checklist; CXA Pre-Energization Inspection; PEI/Clean-Walk
- DC1-COD-L2-2680: Steps: EC Installation Checklist; CC Installation Checklist; Vendor Pre-Energization Checklist; CXA Pre-Energization Inspection; PEI/Clean-Walk
- DC1-COD-L2-2690: Steps: EC Installation Checklist; CC Installation Checklist; Vendor Pre-Energization Checklist; CXA Pre-Energization Inspection; PEI/Clean-Walk
- DC1-COD-L2-2700: Steps: EC Installation Checklist; CC Installation Checklist; Vendor Pre-Energization Checklist; CXA Pre-Energization Inspection; PEI/Clean-Walk
- DC1-COD-L2-2710: Steps: EC Installation Checklist; CC Installation Checklist; Vendor Pre-Energization Checklist; CXA Pre-Energization Inspection; PEI/Clean-Walk

| ID | WBS | Activity | Duration | Start | Finish | Predecessors | Total float | Free float | Layton Responsible Party | Vendor Responsible Party |
| --- | --- | --- | --- | --- | --- | --- | --- | --- | --- | --- |
|  | 07 | **DC1-DH2200 RPPs Cx L2** |  | 2026-03-12 | 2026-03-26 |  |  |  |  |  |
|  | 01 | **DC1-DH2200 RPP A22 Cx L2** |  | 2026-03-12 | 2026-03-16 |  |  |  |  |  |
| DC1-RPP-L2-2360 |  | DH2200 RPP-A22-01 A/B L2 Checklist | 3d | 2026-03-12 | 2026-03-16 | QTS - 5040, QTS - 5040 FF | 52d | 4d | Riley Warring | SQD |
| DC1-RPP-L2-2370 |  | DH2200 RPP-A22-02 A/B L2 Checklist | 3d | 2026-03-12 | 2026-03-16 | QTS - 5040, QTS - 5040 FF | 52d | 4d | Riley Warring | SQD |
| DC1-RPP-L2-2380 |  | DH2200 RPP-A22-03 A/B L2 Checklist | 3d | 2026-03-12 | 2026-03-16 | QTS - 5040, QTS - 5040 FF | 52d | 4d | Riley Warring | SQD |
| DC1-RPP-L2-2390 |  | DH2200 RPP-A22-04 A/B L2 Checklist | 3d | 2026-03-12 | 2026-03-16 | QTS - 5040, QTS - 5040 FF | 52d | 4d | Riley Warring | SQD |
| DC1-RPP-L2-2400 |  | DH2200 RPP-A22-05 A/B L2 Checklist | 3d | 2026-03-12 | 2026-03-16 | QTS - 5040, QTS - 5040 FF | 52d | 4d | Riley Warring | SQD |
| DC1-RPP-L2-2410 |  | DH2200 RPP-A22-06 A/B L2 Checklist | 3d | 2026-03-12 | 2026-03-16 | QTS - 5040, QTS - 5040 FF | 52d | 4d | Riley Warring | SQD |
|  | 02 | **DC1-DH2200 RPP B22 Cx L2** |  | 2026-03-12 | 2026-03-16 |  |  |  |  |  |
| DC1-RPP-L2-2420 |  | DH2200 RPP-B22-01 A/B L2 Checklist | 3d | 2026-03-12 | 2026-03-16 | QTS - 5040, QTS - 5040 FF | 52d | 4d | Riley Warring | SQD |
| DC1-RPP-L2-2430 |  | DH2200 RPP-B22-02 A/B L2 Checklist | 3d | 2026-03-12 | 2026-03-16 | QTS - 5040, QTS - 5040 FF | 52d | 4d | Riley Warring | SQD |
| DC1-RPP-L2-2440 |  | DH2200 RPP-B22-03 A/B L2 Checklist | 3d | 2026-03-12 | 2026-03-16 | QTS - 5040, QTS - 5040 FF | 52d | 4d | Riley Warring | SQD |
| DC1-RPP-L2-2450 |  | DH2200 RPP-B22-04 A/B L2 Checklist | 3d | 2026-03-12 | 2026-03-16 | QTS - 5040, QTS - 5040 FF | 52d | 4d | Riley Warring | SQD |
| DC1-RPP-L2-2460 |  | DH2200 RPP-B22-05 A/B L2 Checklist | 3d | 2026-03-12 | 2026-03-16 | QTS - 5040, QTS - 5040 FF | 52d | 4d | Riley Warring | SQD |
| DC1-RPP-L2-2470 |  | DH2200 RPP-B22-06 A/B L2 Checklist | 3d | 2026-03-12 | 2026-03-16 | QTS - 5040, QTS - 5040 FF | 52d | 4d | Riley Warring | SQD |
|  | 03 | **DC1-DH2200 RPP C22 Cx L2** |  | 2026-03-18 | 2026-03-20 |  |  |  |  |  |
| DC1-RPP-L2-2480 |  | DH2200 RPP-C22-01 A/B L2 Checklist | 3d | 2026-03-18 | 2026-03-20 | QTS - 5500, QTS - 5500 FF | 48d | 0d | Riley Warring | SQD |
| DC1-RPP-L2-2490 |  | DH2200 RPP-C22-02 A/B L2 Checklist | 3d | 2026-03-18 | 2026-03-20 | QTS - 5500, QTS - 5500 FF | 48d | 0d | Riley Warring | SQD |
| DC1-RPP-L2-2500 |  | DH2200 RPP-C22-03 A/B L2 Checklist | 3d | 2026-03-18 | 2026-03-20 | QTS - 5500, QTS - 5500 FF | 48d | 0d | Riley Warring | SQD |
| DC1-RPP-L2-2510 |  | DH2200 RPP-C22-04 A/B L2 Checklist | 3d | 2026-03-18 | 2026-03-20 | QTS - 5500, QTS - 5500 FF | 48d | 0d | Riley Warring | SQD |
| DC1-RPP-L2-2520 |  | DH2200 RPP-C22-05 A/B L2 Checklist | 3d | 2026-03-18 | 2026-03-20 | QTS - 5500, QTS - 5500 FF | 48d | 0d | Riley Warring | SQD |
| DC1-RPP-L2-2530 |  | DH2200 RPP-C22-06 A/B L2 Checklist | 3d | 2026-03-18 | 2026-03-20 | QTS - 5500, QTS - 5500 FF | 48d | 0d | Riley Warring | SQD |
|  | 04 | **DC1-DH2200 RPP D22 Cx L2** |  | 2026-03-18 | 2026-03-20 |  |  |  |  |  |
| DC1-RPP-L2-2540 |  | DH2200 RPP-D22-01 A/B L2 Checklist | 3d | 2026-03-18 | 2026-03-20 | QTS - 5500, QTS - 5500 FF | 48d | 0d | Riley Warring | SQD |
| DC1-RPP-L2-2550 |  | DH2200 RPP-D22-02 A/B L2 Checklist | 3d | 2026-03-18 | 2026-03-20 | QTS - 5500, QTS - 5500 FF | 48d | 0d | Riley Warring | SQD |
| DC1-RPP-L2-2560 |  | DH2200 RPP-D22-03 A/B L2 Checklist | 3d | 2026-03-18 | 2026-03-20 | QTS - 5500, QTS - 5500 FF | 48d | 0d | Riley Warring | SQD |
| DC1-RPP-L2-2570 |  | DH2200 RPP-D22-04 A/B L2 Checklist | 3d | 2026-03-18 | 2026-03-20 | QTS - 5500, QTS - 5500 FF | 48d | 0d | Riley Warring | SQD |
| DC1-RPP-L2-2580 |  | DH2200 RPP-D22-05 A/B L2 Checklist | 3d | 2026-03-18 | 2026-03-20 | QTS - 5500, QTS - 5500 FF | 48d | 0d | Riley Warring | SQD |
| DC1-RPP-L2-2590 |  | DH2200 RPP-D22-06 A/B L2 Checklist | 3d | 2026-03-18 | 2026-03-20 | QTS - 5500, QTS - 5500 FF | 48d | 0d | Riley Warring | SQD |

Notes:
- DC1-RPP-L2-2360: Steps: EC Installation Checklist; CC Installation Checklist; Vendor Pre-Energization Checklist; CXA Pre-Energization Inspection; PEI/Clean-Walk
- DC1-RPP-L2-2370: Steps: EC Installation Checklist; CC Installation Checklist; Vendor Pre-Energization Checklist; CXA Pre-Energization Inspection; PEI/Clean-Walk
- DC1-RPP-L2-2380: Steps: EC Installation Checklist; CC Installation Checklist; Vendor Pre-Energization Checklist; CXA Pre-Energization Inspection; PEI/Clean-Walk
- DC1-RPP-L2-2390: Steps: EC Installation Checklist; CC Installation Checklist; Vendor Pre-Energization Checklist; CXA Pre-Energization Inspection; PEI/Clean-Walk
- DC1-RPP-L2-2400: Steps: EC Installation Checklist; CC Installation Checklist; Vendor Pre-Energization Checklist; CXA Pre-Energization Inspection; PEI/Clean-Walk
- DC1-RPP-L2-2410: Steps: EC Installation Checklist; CC Installation Checklist; Vendor Pre-Energization Checklist; CXA Pre-Energization Inspection; PEI/Clean-Walk
- DC1-RPP-L2-2420: Steps: EC Installation Checklist; CC Installation Checklist; Vendor Pre-Energization Checklist; CXA Pre-Energization Inspection; PEI/Clean-Walk
- DC1-RPP-L2-2430: Steps: EC Installation Checklist; CC Installation Checklist; Vendor Pre-Energization Checklist; CXA Pre-Energization Inspection; PEI/Clean-Walk
- DC1-RPP-L2-2440: Steps: EC Installation Checklist; CC Installation Checklist; Vendor Pre-Energization Checklist; CXA Pre-Energization Inspection; PEI/Clean-Walk
- DC1-RPP-L2-2450: Steps: EC Installation Checklist; CC Installation Checklist; Vendor Pre-Energization Checklist; CXA Pre-Energization Inspection; PEI/Clean-Walk
- DC1-RPP-L2-2460: Steps: EC Installation Checklist; CC Installation Checklist; Vendor Pre-Energization Checklist; CXA Pre-Energization Inspection; PEI/Clean-Walk
- DC1-RPP-L2-2470: Steps: EC Installation Checklist; CC Installation Checklist; Vendor Pre-Energization Checklist; CXA Pre-Energization Inspection; PEI/Clean-Walk
- DC1-RPP-L2-2480: Steps: EC Installation Checklist; CC Installation Checklist; Vendor Pre-Energization Checklist; CXA Pre-Energization Inspection; PEI/Clean-Walk
- DC1-RPP-L2-2490: Steps: EC Installation Checklist; CC Installation Checklist; Vendor Pre-Energization Checklist; CXA Pre-Energization Inspection; PEI/Clean-Walk
- DC1-RPP-L2-2500: Steps: EC Installation Checklist; CC Installation Checklist; Vendor Pre-Energization Checklist; CXA Pre-Energization Inspection; PEI/Clean-Walk
- DC1-RPP-L2-2510: Steps: EC Installation Checklist; CC Installation Checklist; Vendor Pre-Energization Checklist; CXA Pre-Energization Inspection; PEI/Clean-Walk
- DC1-RPP-L2-2520: Steps: EC Installation Checklist; CC Installation Checklist; Vendor Pre-Energization Checklist; CXA Pre-Energization Inspection; PEI/Clean-Walk
- DC1-RPP-L2-2530: Steps: EC Installation Checklist; CC Installation Checklist; Vendor Pre-Energization Checklist; CXA Pre-Energization Inspection; PEI/Clean-Walk
- DC1-RPP-L2-2540: Steps: EC Installation Checklist; CC Installation Checklist; Vendor Pre-Energization Checklist; CXA Pre-Energization Inspection; PEI/Clean-Walk
- DC1-RPP-L2-2550: Steps: EC Installation Checklist; CC Installation Checklist; Vendor Pre-Energization Checklist; CXA Pre-Energization Inspection; PEI/Clean-Walk
- DC1-RPP-L2-2560: Steps: EC Installation Checklist; CC Installation Checklist; Vendor Pre-Energization Checklist; CXA Pre-Energization Inspection; PEI/Clean-Walk
- DC1-RPP-L2-2570: Steps: EC Installation Checklist; CC Installation Checklist; Vendor Pre-Energization Checklist; CXA Pre-Energization Inspection; PEI/Clean-Walk
- DC1-RPP-L2-2580: Steps: EC Installation Checklist; CC Installation Checklist; Vendor Pre-Energization Checklist; CXA Pre-Energization Inspection; PEI/Clean-Walk
- DC1-RPP-L2-2590: Steps: EC Installation Checklist; CC Installation Checklist; Vendor Pre-Energization Checklist; CXA Pre-Energization Inspection; PEI/Clean-Walk

| ID | WBS | Activity | Duration | Start | Finish | Predecessors | Total float | Free float | Layton Responsible Party | Vendor Responsible Party |
| --- | --- | --- | --- | --- | --- | --- | --- | --- | --- | --- |
|  | 05 | **DC1-DH2200 RPP E22 Cx L2** |  | 2026-03-24 | 2026-03-26 |  |  |  |  |  |
| DC1-RPP-L2-2600 |  | DH2200 RPP-E22-01 A/B L2 Checklist | 3d | 2026-03-24 | 2026-03-26 | QTS - 5730, QTS - 5730 FF | 44d | 0d | Riley Warring | SQD |
| DC1-RPP-L2-2610 |  | DH2200 RPP-E22-02 A/B L2 Checklist | 3d | 2026-03-24 | 2026-03-26 | QTS - 5730, QTS - 5730 FF | 44d | 0d | Riley Warring | SQD |
| DC1-RPP-L2-2620 |  | DH2200 RPP-E22-03 A/B L2 Checklist | 3d | 2026-03-24 | 2026-03-26 | QTS - 5730, QTS - 5730 FF | 44d | 0d | Riley Warring | SQD |
| DC1-RPP-L2-2630 |  | DH2200 RPP-E22-04 A/B L2 Checklist | 3d | 2026-03-24 | 2026-03-26 | QTS - 5730, QTS - 5730 FF | 44d | 0d | Riley Warring | SQD |
| DC1-RPP-L2-2640 |  | DH2200 RPP-E22-05 A/B L2 Checklist | 3d | 2026-03-24 | 2026-03-26 | QTS - 5730, QTS - 5730 FF | 44d | 0d | Riley Warring | SQD |
| DC1-RPP-L2-2650 |  | DH2200 RPP-E22-06 A/B L2 Checklist | 3d | 2026-03-24 | 2026-03-26 | QTS - 5730, QTS - 5730 FF | 44d | 0d | Riley Warring | SQD |
|  | 06 | **DC1-DH2200 RPP F22 Cx L2** |  | 2026-03-24 | 2026-03-26 |  |  |  |  |  |
| DC1-RPP-L2-2660 |  | DH2200 RPP-F22-01 A/B L2 Checklist | 3d | 2026-03-24 | 2026-03-26 | QTS - 5730 | 44d | 0d | Riley Warring | SQD |
| DC1-RPP-L2-2670 |  | DH2200 RPP-F22-02 A/B L2 Checklist | 3d | 2026-03-24 | 2026-03-26 | QTS - 5730 | 44d | 0d | Riley Warring | SQD |
| DC1-RPP-L2-2680 |  | DH2200 RPP-F22-03 A/B L2 Checklist | 3d | 2026-03-24 | 2026-03-26 | QTS - 5730 | 44d | 0d | Riley Warring | SQD |
| DC1-RPP-L2-2690 |  | DH2200 RPP-F22-04 A/B L2 Checklist | 3d | 2026-03-24 | 2026-03-26 | QTS - 5730 | 44d | 0d | Riley Warring | SQD |
| DC1-RPP-L2-2700 |  | DH2200 RPP-F22-05 A/B L2 Checklist | 3d | 2026-03-24 | 2026-03-26 | QTS - 5730 | 44d | 0d | Riley Warring | SQD |
| DC1-RPP-L2-2710 |  | DH2200 RPP-F22-06 A/B L2 Checklist | 3d | 2026-03-24 | 2026-03-26 | QTS - 5730 | 44d | 0d | Riley Warring | SQD |
|  | 08 | **DC1-DH2200 MOD-02 Cx L2** |  | 2026-03-16 | 2026-03-24 |  |  |  |  |  |
| DC1-MOD02-L2-2070 |  | DH2200 MOD-A22-02 L2 Checklist | 1d | 2026-03-16 | 2026-03-16 | QTS-43751, QTS-44471, QTS-17961, QTS-18521, QTS-16071, QTS-44501, QTS-17981, QTS-18531, QTS-16091 | 17d | 0d | Riley Warring | PHE |
| DC1-MOD02-L2-2080 |  | DH2200 MOD-B22-02 L2 Checklist | 1d | 2026-03-17 | 2026-03-17 | DC1-MOD02-L2-2070, QTS-44471, QTS-17961, QTS-18521, QTS-16071, QTS-44501, QTS-17981, QTS-18531, QTS-16091 | 17d | 0d | Riley Warring | PHE |
| DC1-MOD02-L2-2090 |  | DH2200 MOD-C22-02 L2 Checklist | 1d | 2026-03-18 | 2026-03-18 | DC1-MOD02-L2-2080, QTS-44471, QTS-17961, QTS-18521, QTS-16071, QTS-44501, QTS-17981, QTS-18531, QTS-16091 | 17d | 0d | Riley Warring | PHE |
| DC1-MOD02-L2-2100 |  | DH2200 MOD-D22-02 L2 Checklist | 1d | 2026-03-19 | 2026-03-19 | DC1-MOD02-L2-2090, QTS-44471, QTS-17961, QTS-18521, QTS-16071, QTS-44501, QTS-17981, QTS-18531, QTS-16091 | 17d | 0d | Riley Warring | PHE |
| DC1-MOD02-L2-2110 |  | DH2200 MOD-E22-02 L2 Checklist | 1d | 2026-03-20 | 2026-03-20 | DC1-MOD02-L2-2100, QTS-44471, QTS-17961, QTS-18521, QTS-16071, QTS-44501, QTS-17981, QTS-18531, QTS-16091 | 17d | 0d | Riley Warring | PHE |
| DC1-MOD02-L2-2120 |  | DH2200 MOD-F22-02 L2 Checklist | 1d | 2026-03-23 | 2026-03-23 | DC1-MOD02-L2-2110, QTS-44471, QTS-17961, QTS-18521, QTS-16071, QTS-44501, QTS-17981, QTS-18531, QTS-16091 | 17d | 0d | Riley Warring | PHE |
| DC1-MOD02-L2-2130 |  | DH2200 MOD-R22-02 L2 Checklist | 1d | 2026-03-24 | 2026-03-24 | DC1-MOD02-L2-2120, QTS-44471, QTS-17961, QTS-18521, QTS-16071, QTS-44501, QTS-17981, QTS-18531, QTS-16091 | 17d | 0d | Riley Warring | PHE |
|  | 09 | **DC1-DH2200 MOD-03 Cx L2** |  | 2026-03-16 | 2026-04-03 |  |  |  |  |  |
| DC1-MOD03-L2-2070 |  | DH2200 MOD-A22-03 L2 Checklist | 3d | 2026-03-16 | 2026-03-18 | QTS-43751, QTS-44471, QTS-17961, QTS-18521, QTS-16071, QTS-44501, QTS-17981, QTS-18531, QTS-16091 | 14d | 0d | Riley Warring | PHE |
| DC1-MOD03-L2-2080 |  | DH2200 MOD-B22-03 L2 Checklist | 3d | 2026-03-19 | 2026-03-23 | DC1-MOD03-L2-2070, QTS-44471, QTS-17961, QTS-18521, QTS-16071, QTS-44501, QTS-17981, QTS-18531, QTS-16091 | 14d | 0d | Riley Warring | PHE |
| DC1-MOD03-L2-2090 |  | DH2200 MOD-C22-03 L2 Checklist | 3d | 2026-03-24 | 2026-03-26 | DC1-MOD03-L2-2080, QTS-44471, QTS-17961, QTS-18521, QTS-16071, QTS-44501, QTS-17981, QTS-18531, QTS-16091 | 14d | 0d | Riley Warring | PHE |
| DC1-MOD03-L2-2100 |  | DH2200 MOD-D22-03 L2 Checklist | 2d | 2026-03-27 | 2026-03-30 | DC1-MOD03-L2-2090, QTS-44471, QTS-17961, QTS-18521, QTS-16071, QTS-44501, QTS-17981, QTS-18531, QTS-16091 | 14d | 0d | Riley Warring | PHE |
| DC1-MOD03-L2-2110 |  | DH2200 MOD-E22-03 L2 Checklist | 2d | 2026-03-31 | 2026-04-01 | DC1-MOD03-L2-2100, QTS-44471, QTS-17961, QTS-18521, QTS-16071, QTS-44501, QTS-17981, QTS-18531, QTS-16091 | 14d | 0d | Riley Warring | PHE |
| DC1-MOD03-L2-2120 |  | DH2200 MOD-F22-03 L2 Checklist | 2d | 2026-04-02 | 2026-04-03 | DC1-MOD03-L2-2110, QTS-44471, QTS-17961, QTS-18521, QTS-16071, QTS-44501, QTS-17981, QTS-18531, QTS-16091 | 14d | 0d | Riley Warring | PHE |
| DC1-MOD03-L2-2130 |  | DH2200 MOD-R22-03 L2 Checklist | 2d | 2026-04-02 | 2026-04-03 | DC1-MOD03-L2-2120 SS, QTS-44471, QTS-17961, QTS-18521, QTS-16071, QTS-44501, QTS-17981, QTS-18531, QTS-16091 | 14d | 0d | Riley Warring | PHE |

Notes:
- DC1-RPP-L2-2600: Steps: EC Installation Checklist; CC Installation Checklist; Vendor Pre-Energization Checklist; CXA Pre-Energization Inspection; PEI/Clean-Walk
- DC1-RPP-L2-2610: Steps: EC Installation Checklist; CC Installation Checklist; Vendor Pre-Energization Checklist; CXA Pre-Energization Inspection; PEI/Clean-Walk
- DC1-RPP-L2-2620: Steps: EC Installation Checklist; CC Installation Checklist; Vendor Pre-Energization Checklist; CXA Pre-Energization Inspection; PEI/Clean-Walk
- DC1-RPP-L2-2630: Steps: EC Installation Checklist; CC Installation Checklist; Vendor Pre-Energization Checklist; CXA Pre-Energization Inspection; PEI/Clean-Walk
- DC1-RPP-L2-2640: Steps: EC Installation Checklist; CC Installation Checklist; Vendor Pre-Energization Checklist; CXA Pre-Energization Inspection; PEI/Clean-Walk
- DC1-RPP-L2-2650: Steps: EC Installation Checklist; CC Installation Checklist; Vendor Pre-Energization Checklist; CXA Pre-Energization Inspection; PEI/Clean-Walk
- DC1-RPP-L2-2660: Steps: EC Installation Checklist; CC Installation Checklist; Vendor Pre-Energization Checklist; CXA Pre-Energization Inspection; PEI/Clean-Walk
- DC1-RPP-L2-2670: Steps: EC Installation Checklist; CC Installation Checklist; Vendor Pre-Energization Checklist; CXA Pre-Energization Inspection; PEI/Clean-Walk
- DC1-RPP-L2-2680: Steps: EC Installation Checklist; CC Installation Checklist; Vendor Pre-Energization Checklist; CXA Pre-Energization Inspection; PEI/Clean-Walk
- DC1-RPP-L2-2690: Steps: EC Installation Checklist; CC Installation Checklist; Vendor Pre-Energization Checklist; CXA Pre-Energization Inspection; PEI/Clean-Walk
- DC1-RPP-L2-2700: Steps: EC Installation Checklist; CC Installation Checklist; Vendor Pre-Energization Checklist; CXA Pre-Energization Inspection; PEI/Clean-Walk
- DC1-RPP-L2-2710: Steps: EC Installation Checklist; CC Installation Checklist; Vendor Pre-Energization Checklist; CXA Pre-Energization Inspection; PEI/Clean-Walk
- DC1-MOD02-L2-2070: Steps: EC Installation Checklist; CC Installation Checklist; Vendor Pre-Energization Checklist; CXA Pre-Energization Inspection; PEI/Clean-Walk
- DC1-MOD02-L2-2080: Steps: EC Installation Checklist; CC Installation Checklist; Vendor Pre-Energization Checklist; CXA Pre-Energization Inspection; PEI/Clean-Walk
- DC1-MOD02-L2-2090: Steps: EC Installation Checklist; CC Installation Checklist; Vendor Pre-Energization Checklist; CXA Pre-Energization Inspection; PEI/Clean-Walk
- DC1-MOD02-L2-2100: Steps: EC Installation Checklist; CC Installation Checklist; Vendor Pre-Energization Checklist; CXA Pre-Energization Inspection; PEI/Clean-Walk
- DC1-MOD02-L2-2110: Steps: EC Installation Checklist; CC Installation Checklist; Vendor Pre-Energization Checklist; CXA Pre-Energization Inspection; PEI/Clean-Walk
- DC1-MOD02-L2-2120: Steps: EC Installation Checklist; CC Installation Checklist; Vendor Pre-Energization Checklist; CXA Pre-Energization Inspection; PEI/Clean-Walk
- DC1-MOD02-L2-2130: Steps: EC Installation Checklist; CC Installation Checklist; Vendor Pre-Energization Checklist; CXA Pre-Energization Inspection; PEI/Clean-Walk
- DC1-MOD03-L2-2070: Steps: EC Installation Checklist; CC Installation Checklist; Vendor Pre-Energization Checklist; CXA Pre-Energization Inspection; PEI/Clean-Walk
- DC1-MOD03-L2-2080: Steps: EC Installation Checklist; CC Installation Checklist; Vendor Pre-Energization Checklist; CXA Pre-Energization Inspection; PEI/Clean-Walk
- DC1-MOD03-L2-2090: Steps: EC Installation Checklist; CC Installation Checklist; Vendor Pre-Energization Checklist; CXA Pre-Energization Inspection; PEI/Clean-Walk
- DC1-MOD03-L2-2100: Steps: EC Installation Checklist; CC Installation Checklist; Vendor Pre-Energization Checklist; CXA Pre-Energization Inspection; PEI/Clean-Walk
- DC1-MOD03-L2-2110: Steps: EC Installation Checklist; CC Installation Checklist; Vendor Pre-Energization Checklist; CXA Pre-Energization Inspection; PEI/Clean-Walk
- DC1-MOD03-L2-2120: Steps: EC Installation Checklist; CC Installation Checklist; Vendor Pre-Energization Checklist; CXA Pre-Energization Inspection; PEI/Clean-Walk
- DC1-MOD03-L2-2130: Steps: EC Installation Checklist; CC Installation Checklist; Vendor Pre-Energization Checklist; CXA Pre-Energization Inspection; PEI/Clean-Walk

| ID | WBS | Activity | Duration | Start | Finish | Predecessors | Total float | Free float | Layton Responsible Party | Vendor Responsible Party |
| --- | --- | --- | --- | --- | --- | --- | --- | --- | --- | --- |
|  | 10 | **DC1-DH2200 CDUs Cx L2** |  | 2026-03-18 | 2026-04-15 |  |  |  |  |  |
| DC1-CDU-L2-2550 |  | DH2200 CDU-A22-01 L2 Checklist | 3d | 2026-03-18 | 2026-03-20 | QTS - 5090, QTS - 6190 | 48d | 0d | Riley Warring | VER |
| DC1-CDU-L2-2560 |  | DH2200 CDU-A22-02 L2 Checklist | 3d | 2026-03-18 | 2026-03-20 | QTS - 5090, QTS - 6190 | 48d | 0d | Riley Warring | VER |
| DC1-CDU-L2-2570 |  | DH2200 CDU-A22-03 L2 Checklist | 3d | 2026-03-18 | 2026-03-20 | QTS - 5090, QTS - 6190 | 48d | 0d | Riley Warring | VER |
| DC1-CDU-L2-2580 |  | DH2200 CDU-A22-04 L2 Checklist | 3d | 2026-03-26 | 2026-03-30 | QTS - 5880, QTS - 6210 | 42d | 0d | Riley Warring | VER |
| DC1-CDU-L2-2590 |  | DH2200 CDU-A22-05 L2 Checklist | 3d | 2026-03-26 | 2026-03-30 | QTS - 5880, QTS - 6210 | 42d | 0d | Riley Warring | VER |
| DC1-CDU-L2-2600 |  | DH2200 CDU-A22-06 L2 Checklist | 3d | 2026-03-26 | 2026-03-30 | QTS - 5880, QTS - 6210 | 42d | 0d | Riley Warring | VER |
| DC1-CDU-L2-2640 |  | DH2200 CDU-B22-10 L2 Checklist | 3d | 2026-03-27 | 2026-03-31 | QTS - 5880, QTS - 6060 | 41d | 0d | Riley Warring | VER |
| DC1-CDU-L2-2650 |  | DH2200 CDU-B22-11 L2 Checklist | 3d | 2026-03-27 | 2026-03-31 | QTS - 5880, QTS - 6060 | 41d | 0d | Riley Warring | VER |
| DC1-CDU-L2-2660 |  | DH2200 CDU-B22-12 L2 Checklist | 3d | 2026-03-27 | 2026-03-31 | QTS - 5880, QTS - 6060 | 41d | 0d | Riley Warring | VER |
| DC1-CDU-L2-2610 |  | DH2200 CDU-B22-07 L2 Checklist | 3d | 2026-04-03 | 2026-04-07 | QTS - 5090, QTS - 6230 | 36d | 0d | Riley Warring | VER |
| DC1-CDU-L2-2620 |  | DH2200 CDU-B22-08 L2 Checklist | 3d | 2026-04-03 | 2026-04-07 | QTS - 5090, QTS - 6230 | 36d | 0d | Riley Warring | VER |
| DC1-CDU-L2-2630 |  | DH2200 CDU-B22-09 L2 Checklist | 3d | 2026-04-03 | 2026-04-07 | QTS - 5090, QTS - 6230 | 36d | 0d | Riley Warring | VER |
| DC1-CDU-L2-2670 |  | DH2200 CDU-C22-13 L2 Checklist | 3d | 2026-04-06 | 2026-04-08 | QTS - 5090, QTS - 6080 | 35d | 0d | Riley Warring | VER |
| DC1-CDU-L2-2680 |  | DH2200 CDU-C22-14 L2 Checklist | 3d | 2026-04-06 | 2026-04-08 | QTS - 5090, QTS - 6080 | 35d | 0d | Riley Warring | VER |
| DC1-CDU-L2-2690 |  | DH2200 CDU-C22-15 L2 Checklist | 3d | 2026-04-06 | 2026-04-08 | QTS - 5090, QTS - 6080 | 35d | 0d | Riley Warring | VER |
| DC1-CDU-L2-2700 |  | DH2200 CDU-C22-16 L2 Checklist | 3d | 2026-04-13 | 2026-04-15 | QTS - 5880, QTS - 6090 | 30d | 0d | Riley Warring | VER |
| DC1-CDU-L2-2710 |  | DH2200 CDU-C22-17 L2 Checklist | 3d | 2026-04-13 | 2026-04-15 | QTS - 5880, QTS - 6090 | 30d | 0d | Riley Warring | VER |
| DC1-CDU-L2-2720 |  | DH2200 CDU-C22-18 L2 Checklist | 3d | 2026-04-13 | 2026-04-15 | QTS - 5880, QTS - 6090 | 30d | 0d | Riley Warring | VER |
|  | 11 | **DC1-DH2200 CHLR Cx L2** |  | 2026-02-17 | 2026-03-11 |  |  |  |  |  |
| DC1-CHLR-L2-1070 |  | DH2200 CHLR-1RT40-A22 L2 Checklist | 3d | 2026-02-17 | 2026-02-19 | QTS-18641 | 32d | 0d | Riley Warring | TAS |
| DC1-CHLR-L2-1080 |  | DH2200 CHLR-1RT40-B22 L2 Checklist | 3d | 2026-02-20 | 2026-02-24 | DC1-CHLR-L2-1070 | 32d | 0d | Riley Warring | TAS |
| DC1-CHLR-L2-1100 |  | DH2200 CHLR-1RT40-D22 L2 Checklist | 3d | 2026-02-24 | 2026-02-26 | QTS-39792 | 24d | 0d | Riley Warring | TAS |
| DC1-CHLR-L2-1090 |  | DH2200 CHLR-1RT40-C22 L2 Checklist | 3d | 2026-02-25 | 2026-02-27 | DC1-CHLR-L2-1080 | 32d | 0d | Riley Warring | TAS |
| DC1-CHLR-L2-1110 |  | DH2200 CHLR-1RT40-E22 L2 Checklist | 3d | 2026-02-27 | 2026-03-03 | DC1-CHLR-L2-1100 | 24d | 0d | Riley Warring | TAS |
| DC1-CHLR-L2-1120 |  | DH2200 CHLR-1RT40-F22 L2 Checklist | 3d | 2026-03-04 | 2026-03-06 | DC1-CHLR-L2-1110 | 24d | 0d | Riley Warring | TAS |
| DC1-CHLR-L2-1130 |  | DH2200 CHLR-1RT40-R22 L2 Checklist | 3d | 2026-03-09 | 2026-03-11 | DC1-CHLR-L2-1120 | 24d | 0d | Riley Warring | TAS |

Notes:
- DC1-CDU-L2-2550: Steps: EC Installation Checklist; MC Installation Checklist; CC Installation Checklist; Vendor Pre-Energization Checklist; CXA Pre-Energization Inspection; PEI/Clean-Walk
- DC1-CDU-L2-2560: Steps: EC Installation Checklist; MC Installation Checklist; CC Installation Checklist; Vendor Pre-Energization Checklist; CXA Pre-Energization Inspection; PEI/Clean-Walk
- DC1-CDU-L2-2570: Steps: EC Installation Checklist; CC Installation Checklist; MC Installation Checklist; Vendor Pre-Energization Checklist; CXA Pre-Energization Inspection; PEI/Clean-Walk
- DC1-CDU-L2-2580: Steps: EC Installation Checklist; MC Installation Checklist; CC Installation Checklist; Vendor Pre-Energization Checklist; CXA Pre-Energization Inspection; PEI/Clean-Walk
- DC1-CDU-L2-2590: Steps: EC Installation Checklist; MC Installation Checklist; CC Installation Checklist; Vendor Pre-Energization Checklist; CXA Pre-Energization Inspection; PEI/Clean-Walk
- DC1-CDU-L2-2600: Steps: EC Installation Checklist; MC Installation Checklist; CC Installation Checklist; Vendor Pre-Energization Checklist; CXA Pre-Energization Inspection; PEI/Clean-Walk
- DC1-CDU-L2-2640: Steps: EC Installation Checklist; MC Installation Checklist; CC Installation Checklist; Vendor Pre-Energization Checklist; CXA Pre-Energization Inspection; PEI/Clean-Walk
- DC1-CDU-L2-2650: Steps: EC Installation Checklist; MC Installation Checklist; CC Installation Checklist; Vendor Pre-Energization Checklist; CXA Pre-Energization Inspection; PEI/Clean-Walk
- DC1-CDU-L2-2660: Steps: EC Installation Checklist; MC Installation Checklist; CC Installation Checklist; Vendor Pre-Energization Checklist; CXA Pre-Energization Inspection; PEI/Clean-Walk
- DC1-CDU-L2-2610: Steps: EC Installation Checklist; MC Installation Checklist; CC Installation Checklist; Vendor Pre-Energization Checklist; CXA Pre-Energization Inspection; PEI/Clean-Walk
- DC1-CDU-L2-2620: Steps: EC Installation Checklist; MC Installation Checklist; CC Installation Checklist; Vendor Pre-Energization Checklist; CXA Pre-Energization Inspection; PEI/Clean-Walk
- DC1-CDU-L2-2630: Steps: EC Installation Checklist; MC Installation Checklist; CC Installation Checklist; Vendor Pre-Energization Checklist; CXA Pre-Energization Inspection; PEI/Clean-Walk
- DC1-CDU-L2-2670: Steps: EC Installation Checklist; MC Installation Checklist; CC Installation Checklist; Vendor Pre-Energization Checklist; CXA Pre-Energization Inspection; PEI/Clean-Walk
- DC1-CDU-L2-2680: Steps: EC Installation Checklist; MC Installation Checklist; CC Installation Checklist; Vendor Pre-Energization Checklist; CXA Pre-Energization Inspection; PEI/Clean-Walk
- DC1-CDU-L2-2690: Steps: EC Installation Checklist; MC Installation Checklist; CC Installation Checklist; Vendor Pre-Energization Checklist; CXA Pre-Energization Inspection; PEI/Clean-Walk
- DC1-CDU-L2-2700: Steps: EC Installation Checklist; MC Installation Checklist; CC Installation Checklist; Vendor Pre-Energization Checklist; CXA Pre-Energization Inspection; PEI/Clean-Walk
- DC1-CDU-L2-2710: Steps: EC Installation Checklist; MC Installation Checklist; CC Installation Checklist; Vendor Pre-Energization Checklist; CXA Pre-Energization Inspection; PEI/Clean-Walk
- DC1-CDU-L2-2720: Steps: EC Installation Checklist; MC Installation Checklist; CC Installation Checklist; Vendor Pre-Energization Checklist; CXA Pre-Energization Inspection; PEI/Clean-Walk
- DC1-CHLR-L2-1070: Steps: EC Installation Checklist; MC Installation Checklist; CC Installation Checklist; Vendor Pre-Energization Checklist; CXA Pre-Energization Inspection; PEI/Clean-Walk
- DC1-CHLR-L2-1080: Steps: EC Installation Checklist; MC Installation Checklist; CC Installation Checklist; Vendor Pre-Energization Checklist; CXA Pre-Energization Inspection; PEI/Clean-Walk
- DC1-CHLR-L2-1100: Steps: EC Installation Checklist; MC Installation Checklist; CC Installation Checklist; Vendor Pre-Energization Checklist; CXA Pre-Energization Inspection; PEI/Clean-Walk
- DC1-CHLR-L2-1090: Steps: EC Installation Checklist; MC Installation Checklist; CC Installation Checklist; Vendor Pre-Energization Checklist; CXA Pre-Energization Inspection; PEI/Clean-Walk
- DC1-CHLR-L2-1110: Steps: EC Installation Checklist; MC Installation Checklist; CC Installation Checklist; Vendor Pre-Energization Checklist; CXA Pre-Energization Inspection; PEI/Clean-Walk
- DC1-CHLR-L2-1120: Steps: EC Installation Checklist; MC Installation Checklist; CC Installation Checklist; Vendor Pre-Energization Checklist; CXA Pre-Energization Inspection; PEI/Clean-Walk
- DC1-CHLR-L2-1130: Steps: EC Installation Checklist; MC Installation Checklist; CC Installation Checklist; Vendor Pre-Energization Checklist; CXA Pre-Energization Inspection; PEI/Clean-Walk

| ID | WBS | Activity | Duration | Start | Finish | Predecessors | Total float | Free float | Notes | Vendor Responsible Party | Layton Responsible Party |
| --- | --- | --- | --- | --- | --- | --- | --- | --- | --- | --- | --- |
|  | 12 | **DC1-DH2200 CHWP Cx L2** |  | 2026-02-20 | 2026-03-03 |  |  |  |  |  |  |
| DC1-CHWP-L2-Cx-2070 |  | DH2200 CHWP-1RT40-A22 L2 Checklist | 1d | 2026-02-20 | 2026-02-20 | QTS-18961 | 17d | 0d | CFCI | LAY |  |
| DC1-CHWP-L2-Cx-2080 |  | DH2200 CHWP-1RT40-B22 L2 Checklist | 1d | 2026-02-23 | 2026-02-23 | DC1-CHWP-L2-Cx-2070 | 17d | 0d | CFCI | LAY |  |
| DC1-CHWP-L2-Cx-2090 |  | DH2200 CHWP-1RT40-C22 L2 Checklist | 1d | 2026-02-24 | 2026-02-24 | DC1-CHWP-L2-Cx-2080 | 17d | 9d | CFCI | LAY |  |
| DC1-CHWP-L2-Cx-2100 |  | DH2200 CHWP-1RT40-D22 L2 Checklist | 1d | 2026-02-26 | 2026-02-26 | QTS-39812 | 12d | 0d | CFCI | LAY |  |
| DC1-CHWP-L2-Cx-2110 |  | DH2200 CHWP-1RT40-E22 L2 Checklist | 1d | 2026-02-27 | 2026-02-27 | DC1-CHWP-L2-Cx-2100 | 12d | 0d | CFCI | LAY |  |
| DC1-CHWP-L2-Cx-2120 |  | DH2200 CHWP-1RT40-F22 L2 Checklist | 1d | 2026-03-02 | 2026-03-02 | DC1-CHWP-L2-Cx-2110 | 12d | 0d | CFCI | LAY |  |
| DC1-CHWP-L2-Cx-2130 |  | DH2200 CHWP-1RT40-R22 L2 Checklist | 1d | 2026-03-03 | 2026-03-03 | DC1-CHWP-L2-Cx-2120 | 12d | 11d | CFCI | LAY |  |
|  | 13 | **DC1-DH2200 CRAH/DOAS Cx L2** |  | 2026-03-02 | 2026-03-06 |  |  |  |  |  |  |
| DC1-CRAH-L2-2320 |  | DH2200 CRAH-DH-01 L2 Checklist | 1d | 2026-03-02 | 2026-03-02 | QTS-46591, QTS-15461, QTS-16291, QTS-16341 | 33d | 16d |  | UMAS | Riley Warring |
| DC1-CRAH-L2-2330 |  | DH2200 CRAH-DH-02 L2 Checklist | 1d | 2026-03-02 | 2026-03-02 | QTS-46591, QTS-15461, QTS-16291, QTS-16341 | 33d | 15d |  | UMAS | Riley Warring |
| DC1-CRAH-L2-2340 |  | DH2200 CRAH-DH-03 L2 Checklist | 1d | 2026-03-02 | 2026-03-02 | QTS-46591, QTS-15461, QTS-16291, QTS-16341 | 33d | 14d |  | UMAS | Riley Warring |
| DC1-CRAH-L2-2350 |  | DH2200 CRAH-DH-04 L2 Checklist | 1d | 2026-03-02 | 2026-03-02 | QTS-46591, QTS-15461, QTS-16291, QTS-16341 | 33d | 13d |  | UMAS | Riley Warring |
| DC1-CRAH-L2-2360 |  | DH2200 CRAH-DH-05 L2 Checklist | 1d | 2026-03-02 | 2026-03-02 | QTS-46591, QTS-15461, QTS-16291, QTS-16341 | 33d | 16d |  | UMAS | Riley Warring |
| DC1-CRAH-L2-2370 |  | DH2200 CRAH-DH-06 L2 Checklist | 1d | 2026-03-02 | 2026-03-02 | QTS-46591, QTS-15461, QTS-16291, QTS-16341 | 33d | 15d |  | UMAS | Riley Warring |
| DC1-CRAH-L2-2380 |  | DH2200 CRAH-DH-07 L2 Checklist | 1d | 2026-03-02 | 2026-03-02 | QTS-46591, QTS-15461, QTS-16291, QTS-16341 | 33d | 14d |  | UMAS | Riley Warring |
| DC1-CRAH-L2-2390 |  | DH2200 CRAH-DH-08 L2 Checklist | 1d | 2026-03-02 | 2026-03-02 | QTS-46591, QTS-15461, QTS-16291, QTS-16341 | 33d | 16d |  | UMAS | Riley Warring |
| DC1-CRAH-L2-2400 |  | DH2200 CRAH-DH-09 L2 Checklist | 1d | 2026-03-02 | 2026-03-02 | QTS-46591, QTS-15461, QTS-16291, QTS-16341 | 33d | 15d |  | UMAS | Riley Warring |
| DC1-CRAH-L2-2410 |  | DH2200 CRAH-DH-10 L2 Checklist | 1d | 2026-03-02 | 2026-03-02 | QTS-46591, QTS-15461, QTS-16291, QTS-16341 | 33d | 14d |  | UMAS | Riley Warring |
| DC1-CRAH-L2-2420 |  | DH2200 CRAH-DH-11 L2 Checklist | 1d | 2026-03-02 | 2026-03-02 | QTS-46591, QTS-15461, QTS-16291, QTS-16341 | 33d | 16d |  | UMAS | Riley Warring |
| DC1-CRAH-L2-2430 |  | DH2200 CRAH-DH-12 L2 Checklist | 1d | 2026-03-02 | 2026-03-02 | QTS-46591, QTS-15461, QTS-16291, QTS-16341 | 33d | 15d |  | UMAS | Riley Warring |
| DC1-CRAH-L2-2440 |  | DH2200 CRAH-DH-13 L2 Checklist | 1d | 2026-03-02 | 2026-03-02 | QTS-46591, QTS-15461, QTS-16291, QTS-16341 | 33d | 14d |  | UMAS | Riley Warring |
| DC1-CRAH-L2-2450 |  | DH2200 CRAH-DH-14 L2 Checklist | 1d | 2026-03-02 | 2026-03-02 | QTS-46591, QTS-15461, QTS-16291, QTS-16341 | 33d | 13d |  | UMAS | Riley Warring |
| DC1-CRAH-L2-2460 |  | DH2200 CRAH-DH-15 L2 Checklist | 1d | 2026-03-02 | 2026-03-02 | QTS-46591, QTS-16281, QTS-16291, QTS-16341 | 33d | 11d | No Electrical Terms 2203 | UMAS | Riley Warring |
| DC1-CRAH-L2-2470 |  | DH2200 CRAH-DH-16 L2 Checklist | 1d | 2026-03-02 | 2026-03-02 | QTS-46591, QTS-16281, QTS-16291, QTS-16341 | 33d | 12d | No Electrical Terms 2203 | UMAS | Riley Warring |
| DC1-CRAH-L2-2480 |  | DH2200 CRAH-DH-17 L2 Checklist | 1d | 2026-03-02 | 2026-03-02 | QTS-46591, QTS-16281, QTS-16291, QTS-16341 | 33d | 13d | No Electrical Terms 2203 | UMAS | Riley Warring |
| DC1-CRAH-L2-2490 |  | DH2200 CRAH-DH-18 L2 Checklist | 1d | 2026-03-02 | 2026-03-02 | QTS-46591, QTS-16281, QTS-16291, QTS-16341 | 33d | 14d | No Electrical Terms 2203 | UMAS | Riley Warring |
| DC1-CRAH-L2-2500 |  | DH2200 CRAH-DH-19 L2 Checklist | 1d | 2026-03-02 | 2026-03-02 | QTS-46591, QTS-16281, QTS-16291, QTS-16341 | 33d | 15d | No Electrical Terms 2203 | UMAS | Riley Warring |
| DC1-CRAH-L2-2510 |  | DH2200 CRAH-DH-20 L2 Checklist | 1d | 2026-03-02 | 2026-03-02 | QTS-46591, QTS-16281, QTS-16291, QTS-16341 | 33d | 16d | No Electrical Terms 2203 | UMAS | Riley Warring |
| DC1-CRAH-L2-2520 |  | DH2200 CRAH-DH-21 L2 Checklist | 1d | 2026-03-02 | 2026-03-02 | QTS-46591, QTS-16281, QTS-16291, QTS-16341 | 33d | 16d | No Electrical Terms 2203 | UMAS | Riley Warring |
| DC1-CRAH-L2-2530 |  | DH2200 CRAH-DH-22 L2 Checklist | 1d | 2026-03-02 | 2026-03-02 | QTS-46591, QTS-16281, QTS-16291, QTS-16341 | 33d | 12d | No Electrical Terms 2203 | UMAS | Riley Warring |
| DC1-CRAH-L2-2540 |  | DH2200 CRAH-DH-23 L2 Checklist | 1d | 2026-03-02 | 2026-03-02 | QTS-46591, QTS-16281, QTS-16291, QTS-16341 | 33d | 13d | No Electrical Terms 2203 | UMAS | Riley Warring |
| DC1-CRAH-L2-2550 |  | DH2200 CRAH-DH-24 L2 Checklist | 1d | 2026-03-02 | 2026-03-02 | QTS-46591, QTS-16281, QTS-16291, QTS-16341 | 33d | 14d | No Electrical Terms 2203 | UMAS | Riley Warring |
| DC1-CRAH-L2-2560 |  | DH2200 CRAH-DH-25 L2 Checklist | 1d | 2026-03-02 | 2026-03-02 | QTS-46591, QTS-16281, QTS-16291, QTS-16341 | 33d | 15d | No Electrical Terms 2203 | UMAS | Riley Warring |
| DC1-CRAH-L2-2570 |  | DH2200 CRAH-DH-26 L2 Checklist | 1d | 2026-03-02 | 2026-03-02 | QTS-46591, QTS-16281, QTS-16291, QTS-16341 | 33d | 16d | No Electrical Terms 2203 | UMAS | Riley Warring |
| DC1-CRAH-L2-2580 |  | DH2200 CRAH-DH-27 L2 Checklist | 1d | 2026-03-02 | 2026-03-02 | QTS-46591, QTS-16281, QTS-16291, QTS-16341 | 33d | 15d | No Electrical Terms 2203 | UMAS | Riley Warring |
| DC1-CRAH-L2-2590 |  | DH2200 CRAH-DH-28 L2 Checklist | 1d | 2026-03-02 | 2026-03-02 | QTS-46591, QTS-16281, QTS-16291, QTS-16341 | 33d | 16d | No Electrical Terms 2203 | UMAS | Riley Warring |
| DC1-CRAH-L2-2600 |  | DH2200 CRAH-EG2102-01 L2 Checklist | 1d | 2026-03-02 | 2026-03-02 | QTS-46591, QTS-46571, QTS-16291, QTS-16341 | 33d | 15d |  | VER | Riley Warring |
| DC1-CRAH-L2-2610 |  | DH2200 CRAH-EG2102-02 L2 Checklist | 1d | 2026-03-02 | 2026-03-02 | QTS-46591, QTS-46571, QTS-16291, QTS-16341 | 33d | 13d |  | VER | Riley Warring |
| DC1-CRAH-L2-2620 |  | DH2200 CRAH-EG2102-03 L2 Checklist | 1d | 2026-03-02 | 2026-03-02 | QTS-46591, QTS-46571, QTS-16291, QTS-16341 | 33d | 12d |  | VER | Riley Warring |
| DC1-CRAH-L2-2630 |  | DH2200 CRAH-EG2102-04 L2 Checklist | 1d | 2026-03-02 | 2026-03-02 | QTS-46591, QTS-46571, QTS-16291, QTS-16341 | 33d | 10d |  | VER | Riley Warring |
| DC1-DOAS-L2-2020 |  | DH2200 DOAS-01 L2 Checklist | 1d | 2026-03-06 | 2026-03-06 | QTS-46601, QTS-50201 | 29d | 6d |  | TAS | Riley Warring |
| DC1-DOAS-L2-2030 |  | DH2200 DOAS-02 L2 Checklist | 1d | 2026-03-06 | 2026-03-06 | QTS-46601, QTS-50201 | 29d | 12d |  | TAS | Riley Warring |

Notes:
- DC1-CHWP-L2-Cx-2070: Steps: EC Installation Checklist; MC Installation Checklist; CC Installation Checklist; Vendor Pre-Energization Checklist; CXA Pre-Energization Inspection; PEI/Clean-Walk
- DC1-CHWP-L2-Cx-2080: Steps: EC Installation Checklist; MC Installation Checklist; CC Installation Checklist; Vendor Pre-Energization Checklist; CXA Pre-Energization Inspection; PEI/Clean-Walk
- DC1-CHWP-L2-Cx-2090: Steps: EC Installation Checklist; MC Installation Checklist; CC Installation Checklist; Vendor Pre-Energization Checklist; CXA Pre-Energization Inspection; PEI/Clean-Walk
- DC1-CHWP-L2-Cx-2100: Steps: EC Installation Checklist; MC Installation Checklist; CC Installation Checklist; Vendor Pre-Energization Checklist; CXA Pre-Energization Inspection; PEI/Clean-Walk
- DC1-CHWP-L2-Cx-2110: Steps: EC Installation Checklist; MC Installation Checklist; CC Installation Checklist; Vendor Pre-Energization Checklist; CXA Pre-Energization Inspection; PEI/Clean-Walk
- DC1-CHWP-L2-Cx-2120: Steps: EC Installation Checklist; MC Installation Checklist; CC Installation Checklist; Vendor Pre-Energization Checklist; CXA Pre-Energization Inspection; PEI/Clean-Walk
- DC1-CHWP-L2-Cx-2130: Steps: EC Installation Checklist; MC Installation Checklist; CC Installation Checklist; Vendor Pre-Energization Checklist; CXA Pre-Energization Inspection; PEI/Clean-Walk
- DC1-CRAH-L2-2320: Steps: EC Installation Checklist; MC Installation Checklist; CC Installation Checklist; Vendor Pre-Energization Checklist; CXA Pre-Energization Inspection; PEI/Clean-Walk
- DC1-CRAH-L2-2330: Steps: EC Installation Checklist; MC Installation Checklist; CC Installation Checklist; Vendor Pre-Energization Checklist; CXA Pre-Energization Inspection; PEI/Clean-Walk
- DC1-CRAH-L2-2340: Steps: EC Installation Checklist; MC Installation Checklist; CC Installation Checklist; Vendor Pre-Energization Checklist; CXA Pre-Energization Inspection; PEI/Clean-Walk
- DC1-CRAH-L2-2350: Steps: EC Installation Checklist; MC Installation Checklist; CC Installation Checklist; Vendor Pre-Energization Checklist; CXA Pre-Energization Inspection; PEI/Clean-Walk
- DC1-CRAH-L2-2360: Steps: EC Installation Checklist; MC Installation Checklist; CC Installation Checklist; Vendor Pre-Energization Checklist; CXA Pre-Energization Inspection; PEI/Clean-Walk
- DC1-CRAH-L2-2370: Steps: EC Installation Checklist; MC Installation Checklist; CC Installation Checklist; Vendor Pre-Energization Checklist; CXA Pre-Energization Inspection; PEI/Clean-Walk
- DC1-CRAH-L2-2380: Steps: EC Installation Checklist; MC Installation Checklist; CC Installation Checklist; Vendor Pre-Energization Checklist; CXA Pre-Energization Inspection; PEI/Clean-Walk
- DC1-CRAH-L2-2390: Steps: EC Installation Checklist; MC Installation Checklist; CC Installation Checklist; Vendor Pre-Energization Checklist; CXA Pre-Energization Inspection; PEI/Clean-Walk
- DC1-CRAH-L2-2400: Steps: EC Installation Checklist; MC Installation Checklist; CC Installation Checklist; Vendor Pre-Energization Checklist; CXA Pre-Energization Inspection; PEI/Clean-Walk
- DC1-CRAH-L2-2410: Steps: EC Installation Checklist; MC Installation Checklist; CC Installation Checklist; Vendor Pre-Energization Checklist; CXA Pre-Energization Inspection; PEI/Clean-Walk
- DC1-CRAH-L2-2420: Steps: EC Installation Checklist; MC Installation Checklist; CC Installation Checklist; Vendor Pre-Energization Checklist; CXA Pre-Energization Inspection; PEI/Clean-Walk
- DC1-CRAH-L2-2430: Steps: EC Installation Checklist; MC Installation Checklist; CC Installation Checklist; Vendor Pre-Energization Checklist; CXA Pre-Energization Inspection; PEI/Clean-Walk
- DC1-CRAH-L2-2440: Steps: EC Installation Checklist; MC Installation Checklist; CC Installation Checklist; Vendor Pre-Energization Checklist; CXA Pre-Energization Inspection; PEI/Clean-Walk
- DC1-CRAH-L2-2450: Steps: EC Installation Checklist; MC Installation Checklist; CC Installation Checklist; Vendor Pre-Energization Checklist; CXA Pre-Energization Inspection; PEI/Clean-Walk
- DC1-CRAH-L2-2460: Steps: EC Installation Checklist; MC Installation Checklist; CC Installation Checklist; Vendor Pre-Energization Checklist; CXA Pre-Energization Inspection; PEI/Clean-Walk
- DC1-CRAH-L2-2470: Steps: EC Installation Checklist; MC Installation Checklist; CC Installation Checklist; Vendor Pre-Energization Checklist; CXA Pre-Energization Inspection; PEI/Clean-Walk
- DC1-CRAH-L2-2480: Steps: EC Installation Checklist; MC Installation Checklist; CC Installation Checklist; Vendor Pre-Energization Checklist; CXA Pre-Energization Inspection; PEI/Clean-Walk
- DC1-CRAH-L2-2490: Steps: EC Installation Checklist; MC Installation Checklist; CC Installation Checklist; Vendor Pre-Energization Checklist; CXA Pre-Energization Inspection; PEI/Clean-Walk
- DC1-CRAH-L2-2500: Steps: EC Installation Checklist; MC Installation Checklist; CC Installation Checklist; Vendor Pre-Energization Checklist; CXA Pre-Energization Inspection; PEI/Clean-Walk
- DC1-CRAH-L2-2510: Steps: EC Installation Checklist; MC Installation Checklist; CC Installation Checklist; Vendor Pre-Energization Checklist; CXA Pre-Energization Inspection; PEI/Clean-Walk
- DC1-CRAH-L2-2520: Steps: EC Installation Checklist; MC Installation Checklist; CC Installation Checklist; Vendor Pre-Energization Checklist; CXA Pre-Energization Inspection; PEI/Clean-Walk
- DC1-CRAH-L2-2530: Steps: EC Installation Checklist; MC Installation Checklist; CC Installation Checklist; Vendor Pre-Energization Checklist; CXA Pre-Energization Inspection; PEI/Clean-Walk
- DC1-CRAH-L2-2540: Steps: EC Installation Checklist; MC Installation Checklist; CC Installation Checklist; Vendor Pre-Energization Checklist; CXA Pre-Energization Inspection; PEI/Clean-Walk
- DC1-CRAH-L2-2550: Steps: EC Installation Checklist; MC Installation Checklist; CC Installation Checklist; Vendor Pre-Energization Checklist; CXA Pre-Energization Inspection; PEI/Clean-Walk
- DC1-CRAH-L2-2560: Steps: EC Installation Checklist; MC Installation Checklist; CC Installation Checklist; Vendor Pre-Energization Checklist; CXA Pre-Energization Inspection; PEI/Clean-Walk
- DC1-CRAH-L2-2570: Steps: EC Installation Checklist; MC Installation Checklist; CC Installation Checklist; Vendor Pre-Energization Checklist; CXA Pre-Energization Inspection; PEI/Clean-Walk
- DC1-CRAH-L2-2580: Steps: EC Installation Checklist; MC Installation Checklist; CC Installation Checklist; Vendor Pre-Energization Checklist; CXA Pre-Energization Inspection; PEI/Clean-Walk
- DC1-CRAH-L2-2590: Steps: EC Installation Checklist; MC Installation Checklist; CC Installation Checklist; Vendor Pre-Energization Checklist; CXA Pre-Energization Inspection; PEI/Clean-Walk
- DC1-CRAH-L2-2600: Steps: EC Installation Checklist; MC Installation Checklist; CC Installation Checklist; Vendor Pre-Energization Checklist; CXA Pre-Energization Inspection; PEI/Clean-Walk
- DC1-CRAH-L2-2610: Steps: EC Installation Checklist; MC Installation Checklist; CC Installation Checklist; Vendor Pre-Energization Checklist; CXA Pre-Energization Inspection; PEI/Clean-Walk
- DC1-CRAH-L2-2620: Steps: EC Installation Checklist; MC Installation Checklist; CC Installation Checklist; Vendor Pre-Energization Checklist; CXA Pre-Energization Inspection; PEI/Clean-Walk
- DC1-CRAH-L2-2630: Steps: EC Installation Checklist; MC Installation Checklist; CC Installation Checklist; Vendor Pre-Energization Checklist; CXA Pre-Energization Inspection; PEI/Clean-Walk
- DC1-DOAS-L2-2020: Steps: EC Installation Checklist; MC Installation Checklist; CC Installation Checklist; Vendor Pre-Energization Checklist; CXA Pre-Energization Inspection; PEI/Clean-Walk
- DC1-DOAS-L2-2030: Steps: EC Installation Checklist; MC Installation Checklist; CC Installation Checklist; Vendor Pre-Energization Checklist; CXA Pre-Energization Inspection; PEI/Clean-Walk

| ID | WBS | Activity | Duration | Start | Finish | Predecessors | Total float | Free float | Vendor Responsible Party |
| --- | --- | --- | --- | --- | --- | --- | --- | --- | --- |
|  | 03 | **Data Hall 2200 Cx L3** |  | 2026-02-27 | 2026-06-19 |  |  |  |  |
|  | 01 | **DC1-DH2200 Generators Cx L3** |  | 2026-03-03 | 2026-03-24 |  |  |  |  |
|  | 01 | **DC1-DH2200-GEN-A22 Cx L3** |  | 2026-03-03 | 2026-03-06 |  |  |  |  |
| DC1-GEN-L3-CX-2210 |  | DC1-GEN-A22 FTE | 1d | 2026-03-03 | 2026-03-03 | DC1-GEN-L2-2070, DC1-SWD-L3-CX-2210 | 38d | 0d | ROS |
| DC1-GEN-L3-CX-2220 |  | DC1-GEN-A22 L3 Startup | 2d | 2026-03-04 | 2026-03-05 | DC1-GEN-L3-CX-2210 | 38d | 0d | HLT |
| DC1-GEN-L3-CX-2230 |  | DC1-GEN-A22 BMS/EPMS | 1d | 2026-03-06 | 2026-03-06 | DC1-GEN-L3-CX-2220 | 38d | 24d | PRM |
|  | 02 | **DC1-DH2200-GEN-B22 Cx L3** |  | 2026-03-03 | 2026-03-06 |  |  |  |  |
| DC1-GEN-L3-CX-2240 |  | DC1-GEN-B22 FTE | 1d | 2026-03-03 | 2026-03-03 | DC1-GEN-L2-2080, DC1-SWD-L3-CX-2240 | 38d | 0d | ROS |
| DC1-GEN-L3-CX-2250 |  | DC1-GEN-B22 L3 Startup | 2d | 2026-03-04 | 2026-03-05 | DC1-GEN-L3-CX-2240 | 38d | 0d | HLT |
| DC1-GEN-L3-CX-2260 |  | DC1-GEN-B22 BMS/EPMS | 1d | 2026-03-06 | 2026-03-06 | DC1-GEN-L3-CX-2250 | 38d | 24d | PRM |
|  | 03 | **DC1-DH2200-GEN-C22 Cx L3** |  | 2026-03-03 | 2026-03-06 |  |  |  |  |
| DC1-GEN-L3-CX-2270 |  | DC1-GEN-C22 FTE | 1d | 2026-03-03 | 2026-03-03 | DC1-GEN-L2-2090, DC1-SWD-L3-CX-2270 | 38d | 0d | ROS |
| DC1-GEN-L3-CX-2280 |  | DC1-GEN-C22 L3 Startup | 2d | 2026-03-04 | 2026-03-05 | DC1-GEN-L3-CX-2270 | 38d | 0d | HLT |
| DC1-GEN-L3-CX-2290 |  | DC1-GEN-C22 BMS/EPMS | 1d | 2026-03-06 | 2026-03-06 | DC1-GEN-L3-CX-2280 | 38d | 24d | PRM |
|  | 04 | **DC1-DH2200-GEN-D22 Cx L3** |  | 2026-03-06 | 2026-03-11 |  |  |  |  |
| DC1-GEN-L3-CX-2300 |  | DC1-GEN-D22 FTE | 1d | 2026-03-06 | 2026-03-06 | DC1-GEN-L2-2100, DC1-SWD-L3-CX-2300 | 35d | 0d | ROS |
| DC1-GEN-L3-CX-2310 |  | DC1-GEN-D22 L3 Startup | 2d | 2026-03-09 | 2026-03-10 | DC1-GEN-L3-CX-2300 | 35d | 0d | HLT |
| DC1-GEN-L3-CX-2320 |  | DC1-GEN-D22 BMS/EPMS | 1d | 2026-03-11 | 2026-03-11 | DC1-GEN-L3-CX-2310 | 35d | 21d | PRM |
|  | 05 | **DC1-DH2200-GEN-E22 Cx L3** |  | 2026-03-11 | 2026-03-16 |  |  |  |  |
| DC1-GEN-L3-CX-2330 |  | DC1-GEN-E22 FTE | 1d | 2026-03-11 | 2026-03-11 | DC1-GEN-L2-2110, DC1-SWD-L3-CX-2330 | 32d | 0d | ROS |
| DC1-GEN-L3-CX-2340 |  | DC1-GEN-E22 L3 Startup | 2d | 2026-03-12 | 2026-03-13 | DC1-GEN-L3-CX-2330 | 32d | 0d | HLT |
| DC1-GEN-L3-CX-2350 |  | DC1-GEN-E22 BMS/EPMS | 1d | 2026-03-16 | 2026-03-16 | DC1-GEN-L3-CX-2340 | 32d | 18d | PRM |
|  | 06 | **DC1-DH2200-GEN-F22 Cx L3** |  | 2026-03-16 | 2026-03-19 |  |  |  |  |
| DC1-GEN-L3-CX-2360 |  | DC1-GEN-F22 FTE | 1d | 2026-03-16 | 2026-03-16 | DC1-GEN-L2-2120, DC1-SWD-L3-CX-2360 | 29d | 0d | ROS |
| DC1-GEN-L3-CX-2370 |  | DC1-GEN-F22 L3 Startup | 2d | 2026-03-17 | 2026-03-18 | DC1-GEN-L3-CX-2360 | 29d | 0d | HLT |
| DC1-GEN-L3-CX-2380 |  | DC1-GEN-F22 BMS/EPMS | 1d | 2026-03-19 | 2026-03-19 | DC1-GEN-L3-CX-2370 | 29d | 15d | PRM |

Notes:
- DC1-GEN-L3-CX-2220: Steps: EC Startup Report; Vendor Startup
- DC1-GEN-L3-CX-2250: Steps: EC Startup Report; Vendor Startup
- DC1-GEN-L3-CX-2280: Steps: EC Startup Report; Vendor Startup
- DC1-GEN-L3-CX-2310: Steps: EC Startup Report; Vendor Startup
- DC1-GEN-L3-CX-2340: Steps: EC Startup Report; Vendor Startup
- DC1-GEN-L3-CX-2370: Steps: EC Startup Report; Vendor Startup

| ID | WBS | Activity | Duration | Start | Finish | Predecessors | Total float | Free float | Vendor Responsible Party | Notes | Layton Responsible Party |
| --- | --- | --- | --- | --- | --- | --- | --- | --- | --- | --- | --- |
|  | 07 | **DC1-DH2200-GEN-R22 Cx L3** |  | 2026-03-19 | 2026-03-24 |  |  |  |  |  |  |
| DC1-GEN-L3-CX-2390 |  | DC1-GEN-R22 FTE | 1d | 2026-03-19 | 2026-03-19 | DC1-GEN-L2-2130, DC1-SWD-L3-CX-2390 | 26d | 0d | ROS |  |  |
| DC1-GEN-L3-CX-2400 |  | DC1-GEN-R22 L3 Startup | 2d | 2026-03-20 | 2026-03-23 | DC1-GEN-L3-CX-2390 | 26d | 0d | HLT |  |  |
| DC1-GEN-L3-CX-2410 |  | DC1-GEN-R22 BMS/EPMS | 1d | 2026-03-24 | 2026-03-24 | DC1-GEN-L3-CX-2400 | 26d | 12d | PRM |  |  |
|  | 02 | **DC1-DH2200 MV XFMRs Cx L3** |  | 2026-02-27 | 2026-03-05 |  |  |  |  |  |  |
|  | 01 | **DC1-DH2200 MV-XFMR-A22 Cx L3** |  | 2026-03-02 | 2026-03-05 |  |  |  |  |  |  |
| DC1-XFM-L3-CX-1210 |  | DC1-XFMR-A22 FTE | 1d | 2026-03-02 | 2026-03-02 | DC1-XFMR-L2-2070, DC1-SWD-L2-2070, DC1-XFMR-L2-2120 | 10d | 0d | ROS | MVG FTE Pred | Riley Warring |
| DC1-XFM-L3-CX-1220 |  | DC1-XFMR-A22 L3 Startup | 2d | 2026-03-03 | 2026-03-04 | DC1-XFM-L3-CX-1210 | 39d | 0d | VTC |  |  |
| DC1-XFM-L3-CX-1230 |  | DC1-XFMR-A22 BMS/EPMS | 1d | 2026-03-05 | 2026-03-05 | DC1-XFM-L3-CX-1220 | 39d | 25d | PRM |  |  |
|  | 02 | **DC1-DH2200 MV-XFMR-B22 Cx L3** |  | 2026-03-02 | 2026-03-05 |  |  |  |  |  |  |
| DC1-XFM-L3-CX-1240 |  | DC1-XFMR-B22 FTE | 1d | 2026-03-02 | 2026-03-02 | DC1-XFMR-L2-2080, DC1-SWD-L2-2080, DC1-XFMR-L2-2120 | 10d | 0d | ROS | MVG FTE Pred | Riley Warring |
| DC1-XFM-L3-CX-1250 |  | DC1-XFMR-B22 L3 Startup | 2d | 2026-03-03 | 2026-03-04 | DC1-XFM-L3-CX-1240 | 39d | 0d | VTC |  |  |
| DC1-XFM-L3-CX-1260 |  | DC1-XFMR-B22 BMS/EPMS | 1d | 2026-03-05 | 2026-03-05 | DC1-XFM-L3-CX-1250 | 39d | 25d | PRM |  |  |
|  | 03 | **DC1-DH2200 MV-XFMR-C22 Cx L3** |  | 2026-03-02 | 2026-03-05 |  |  |  |  |  |  |
| DC1-XFM-L3-CX-1270 |  | DC1-XFMR-C22 FTE | 1d | 2026-03-02 | 2026-03-02 | DC1-XFMR-L2-2090, DC1-SWD-L2-2090, DC1-XFMR-L2-2120 | 10d | 0d | ROS | MVG FTE Pred | Riley Warring |
| DC1-XFM-L3-CX-1280 |  | DC1-XFMR-C22 L3 Startup | 2d | 2026-03-03 | 2026-03-04 | DC1-XFM-L3-CX-1270 | 39d | 0d | VTC |  |  |
| DC1-XFM-L3-CX-1290 |  | DC1-XFMR-C22 BMS/EPMS | 1d | 2026-03-05 | 2026-03-05 | DC1-XFM-L3-CX-1280 | 39d | 25d | PRM |  |  |
|  | 04 | **DC1-DH2200 MV-XFMR-D22 Cx L3** |  | 2026-03-02 | 2026-03-05 |  |  |  |  |  |  |
| DC1-XFM-L3-CX-1300 |  | DC1-XFMR-D22 FTE | 1d | 2026-03-02 | 2026-03-02 | DC1-XFMR-L2-2100, DC1-SWD-L2-2100, DC1-XFMR-L2-2120 | 10d | 0d | ROS | MVG FTE Pred | Riley Warring |
| DC1-XFM-L3-CX-1310 |  | DC1-XFMR-D22 L3 Startup | 2d | 2026-03-03 | 2026-03-04 | DC1-XFM-L3-CX-1300 | 39d | 0d | VTC |  |  |
| DC1-XFM-L3-CX-1320 |  | DC1-XFMR-D22 BMS/EPMS | 1d | 2026-03-05 | 2026-03-05 | DC1-XFM-L3-CX-1310 | 39d | 25d | PRM |  |  |
|  | 05 | **DC1-DH2200 MV-XFMR-E22 Cx L3** |  | 2026-03-02 | 2026-03-05 |  |  |  |  |  |  |
| DC1-XFM-L3-CX-1330 |  | DC1-XFMR-E22 FTE | 1d | 2026-03-02 | 2026-03-02 | DC1-XFMR-L2-2110, DC1-SWD-L2-2110, DC1-XFMR-L2-2120 | 10d | 0d | ROS | MVG FTE Pred | Riley Warring |
| DC1-XFM-L3-CX-1340 |  | DC1-XFMR-E22 L3 Startup | 2d | 2026-03-03 | 2026-03-04 | DC1-XFM-L3-CX-1330 | 39d | 0d | VTC |  |  |
| DC1-XFM-L3-CX-1350 |  | DC1-XFMR-E22 BMS/EPMS | 1d | 2026-03-05 | 2026-03-05 | DC1-XFM-L3-CX-1340 | 39d | 25d | PRM |  |  |

Notes:
- DC1-GEN-L3-CX-2400: Steps: EC Startup Report; Vendor Startup
- DC1-XFM-L3-CX-1220: Steps: EC Startup Report; Vendor Startup
- DC1-XFM-L3-CX-1250: Steps: EC Startup Report; Vendor Startup
- DC1-XFM-L3-CX-1280: Steps: EC Startup Report; Vendor Startup
- DC1-XFM-L3-CX-1310: Steps: EC Startup Report; Vendor Startup
- DC1-XFM-L3-CX-1340: Steps: EC Startup Report; Vendor Startup

| ID | WBS | Activity | Duration | Start | Finish | Predecessors | Total float | Free float | Layton Responsible Party | Vendor Responsible Party | Notes |
| --- | --- | --- | --- | --- | --- | --- | --- | --- | --- | --- | --- |
|  | 06 | **DC1-DH2200 MV-XFMR-F22 Cx L3** |  | 2026-03-02 | 2026-03-05 |  |  |  |  |  |  |
| DC1-XFM-L3-CX-1360 |  | DC1-XFMR-F22 FTE | 1d | 2026-03-02 | 2026-03-02 | DC1-XFMR-L2-2120, DC1-SWD-L2-2120 | 10d | 0d | Riley Warring | ROS |  |
| DC1-XFM-L3-CX-1370 |  | DC1-XFMR-F22 L3 Startup | 2d | 2026-03-03 | 2026-03-04 | DC1-XFM-L3-CX-1360 | 39d | 0d |  | VTC |  |
| DC1-XFM-L3-CX-1380 |  | DC1-XFMR-F22 BMS/EPMS | 1d | 2026-03-05 | 2026-03-05 | DC1-XFM-L3-CX-1370 | 39d | 25d |  | PRM |  |
|  | 07 | **DC1-DH2200 MV-XFMR-R22 Cx L3** |  | 2026-02-27 | 2026-03-04 |  |  |  |  |  |  |
| DC1-XFM-L3-CX-1390 |  | DC1-XFMR-R22 FTE | 1d | 2026-02-27 | 2026-02-27 | DC1-XFMR-L2-2130, DC1-SWD-L2-2130, DC1-SWD-L2-2120 | 11d | 0d | Riley Warring | ROS | MVG FTE Pred |
| DC1-XFM-L3-CX-1400 |  | DC1-XFMR-R22 L3 Startup | 2d | 2026-03-02 | 2026-03-03 | DC1-XFM-L3-CX-1390 | 40d | 0d |  | VTC |  |
| DC1-XFM-L3-CX-1410 |  | DC1-XFMR-R22 BMS/EPMS | 1d | 2026-03-04 | 2026-03-04 | DC1-XFM-L3-CX-1400 | 40d | 26d |  | PRM |  |
|  | 03 | **DC1-DH2200 PODS Cx L3** |  | 2026-02-27 | 2026-03-24 |  |  |  |  |  |  |
|  | 01 | **DC1-DH2200 SWDs Cx L3** |  | 2026-02-27 | 2026-03-05 |  |  |  |  |  |  |
|  | 01 | **DC1-DH2200-SWD-A22 Cx L3** |  | 2026-03-02 | 2026-03-05 |  |  |  |  |  |  |
| DC1-SWD-L3-CX-2210 |  | DC1-SWD-A22 FTE | 1d | 2026-03-02 | 2026-03-02 | DC1-SWD-L2-2070, DC1-XFM-L3-CX-1210 SS | 10d | 0d | Riley Warring | ROS |  |
| DC1-SWD-L3-CX-2220 |  | DC1-SWD-A22 L3 Startup | 2d | 2026-03-03 | 2026-03-04 | DC1-SWD-L3-CX-2210, QTS-1801 | 39d | 0d |  | SIE |  |
| DC1-SWD-L3-CX-2230 |  | DC1-SWD-A22 BMS/EPMS | 1d | 2026-03-05 | 2026-03-05 | DC1-SWD-L3-CX-2220 | 39d | 25d |  | PRM |  |
|  | 02 | **DC1-DH2200-SWD-B22 Cx L3** |  | 2026-03-02 | 2026-03-05 |  |  |  |  |  |  |
| DC1-SWD-L3-CX-2240 |  | DC1-SWD-B22 FTE | 1d | 2026-03-02 | 2026-03-02 | DC1-SWD-L2-2080, DC1-XFM-L3-CX-1240 SS | 10d | 0d | Riley Warring | ROS |  |
| DC1-SWD-L3-CX-2250 |  | DC1-SWD-B22 L3 Startup | 2d | 2026-03-03 | 2026-03-04 | DC1-SWD-L3-CX-2240, QTS-1801 | 39d | 0d |  | SIE |  |
| DC1-SWD-L3-CX-2260 |  | DC1-SWD-B22 BMS/EPMS | 1d | 2026-03-05 | 2026-03-05 | DC1-SWD-L3-CX-2250 | 39d | 25d |  | PRM |  |
|  | 03 | **DC1-DH2200-SWD-C22 Cx L3** |  | 2026-03-02 | 2026-03-05 |  |  |  |  |  |  |
| DC1-SWD-L3-CX-2270 |  | DC1-SWD-C22 FTE | 1d | 2026-03-02 | 2026-03-02 | DC1-SWD-L2-2090, DC1-XFM-L3-CX-1270 SS | 10d | 0d | Riley Warring | ROS |  |
| DC1-SWD-L3-CX-2280 |  | DC1-SWD-C22 L3 Startup | 2d | 2026-03-03 | 2026-03-04 | DC1-SWD-L3-CX-2270, QTS-1801 | 39d | 0d |  | SIE |  |
| DC1-SWD-L3-CX-2290 |  | DC1-SWD-C22 BMS/EPMS | 1d | 2026-03-05 | 2026-03-05 | DC1-SWD-L3-CX-2280 | 39d | 25d |  | PRM |  |
|  | 04 | **DC1-DH2200-SWD-D22 Cx L3** |  | 2026-03-02 | 2026-03-05 |  |  |  |  |  |  |
| DC1-SWD-L3-CX-2300 |  | DC1-SWD-D22 FTE | 1d | 2026-03-02 | 2026-03-02 | DC1-SWD-L2-2100, DC1-XFM-L3-CX-1300 SS | 10d | 0d | Riley Warring | ROS |  |
| DC1-SWD-L3-CX-2310 |  | DC1-SWD-D22 L3 Startup | 2d | 2026-03-03 | 2026-03-04 | DC1-SWD-L3-CX-2300, QTS-1801 | 39d | 0d |  | SIE |  |
| DC1-SWD-L3-CX-2320 |  | DC1-SWD-D22 BMS/EPMS | 1d | 2026-03-05 | 2026-03-05 | DC1-SWD-L3-CX-2310 | 39d | 25d |  | PRM |  |

Notes:
- DC1-XFM-L3-CX-1370: Steps: EC Startup Report; Vendor Startup
- DC1-XFM-L3-CX-1400: Steps: EC Startup Report; Vendor Startup
- DC1-SWD-L3-CX-2220: Steps: EC Startup Report; Vendor Startup
- DC1-SWD-L3-CX-2250: Steps: EC Startup Report; Vendor Startup
- DC1-SWD-L3-CX-2280: Steps: EC Startup Report; Vendor Startup
- DC1-SWD-L3-CX-2310: Steps: EC Startup Report; Vendor Startup

| ID | WBS | Activity | Duration | Start | Finish | Predecessors | Total float | Free float | Layton Responsible Party | Vendor Responsible Party | Notes |
| --- | --- | --- | --- | --- | --- | --- | --- | --- | --- | --- | --- |
|  | 05 | **DC1-DH2200-SWD-E22 Cx L3** |  | 2026-03-02 | 2026-03-05 |  |  |  |  |  |  |
| DC1-SWD-L3-CX-2330 |  | DC1-SWD-E22 FTE | 1d | 2026-03-02 | 2026-03-02 | DC1-SWD-L2-2110, DC1-XFM-L3-CX-1330 SS | 10d | 0d | Riley Warring | ROS |  |
| DC1-SWD-L3-CX-2340 |  | DC1-SWD-E22 L3 Startup | 2d | 2026-03-03 | 2026-03-04 | DC1-SWD-L3-CX-2330, QTS-1801 | 39d | 0d |  | SIE |  |
| DC1-SWD-L3-CX-2350 |  | DC1-SWD-E22 BMS/EPMS | 1d | 2026-03-05 | 2026-03-05 | DC1-SWD-L3-CX-2340 | 39d | 25d |  | PRM |  |
|  | 06 | **DC1-DH2200-SWD-F22 Cx L3** |  | 2026-03-02 | 2026-03-05 |  |  |  |  |  |  |
| DC1-SWD-L3-CX-2360 |  | DC1-SWD-F22 FTE | 1d | 2026-03-02 | 2026-03-02 | DC1-SWD-L2-2120, DC1-XFM-L3-CX-1360 SS | 10d | 0d | Riley Warring | ROS |  |
| DC1-SWD-L3-CX-2370 |  | DC1-SWD-F22 L3 Startup | 2d | 2026-03-03 | 2026-03-04 | DC1-SWD-L3-CX-2360, QTS-1801 | 39d | 0d |  | SIE |  |
| DC1-SWD-L3-CX-2380 |  | DC1-SWD-F22 BMS/EPMS | 1d | 2026-03-05 | 2026-03-05 | DC1-SWD-L3-CX-2370 | 39d | 25d |  | PRM |  |
|  | 07 | **DC1-DH2200-SWD-R22 Cx L3** |  | 2026-02-27 | 2026-03-04 |  |  |  |  |  |  |
| DC1-SWD-L3-CX-2390 |  | DC1-SWD-R22 FTE | 1d | 2026-02-27 | 2026-02-27 | DC1-SWD-L2-2130, DC1-XFM-L3-CX-1390 SS | 11d | 0d | Riley Warring | ROS |  |
| DC1-SWD-L3-CX-2400 |  | DC1-SWD-R22 L3 Startup | 2d | 2026-03-02 | 2026-03-03 | DC1-SWD-L3-CX-2390, QTS-1801 | 40d | 0d |  | SIE |  |
| DC1-SWD-L3-CX-2410 |  | DC1-SWD-R22 BMS/EPMS | 1d | 2026-03-04 | 2026-03-04 | DC1-SWD-L3-CX-2400 | 40d | 26d |  | PRM |  |
|  | 02 | **DC1-DH2200 MOD-01s Cx L3** |  | 2026-02-27 | 2026-03-05 |  |  |  |  |  |  |
|  | 01 | **DC1-DH2200-MOD-A22-01 Cx L3** |  | 2026-03-02 | 2026-03-05 |  |  |  |  |  |  |
| DC1-MOD1-L3-CX-2210 |  | DC1-MOD-01-A22 FTE | 1d | 2026-03-02 | 2026-03-02 | DC1-MOD01-L2-2070, DC1-SWD-L3-CX-2210 SS | 10d | 0d | Riley Warring | ROS |  |
| DC1-MOD1-L3-CX-2220 |  | DC1-MOD-01-A22 L3 Startup | 2d | 2026-03-03 | 2026-03-04 | DC1-MOD1-L3-CX-2210 | 39d | 0d |  | PHE | Vendor Only |
| DC1-MOD1-L3-CX-2230 |  | DC1-MOD-01-A22 BMS/EPMS | 1d | 2026-03-05 | 2026-03-05 | DC1-MOD1-L3-CX-2220 | 39d | 25d |  | PRM |  |
|  | 02 | **DC1-DH2200-MOD-B22-01 Cx L3** |  | 2026-03-02 | 2026-03-05 |  |  |  |  |  |  |
| DC1-MOD1-L3-CX-2240 |  | DC1-MOD-01-B22 FTE | 1d | 2026-03-02 | 2026-03-02 | DC1-MOD01-L2-2080, DC1-SWD-L3-CX-2240 SS | 10d | 0d | Riley Warring | ROS |  |
| DC1-MOD1-L3-CX-2250 |  | DC1-MOD-01-B22 L3 Startup | 2d | 2026-03-03 | 2026-03-04 | DC1-MOD1-L3-CX-2240 | 39d | 0d |  | PHE | Vendor Only |
| DC1-MOD1-L3-CX-2260 |  | DC1-MOD-01-B22 BMS/EPMS | 1d | 2026-03-05 | 2026-03-05 | DC1-MOD1-L3-CX-2250 | 39d | 25d |  | PRM |  |
|  | 03 | **DC1-DH2200-MOD-C22-01 Cx L3** |  | 2026-03-02 | 2026-03-05 |  |  |  |  |  |  |
| DC1-MOD1-L3-CX-2270 |  | DC1-MOD-01-C22 FTE | 1d | 2026-03-02 | 2026-03-02 | DC1-MOD01-L2-2090, DC1-SWD-L3-CX-2270 SS | 10d | 0d | Riley Warring | ROS |  |
| DC1-MOD1-L3-CX-2280 |  | DC1-MOD-01-C22 L3 Startup | 2d | 2026-03-03 | 2026-03-04 | DC1-MOD1-L3-CX-2270 | 39d | 0d |  | PHE | Vendor Only |
| DC1-MOD1-L3-CX-2290 |  | DC1-MOD-01-C22 BMS/EPMS | 1d | 2026-03-05 | 2026-03-05 | DC1-MOD1-L3-CX-2280 | 39d | 25d |  | PRM |  |

Notes:
- DC1-SWD-L3-CX-2340: Steps: EC Startup Report; Vendor Startup
- DC1-SWD-L3-CX-2370: Steps: EC Startup Report; Vendor Startup
- DC1-SWD-L3-CX-2400: Steps: EC Startup Report; Vendor Startup

| ID | WBS | Activity | Duration | Start | Finish | Predecessors | Total float | Free float | Vendor Responsible Party | Notes | Layton Responsible Party |
| --- | --- | --- | --- | --- | --- | --- | --- | --- | --- | --- | --- |
|  | 04 | **DC1-DH2200-MOD-D22-01 Cx L3** |  | 2026-03-02 | 2026-03-05 |  |  |  |  |  |  |
| DC1-MOD1-L3-CX-2300 |  | DC1-MOD-01-D22 FTE | 1d | 2026-03-02 | 2026-03-02 | DC1-MOD01-L2-2100, DC1-SWD-L3-CX-2300 SS | 10d | 0d | ROS |  |  |
| DC1-MOD1-L3-CX-2310 |  | DC1-MOD-01-D22 L3 Startup | 2d | 2026-03-03 | 2026-03-04 | DC1-MOD1-L3-CX-2300 | 39d | 0d | PHE | Vendor Only |  |
| DC1-MOD1-L3-CX-2320 |  | DC1-MOD-01-D22 BMS/EPMS | 1d | 2026-03-05 | 2026-03-05 | DC1-MOD1-L3-CX-2310 | 39d | 25d | PRM |  |  |
|  | 05 | **DC1-DH2200-MOD-E22-01 Cx L3** |  | 2026-03-02 | 2026-03-05 |  |  |  |  |  |  |
| DC1-MOD1-L3-CX-2330 |  | DC1-MOD-01-E22 FTE | 1d | 2026-03-02 | 2026-03-02 | DC1-MOD01-L2-2110, DC1-SWD-L3-CX-2330 SS | 10d | 0d | ROS |  |  |
| DC1-MOD1-L3-CX-2340 |  | DC1-MOD-01-E22 L3 Startup | 2d | 2026-03-03 | 2026-03-04 | DC1-MOD1-L3-CX-2330 | 39d | 0d | PHE | Vendor Only |  |
| DC1-MOD1-L3-CX-2350 |  | DC1-MOD-01-E22 BMS/EPMS | 1d | 2026-03-05 | 2026-03-05 | DC1-MOD1-L3-CX-2340 | 39d | 25d | PRM |  |  |
|  | 06 | **DC1-DH2200-MOD-F22-01 Cx L3** |  | 2026-03-02 | 2026-03-05 |  |  |  |  |  |  |
| DC1-MOD1-L3-CX-2360 |  | DC1-MOD-01-F22 FTE | 1d | 2026-03-02 | 2026-03-02 | DC1-MOD01-L2-2120, DC1-SWD-L3-CX-2360 SS | 10d | 0d | ROS |  |  |
| DC1-MOD1-L3-CX-2370 |  | DC1-MOD-01-F22 L3 Startup | 2d | 2026-03-03 | 2026-03-04 | DC1-MOD1-L3-CX-2360 | 39d | 0d | PHE | Vendor Only |  |
| DC1-MOD1-L3-CX-2380 |  | DC1-MOD-01-F22 BMS/EPMS | 1d | 2026-03-05 | 2026-03-05 | DC1-MOD1-L3-CX-2370 | 39d | 25d | PRM |  |  |
|  | 07 | **DC1-DH2200-MOD-R22-01 Cx L3** |  | 2026-02-27 | 2026-03-04 |  |  |  |  |  |  |
| DC1-MOD1-L3-CX-2390 |  | DC1-MOD-01-R22 FTE | 1d | 2026-02-27 | 2026-02-27 | DC1-MOD01-L2-2130, DC1-SWD-L3-CX-2390 SS | 11d | 0d | ROS |  |  |
| DC1-MOD1-L3-CX-2400 |  | DC1-MOD-01-R22 L3 Startup | 2d | 2026-03-02 | 2026-03-03 | DC1-MOD1-L3-CX-2390 | 40d | 0d | PHE | Vendor Only |  |
| DC1-MOD1-L3-CX-2410 |  | DC1-MOD-01-R22 BMS/EPMS | 1d | 2026-03-04 | 2026-03-04 | DC1-MOD1-L3-CX-2400 | 40d | 26d | PRM |  |  |
|  | 03 | **DC1-DH2200 UPS-M Cx L3** |  | 2026-03-06 | 2026-03-24 |  |  |  |  |  |  |
|  | 01 | **DC1-DH2200-UPS-M-A22-01 Cx L3** |  | 2026-03-06 | 2026-03-11 |  |  |  |  |  |  |
| DC1-UPSM-L3-CX-2210 |  | DC1-UPS-M-A22 FTE | 1d | 2026-03-06 | 2026-03-06 | DC1-UPS-M-L2-2070, DC1-COMP-L3-CX-2220, DC1-FAN-L3-CX-2220, DC1-MOD1-L3-CX-2210 | 10d | 0d | ROS |  | Riley Warring |
| DC1-UPSM-L3-CX-2220 |  | DC1-UPS-M-A22 L3 Startup | 2d | 2026-03-09 | 2026-03-10 | DC1-UPSM-L3-CX-2210 | 35d | 0d | VER |  |  |
| DC1-UPSM-L3-CX-2230 |  | DC1-UPS-M-A22 BMS/EPMS | 1d | 2026-03-11 | 2026-03-11 | DC1-UPSM-L3-CX-2220 | 35d | 21d | PRM |  |  |
|  | 02 | **DC1-DH2200-UPS-M-B22-01 Cx L3** |  | 2026-03-06 | 2026-03-11 |  |  |  |  |  |  |
| DC1-UPSM-L3-CX-2240 |  | DC1-UPS-M-B22 FTE | 1d | 2026-03-06 | 2026-03-06 | DC1-UPS-M-L2-2080, DC1-COMP-L3-CX-2250, DC1-FAN-L3-CX-2250, DC1-MOD1-L3-CX-2240 | 10d | 0d | ROS |  | Riley Warring |
| DC1-UPSM-L3-CX-2250 |  | DC1-UPS-M-B22 L3 Startup | 2d | 2026-03-09 | 2026-03-10 | DC1-UPSM-L3-CX-2240 | 35d | 0d | VER |  |  |
| DC1-UPSM-L3-CX-2260 |  | DC1-UPS-M-B22 BMS/EPMS | 1d | 2026-03-11 | 2026-03-11 | DC1-UPSM-L3-CX-2250 | 35d | 21d | PRM |  |  |

Notes:
- DC1-UPSM-L3-CX-2220: Steps: EC Startup Report; Vendor Startup
- DC1-UPSM-L3-CX-2250: Steps: EC Startup Report; Vendor Startup

| ID | WBS | Activity | Duration | Start | Finish | Predecessors | Total float | Free float | Layton Responsible Party | Vendor Responsible Party | Notes |
| --- | --- | --- | --- | --- | --- | --- | --- | --- | --- | --- | --- |
|  | 03 | **DC1-DH2200-UPS-M-C22-01 Cx L3** |  | 2026-03-10 | 2026-03-13 |  |  |  |  |  |  |
| DC1-UPSM-L3-CX-2270 |  | DC1-UPS-M-C22 FTE | 1d | 2026-03-10 | 2026-03-10 | DC1-UPS-M-L2-2090, DC1-COMP-L3-CX-2280, DC1-FAN-L3-CX-2280, DC1-MOD1-L3-CX-2270 | 8d | 0d | Riley Warring | ROS |  |
| DC1-UPSM-L3-CX-2280 |  | DC1-UPS-M-C22 L3 Startup | 2d | 2026-03-11 | 2026-03-12 | DC1-UPSM-L3-CX-2270 | 33d | 0d |  | VER |  |
| DC1-UPSM-L3-CX-2290 |  | DC1-UPS-M-C22 BMS/EPMS | 1d | 2026-03-13 | 2026-03-13 | DC1-UPSM-L3-CX-2280 | 33d | 19d |  | PRM |  |
|  | 04 | **DC1-DH2200-UPS-M-D22-01 Cx L3** |  | 2026-03-13 | 2026-03-18 |  |  |  |  |  |  |
| DC1-UPSM-L3-CX-2300 |  | DC1-UPS-M-D22 FTE | 1d | 2026-03-13 | 2026-03-13 | DC1-UPS-M-L2-2100, DC1-COMP-L3-CX-2310, DC1-FAN-L3-CX-2310, DC1-MOD1-L3-CX-2300 | 5d | 0d |  | ROS |  |
| DC1-UPSM-L3-CX-2310 |  | DC1-UPS-M-D22 L3 Startup | 2d | 2026-03-16 | 2026-03-17 | DC1-UPSM-L3-CX-2300 | 30d | 0d |  | VER |  |
| DC1-UPSM-L3-CX-2320 |  | DC1-UPS-M-D22 BMS/EPMS | 1d | 2026-03-18 | 2026-03-18 | DC1-UPSM-L3-CX-2310 | 30d | 16d |  | PRM |  |
|  | 05 | **DC1-DH2200-UPS-M-E22-01 Cx L3** |  | 2026-03-16 | 2026-03-19 |  |  |  |  |  |  |
| DC1-UPSM-L3-CX-2330 |  | DC1-UPS-M-E22 FTE | 1d | 2026-03-16 | 2026-03-16 | DC1-UPS-M-L2-2110, DC1-COMP-L3-CX-2340, DC1-FAN-L3-CX-2340, DC1-MOD1-L3-CX-2330 | 4d | 0d |  | ROS |  |
| DC1-UPSM-L3-CX-2340 |  | DC1-UPS-M-E22 L3 Startup | 2d | 2026-03-17 | 2026-03-18 | DC1-UPSM-L3-CX-2330 | 29d | 0d |  | VER |  |
| DC1-UPSM-L3-CX-2350 |  | DC1-UPS-M-E22 BMS/EPMS | 1d | 2026-03-19 | 2026-03-19 | DC1-UPSM-L3-CX-2340 | 29d | 15d |  | PRM |  |
|  | 06 | **DC1-DH2200-UPS-M-F22-01 Cx L3** |  | 2026-03-18 | 2026-03-23 |  |  |  |  |  |  |
| DC1-UPSM-L3-CX-2360 |  | DC1-UPS-M-F22 FTE | 1d | 2026-03-18 | 2026-03-18 | DC1-UPS-M-L2-2120, DC1-COMP-L3-CX-2370, DC1-FAN-L3-CX-2370, DC1-MOD1-L3-CX-2360 | 2d | 0d |  | ROS |  |
| DC1-UPSM-L3-CX-2370 |  | DC1-UPS-M-F22 L3 Startup | 2d | 2026-03-19 | 2026-03-20 | DC1-UPSM-L3-CX-2360 | 27d | 0d |  | VER |  |
| DC1-UPSM-L3-CX-2380 |  | DC1-UPS-M-F22 BMS/EPMS | 1d | 2026-03-23 | 2026-03-23 | DC1-UPSM-L3-CX-2370 | 27d | 13d |  | PRM |  |
|  | 07 | **DC1-DH2200-UPS-M-R22-01 Cx L3** |  | 2026-03-19 | 2026-03-24 |  |  |  |  |  |  |
| DC1-UPSM-L3-CX-2390 |  | DC1-UPS-M-R22 FTE | 1d | 2026-03-19 | 2026-03-19 | DC1-UPS-M-L2-2130, DC1-COMP-L3-CX-2400, DC1-FAN-L3-CX-2400, DC1-MOD1-L3-CX-2390 | 1d | 0d |  | ROS |  |
| DC1-UPSM-L3-CX-2400 |  | DC1-UPS-M-R22 L3 Startup | 2d | 2026-03-20 | 2026-03-23 | DC1-UPSM-L3-CX-2390 | 26d | 0d |  | VER |  |
| DC1-UPSM-L3-CX-2410 |  | DC1-UPS-M-R22 BMS/EPMS | 1d | 2026-03-24 | 2026-03-24 | DC1-UPSM-L3-CX-2400 | 26d | 12d |  | PRM |  |
|  | 04 | **DC1-DH2200 COMPRESSOR/FAN UNITS Cx L3** |  | 2026-03-02 | 2026-03-06 |  |  |  |  |  |  |
|  | 01 | **DC1-DH2200 POD-AC UNITS A22 Cx L3** |  | 2026-03-03 | 2026-03-06 |  |  |  |  |  |  |
| DC1-COMP-L3-CX-2210 |  | DC1-COMP-A22-01 FTE (2) | 1d | 2026-03-03 | 2026-03-03 | DC1-MOD1-L3-CX-2210 | 10d | 0d | Riley Warring | ROS |  |
| DC1-FAN-L3-CX-2210 |  | DC1-FAN-A22-01 FTE (2) | 1d | 2026-03-03 | 2026-03-03 | DC1-MOD1-L3-CX-2210 | 10d | 0d | Riley Warring | ROS |  |
| DC1-COMP-L3-CX-2220 |  | DC1-COMP-A22-01 L3 Startup (2) | 2d | 2026-03-04 | 2026-03-05 | DC1-COMP-L3-CX-2210 | 10d | 0d | Riley Warring | CAP | Vendor Only |
| DC1-FAN-L3-CX-2220 |  | DC1-FAN-A22-01 L3 Startup (2) | 2d | 2026-03-04 | 2026-03-05 | DC1-FAN-L3-CX-2210 | 10d | 0d | Riley Warring | FBB | Vendor Only |
| DC1-COMP-L3-CX-2230 |  | DC1-COMP-A22-01 BMS/EPMS (2) | 1d | 2026-03-06 | 2026-03-06 | DC1-COMP-L3-CX-2220 | 38d | 37d |  | PRM |  |
| DC1-FAN-L3-CX-2230 |  | DC1-FAN-A22-01 BMS/EPMS (2) | 1d | 2026-03-06 | 2026-03-06 | DC1-FAN-L3-CX-2220 | 38d | 37d |  | PRM |  |

Notes:
- DC1-UPSM-L3-CX-2280: Steps: EC Startup Report; Vendor Startup
- DC1-UPSM-L3-CX-2310: Steps: EC Startup Report; Vendor Startup
- DC1-UPSM-L3-CX-2340: Steps: EC Startup Report; Vendor Startup
- DC1-UPSM-L3-CX-2370: Steps: EC Startup Report; Vendor Startup
- DC1-UPSM-L3-CX-2400: Steps: EC Startup Report; Vendor Startup

| ID | WBS | Activity | Duration | Start | Finish | Predecessors | Total float | Free float | Layton Responsible Party | Vendor Responsible Party | Notes |
| --- | --- | --- | --- | --- | --- | --- | --- | --- | --- | --- | --- |
|  | 02 | **DC1-DH2200 POD-AC UNITS B22 Cx L3** |  | 2026-03-03 | 2026-03-06 |  |  |  |  |  |  |
| DC1-COMP-L3-CX-2240 |  | DC1-COMP-B22-01 FTE (2) | 1d | 2026-03-03 | 2026-03-03 | DC1-MOD1-L3-CX-2240 | 10d | 0d | Riley Warring | ROS |  |
| DC1-FAN-L3-CX-2240 |  | DC1-FAN-B22-01 FTE (2) | 1d | 2026-03-03 | 2026-03-03 | DC1-MOD1-L3-CX-2240 | 10d | 0d | Riley Warring | ROS |  |
| DC1-COMP-L3-CX-2250 |  | DC1-COMP-B22-01 L3 Startup (2) | 2d | 2026-03-04 | 2026-03-05 | DC1-COMP-L3-CX-2240 | 10d | 0d | Riley Warring | CAP | Vendor Only |
| DC1-FAN-L3-CX-2250 |  | DC1-FAN-B22-01 L3 Startup (2) | 2d | 2026-03-04 | 2026-03-05 | DC1-FAN-L3-CX-2240 | 10d | 0d | Riley Warring | FBB | Vendor Only |
| DC1-COMP-L3-CX-2260 |  | DC1-COMP-B22-01 BMS/EPMS (2) | 1d | 2026-03-06 | 2026-03-06 | DC1-COMP-L3-CX-2250 | 38d | 37d |  | PRM |  |
| DC1-FAN-L3-CX-2260 |  | DC1-FAN-B22-01 BMS/EPMS (2) | 1d | 2026-03-06 | 2026-03-06 | DC1-FAN-L3-CX-2250 | 38d | 37d |  | PRM |  |
|  | 03 | **DC1-DH2200 POD-AC UNITS C22 Cx L3** |  | 2026-03-03 | 2026-03-06 |  |  |  |  |  |  |
| DC1-COMP-L3-CX-2270 |  | DC1-COMP-C22-01 FTE (2) | 1d | 2026-03-03 | 2026-03-03 | DC1-MOD1-L3-CX-2270 | 10d | 0d | Riley Warring | ROS |  |
| DC1-FAN-L3-CX-2270 |  | DC1-FAN-C22-01 FTE (2) | 1d | 2026-03-03 | 2026-03-03 | DC1-MOD1-L3-CX-2270 | 10d | 0d | Riley Warring | ROS |  |
| DC1-COMP-L3-CX-2280 |  | DC1-COMP-C22-01 L3 Startup (2) | 2d | 2026-03-04 | 2026-03-05 | DC1-COMP-L3-CX-2270 | 10d | 0d | Riley Warring | CAP | Vendor Only |
| DC1-FAN-L3-CX-2280 |  | DC1-FAN-C22-01 L3 Startup (2) | 2d | 2026-03-04 | 2026-03-05 | DC1-FAN-L3-CX-2270 | 10d | 0d | Riley Warring | FBB | Vendor Only |
| DC1-COMP-L3-CX-2290 |  | DC1-COMP-C22-01 BMS/EPMS (2) | 1d | 2026-03-06 | 2026-03-06 | DC1-COMP-L3-CX-2280 | 38d | 37d |  | PRM |  |
| DC1-FAN-L3-CX-2290 |  | DC1-FAN-C22-01 BMS/EPMS (2) | 1d | 2026-03-06 | 2026-03-06 | DC1-FAN-L3-CX-2280 | 38d | 37d |  | PRM |  |
|  | 04 | **DC1-DH2200 POD-AC UNITS D22 Cx L3** |  | 2026-03-03 | 2026-03-06 |  |  |  |  |  |  |
| DC1-COMP-L3-CX-2300 |  | DC1-COMP-D22-01 FTE (2) | 1d | 2026-03-03 | 2026-03-03 | DC1-MOD1-L3-CX-2300 | 10d | 0d |  | ROS |  |
| DC1-FAN-L3-CX-2300 |  | DC1-FAN-D22-01 FTE (2) | 1d | 2026-03-03 | 2026-03-03 | DC1-MOD1-L3-CX-2300 | 10d | 0d |  | ROS |  |
| DC1-COMP-L3-CX-2310 |  | DC1-COMP-D22-01 L3 Startup (2) | 2d | 2026-03-04 | 2026-03-05 | DC1-COMP-L3-CX-2300 | 10d | 0d |  | CAP | Vendor Only |
| DC1-FAN-L3-CX-2310 |  | DC1-FAN-D22-01 L3 Startup (2) | 2d | 2026-03-04 | 2026-03-05 | DC1-FAN-L3-CX-2300 | 10d | 0d |  | FBB | Vendor Only |
| DC1-COMP-L3-CX-2320 |  | DC1-COMP-D22-01 BMS/EPMS (2) | 1d | 2026-03-06 | 2026-03-06 | DC1-COMP-L3-CX-2310 | 38d | 37d |  | PRM |  |
| DC1-FAN-L3-CX-2320 |  | DC1-FAN-D22-01 BMS/EPMS (2) | 1d | 2026-03-06 | 2026-03-06 | DC1-FAN-L3-CX-2310 | 38d | 37d |  | PRM |  |
|  | 05 | **DC1-DH2200 POD-AC UNITS E22 Cx L3** |  | 2026-03-03 | 2026-03-06 |  |  |  |  |  |  |
| DC1-COMP-L3-CX-2330 |  | DC1-COMP-E22-01 FTE (2) | 1d | 2026-03-03 | 2026-03-03 | DC1-MOD1-L3-CX-2330 | 10d | 0d |  | ROS |  |
| DC1-FAN-L3-CX-2330 |  | DC1-FAN-E22-01 FTE (2) | 1d | 2026-03-03 | 2026-03-03 | DC1-MOD1-L3-CX-2330 | 10d | 0d |  | ROS |  |
| DC1-COMP-L3-CX-2340 |  | DC1-COMP-E22-01 L3 Startup (2) | 2d | 2026-03-04 | 2026-03-05 | DC1-COMP-L3-CX-2330 | 10d | 0d |  | CAP | Vendor Only |
| DC1-FAN-L3-CX-2340 |  | DC1-FAN-E22-01 L3 Startup (2) | 2d | 2026-03-04 | 2026-03-05 | DC1-FAN-L3-CX-2330 | 10d | 0d |  | FBB | Vendor Only |
| DC1-COMP-L3-CX-2350 |  | DC1-COMP-E22-01 BMS/EPMS (2) | 1d | 2026-03-06 | 2026-03-06 | DC1-COMP-L3-CX-2340 | 38d | 37d |  | PRM |  |
| DC1-FAN-L3-CX-2350 |  | DC1-FAN-E22-01 BMS/EPMS (2) | 1d | 2026-03-06 | 2026-03-06 | DC1-FAN-L3-CX-2340 | 38d | 37d |  | PRM |  |

| ID | WBS | Activity | Duration | Start | Finish | Predecessors | Total float | Free float | Vendor Responsible Party | Notes | Layton Responsible Party |
| --- | --- | --- | --- | --- | --- | --- | --- | --- | --- | --- | --- |
|  | 06 | **DC1-DH2200 POD-AC UNITS F22 Cx L3** |  | 2026-03-03 | 2026-03-06 |  |  |  |  |  |  |
| DC1-COMP-L3-CX-2360 |  | DC1-COMP-F22-01 FTE (2) | 1d | 2026-03-03 | 2026-03-03 | DC1-MOD1-L3-CX-2360 | 10d | 0d | ROS |  |  |
| DC1-FAN-L3-CX-2360 |  | DC1-FAN-F22-01 FTE (2) | 1d | 2026-03-03 | 2026-03-03 | DC1-MOD1-L3-CX-2360 | 10d | 0d | ROS |  |  |
| DC1-COMP-L3-CX-2370 |  | DC1-COMP-F22-01 L3 Startup (2) | 2d | 2026-03-04 | 2026-03-05 | DC1-COMP-L3-CX-2360 | 10d | 0d | CAP |  |  |
| DC1-FAN-L3-CX-2370 |  | DC1-FAN-F22-01 L3 Startup (2) | 2d | 2026-03-04 | 2026-03-05 | DC1-FAN-L3-CX-2360 | 10d | 0d | FBB | Vendor Only |  |
| DC1-COMP-L3-CX-2380 |  | DC1-COMP-F22-01 BMS/EPMS (2) | 1d | 2026-03-06 | 2026-03-06 | DC1-COMP-L3-CX-2370 | 38d | 37d | PRM |  |  |
| DC1-FAN-L3-CX-2380 |  | DC1-FAN-F22-01 BMS/EPMS (2) | 1d | 2026-03-06 | 2026-03-06 | DC1-FAN-L3-CX-2370 | 38d | 37d | PRM |  |  |
|  | 07 | **DC1-DH2200 POD-AC UNITS R22 Cx L3** |  | 2026-03-02 | 2026-03-05 |  |  |  |  |  |  |
| DC1-COMP-L3-CX-2390 |  | DC1-COMP-R22-01 FTE (2) | 1d | 2026-03-02 | 2026-03-02 | DC1-MOD1-L3-CX-2390 | 11d | 0d | ROS |  |  |
| DC1-FAN-L3-CX-2390 |  | DC1-FAN-R22-01 FTE (2) | 1d | 2026-03-02 | 2026-03-02 | DC1-MOD1-L3-CX-2390 | 11d | 0d | ROS |  |  |
| DC1-COMP-L3-CX-2400 |  | DC1-COMP-R22-01 L3 Startup (2) | 2d | 2026-03-03 | 2026-03-04 | DC1-COMP-L3-CX-2390 | 11d | 0d | CAP | Vendor Only |  |
| DC1-FAN-L3-CX-2400 |  | DC1-FAN-R22-01 L3 Startup (2) | 2d | 2026-03-03 | 2026-03-04 | DC1-FAN-L3-CX-2390 | 11d | 0d | FBB | Vendor Only |  |
| DC1-COMP-L3-CX-2410 |  | DC1-COMP-R22-01 BMS/EPMS (2) | 1d | 2026-03-05 | 2026-03-05 | DC1-COMP-L3-CX-2400 | 39d | 38d | PRM |  |  |
| DC1-FAN-L3-CX-2410 |  | DC1-FAN-R22-01 BMS/EPMS (2) | 1d | 2026-03-05 | 2026-03-05 | DC1-FAN-L3-CX-2400 | 39d | 38d | PRM |  |  |
|  | 04 | **DC1-DH2200 BUS-R1X/BUS-R2X Cx L3** |  | 2026-03-02 | 2026-03-24 |  |  |  |  |  |  |
|  | 01 | **DC1-DH2200 BUS-R2 MAINTENANCE BUS DUCT Cx L3** |  | 2026-03-19 | 2026-03-24 |  |  |  |  |  |  |
| DC1-BUS-L3-CX-2060 |  | DC1-DH2200-BUS-R2 (R22) MAINTENANCE BUS FTE | 1d | 2026-03-19 | 2026-03-19 | DC1-BUS-L2-1020, DC1-SWD-L3-CX-2390 SS, DC1-BUS-L2-1040 | 25d | 0d | ROS | CFCI | Riley Warring |
| DC1-BUS-L3-CX-2070 |  | DC1-DH2200-BUS-R2 (R22) MAINTENANCE BUS L3 Startup | 2d | 2026-03-20 | 2026-03-23 | DC1-BUS-L3-CX-2060 | 26d | 0d | LAY | CFCI |  |
| DC1-BUS-L3-CX-2080 |  | DC1-DH2200-BUS-R2 (R22) MAINTENANCE BUS BMS/EPMS | 1d | 2026-03-24 | 2026-03-24 | DC1-BUS-L3-CX-2070 | 26d | 12d | PRM | CFCI |  |
|  | 02 | **DC1-DH2200 BUS-R1 CATCHER BUS DUCT Cx L3** |  | 2026-03-02 | 2026-03-05 |  |  |  |  |  |  |
| DC1-BUS-L3-CX-2090 |  | DC1-DH2200-BUS-R1 (R12) CATCHER BUS FTE | 1d | 2026-03-02 | 2026-03-02 | DC1-BUS-L2-1030, DC1-BUS-L2-1050, DC1-SWD-L3-CX-2600 | 37d | 0d | ROS | CFCI | Riley Warring |
| DC1-BUS-L3-CX-2100 |  | DC1-DH2200-BUS-R1 (R12) CATCHER BUS L3 Startup | 2d | 2026-03-03 | 2026-03-04 | DC1-BUS-L3-CX-2090 | 39d | 0d | LAY | CFCI |  |
| DC1-BUS-L3-CX-2110 |  | DC1-DH2200-BUS-R1 (R12) CATCHER BUS BMS/EPMS | 1d | 2026-03-05 | 2026-03-05 | DC1-BUS-L3-CX-2100 | 39d | 25d | PRM | CFCI |  |
|  | 05 | **DC1-DH2200 ATS Cx L3** |  | 2026-03-19 | 2026-03-24 |  |  |  |  |  |  |
|  | 01 | **DC1-DH2200 ATS-A22 Cx L3** |  | 2026-03-19 | 2026-03-24 |  |  |  |  |  |  |
|  | 01 | **DC1-DH2200-ATS-A22-01 Cx L3** |  | 2026-03-19 | 2026-03-24 |  |  |  |  |  |  |
| DC1-ATS-L3-CX-2545 |  | DC1-ATS-A22-01 FTE | 1d | 2026-03-19 | 2026-03-19 | DC1-ATS-L2-2360, DC1-BUS-L3-CX-2060 SS, DC1-SWD-L3-CX-2210 SS | 25d | 0d | ROS | SWD - FS | Riley Warring |
| DC1-ATS-L3-CX-2555 |  | DC1-ATS-A22-01 L3 Startup | 2d | 2026-03-20 | 2026-03-23 | DC1-ATS-L3-CX-2545 | 26d | 0d | MAV |  |  |
| DC1-ATS-L3-CX-2565 |  | DC1-ATS-A22-01 BMS/EPMS | 1d | 2026-03-24 | 2026-03-24 | DC1-ATS-L3-CX-2555 | 26d | 12d | PRM |  |  |

Notes:
- DC1-BUS-L3-CX-2070: Steps: EC Startup Report; Vendor Startup
- DC1-BUS-L3-CX-2100: Steps: EC Startup Report; Vendor Startup
- DC1-ATS-L3-CX-2555: Steps: EC Startup Report; Vendor Startup

| ID | WBS | Activity | Duration | Start | Finish | Predecessors | Total float | Free float | Notes | Layton Responsible Party | Vendor Responsible Party |
| --- | --- | --- | --- | --- | --- | --- | --- | --- | --- | --- | --- |
|  | 02 | **DC1-DH2200-ATS-A22-02 Cx L3** |  | 2026-03-19 | 2026-03-24 |  |  |  |  |  |  |
| DC1-ATS-L3-CX-2575 |  | DC1-ATS-A22-02 FTE | 1d | 2026-03-19 | 2026-03-19 | DC1-ATS-L2-2370, DC1-BUS-L3-CX-2060 SS, DC1-BUS-L3-CX-2090 SS | 25d | 0d | SWD - FS | Riley Warring | ROS |
| DC1-ATS-L3-CX-2585 |  | DC1-ATS-A22-02 L3 Startup | 2d | 2026-03-20 | 2026-03-23 | DC1-ATS-L3-CX-2575 | 26d | 0d |  |  | MAV |
| DC1-ATS-L3-CX-2595 |  | DC1-ATS-A22-02 BMS/EPMS | 1d | 2026-03-24 | 2026-03-24 | DC1-ATS-L3-CX-2585 | 26d | 12d |  |  | PRM |
|  | 03 | **DC1-DH2200-ATS-A22-03 Cx L3** |  | 2026-03-19 | 2026-03-24 |  |  |  |  |  |  |
| DC1-ATS-L3-CX-2605 |  | DC1-ATS-A22-03 FTE | 1d | 2026-03-19 | 2026-03-19 | DC1-ATS-L2-2380, DC1-BUS-L3-CX-2060 SS, DC1-SWD-L3-CX-2210 SS | 25d | 0d | SWD - FS | Riley Warring | ROS |
| DC1-ATS-L3-CX-2615 |  | DC1-ATS-A22-03 L3 Startup | 2d | 2026-03-20 | 2026-03-23 | DC1-ATS-L3-CX-2605 | 26d | 0d |  |  | MAV |
| DC1-ATS-L3-CX-2625 |  | DC1-ATS-A22-03 BMS/EPMS | 1d | 2026-03-24 | 2026-03-24 | DC1-ATS-L3-CX-2615 | 26d | 12d |  |  | PRM |
|  | 04 | **DC1-DH2200-ATS-A22-04 Cx L3** |  | 2026-03-19 | 2026-03-24 |  |  |  |  |  |  |
| DC1-ATS-L3-CX-2635 |  | DC1-ATS-A22-04 FTE | 1d | 2026-03-19 | 2026-03-19 | DC1-ATS-L2-2390, DC1-BUS-L3-CX-2060 SS, DC1-BUS-L3-CX-2090 SS | 25d | 0d | SWD - FS | Riley Warring | ROS |
| DC1-ATS-L3-CX-2645 |  | DC1-ATS-A22-04 L3 Startup | 2d | 2026-03-20 | 2026-03-23 | DC1-ATS-L3-CX-2635 | 26d | 0d |  |  | MAV |
| DC1-ATS-L3-CX-2655 |  | DC1-ATS-A22-04 BMS/EPMS | 1d | 2026-03-24 | 2026-03-24 | DC1-ATS-L3-CX-2645 | 26d | 12d |  |  | PRM |
|  | 05 | **DC1-DH2200-ATS-A22-05 Cx L3** |  | 2026-03-19 | 2026-03-24 |  |  |  |  |  |  |
| DC1-ATS-L3-CX-2665 |  | DC1-ATS-A22-05 FTE | 1d | 2026-03-19 | 2026-03-19 | DC1-ATS-L2-2400, DC1-BUS-L3-CX-2060 SS, DC1-SWD-L3-CX-2210 SS | 25d | 0d | SWD - FS | Riley Warring | ROS |
| DC1-ATS-L3-CX-2675 |  | DC1-ATS-A22-05 L3 Startup | 2d | 2026-03-20 | 2026-03-23 | DC1-ATS-L3-CX-2665 | 26d | 0d |  |  | MAV |
| DC1-ATS-L3-CX-2685 |  | DC1-ATS-A22-05 BMS/EPMS | 1d | 2026-03-24 | 2026-03-24 | DC1-ATS-L3-CX-2675 | 26d | 12d |  |  | PRM |
|  | 06 | **DC1-DH2200-ATS-A22-06 Cx L3** |  | 2026-03-19 | 2026-03-24 |  |  |  |  |  |  |
| DC1-ATS-L3-CX-2695 |  | DC1-ATS-A22-06 FTE | 1d | 2026-03-19 | 2026-03-19 | DC1-BUS-L3-CX-2060 SS, DC1-BUS-L3-CX-2090 SS, DC1-ATS-L2-2410 | 25d | 0d | SWD - FS | Riley Warring | ROS |
| DC1-ATS-L3-CX-2705 |  | DC1-ATS-A22-06 L3 Startup | 2d | 2026-03-20 | 2026-03-23 | DC1-ATS-L3-CX-2695 | 26d | 0d |  |  | MAV |
| DC1-ATS-L3-CX-2715 |  | DC1-ATS-A22-06 BMS/EPMS | 1d | 2026-03-24 | 2026-03-24 | DC1-ATS-L3-CX-2705 | 26d | 12d |  |  | PRM |
|  | 02 | **DC1-DH2200 ATS-B22 Cx L3** |  | 2026-03-19 | 2026-03-24 |  |  |  |  |  |  |
|  | 01 | **DC1-DH2200-ATS-B22-01 Cx L3** |  | 2026-03-19 | 2026-03-24 |  |  |  |  |  |  |
| DC1-ATS-L3-CX-2725 |  | DC1-ATS-B22-01 FTE | 1d | 2026-03-19 | 2026-03-19 | DC1-ATS-L2-2420, DC1-BUS-L3-CX-2060 SS, DC1-SWD-L3-CX-2240 SS | 25d | 0d |  | Riley Warring | ROS |
| DC1-ATS-L3-CX-2735 |  | DC1-ATS-B22-01 L3 Startup | 2d | 2026-03-20 | 2026-03-23 | DC1-ATS-L3-CX-2725 | 26d | 0d |  |  | MAV |
| DC1-ATS-L3-CX-2745 |  | DC1-ATS-B22-01 BMS/EPMS | 1d | 2026-03-24 | 2026-03-24 | DC1-ATS-L3-CX-2735 | 26d | 12d |  |  | PRM |

Notes:
- DC1-ATS-L3-CX-2585: Steps: EC Startup Report; Vendor Startup
- DC1-ATS-L3-CX-2615: Steps: EC Startup Report; Vendor Startup
- DC1-ATS-L3-CX-2645: Steps: EC Startup Report; Vendor Startup
- DC1-ATS-L3-CX-2675: Steps: EC Startup Report; Vendor Startup
- DC1-ATS-L3-CX-2705: Steps: EC Startup Report; Vendor Startup
- DC1-ATS-L3-CX-2735: Steps: EC Startup Report; Vendor Startup

| ID | WBS | Activity | Duration | Start | Finish | Predecessors | Total float | Free float | Layton Responsible Party | Vendor Responsible Party |
| --- | --- | --- | --- | --- | --- | --- | --- | --- | --- | --- |
|  | 02 | **DC1-DH2200-ATS-B22-02 Cx L3** |  | 2026-03-19 | 2026-03-24 |  |  |  |  |  |
| DC1-ATS-L3-CX-2755 |  | DC1-ATS-B22-02 FTE | 1d | 2026-03-19 | 2026-03-19 | DC1-ATS-L2-2430, DC1-BUS-L3-CX-2060 SS, DC1-BUS-L3-CX-2090 | 25d | 0d | Riley Warring | ROS |
| DC1-ATS-L3-CX-2765 |  | DC1-ATS-B22-02 L3 Startup | 2d | 2026-03-20 | 2026-03-23 | DC1-ATS-L3-CX-2755 | 26d | 0d |  | MAV |
| DC1-ATS-L3-CX-2775 |  | DC1-ATS-B22-02 BMS/EPMS | 1d | 2026-03-24 | 2026-03-24 | DC1-ATS-L3-CX-2765 | 26d | 12d |  | PRM |
|  | 03 | **DC1-DH2200-ATS-B22-03 Cx L3** |  | 2026-03-19 | 2026-03-24 |  |  |  |  |  |
| DC1-ATS-L3-CX-2785 |  | DC1-ATS-B22-03 FTE | 1d | 2026-03-19 | 2026-03-19 | DC1-ATS-L2-2440, DC1-BUS-L3-CX-2060 SS, DC1-SWD-L3-CX-2240 SS | 25d | 0d | Riley Warring | ROS |
| DC1-ATS-L3-CX-2795 |  | DC1-ATS-B22-03 L3 Startup | 2d | 2026-03-20 | 2026-03-23 | DC1-ATS-L3-CX-2785 | 26d | 0d |  | MAV |
| DC1-ATS-L3-CX-2805 |  | DC1-ATS-B22-03 BMS/EPMS | 1d | 2026-03-24 | 2026-03-24 | DC1-ATS-L3-CX-2795 | 26d | 12d |  | PRM |
|  | 04 | **DC1-DH2200-ATS-B22-04 Cx L3** |  | 2026-03-19 | 2026-03-24 |  |  |  |  |  |
| DC1-ATS-L3-CX-2815 |  | DC1-ATS-B22-04 FTE | 1d | 2026-03-19 | 2026-03-19 | DC1-ATS-L2-2450, DC1-BUS-L3-CX-2060 SS, DC1-BUS-L3-CX-2090 | 25d | 0d | Riley Warring | ROS |
| DC1-ATS-L3-CX-2825 |  | DC1-ATS-B22-04 L3 Startup | 2d | 2026-03-20 | 2026-03-23 | DC1-ATS-L3-CX-2815 | 26d | 0d |  | MAV |
| DC1-ATS-L3-CX-2835 |  | DC1-ATS-B22-04 BMS/EPMS | 1d | 2026-03-24 | 2026-03-24 | DC1-ATS-L3-CX-2825 | 26d | 12d |  | PRM |
|  | 05 | **DC1-DH2200-ATS-B22-05 Cx L3** |  | 2026-03-19 | 2026-03-24 |  |  |  |  |  |
| DC1-ATS-L3-CX-2845 |  | DC1-ATS-B22-05 FTE | 1d | 2026-03-19 | 2026-03-19 | DC1-ATS-L2-2460, DC1-BUS-L3-CX-2060 SS, DC1-SWD-L3-CX-2240 SS | 25d | 0d | Riley Warring | ROS |
| DC1-ATS-L3-CX-2855 |  | DC1-ATS-B22-05 L3 Startup | 2d | 2026-03-20 | 2026-03-23 | DC1-ATS-L3-CX-2845 | 26d | 0d |  | MAV |
| DC1-ATS-L3-CX-2865 |  | DC1-ATS-B22-05 BMS/EPMS | 1d | 2026-03-24 | 2026-03-24 | DC1-ATS-L3-CX-2855 | 26d | 12d |  | PRM |
|  | 06 | **DC1-DH2200-ATS-B22-06 Cx L3** |  | 2026-03-19 | 2026-03-24 |  |  |  |  |  |
| DC1-ATS-L3-CX-2875 |  | DC1-ATS-B22-06 FTE | 1d | 2026-03-19 | 2026-03-19 | DC1-ATS-L2-2470, DC1-BUS-L3-CX-2060 SS, DC1-BUS-L3-CX-2090 | 25d | 0d | Riley Warring | ROS |
| DC1-ATS-L3-CX-2885 |  | DC1-ATS-B22-06 L3 Startup | 2d | 2026-03-20 | 2026-03-23 | DC1-ATS-L3-CX-2875 | 26d | 0d |  | MAV |
| DC1-ATS-L3-CX-2895 |  | DC1-ATS-B22-06 BMS/EPMS | 1d | 2026-03-24 | 2026-03-24 | DC1-ATS-L3-CX-2885 | 26d | 12d |  | PRM |
|  | 03 | **DC1-DH2200 ATS-C22 Cx L3** |  | 2026-03-19 | 2026-03-24 |  |  |  |  |  |
|  | 01 | **DC1-DH2200-ATS-C22-01 Cx L3** |  | 2026-03-19 | 2026-03-24 |  |  |  |  |  |
| DC1-ATS-L3-CX-2905 |  | DC1-ATS-C22-01 FTE | 1d | 2026-03-19 | 2026-03-19 | DC1-ATS-L2-2480, DC1-BUS-L3-CX-2060 SS, DC1-SWD-L3-CX-2270 SS | 25d | 0d | Riley Warring | ROS |
| DC1-ATS-L3-CX-2915 |  | DC1-ATS-C22-01 L3 Startup | 2d | 2026-03-20 | 2026-03-23 | DC1-ATS-L3-CX-2905 | 26d | 0d |  | MAV |
| DC1-ATS-L3-CX-2925 |  | DC1-ATS-C22-01 BMS/EPMS | 1d | 2026-03-24 | 2026-03-24 | DC1-ATS-L3-CX-2915 | 26d | 12d |  | PRM |

Notes:
- DC1-ATS-L3-CX-2765: Steps: EC Startup Report; Vendor Startup
- DC1-ATS-L3-CX-2795: Steps: EC Startup Report; Vendor Startup
- DC1-ATS-L3-CX-2825: Steps: EC Startup Report; Vendor Startup
- DC1-ATS-L3-CX-2855: Steps: EC Startup Report; Vendor Startup
- DC1-ATS-L3-CX-2885: Steps: EC Startup Report; Vendor Startup
- DC1-ATS-L3-CX-2915: Steps: EC Startup Report; Vendor Startup

| ID | WBS | Activity | Duration | Start | Finish | Predecessors | Total float | Free float | Layton Responsible Party | Vendor Responsible Party |
| --- | --- | --- | --- | --- | --- | --- | --- | --- | --- | --- |
|  | 02 | **DC1-DH2200-ATS-C22-02 Cx L3** |  | 2026-03-19 | 2026-03-24 |  |  |  |  |  |
| DC1-ATS-L3-CX-2935 |  | DC1-ATS-C22-02 FTE | 1d | 2026-03-19 | 2026-03-19 | DC1-ATS-L2-2490, DC1-BUS-L3-CX-2060 SS, DC1-BUS-L3-CX-2090 | 25d | 0d | Riley Warring | ROS |
| DC1-ATS-L3-CX-2945 |  | DC1-ATS-C22-02 L3 Startup | 2d | 2026-03-20 | 2026-03-23 | DC1-ATS-L3-CX-2935 | 26d | 0d |  | MAV |
| DC1-ATS-L3-CX-2955 |  | DC1-ATS-C22-02 BMS/EPMS | 1d | 2026-03-24 | 2026-03-24 | DC1-ATS-L3-CX-2945 | 26d | 12d |  | PRM |
|  | 03 | **DC1-DH2200-ATS-C22-03 Cx L3** |  | 2026-03-19 | 2026-03-24 |  |  |  |  |  |
| DC1-ATS-L3-CX-2965 |  | DC1-ATS-C22-03 FTE | 1d | 2026-03-19 | 2026-03-19 | DC1-ATS-L2-2500, DC1-BUS-L3-CX-2060 SS, DC1-SWD-L3-CX-2270 SS | 25d | 0d | Riley Warring | ROS |
| DC1-ATS-L3-CX-2975 |  | DC1-ATS-C22-03 L3 Startup | 2d | 2026-03-20 | 2026-03-23 | DC1-ATS-L3-CX-2965 | 26d | 0d |  | MAV |
| DC1-ATS-L3-CX-2985 |  | DC1-ATS-C22-03 BMS/EPMS | 1d | 2026-03-24 | 2026-03-24 | DC1-ATS-L3-CX-2975 | 26d | 12d |  | PRM |
|  | 04 | **DC1-DH2200-ATS-C22-04 Cx L3** |  | 2026-03-19 | 2026-03-24 |  |  |  |  |  |
| DC1-ATS-L3-CX-2995 |  | DC1-ATS-C22-04 FTE | 1d | 2026-03-19 | 2026-03-19 | DC1-ATS-L2-2510, DC1-BUS-L3-CX-2060 SS, DC1-BUS-L3-CX-2090 | 25d | 0d | Riley Warring | ROS |
| DC1-ATS-L3-CX-3005 |  | DC1-ATS-C22-04 L3 Startup | 2d | 2026-03-20 | 2026-03-23 | DC1-ATS-L3-CX-2995 | 26d | 0d |  | MAV |
| DC1-ATS-L3-CX-3015 |  | DC1-ATS-C22-04 BMS/EPMS | 1d | 2026-03-24 | 2026-03-24 | DC1-ATS-L3-CX-3005 | 26d | 12d |  | PRM |
|  | 05 | **DC1-DH2200-ATS-C22-05 Cx L3** |  | 2026-03-19 | 2026-03-24 |  |  |  |  |  |
| DC1-ATS-L3-CX-3025 |  | DC1-ATS-C22-05 FTE | 1d | 2026-03-19 | 2026-03-19 | DC1-ATS-L2-2520, DC1-BUS-L3-CX-2060 SS, DC1-SWD-L3-CX-2270 SS | 25d | 0d | Riley Warring | ROS |
| DC1-ATS-L3-CX-3035 |  | DC1-ATS-C22-05 L3 Startup | 2d | 2026-03-20 | 2026-03-23 | DC1-ATS-L3-CX-3025 | 26d | 0d |  | MAV |
| DC1-ATS-L3-CX-3045 |  | DC1-ATS-C22-05 BMS/EPMS | 1d | 2026-03-24 | 2026-03-24 | DC1-ATS-L3-CX-3035 | 26d | 12d |  | PRM |
|  | 06 | **DC1-DH2200-ATS-C22-06 Cx L3** |  | 2026-03-19 | 2026-03-24 |  |  |  |  |  |
| DC1-ATS-L3-CX-3055 |  | DC1-ATS-C22-06 FTE | 1d | 2026-03-19 | 2026-03-19 | DC1-ATS-L2-2530, DC1-BUS-L3-CX-2060 SS, DC1-BUS-L3-CX-2090 | 25d | 0d | Riley Warring | ROS |
| DC1-ATS-L3-CX-3065 |  | DC1-ATS-C22-06 L3 Startup | 2d | 2026-03-20 | 2026-03-23 | DC1-ATS-L3-CX-3055 | 26d | 0d |  | MAV |
| DC1-ATS-L3-CX-3075 |  | DC1-ATS-C22-06 BMS/EPMS | 1d | 2026-03-24 | 2026-03-24 | DC1-ATS-L3-CX-3065 | 26d | 12d |  | PRM |
|  | 04 | **DC1-DH2200 ATS-D22 Cx L3** |  | 2026-03-19 | 2026-03-24 |  |  |  |  |  |
|  | 01 | **DC1-DH2200-ATS-D22-01 Cx L3** |  | 2026-03-19 | 2026-03-24 |  |  |  |  |  |
| DC1-ATS-L3-CX-3085 |  | DC1-ATS-D22-01 FTE | 1d | 2026-03-19 | 2026-03-19 | DC1-ATS-L2-2540, DC1-BUS-L3-CX-2060 SS, DC1-SWD-L3-CX-2300 SS | 25d | 0d | Riley Warring | ROS |
| DC1-ATS-L3-CX-3095 |  | DC1-ATS-D22-01 L3 Startup | 2d | 2026-03-20 | 2026-03-23 | DC1-ATS-L3-CX-3085 | 26d | 0d |  | MAV |
| DC1-ATS-L3-CX-3105 |  | DC1-ATS-D22-01 BMS/EPMS | 1d | 2026-03-24 | 2026-03-24 | DC1-ATS-L3-CX-3095 | 26d | 12d |  | PRM |

Notes:
- DC1-ATS-L3-CX-2945: Steps: EC Startup Report; Vendor Startup
- DC1-ATS-L3-CX-2975: Steps: EC Startup Report; Vendor Startup
- DC1-ATS-L3-CX-3005: Steps: EC Startup Report; Vendor Startup
- DC1-ATS-L3-CX-3035: Steps: EC Startup Report; Vendor Startup
- DC1-ATS-L3-CX-3065: Steps: EC Startup Report; Vendor Startup
- DC1-ATS-L3-CX-3095: Steps: EC Startup Report; Vendor Startup

| ID | WBS | Activity | Duration | Start | Finish | Predecessors | Total float | Free float | Layton Responsible Party | Vendor Responsible Party |
| --- | --- | --- | --- | --- | --- | --- | --- | --- | --- | --- |
|  | 02 | **DC1-DH2200-ATS-D22-02 Cx L3** |  | 2026-03-19 | 2026-03-24 |  |  |  |  |  |
| DC1-ATS-L3-CX-3115 |  | DC1-ATS-D22-02 FTE | 1d | 2026-03-19 | 2026-03-19 | DC1-ATS-L2-2550, DC1-BUS-L3-CX-2060 SS, DC1-BUS-L3-CX-2090 | 25d | 0d | Riley Warring | ROS |
| DC1-ATS-L3-CX-3125 |  | DC1-ATS-D22-02 L3 Startup | 2d | 2026-03-20 | 2026-03-23 | DC1-ATS-L3-CX-3115 | 26d | 0d |  | MAV |
| DC1-ATS-L3-CX-3135 |  | DC1-ATS-D22-02 BMS/EPMS | 1d | 2026-03-24 | 2026-03-24 | DC1-ATS-L3-CX-3125 | 26d | 12d |  | PRM |
|  | 03 | **DC1-DH2200-ATS-D22-03 Cx L3** |  | 2026-03-19 | 2026-03-24 |  |  |  |  |  |
| DC1-ATS-L3-CX-3145 |  | DC1-ATS-D22-03 FTE | 1d | 2026-03-19 | 2026-03-19 | DC1-ATS-L2-2560, DC1-BUS-L3-CX-2060 SS, DC1-SWD-L3-CX-2300 SS | 25d | 0d | Riley Warring | ROS |
| DC1-ATS-L3-CX-3155 |  | DC1-ATS-D22-03 L3 Startup | 2d | 2026-03-20 | 2026-03-23 | DC1-ATS-L3-CX-3145 | 26d | 0d |  | MAV |
| DC1-ATS-L3-CX-3165 |  | DC1-ATS-D22-03 BMS/EPMS | 1d | 2026-03-24 | 2026-03-24 | DC1-ATS-L3-CX-3155 | 26d | 12d |  | PRM |
|  | 04 | **DC1-DH2200-ATS-D22-04 Cx L3** |  | 2026-03-19 | 2026-03-24 |  |  |  |  |  |
| DC1-ATS-L3-CX-3175 |  | DC1-ATS-D22-04 FTE | 1d | 2026-03-19 | 2026-03-19 | DC1-ATS-L2-2570, DC1-BUS-L3-CX-2060 SS, DC1-BUS-L3-CX-2090 | 25d | 0d | Riley Warring | ROS |
| DC1-ATS-L3-CX-3185 |  | DC1-ATS-D22-04 L3 Startup | 2d | 2026-03-20 | 2026-03-23 | DC1-ATS-L3-CX-3175 | 26d | 0d |  | MAV |
| DC1-ATS-L3-CX-3195 |  | DC1-ATS-D22-04 BMS/EPMS | 1d | 2026-03-24 | 2026-03-24 | DC1-ATS-L3-CX-3185 | 26d | 12d |  | PRM |
|  | 05 | **DC1-DH2200-ATS-D22-05 Cx L3** |  | 2026-03-19 | 2026-03-24 |  |  |  |  |  |
| DC1-ATS-L3-CX-3205 |  | DC1-ATS-D22-05 FTE | 1d | 2026-03-19 | 2026-03-19 | DC1-ATS-L2-2580, DC1-BUS-L3-CX-2060 SS, DC1-SWD-L3-CX-2300 SS | 25d | 0d | Riley Warring | ROS |
| DC1-ATS-L3-CX-3215 |  | DC1-ATS-D22-05 L3 Startup | 2d | 2026-03-20 | 2026-03-23 | DC1-ATS-L3-CX-3205 | 26d | 0d |  | MAV |
| DC1-ATS-L3-CX-3225 |  | DC1-ATS-D22-05 BMS/EPMS | 1d | 2026-03-24 | 2026-03-24 | DC1-ATS-L3-CX-3215 | 26d | 12d |  | PRM |
|  | 06 | **DC1-DH2200-ATS-D22-06 Cx L3** |  | 2026-03-19 | 2026-03-24 |  |  |  |  |  |
| DC1-ATS-L3-CX-3235 |  | DC1-ATS-D22-06 FTE | 1d | 2026-03-19 | 2026-03-19 | DC1-ATS-L2-2590, DC1-BUS-L3-CX-2060 SS, DC1-BUS-L3-CX-2090 | 25d | 0d | Riley Warring | ROS |
| DC1-ATS-L3-CX-3245 |  | DC1-ATS-D22-06 L3 Startup | 2d | 2026-03-20 | 2026-03-23 | DC1-ATS-L3-CX-3235 | 26d | 0d |  | MAV |
| DC1-ATS-L3-CX-3255 |  | DC1-ATS-D22-06 BMS/EPMS | 1d | 2026-03-24 | 2026-03-24 | DC1-ATS-L3-CX-3245 | 26d | 12d |  | PRM |
|  | 05 | **DC1-DH2200 ATS-E22 Cx L3** |  | 2026-03-19 | 2026-03-24 |  |  |  |  |  |
|  | 01 | **DC1-DH2200-ATS-E22-01 Cx L3** |  | 2026-03-19 | 2026-03-24 |  |  |  |  |  |
| DC1-ATS-L3-CX-3265 |  | DC1-ATS-E22-01 FTE | 1d | 2026-03-19 | 2026-03-19 | DC1-ATS-L2-2600, DC1-BUS-L3-CX-2060 SS, DC1-SWD-L3-CX-2330 SS | 25d | 0d | Riley Warring | ROS |
| DC1-ATS-L3-CX-3275 |  | DC1-ATS-E22-01 L3 Startup | 2d | 2026-03-20 | 2026-03-23 | DC1-ATS-L3-CX-3265 | 26d | 0d |  | MAV |
| DC1-ATS-L3-CX-3285 |  | DC1-ATS-E22-01 BMS/EPMS | 1d | 2026-03-24 | 2026-03-24 | DC1-ATS-L3-CX-3275 | 26d | 12d |  | PRM |

Notes:
- DC1-ATS-L3-CX-3125: Steps: EC Startup Report; Vendor Startup
- DC1-ATS-L3-CX-3155: Steps: EC Startup Report; Vendor Startup
- DC1-ATS-L3-CX-3185: Steps: EC Startup Report; Vendor Startup
- DC1-ATS-L3-CX-3215: Steps: EC Startup Report; Vendor Startup
- DC1-ATS-L3-CX-3245: Steps: EC Startup Report; Vendor Startup
- DC1-ATS-L3-CX-3275: Steps: EC Startup Report; Vendor Startup

| ID | WBS | Activity | Duration | Start | Finish | Predecessors | Total float | Free float | Layton Responsible Party | Vendor Responsible Party |
| --- | --- | --- | --- | --- | --- | --- | --- | --- | --- | --- |
|  | 02 | **DC1-DH2200-ATS-E22-02 Cx L3** |  | 2026-03-19 | 2026-03-24 |  |  |  |  |  |
| DC1-ATS-L3-CX-3295 |  | DC1-ATS-E22-02 FTE | 1d | 2026-03-19 | 2026-03-19 | DC1-ATS-L2-2610, DC1-BUS-L3-CX-2060 SS, DC1-BUS-L3-CX-2090 | 25d | 0d | Riley Warring | ROS |
| DC1-ATS-L3-CX-3305 |  | DC1-ATS-E22-02 L3 Startup | 2d | 2026-03-20 | 2026-03-23 | DC1-ATS-L3-CX-3295 | 26d | 0d |  | MAV |
| DC1-ATS-L3-CX-3315 |  | DC1-ATS-E22-02 BMS/EPMS | 1d | 2026-03-24 | 2026-03-24 | DC1-ATS-L3-CX-3305 | 26d | 12d |  | PRM |
|  | 03 | **DC1-DH2200-ATS-E22-03 Cx L3** |  | 2026-03-19 | 2026-03-24 |  |  |  |  |  |
| DC1-ATS-L3-CX-3325 |  | DC1-ATS-E22-03 FTE | 1d | 2026-03-19 | 2026-03-19 | DC1-ATS-L2-2620, DC1-BUS-L3-CX-2060 SS, DC1-SWD-L3-CX-2330 SS | 25d | 0d | Riley Warring | ROS |
| DC1-ATS-L3-CX-3335 |  | DC1-ATS-E22-03 L3 Startup | 2d | 2026-03-20 | 2026-03-23 | DC1-ATS-L3-CX-3325 | 26d | 0d |  | MAV |
| DC1-ATS-L3-CX-3345 |  | DC1-ATS-E22-03 BMS/EPMS | 1d | 2026-03-24 | 2026-03-24 | DC1-ATS-L3-CX-3335 | 26d | 12d |  | PRM |
|  | 04 | **DC1-DH2200-ATS-E22-04 Cx L3** |  | 2026-03-19 | 2026-03-24 |  |  |  |  |  |
| DC1-ATS-L3-CX-3355 |  | DC1-ATS-E22-04 FTE | 1d | 2026-03-19 | 2026-03-19 | DC1-ATS-L2-2630, DC1-BUS-L3-CX-2060 SS, DC1-BUS-L3-CX-2090 | 25d | 0d | Riley Warring | ROS |
| DC1-ATS-L3-CX-3365 |  | DC1-ATS-E22-04 L3 Startup | 2d | 2026-03-20 | 2026-03-23 | DC1-ATS-L3-CX-3355 | 26d | 0d |  | MAV |
| DC1-ATS-L3-CX-3375 |  | DC1-ATS-E22-04 BMS/EPMS | 1d | 2026-03-24 | 2026-03-24 | DC1-ATS-L3-CX-3365 | 26d | 12d |  | PRM |
|  | 05 | **DC1-DH2200-ATS-E22-05 Cx L3** |  | 2026-03-19 | 2026-03-24 |  |  |  |  |  |
| DC1-ATS-L3-CX-3385 |  | DC1-ATS-E22-05 FTE | 1d | 2026-03-19 | 2026-03-19 | DC1-ATS-L2-2640, DC1-BUS-L3-CX-2060 SS, DC1-SWD-L3-CX-2330 SS | 25d | 0d | Riley Warring | ROS |
| DC1-ATS-L3-CX-3395 |  | DC1-ATS-E22-05 L3 Startup | 2d | 2026-03-20 | 2026-03-23 | DC1-ATS-L3-CX-3385 | 26d | 0d |  | MAV |
| DC1-ATS-L3-CX-3405 |  | DC1-ATS-E22-05 BMS/EPMS | 1d | 2026-03-24 | 2026-03-24 | DC1-ATS-L3-CX-3395 | 26d | 12d |  | PRM |
|  | 06 | **DC1-DH2200-ATS-E22-06 Cx L3** |  | 2026-03-19 | 2026-03-24 |  |  |  |  |  |
| DC1-ATS-L3-CX-3415 |  | DC1-ATS-E22-06 FTE | 1d | 2026-03-19 | 2026-03-19 | DC1-ATS-L2-2650, DC1-BUS-L3-CX-2060 SS, DC1-BUS-L3-CX-2090 | 25d | 0d | Riley Warring | ROS |
| DC1-ATS-L3-CX-3425 |  | DC1-ATS-E22-06 L3 Startup | 2d | 2026-03-20 | 2026-03-23 | DC1-ATS-L3-CX-3415 | 26d | 0d |  | MAV |
| DC1-ATS-L3-CX-3435 |  | DC1-ATS-E22-06 BMS/EPMS | 1d | 2026-03-24 | 2026-03-24 | DC1-ATS-L3-CX-3425 | 26d | 12d |  | PRM |
|  | 06 | **DC1-DH2200 ATS-F22 Cx L3** |  | 2026-03-19 | 2026-03-24 |  |  |  |  |  |
|  | 01 | **DC1-DH2200-ATS-F22-01 Cx L3** |  | 2026-03-19 | 2026-03-24 |  |  |  |  |  |
| DC1-ATS-L3-CX-3445 |  | DC1-ATS-F22-01 FTE | 1d | 2026-03-19 | 2026-03-19 | DC1-ATS-L2-2660, DC1-BUS-L3-CX-2060 SS, DC1-SWD-L3-CX-2360 SS | 25d | 0d | Riley Warring | ROS |
| DC1-ATS-L3-CX-3455 |  | DC1-ATS-F22-01 L3 Startup | 2d | 2026-03-20 | 2026-03-23 | DC1-ATS-L3-CX-3445 | 26d | 0d |  | MAV |
| DC1-ATS-L3-CX-3465 |  | DC1-ATS-F22-01 BMS/EPMS | 1d | 2026-03-24 | 2026-03-24 | DC1-ATS-L3-CX-3455 | 26d | 12d |  | PRM |

Notes:
- DC1-ATS-L3-CX-3305: Steps: EC Startup Report; Vendor Startup
- DC1-ATS-L3-CX-3335: Steps: EC Startup Report; Vendor Startup
- DC1-ATS-L3-CX-3365: Steps: EC Startup Report; Vendor Startup
- DC1-ATS-L3-CX-3395: Steps: EC Startup Report; Vendor Startup
- DC1-ATS-L3-CX-3425: Steps: EC Startup Report; Vendor Startup
- DC1-ATS-L3-CX-3455: Steps: EC Startup Report; Vendor Startup

| ID | WBS | Activity | Duration | Start | Finish | Predecessors | Total float | Free float | Layton Responsible Party | Vendor Responsible Party |
| --- | --- | --- | --- | --- | --- | --- | --- | --- | --- | --- |
|  | 02 | **DC1-DH2200-ATS-F22-02 Cx L3** |  | 2026-03-19 | 2026-03-24 |  |  |  |  |  |
| DC1-ATS-L3-CX-3475 |  | DC1-ATS-F22-02 FTE | 1d | 2026-03-19 | 2026-03-19 | DC1-ATS-L2-2670, DC1-BUS-L3-CX-2060 SS, DC1-BUS-L3-CX-2090 | 25d | 0d | Riley Warring | ROS |
| DC1-ATS-L3-CX-3485 |  | DC1-ATS-F22-02 L3 Startup | 2d | 2026-03-20 | 2026-03-23 | DC1-ATS-L3-CX-3475 | 26d | 0d |  | MAV |
| DC1-ATS-L3-CX-3495 |  | DC1-ATS-F22-02 BMS/EPMS | 1d | 2026-03-24 | 2026-03-24 | DC1-ATS-L3-CX-3485 | 26d | 12d |  | PRM |
|  | 03 | **DC1-DH2200-ATS-F22-03 Cx L3** |  | 2026-03-19 | 2026-03-24 |  |  |  |  |  |
| DC1-ATS-L3-CX-3505 |  | DC1-ATS-F22-03 FTE | 1d | 2026-03-19 | 2026-03-19 | DC1-ATS-L2-2680, DC1-BUS-L3-CX-2060 SS, DC1-SWD-L3-CX-2360 SS | 25d | 0d | Riley Warring | ROS |
| DC1-ATS-L3-CX-3515 |  | DC1-ATS-F22-03 L3 Startup | 2d | 2026-03-20 | 2026-03-23 | DC1-ATS-L3-CX-3505 | 26d | 0d |  | MAV |
| DC1-ATS-L3-CX-3525 |  | DC1-ATS-F22-03 BMS/EPMS | 1d | 2026-03-24 | 2026-03-24 | DC1-ATS-L3-CX-3515 | 26d | 12d |  | PRM |
|  | 04 | **DC1-DH2200-ATS-F22-04 Cx L3** |  | 2026-03-19 | 2026-03-24 |  |  |  |  |  |
| DC1-ATS-L3-CX-3535 |  | DC1-ATS-F22-04 FTE | 1d | 2026-03-19 | 2026-03-19 | DC1-ATS-L2-2690, DC1-BUS-L3-CX-2060 SS, DC1-BUS-L3-CX-2090 | 25d | 0d | Riley Warring | ROS |
| DC1-ATS-L3-CX-3545 |  | DC1-ATS-F22-04 L3 Startup | 2d | 2026-03-20 | 2026-03-23 | DC1-ATS-L3-CX-3535 | 26d | 0d |  | MAV |
| DC1-ATS-L3-CX-3555 |  | DC1-ATS-F22-04 BMS/EPMS | 1d | 2026-03-24 | 2026-03-24 | DC1-ATS-L3-CX-3545 | 26d | 12d |  | PRM |
|  | 05 | **DC1-DH2200-ATS-F22-05 Cx L3** |  | 2026-03-19 | 2026-03-24 |  |  |  |  |  |
| DC1-ATS-L3-CX-3565 |  | DC1-ATS-F22-05 FTE | 1d | 2026-03-19 | 2026-03-19 | DC1-ATS-L2-2700, DC1-BUS-L3-CX-2060 SS, DC1-SWD-L3-CX-2360 SS | 25d | 0d | Riley Warring | ROS |
| DC1-ATS-L3-CX-3575 |  | DC1-ATS-F22-05 L3 Startup | 2d | 2026-03-20 | 2026-03-23 | DC1-ATS-L3-CX-3565 | 26d | 0d |  | MAV |
| DC1-ATS-L3-CX-3585 |  | DC1-ATS-F22-05 BMS/EPMS | 1d | 2026-03-24 | 2026-03-24 | DC1-ATS-L3-CX-3575 | 26d | 12d |  | PRM |
|  | 06 | **DC1-DH2200-ATS-F22-06 Cx L3** |  | 2026-03-19 | 2026-03-24 |  |  |  |  |  |
| DC1-ATS-L3-CX-3595 |  | DC1-ATS-F22-06 FTE | 1d | 2026-03-19 | 2026-03-19 | DC1-ATS-L2-2710, DC1-BUS-L3-CX-2060 SS, DC1-BUS-L3-CX-2090 | 25d | 0d | Riley Warring | ROS |
| DC1-ATS-L3-CX-3605 |  | DC1-ATS-F22-06 L3 Startup | 2d | 2026-03-20 | 2026-03-23 | DC1-ATS-L3-CX-3595 | 26d | 0d |  | MAV |
| DC1-ATS-L3-CX-3615 |  | DC1-ATS-F22-06 BMS/EPMS | 1d | 2026-03-24 | 2026-03-24 | DC1-ATS-L3-CX-3605 | 26d | 12d |  | PRM |
|  | 06 | **DC1-DH2200 CODs Cx L3** |  | 2026-03-20 | 2026-03-30 |  |  |  |  |  |
|  | 01 | **DC1-DH2200-COD-A22 Cx L3** |  | 2026-03-20 | 2026-03-25 |  |  |  |  |  |
|  | 01 | **DC1-DH2200-COD-A22-01 Cx L3** |  | 2026-03-20 | 2026-03-25 |  |  |  |  |  |
| DC1-COD-L3-CX-2545 |  | DC1-COD-A22-01 FTE | 1d | 2026-03-20 | 2026-03-20 | DC1-COD-L2-2360, DC1-ATS-L3-CX-2545, QTS-1080.3 FF | 25d | 0d | Riley Warring | ROS |
| DC1-COD-L3-CX-2555 |  | DC1-COD-A22-01 L3 Startup | 2d | 2026-03-23 | 2026-03-24 | DC1-COD-L3-CX-2545 | 25d | 0d | Riley Warring | SIE |
| DC1-COD-L3-CX-2565 |  | DC1-COD-A22-01 BMS/EPMS | 1d | 2026-03-25 | 2026-03-25 | DC1-COD-L3-CX-2555 | 25d | 11d | Riley Warring | PRM |

Notes:
- DC1-ATS-L3-CX-3485: Steps: EC Startup Report; Vendor Startup
- DC1-ATS-L3-CX-3515: Steps: EC Startup Report; Vendor Startup
- DC1-ATS-L3-CX-3545: Steps: EC Startup Report; Vendor Startup
- DC1-ATS-L3-CX-3575: Steps: EC Startup Report; Vendor Startup
- DC1-ATS-L3-CX-3605: Steps: EC Startup Report; Vendor Startup
- DC1-COD-L3-CX-2555: Steps: EC Startup Report; Vendor Startup

| ID | WBS | Activity | Duration | Start | Finish | Predecessors | Total float | Free float | Layton Responsible Party | Vendor Responsible Party |
| --- | --- | --- | --- | --- | --- | --- | --- | --- | --- | --- |
|  | 02 | **DC1-DH2200-COD-A22-02 Cx L3** |  | 2026-03-20 | 2026-03-25 |  |  |  |  |  |
| DC1-COD-L3-CX-2575 |  | DC1-COD-A22-02 FTE | 1d | 2026-03-20 | 2026-03-20 | DC1-COD-L2-2370, DC1-ATS-L3-CX-2575 | 25d | 0d | Riley Warring | ROS |
| DC1-COD-L3-CX-2585 |  | DC1-COD-A22-02 L3 Startup | 2d | 2026-03-23 | 2026-03-24 | DC1-COD-L3-CX-2575 | 25d | 0d | Riley Warring | SIE |
| DC1-COD-L3-CX-2595 |  | DC1-COD-A22-02 BMS/EPMS | 1d | 2026-03-25 | 2026-03-25 | DC1-COD-L3-CX-2585 | 25d | 11d | Riley Warring | PRM |
|  | 03 | **DC1-DH2200-COD-A22-03 Cx L3** |  | 2026-03-20 | 2026-03-25 |  |  |  |  |  |
| DC1-COD-L3-CX-2605 |  | DC1-COD-A22-03 FTE | 1d | 2026-03-20 | 2026-03-20 | DC1-COD-L2-2380, DC1-ATS-L3-CX-2605 | 25d | 0d | Riley Warring | ROS |
| DC1-COD-L3-CX-2615 |  | DC1-COD-A22-03 L3 Startup | 2d | 2026-03-23 | 2026-03-24 | DC1-COD-L3-CX-2605 | 25d | 0d | Riley Warring | SIE |
| DC1-COD-L3-CX-2625 |  | DC1-COD-A22-03 BMS/EPMS | 1d | 2026-03-25 | 2026-03-25 | DC1-COD-L3-CX-2615 | 25d | 11d | Riley Warring | PRM |
|  | 04 | **DC1-DH2200-COD-A22-04 Cx L3** |  | 2026-03-20 | 2026-03-25 |  |  |  |  |  |
| DC1-COD-L3-CX-2635 |  | DC1-COD-A22-04 FTE | 1d | 2026-03-20 | 2026-03-20 | DC1-COD-L2-2390, DC1-ATS-L3-CX-2635 | 25d | 0d | Riley Warring | ROS |
| DC1-COD-L3-CX-2645 |  | DC1-COD-A22-04 L3 Startup | 2d | 2026-03-23 | 2026-03-24 | DC1-COD-L3-CX-2635 | 25d | 0d | Riley Warring | SIE |
| DC1-COD-L3-CX-2655 |  | DC1-COD-A22-04 BMS/EPMS | 1d | 2026-03-25 | 2026-03-25 | DC1-COD-L3-CX-2645 | 25d | 11d | Riley Warring | PRM |
|  | 05 | **DC1-DH2200-COD-A22-05 Cx L3** |  | 2026-03-20 | 2026-03-25 |  |  |  |  |  |
| DC1-COD-L3-CX-2665 |  | DC1-COD-A22-05 FTE | 1d | 2026-03-20 | 2026-03-20 | DC1-COD-L2-2400, DC1-ATS-L3-CX-2665 | 25d | 0d | Riley Warring | ROS |
| DC1-COD-L3-CX-2675 |  | DC1-COD-A22-05 L3 Startup | 2d | 2026-03-23 | 2026-03-24 | DC1-COD-L3-CX-2665 | 25d | 0d | Riley Warring | SIE |
| DC1-COD-L3-CX-2685 |  | DC1-COD-A22-05 BMS/EPMS | 1d | 2026-03-25 | 2026-03-25 | DC1-COD-L3-CX-2675 | 25d | 11d | Riley Warring | PRM |
|  | 06 | **DC1-DH2200-COD-A22-06 Cx L3** |  | 2026-03-20 | 2026-03-25 |  |  |  |  |  |
| DC1-COD-L3-CX-2695 |  | DC1-COD-A22-06 FTE | 1d | 2026-03-20 | 2026-03-20 | DC1-COD-L2-2410, DC1-ATS-L3-CX-2695 | 25d | 0d | Riley Warring | ROS |
| DC1-COD-L3-CX-2705 |  | DC1-COD-A22-06 L3 Startup | 2d | 2026-03-23 | 2026-03-24 | DC1-COD-L3-CX-2695 | 25d | 0d | Riley Warring | SIE |
| DC1-COD-L3-CX-2715 |  | DC1-COD-A22-06 BMS/EPMS | 1d | 2026-03-25 | 2026-03-25 | DC1-COD-L3-CX-2705 | 25d | 11d | Riley Warring | PRM |
|  | 02 | **DC1-DH2200-COD-B22 Cx L3** |  | 2026-03-20 | 2026-03-25 |  |  |  |  |  |
|  | 01 | **DC1-DH2200-COD-B22-01 Cx L3** |  | 2026-03-20 | 2026-03-25 |  |  |  |  |  |
| DC1-COD-L3-CX-2725 |  | DC1-COD-B22-01 FTE | 1d | 2026-03-20 | 2026-03-20 | DC1-COD-L2-2420, DC1-ATS-L3-CX-2725, QTS-1080.3 FF | 25d | 0d | Riley Warring | ROS |
| DC1-COD-L3-CX-2735 |  | DC1-COD-B22-01 L3 Startup | 2d | 2026-03-23 | 2026-03-24 | DC1-COD-L3-CX-2725 | 25d | 0d | Riley Warring | SIE |
| DC1-COD-L3-CX-2745 |  | DC1-COD-B22-01 BMS/EPMS | 1d | 2026-03-25 | 2026-03-25 | DC1-COD-L3-CX-2735 | 25d | 11d | Riley Warring | PRM |

Notes:
- DC1-COD-L3-CX-2585: Steps: EC Startup Report; Vendor Startup
- DC1-COD-L3-CX-2615: Steps: EC Startup Report; Vendor Startup
- DC1-COD-L3-CX-2645: Steps: EC Startup Report; Vendor Startup
- DC1-COD-L3-CX-2675: Steps: EC Startup Report; Vendor Startup
- DC1-COD-L3-CX-2705: Steps: EC Startup Report; Vendor Startup
- DC1-COD-L3-CX-2735: Steps: EC Startup Report; Vendor Startup

| ID | WBS | Activity | Duration | Start | Finish | Predecessors | Total float | Free float | Layton Responsible Party | Vendor Responsible Party |
| --- | --- | --- | --- | --- | --- | --- | --- | --- | --- | --- |
|  | 02 | **DC1-DH2200-COD-B22-02 Cx L3** |  | 2026-03-20 | 2026-03-25 |  |  |  |  |  |
| DC1-COD-L3-CX-2755 |  | DC1-COD-B22-02 FTE | 1d | 2026-03-20 | 2026-03-20 | DC1-COD-L2-2430, DC1-ATS-L3-CX-2755 | 25d | 0d | Riley Warring | ROS |
| DC1-COD-L3-CX-2765 |  | DC1-COD-B22-02 L3 Startup | 2d | 2026-03-23 | 2026-03-24 | DC1-COD-L3-CX-2755 | 25d | 0d | Riley Warring | SIE |
| DC1-COD-L3-CX-2775 |  | DC1-COD-B22-02 BMS/EPMS | 1d | 2026-03-25 | 2026-03-25 | DC1-COD-L3-CX-2765 | 25d | 11d | Riley Warring | PRM |
|  | 03 | **DC1-DH2200-COD-B22-03 Cx L3** |  | 2026-03-20 | 2026-03-25 |  |  |  |  |  |
| DC1-COD-L3-CX-2785 |  | DC1-COD-B22-03 FTE | 1d | 2026-03-20 | 2026-03-20 | DC1-COD-L2-2440, DC1-ATS-L3-CX-2785 | 25d | 0d | Riley Warring | ROS |
| DC1-COD-L3-CX-2795 |  | DC1-COD-B22-03 L3 Startup | 2d | 2026-03-23 | 2026-03-24 | DC1-COD-L3-CX-2785 | 25d | 0d | Riley Warring | SIE |
| DC1-COD-L3-CX-2805 |  | DC1-COD-B22-03 BMS/EPMS | 1d | 2026-03-25 | 2026-03-25 | DC1-COD-L3-CX-2795 | 25d | 11d | Riley Warring | PRM |
|  | 04 | **DC1-DH2200-COD-B22-04 Cx L3** |  | 2026-03-20 | 2026-03-25 |  |  |  |  |  |
| DC1-COD-L3-CX-2815 |  | DC1-COD-B22-04 FTE | 1d | 2026-03-20 | 2026-03-20 | DC1-COD-L2-2450, DC1-ATS-L3-CX-2815 | 25d | 0d | Riley Warring | ROS |
| DC1-COD-L3-CX-2825 |  | DC1-COD-B22-04 L3 Startup | 2d | 2026-03-23 | 2026-03-24 | DC1-COD-L3-CX-2815 | 25d | 0d | Riley Warring | SIE |
| DC1-COD-L3-CX-2835 |  | DC1-COD-B22-04 BMS/EPMS | 1d | 2026-03-25 | 2026-03-25 | DC1-COD-L3-CX-2825 | 25d | 11d | Riley Warring | PRM |
|  | 05 | **DC1-DH2200-COD-B22-05 Cx L3** |  | 2026-03-20 | 2026-03-25 |  |  |  |  |  |
| DC1-COD-L3-CX-2845 |  | DC1-COD-B22-05 FTE | 1d | 2026-03-20 | 2026-03-20 | DC1-COD-L2-2460, DC1-ATS-L3-CX-2845 | 25d | 0d | Riley Warring | ROS |
| DC1-COD-L3-CX-2855 |  | DC1-COD-B22-05 L3 Startup | 2d | 2026-03-23 | 2026-03-24 | DC1-COD-L3-CX-2845 | 25d | 0d | Riley Warring | SIE |
| DC1-COD-L3-CX-2865 |  | DC1-COD-B22-05 BMS/EPMS | 1d | 2026-03-25 | 2026-03-25 | DC1-COD-L3-CX-2855 | 25d | 11d | Riley Warring | PRM |
|  | 06 | **DC1-DH2200-COD-B22-06 Cx L3** |  | 2026-03-20 | 2026-03-25 |  |  |  |  |  |
| DC1-COD-L3-CX-2875 |  | DC1-COD-B22-06 FTE | 1d | 2026-03-20 | 2026-03-20 | DC1-COD-L2-2470, DC1-ATS-L3-CX-2875 | 25d | 0d | Riley Warring | ROS |
| DC1-COD-L3-CX-2885 |  | DC1-COD-B22-06 L3 Startup | 2d | 2026-03-23 | 2026-03-24 | DC1-COD-L3-CX-2875 | 25d | 0d | Riley Warring | SIE |
| DC1-COD-L3-CX-2895 |  | DC1-COD-B22-06 BMS/EPMS | 1d | 2026-03-25 | 2026-03-25 | DC1-COD-L3-CX-2885 | 25d | 11d | Riley Warring | PRM |
|  | 03 | **DC1-DH2200-COD-C22 Cx L3** |  | 2026-03-20 | 2026-03-25 |  |  |  |  |  |
|  | 01 | **DC1-DH2200-COD-C22-01 Cx L3** |  | 2026-03-20 | 2026-03-25 |  |  |  |  |  |
| DC1-COD-L3-CX-2905 |  | DC1-COD-C22-01 FTE | 1d | 2026-03-20 | 2026-03-20 | DC1-COD-L2-2480, DC1-ATS-L3-CX-2905, QTS-1080.3 FF | 25d | 0d | Riley Warring | ROS |
| DC1-COD-L3-CX-2915 |  | DC1-COD-C22-01 L3 Startup | 2d | 2026-03-23 | 2026-03-24 | DC1-COD-L3-CX-2905 | 25d | 0d | Riley Warring | SIE |
| DC1-COD-L3-CX-2925 |  | DC1-COD-C22-01 BMS/EPMS | 1d | 2026-03-25 | 2026-03-25 | DC1-COD-L3-CX-2915 | 25d | 11d | Riley Warring | PRM |

Notes:
- DC1-COD-L3-CX-2765: Steps: EC Startup Report; Vendor Startup
- DC1-COD-L3-CX-2795: Steps: EC Startup Report; Vendor Startup
- DC1-COD-L3-CX-2825: Steps: EC Startup Report; Vendor Startup
- DC1-COD-L3-CX-2855: Steps: EC Startup Report; Vendor Startup
- DC1-COD-L3-CX-2885: Steps: EC Startup Report; Vendor Startup
- DC1-COD-L3-CX-2915: Steps: EC Startup Report; Vendor Startup

| ID | WBS | Activity | Duration | Start | Finish | Predecessors | Total float | Free float | Layton Responsible Party | Vendor Responsible Party |
| --- | --- | --- | --- | --- | --- | --- | --- | --- | --- | --- |
|  | 02 | **DC1-DH2200-COD-C22-02 Cx L3** |  | 2026-03-20 | 2026-03-25 |  |  |  |  |  |
| DC1-COD-L3-CX-2935 |  | DC1-COD-C22-02 FTE | 1d | 2026-03-20 | 2026-03-20 | DC1-COD-L2-2490, DC1-ATS-L3-CX-2935 | 25d | 0d | Riley Warring | ROS |
| DC1-COD-L3-CX-2945 |  | DC1-COD-C22-02 L3 Startup | 2d | 2026-03-23 | 2026-03-24 | DC1-COD-L3-CX-2935 | 25d | 0d | Riley Warring | SIE |
| DC1-COD-L3-CX-2955 |  | DC1-COD-C22-02 BMS/EPMS | 1d | 2026-03-25 | 2026-03-25 | DC1-COD-L3-CX-2945 | 25d | 11d | Riley Warring | PRM |
|  | 03 | **DC1-DH2200-COD-C22-03 Cx L3** |  | 2026-03-20 | 2026-03-25 |  |  |  |  |  |
| DC1-COD-L3-CX-2965 |  | DC1-COD-C22-03 FTE | 1d | 2026-03-20 | 2026-03-20 | DC1-COD-L2-2500, DC1-ATS-L3-CX-2965 | 25d | 0d | Riley Warring | ROS |
| DC1-COD-L3-CX-2975 |  | DC1-COD-C22-03 L3 Startup | 2d | 2026-03-23 | 2026-03-24 | DC1-COD-L3-CX-2965 | 25d | 0d | Riley Warring | SIE |
| DC1-COD-L3-CX-2985 |  | DC1-COD-C22-03 BMS/EPMS | 1d | 2026-03-25 | 2026-03-25 | DC1-COD-L3-CX-2975 | 25d | 11d | Riley Warring | PRM |
|  | 04 | **DC1-DH2200-COD-C22-04 Cx L3** |  | 2026-03-20 | 2026-03-25 |  |  |  |  |  |
| DC1-COD-L3-CX-2995 |  | DC1-COD-C22-04 FTE | 1d | 2026-03-20 | 2026-03-20 | DC1-COD-L2-2510, DC1-ATS-L3-CX-2995 | 25d | 0d | Riley Warring | ROS |
| DC1-COD-L3-CX-3005 |  | DC1-COD-C22-04 L3 Startup | 2d | 2026-03-23 | 2026-03-24 | DC1-COD-L3-CX-2995 | 25d | 0d | Riley Warring | SIE |
| DC1-COD-L3-CX-3015 |  | DC1-COD-C22-04 BMS/EPMS | 1d | 2026-03-25 | 2026-03-25 | DC1-COD-L3-CX-3005 | 25d | 11d | Riley Warring | PRM |
|  | 05 | **DC1-DH2200-COD-C22-05 Cx L3** |  | 2026-03-20 | 2026-03-25 |  |  |  |  |  |
| DC1-COD-L3-CX-3025 |  | DC1-COD-C22-05 FTE | 1d | 2026-03-20 | 2026-03-20 | DC1-COD-L2-2520, DC1-ATS-L3-CX-3025 | 25d | 0d | Riley Warring | ROS |
| DC1-COD-L3-CX-3035 |  | DC1-COD-C22-05 L3 Startup | 2d | 2026-03-23 | 2026-03-24 | DC1-COD-L3-CX-3025 | 25d | 0d | Riley Warring | SIE |
| DC1-COD-L3-CX-3045 |  | DC1-COD-C22-05 BMS/EPMS | 1d | 2026-03-25 | 2026-03-25 | DC1-COD-L3-CX-3035 | 25d | 11d | Riley Warring | PRM |
|  | 06 | **DC1-DH2200-COD-C22-06 Cx L3** |  | 2026-03-20 | 2026-03-25 |  |  |  |  |  |
| DC1-COD-L3-CX-3055 |  | DC1-COD-C22-06 FTE | 1d | 2026-03-20 | 2026-03-20 | DC1-COD-L2-2530, DC1-ATS-L3-CX-3055 | 25d | 0d | Riley Warring | ROS |
| DC1-COD-L3-CX-3065 |  | DC1-COD-C22-06 L3 Startup | 2d | 2026-03-23 | 2026-03-24 | DC1-COD-L3-CX-3055 | 25d | 0d | Riley Warring | SIE |
| DC1-COD-L3-CX-3075 |  | DC1-COD-C22-06 BMS/EPMS | 1d | 2026-03-25 | 2026-03-25 | DC1-COD-L3-CX-3065 | 25d | 11d | Riley Warring | PRM |
|  | 04 | **DC1-DH2200-COD-D22 Cx L3** |  | 2026-03-20 | 2026-03-25 |  |  |  |  |  |
|  | 01 | **DC1-DH2200-COD-D22-01 Cx L3** |  | 2026-03-20 | 2026-03-25 |  |  |  |  |  |
| DC1-COD-L3-CX-3085 |  | DC1-COD-D22-01 FTE | 1d | 2026-03-20 | 2026-03-20 | DC1-COD-L2-2540, DC1-ATS-L3-CX-3085, QTS-1080.3 FF | 25d | 0d | Riley Warring | ROS |
| DC1-COD-L3-CX-3095 |  | DC1-COD-D22-01 L3 Startup | 2d | 2026-03-23 | 2026-03-24 | DC1-COD-L3-CX-3085 | 25d | 0d | Riley Warring | SIE |
| DC1-COD-L3-CX-3105 |  | DC1-COD-D22-01 BMS/EPMS | 1d | 2026-03-25 | 2026-03-25 | DC1-COD-L3-CX-3095 | 25d | 11d | Riley Warring | PRM |

Notes:
- DC1-COD-L3-CX-2945: Steps: EC Startup Report; Vendor Startup
- DC1-COD-L3-CX-2975: Steps: EC Startup Report; Vendor Startup
- DC1-COD-L3-CX-3005: Steps: EC Startup Report; Vendor Startup
- DC1-COD-L3-CX-3035: Steps: EC Startup Report; Vendor Startup
- DC1-COD-L3-CX-3065: Steps: EC Startup Report; Vendor Startup
- DC1-COD-L3-CX-3095: Steps: EC Startup Report; Vendor Startup

| ID | WBS | Activity | Duration | Start | Finish | Predecessors | Total float | Free float | Layton Responsible Party | Vendor Responsible Party |
| --- | --- | --- | --- | --- | --- | --- | --- | --- | --- | --- |
|  | 02 | **DC1-DH2200-COD-D22-02 Cx L3** |  | 2026-03-20 | 2026-03-25 |  |  |  |  |  |
| DC1-COD-L3-CX-3115 |  | DC1-COD-D22-02 FTE | 1d | 2026-03-20 | 2026-03-20 | DC1-COD-L2-2550, DC1-ATS-L3-CX-3115 | 25d | 0d | Riley Warring | ROS |
| DC1-COD-L3-CX-3125 |  | DC1-COD-D22-02 L3 Startup | 2d | 2026-03-23 | 2026-03-24 | DC1-COD-L3-CX-3115 | 25d | 0d | Riley Warring | SIE |
| DC1-COD-L3-CX-3135 |  | DC1-COD-D22-02 BMS/EPMS | 1d | 2026-03-25 | 2026-03-25 | DC1-COD-L3-CX-3125 | 25d | 11d | Riley Warring | PRM |
|  | 03 | **DC1-DH2200-COD-D22-03 Cx L3** |  | 2026-03-20 | 2026-03-25 |  |  |  |  |  |
| DC1-COD-L3-CX-3145 |  | DC1-COD-D22-03 FTE | 1d | 2026-03-20 | 2026-03-20 | DC1-COD-L2-2560, DC1-ATS-L3-CX-3145 | 25d | 0d | Riley Warring | ROS |
| DC1-COD-L3-CX-3155 |  | DC1-COD-D22-03 L3 Startup | 2d | 2026-03-23 | 2026-03-24 | DC1-COD-L3-CX-3145 | 25d | 0d | Riley Warring | SIE |
| DC1-COD-L3-CX-3165 |  | DC1-COD-D22-03 BMS/EPMS | 1d | 2026-03-25 | 2026-03-25 | DC1-COD-L3-CX-3155 | 25d | 11d | Riley Warring | PRM |
|  | 04 | **DC1-DH2200-COD-D22-04 Cx L3** |  | 2026-03-20 | 2026-03-25 |  |  |  |  |  |
| DC1-COD-L3-CX-3175 |  | DC1-COD-D22-04 FTE | 1d | 2026-03-20 | 2026-03-20 | DC1-COD-L2-2570, DC1-ATS-L3-CX-3175 | 25d | 0d | Riley Warring | ROS |
| DC1-COD-L3-CX-3185 |  | DC1-COD-D22-04 L3 Startup | 2d | 2026-03-23 | 2026-03-24 | DC1-COD-L3-CX-3175 | 25d | 0d | Riley Warring | SIE |
| DC1-COD-L3-CX-3195 |  | DC1-COD-D22-04 BMS/EPMS | 1d | 2026-03-25 | 2026-03-25 | DC1-COD-L3-CX-3185 | 25d | 11d | Riley Warring | PRM |
|  | 05 | **DC1-DH2200-COD-D22-05 Cx L3** |  | 2026-03-20 | 2026-03-25 |  |  |  |  |  |
| DC1-COD-L3-CX-3205 |  | DC1-COD-D22-05 FTE | 1d | 2026-03-20 | 2026-03-20 | DC1-COD-L2-2580, DC1-ATS-L3-CX-3205 | 25d | 0d | Riley Warring | ROS |
| DC1-COD-L3-CX-3215 |  | DC1-COD-D22-05 L3 Startup | 2d | 2026-03-23 | 2026-03-24 | DC1-COD-L3-CX-3205 | 25d | 0d | Riley Warring | SIE |
| DC1-COD-L3-CX-3225 |  | DC1-COD-D22-05 BMS/EPMS | 1d | 2026-03-25 | 2026-03-25 | DC1-COD-L3-CX-3215 | 25d | 11d | Riley Warring | PRM |
|  | 06 | **DC1-DH2200-COD-D22-06 Cx L3** |  | 2026-03-20 | 2026-03-25 |  |  |  |  |  |
| DC1-COD-L3-CX-3235 |  | DC1-COD-D22-06 FTE | 1d | 2026-03-20 | 2026-03-20 | DC1-COD-L2-2590, DC1-ATS-L3-CX-3235 | 25d | 0d | Riley Warring | ROS |
| DC1-COD-L3-CX-3245 |  | DC1-COD-D22-06 L3 Startup | 2d | 2026-03-23 | 2026-03-24 | DC1-COD-L3-CX-3235 | 25d | 0d | Riley Warring | SIE |
| DC1-COD-L3-CX-3255 |  | DC1-COD-D22-06 BMS/EPMS | 1d | 2026-03-25 | 2026-03-25 | DC1-COD-L3-CX-3245 | 25d | 11d | Riley Warring | PRM |
|  | 05 | **DC1-DH2200-COD-E22 Cx L3** |  | 2026-03-25 | 2026-03-30 |  |  |  |  |  |
|  | 01 | **DC1-DH2200-ATS-E22-01 Cx L3** |  | 2026-03-25 | 2026-03-30 |  |  |  |  |  |
| DC1-COD-L3-CX-3265 |  | DC1-COD-E22-01 FTE | 1d | 2026-03-25 | 2026-03-25 | DC1-COD-L2-2600, DC1-ATS-L3-CX-3265, QTS-1080.3 FF | 22d | 0d | Riley Warring | ROS |
| DC1-COD-L3-CX-3275 |  | DC1-COD-E22-01 L3 Startup | 2d | 2026-03-26 | 2026-03-27 | DC1-COD-L3-CX-3265 | 22d | 0d | Riley Warring | SIE |
| DC1-COD-L3-CX-3285 |  | DC1-COD-E22-01 BMS/EPMS | 1d | 2026-03-30 | 2026-03-30 | DC1-COD-L3-CX-3275 | 22d | 8d | Riley Warring | PRM |

Notes:
- DC1-COD-L3-CX-3125: Steps: EC Startup Report; Vendor Startup
- DC1-COD-L3-CX-3155: Steps: EC Startup Report; Vendor Startup
- DC1-COD-L3-CX-3185: Steps: EC Startup Report; Vendor Startup
- DC1-COD-L3-CX-3215: Steps: EC Startup Report; Vendor Startup
- DC1-COD-L3-CX-3245: Steps: EC Startup Report; Vendor Startup
- DC1-COD-L3-CX-3275: Steps: EC Startup Report; Vendor Startup

| ID | WBS | Activity | Duration | Start | Finish | Predecessors | Total float | Free float | Layton Responsible Party | Vendor Responsible Party |
| --- | --- | --- | --- | --- | --- | --- | --- | --- | --- | --- |
|  | 02 | **DC1-DH2200-ATS-E22-02 Cx L3** |  | 2026-03-25 | 2026-03-30 |  |  |  |  |  |
| DC1-COD-L3-CX-3295 |  | DC1-COD-E22-02 FTE | 1d | 2026-03-25 | 2026-03-25 | DC1-COD-L2-2610, DC1-ATS-L3-CX-3295 | 22d | 0d | Riley Warring | ROS |
| DC1-COD-L3-CX-3305 |  | DC1-COD-E22-02 L3 Startup | 2d | 2026-03-26 | 2026-03-27 | DC1-COD-L3-CX-3295 | 22d | 0d | Riley Warring | SIE |
| DC1-COD-L3-CX-3315 |  | DC1-COD-E22-02 BMS/EPMS | 1d | 2026-03-30 | 2026-03-30 | DC1-COD-L3-CX-3305 | 22d | 8d | Riley Warring | PRM |
|  | 03 | **DC1-DH2200-ATS-E22-03 Cx L3** |  | 2026-03-25 | 2026-03-30 |  |  |  |  |  |
| DC1-COD-L3-CX-3325 |  | DC1-COD-E22-03 FTE | 1d | 2026-03-25 | 2026-03-25 | DC1-COD-L2-2620, DC1-ATS-L3-CX-3325 | 22d | 0d | Riley Warring | ROS |
| DC1-COD-L3-CX-3335 |  | DC1-COD-E22-03 L3 Startup | 2d | 2026-03-26 | 2026-03-27 | DC1-COD-L3-CX-3325 | 22d | 0d | Riley Warring | SIE |
| DC1-COD-L3-CX-3345 |  | DC1-COD-E22-03 BMS/EPMS | 1d | 2026-03-30 | 2026-03-30 | DC1-COD-L3-CX-3335 | 22d | 8d | Riley Warring | PRM |
|  | 04 | **DC1-DH2200-ATS-E22-04 Cx L3** |  | 2026-03-25 | 2026-03-30 |  |  |  |  |  |
| DC1-COD-L3-CX-3355 |  | DC1-COD-E22-04 FTE | 1d | 2026-03-25 | 2026-03-25 | DC1-COD-L2-2630, DC1-ATS-L3-CX-3355 | 22d | 0d | Riley Warring | ROS |
| DC1-COD-L3-CX-3365 |  | DC1-COD-E22-04 L3 Startup | 2d | 2026-03-26 | 2026-03-27 | DC1-COD-L3-CX-3355 | 22d | 0d | Riley Warring | SIE |
| DC1-COD-L3-CX-3375 |  | DC1-COD-E22-04 BMS/EPMS | 1d | 2026-03-30 | 2026-03-30 | DC1-COD-L3-CX-3365 | 22d | 8d | Riley Warring | PRM |
|  | 05 | **DC1-DH2200-ATS-E22-05 Cx L3** |  | 2026-03-25 | 2026-03-30 |  |  |  |  |  |
| DC1-COD-L3-CX-3385 |  | DC1-COD-E22-05 FTE | 1d | 2026-03-25 | 2026-03-25 | DC1-COD-L2-2640, DC1-ATS-L3-CX-3385 | 22d | 0d | Riley Warring | ROS |
| DC1-COD-L3-CX-3395 |  | DC1-COD-E22-05 L3 Startup | 2d | 2026-03-26 | 2026-03-27 | DC1-COD-L3-CX-3385 | 22d | 0d | Riley Warring | SIE |
| DC1-COD-L3-CX-3405 |  | DC1-COD-E22-05 BMS/EPMS | 1d | 2026-03-30 | 2026-03-30 | DC1-COD-L3-CX-3395 | 22d | 8d | Riley Warring | PRM |
|  | 06 | **DC1-DH2200-ATS-E22-06 Cx L3** |  | 2026-03-25 | 2026-03-30 |  |  |  |  |  |
| DC1-COD-L3-CX-3415 |  | DC1-COD-E22-06 FTE | 1d | 2026-03-25 | 2026-03-25 | DC1-COD-L2-2650, DC1-ATS-L3-CX-3415 | 22d | 0d | Riley Warring | ROS |
| DC1-COD-L3-CX-3425 |  | DC1-COD-E22-06 L3 Startup | 2d | 2026-03-26 | 2026-03-27 | DC1-COD-L3-CX-3415 | 22d | 0d | Riley Warring | SIE |
| DC1-COD-L3-CX-3435 |  | DC1-COD-E22-06 BMS/EPMS | 1d | 2026-03-30 | 2026-03-30 | DC1-COD-L3-CX-3425 | 22d | 8d | Riley Warring | PRM |
|  | 06 | **DC1-DH2200-COD-F22 Cx L3** |  | 2026-03-25 | 2026-03-30 |  |  |  |  |  |
|  | 01 | **DC1-DH2200-COD-F22-01 Cx L3** |  | 2026-03-25 | 2026-03-30 |  |  |  |  |  |
| DC1-COD-L3-CX-3445 |  | DC1-COD-F22-01 FTE | 1d | 2026-03-25 | 2026-03-25 | DC1-COD-L2-2660, DC1-ATS-L3-CX-3445, QTS-1080.3 FF | 22d | 0d | Riley Warring | ROS |
| DC1-COD-L3-CX-3455 |  | DC1-COD-F22-01 L3 Startup | 2d | 2026-03-26 | 2026-03-27 | DC1-COD-L3-CX-3445 | 22d | 0d | Riley Warring | SIE |
| DC1-COD-L3-CX-3465 |  | DC1-COD-F22-01 BMS/EPMS | 1d | 2026-03-30 | 2026-03-30 | DC1-COD-L3-CX-3455 | 22d | 8d | Riley Warring | PRM |

Notes:
- DC1-COD-L3-CX-3305: Steps: EC Startup Report; Vendor Startup
- DC1-COD-L3-CX-3335: Steps: EC Startup Report; Vendor Startup
- DC1-COD-L3-CX-3365: Steps: EC Startup Report; Vendor Startup
- DC1-COD-L3-CX-3395: Steps: EC Startup Report; Vendor Startup
- DC1-COD-L3-CX-3425: Steps: EC Startup Report; Vendor Startup
- DC1-COD-L3-CX-3455: Steps: EC Startup Report; Vendor Startup

| ID | WBS | Activity | Duration | Start | Finish | Predecessors | Total float | Free float | Layton Responsible Party | Vendor Responsible Party |
| --- | --- | --- | --- | --- | --- | --- | --- | --- | --- | --- |
|  | 02 | **DC1-DH2200-COD-F22-02 Cx L3** |  | 2026-03-25 | 2026-03-30 |  |  |  |  |  |
| DC1-COD-L3-CX-3475 |  | DC1-COD-F22-02 FTE | 1d | 2026-03-25 | 2026-03-25 | DC1-COD-L2-2670, DC1-ATS-L3-CX-3475 | 22d | 0d | Riley Warring | ROS |
| DC1-COD-L3-CX-3485 |  | DC1-COD-F22-02 L3 Startup | 2d | 2026-03-26 | 2026-03-27 | DC1-COD-L3-CX-3475 | 22d | 0d | Riley Warring | SIE |
| DC1-COD-L3-CX-3495 |  | DC1-COD-F22-02 BMS/EPMS | 1d | 2026-03-30 | 2026-03-30 | DC1-COD-L3-CX-3485 | 22d | 8d | Riley Warring | PRM |
|  | 03 | **DC1-DH2200-COD-F22-03 Cx L3** |  | 2026-03-25 | 2026-03-30 |  |  |  |  |  |
| DC1-COD-L3-CX-3505 |  | DC1-COD-F22-03 FTE | 1d | 2026-03-25 | 2026-03-25 | DC1-COD-L2-2680, DC1-ATS-L3-CX-3505 | 22d | 0d | Riley Warring | ROS |
| DC1-COD-L3-CX-3515 |  | DC1-COD-F22-03 L3 Startup | 2d | 2026-03-26 | 2026-03-27 | DC1-COD-L3-CX-3505 | 22d | 0d | Riley Warring | SIE |
| DC1-COD-L3-CX-3525 |  | DC1-COD-F22-03 BMS/EPMS | 1d | 2026-03-30 | 2026-03-30 | DC1-COD-L3-CX-3515 | 22d | 8d | Riley Warring | PRM |
|  | 04 | **DC1-DH2200-COD-F22-04 Cx L3** |  | 2026-03-25 | 2026-03-30 |  |  |  |  |  |
| DC1-COD-L3-CX-3535 |  | DC1-COD-F22-04 FTE | 1d | 2026-03-25 | 2026-03-25 | DC1-COD-L2-2690, DC1-ATS-L3-CX-3535 | 22d | 0d | Riley Warring | ROS |
| DC1-COD-L3-CX-3545 |  | DC1-COD-F22-04 L3 Startup | 2d | 2026-03-26 | 2026-03-27 | DC1-COD-L3-CX-3535 | 22d | 0d | Riley Warring | SIE |
| DC1-COD-L3-CX-3555 |  | DC1-COD-F22-04 BMS/EPMS | 1d | 2026-03-30 | 2026-03-30 | DC1-COD-L3-CX-3545 | 22d | 8d | Riley Warring | PRM |
|  | 05 | **DC1-DH2200-COD-F22-05 Cx L3** |  | 2026-03-25 | 2026-03-30 |  |  |  |  |  |
| DC1-COD-L3-CX-3565 |  | DC1-COD-F22-05 FTE | 1d | 2026-03-25 | 2026-03-25 | DC1-COD-L2-2700, DC1-ATS-L3-CX-3565 | 22d | 0d | Riley Warring | ROS |
| DC1-COD-L3-CX-3575 |  | DC1-COD-F22-05 L3 Startup | 2d | 2026-03-26 | 2026-03-27 | DC1-COD-L3-CX-3565 | 22d | 0d | Riley Warring | SIE |
| DC1-COD-L3-CX-3585 |  | DC1-COD-F22-05 BMS/EPMS | 1d | 2026-03-30 | 2026-03-30 | DC1-COD-L3-CX-3575 | 22d | 8d | Riley Warring | PRM |
|  | 06 | **DC1-DH2200-COD-F22-06 Cx L3** |  | 2026-03-25 | 2026-03-30 |  |  |  |  |  |
| DC1-COD-L3-CX-3595 |  | DC1-COD-F22-06 FTE | 1d | 2026-03-25 | 2026-03-25 | DC1-COD-L2-2710, DC1-ATS-L3-CX-3595 | 22d | 0d | Riley Warring | ROS |
| DC1-COD-L3-CX-3605 |  | DC1-COD-F22-06 L3 Startup | 2d | 2026-03-26 | 2026-03-27 | DC1-COD-L3-CX-3595 | 22d | 0d | Riley Warring | SIE |
| DC1-COD-L3-CX-3615 |  | DC1-COD-F22-06 BMS/EPMS | 1d | 2026-03-30 | 2026-03-30 | DC1-COD-L3-CX-3605 | 22d | 8d | Riley Warring | PRM |
|  | 07 | **DC1-DH2200 RPPs Cx L3** |  | 2026-03-23 | 2026-04-01 |  |  |  |  |  |
|  | 01 | **DC1-DH2200-RPP-A22 Cx L3** |  | 2026-03-23 | 2026-03-26 |  |  |  |  |  |
|  | 01 | **DC1-DH2200-RPP-A22-01 Cx L3** |  | 2026-03-23 | 2026-03-26 |  |  |  |  |  |
| DC1-RPP-L3-CX-2545 |  | DC1-RPP-A22-01 A/B FTE | 1d | 2026-03-23 | 2026-03-23 | DC1-RPP-L2-2360, DC1-COD-L3-CX-2545 | 48d | 0d | Riley Warring | ROS |
| DC1-RPP-L3-CX-2555 |  | DC1-RPP-A22-01 A/B L3 Startup | 2d | 2026-03-24 | 2026-03-25 | DC1-RPP-L3-CX-2545 | 48d | 0d | Riley Warring | SQD |
| DC1-RPP-L3-CX-2565 |  | DC1-RPP-A22-01 A/B BMS/EPMS | 1d | 2026-03-26 | 2026-03-26 | DC1-RPP-L3-CX-2555 | 48d | 36d | Riley Warring | PRM |

Notes:
- DC1-COD-L3-CX-3485: Steps: EC Startup Report; Vendor Startup
- DC1-COD-L3-CX-3515: Steps: EC Startup Report; Vendor Startup
- DC1-COD-L3-CX-3545: Steps: EC Startup Report; Vendor Startup
- DC1-COD-L3-CX-3575: Steps: EC Startup Report; Vendor Startup
- DC1-COD-L3-CX-3605: Steps: EC Startup Report; Vendor Startup
- DC1-RPP-L3-CX-2555: Steps: EC Startup Report; Vendor Startup

| ID | WBS | Activity | Duration | Start | Finish | Predecessors | Total float | Free float | Layton Responsible Party | Vendor Responsible Party |
| --- | --- | --- | --- | --- | --- | --- | --- | --- | --- | --- |
|  | 02 | **DC1-DH2200-RPP-A22-02 Cx L3** |  | 2026-03-23 | 2026-03-26 |  |  |  |  |  |
| DC1-RPP-L3-CX-2575 |  | DC1-RPP-A22-02 A/B FTE | 1d | 2026-03-23 | 2026-03-23 | DC1-RPP-L2-2370, DC1-COD-L3-CX-2575 | 48d | 0d | Riley Warring | ROS |
| DC1-RPP-L3-CX-2585 |  | DC1-RPP-A22-02 A/B L3 Startup | 2d | 2026-03-24 | 2026-03-25 | DC1-RPP-L3-CX-2575 | 48d | 0d | Riley Warring | SQD |
| DC1-RPP-L3-CX-2595 |  | DC1-RPP-A22-02 A/B BMS/EPMS | 1d | 2026-03-26 | 2026-03-26 | DC1-RPP-L3-CX-2585 | 48d | 36d | Riley Warring | PRM |
|  | 03 | **DC1-DH2200-RPP-A22-03 Cx L3** |  | 2026-03-23 | 2026-03-26 |  |  |  |  |  |
| DC1-RPP-L3-CX-2605 |  | DC1-RPP-A22-03 A/B FTE | 1d | 2026-03-23 | 2026-03-23 | DC1-RPP-L2-2380, DC1-COD-L3-CX-2605 | 48d | 0d | Riley Warring | ROS |
| DC1-RPP-L3-CX-2615 |  | DC1-RPP-A22-03 A/B L3 Startup | 2d | 2026-03-24 | 2026-03-25 | DC1-RPP-L3-CX-2605 | 48d | 0d | Riley Warring | SQD |
| DC1-RPP-L3-CX-2625 |  | DC1-RPP-A22-03 A/B BMS/EPMS | 1d | 2026-03-26 | 2026-03-26 | DC1-RPP-L3-CX-2615 | 48d | 36d | Riley Warring | PRM |
|  | 04 | **DC1-DH2200-RPP-A22-04 Cx L3** |  | 2026-03-23 | 2026-03-26 |  |  |  |  |  |
| DC1-RPP-L3-CX-2635 |  | DC1-RPP-A22-04 A/B FTE | 1d | 2026-03-23 | 2026-03-23 | DC1-RPP-L2-2390, DC1-COD-L3-CX-2635 | 48d | 0d | Riley Warring | ROS |
| DC1-RPP-L3-CX-2645 |  | DC1-RPP-A22-04 A/B L3 Startup | 2d | 2026-03-24 | 2026-03-25 | DC1-RPP-L3-CX-2635 | 48d | 0d | Riley Warring | SQD |
| DC1-RPP-L3-CX-2655 |  | DC1-RPP-A22-04 A/B BMS/EPMS | 1d | 2026-03-26 | 2026-03-26 | DC1-RPP-L3-CX-2645 | 48d | 36d | Riley Warring | PRM |
|  | 05 | **DC1-DH2200-RPP-A22-05 Cx L3** |  | 2026-03-23 | 2026-03-26 |  |  |  |  |  |
| DC1-RPP-L3-CX-2665 |  | DC1-RPP-A22-05 A/B FTE | 1d | 2026-03-23 | 2026-03-23 | DC1-RPP-L2-2400, DC1-COD-L3-CX-2665 | 48d | 0d | Riley Warring | ROS |
| DC1-RPP-L3-CX-2675 |  | DC1-RPP-A22-05 A/B L3 Startup | 2d | 2026-03-24 | 2026-03-25 | DC1-RPP-L3-CX-2665 | 48d | 0d | Riley Warring | SQD |
| DC1-RPP-L3-CX-2685 |  | DC1-RPP-A22-05 A/B BMS/EPMS | 1d | 2026-03-26 | 2026-03-26 | DC1-RPP-L3-CX-2675 | 48d | 36d | Riley Warring | PRM |
|  | 06 | **DC1-DH2200-RPP-A22-06 Cx L3** |  | 2026-03-23 | 2026-03-26 |  |  |  |  |  |
| DC1-RPP-L3-CX-2695 |  | DC1-RPP-A22-06 A/B FTE | 1d | 2026-03-23 | 2026-03-23 | DC1-RPP-L2-2410, DC1-COD-L3-CX-2695 | 48d | 0d | Riley Warring | ROS |
| DC1-RPP-L3-CX-2705 |  | DC1-RPP-A22-06 A/B L3 Startup | 2d | 2026-03-24 | 2026-03-25 | DC1-RPP-L3-CX-2695 | 48d | 0d | Riley Warring | SQD |
| DC1-RPP-L3-CX-2715 |  | DC1-RPP-A22-06 A/B BMS/EPMS | 1d | 2026-03-26 | 2026-03-26 | DC1-RPP-L3-CX-2705 | 48d | 36d | Riley Warring | PRM |
|  | 02 | **DC1-DH2200-RPP-B22 Cx L3** |  | 2026-03-23 | 2026-03-26 |  |  |  |  |  |
|  | 01 | **DC1-DH2200-RPP-B22-01 Cx L3** |  | 2026-03-23 | 2026-03-26 |  |  |  |  |  |
| DC1-RPP-L3-CX-2725 |  | DC1-RPP-B22-01 A/B FTE | 1d | 2026-03-23 | 2026-03-23 | DC1-RPP-L2-2420, DC1-COD-L3-CX-2725 | 48d | 0d | Riley Warring | ROS |
| DC1-RPP-L3-CX-2735 |  | DC1-RPP-B22-01 A/B L3 Startup | 2d | 2026-03-24 | 2026-03-25 | DC1-RPP-L3-CX-2725 | 48d | 0d | Riley Warring | SQD |
| DC1-RPP-L3-CX-2745 |  | DC1-RPP-B22-01 A/B BMS/EPMS | 1d | 2026-03-26 | 2026-03-26 | DC1-RPP-L3-CX-2735 | 48d | 36d | Riley Warring | PRM |

Notes:
- DC1-RPP-L3-CX-2585: Steps: EC Startup Report; Vendor Startup
- DC1-RPP-L3-CX-2615: Steps: EC Startup Report; Vendor Startup
- DC1-RPP-L3-CX-2645: Steps: EC Startup Report; Vendor Startup
- DC1-RPP-L3-CX-2675: Steps: EC Startup Report; Vendor Startup
- DC1-RPP-L3-CX-2705: Steps: EC Startup Report; Vendor Startup
- DC1-RPP-L3-CX-2735: Steps: EC Startup Report; Vendor Startup

| ID | WBS | Activity | Duration | Start | Finish | Predecessors | Total float | Free float | Layton Responsible Party | Vendor Responsible Party |
| --- | --- | --- | --- | --- | --- | --- | --- | --- | --- | --- |
|  | 02 | **DC1-DH2200-RPP-B22-02 Cx L3** |  | 2026-03-23 | 2026-03-26 |  |  |  |  |  |
| DC1-RPP-L3-CX-2755 |  | DC1-RPP-B22-02 A/B FTE | 1d | 2026-03-23 | 2026-03-23 | DC1-RPP-L2-2430, DC1-COD-L3-CX-2755 | 48d | 0d | Riley Warring | ROS |
| DC1-RPP-L3-CX-2765 |  | DC1-RPP-B22-02 A/B L3 Startup | 2d | 2026-03-24 | 2026-03-25 | DC1-RPP-L3-CX-2755 | 48d | 0d | Riley Warring | SQD |
| DC1-RPP-L3-CX-2775 |  | DC1-RPP-B22-02 A/B BMS/EPMS | 1d | 2026-03-26 | 2026-03-26 | DC1-RPP-L3-CX-2765 | 48d | 36d | Riley Warring | PRM |
|  | 03 | **DC1-DH2200-RPP-B22-03 Cx L3** |  | 2026-03-23 | 2026-03-26 |  |  |  |  |  |
| DC1-RPP-L3-CX-2785 |  | DC1-RPP-B22-03 A/B FTE | 1d | 2026-03-23 | 2026-03-23 | DC1-RPP-L2-2440, DC1-COD-L3-CX-2785 | 48d | 0d | Riley Warring | ROS |
| DC1-RPP-L3-CX-2795 |  | DC1-RPP-B22-03 A/B L3 Startup | 2d | 2026-03-24 | 2026-03-25 | DC1-RPP-L3-CX-2785 | 48d | 0d | Riley Warring | SQD |
| DC1-RPP-L3-CX-2805 |  | DC1-RPP-B22-03 A/B BMS/EPMS | 1d | 2026-03-26 | 2026-03-26 | DC1-RPP-L3-CX-2795 | 48d | 36d | Riley Warring | PRM |
|  | 04 | **DC1-DH2200-RPP-B22-04 Cx L3** |  | 2026-03-23 | 2026-03-26 |  |  |  |  |  |
| DC1-RPP-L3-CX-2815 |  | DC1-RPP-B22-04 A/B FTE | 1d | 2026-03-23 | 2026-03-23 | DC1-RPP-L2-2450, DC1-COD-L3-CX-2815 | 48d | 0d | Riley Warring | ROS |
| DC1-RPP-L3-CX-2825 |  | DC1-RPP-B22-04 A/B L3 Startup | 2d | 2026-03-24 | 2026-03-25 | DC1-RPP-L3-CX-2815 | 48d | 0d | Riley Warring | SQD |
| DC1-RPP-L3-CX-2835 |  | DC1-RPP-B22-04 A/B BMS/EPMS | 1d | 2026-03-26 | 2026-03-26 | DC1-RPP-L3-CX-2825 | 48d | 36d | Riley Warring | PRM |
|  | 05 | **DC1-DH2200-RPP-B22-05 Cx L3** |  | 2026-03-23 | 2026-03-26 |  |  |  |  |  |
| DC1-RPP-L3-CX-2845 |  | DC1-RPP-B22-05 A/B FTE | 1d | 2026-03-23 | 2026-03-23 | DC1-RPP-L2-2460, DC1-COD-L3-CX-2845 | 48d | 0d | Riley Warring | ROS |
| DC1-RPP-L3-CX-2855 |  | DC1-RPP-B22-05 A/B L3 Startup | 2d | 2026-03-24 | 2026-03-25 | DC1-RPP-L3-CX-2845 | 48d | 0d | Riley Warring | SQD |
| DC1-RPP-L3-CX-2865 |  | DC1-RPP-B22-05 A/B BMS/EPMS | 1d | 2026-03-26 | 2026-03-26 | DC1-RPP-L3-CX-2855 | 48d | 36d | Riley Warring | PRM |
|  | 06 | **DC1-DH2200-RPP-B22-06 Cx L3** |  | 2026-03-23 | 2026-03-26 |  |  |  |  |  |
| DC1-RPP-L3-CX-2875 |  | DC1-RPP-B22-06 A/B FTE | 1d | 2026-03-23 | 2026-03-23 | DC1-RPP-L2-2470, DC1-COD-L3-CX-2875 | 48d | 0d | Riley Warring | ROS |
| DC1-RPP-L3-CX-2885 |  | DC1-RPP-B22-06 A/B L3 Startup | 2d | 2026-03-24 | 2026-03-25 | DC1-RPP-L3-CX-2875 | 48d | 0d | Riley Warring | SQD |
| DC1-RPP-L3-CX-2895 |  | DC1-RPP-B22-06 A/B BMS/EPMS | 1d | 2026-03-26 | 2026-03-26 | DC1-RPP-L3-CX-2885 | 48d | 36d | Riley Warring | PRM |
|  | 03 | **DC1-DH2200-RPP-C22 Cx L3** |  | 2026-03-23 | 2026-03-26 |  |  |  |  |  |
|  | 01 | **DC1-DH2200-RPP-C22-01 Cx L3** |  | 2026-03-23 | 2026-03-26 |  |  |  |  |  |
| DC1-RPP-L3-CX-2905 |  | DC1-RPP-C22-01 A/B FTE | 1d | 2026-03-23 | 2026-03-23 | DC1-RPP-L2-2480, DC1-COD-L3-CX-2905 | 48d | 0d | Riley Warring | ROS |
| DC1-RPP-L3-CX-2915 |  | DC1-RPP-C22-01 A/B L3 Startup | 2d | 2026-03-24 | 2026-03-25 | DC1-RPP-L3-CX-2905 | 48d | 0d | Riley Warring | SQD |
| DC1-RPP-L3-CX-2925 |  | DC1-RPP-C22-01 A/B BMS/EPMS | 1d | 2026-03-26 | 2026-03-26 | DC1-RPP-L3-CX-2915 | 48d | 36d | Riley Warring | PRM |

Notes:
- DC1-RPP-L3-CX-2765: Steps: EC Startup Report; Vendor Startup
- DC1-RPP-L3-CX-2795: Steps: EC Startup Report; Vendor Startup
- DC1-RPP-L3-CX-2825: Steps: EC Startup Report; Vendor Startup
- DC1-RPP-L3-CX-2855: Steps: EC Startup Report; Vendor Startup
- DC1-RPP-L3-CX-2885: Steps: EC Startup Report; Vendor Startup
- DC1-RPP-L3-CX-2915: Steps: EC Startup Report; Vendor Startup

| ID | WBS | Activity | Duration | Start | Finish | Predecessors | Total float | Free float | Layton Responsible Party | Vendor Responsible Party |
| --- | --- | --- | --- | --- | --- | --- | --- | --- | --- | --- |
|  | 02 | **DC1-DH2200-RPP-C22-02 Cx L3** |  | 2026-03-23 | 2026-03-26 |  |  |  |  |  |
| DC1-RPP-L3-CX-2935 |  | DC1-RPP-C22-02 A/B FTE | 1d | 2026-03-23 | 2026-03-23 | DC1-RPP-L2-2490, DC1-COD-L3-CX-2935 | 48d | 0d | Riley Warring | ROS |
| DC1-RPP-L3-CX-2945 |  | DC1-RPP-C22-02 A/B L3 Startup | 2d | 2026-03-24 | 2026-03-25 | DC1-RPP-L3-CX-2935 | 48d | 0d | Riley Warring | SQD |
| DC1-RPP-L3-CX-2955 |  | DC1-RPP-C22-02 A/B BMS/EPMS | 1d | 2026-03-26 | 2026-03-26 | DC1-RPP-L3-CX-2945 | 48d | 36d | Riley Warring | PRM |
|  | 03 | **DC1-DH2200-RPP-C22-03 Cx L3** |  | 2026-03-23 | 2026-03-26 |  |  |  |  |  |
| DC1-RPP-L3-CX-2965 |  | DC1-RPP-C22-03 A/B FTE | 1d | 2026-03-23 | 2026-03-23 | DC1-RPP-L2-2500, DC1-COD-L3-CX-2965 | 48d | 0d | Riley Warring | ROS |
| DC1-RPP-L3-CX-2975 |  | DC1-RPP-C22-03 A/B L3 Startup | 2d | 2026-03-24 | 2026-03-25 | DC1-RPP-L3-CX-2965 | 48d | 0d | Riley Warring | SQD |
| DC1-RPP-L3-CX-2985 |  | DC1-RPP-C22-03 A/B BMS/EPMS | 1d | 2026-03-26 | 2026-03-26 | DC1-RPP-L3-CX-2975 | 48d | 36d | Riley Warring | PRM |
|  | 04 | **DC1-DH2200-RPP-C22-04 Cx L3** |  | 2026-03-23 | 2026-03-26 |  |  |  |  |  |
| DC1-RPP-L3-CX-2995 |  | DC1-RPP-C22-04 A/B FTE | 1d | 2026-03-23 | 2026-03-23 | DC1-RPP-L2-2510, DC1-COD-L3-CX-2995 | 48d | 0d | Riley Warring | ROS |
| DC1-RPP-L3-CX-3005 |  | DC1-RPP-C22-04 A/B L3 Startup | 2d | 2026-03-24 | 2026-03-25 | DC1-RPP-L3-CX-2995 | 48d | 0d | Riley Warring | SQD |
| DC1-RPP-L3-CX-3015 |  | DC1-RPP-C22-04 A/B BMS/EPMS | 1d | 2026-03-26 | 2026-03-26 | DC1-RPP-L3-CX-3005 | 48d | 36d | Riley Warring | PRM |
|  | 05 | **DC1-DH2200-RPP-C22-05 Cx L3** |  | 2026-03-23 | 2026-03-26 |  |  |  |  |  |
| DC1-RPP-L3-CX-3025 |  | DC1-RPP-C22-05 A/B FTE | 1d | 2026-03-23 | 2026-03-23 | DC1-RPP-L2-2520, DC1-COD-L3-CX-3025 | 48d | 0d | Riley Warring | ROS |
| DC1-RPP-L3-CX-3035 |  | DC1-RPP-C22-05 A/B L3 Startup | 2d | 2026-03-24 | 2026-03-25 | DC1-RPP-L3-CX-3025 | 48d | 0d | Riley Warring | SQD |
| DC1-RPP-L3-CX-3045 |  | DC1-RPP-C22-05 A/B BMS/EPMS | 1d | 2026-03-26 | 2026-03-26 | DC1-RPP-L3-CX-3035 | 48d | 36d | Riley Warring | PRM |
|  | 06 | **DC1-DH2200-RPP-C22-06 Cx L3** |  | 2026-03-23 | 2026-03-26 |  |  |  |  |  |
| DC1-RPP-L3-CX-3055 |  | DC1-RPP-C22-06 A/B FTE | 1d | 2026-03-23 | 2026-03-23 | DC1-RPP-L2-2530, DC1-COD-L3-CX-3055 | 48d | 0d | Riley Warring | ROS |
| DC1-RPP-L3-CX-3065 |  | DC1-RPP-C22-06 A/B L3 Startup | 2d | 2026-03-24 | 2026-03-25 | DC1-RPP-L3-CX-3055 | 48d | 0d | Riley Warring | SQD |
| DC1-RPP-L3-CX-3075 |  | DC1-RPP-C22-06 A/B BMS/EPMS | 1d | 2026-03-26 | 2026-03-26 | DC1-RPP-L3-CX-3065 | 48d | 36d | Riley Warring | PRM |
|  | 04 | **DC1-DH2200-RPP-D22 Cx L3** |  | 2026-03-23 | 2026-03-26 |  |  |  |  |  |
|  | 01 | **DC1-DH2200-RPP-D22-01 Cx L3** |  | 2026-03-23 | 2026-03-26 |  |  |  |  |  |
| DC1-RPP-L3-CX-3085 |  | DC1-RPP-D22-01 A/B FTE | 1d | 2026-03-23 | 2026-03-23 | DC1-RPP-L2-2540, DC1-COD-L3-CX-3085 | 48d | 0d | Riley Warring | ROS |
| DC1-RPP-L3-CX-3095 |  | DC1-RPP-D22-01 A/B L3 Startup | 2d | 2026-03-24 | 2026-03-25 | DC1-RPP-L3-CX-3085 | 48d | 0d | Riley Warring | SQD |
| DC1-RPP-L3-CX-3105 |  | DC1-RPP-D22-01 A/B BMS/EPMS | 1d | 2026-03-26 | 2026-03-26 | DC1-RPP-L3-CX-3095 | 48d | 36d | Riley Warring | PRM |

Notes:
- DC1-RPP-L3-CX-2945: Steps: EC Startup Report; Vendor Startup
- DC1-RPP-L3-CX-2975: Steps: EC Startup Report; Vendor Startup
- DC1-RPP-L3-CX-3005: Steps: EC Startup Report; Vendor Startup
- DC1-RPP-L3-CX-3035: Steps: EC Startup Report; Vendor Startup
- DC1-RPP-L3-CX-3065: Steps: EC Startup Report; Vendor Startup
- DC1-RPP-L3-CX-3095: Steps: EC Startup Report; Vendor Startup

| ID | WBS | Activity | Duration | Start | Finish | Predecessors | Total float | Free float | Layton Responsible Party | Vendor Responsible Party |
| --- | --- | --- | --- | --- | --- | --- | --- | --- | --- | --- |
|  | 02 | **DC1-DH2200-RPP-D22-02 Cx L3** |  | 2026-03-23 | 2026-03-26 |  |  |  |  |  |
| DC1-RPP-L3-CX-3115 |  | DC1-RPP-D22-02 A/B FTE | 1d | 2026-03-23 | 2026-03-23 | DC1-RPP-L2-2550, DC1-COD-L3-CX-3115 | 48d | 0d | Riley Warring | ROS |
| DC1-RPP-L3-CX-3125 |  | DC1-RPP-D22-02 A/B L3 Startup | 2d | 2026-03-24 | 2026-03-25 | DC1-RPP-L3-CX-3115 | 48d | 0d | Riley Warring | SQD |
| DC1-RPP-L3-CX-3135 |  | DC1-RPP-D22-02 A/B BMS/EPMS | 1d | 2026-03-26 | 2026-03-26 | DC1-RPP-L3-CX-3125 | 48d | 36d | Riley Warring | PRM |
|  | 03 | **DC1-DH2200-RPP-D22-03 Cx L3** |  | 2026-03-23 | 2026-03-26 |  |  |  |  |  |
| DC1-RPP-L3-CX-3145 |  | DC1-RPP-D22-03 A/B FTE | 1d | 2026-03-23 | 2026-03-23 | DC1-RPP-L2-2560, DC1-COD-L3-CX-3145 | 48d | 0d | Riley Warring | ROS |
| DC1-RPP-L3-CX-3155 |  | DC1-RPP-D22-03 A/B L3 Startup | 2d | 2026-03-24 | 2026-03-25 | DC1-RPP-L3-CX-3145 | 48d | 0d | Riley Warring | SQD |
| DC1-RPP-L3-CX-3165 |  | DC1-RPP-D22-03 A/B BMS/EPMS | 1d | 2026-03-26 | 2026-03-26 | DC1-RPP-L3-CX-3155 | 48d | 36d | Riley Warring | PRM |
|  | 04 | **DC1-DH2200-RPP-D22-04 Cx L3** |  | 2026-03-23 | 2026-03-26 |  |  |  |  |  |
| DC1-RPP-L3-CX-3175 |  | DC1-RPP-D22-04 A/B FTE | 1d | 2026-03-23 | 2026-03-23 | DC1-RPP-L2-2570, DC1-COD-L3-CX-3175 | 48d | 0d | Riley Warring | ROS |
| DC1-RPP-L3-CX-3185 |  | DC1-RPP-D22-04 A/B L3 Startup | 2d | 2026-03-24 | 2026-03-25 | DC1-RPP-L3-CX-3175 | 48d | 0d | Riley Warring | SQD |
| DC1-RPP-L3-CX-3195 |  | DC1-RPP-D22-04 A/B BMS/EPMS | 1d | 2026-03-26 | 2026-03-26 | DC1-RPP-L3-CX-3185 | 48d | 36d | Riley Warring | PRM |
|  | 05 | **DC1-DH2200-RPP-D22-05 Cx L3** |  | 2026-03-23 | 2026-03-26 |  |  |  |  |  |
| DC1-RPP-L3-CX-3205 |  | DC1-RPP-D22-05 A/B FTE | 1d | 2026-03-23 | 2026-03-23 | DC1-RPP-L2-2580, DC1-COD-L3-CX-3205 | 48d | 0d | Riley Warring | ROS |
| DC1-RPP-L3-CX-3215 |  | DC1-RPP-D22-05 A/B L3 Startup | 2d | 2026-03-24 | 2026-03-25 | DC1-RPP-L3-CX-3205 | 48d | 0d | Riley Warring | SQD |
| DC1-RPP-L3-CX-3225 |  | DC1-RPP-D22-05 A/B BMS/EPMS | 1d | 2026-03-26 | 2026-03-26 | DC1-RPP-L3-CX-3215 | 48d | 36d | Riley Warring | PRM |
|  | 06 | **DC1-DH2200-RPP-D22-06 Cx L3** |  | 2026-03-23 | 2026-03-26 |  |  |  |  |  |
| DC1-RPP-L3-CX-3235 |  | DC1-RPP-D22-06 A/B FTE | 1d | 2026-03-23 | 2026-03-23 | DC1-RPP-L2-2590, DC1-COD-L3-CX-3235 | 48d | 0d | Riley Warring | ROS |
| DC1-RPP-L3-CX-3245 |  | DC1-RPP-D22-06 A/B L3 Startup | 2d | 2026-03-24 | 2026-03-25 | DC1-RPP-L3-CX-3235 | 48d | 0d | Riley Warring | SQD |
| DC1-RPP-L3-CX-3255 |  | DC1-RPP-D22-06 A/B BMS/EPMS | 1d | 2026-03-26 | 2026-03-26 | DC1-RPP-L3-CX-3245 | 48d | 36d | Riley Warring | PRM |
|  | 05 | **DC1-DH2200-RPP-E22 Cx L3** |  | 2026-03-27 | 2026-04-01 |  |  |  |  |  |
|  | 01 | **DC1-DH2200-RPP-E22-01 Cx L3** |  | 2026-03-27 | 2026-04-01 |  |  |  |  |  |
| DC1-RPP-L3-CX-3265 |  | DC1-RPP-E22-01 A/B FTE | 1d | 2026-03-27 | 2026-03-27 | DC1-RPP-L2-2600, DC1-COD-L3-CX-3265 | 44d | 0d | Riley Warring | ROS |
| DC1-RPP-L3-CX-3275 |  | DC1-RPP-E22-01 A/B L3 Startup | 2d | 2026-03-30 | 2026-03-31 | DC1-RPP-L3-CX-3265 | 44d | 0d | Riley Warring | SQD |
| DC1-RPP-L3-CX-3285 |  | DC1-RPP-E22-01 A/B BMS/EPMS | 1d | 2026-04-01 | 2026-04-01 | DC1-RPP-L3-CX-3275 | 44d | 32d | Riley Warring | PRM |

Notes:
- DC1-RPP-L3-CX-3125: Steps: EC Startup Report; Vendor Startup
- DC1-RPP-L3-CX-3155: Steps: EC Startup Report; Vendor Startup
- DC1-RPP-L3-CX-3185: Steps: EC Startup Report; Vendor Startup
- DC1-RPP-L3-CX-3215: Steps: EC Startup Report; Vendor Startup
- DC1-RPP-L3-CX-3245: Steps: EC Startup Report; Vendor Startup
- DC1-RPP-L3-CX-3275: Steps: EC Startup Report; Vendor Startup

| ID | WBS | Activity | Duration | Start | Finish | Predecessors | Total float | Free float | Layton Responsible Party | Vendor Responsible Party |
| --- | --- | --- | --- | --- | --- | --- | --- | --- | --- | --- |
|  | 02 | **DC1-DH2200-RPP-E22-02 Cx L3** |  | 2026-03-27 | 2026-04-01 |  |  |  |  |  |
| DC1-RPP-L3-CX-3295 |  | DC1-RPP-E22-02 A/B FTE | 1d | 2026-03-27 | 2026-03-27 | DC1-RPP-L2-2610, DC1-COD-L3-CX-3295 | 44d | 0d | Riley Warring | ROS |
| DC1-RPP-L3-CX-3305 |  | DC1-RPP-E22-02 A/B L3 Startup | 2d | 2026-03-30 | 2026-03-31 | DC1-RPP-L3-CX-3295 | 44d | 0d | Riley Warring | SQD |
| DC1-RPP-L3-CX-3315 |  | DC1-RPP-E22-02 A/B BMS/EPMS | 1d | 2026-04-01 | 2026-04-01 | DC1-RPP-L3-CX-3305 | 44d | 32d | Riley Warring | PRM |
|  | 03 | **DC1-DH2200-RPP-E22-03 Cx L3** |  | 2026-03-27 | 2026-04-01 |  |  |  |  |  |
| DC1-RPP-L3-CX-3325 |  | DC1-RPP-E22-03 A/B FTE | 1d | 2026-03-27 | 2026-03-27 | DC1-RPP-L2-2620, DC1-COD-L3-CX-3325 | 44d | 0d | Riley Warring | ROS |
| DC1-RPP-L3-CX-3335 |  | DC1-RPP-E22-03 A/B L3 Startup | 2d | 2026-03-30 | 2026-03-31 | DC1-RPP-L3-CX-3325 | 44d | 0d | Riley Warring | SQD |
| DC1-RPP-L3-CX-3345 |  | DC1-RPP-E22-03 A/B BMS/EPMS | 1d | 2026-04-01 | 2026-04-01 | DC1-RPP-L3-CX-3335 | 44d | 32d | Riley Warring | PRM |
|  | 04 | **DC1-DH2200-RPP-E22-04 Cx L3** |  | 2026-03-27 | 2026-04-01 |  |  |  |  |  |
| DC1-RPP-L3-CX-3355 |  | DC1-RPP-E22-04 A/B FTE | 1d | 2026-03-27 | 2026-03-27 | DC1-RPP-L2-2630, DC1-COD-L3-CX-3355 | 44d | 0d | Riley Warring | ROS |
| DC1-RPP-L3-CX-3365 |  | DC1-RPP-E22-04 A/B L3 Startup | 2d | 2026-03-30 | 2026-03-31 | DC1-RPP-L3-CX-3355 | 44d | 0d | Riley Warring | SQD |
| DC1-RPP-L3-CX-3375 |  | DC1-RPP-E22-04 A/B BMS/EPMS | 1d | 2026-04-01 | 2026-04-01 | DC1-RPP-L3-CX-3365 | 44d | 32d | Riley Warring | PRM |
|  | 05 | **DC1-DH2200-RPP-E22-05 Cx L3** |  | 2026-03-27 | 2026-04-01 |  |  |  |  |  |
| DC1-RPP-L3-CX-3385 |  | DC1-RPP-E22-05 A/B FTE | 1d | 2026-03-27 | 2026-03-27 | DC1-RPP-L2-2640, DC1-COD-L3-CX-3385 | 44d | 0d | Riley Warring | ROS |
| DC1-RPP-L3-CX-3395 |  | DC1-RPP-E22-05 A/B L3 Startup | 2d | 2026-03-30 | 2026-03-31 | DC1-RPP-L3-CX-3385 | 44d | 0d | Riley Warring | SQD |
| DC1-RPP-L3-CX-3405 |  | DC1-RPP-E22-05 A/B BMS/EPMS | 1d | 2026-04-01 | 2026-04-01 | DC1-RPP-L3-CX-3395 | 44d | 32d | Riley Warring | PRM |
|  | 06 | **DC1-DH2200-RPP-E22-06 Cx L3** |  | 2026-03-27 | 2026-04-01 |  |  |  |  |  |
| DC1-RPP-L3-CX-3415 |  | DC1-RPP-E22-06 A/B FTE | 1d | 2026-03-27 | 2026-03-27 | DC1-RPP-L2-2650, DC1-COD-L3-CX-3415 | 44d | 0d | Riley Warring | ROS |
| DC1-RPP-L3-CX-3425 |  | DC1-RPP-E22-06 A/B L3 Startup | 2d | 2026-03-30 | 2026-03-31 | DC1-RPP-L3-CX-3415 | 44d | 0d | Riley Warring | SQD |
| DC1-RPP-L3-CX-3435 |  | DC1-RPP-E22-06 A/B BMS/EPMS | 1d | 2026-04-01 | 2026-04-01 | DC1-RPP-L3-CX-3425 | 44d | 32d | Riley Warring | PRM |
|  | 06 | **DC1-DH2200-RPP-F22 Cx L3** |  | 2026-03-27 | 2026-04-01 |  |  |  |  |  |
|  | 01 | **DC1-DH2200-RPP-F22-01 Cx L3** |  | 2026-03-27 | 2026-04-01 |  |  |  |  |  |
| DC1-RPP-L3-CX-3445 |  | DC1-RPP-F22-01 A/B FTE | 1d | 2026-03-27 | 2026-03-27 | DC1-RPP-L2-2660, DC1-COD-L3-CX-3445 | 44d | 0d | Riley Warring | ROS |
| DC1-RPP-L3-CX-3455 |  | DC1-RPP-F22-01 A/B L3 Startup | 2d | 2026-03-30 | 2026-03-31 | DC1-RPP-L3-CX-3445 | 44d | 0d | Riley Warring | SQD |
| DC1-RPP-L3-CX-3465 |  | DC1-RPP-F22-01 A/B BMS/EPMS | 1d | 2026-04-01 | 2026-04-01 | DC1-RPP-L3-CX-3455 | 44d | 32d | Riley Warring | PRM |

Notes:
- DC1-RPP-L3-CX-3305: Steps: EC Startup Report; Vendor Startup
- DC1-RPP-L3-CX-3335: Steps: EC Startup Report; Vendor Startup
- DC1-RPP-L3-CX-3365: Steps: EC Startup Report; Vendor Startup
- DC1-RPP-L3-CX-3395: Steps: EC Startup Report; Vendor Startup
- DC1-RPP-L3-CX-3425: Steps: EC Startup Report; Vendor Startup
- DC1-RPP-L3-CX-3455: Steps: EC Startup Report; Vendor Startup

| ID | WBS | Activity | Duration | Start | Finish | Predecessors | Total float | Free float | Layton Responsible Party | Vendor Responsible Party |
| --- | --- | --- | --- | --- | --- | --- | --- | --- | --- | --- |
|  | 02 | **DC1-DH2200-RPP-F22-02 Cx L3** |  | 2026-03-27 | 2026-04-01 |  |  |  |  |  |
| DC1-RPP-L3-CX-3475 |  | DC1-RPP-F22-02 A/B FTE | 1d | 2026-03-27 | 2026-03-27 | DC1-RPP-L2-2670, DC1-COD-L3-CX-3475 | 44d | 0d | Riley Warring | ROS |
| DC1-RPP-L3-CX-3485 |  | DC1-RPP-F22-02 A/B L3 Startup | 2d | 2026-03-30 | 2026-03-31 | DC1-RPP-L3-CX-3475 | 44d | 0d | Riley Warring | SQD |
| DC1-RPP-L3-CX-3495 |  | DC1-RPP-F22-02 A/B BMS/EPMS | 1d | 2026-04-01 | 2026-04-01 | DC1-RPP-L3-CX-3485 | 44d | 32d | Riley Warring | PRM |
|  | 03 | **DC1-DH2200-RPP-F22-03 Cx L3** |  | 2026-03-27 | 2026-04-01 |  |  |  |  |  |
| DC1-RPP-L3-CX-3505 |  | DC1-RPP-F22-03 A/B FTE | 1d | 2026-03-27 | 2026-03-27 | DC1-RPP-L2-2680, DC1-COD-L3-CX-3505 | 44d | 0d | Riley Warring | ROS |
| DC1-RPP-L3-CX-3515 |  | DC1-RPP-F22-03 A/B L3 Startup | 2d | 2026-03-30 | 2026-03-31 | DC1-RPP-L3-CX-3505 | 44d | 0d | Riley Warring | SQD |
| DC1-RPP-L3-CX-3525 |  | DC1-RPP-F22-03 A/B BMS/EPMS | 1d | 2026-04-01 | 2026-04-01 | DC1-RPP-L3-CX-3515 | 44d | 32d | Riley Warring | PRM |
|  | 04 | **DC1-DH2200-RPP-F22-04 Cx L3** |  | 2026-03-27 | 2026-04-01 |  |  |  |  |  |
| DC1-RPP-L3-CX-3535 |  | DC1-RPP-F22-04 A/B FTE | 1d | 2026-03-27 | 2026-03-27 | DC1-RPP-L2-2690, DC1-COD-L3-CX-3535 | 44d | 0d | Riley Warring | ROS |
| DC1-RPP-L3-CX-3545 |  | DC1-RPP-F22-04 A/B L3 Startup | 2d | 2026-03-30 | 2026-03-31 | DC1-RPP-L3-CX-3535 | 44d | 0d | Riley Warring | SQD |
| DC1-RPP-L3-CX-3555 |  | DC1-RPP-F22-04 A/B BMS/EPMS | 1d | 2026-04-01 | 2026-04-01 | DC1-RPP-L3-CX-3545 | 44d | 32d | Riley Warring | PRM |
|  | 05 | **DC1-DH2200-RPP-F22-05 Cx L3** |  | 2026-03-27 | 2026-04-01 |  |  |  |  |  |
| DC1-RPP-L3-CX-3565 |  | DC1-RPP-F22-05 A/B FTE | 1d | 2026-03-27 | 2026-03-27 | DC1-RPP-L2-2700, DC1-COD-L3-CX-3565 | 44d | 0d | Riley Warring | ROS |
| DC1-RPP-L3-CX-3575 |  | DC1-RPP-F22-05 A/B L3 Startup | 2d | 2026-03-30 | 2026-03-31 | DC1-RPP-L3-CX-3565 | 44d | 0d | Riley Warring | SQD |
| DC1-RPP-L3-CX-3585 |  | DC1-RPP-F22-05 A/B BMS/EPMS | 1d | 2026-04-01 | 2026-04-01 | DC1-RPP-L3-CX-3575 | 44d | 32d | Riley Warring | PRM |
|  | 06 | **DC1-DH2200-RPP-F22-06 Cx L3** |  | 2026-03-27 | 2026-04-01 |  |  |  |  |  |
| DC1-RPP-L3-CX-3595 |  | DC1-RPP-F22-06 A/B FTE | 1d | 2026-03-27 | 2026-03-27 | DC1-RPP-L2-2710, DC1-COD-L3-CX-3595 | 44d | 0d | Riley Warring | ROS |
| DC1-RPP-L3-CX-3605 |  | DC1-RPP-F22-06 A/B L3 Startup | 2d | 2026-03-30 | 2026-03-31 | DC1-RPP-L3-CX-3595 | 44d | 0d | Riley Warring | SQD |
| DC1-RPP-L3-CX-3615 |  | DC1-RPP-F22-06 A/B BMS/EPMS | 1d | 2026-04-01 | 2026-04-01 | DC1-RPP-L3-CX-3605 | 44d | 32d | Riley Warring | PRM |
|  | 08 | **DC1-DH2200 MOD-02 Cx L3** |  | 2026-03-17 | 2026-03-30 |  |  |  |  |  |
|  | 01 | **DC1-DH2200 MOD-A22-02 Cx L3** |  | 2026-03-17 | 2026-03-20 |  |  |  |  |  |
| DC1-MOD2-L3-Cx-2210 |  | DC1-MOD-A22-02 FTE | 1d | 2026-03-17 | 2026-03-17 | DC1-MOD02-L2-2070, DC1-SWD-L3-CX-2210 | 23d | 0d | Riley Warring | ROS |
| DC1-MOD2-L3-Cx-2220 |  | DC1-MOD-A22-02 L3 Startup | 2d | 2026-03-18 | 2026-03-19 | DC1-MOD2-L3-Cx-2210 | 28d | 0d | Riley Warring | PHE |
| DC1-MOD2-L3-Cx-2230 |  | DC1-MOD-A22-02 BMS/EPMS | 1d | 2026-03-20 | 2026-03-20 | DC1-MOD2-L3-Cx-2220 | 28d | 14d | Riley Warring | PRM |

Notes:
- DC1-RPP-L3-CX-3485: Steps: EC Startup Report; Vendor Startup
- DC1-RPP-L3-CX-3515: Steps: EC Startup Report; Vendor Startup
- DC1-RPP-L3-CX-3545: Steps: EC Startup Report; Vendor Startup
- DC1-RPP-L3-CX-3575: Steps: EC Startup Report; Vendor Startup
- DC1-RPP-L3-CX-3605: Steps: EC Startup Report; Vendor Startup
- DC1-MOD2-L3-Cx-2220: Steps: EC Startup Report; Vendor Startup

| ID | WBS | Activity | Duration | Start | Finish | Predecessors | Total float | Free float | Layton Responsible Party | Vendor Responsible Party |
| --- | --- | --- | --- | --- | --- | --- | --- | --- | --- | --- |
|  | 02 | **DC1-DH2200 MOD-B22-02 Cx L3** |  | 2026-03-18 | 2026-03-23 |  |  |  |  |  |
| DC1-MOD2-L3-Cx-2240 |  | DC1-MOD-B22-02 FTE | 1d | 2026-03-18 | 2026-03-18 | DC1-MOD02-L2-2080, DC1-SWD-L3-CX-2240 | 22d | 0d | Riley Warring | ROS |
| DC1-MOD2-L3-Cx-2250 |  | DC1-MOD-B22-02 L3 Startup | 2d | 2026-03-19 | 2026-03-20 | DC1-MOD2-L3-Cx-2240 | 27d | 0d | Riley Warring | PHE |
| DC1-MOD2-L3-Cx-2260 |  | DC1-MOD-B22-02 BMS/EPMS | 1d | 2026-03-23 | 2026-03-23 | DC1-MOD2-L3-Cx-2250 | 27d | 13d | Riley Warring | PRM |
|  | 03 | **DC1-DH2200 MOD-C22-02 Cx L3** |  | 2026-03-19 | 2026-03-24 |  |  |  |  |  |
| DC1-MOD2-L3-Cx-2270 |  | DC1-MOD-C22-02 FTE | 1d | 2026-03-19 | 2026-03-19 | DC1-MOD02-L2-2090, DC1-SWD-L3-CX-2270 | 21d | 0d | Riley Warring | ROS |
| DC1-MOD2-L3-Cx-2280 |  | DC1-MOD-C22-02 L3 Startup | 2d | 2026-03-20 | 2026-03-23 | DC1-MOD2-L3-Cx-2270 | 26d | 0d | Riley Warring | PHE |
| DC1-MOD2-L3-Cx-2290 |  | DC1-MOD-C22-02 BMS/EPMS | 1d | 2026-03-24 | 2026-03-24 | DC1-MOD2-L3-Cx-2280 | 26d | 12d | Riley Warring | PRM |
|  | 04 | **DC1-DH2200 MOD-D22-02 Cx L3** |  | 2026-03-20 | 2026-03-25 |  |  |  |  |  |
| DC1-MOD2-L3-Cx-2300 |  | DC1-MOD-D22-02 FTE | 1d | 2026-03-20 | 2026-03-20 | DC1-MOD02-L2-2100, DC1-SWD-L3-CX-2300 | 20d | 0d | Riley Warring | ROS |
| DC1-MOD2-L3-Cx-2310 |  | DC1-MOD-D22-02 L3 Startup | 2d | 2026-03-23 | 2026-03-24 | DC1-MOD2-L3-Cx-2300 | 25d | 0d | Riley Warring | PHE |
| DC1-MOD2-L3-Cx-2320 |  | DC1-MOD-D22-02 BMS/EPMS | 1d | 2026-03-25 | 2026-03-25 | DC1-MOD2-L3-Cx-2310 | 25d | 11d | Riley Warring | PRM |
|  | 05 | **DC1-DH2200 MOD-E22-02 Cx L3** |  | 2026-03-23 | 2026-03-26 |  |  |  |  |  |
| DC1-MOD2-L3-Cx-2330 |  | DC1-MOD-E22-02 FTE | 1d | 2026-03-23 | 2026-03-23 | DC1-MOD02-L2-2110, DC1-SWD-L3-CX-2330 | 19d | 0d | Riley Warring | ROS |
| DC1-MOD2-L3-Cx-2340 |  | DC1-MOD-E22-02 L3 Startup | 2d | 2026-03-24 | 2026-03-25 | DC1-MOD2-L3-Cx-2330 | 24d | 0d | Riley Warring | PHE |
| DC1-MOD2-L3-Cx-2350 |  | DC1-MOD-E22-02 BMS/EPMS | 1d | 2026-03-26 | 2026-03-26 | DC1-MOD2-L3-Cx-2340 | 24d | 10d | Riley Warring | PRM |
|  | 06 | **DC1-DH2200 MOD-F22-02 Cx L3** |  | 2026-03-24 | 2026-03-27 |  |  |  |  |  |
| DC1-MOD2-L3-Cx-2360 |  | DC1-MOD-F22-02 FTE | 1d | 2026-03-24 | 2026-03-24 | DC1-MOD02-L2-2120, DC1-SWD-L3-CX-2360 | 18d | 0d | Riley Warring | ROS |
| DC1-MOD2-L3-Cx-2370 |  | DC1-MOD-F22-02 L3 Startup | 2d | 2026-03-25 | 2026-03-26 | DC1-MOD2-L3-Cx-2360 | 23d | 0d | Riley Warring | PHE |
| DC1-MOD2-L3-Cx-2380 |  | DC1-MOD-F22-02 BMS/EPMS | 1d | 2026-03-27 | 2026-03-27 | DC1-MOD2-L3-Cx-2370 | 23d | 9d | Riley Warring | PRM |
|  | 07 | **DC1-DH2200 MOD-R22-02 Cx L3** |  | 2026-03-25 | 2026-03-30 |  |  |  |  |  |
| DC1-MOD2-L3-Cx-2390 |  | DC1-MOD-R22-02 FTE | 1d | 2026-03-25 | 2026-03-25 | DC1-MOD02-L2-2130, DC1-SWD-L3-CX-2390 | 17d | 0d | Riley Warring | ROS |
| DC1-MOD2-L3-Cx-2400 |  | DC1-MOD-R22-02 L3 Startup | 2d | 2026-03-26 | 2026-03-27 | DC1-MOD2-L3-Cx-2390 | 22d | 0d | Riley Warring | PHE |
| DC1-MOD2-L3-Cx-2410 |  | DC1-MOD-R22-02 BMS/EPMS | 1d | 2026-03-30 | 2026-03-30 | DC1-MOD2-L3-Cx-2400 | 22d | 8d | Riley Warring | PRM |

Notes:
- DC1-MOD2-L3-Cx-2250: Steps: EC Startup Report; Vendor Startup
- DC1-MOD2-L3-Cx-2280: Steps: EC Startup Report; Vendor Startup
- DC1-MOD2-L3-Cx-2310: Steps: EC Startup Report; Vendor Startup
- DC1-MOD2-L3-Cx-2340: Steps: EC Startup Report; Vendor Startup
- DC1-MOD2-L3-Cx-2370: Steps: EC Startup Report; Vendor Startup
- DC1-MOD2-L3-Cx-2400: Steps: EC Startup Report; Vendor Startup

| ID | WBS | Activity | Duration | Start | Finish | Predecessors | Total float | Free float | Layton Responsible Party | Vendor Responsible Party |
| --- | --- | --- | --- | --- | --- | --- | --- | --- | --- | --- |
|  | 09 | **DC1-DH2200 MOD-03 Cx L3** |  | 2026-03-19 | 2026-04-09 |  |  |  |  |  |
|  | 01 | **DC1-DH2200 MOD-A22-03 Cx L3** |  | 2026-03-19 | 2026-03-24 |  |  |  |  |  |
| DC1-MOD3-L3-Cx-2210 |  | DC1-MOD-A22-03 FTE | 1d | 2026-03-19 | 2026-03-19 | DC1-MOD03-L2-2070, DC1-UPSM-L3-CX-2210 | 26d | 0d | Riley Warring | ROS |
| DC1-MOD3-L3-Cx-2220 |  | DC1-MOD-A22-03 L3 Startup | 2d | 2026-03-20 | 2026-03-23 | DC1-MOD3-L3-Cx-2210 | 26d | 0d | Riley Warring | PHE |
| DC1-MOD3-L3-Cx-2230 |  | DC1-MOD-A22-03 BMS/EPMS | 1d | 2026-03-24 | 2026-03-24 | DC1-MOD3-L3-Cx-2220 | 26d | 12d | Riley Warring | PRM |
|  | 02 | **DC1-DH2200 MOD-B22-03 Cx L3** |  | 2026-03-24 | 2026-03-27 |  |  |  |  |  |
| DC1-MOD3-L3-Cx-2240 |  | DC1-MOD-B22-03 FTE | 1d | 2026-03-24 | 2026-03-24 | DC1-MOD03-L2-2080, DC1-UPSM-L3-CX-2240 | 23d | 0d | Riley Warring | ROS |
| DC1-MOD3-L3-Cx-2250 |  | DC1-MOD-B22-03 L3 Startup | 2d | 2026-03-25 | 2026-03-26 | DC1-MOD3-L3-Cx-2240 | 23d | 0d | Riley Warring | PHE |
| DC1-MOD3-L3-Cx-2260 |  | DC1-MOD-B22-03 BMS/EPMS | 1d | 2026-03-27 | 2026-03-27 | DC1-MOD3-L3-Cx-2250 | 23d | 9d | Riley Warring | PRM |
|  | 03 | **DC1-DH2200 MOD-C22-03 Cx L3** |  | 2026-03-27 | 2026-04-01 |  |  |  |  |  |
| DC1-MOD3-L3-Cx-2270 |  | DC1-MOD-C22-03 FTE | 1d | 2026-03-27 | 2026-03-27 | DC1-MOD03-L2-2090, DC1-UPSM-L3-CX-2270 | 20d | 0d | Riley Warring | ROS |
| DC1-MOD3-L3-Cx-2280 |  | DC1-MOD-C22-03 L3 Startup | 2d | 2026-03-30 | 2026-03-31 | DC1-MOD3-L3-Cx-2270 | 20d | 0d | Riley Warring | PHE |
| DC1-MOD3-L3-Cx-2290 |  | DC1-MOD-C22-03 BMS/EPMS | 1d | 2026-04-01 | 2026-04-01 | DC1-MOD3-L3-Cx-2280 | 20d | 6d | Riley Warring | PRM |
|  | 04 | **DC1-DH2200 MOD-D22-03 Cx L3** |  | 2026-03-31 | 2026-04-03 |  |  |  |  |  |
| DC1-MOD3-L3-Cx-2300 |  | DC1-MOD-D22-03 FTE | 1d | 2026-03-31 | 2026-03-31 | DC1-MOD03-L2-2100, DC1-UPSM-L3-CX-2300 | 18d | 0d | Riley Warring | ROS |
| DC1-MOD3-L3-Cx-2310 |  | DC1-MOD-D22-03 L3 Startup | 2d | 2026-04-01 | 2026-04-02 | DC1-MOD3-L3-Cx-2300 | 18d | 0d | Riley Warring | PHE |
| DC1-MOD3-L3-Cx-2320 |  | DC1-MOD-D22-03 BMS/EPMS | 1d | 2026-04-03 | 2026-04-03 | DC1-MOD3-L3-Cx-2310 | 18d | 4d | Riley Warring | PRM |
|  | 05 | **DC1-DH2200 MOD-E22-03 Cx L3** |  | 2026-04-02 | 2026-04-07 |  |  |  |  |  |
| DC1-MOD3-L3-Cx-2330 |  | DC1-MOD-E22-03 FTE | 1d | 2026-04-02 | 2026-04-02 | DC1-MOD03-L2-2110, DC1-UPSM-L3-CX-2330 | 16d | 0d | Riley Warring | ROS |
| DC1-MOD3-L3-Cx-2340 |  | DC1-MOD-E22-03 L3 Startup | 2d | 2026-04-03 | 2026-04-06 | DC1-MOD3-L3-Cx-2330 | 16d | 0d | Riley Warring | PHE |
| DC1-MOD3-L3-Cx-2350 |  | DC1-MOD-E22-03 BMS/EPMS | 1d | 2026-04-07 | 2026-04-07 | DC1-MOD3-L3-Cx-2340 | 16d | 2d | Riley Warring | PRM |
|  | 06 | **DC1-DH2200 MOD-F22-03 Cx L3** |  | 2026-04-06 | 2026-04-09 |  |  |  |  |  |
| DC1-MOD3-L3-Cx-2360 |  | DC1-MOD-F22-03 FTE | 1d | 2026-04-06 | 2026-04-06 | DC1-MOD03-L2-2120, DC1-UPSM-L3-CX-2360 | 14d | 0d | Riley Warring | ROS |
| DC1-MOD3-L3-Cx-2370 |  | DC1-MOD-F22-03 L3 Startup | 2d | 2026-04-07 | 2026-04-08 | DC1-MOD3-L3-Cx-2360 | 14d | 0d | Riley Warring | PHE |
| DC1-MOD3-L3-Cx-2380 |  | DC1-MOD-F22-03 BMS/EPMS | 1d | 2026-04-09 | 2026-04-09 | DC1-MOD3-L3-Cx-2370 | 14d | 0d | Riley Warring | PRM |

Notes:
- DC1-MOD3-L3-Cx-2220: Steps: EC Startup Report; Vendor Startup
- DC1-MOD3-L3-Cx-2250: Steps: EC Startup Report; Vendor Startup
- DC1-MOD3-L3-Cx-2280: Steps: EC Startup Report; Vendor Startup
- DC1-MOD3-L3-Cx-2310: Steps: EC Startup Report; Vendor Startup
- DC1-MOD3-L3-Cx-2340: Steps: EC Startup Report; Vendor Startup
- DC1-MOD3-L3-Cx-2370: Steps: EC Startup Report; Vendor Startup

| ID | WBS | Activity | Duration | Start | Finish | Predecessors | Total float | Free float | Layton Responsible Party | Vendor Responsible Party |
| --- | --- | --- | --- | --- | --- | --- | --- | --- | --- | --- |
|  | 07 | **DC1-DH2200 MOD-R22-03 Cx L3** |  | 2026-04-06 | 2026-04-09 |  |  |  |  |  |
| DC1-MOD3-L3-Cx-2390 |  | DC1-MOD-R22-03 FTE | 1d | 2026-04-06 | 2026-04-06 | DC1-MOD03-L2-2130, DC1-UPSM-L3-CX-2390 | 14d | 0d | Riley Warring | ROS |
| DC1-MOD3-L3-Cx-2400 |  | DC1-MOD-R22-03 L3 Startup | 2d | 2026-04-07 | 2026-04-08 | DC1-MOD3-L3-Cx-2390 | 14d | 0d | Riley Warring | PHE |
| DC1-MOD3-L3-Cx-2410 |  | DC1-MOD-R22-03 BMS/EPMS | 1d | 2026-04-09 | 2026-04-09 | DC1-MOD3-L3-Cx-2400 | 14d | 0d | Riley Warring | PRM |
|  | 10 | **DC1-DH2200 CDUs Cx L3** |  | 2026-03-23 | 2026-04-21 |  |  |  |  |  |
|  | 01 | **DC1-CDU-DH2200-01 Cx L3** |  | 2026-03-23 | 2026-03-26 |  |  |  |  |  |
| DC1-CDU-L3-CX-2725 |  | CDU-DH2200-01 FTE | 1d | 2026-03-23 | 2026-03-23 | DC1-CDU-L2-2550, DC1-MOD3-L3-Cx-2210 | 48d | 0d | Riley Warring | ROS |
| DC1-CDU-L3-CX-2735 |  | CDU-DH2200-01 L3 Startup | 2d | 2026-03-24 | 2026-03-25 | DC1-CDU-L3-CX-2725 | 48d | 0d | Riley Warring | VER |
| DC1-CDU-L3-CX-2745 |  | CDU-DH2200-01 BMS/EPMS | 1d | 2026-03-26 | 2026-03-26 | DC1-CDU-L3-CX-2735 | 48d | 36d | Riley Warring | PRM |
|  | 02 | **DC1-CDU-DH2200-02 Cx L3** |  | 2026-03-23 | 2026-03-26 |  |  |  |  |  |
| DC1-CDU-L3-CX-2755 |  | CDU-DH2200-02 FTE | 1d | 2026-03-23 | 2026-03-23 | DC1-CDU-L2-2560, DC1-MOD3-L3-Cx-2210 | 48d | 0d | Riley Warring | ROS |
| DC1-CDU-L3-CX-2765 |  | CDU-DH2200-02 L3 Startup | 2d | 2026-03-24 | 2026-03-25 | DC1-CDU-L3-CX-2755 | 48d | 0d | Riley Warring | VER |
| DC1-CDU-L3-CX-2775 |  | CDU-DH2200-02 BMS/EPMS | 1d | 2026-03-26 | 2026-03-26 | DC1-CDU-L3-CX-2765 | 48d | 36d | Riley Warring | PRM |
|  | 03 | **DC1-CDU-DH2200-03 Cx L3** |  | 2026-03-23 | 2026-03-26 |  |  |  |  |  |
| DC1-CDU-L3-CX-2785 |  | CDU-DH2200-03 FTE | 1d | 2026-03-23 | 2026-03-23 | DC1-CDU-L2-2570, DC1-MOD3-L3-Cx-2210 | 48d | 0d | Riley Warring | ROS |
| DC1-CDU-L3-CX-2795 |  | CDU-DH2200-03 L3 Startup | 2d | 2026-03-24 | 2026-03-25 | DC1-CDU-L3-CX-2785 | 48d | 0d | Riley Warring | VER |
| DC1-CDU-L3-CX-2805 |  | CDU-DH2200-03 BMS/EPMS | 1d | 2026-03-26 | 2026-03-26 | DC1-CDU-L3-CX-2795 | 48d | 36d | Riley Warring | PRM |
|  | 04 | **DC1-CDU-DH2200-04 Cx L3** |  | 2026-03-31 | 2026-04-03 |  |  |  |  |  |
| DC1-CDU-L3-CX-2815 |  | CDU-DH2200-04 FTE | 1d | 2026-03-31 | 2026-03-31 | DC1-CDU-L2-2580, DC1-MOD3-L3-Cx-2210 | 42d | 0d | Riley Warring | ROS |
| DC1-CDU-L3-CX-2825 |  | CDU-DH2200-04 L3 Startup | 2d | 2026-04-01 | 2026-04-02 | DC1-CDU-L3-CX-2815 | 42d | 0d | Riley Warring | VER |
| DC1-CDU-L3-CX-2835 |  | CDU-DH2200-04 BMS/EPMS | 1d | 2026-04-03 | 2026-04-03 | DC1-CDU-L3-CX-2825 | 42d | 30d | Riley Warring | PRM |
|  | 05 | **DC1-CDU-DH2200-05 Cx L3** |  | 2026-03-31 | 2026-04-03 |  |  |  |  |  |
| DC1-CDU-L3-CX-2845 |  | CDU-DH2200-05 FTE | 1d | 2026-03-31 | 2026-03-31 | DC1-CDU-L2-2590, DC1-MOD3-L3-Cx-2210 | 42d | 0d | Riley Warring | ROS |
| DC1-CDU-L3-CX-2855 |  | CDU-DH2200-05 L3 Startup | 2d | 2026-04-01 | 2026-04-02 | DC1-CDU-L3-CX-2845 | 42d | 0d | Riley Warring | VER |
| DC1-CDU-L3-CX-2865 |  | CDU-DH22002-05 BMS/EPMS | 1d | 2026-04-03 | 2026-04-03 | DC1-CDU-L3-CX-2855 | 42d | 30d | Riley Warring | PRM |

Notes:
- DC1-MOD3-L3-Cx-2400: Steps: EC Startup Report; Vendor Startup
- DC1-CDU-L3-CX-2735: Steps: EC Startup Report; MC Installation Checklist; Vendor Startup
- DC1-CDU-L3-CX-2765: Steps: EC Startup Report; MC Installation Checklist; Vendor Startup
- DC1-CDU-L3-CX-2795: Steps: EC Startup Report; MC Installation Checklist; Vendor Startup
- DC1-CDU-L3-CX-2825: Steps: EC Startup Report; MC Installation Checklist; Vendor Startup
- DC1-CDU-L3-CX-2855: Steps: EC Startup Report; MC Installation Checklist; Vendor Startup

| ID | WBS | Activity | Duration | Start | Finish | Predecessors | Total float | Free float | Layton Responsible Party | Vendor Responsible Party |
| --- | --- | --- | --- | --- | --- | --- | --- | --- | --- | --- |
|  | 06 | **DC1-CDU-DH2200-06 Cx L3** |  | 2026-03-31 | 2026-04-03 |  |  |  |  |  |
| DC1-CDU-L3-CX-2875 |  | CDU-DH2200-06 FTE | 1d | 2026-03-31 | 2026-03-31 | DC1-CDU-L2-2600, DC1-MOD3-L3-Cx-2210 | 42d | 0d | Riley Warring | ROS |
| DC1-CDU-L3-CX-2885 |  | CDU-DH2200-06 L3 Startup | 2d | 2026-04-01 | 2026-04-02 | DC1-CDU-L3-CX-2875 | 42d | 0d | Riley Warring | VER |
| DC1-CDU-L3-CX-2895 |  | CDU-DH2200-06 BMS/EPMS | 1d | 2026-04-03 | 2026-04-03 | DC1-CDU-L3-CX-2885 | 42d | 30d | Riley Warring | PRM |
|  | 07 | **DC1-CDU-DH2200-07 Cx L3** |  | 2026-04-08 | 2026-04-13 |  |  |  |  |  |
| DC1-CDU-L3-CX-2905 |  | CDU-DH2200-07 FTE | 1d | 2026-04-08 | 2026-04-08 | DC1-CDU-L2-2610, DC1-MOD3-L3-Cx-2240 | 36d | 0d | Riley Warring | ROS |
| DC1-CDU-L3-CX-2915 |  | CDU-DH2200-07 L3 Startup | 2d | 2026-04-09 | 2026-04-10 | DC1-CDU-L3-CX-2905 | 36d | 0d | Riley Warring | VER |
| DC1-CDU-L3-CX-2925 |  | CDU-DH2200-07 BMS/EPMS | 1d | 2026-04-13 | 2026-04-13 | DC1-CDU-L3-CX-2915 | 36d | 24d | Riley Warring | PRM |
|  | 08 | **DC1-CDU-DH2200-08 Cx L3** |  | 2026-04-08 | 2026-04-13 |  |  |  |  |  |
| DC1-CDU-L3-CX-2935 |  | CDU-DH2200-08 FTE | 1d | 2026-04-08 | 2026-04-08 | DC1-CDU-L2-2620, DC1-MOD3-L3-Cx-2240 | 36d | 0d | Riley Warring | ROS |
| DC1-CDU-L3-CX-2945 |  | CDU-DH2200-08 L3 Startup | 2d | 2026-04-09 | 2026-04-10 | DC1-CDU-L3-CX-2935 | 36d | 0d | Riley Warring | VER |
| DC1-CDU-L3-CX-2955 |  | CDU-DH2200-08 BMS/EPMS | 1d | 2026-04-13 | 2026-04-13 | DC1-CDU-L3-CX-2945 | 36d | 24d | Riley Warring | PRM |
|  | 09 | **DC1-CDU-DH2200-09 Cx L3** |  | 2026-04-08 | 2026-04-13 |  |  |  |  |  |
| DC1-CDU-L3-CX-2965 |  | CDU-DH2200-09 FTE | 1d | 2026-04-08 | 2026-04-08 | DC1-CDU-L2-2630, DC1-MOD3-L3-Cx-2240 | 36d | 0d | Riley Warring | ROS |
| DC1-CDU-L3-CX-2975 |  | CDU-DH2200-09 L3 Startup | 2d | 2026-04-09 | 2026-04-10 | DC1-CDU-L3-CX-2965 | 36d | 0d | Riley Warring | VER |
| DC1-CDU-L3-CX-2985 |  | CDU-DH2200-09 BMS/EPMS | 1d | 2026-04-13 | 2026-04-13 | DC1-CDU-L3-CX-2975 | 36d | 24d | Riley Warring | PRM |
|  | 10 | **DC1-CDU-DH220010 Cx L3** |  | 2026-04-01 | 2026-04-06 |  |  |  |  |  |
| DC1-CDU-L3-CX-2995 |  | CDU-DH2200-10 FTE | 1d | 2026-04-01 | 2026-04-01 | DC1-CDU-L2-2640, DC1-MOD3-L3-Cx-2240 | 41d | 0d | Riley Warring | ROS |
| DC1-CDU-L3-CX-3005 |  | CDU-DH2200-10 L3 Startup | 2d | 2026-04-02 | 2026-04-03 | DC1-CDU-L3-CX-2995 | 41d | 0d | Riley Warring | VER |
| DC1-CDU-L3-CX-3015 |  | CDU-DH2200-10 BMS/EPMS | 1d | 2026-04-06 | 2026-04-06 | DC1-CDU-L3-CX-3005 | 41d | 29d | Riley Warring | PRM |
|  | 11 | **DC1-CDU-DH220011 Cx L3** |  | 2026-04-01 | 2026-04-06 |  |  |  |  |  |
| DC1-CDU-L3-CX-3025 |  | CDU-DH2200-11 FTE | 1d | 2026-04-01 | 2026-04-01 | DC1-CDU-L2-2650, DC1-MOD3-L3-Cx-2240 | 41d | 0d | Riley Warring | ROS |
| DC1-CDU-L3-CX-3035 |  | CDU-DH2200-11 L3 Startup | 2d | 2026-04-02 | 2026-04-03 | DC1-CDU-L3-CX-3025 | 41d | 0d | Riley Warring | VER |
| DC1-CDU-L3-CX-3045 |  | CDU-DH2200-11 BMS/EPMS | 1d | 2026-04-06 | 2026-04-06 | DC1-CDU-L3-CX-3035 | 41d | 29d | Riley Warring | PRM |

Notes:
- DC1-CDU-L3-CX-2885: Steps: EC Startup Report; MC Installation Checklist; Vendor Startup
- DC1-CDU-L3-CX-2915: Steps: EC Startup Report; MC Installation Checklist; Vendor Startup
- DC1-CDU-L3-CX-2945: Steps: EC Startup Report; MC Installation Checklist; Vendor Startup
- DC1-CDU-L3-CX-2975: Steps: EC Startup Report; MC Installation Checklist; Vendor Startup
- DC1-CDU-L3-CX-3005: Steps: EC Startup Report; MC Installation Checklist; Vendor Startup
- DC1-CDU-L3-CX-3035: Steps: EC Startup Report; MC Installation Checklist; Vendor Startup

| ID | WBS | Activity | Duration | Start | Finish | Predecessors | Total float | Free float | Layton Responsible Party | Vendor Responsible Party |
| --- | --- | --- | --- | --- | --- | --- | --- | --- | --- | --- |
|  | 12 | **DC1-CDU-DH2200-12 Cx L3** |  | 2026-04-01 | 2026-04-06 |  |  |  |  |  |
| DC1-CDU-L3-CX-3055 |  | CDU-DH2200-12 FTE | 1d | 2026-04-01 | 2026-04-01 | DC1-CDU-L2-2660, DC1-MOD3-L3-Cx-2240 | 41d | 0d | Riley Warring | ROS |
| DC1-CDU-L3-CX-3065 |  | CDU-DH2200-12 L3 Startup | 2d | 2026-04-02 | 2026-04-03 | DC1-CDU-L3-CX-3055 | 41d | 0d | Riley Warring | VER |
| DC1-CDU-L3-CX-3075 |  | CDU-DH2200-12 BMS/EPMS | 1d | 2026-04-06 | 2026-04-06 | DC1-CDU-L3-CX-3065 | 41d | 29d | Riley Warring | PRM |
|  | 13 | **DC1-CDU-DH2200-13 Cx L3** |  | 2026-04-09 | 2026-04-14 |  |  |  |  |  |
| DC1-CDU-L3-CX-3085 |  | CDU-DH2200-13 FTE | 1d | 2026-04-09 | 2026-04-09 | DC1-CDU-L2-2670, DC1-MOD3-L3-Cx-2270 | 35d | 0d | Riley Warring | ROS |
| DC1-CDU-L3-CX-3095 |  | CDU-DH2200-13 L3 Startup | 2d | 2026-04-10 | 2026-04-13 | DC1-CDU-L3-CX-3085 | 35d | 0d | Riley Warring | VER |
| DC1-CDU-L3-CX-3105 |  | CDU-DH2200-13 BMS/EPMS | 1d | 2026-04-14 | 2026-04-14 | DC1-CDU-L3-CX-3095 | 35d | 23d | Riley Warring | PRM |
|  | 14 | **DC1-CDU-DH2200-14 Cx L3** |  | 2026-04-09 | 2026-04-14 |  |  |  |  |  |
| DC1-CDU-L3-CX-3115 |  | CDU-DH2200-14 FTE | 1d | 2026-04-09 | 2026-04-09 | DC1-CDU-L2-2680, DC1-MOD3-L3-Cx-2270 | 35d | 0d | Riley Warring | ROS |
| DC1-CDU-L3-CX-3125 |  | CDU-DH2200-14 L3 Startup | 2d | 2026-04-10 | 2026-04-13 | DC1-CDU-L3-CX-3115 | 35d | 0d | Riley Warring | VER |
| DC1-CDU-L3-CX-3135 |  | CDU-DH2200-14 BMS/EPMS | 1d | 2026-04-14 | 2026-04-14 | DC1-CDU-L3-CX-3125 | 35d | 23d | Riley Warring | PRM |
|  | 15 | **DC1-CDU-DH2200-15 Cx L3** |  | 2026-04-09 | 2026-04-14 |  |  |  |  |  |
| DC1-CDU-L3-CX-3145 |  | CDU-DH2200-15 FTE | 1d | 2026-04-09 | 2026-04-09 | DC1-CDU-L2-2690, DC1-MOD3-L3-Cx-2270 | 35d | 0d | Riley Warring | ROS |
| DC1-CDU-L3-CX-3155 |  | CDU-DH2200-15 L3 Startup | 2d | 2026-04-10 | 2026-04-13 | DC1-CDU-L3-CX-3145 | 35d | 0d | Riley Warring | VER |
| DC1-CDU-L3-CX-3165 |  | CDU-DH2200-15 BMS/EPMS | 1d | 2026-04-14 | 2026-04-14 | DC1-CDU-L3-CX-3155 | 35d | 23d | Riley Warring | PRM |
|  | 16 | **DC1-CDU-DH2200-16 Cx L3** |  | 2026-04-16 | 2026-04-21 |  |  |  |  |  |
| DC1-CDU-L3-CX-3175 |  | CDU-DH2200-16 FTE | 1d | 2026-04-16 | 2026-04-16 | DC1-CDU-L2-2700, DC1-MOD3-L3-Cx-2270 | 30d | 0d | Riley Warring | ROS |
| DC1-CDU-L3-CX-3185 |  | CDU-DH2200-16 L3 Startup | 2d | 2026-04-17 | 2026-04-20 | DC1-CDU-L3-CX-3175 | 30d | 0d | Riley Warring | VER |
| DC1-CDU-L3-CX-3195 |  | CDU-DH2200-16 BMS/EPMS | 1d | 2026-04-21 | 2026-04-21 | DC1-CDU-L3-CX-3185 | 30d | 18d | Riley Warring | PRM |
|  | 17 | **DC1-CDU-DH2200-17 Cx L3** |  | 2026-04-16 | 2026-04-21 |  |  |  |  |  |
| DC1-CDU-L3-CX-3205 |  | CDU-DH2200-17 FTE | 1d | 2026-04-16 | 2026-04-16 | DC1-CDU-L2-2710, DC1-MOD3-L3-Cx-2270 | 30d | 0d | Riley Warring | ROS |
| DC1-CDU-L3-CX-3215 |  | CDU-DH2200-17 L3 Startup | 2d | 2026-04-17 | 2026-04-20 | DC1-CDU-L3-CX-3205 | 30d | 0d | Riley Warring | VER |
| DC1-CDU-L3-CX-3225 |  | CDU-DH2200-17 BMS/EPMS | 1d | 2026-04-21 | 2026-04-21 | DC1-CDU-L3-CX-3215 | 30d | 18d | Riley Warring | PRM |

Notes:
- DC1-CDU-L3-CX-3065: Steps: EC Startup Report; MC Installation Checklist; Vendor Startup
- DC1-CDU-L3-CX-3095: Steps: EC Startup Report; MC Installation Checklist; Vendor Startup
- DC1-CDU-L3-CX-3125: Steps: EC Startup Report; MC Installation Checklist; Vendor Startup
- DC1-CDU-L3-CX-3155: Steps: EC Startup Report; MC Installation Checklist; Vendor Startup
- DC1-CDU-L3-CX-3185: Steps: EC Startup Report; MC Installation Checklist; Vendor Startup
- DC1-CDU-L3-CX-3215: Steps: EC Startup Report; MC Installation Checklist; Vendor Startup

| ID | WBS | Activity | Duration | Start | Finish | Predecessors | Total float | Free float | Layton Responsible Party | Vendor Responsible Party |
| --- | --- | --- | --- | --- | --- | --- | --- | --- | --- | --- |
|  | 18 | **DC1-CDU-DH2200-18 Cx L3** |  | 2026-04-16 | 2026-04-21 |  |  |  |  |  |
| DC1-CDU-L3-CX-3235 |  | CDU-DH2200-18 FTE | 1d | 2026-04-16 | 2026-04-16 | DC1-CDU-L2-2720, DC1-MOD3-L3-Cx-2270 | 30d | 0d | Riley Warring | ROS |
| DC1-CDU-L3-CX-3245 |  | CDU-DH2200-18 L3 Startup | 2d | 2026-04-17 | 2026-04-20 | DC1-CDU-L3-CX-3235 | 30d | 0d | Riley Warring | VER |
| DC1-CDU-L3-CX-3255 |  | CDU-DH2200-18 BMS/EPMS | 1d | 2026-04-21 | 2026-04-21 | DC1-CDU-L3-CX-3245 | 30d | 18d | Riley Warring | PRM |
|  | 11 | **DC1-DH2200 CHLR-1RT40 Cx L3** |  | 2026-03-02 | 2026-04-02 |  |  |  |  |  |
|  | 01 | **DC1-DH2200 CHLR-1RT40-A22 Cx L3** |  | 2026-03-02 | 2026-04-02 |  |  |  |  |  |
| DC1-CHLR-L3-Cx-2210 |  | DC1-CHLR-1RT40-A22 FTE | 1d | 2026-03-02 | 2026-03-02 | DC1-SWD-L3-CX-2210 SS, DC1-CHLR-L2-1070 | 32d | 0d | Riley Warring | ROS |
| DC1-CHLR-L3-Cx-2420 |  | DC1-CHLR-1RT40-A22 Heat Up | 2d | 2026-03-03 | 2026-03-04 | DC1-CHLR-L3-Cx-2210 | 32d | 13d | Riley Warring | LAY |
| DC1-CHLR-L3-Cx-2220 |  | DC1-CHLR-1RT40-A22 L3 Startup | 2d | 2026-03-31 | 2026-04-01 | DC1-CHLR-L3-Cx-2420, DC1-DH2200-LB-1010 SS | 19d | 0d | Riley Warring | TAS |
| DC1-CHLR-L3-Cx-2230 |  | DC1-CHLR-1RT40-A22 BMS/EPMS | 1d | 2026-04-02 | 2026-04-02 | DC1-CHLR-L3-Cx-2220 | 19d | 5d | Riley Warring | PRM |
|  | 02 | **DC1-DH2200 CHLR-1RT40-B22 Cx L3** |  | 2026-03-02 | 2026-04-02 |  |  |  |  |  |
| DC1-CHLR-L3-Cx-2240 |  | DC1-CHLR-1RT40-B22 FTE | 1d | 2026-03-02 | 2026-03-02 | DC1-SWD-L3-CX-2240 SS, DC1-CHLR-L2-1080 | 32d | 0d | Riley Warring | ROS |
| DC1-CHLR-L3-Cx-2430 |  | DC1-CHLR-1RT40-B22 Heat Up | 2d | 2026-03-03 | 2026-03-04 | DC1-CHLR-L3-Cx-2240 | 32d | 13d | Riley Warring | LAY |
| DC1-CHLR-L3-Cx-2250 |  | DC1-CHLR-1RT40-B22 L3 Startup | 2d | 2026-03-31 | 2026-04-01 | DC1-CHLR-L3-Cx-2430, DC1-DH2200-LB-1010 SS | 19d | 0d | Riley Warring | TAS |
| DC1-CHLR-L3-Cx-2260 |  | DC1-CHLR-1RT40-B22 BMS/EPMS | 1d | 2026-04-02 | 2026-04-02 | DC1-CHLR-L3-Cx-2250 | 19d | 5d | Riley Warring | PRM |
|  | 03 | **DC1-DH2200 CHLR-1RT40-C22 Cx L3** |  | 2026-03-02 | 2026-04-02 |  |  |  |  |  |
| DC1-CHLR-L3-Cx-2270 |  | DC1-CHLR-1RT40-C22 FTE | 1d | 2026-03-02 | 2026-03-02 | DC1-SWD-L3-CX-2270 SS, DC1-CHLR-L2-1090 | 32d | 0d | Riley Warring | ROS |
| DC1-CHLR-L3-Cx-2440 |  | DC1-CHLR-1RT40-C22 Heat Up | 2d | 2026-03-03 | 2026-03-04 | DC1-CHLR-L3-Cx-2270 | 32d | 13d | Riley Warring | LAY |
| DC1-CHLR-L3-Cx-2280 |  | DC1-CHLR-1RT40-C22 L3 Startup | 2d | 2026-03-31 | 2026-04-01 | DC1-CHLR-L3-Cx-2440, DC1-DH2200-LB-1010 SS | 19d | 0d | Riley Warring | TAS |
| DC1-CHLR-L3-Cx-2290 |  | DC1-CHLR-1RT40-C22 BMS/EPMS | 1d | 2026-04-02 | 2026-04-02 | DC1-CHLR-L3-Cx-2280 | 19d | 5d | Riley Warring | PRM |
|  | 04 | **DC1-DH2200 CHLR-1RT40-D22 Cx L3** |  | 2026-03-02 | 2026-04-02 |  |  |  |  |  |
| DC1-CHLR-L3-Cx-2300 |  | DC1-CHLR-1RT40-D22 FTE | 1d | 2026-03-02 | 2026-03-02 | DC1-SWD-L3-CX-2300 SS, DC1-CHLR-L2-1100 | 32d | 0d | Riley Warring | ROS |
| DC1-CHLR-L3-Cx-2450 |  | DC1-CHLR-1RT40-D22 Heat Up | 2d | 2026-03-03 | 2026-03-04 | DC1-CHLR-L3-Cx-2300 | 32d | 13d | Riley Warring | LAY |
| DC1-CHLR-L3-Cx-2310 |  | DC1-CHLR-1RT40-D22 L3 Startup | 2d | 2026-03-31 | 2026-04-01 | DC1-CHLR-L3-Cx-2450, DC1-DH2200-LB-1010 SS | 19d | 0d | Riley Warring | TAS |
| DC1-CHLR-L3-Cx-2320 |  | DC1-CHLR-1RT40-D22 BMS/EPMS | 1d | 2026-04-02 | 2026-04-02 | DC1-CHLR-L3-Cx-2310 | 19d | 5d | Riley Warring | PRM |

Notes:
- DC1-CDU-L3-CX-3245: Steps: EC Startup Report; MC Installation Checklist; Vendor Startup
- DC1-CHLR-L3-Cx-2220: Steps: EC Startup Report; MC Startup Report; Vendor Startup
- DC1-CHLR-L3-Cx-2250: Steps: EC Startup Report; MC Startup Report; Vendor Startup
- DC1-CHLR-L3-Cx-2280: Steps: EC Startup Report; MC Startup Report; Vendor Startup
- DC1-CHLR-L3-Cx-2310: Steps: EC Startup Report; MC Startup Report; Vendor Startup

| ID | WBS | Activity | Duration | Start | Finish | Predecessors | Total float | Free float | Layton Responsible Party | Vendor Responsible Party | Notes |
| --- | --- | --- | --- | --- | --- | --- | --- | --- | --- | --- | --- |
|  | 05 | **DC1-DH2200 CHLR-1RT40-E22 Cx L3** |  | 2026-03-04 | 2026-04-02 |  |  |  |  |  |  |
| DC1-CHLR-L3-Cx-2330 |  | DC1-CHLR-1RT40-E22 FTE | 1d | 2026-03-04 | 2026-03-04 | DC1-SWD-L3-CX-2330 SS, DC1-CHLR-L2-1110 | 30d | 0d | Riley Warring | ROS |  |
| DC1-CHLR-L3-Cx-2460 |  | DC1-CHLR-1RT40-E22 Heat Up | 2d | 2026-03-05 | 2026-03-06 | DC1-CHLR-L3-Cx-2330 | 30d | 11d | Riley Warring | LAY |  |
| DC1-CHLR-L3-Cx-2340 |  | DC1-CHLR-1RT40-E22 L3 Startup | 2d | 2026-03-31 | 2026-04-01 | DC1-CHLR-L3-Cx-2460, DC1-DH2200-LB-1010 SS | 19d | 0d | Riley Warring | TAS |  |
| DC1-CHLR-L3-Cx-2350 |  | DC1-CHLR-1RT40-E22 BMS/EPMS | 1d | 2026-04-02 | 2026-04-02 | DC1-CHLR-L3-Cx-2340 | 19d | 5d | Riley Warring | PRM |  |
|  | 06 | **DC1-DH2200 CHLR-1RT40-F22 Cx L3** |  | 2026-03-09 | 2026-04-02 |  |  |  |  |  |  |
| DC1-CHLR-L3-Cx-2360 |  | DC1-CHLR-1RT40-F22 FTE | 1d | 2026-03-09 | 2026-03-09 | DC1-SWD-L3-CX-2360 SS, DC1-CHLR-L2-1120 | 27d | 0d | Riley Warring | ROS |  |
| DC1-CHLR-L3-Cx-2470 |  | DC1-CHLR-1RT40-F22 Heat Up | 2d | 2026-03-10 | 2026-03-11 | DC1-CHLR-L3-Cx-2360 | 27d | 8d | Riley Warring | LAY |  |
| DC1-CHLR-L3-Cx-2370 |  | DC1-CHLR-1RT40-F22 L3 Startup | 2d | 2026-03-31 | 2026-04-01 | DC1-CHLR-L3-Cx-2470, DC1-DH2200-LB-1010 SS | 19d | 0d | Riley Warring | TAS |  |
| DC1-CHLR-L3-Cx-2380 |  | DC1-CHLR-1RT40-F22 BMS/EPMS | 1d | 2026-04-02 | 2026-04-02 | DC1-CHLR-L3-Cx-2370 | 19d | 5d | Riley Warring | PRM |  |
|  | 07 | **DC1-DH2200 CHLR-1RT40-R22 Cx L3** |  | 2026-03-12 | 2026-04-02 |  |  |  |  |  |  |
| DC1-CHLR-L3-Cx-2390 |  | DC1-CHLR-1RT40-R22 FTE | 1d | 2026-03-12 | 2026-03-12 | DC1-SWD-L3-CX-2390 SS, DC1-CHLR-L2-1130 | 24d | 0d | Riley Warring | ROS |  |
| DC1-CHLR-L3-Cx-2480 |  | DC1-CHLR-1RT40-R22 Heat Up | 2d | 2026-03-13 | 2026-03-16 | DC1-CHLR-L3-Cx-2390 | 24d | 5d | Riley Warring | LAY |  |
| DC1-CHLR-L3-Cx-2400 |  | DC1-CHLR-1RT40-R22 L3 Startup | 2d | 2026-03-31 | 2026-04-01 | DC1-CHLR-L3-Cx-2480, DC1-DH2200-LB-1010 SS | 19d | 0d | Riley Warring | TAS |  |
| DC1-CHLR-L3-Cx-2410 |  | DC1-CHLR-1RT40-R22 BMS/EPMS | 1d | 2026-04-02 | 2026-04-02 | DC1-CHLR-L3-Cx-2400 | 19d | 5d | Riley Warring | PRM |  |
|  | 12 | **DC1-DH2200 CHWP-1RT40 Cx L3** |  | 2026-03-06 | 2026-03-24 |  |  |  |  |  |  |
|  | 01 | **DC1-DH2200 CHWP-1RT40-A22 Cx L3** |  | 2026-03-06 | 2026-03-11 |  |  |  |  |  |  |
| DC1-CHWP-L3-Cx-2210 |  | DC1-CHWP-1RT40-A22 FTE | 1d | 2026-03-06 | 2026-03-06 | DC1-UPSM-L3-CX-2210 SS, DC1-CHWP-L2-Cx-2070 | 10d | 0d |  | ROS | CFCI |
| DC1-CHWP-L3-Cx-2220 |  | DC1-CHWP1RT40-A22 L3 Startup | 2d | 2026-03-09 | 2026-03-10 | DC1-CHWP-L3-Cx-2210, QTS-100840 | 10d | 0d |  | LAY | CFCI |
| DC1-CHWP-L3-Cx-2230 |  | DC1-CHWP-1RT40-A22 BMS/EPMS | 1d | 2026-03-11 | 2026-03-11 | DC1-CHWP-L3-Cx-2220 | 10d | 9d |  | PRM | CFCI |
|  | 02 | **DC1-DH2200 CHWP-1RT40-B22 Cx L3** |  | 2026-03-06 | 2026-03-11 |  |  |  |  |  |  |
| DC1-CHWP-L3-Cx-2240 |  | DC1-CHWP-1RT40-B22 FTE | 1d | 2026-03-06 | 2026-03-06 | DC1-UPSM-L3-CX-2240 SS, DC1-CHWP-L2-Cx-2080 | 10d | 0d |  | ROS | CFCI |
| DC1-CHWP-L3-Cx-2250 |  | DC1-CHWP-1RT40-B22 L3 Startup | 2d | 2026-03-09 | 2026-03-10 | DC1-CHWP-L3-Cx-2240, QTS-100840 | 10d | 0d |  | LAY | CFCI |
| DC1-CHWP-L3-Cx-2260 |  | DC1-CHWP-1RT40-B22 BMS/EPMS | 1d | 2026-03-11 | 2026-03-11 | DC1-CHWP-L3-Cx-2250 | 10d | 9d |  | PRM | CFCI |

Notes:
- DC1-CHLR-L3-Cx-2340: Steps: EC Startup Report; MC Startup Report; Vendor Startup
- DC1-CHLR-L3-Cx-2370: Steps: EC Startup Report; MC Startup Report; Vendor Startup
- DC1-CHLR-L3-Cx-2400: Steps: EC Startup Report; MC Startup Report; Vendor Startup
- DC1-CHWP-L3-Cx-2220: Steps: EC Startup Report; MC Startup Report; Vendor Startup
- DC1-CHWP-L3-Cx-2250: Steps: EC Startup Report; MC Startup Report; Vendor Startup

| ID | WBS | Activity | Duration | Start | Finish | Predecessors | Total float | Free float | Notes | Vendor Responsible Party | Layton Responsible Party |
| --- | --- | --- | --- | --- | --- | --- | --- | --- | --- | --- | --- |
|  | 03 | **DC1-DH2200 CHWP-1RT40-C22 Cx L3** |  | 2026-03-10 | 2026-03-13 |  |  |  |  |  |  |
| DC1-CHWP-L3-Cx-2270 |  | DC1-CHWP-1RT40-C22 FTE | 1d | 2026-03-10 | 2026-03-10 | DC1-UPSM-L3-CX-2270 SS, DC1-CHWP-L2-Cx-2090 | 8d | 0d | CFCI | ROS |  |
| DC1-CHWP-L3-Cx-2280 |  | DC1-CHWP-1RT40-C22 L3 Startup | 2d | 2026-03-11 | 2026-03-12 | DC1-CHWP-L3-Cx-2270, QTS-100840 | 8d | 0d | CFCI | LAY |  |
| DC1-CHWP-L3-Cx-2290 |  | DC1-CHWP-1RT40-C22 BMS/EPMS | 1d | 2026-03-13 | 2026-03-13 | DC1-CHWP-L3-Cx-2280 | 8d | 7d | CFCI | PRM |  |
|  | 04 | **DC1-DH2200 CHWP-1RT40-D22 Cx L3** |  | 2026-03-13 | 2026-03-18 |  |  |  |  |  |  |
| DC1-CHWP-L3-Cx-2300 |  | DC1-CHWP-1RT40-D22 FTE | 1d | 2026-03-13 | 2026-03-13 | DC1-UPSM-L3-CX-2300 SS, DC1-CHWP-L2-Cx-2100 | 5d | 0d | CFCI | ROS |  |
| DC1-CHWP-L3-Cx-2310 |  | DC1-CHWP-1RT40-D22 L3 Startup | 2d | 2026-03-16 | 2026-03-17 | DC1-CHWP-L3-Cx-2300, QTS-100840 | 5d | 0d | CFCI | LAY |  |
| DC1-CHWP-L3-Cx-2320 |  | DC1-CHWP-1RT40-D22 BMS/EPMS | 1d | 2026-03-18 | 2026-03-18 | DC1-CHWP-L3-Cx-2310 | 5d | 4d | CFCI | PRM |  |
|  | 05 | **DC1-DH2200 CHWP-1RT40-E22 Cx L3** |  | 2026-03-16 | 2026-03-19 |  |  |  |  |  |  |
| DC1-CHWP-L3-Cx-2330 |  | DC1-CHWP-1RT40-E22 FTE | 1d | 2026-03-16 | 2026-03-16 | DC1-UPSM-L3-CX-2330 SS, DC1-CHWP-L2-Cx-2110 | 4d | 0d | CFCI | ROS |  |
| DC1-CHWP-L3-Cx-2340 |  | DC1-CHWP-1RT40-E22 L3 Startup | 2d | 2026-03-17 | 2026-03-18 | DC1-CHWP-L3-Cx-2330, QTS-100840 | 4d | 0d | CFCI | LAY |  |
| DC1-CHWP-L3-Cx-2350 |  | DC1-CHWP-1RT40-E22 BMS/EPMS | 1d | 2026-03-19 | 2026-03-19 | DC1-CHWP-L3-Cx-2340 | 4d | 3d | CFCI | PRM |  |
|  | 06 | **DC1-DH2200 CHWP-1RT40-F22 Cx L3** |  | 2026-03-18 | 2026-03-23 |  |  |  |  |  |  |
| DC1-CHWP-L3-Cx-2360 |  | DC1-CHWP-1RT40-F22 FTE | 1d | 2026-03-18 | 2026-03-18 | DC1-UPSM-L3-CX-2360 SS, DC1-CHWP-L2-Cx-2120 | 2d | 0d |  | ROS |  |
| DC1-CHWP-L3-Cx-2370 |  | DC1-CHWP-1RT40-F22 L3 Startup | 2d | 2026-03-19 | 2026-03-20 | DC1-CHWP-L3-Cx-2360, QTS-100840 | 2d | 0d |  | LAY |  |
| DC1-CHWP-L3-Cx-2380 |  | DC1-CHWP-1RT40-F22 BMS/EPMS | 1d | 2026-03-23 | 2026-03-23 | DC1-CHWP-L3-Cx-2370 | 2d | 1d |  | PRM |  |
|  | 07 | **DC1-DH2200 CHWP-1RT40-R22 Cx L3** |  | 2026-03-19 | 2026-03-24 |  |  |  |  |  |  |
| DC1-CHWP-L3-Cx-2390 |  | DC1-CHWP-1RT40-R22 FTE | 1d | 2026-03-19 | 2026-03-19 | DC1-UPSM-L3-CX-2390 SS, DC1-CHWP-L2-Cx-2130 | 1d | 0d | CFCI | ROS |  |
| DC1-CHWP-L3-Cx-2400 |  | DC1-CHWP-1RT40-R22 L3 Startup | 2d | 2026-03-20 | 2026-03-23 | DC1-CHWP-L3-Cx-2390, QTS-100840 | 1d | 0d | CFCI | LAY |  |
| DC1-CHWP-L3-Cx-2410 |  | DC1-CHWP-1RT40-R22 BMS/EPMS | 1d | 2026-03-24 | 2026-03-24 | DC1-CHWP-L3-Cx-2400 | 1d | 0d | CFCI | PRM |  |
|  | 13 | **DC1-DH2200 CRAH/DOAS Cx L3** |  | 2026-03-17 | 2026-03-30 |  |  |  |  |  |  |
|  | 01 | **DH2200 CRAH-DH-01 L3** |  | 2026-03-25 | 2026-03-30 |  |  |  |  |  |  |
| DC1-CRAH-L3-Cx-2960 |  | DC1-DH2200-CRAH-DH-01 FTE | 1d | 2026-03-25 | 2026-03-25 | DC1-MOD2-L3-Cx-2390 SS, DC1-MOD2-L3-Cx-2300 SS, DC1-CRAH-L2-2320 | 17d | 0d |  | ROS | Riley Warring |
| DC1-CRAH-L3-Cx-2970 |  | DC1-DH2200-CRAH-DH-01 L3 Startup | 2d | 2026-03-26 | 2026-03-27 | DC1-CRAH-L3-Cx-2960, QTS-17121 | 17d | 0d |  | UMAS | Riley Warring |
| DC1-CRAH-L3-Cx-2980 |  | DC1-DH2200-CRAH-DH-01 BMS/EPMS | 1d | 2026-03-30 | 2026-03-30 | DC1-CRAH-L3-Cx-2970 | 17d | 0d |  | PRM | Riley Warring |

Notes:
- DC1-CHWP-L3-Cx-2280: Steps: EC Startup Report; MC Startup Report; Vendor Startup
- DC1-CHWP-L3-Cx-2310: Steps: EC Startup Report; MC Startup Report; Vendor Startup
- DC1-CHWP-L3-Cx-2340: Steps: EC Startup Report; MC Startup Report; Vendor Startup
- DC1-CHWP-L3-Cx-2370: Steps: EC Startup Report; MC Startup Report; Vendor Startup
- DC1-CHWP-L3-Cx-2400: Steps: EC Startup Report; MC Startup Report; Vendor Startup
- DC1-CRAH-L3-Cx-2970: Steps: EC Startup Checklist; MC Startup Checklist; Vendor Startup

| ID | WBS | Activity | Duration | Start | Finish | Predecessors | Total float | Free float | Layton Responsible Party | Vendor Responsible Party |
| --- | --- | --- | --- | --- | --- | --- | --- | --- | --- | --- |
|  | 02 | **DH2200 CRAH-DH-02 L3** |  | 2026-03-24 | 2026-03-27 |  |  |  |  |  |
| DC1-CRAH-L3-Cx-2990 |  | DC1-DH2200-CRAH-DH-02 FTE | 1d | 2026-03-24 | 2026-03-24 | DC1-MOD2-L3-Cx-2270 SS, DC1-MOD2-L3-Cx-2360 SS, DC1-CRAH-L2-2330 | 18d | 0d | Riley Warring | ROS |
| DC1-CRAH-L3-Cx-3000 |  | DC1-DH2200-CRAH-DH-02 L3 Startup | 2d | 2026-03-25 | 2026-03-26 | DC1-CRAH-L3-Cx-2990, QTS-17121 | 18d | 0d | Riley Warring | UMAS |
| DC1-CRAH-L3-Cx-3010 |  | DC1-DH2200-CRAH-DH-02 BMS/EPMS | 1d | 2026-03-27 | 2026-03-27 | DC1-CRAH-L3-Cx-3000 | 18d | 1d | Riley Warring | PRM |
|  | 03 | **DH2200 CRAH-DH-03 L3** |  | 2026-03-23 | 2026-03-26 |  |  |  |  |  |
| DC1-CRAH-L3-Cx-3020 |  | DC1-DH2200-CRAH-DH-03 FTE | 1d | 2026-03-23 | 2026-03-23 | DC1-MOD2-L3-Cx-2240 SS, DC1-MOD2-L3-Cx-2330 SS, DC1-CRAH-L2-2340 | 19d | 0d | Riley Warring | ROS |
| DC1-CRAH-L3-Cx-3030 |  | DC1-DH2200-CRAH-DH-03 L3 Startup | 2d | 2026-03-24 | 2026-03-25 | DC1-CRAH-L3-Cx-3020, QTS-17121 | 19d | 0d | Riley Warring | UMAS |
| DC1-CRAH-L3-Cx-3040 |  | DC1-DH2200-CRAH-DH-03 BMS/EPMS | 1d | 2026-03-26 | 2026-03-26 | DC1-CRAH-L3-Cx-3030 | 19d | 2d | Riley Warring | PRM |
|  | 04 | **DH2200 CRAH-DH-04 L3** |  | 2026-03-20 | 2026-03-25 |  |  |  |  |  |
| DC1-CRAH-L3-Cx-3050 |  | DC1-DH2200-CRAH-DH-04 FTE | 1d | 2026-03-20 | 2026-03-20 | DC1-MOD2-L3-Cx-2210 SS, DC1-MOD2-L3-Cx-2300 SS, DC1-CRAH-L2-2350 | 20d | 0d | Riley Warring | ROS |
| DC1-CRAH-L3-Cx-3060 |  | DC1-DH2200-CRAH-DH-04 L3 Startup | 2d | 2026-03-23 | 2026-03-24 | DC1-CRAH-L3-Cx-3050, QTS-17121 | 20d | 0d | Riley Warring | UMAS |
| DC1-CRAH-L3-Cx-3070 |  | DC1-DH2200-CRAH-DH-04 BMS/EPMS | 1d | 2026-03-25 | 2026-03-25 | DC1-CRAH-L3-Cx-3060 | 20d | 3d | Riley Warring | PRM |
|  | 05 | **DH2200 CRAH-DH-05 L3** |  | 2026-03-25 | 2026-03-30 |  |  |  |  |  |
| DC1-CRAH-L3-Cx-3080 |  | DC1-DH2200-CRAH-DH-05 FTE | 1d | 2026-03-25 | 2026-03-25 | DC1-MOD2-L3-Cx-2390 SS, DC1-MOD2-L3-Cx-2270 SS, DC1-CRAH-L2-2360 | 17d | 0d | Riley Warring | ROS |
| DC1-CRAH-L3-Cx-3090 |  | DC1-DH2200-CRAH-DH-05 L3 Startup | 2d | 2026-03-26 | 2026-03-27 | DC1-CRAH-L3-Cx-3080, QTS-17121 | 17d | 0d | Riley Warring | UMAS |
| DC1-CRAH-L3-Cx-3100 |  | DC1-DH2200-CRAH-DH-05 BMS/EPMS | 1d | 2026-03-30 | 2026-03-30 | DC1-CRAH-L3-Cx-3090 | 17d | 0d | Riley Warring | PRM |
|  | 06 | **DH2200 CRAH-DH-06 L3** |  | 2026-03-24 | 2026-03-27 |  |  |  |  |  |
| DC1-CRAH-L3-Cx-3110 |  | DC1-DH2200-CRAH-DH-06 FTE | 1d | 2026-03-24 | 2026-03-24 | DC1-MOD2-L3-Cx-2240 SS, DC1-MOD2-L3-Cx-2360 SS, DC1-CRAH-L2-2370 | 18d | 0d | Riley Warring | ROS |
| DC1-CRAH-L3-Cx-3120 |  | DC1-DH2200-CRAH-DH-06 L3 Startup | 2d | 2026-03-25 | 2026-03-26 | DC1-CRAH-L3-Cx-3110, QTS-17121 | 18d | 0d | Riley Warring | UMAS |
| DC1-CRAH-L3-Cx-3130 |  | DC1-DH2200-CRAH-DH-06 BMS/EPMS | 1d | 2026-03-27 | 2026-03-27 | DC1-CRAH-L3-Cx-3120 | 18d | 1d | Riley Warring | PRM |
|  | 07 | **DH2200 CRAH-DH-07 L3** |  | 2026-03-23 | 2026-03-26 |  |  |  |  |  |
| DC1-CRAH-L3-Cx-3140 |  | DC1-DH2200-CRAH-DH-07 FTE | 1d | 2026-03-23 | 2026-03-23 | DC1-MOD2-L3-Cx-2210 SS, DC1-MOD2-L3-Cx-2330 SS, DC1-CRAH-L2-2380 | 19d | 0d | Riley Warring | ROS |
| DC1-CRAH-L3-Cx-3150 |  | DC1-DH2200-CRAH-DH-07 L3 Startup | 2d | 2026-03-24 | 2026-03-25 | DC1-CRAH-L3-Cx-3140, QTS-17121 | 19d | 0d | Riley Warring | UMAS |
| DC1-CRAH-L3-Cx-3160 |  | DC1-DH2200-CRAH-DH-07 BMS/EPMS | 1d | 2026-03-26 | 2026-03-26 | DC1-CRAH-L3-Cx-3150 | 19d | 2d | Riley Warring | PRM |

Notes:
- DC1-CRAH-L3-Cx-3000: Steps: EC Startup Checklist; MC Startup Checklist; Vendor Startup
- DC1-CRAH-L3-Cx-3030: Steps: EC Startup Checklist; MC Startup Checklist; Vendor Startup
- DC1-CRAH-L3-Cx-3060: Steps: EC Startup Checklist; MC Startup Checklist; Vendor Startup
- DC1-CRAH-L3-Cx-3090: Steps: EC Startup Checklist; MC Startup Checklist; Vendor Startup
- DC1-CRAH-L3-Cx-3120: Steps: EC Startup Checklist; MC Startup Checklist; Vendor Startup
- DC1-CRAH-L3-Cx-3150: Steps: EC Startup Checklist; MC Startup Checklist; Vendor Startup

| ID | WBS | Activity | Duration | Start | Finish | Predecessors | Total float | Free float | Layton Responsible Party | Vendor Responsible Party |
| --- | --- | --- | --- | --- | --- | --- | --- | --- | --- | --- |
|  | 08 | **DH2200 CRAH-DH-08 L3** |  | 2026-03-25 | 2026-03-30 |  |  |  |  |  |
| DC1-CRAH-L3-Cx-3170 |  | DC1-DH2200-CRAH-DH-08 FTE | 1d | 2026-03-25 | 2026-03-25 | DC1-MOD2-L3-Cx-2390 SS, DC1-MOD2-L3-Cx-2270 SS, DC1-CRAH-L2-2390 | 17d | 0d | Riley Warring | ROS |
| DC1-CRAH-L3-Cx-3180 |  | DC1-DH2200-CRAH-DH-08 L3 Startup | 2d | 2026-03-26 | 2026-03-27 | DC1-CRAH-L3-Cx-3170, QTS-17121 | 17d | 0d | Riley Warring | UMAS |
| DC1-CRAH-L3-Cx-3190 |  | DC1-DH2200-CRAH-DH-08 BMS/EPMS | 1d | 2026-03-30 | 2026-03-30 | DC1-CRAH-L3-Cx-3180 | 17d | 0d | Riley Warring | PRM |
|  | 09 | **DH2200 CRAH-DH-09 L3** |  | 2026-03-24 | 2026-03-27 |  |  |  |  |  |
| DC1-CRAH-L3-Cx-3200 |  | DC1-DH2200-CRAH-DH-09 FTE | 1d | 2026-03-24 | 2026-03-24 | DC1-MOD2-L3-Cx-2240 SS, DC1-MOD2-L3-Cx-2360 SS, DC1-CRAH-L2-2400 | 18d | 0d | Riley Warring | ROS |
| DC1-CRAH-L3-Cx-3210 |  | DC1-DH2200-CRAH-DH-09 L3 Startup | 2d | 2026-03-25 | 2026-03-26 | DC1-CRAH-L3-Cx-3200, QTS-17121 | 18d | 0d | Riley Warring | UMAS |
| DC1-CRAH-L3-Cx-3220 |  | DC1-DH2200-CRAH-DH-09 BMS/EPMS | 1d | 2026-03-27 | 2026-03-27 | DC1-CRAH-L3-Cx-3210 | 18d | 1d | Riley Warring | PRM |
|  | 10 | **DH2200 CRAH-DH-10 L3** |  | 2026-03-23 | 2026-03-26 |  |  |  |  |  |
| DC1-CRAH-L3-Cx-3230 |  | DC1-DH2200-CRAH-DH-10 FTE | 1d | 2026-03-23 | 2026-03-23 | DC1-MOD2-L3-Cx-2210 SS, DC1-MOD2-L3-Cx-2330 SS, DC1-CRAH-L2-2410 | 19d | 0d | Riley Warring | ROS |
| DC1-CRAH-L3-Cx-3240 |  | DC1-DH2200-CRAH-DH-10 L3 Startup | 2d | 2026-03-24 | 2026-03-25 | DC1-CRAH-L3-Cx-3230, QTS-17121 | 19d | 0d | Riley Warring | UMAS |
| DC1-CRAH-L3-Cx-3250 |  | DC1-DH2200-CRAH-DH-10 BMS/EPMS | 1d | 2026-03-26 | 2026-03-26 | DC1-CRAH-L3-Cx-3240 | 19d | 2d | Riley Warring | PRM |
|  | 11 | **DH2200 CRAH-DH-11 L3** |  | 2026-03-25 | 2026-03-30 |  |  |  |  |  |
| DC1-CRAH-L3-Cx-3260 |  | DC1-DH2200-CRAH-DH-11 FTE | 1d | 2026-03-25 | 2026-03-25 | DC1-MOD2-L3-Cx-2390 SS, DC1-MOD2-L3-Cx-2300 SS, DC1-CRAH-L2-2420 | 17d | 0d | Riley Warring | ROS |
| DC1-CRAH-L3-Cx-3270 |  | DC1-DH2200-CRAH-DH-11 L3 Startup | 2d | 2026-03-26 | 2026-03-27 | DC1-CRAH-L3-Cx-3260, QTS-17121 | 17d | 0d | Riley Warring | UMAS |
| DC1-CRAH-L3-Cx-3280 |  | DC1-DH2200-CRAH-DH-11 BMS/EPMS | 1d | 2026-03-30 | 2026-03-30 | DC1-CRAH-L3-Cx-3270 | 17d | 0d | Riley Warring | PRM |
|  | 12 | **DH2200 CRAH-DH-12 L3** |  | 2026-03-24 | 2026-03-27 |  |  |  |  |  |
| DC1-CRAH-L3-Cx-3290 |  | DC1-DH2200-CRAH-DH-12 FTE | 1d | 2026-03-24 | 2026-03-24 | DC1-MOD2-L3-Cx-2270 SS, DC1-MOD2-L3-Cx-2360 SS, DC1-CRAH-L2-2430 | 18d | 0d | Riley Warring | ROS |
| DC1-CRAH-L3-Cx-3300 |  | DC1-DH2200-CRAH-DH-12 L3 Startup | 2d | 2026-03-25 | 2026-03-26 | DC1-CRAH-L3-Cx-3290, QTS-17121 | 18d | 0d | Riley Warring | UMAS |
| DC1-CRAH-L3-Cx-3310 |  | DC1-DH2200-CRAH-DH-12 BMS/EPMS | 1d | 2026-03-27 | 2026-03-27 | DC1-CRAH-L3-Cx-3300 | 18d | 1d | Riley Warring | PRM |
|  | 13 | **DH2200 CRAH-DH-13 L3** |  | 2026-03-23 | 2026-03-26 |  |  |  |  |  |
| DC1-CRAH-L3-Cx-3320 |  | DC1-DH2200-CRAH-DH-13 FTE | 1d | 2026-03-23 | 2026-03-23 | DC1-MOD2-L3-Cx-2240 SS, DC1-MOD2-L3-Cx-2330 SS, DC1-CRAH-L2-2440 | 19d | 0d | Riley Warring | ROS |
| DC1-CRAH-L3-Cx-3330 |  | DC1-DH2200-CRAH-DH-13 L3 Startup | 2d | 2026-03-24 | 2026-03-25 | DC1-CRAH-L3-Cx-3320, QTS-17121 | 19d | 0d | Riley Warring | UMAS |
| DC1-CRAH-L3-Cx-3340 |  | DC1-DH2200-CRAH-DH-13 BMS/EPMS | 1d | 2026-03-26 | 2026-03-26 | DC1-CRAH-L3-Cx-3330 | 19d | 2d | Riley Warring | PRM |

Notes:
- DC1-CRAH-L3-Cx-3180: Steps: EC Startup Checklist; MC Startup Checklist; Vendor Startup
- DC1-CRAH-L3-Cx-3210: Steps: EC Startup Checklist; MC Startup Checklist; Vendor Startup
- DC1-CRAH-L3-Cx-3240: Steps: EC Startup Checklist; MC Startup Checklist; Vendor Startup
- DC1-CRAH-L3-Cx-3270: Steps: EC Startup Checklist; MC Startup Checklist; Vendor Startup
- DC1-CRAH-L3-Cx-3300: Steps: EC Startup Checklist; MC Startup Checklist; Vendor Startup
- DC1-CRAH-L3-Cx-3330: Steps: EC Startup Checklist; MC Startup Checklist; Vendor Startup

| ID | WBS | Activity | Duration | Start | Finish | Predecessors | Total float | Free float | Layton Responsible Party | Vendor Responsible Party |
| --- | --- | --- | --- | --- | --- | --- | --- | --- | --- | --- |
|  | 14 | **DH2200 CRAH-DH-14 L3** |  | 2026-03-20 | 2026-03-25 |  |  |  |  |  |
| DC1-CRAH-L3-Cx-3350 |  | DC1-DH2200-CRAH-DH-14 FTE | 1d | 2026-03-20 | 2026-03-20 | DC1-MOD2-L3-Cx-2210 SS, DC1-MOD2-L3-Cx-2300 SS, DC1-CRAH-L2-2450 | 20d | 0d | Riley Warring | ROS |
| DC1-CRAH-L3-Cx-3360 |  | DC1-DH2200-CRAH-DH-14 L3 Startup | 2d | 2026-03-23 | 2026-03-24 | DC1-CRAH-L3-Cx-3350, QTS-17121 | 20d | 0d | Riley Warring | UMAS |
| DC1-CRAH-L3-Cx-3370 |  | DC1-DH2200-CRAH-DH-14 BMS/EPMS | 1d | 2026-03-25 | 2026-03-25 | DC1-CRAH-L3-Cx-3360 | 20d | 3d | Riley Warring | PRM |
|  | 15 | **DH2200 CRAH-DH-15 L3** |  | 2026-03-18 | 2026-03-23 |  |  |  |  |  |
| DC1-CRAH-L3-Cx-3380 |  | DC1-DH2200-CRAH-DH-15 FTE | 1d | 2026-03-18 | 2026-03-18 | DC1-MOD2-L3-Cx-2210 SS, DC1-MOD2-L3-Cx-2240 SS, DC1-CRAH-L2-2460 | 22d | 0d | Riley Warring | ROS |
| DC1-CRAH-L3-Cx-3390 |  | DC1-DH2200-CRAH-DH-15 L3 Startup | 2d | 2026-03-19 | 2026-03-20 | DC1-CRAH-L3-Cx-3380 | 22d | 0d | Riley Warring | UMAS |
| DC1-CRAH-L3-Cx-3400 |  | DC1-DH2200-CRAH-DH-15 BMS/EPMS | 1d | 2026-03-23 | 2026-03-23 | DC1-CRAH-L3-Cx-3390 | 22d | 5d | Riley Warring | PRM |
|  | 16 | **DH2200 CRAH-DH-16 L3** |  | 2026-03-19 | 2026-03-24 |  |  |  |  |  |
| DC1-CRAH-L3-Cx-3410 |  | DC1-DH2200-CRAH-DH-16 FTE | 1d | 2026-03-19 | 2026-03-19 | DC1-MOD2-L3-Cx-2240 SS, DC1-MOD2-L3-Cx-2270 SS, DC1-CRAH-L2-2470 | 21d | 0d | Riley Warring | ROS |
| DC1-CRAH-L3-Cx-3420 |  | DC1-DH2200-CRAH-DH-16 L3 Startup | 2d | 2026-03-20 | 2026-03-23 | DC1-CRAH-L3-Cx-3410 | 21d | 0d | Riley Warring | UMAS |
| DC1-CRAH-L3-Cx-3430 |  | DC1-DH2200-CRAH-DH-16 BMS/EPMS | 1d | 2026-03-24 | 2026-03-24 | DC1-CRAH-L3-Cx-3420 | 21d | 4d | Riley Warring | PRM |
|  | 17 | **DH2200 CRAH-DH-17 L3** |  | 2026-03-20 | 2026-03-25 |  |  |  |  |  |
| DC1-CRAH-L3-Cx-3440 |  | DC1-DH2200-CRAH-DH-17 FTE | 1d | 2026-03-20 | 2026-03-20 | DC1-MOD2-L3-Cx-2270 SS, DC1-MOD2-L3-Cx-2300 SS, DC1-CRAH-L2-2480 | 20d | 0d | Riley Warring | ROS |
| DC1-CRAH-L3-Cx-3450 |  | DC1-DH2200-CRAH-DH-17 L3 Startup | 2d | 2026-03-23 | 2026-03-24 | DC1-CRAH-L3-Cx-3440 | 20d | 0d | Riley Warring | UMAS |
| DC1-CRAH-L3-Cx-3460 |  | DC1-DH2200-CRAH-DH-17 BMS/EPMS | 1d | 2026-03-25 | 2026-03-25 | DC1-CRAH-L3-Cx-3450 | 20d | 3d | Riley Warring | PRM |
|  | 18 | **DH2200 CRAH-DH-18 L3** |  | 2026-03-23 | 2026-03-26 |  |  |  |  |  |
| DC1-CRAH-L3-Cx-3470 |  | DC1-DH2200-CRAH-DH-18 FTE | 1d | 2026-03-23 | 2026-03-23 | DC1-MOD2-L3-Cx-2300 SS, DC1-MOD2-L3-Cx-2330 SS, DC1-CRAH-L2-2490 | 19d | 0d | Riley Warring | ROS |
| DC1-CRAH-L3-Cx-3480 |  | DC1-DH2200-CRAH-DH-18 L3 Startup | 2d | 2026-03-24 | 2026-03-25 | DC1-CRAH-L3-Cx-3470 | 19d | 0d | Riley Warring | UMAS |
| DC1-CRAH-L3-Cx-3490 |  | DC1-DH2200-CRAH-DH-18 BMS/EPMS | 1d | 2026-03-26 | 2026-03-26 | DC1-CRAH-L3-Cx-3480 | 19d | 2d | Riley Warring | PRM |
|  | 19 | **DH2200 CRAH-DH-19 L3** |  | 2026-03-24 | 2026-03-27 |  |  |  |  |  |
| DC1-CRAH-L3-Cx-3500 |  | DC1-DH2200-CRAH-DH-19 FTE | 1d | 2026-03-24 | 2026-03-24 | DC1-MOD2-L3-Cx-2330 SS, DC1-MOD2-L3-Cx-2360 SS, DC1-CRAH-L2-2500 | 18d | 0d | Riley Warring | ROS |
| DC1-CRAH-L3-Cx-3510 |  | DC1-DH2200-CRAH-DH-19 L3 Startup | 2d | 2026-03-25 | 2026-03-26 | DC1-CRAH-L3-Cx-3500 | 18d | 0d | Riley Warring | UMAS |
| DC1-CRAH-L3-Cx-3520 |  | DC1-DH2200-CRAH-DH-19 BMS/EPMS | 1d | 2026-03-27 | 2026-03-27 | DC1-CRAH-L3-Cx-3510 | 18d | 1d | Riley Warring | PRM |

Notes:
- DC1-CRAH-L3-Cx-3360: Steps: EC Startup Checklist; MC Startup Checklist; Vendor Startup
- DC1-CRAH-L3-Cx-3390: Steps: EC Startup Checklist; MC Startup Checklist; Vendor Startup
- DC1-CRAH-L3-Cx-3420: Steps: EC Startup Checklist; MC Startup Checklist; Vendor Startup
- DC1-CRAH-L3-Cx-3450: Steps: EC Startup Checklist; MC Startup Checklist; Vendor Startup
- DC1-CRAH-L3-Cx-3480: Steps: EC Startup Checklist; MC Startup Checklist; Vendor Startup
- DC1-CRAH-L3-Cx-3510: Steps: EC Startup Checklist; MC Startup Checklist; Vendor Startup

| ID | WBS | Activity | Duration | Start | Finish | Predecessors | Total float | Free float | Layton Responsible Party | Vendor Responsible Party |
| --- | --- | --- | --- | --- | --- | --- | --- | --- | --- | --- |
|  | 20 | **DH2200 CRAH-DH-20 L3** |  | 2026-03-25 | 2026-03-30 |  |  |  |  |  |
| DC1-CRAH-L3-Cx-3530 |  | DC1-DH2200-CRAH-DH-20 FTE | 1d | 2026-03-25 | 2026-03-25 | DC1-MOD2-L3-Cx-2390 SS, DC1-MOD2-L3-Cx-2360 SS, DC1-CRAH-L2-2510 | 17d | 0d | Riley Warring | ROS |
| DC1-CRAH-L3-Cx-3540 |  | DC1-DH2200-CRAH-DH-20 L3 Startup | 2d | 2026-03-26 | 2026-03-27 | DC1-CRAH-L3-Cx-3530 | 17d | 0d | Riley Warring | UMAS |
| DC1-CRAH-L3-Cx-3550 |  | DC1-DH2200-CRAH-DH-20 BMS/EPMS | 1d | 2026-03-30 | 2026-03-30 | DC1-CRAH-L3-Cx-3540 | 17d | 0d | Riley Warring | PRM |
|  | 21 | **DH2200 CRAH-DH-21 L3** |  | 2026-03-25 | 2026-03-30 |  |  |  |  |  |
| DC1-CRAH-L3-Cx-3560 |  | DC1-DH2200-CRAH-DH-21 FTE | 1d | 2026-03-25 | 2026-03-25 | DC1-MOD2-L3-Cx-2210 SS, DC1-CRAH-L2-2520, DC1-MOD2-L3-Cx-2390 SS | 17d | 0d | Riley Warring | ROS |
| DC1-CRAH-L3-Cx-3570 |  | DC1-DH2200-CRAH-DH-21 L3 Startup | 2d | 2026-03-26 | 2026-03-27 | DC1-CRAH-L3-Cx-3560 | 17d | 0d | Riley Warring | UMAS |
| DC1-CRAH-L3-Cx-3580 |  | DC1-DH2200-CRAH-DH-21 BMS/EPMS | 1d | 2026-03-30 | 2026-03-30 | DC1-CRAH-L3-Cx-3570 | 17d | 0d | Riley Warring | PRM |
|  | 22 | **DH2200 CRAH-DH-22 L3** |  | 2026-03-19 | 2026-03-24 |  |  |  |  |  |
| DC1-CRAH-L3-Cx-3590 |  | DC1-DH2200-CRAH-DH-22 FTE | 1d | 2026-03-19 | 2026-03-19 | DC1-MOD2-L3-Cx-2210 SS, DC1-MOD2-L3-Cx-2270 SS, DC1-CRAH-L2-2530 | 21d | 0d | Riley Warring | ROS |
| DC1-CRAH-L3-Cx-3600 |  | DC1-DH2200-CRAH-DH-22 L3 Startup | 2d | 2026-03-20 | 2026-03-23 | DC1-CRAH-L3-Cx-3590 | 21d | 0d | Riley Warring | UMAS |
| DC1-CRAH-L3-Cx-3610 |  | DC1-DH2200-CRAH-DH-22 BMS/EPMS | 1d | 2026-03-24 | 2026-03-24 | DC1-CRAH-L3-Cx-3600 | 21d | 4d | Riley Warring | PRM |
|  | 23 | **DH2200 CRAH-DH-23 L3** |  | 2026-03-20 | 2026-03-25 |  |  |  |  |  |
| DC1-CRAH-L3-Cx-3620 |  | DC1-DH2200-CRAH-DH-23 FTE | 1d | 2026-03-20 | 2026-03-20 | DC1-MOD2-L3-Cx-2240 SS, DC1-MOD2-L3-Cx-2300 SS, DC1-CRAH-L2-2540 | 20d | 0d | Riley Warring | ROS |
| DC1-CRAH-L3-Cx-3630 |  | DC1-DH2200-CRAH-DH-23 L3 Startup | 2d | 2026-03-23 | 2026-03-24 | DC1-CRAH-L3-Cx-3620 | 20d | 0d | Riley Warring | UMAS |
| DC1-CRAH-L3-Cx-3640 |  | DC1-DH2200-CRAH-DH-23 BMS/EPMS | 1d | 2026-03-25 | 2026-03-25 | DC1-CRAH-L3-Cx-3630 | 20d | 3d | Riley Warring | PRM |
|  | 24 | **DH2200 CRAH-DH-24 L3** |  | 2026-03-23 | 2026-03-26 |  |  |  |  |  |
| DC1-CRAH-L3-Cx-3650 |  | DC1-DH2200-CRAH-DH-24 FTE | 1d | 2026-03-23 | 2026-03-23 | DC1-MOD2-L3-Cx-2270 SS, DC1-MOD2-L3-Cx-2330 SS, DC1-CRAH-L2-2550 | 19d | 0d | Riley Warring | ROS |
| DC1-CRAH-L3-Cx-3660 |  | DC1-DH2200-CRAH-DH-24 L3 Startup | 2d | 2026-03-24 | 2026-03-25 | DC1-CRAH-L3-Cx-3650 | 19d | 0d | Riley Warring | UMAS |
| DC1-CRAH-L3-Cx-3670 |  | DC1-DH2200-CRAH-DH-24 BMS/EPMS | 1d | 2026-03-26 | 2026-03-26 | DC1-CRAH-L3-Cx-3660 | 19d | 2d | Riley Warring | PRM |
|  | 25 | **DH2200 CRAH-DH-25 L3** |  | 2026-03-24 | 2026-03-27 |  |  |  |  |  |
| DC1-CRAH-L3-Cx-3680 |  | DC1-DH2200-CRAH-DH-25 FTE | 1d | 2026-03-24 | 2026-03-24 | DC1-MOD2-L3-Cx-2300 SS, DC1-MOD2-L3-Cx-2360 SS, DC1-CRAH-L2-2560 | 18d | 0d | Riley Warring | ROS |
| DC1-CRAH-L3-Cx-3690 |  | DC1-DH2200-CRAH-DH-25 L3 Startup | 2d | 2026-03-25 | 2026-03-26 | DC1-CRAH-L3-Cx-3680 | 18d | 0d | Riley Warring | UMAS |
| DC1-CRAH-L3-Cx-3700 |  | DC1-DH2200-CRAH-DH-25 BMS/EPMS | 1d | 2026-03-27 | 2026-03-27 | DC1-CRAH-L3-Cx-3690 | 18d | 1d | Riley Warring | PRM |

Notes:
- DC1-CRAH-L3-Cx-3540: Steps: EC Startup Checklist; MC Startup Checklist; Vendor Startup
- DC1-CRAH-L3-Cx-3570: Steps: EC Startup Checklist; MC Startup Checklist; Vendor Startup
- DC1-CRAH-L3-Cx-3600: Steps: EC Startup Checklist; MC Startup Checklist; Vendor Startup
- DC1-CRAH-L3-Cx-3630: Steps: EC Startup Checklist; MC Startup Checklist; Vendor Startup
- DC1-CRAH-L3-Cx-3660: Steps: EC Startup Checklist; MC Startup Checklist; Vendor Startup
- DC1-CRAH-L3-Cx-3690: Steps: EC Startup Checklist; MC Startup Checklist; Vendor Startup

| ID | WBS | Activity | Duration | Start | Finish | Predecessors | Total float | Free float | Layton Responsible Party | Vendor Responsible Party |
| --- | --- | --- | --- | --- | --- | --- | --- | --- | --- | --- |
|  | 26 | **DH2200 CRAH-DH-26 L3** |  | 2026-03-25 | 2026-03-30 |  |  |  |  |  |
| DC1-CRAH-L3-Cx-3710 |  | DC1-DH2200-CRAH-DH-26 FTE | 1d | 2026-03-25 | 2026-03-25 | DC1-MOD2-L3-Cx-2390 SS, DC1-MOD2-L3-Cx-2330 SS, DC1-CRAH-L2-2570 | 17d | 0d | Riley Warring | ROS |
| DC1-CRAH-L3-Cx-3720 |  | DC1-DH2200-CRAH-DH-26 L3 Startup | 2d | 2026-03-26 | 2026-03-27 | DC1-CRAH-L3-Cx-3710 | 17d | 0d | Riley Warring | UMAS |
| DC1-CRAH-L3-Cx-3730 |  | DC1-DH2200-CRAH-DH-26 BMS/EPMS | 1d | 2026-03-30 | 2026-03-30 | DC1-CRAH-L3-Cx-3720 | 17d | 0d | Riley Warring | PRM |
|  | 27 | **DH2200 CRAH-DH-27 L3** |  | 2026-03-24 | 2026-03-27 |  |  |  |  |  |
| DC1-CRAH-L3-Cx-3740 |  | DC1-DH2200-CRAH-DH-27 FTE | 1d | 2026-03-24 | 2026-03-24 | DC1-MOD2-L3-Cx-2210 SS, DC1-MOD2-L3-Cx-2360 SS, DC1-CRAH-L2-2580 | 18d | 0d | Riley Warring | ROS |
| DC1-CRAH-L3-Cx-3750 |  | DC1-DH2200-CRAH-DH-27 L3 Startup | 2d | 2026-03-25 | 2026-03-26 | DC1-CRAH-L3-Cx-3740 | 18d | 0d | Riley Warring | UMAS |
| DC1-CRAH-L3-Cx-3760 |  | DC1-DH2200-CRAH-DH-27 BMS/EPMS | 1d | 2026-03-27 | 2026-03-27 | DC1-CRAH-L3-Cx-3750 | 18d | 1d | Riley Warring | PRM |
|  | 28 | **DH2200 CRAH-DH-28 L3** |  | 2026-03-25 | 2026-03-30 |  |  |  |  |  |
| DC1-CRAH-L3-Cx-3770 |  | DC1-DH2200-CRAH-DH-28 FTE | 1d | 2026-03-25 | 2026-03-25 | DC1-MOD2-L3-Cx-2240 SS, DC1-CRAH-L2-2590, DC1-MOD2-L3-Cx-2390 SS | 17d | 0d | Riley Warring | ROS |
| DC1-CRAH-L3-Cx-3780 |  | DC1-DH2200-CRAH-DH-28 L3 Startup | 2d | 2026-03-26 | 2026-03-27 | DC1-CRAH-L3-Cx-3770 | 17d | 0d | Riley Warring | UMAS |
| DC1-CRAH-L3-Cx-3790 |  | DC1-DH2200-CRAH-DH-28 BMS/EPMS | 1d | 2026-03-30 | 2026-03-30 | DC1-CRAH-L3-Cx-3780 | 17d | 0d | Riley Warring | PRM |
|  | 29 | **DH2200 CRAH-EG-01 L3** |  | 2026-03-24 | 2026-03-27 |  |  |  |  |  |
| DC1-CRAH-L3-Cx-3800 |  | DC1-DH2200-CRAH-EG-2202-01 FTE | 1d | 2026-03-24 | 2026-03-24 | DC1-CRAH-L2-2600, DC1-MOD2-L3-Cx-2360 SS | 18d | 0d | Riley Warring | ROS |
| DC1-CRAH-L3-Cx-3810 |  | DC1-DH2200-CRAH-EG-2202-01 L3 Startup | 2d | 2026-03-25 | 2026-03-26 | DC1-CRAH-L3-Cx-3800 | 18d | 0d | Riley Warring | VER |
| DC1-CRAH-L3-Cx-3820 |  | DC1-DH2200-CRAH-EG-2202-01 BMS/EPMS | 1d | 2026-03-27 | 2026-03-27 | DC1-CRAH-L3-Cx-3810 | 18d | 1d | Riley Warring | PRM |
|  | 30 | **DH2200 CRAH-EG-02 L3** |  | 2026-03-20 | 2026-03-25 |  |  |  |  |  |
| DC1-CRAH-L3-Cx-3830 |  | DC1-DH2200-CRAH-EG-2202-02 FTE | 1d | 2026-03-20 | 2026-03-20 | DC1-MOD2-L3-Cx-2300 SS, DC1-CRAH-L2-2610 | 20d | 0d | Riley Warring | ROS |
| DC1-CRAH-L3-Cx-3840 |  | DC1-DH2200-CRAH-EG-2202-02 L3 Startup | 2d | 2026-03-23 | 2026-03-24 | DC1-CRAH-L3-Cx-3830 | 20d | 0d | Riley Warring | VER |
| DC1-CRAH-L3-Cx-3850 |  | DC1-DH2200-CRAH-EG-2202-02 BMS/EPMS | 1d | 2026-03-25 | 2026-03-25 | DC1-CRAH-L3-Cx-3840 | 20d | 3d | Riley Warring | PRM |
|  | 31 | **DH2200 CRAH-EG-03 L3** |  | 2026-03-19 | 2026-03-24 |  |  |  |  |  |
| DC1-CRAH-L3-Cx-3860 |  | DC1-DH2200-CRAH-EG-2202-03 FTE | 1d | 2026-03-19 | 2026-03-19 | DC1-MOD2-L3-Cx-2270 SS, DC1-CRAH-L2-2620 | 21d | 0d | Riley Warring | ROS |
| DC1-CRAH-L3-Cx-3870 |  | DC1-DH2200-CRAH-EG-2202-03 L3 Startup | 2d | 2026-03-20 | 2026-03-23 | DC1-CRAH-L3-Cx-3860 | 21d | 0d | Riley Warring | VER |
| DC1-CRAH-L3-Cx-3880 |  | DC1-DH2200-CRAH-EG-2202-03 BMS/EPMS | 1d | 2026-03-24 | 2026-03-24 | DC1-CRAH-L3-Cx-3870 | 21d | 4d | Riley Warring | PRM |

Notes:
- DC1-CRAH-L3-Cx-3720: Steps: EC Startup Checklist; MC Startup Checklist; Vendor Startup
- DC1-CRAH-L3-Cx-3750: Steps: EC Startup Checklist; MC Startup Checklist; Vendor Startup
- DC1-CRAH-L3-Cx-3780: Steps: EC Startup Checklist; MC Startup Checklist; Vendor Startup
- DC1-CRAH-L3-Cx-3810: Steps: EC Startup Checklist; MC Startup Checklist; Vendor Startup
- DC1-CRAH-L3-Cx-3840: Steps: EC Startup Checklist; MC Startup Checklist; Vendor Startup
- DC1-CRAH-L3-Cx-3870: Steps: EC Startup Checklist; MC Startup Checklist; Vendor Startup

| ID | WBS | Activity | Duration | Start | Finish | Predecessors | Total float | Free float | Calendar | Layton Responsible Party | Vendor Responsible Party |
| --- | --- | --- | --- | --- | --- | --- | --- | --- | --- | --- | --- |
|  | 32 | **DH2200 CRAH-EG-04 L3** |  | 2026-03-17 | 2026-03-20 |  |  |  |  |  |  |
| DC1-CRAH-L3-Cx-3890 |  | DC1-DH2200-CRAH-EG-2202-04 FTE | 1d | 2026-03-17 | 2026-03-17 | DC1-CRAH-L2-2630, DC1-MOD2-L3-Cx-2210 SS | 23d | 0d |  | Riley Warring | ROS |
| DC1-CRAH-L3-Cx-3900 |  | DC1-DH2200-CRAH-EG-2202-04 L3 Startup | 2d | 2026-03-18 | 2026-03-19 | DC1-CRAH-L3-Cx-3890 | 23d | 0d |  | Riley Warring | VER |
| DC1-CRAH-L3-Cx-3910 |  | DC1-DH2200-CRAH-EG-2202-04 BMS/EPMS | 1d | 2026-03-20 | 2026-03-20 | DC1-CRAH-L3-Cx-3900 | 23d | 6d |  | Riley Warring | PRM |
|  | 33 | **DC1-DH2200-DOAS-RT-01 L3** |  | 2026-03-17 | 2026-03-20 |  |  |  |  |  |  |
| DC1-DOAS-L3-Cx-2060 |  | DC1-DH2200-DOAS-RT-01 FTE | 1d | 2026-03-17 | 2026-03-17 | DC1-MOD2-L3-Cx-2210 SS, DC1-DOAS-L2-2020 | 23d | 0d |  | Riley Warring | ROS |
| DC1-DOAS-L3-Cx-2070 |  | DC1-DH2200-DOAS-RT-01 L3 Startup | 2d | 2026-03-18 | 2026-03-19 | DC1-DOAS-L3-Cx-2060 | 23d | 0d |  | Riley Warring | TAS |
| DC1-DOAS-L3-Cx-2080 |  | DC1-DH2200-DOAS-RT-01 BMS/EPMS | 1d | 2026-03-20 | 2026-03-20 | DC1-DOAS-L3-Cx-2070 | 23d | 6d |  | Riley Warring | PRM |
|  | 34 | **DC1-DH2200-DOAS-RT-02 L3** |  | 2026-03-25 | 2026-03-30 |  |  |  |  |  |  |
| DC1-DOAS-L3-Cx-2090 |  | DC1-DH2200-DOAS-RT-02 FTE | 1d | 2026-03-25 | 2026-03-25 | DC1-MOD2-L3-Cx-2390 SS, DC1-DOAS-L2-2030 | 17d | 0d |  | Riley Warring | ROS |
| DC1-DOAS-L3-Cx-2100 |  | DC1-DH2200-DOAS-RT-02 L3 Startup | 2d | 2026-03-26 | 2026-03-27 | DC1-DOAS-L3-Cx-2090 | 17d | 0d |  | Riley Warring | TAS |
| DC1-DOAS-L3-Cx-2110 |  | DC1-DH2200-DOAS-RT-02 BMS/EPMS | 1d | 2026-03-30 | 2026-03-30 | DC1-DOAS-L3-Cx-2100 | 17d | 0d |  | Riley Warring | PRM |
|  | 14 | **DC1-DH2200 LOADBANK** |  | 2026-03-24 | 2026-06-19 |  |  |  |  |  |  |
| DC1-DH2200-LB-1000 |  | DC1-DH2200 Connect Loadbanks (Connect to RPP, Maybe CODs Extra Breaker) | 5d | 2026-03-24 | 2026-03-30 | DC1-CHLR-L3-Cx-2420, DC1-CHLR-L3-Cx-2430, DC1-CHLR-L3-Cx-2440, DC1-CHLR-L3-Cx-2450, DC1-CHLR-L3-Cx-2460, DC1-CHLR-L3-Cx-2470, DC1-CHLR-L3-Cx-2480, QTS - 5730, QTS - 5500, QTS - 5040 | 19d | 0d |  | Riley Warring | PHE |
| DC1-DH2200-LB-1010 |  | DC1-DH2200 Burn in Chillers | 5d | 2026-03-31 | 2026-04-06 | DC1-DH2200-LB-1000, DC1-COD-L3-CX-2545, DC1-COD-L3-CX-2575, DC1-COD-L3-CX-2605, DC1-COD-L3-CX-2635, DC1-COD-L3-CX-2665, DC1-COD-L3-CX-2695, DC1-COD-L3-CX-2725, DC1-COD-L3-CX-2755, DC1-COD-L3-CX-2785, DC1-COD-L3-CX-2815, DC1-COD-L3-CX-2845, DC1-COD-L3-CX-2875, DC1-COD-L3-CX-2905, DC1-COD-L3-CX-2935, DC1-COD-L3-CX-2965, DC1-COD-L3-CX-2995, DC1-COD-L3-CX-3025, DC1-COD-L3-CX-3055, DC1-COD-L3-CX-3085, DC1-COD-L3-CX-3115, DC1-COD-L3-CX-3145, DC1-COD-L3-CX-3175, DC1-COD-L3-CX-3205, DC1-COD-L3-CX-3235, DC1-COD-L3-CX-3265, DC1-COD-L3-CX-3295, DC1-COD-L3-CX-3325, DC1-COD-L3-CX-3355, DC1-COD-L3-CX-3385, DC1-COD-L3-CX-3415, DC1-COD-L3-CX-3445, DC1-COD-L3-CX-3475, DC1-COD-L3-CX-3505, DC1-COD-L3-CX-3535, DC1-COD-L3-CX-3565, DC1-COD-L3-CX-3595 | 19d | 0d |  | Riley Warring | LAY |
| DC1-DH2200-LB-1040 |  | DC1-DH2200 Water Load Bank (Secondary Side) | 12d | 2026-06-01 | 2026-06-16 | DC1-IST-2010, DC1-CDU-L3-CX-2725, DC1-CDU-L3-CX-2755, DC1-CDU-L3-CX-2785, DC1-CDU-L3-CX-2815, DC1-CDU-L3-CX-2845, DC1-CDU-L3-CX-2875, DC1-CDU-L3-CX-2905, DC1-CDU-L3-CX-2935, DC1-CDU-L3-CX-2965, DC1-CDU-L3-CX-2995, DC1-CDU-L3-CX-3025, DC1-CDU-L3-CX-3055, DC1-CDU-L3-CX-3085, DC1-CDU-L3-CX-3115, DC1-CDU-L3-CX-3145, DC1-CDU-L3-CX-3175, DC1-CDU-L3-CX-3205, DC1-CDU-L3-CX-3235 | 3d | 0d |  | Riley Warring | LAY |
| DC1-DH2200-LB-1030 |  | DC1-DH2200 10% Continuity Testing RPP Whips | 2d | 2026-06-17 | 2026-06-18 | QTS - 6050, QTS - 6160, QTS - 6170, DC1-DH2200-LB-1040 | 8d | 0d |  | Riley Warring | PHE |
| DC1-DH2200-LB-1050 |  | DC1-DH2200 Install DanFoss Connectors | 2d | 2026-06-18 | 2026-06-19 | DC1-DH2200-LB-1030 SS+1d | 8d | 5d |  | Riley Warring | PHE |
|  | 15 | **DC1-DH2200 TAB** |  | 2026-03-25 | 2026-04-07 |  |  |  |  |  |  |
| DC1-DH2200-TAB-1000 |  | DC1-DH2200 Water Tab (Industrial Loop) | 10d | 2026-03-25 | 2026-04-07 | QTS-100850, DC1-CHWP-L3-Cx-2230, DC1-CHWP-L3-Cx-2260, DC1-CHWP-L3-Cx-2290, DC1-CHWP-L3-Cx-2320, DC1-CHWP-L3-Cx-2350, DC1-CHWP-L3-Cx-2380, DC1-CHWP-L3-Cx-2410 | 1d | 0d |  | Riley Warring | LAY |
| DC1-DH2200-TAB-1010 |  | DC1-DH2200 Air Tab | 5d | 2026-03-31 | 2026-04-06 | DC1-CRAH-L3-Cx-2980, DC1-CRAH-L3-Cx-3010, DC1-CRAH-L3-Cx-3040, DC1-CRAH-L3-Cx-3070, DC1-CRAH-L3-Cx-3100, DC1-CRAH-L3-Cx-3130, DC1-CRAH-L3-Cx-3160, DC1-CRAH-L3-Cx-3190, DC1-CRAH-L3-Cx-3220, DC1-CRAH-L3-Cx-3250, DC1-CRAH-L3-Cx-3280, DC1-CRAH-L3-Cx-3310, DC1-CRAH-L3-Cx-3340, DC1-CRAH-L3-Cx-3370, DC1-CRAH-L3-Cx-3400, DC1-CRAH-L3-Cx-3430, DC1-CRAH-L3-Cx-3460, DC1-CRAH-L3-Cx-3490, DC1-CRAH-L3-Cx-3520, DC1-CRAH-L3-Cx-3550, DC1-CRAH-L3-Cx-3580, DC1-CRAH-L3-Cx-3610, DC1-CRAH-L3-Cx-3640, DC1-CRAH-L3-Cx-3670, DC1-CRAH-L3-Cx-3700, DC1-CRAH-L3-Cx-3730, DC1-CRAH-L3-Cx-3760, DC1-CRAH-L3-Cx-3790, DC1-CRAH-L3-Cx-3820, DC1-CRAH-L3-Cx-3850, DC1-CRAH-L3-Cx-3880, DC1-CRAH-L3-Cx-3910, DC1-DOAS-L3-Cx-2080, DC1-DOAS-L3-Cx-2110 | 17d | 16d |  | Riley Warring | LAY |
|  | 04 | **Data Hall 2200 Cx L4** |  | 2026-04-08 | 2026-06-26 |  |  |  |  |  |  |
| DC1-MECH-L4-Cx-1120 |  | DC1 Data Hall 2200 BMS/EPMS Integration | 15d | 2026-04-08 | 2026-04-28 | DC1-DH2200-TAB-1000 | 1d | 0d | **GLOBAL - 5 Day Workweek w/ Basic Holidays |  |  |
| DC1-ELEC-L4-Cx-1020 |  | DC1 Data Hall 2200 Electrical L4 | 20d | 2026-04-10 | 2026-05-07 | DC1-GEN-L3-CX-2230, DC1-GEN-L3-CX-2260, DC1-GEN-L3-CX-2290, DC1-GEN-L3-CX-2320, DC1-GEN-L3-CX-2350, DC1-GEN-L3-CX-2380, DC1-GEN-L3-CX-2410, DC1-XFM-L3-CX-1230, DC1-XFM-L3-CX-1260, DC1-XFM-L3-CX-1290, DC1-XFM-L3-CX-1320, DC1-XFM-L3-CX-1350, DC1-XFM-L3-CX-1380, DC1-XFM-L3-CX-1410, DC1-SWD-L3-CX-2230, DC1-SWD-L3-CX-2260, DC1-SWD-L3-CX-2290, DC1-SWD-L3-CX-2320, DC1-SWD-L3-CX-2350, DC1-SWD-L3-CX-2380, DC1-SWD-L3-CX-2410, DC1-MOD1-L3-CX-2230, DC1-MOD1-L3-CX-2260, DC1-MOD1-L3-CX-2290, DC1-MOD1-L3-CX-2320, DC1-MOD1-L3-CX-2350, DC1-MOD1-L3-CX-2380, DC1-MOD1-L3-CX-2410, DC1-UPSM-L3-CX-2230, DC1-UPSM-L3-CX-2260, DC1-UPSM-L3-CX-2290, DC1-UPSM-L3-CX-2320, DC1-UPSM-L3-CX-2350, DC1-UPSM-L3-CX-2380, DC1-UPSM-L3-CX-2410, DC1-ATS-L3-CX-2565, DC1-ATS-L3-CX-2595, DC1-ATS-L3-CX-2625, DC1-ATS-L3-CX-2655, DC1-ATS-L3-CX-2685, DC1-ATS-L3-CX-2715, DC1-ATS-L3-CX-2745, DC1-ATS-L3-CX-2775, DC1-ATS-L3-CX-2805, DC1-ATS-L3-CX-2835, DC1-ATS-L3-CX-2865, DC1-ATS-L3-CX-2895, DC1-ATS-L3-CX-2925, DC1-ATS-L3-CX-2955, DC1-ATS-L3-CX-2985, DC1-ATS-L3-CX-3015, DC1-ATS-L3-CX-3045, DC1-ATS-L3-CX-3075, DC1-ATS-L3-CX-3105, DC1-ATS-L3-CX-3135, DC1-ATS-L3-CX-3165, DC1-ATS-L3-CX-3195, DC1-ATS-L3-CX-3225, DC1-ATS-L3-CX-3255, DC1-ATS-L3-CX-3285, DC1-ATS-L3-CX-3315, DC1-ATS-L3-CX-3345, DC1-ATS-L3-CX-3375, DC1-ATS-L3-CX-3405, DC1-ATS-L3-CX-3435, DC1-ATS-L3-CX-3465, DC1-ATS-L3-CX-3495, DC1-ATS-L3-CX-3525, DC1-ATS-L3-CX-3555, DC1-ATS-L3-CX-3585, DC1-ATS-L3-CX-3615, DC1-COD-L3-CX-2565, DC1-COD-L3-CX-2595, DC1-COD-L3-CX-2625, DC1-COD-L3-CX-2655, DC1-COD-L3-CX-2685, DC1-COD-L3-CX-2715, DC1-COD-L3-CX-2745, DC1-COD-L3-CX-2775, DC1-COD-L3-CX-2805, DC1-COD-L3-CX-2835, DC1-COD-L3-CX-2865, DC1-COD-L3-CX-2895, DC1-COD-L3-CX-2925, DC1-COD-L3-CX-2955, DC1-COD-L3-CX-2985, DC1-COD-L3-CX-3015, DC1-COD-L3-CX-3045, DC1-COD-L3-CX-3075, DC1-COD-L3-CX-3105, DC1-COD-L3-CX-3135, DC1-COD-L3-CX-3165, DC1-COD-L3-CX-3195, DC1-COD-L3-CX-3225, DC1-COD-L3-CX-3255, DC1-COD-L3-CX-3285, DC1-COD-L3-CX-3315, DC1-COD-L3-CX-3345, DC1-COD-L3-CX-3375, DC1-COD-L3-CX-3405, DC1-COD-L3-CX-3435, DC1-COD-L3-CX-3465, DC1-COD-L3-CX-3495, DC1-COD-L3-CX-3525, DC1-COD-L3-CX-3555, DC1-COD-L3-CX-3585, DC1-COD-L3-CX-3615, DC1-MOD2-L3-Cx-2230, DC1-MOD2-L3-Cx-2260, DC1-MOD2-L3-Cx-2290, DC1-MOD2-L3-Cx-2320, DC1-MOD2-L3-Cx-2350, DC1-MOD2-L3-Cx-2380, DC1-MOD2-L3-Cx-2410, DC1-MOD3-L3-Cx-2230, DC1-MOD3-L3-Cx-2260, DC1-MOD3-L3-Cx-2290, DC1-MOD3-L3-Cx-2320, DC1-MOD3-L3-Cx-2350, DC1-MOD3-L3-Cx-2380, DC1-MOD3-L3-Cx-2410, DC1-BUS-L3-CX-2080, DC1-BUS-L3-CX-2110, QTS-44481, QTS-44511 | 14d | 13d |  | Riley Warring | LAY |
| DC1-MECH-L4-Cx-1020 |  | DC1 Data Hall 2200 Mechanical L4 | 20d | 2026-04-29 | 2026-05-27 | DC1-DH2200-TAB-1000, DC1-MECH-L4-Cx-1120, DC1-DOAS-L3-Cx-2110, DC1-CHLR-L3-Cx-2230, DC1-CHLR-L3-Cx-2260, DC1-CHLR-L3-Cx-2290, DC1-CHLR-L3-Cx-2320, DC1-CHLR-L3-Cx-2350, DC1-CHLR-L3-Cx-2380, DC1-CHLR-L3-Cx-2410, DC1-CHWP-L3-Cx-2230, DC1-CHWP-L3-Cx-2260, DC1-CHWP-L3-Cx-2290, DC1-CHWP-L3-Cx-2320, DC1-CHWP-L3-Cx-2350, DC1-CHWP-L3-Cx-2380, DC1-CHWP-L3-Cx-2410, DC1-CRAH-L3-Cx-2980, DC1-CRAH-L3-Cx-3010, DC1-CRAH-L3-Cx-3040, DC1-CRAH-L3-Cx-3070, DC1-CRAH-L3-Cx-3100, DC1-CRAH-L3-Cx-3130, DC1-CRAH-L3-Cx-3160, DC1-CRAH-L3-Cx-3190, DC1-CRAH-L3-Cx-3220, DC1-CRAH-L3-Cx-3250, DC1-CRAH-L3-Cx-3280, DC1-CRAH-L3-Cx-3310, DC1-CRAH-L3-Cx-3340, DC1-CRAH-L3-Cx-3370, DC1-CRAH-L3-Cx-3400, DC1-CRAH-L3-Cx-3430, DC1-CRAH-L3-Cx-3460, DC1-CRAH-L3-Cx-3490, DC1-CRAH-L3-Cx-3520, DC1-CRAH-L3-Cx-3550, DC1-CRAH-L3-Cx-3580, DC1-CRAH-L3-Cx-3610, DC1-CRAH-L3-Cx-3640, DC1-CRAH-L3-Cx-3670, DC1-CRAH-L3-Cx-3700, DC1-CRAH-L3-Cx-3730, DC1-CRAH-L3-Cx-3760, DC1-CRAH-L3-Cx-3790, DC1-CRAH-L3-Cx-3820, DC1-CRAH-L3-Cx-3850, DC1-CRAH-L3-Cx-3880, DC1-CRAH-L3-Cx-3910, DC1-DOAS-L3-Cx-2080, DC1-DOAS-L3-Cx-2110 FF, DC1-COMP-L3-CX-2230, DC1-FAN-L3-CX-2230, DC1-COMP-L3-CX-2260, DC1-FAN-L3-CX-2260, DC1-COMP-L3-CX-2290, DC1-FAN-L3-CX-2290, DC1-COMP-L3-CX-2320, DC1-FAN-L3-CX-2320, DC1-COMP-L3-CX-2350, DC1-FAN-L3-CX-2350, DC1-COMP-L3-CX-2380, DC1-FAN-L3-CX-2380, DC1-COMP-L3-CX-2410, DC1-FAN-L3-CX-2410, DC1-DH2200-TAB-1010, QTS-17161 | 1d | 0d |  | Riley Warring | LAY |
| DC1-ELEC-L4-Cx-1090 |  | DC1 Data Hall 2200 Electrical L4 (TFO) | 20d | 2026-05-18 | 2026-06-15 | DC1-CDU-L3-CX-3255, DC1-CDU-L3-CX-3225, DC1-CDU-L3-CX-3195, DC1-CDU-L3-CX-3165, DC1-CDU-L3-CX-3135, DC1-CDU-L3-CX-3105, DC1-CDU-L3-CX-3075, DC1-CDU-L3-CX-3045, DC1-CDU-L3-CX-3015, DC1-CDU-L3-CX-2985, DC1-CDU-L3-CX-2955, DC1-CDU-L3-CX-2925, DC1-CDU-L3-CX-2895, DC1-CDU-L3-CX-2865, DC1-CDU-L3-CX-2835, DC1-CDU-L3-CX-2805, DC1-CDU-L3-CX-2775, DC1-CDU-L3-CX-2745, DC1-RPP-L3-CX-2565, DC1-RPP-L3-CX-2595, DC1-RPP-L3-CX-2625, DC1-RPP-L3-CX-2655, DC1-RPP-L3-CX-2685, DC1-RPP-L3-CX-2715, DC1-RPP-L3-CX-2745, DC1-RPP-L3-CX-2775, DC1-RPP-L3-CX-2805, DC1-RPP-L3-CX-2835, DC1-RPP-L3-CX-2865, DC1-RPP-L3-CX-2895, DC1-RPP-L3-CX-2925, DC1-RPP-L3-CX-2955, DC1-RPP-L3-CX-2985, DC1-RPP-L3-CX-3015, DC1-RPP-L3-CX-3045, DC1-RPP-L3-CX-3075, DC1-RPP-L3-CX-3105, DC1-RPP-L3-CX-3135, DC1-RPP-L3-CX-3165, DC1-RPP-L3-CX-3195, DC1-RPP-L3-CX-3225, DC1-RPP-L3-CX-3255, DC1-RPP-L3-CX-3285, DC1-RPP-L3-CX-3315, DC1-RPP-L3-CX-3345, DC1-RPP-L3-CX-3375, DC1-RPP-L3-CX-3405, DC1-RPP-L3-CX-3435, DC1-RPP-L3-CX-3465, DC1-RPP-L3-CX-3495, DC1-RPP-L3-CX-3525, DC1-RPP-L3-CX-3555, DC1-RPP-L3-CX-3585, DC1-RPP-L3-CX-3615, QTS - 5160, QTS - 5990, QTS - 6010, QTS - 5540, QTS - 5770, QTS - 5140, QTS - 5170, QTS - 5550, QTS - 5780, QTS - 5980, QTS - 5870, QTS - 5930, QTS - 6000, QTS - 2620, QTS-44481, QTS-44511 | 12d | 9d |  | Riley Warring | LAY |
| DC1-MECH-L4-Cx-1090 |  | DC1 Data Hall 2200 Mechanical L4 (TFO) | 20d | 2026-06-01 | 2026-06-26 | DC1-DH2200-LB-1040 SS, DC1-CDU-L3-CX-3255, DC1-CDU-L3-CX-3225, DC1-CDU-L3-CX-3195, DC1-CDU-L3-CX-3165, DC1-CDU-L3-CX-3135, DC1-CDU-L3-CX-3105, DC1-CDU-L3-CX-3075, DC1-CDU-L3-CX-3045, DC1-CDU-L3-CX-3015, DC1-CDU-L3-CX-2985, DC1-CDU-L3-CX-2955, DC1-CDU-L3-CX-2925, DC1-CDU-L3-CX-2895, DC1-CDU-L3-CX-2865, DC1-CDU-L3-CX-2835, DC1-CDU-L3-CX-2805, DC1-CDU-L3-CX-2775, DC1-CDU-L3-CX-2745, QTS - 5160, QTS - 5990, QTS - 6010, QTS - 5540, QTS - 5770, QTS - 5140, QTS - 5170, QTS - 5550, QTS - 5780, QTS - 5980, QTS - 5870, QTS - 5930, QTS - 6000 | 3d | 0d |  | Riley Warring | LAY |

Notes:
- DC1-CRAH-L3-Cx-3900: Steps: EC Startup Checklist; MC Startup Checklist; Vendor Startup
- DC1-DOAS-L3-Cx-2070: Steps: EC Startup Checklist; MC Startup Checklist; Vendor Startup
- DC1-DOAS-L3-Cx-2100: Steps: EC Startup Checklist; MC Startup Checklist; Vendor Startup

| ID | WBS | Activity | Duration | Start | Finish | Predecessors | Total float | Free float | Layton Responsible Party | Vendor Responsible Party |
| --- | --- | --- | --- | --- | --- | --- | --- | --- | --- | --- |
|  | 02 | **Data Hall 2200 Mechanical Cx L4** |  |  |  |  |  |  |  |  |
|  | 01 | **Data Hall 2200 Electrical Cx L4** |  |  |  |  |  |  |  |  |
|  | 05 | **Data Hall 2200 Cx L5** |  | 2026-05-28 | 2026-05-29 |  |  |  |  |  |
| DC1-IST-2010 |  | DC1 Data Hall 2200 IST (6/1/26) | 2d | 2026-05-28 | 2026-05-29 | DC1-ELEC-L4-Cx-1020, DC1-MECH-L4-Cx-1020 | 1d | 0d | Riley Warring | LAY |
|  | 05 | **Data Hall 1200 Commissioning** |  | 2026-01-14 | 2026-06-29 |  |  |  |  |  |
|  | 02 | **Data Hall 1200 Cx L2** |  | 2026-01-14 | 2026-04-15 |  |  |  |  |  |
|  | 01 | **DC1-DH1200 Generators Cx L2** |  | 2026-02-17 | 2026-03-17 |  |  |  |  |  |
| DC1-GEN-L2-2140 |  | DH1200 GEN-A12 L2 Checklist | 3d | 2026-02-17 | 2026-02-19 | QTS-17411, QTS-1000300, QTS-1001210 | 27d | 0d |  | HLT |
| DC1-GEN-L2-2150 |  | DH1200 GEN-B12 L2 Checklist | 3d | 2026-02-20 | 2026-02-24 | DC1-GEN-L2-2140, QTS-1000300, QTS-1001210 | 27d | 0d |  | HLT |
| DC1-GEN-L2-2160 |  | DH1200 GEN-C12 L2 Checklist | 3d | 2026-02-25 | 2026-02-27 | DC1-GEN-L2-2150, QTS-1000300, QTS-1001210 | 27d | 0d |  | HLT |
| DC1-GEN-L2-2170 |  | DH1200 GEN-D12 L2 Checklist | 3d | 2026-03-02 | 2026-03-04 | DC1-GEN-L2-2160, QTS-1000300, QTS-1001210 | 27d | 0d |  | HLT |
| DC1-GEN-L2-2180 |  | DH1200 GEN-E12 L2 Checklist | 3d | 2026-03-05 | 2026-03-09 | DC1-GEN-L2-2170, QTS-1000300, QTS-1001210 | 27d | 0d |  | HLT |
| DC1-GEN-L2-2190 |  | DH1200 GEN-F12 L2 Checklist | 3d | 2026-03-10 | 2026-03-12 | DC1-GEN-L2-2180, QTS-1000300, QTS-1001210 | 27d | 0d |  | HLT |
| DC1-GEN-L2-2200 |  | DH1200 GEN-R12 L2 Checklist | 3d | 2026-03-13 | 2026-03-17 | DC1-GEN-L2-2190, QTS-1000300, QTS-1001210 | 27d | 0d |  | HLT |
|  | 02 | **DC1-DH1200 MV XFMRs Cx L2** |  | 2026-02-16 | 2026-03-03 |  |  |  |  |  |
| DC1-XFMR-L2-2200 |  | DH1200 XFMR-R12 L2 Checklist | 3d | 2026-02-16 | 2026-02-18 | QTS-15901 | 8d | 0d | Riley Warring | VTC |
| DC1-XFMR-L2-2140 |  | DH1200 XFMR-A12 L2 Checklist | 3d | 2026-02-18 | 2026-02-20 | DC1-XFMR-L2-2200 SS+2d | 8d | 0d | Riley Warring | VTC |
| DC1-XFMR-L2-2150 |  | DH1200 XFMR-B12 L2 Checklist | 3d | 2026-02-20 | 2026-02-24 | DC1-XFMR-L2-2140 SS+2d | 8d | 0d | Riley Warring | VTC |
| DC1-XFMR-L2-2160 |  | DH1200 XFMR-C12 L2 Checklist | 3d | 2026-02-24 | 2026-02-26 | DC1-XFMR-L2-2150 SS+2d | 8d | 0d | Riley Warring | VTC |
| DC1-XFMR-L2-2170 |  | DH1200 XFMR-D12 L2 Checklist | 3d | 2026-02-25 | 2026-02-27 | DC1-XFMR-L2-2160 SS+1d | 8d | 0d | Riley Warring | VTC |
| DC1-XFMR-L2-2180 |  | DH1200 XFMR-E12 L2 Checklist | 3d | 2026-02-26 | 2026-03-02 | DC1-XFMR-L2-2170 SS+1d | 8d | 0d | Riley Warring | VTC |
| DC1-XFMR-L2-2190 |  | DH1200 XFMR-F12 L2 Checklist | 3d | 2026-02-27 | 2026-03-03 | DC1-XFMR-L2-2180 SS+1d | 8d | 0d | Riley Warring | VTC |
|  | 03 | **DC1-DH1200 PODS** |  | 2026-01-14 | 2026-03-10 |  |  |  |  |  |
|  | 01 | **DC1-DH1200 SWDs Cx L2** |  | 2026-02-16 | 2026-02-26 |  |  |  |  |  |
| DC1-SWD-L2-2200 |  | DH1200 SWD-R12 L2 Checklist | 1d | 2026-02-16 | 2026-02-16 | QTS-17411 FF, QTS-15901 FF, QTS-15901, QTS-17411 | 11d | 0d | Riley Warring | SIE |
| DC1-SWD-L2-2140 |  | DH1200 SWD-A12 L2 Checklist | 1d | 2026-02-17 | 2026-02-17 | DC1-SWD-L2-2200 SS+1d | 11d | 0d | Riley Warring | SIE |
| DC1-SWD-L2-2150 |  | DH1200 SWD-B12 L2 Checklist | 1d | 2026-02-19 | 2026-02-19 | DC1-SWD-L2-2140 SS+2d | 11d | 0d | Riley Warring | SIE |
| DC1-SWD-L2-2160 |  | DH1200 SWD-C12 L2 Checklist | 1d | 2026-02-23 | 2026-02-23 | DC1-SWD-L2-2150 SS+2d | 11d | 0d | Riley Warring | SIE |
| DC1-SWD-L2-2170 |  | DH1200 SWD-D12 L2 Checklist | 1d | 2026-02-24 | 2026-02-24 | DC1-SWD-L2-2160 SS+1d | 11d | 0d | Riley Warring | SIE |
| DC1-SWD-L2-2180 |  | DH1200 SWD-E12 L2 Checklist | 1d | 2026-02-25 | 2026-02-25 | DC1-SWD-L2-2170 SS+1d | 11d | 0d | Riley Warring | SIE |
| DC1-SWD-L2-2190 |  | DH1200 SWD-F12 L2 Checklist | 1d | 2026-02-26 | 2026-02-26 | DC1-SWD-L2-2180 SS+1d | 11d | 0d | Riley Warring | SIE |

Notes:
- DC1-GEN-L2-2140: Steps: EC Installation Checklist; MC Installation Checklist; CC Installation Checklist; Vendor Pre-Energization Checklist; CXA Pre-Energization Inspection; PEI/Clean-Walk
- DC1-GEN-L2-2150: Steps: EC Installation Checklist; MC Installation Checklist; CC Installation Checklist; Vendor Pre-Energization Checklist; CXA Pre-Energization Inspection; PEI/Clean-Walk
- DC1-GEN-L2-2160: Steps: EC Installation Checklist; MC Installation Checklist; CC Installation Checklist; Vendor Pre-Energization Checklist; CXA Pre-Energization Inspection; PEI/Clean-Walk
- DC1-GEN-L2-2170: Steps: EC Installation Checklist; MC Installation Checklist; CC Installation Checklist; Vendor Pre-Energization Checklist; CXA Pre-Energization Inspection; PEI/Clean-Walk
- DC1-GEN-L2-2180: Steps: EC Installation Checklist; MC Installation Checklist; CC Installation Checklist; Vendor Pre-Energization Checklist; CXA Pre-Energization Inspection; PEI/Clean-Walk
- DC1-GEN-L2-2190: Steps: EC Installation Checklist; MC Installation Checklist; CC Installation Checklist; Vendor Pre-Energization Checklist; CXA Pre-Energization Inspection; PEI/Clean-Walk
- DC1-GEN-L2-2200: Steps: EC Installation Checklist; MC Installation Checklist; CC Installation Checklist; Vendor Pre-Energization Checklist; CXA Pre-Energization Inspection; PEI/Clean-Walk
- DC1-XFMR-L2-2200: Steps: EC Installation Checklist; CC Installation Checklist; Vendor Pre-Energization Checklist; CXA Pre-Energization Inspection; PEI/Clean-Walk
- DC1-XFMR-L2-2140: Steps: EC Installation Checklist; CC Installation Checklist; Vendor Pre-Energization Checklist; CXA Pre-Energization Inspection; PEI/Clean-Walk
- DC1-XFMR-L2-2150: Steps: EC Installation Checklist; CC Installation Checklist; Vendor Pre-Energization Checklist; CXA Pre-Energization Inspection; PEI/Clean-Walk
- DC1-XFMR-L2-2160: Steps: EC Installation Checklist; CC Installation Checklist; Vendor Pre-Energization Checklist; CXA Pre-Energization Inspection; PEI/Clean-Walk
- DC1-XFMR-L2-2170: Steps: EC Installation Checklist; CC Installation Checklist; Vendor Pre-Energization Checklist; CXA Pre-Energization Inspection; PEI/Clean-Walk
- DC1-XFMR-L2-2180: Steps: EC Installation Checklist; CC Installation Checklist; Vendor Pre-Energization Checklist; CXA Pre-Energization Inspection; PEI/Clean-Walk
- DC1-XFMR-L2-2190: Steps: EC Installation Checklist; CC Installation Checklist; Vendor Pre-Energization Checklist; CXA Pre-Energization Inspection; PEI/Clean-Walk
- DC1-SWD-L2-2200: Steps: EC Pre-Energization Checklist; Vendor Pre-Energization Checklist; CXA Pre-Energization Inspection; PEI/Clean-Walk
- DC1-SWD-L2-2140: Steps: EC Pre-Energization Checklist; Vendor Pre-Energization Checklist; CXA Pre-Energization Inspection; PEI/Clean-Walk
- DC1-SWD-L2-2150: Steps: EC Pre-Energization Checklist; Vendor Pre-Energization Checklist; CXA Pre-Energization Inspection; PEI/Clean-Walk
- DC1-SWD-L2-2160: Steps: EC Pre-Energization Checklist; Vendor Pre-Energization Checklist; CXA Pre-Energization Inspection; PEI/Clean-Walk
- DC1-SWD-L2-2170: Steps: EC Pre-Energization Checklist; Vendor Pre-Energization Checklist; CXA Pre-Energization Inspection; PEI/Clean-Walk
- DC1-SWD-L2-2180: Steps: EC Pre-Energization Checklist; Vendor Pre-Energization Checklist; CXA Pre-Energization Inspection; PEI/Clean-Walk
- DC1-SWD-L2-2190: Steps: EC Pre-Energization Checklist; Vendor Pre-Energization Checklist; CXA Pre-Energization Inspection; PEI/Clean-Walk

| ID | WBS | Activity | Duration | Start | Finish | Predecessors | Total float | Free float | Allucent CSI Group | Vendor Responsible Party | Notes | Layton Responsible Party |
| --- | --- | --- | --- | --- | --- | --- | --- | --- | --- | --- | --- | --- |
|  | 02 | **DC1-DH1200 MOD-01s Cx L2** |  | 2026-01-14 | 2026-02-04 |  |  |  |  |  |  |  |
| DC1-MOD01-L2-2140 |  | DH1200 MOD-A12-01 L2 Checklist | 3d | 2026-01-14 | 2026-01-16 | QTS-13561 | 27d | 0d | 01ADMIN | PHE |  |  |
| DC1-MOD01-L2-2150 |  | DH1200 MOD-B12-01 L2 Checklist | 3d | 2026-01-14 | 2026-01-16 | DC1-MOD01-L2-2140 SS | 27d | 0d | 01ADMIN | PHE |  |  |
| DC1-MOD01-L2-2160 |  | DH1200 MOD-C12-01 L2 Checklist | 3d | 2026-01-20 | 2026-01-22 | DC1-MOD01-L2-2150 | 27d | 0d |  | PHE |  |  |
| DC1-MOD01-L2-2170 |  | DH1200 MOD-D12-01 L2 Checklist | 3d | 2026-01-20 | 2026-01-22 | DC1-MOD01-L2-2160 SS | 27d | 0d |  | PHE |  |  |
| DC1-MOD01-L2-2180 |  | DH1200 MOD-E12-01 L2 Checklist | 3d | 2026-01-23 | 2026-01-27 | DC1-MOD01-L2-2170 | 27d | 0d |  | PHE |  |  |
| DC1-MOD01-L2-2190 |  | DH1200 MOD-F12-01 L2 Checklist | 3d | 2026-01-28 | 2026-01-30 | DC1-MOD01-L2-2180 | 27d | 0d |  | PHE |  |  |
| DC1-MOD01-L2-2200 |  | DH1200 MOD-R12-01 L2 Checklist | 3d | 2026-02-02 | 2026-02-04 | DC1-MOD01-L2-2190 | 27d | 16d |  | PHE | Do we need this? |  |
|  | 03 | **DC1-DH1200 UPS-M Cx L2** |  | 2026-02-20 | 2026-03-10 |  |  |  |  |  |  |  |
| DC1-UPS-M-L2-2200 |  | DH1200 UPS-M-R12 L2 Checklist | 3d | 2026-02-20 | 2026-02-24 | QTS-18971, QTS-13561, QTS-43771 | 7d | 0d |  | VER |  |  |
| DC1-UPS-M-L2-2140 |  | DH1200 UPS-M-A12 L2 Checklist | 3d | 2026-02-23 | 2026-02-25 | DC1-UPS-M-L2-2200 SS+1d | 7d | 0d | 01ADMIN | VER |  |  |
| DC1-UPS-M-L2-2150 |  | DH1200 UPS-M-B12 L2 Checklist | 3d | 2026-02-24 | 2026-02-26 | DC1-UPS-M-L2-2140 SS+1d | 7d | 0d | 01ADMIN | VER |  |  |
| DC1-UPS-M-L2-2160 |  | DH1200 UPS-M-C12 L2 Checklist | 3d | 2026-02-27 | 2026-03-03 | DC1-UPS-M-L2-2150 | 7d | 0d |  | VER |  |  |
| DC1-UPS-M-L2-2170 |  | DH1200 UPS-M-D12 L2 Checklist | 3d | 2026-03-02 | 2026-03-04 | QTS-43811, DC1-UPS-M-L2-2160 SS+1d | 7d | 0d |  | VER |  |  |
| DC1-UPS-M-L2-2180 |  | DH1200 UPS-M-E12 L2 Checklist | 3d | 2026-03-03 | 2026-03-05 | DC1-UPS-M-L2-2170 SS+1d | 7d | 0d |  | VER |  |  |
| DC1-UPS-M-L2-2190 |  | DH1200 UPS-M-F12 L2 Checklist | 3d | 2026-03-06 | 2026-03-10 | DC1-UPS-M-L2-2180 | 7d | 0d |  | VER |  |  |
|  | 04 | **DC1-DH1200 COMPRESSOR/FAN UNITS Cx L2** |  |  |  |  |  |  |  |  |  |  |
|  | 01 | **DC1-DH1200 POD-AC UNITS A12 Cx L2** |  |  |  |  |  |  |  |  |  |  |
|  | 02 | **DC1-DH1200 POD-AC UNITS B12 Cx L2** |  |  |  |  |  |  |  |  |  |  |
|  | 03 | **DC1-DH1200 POD-AC UNITS C12 Cx L2** |  |  |  |  |  |  |  |  |  |  |
|  | 04 | **DC1-DH1200 POD-AC UNITS D12 Cx L2** |  |  |  |  |  |  |  |  |  |  |
|  | 05 | **DC1-DH1200 POD-AC UNITS E12 Cx L2** |  |  |  |  |  |  |  |  |  |  |
|  | 06 | **DC1-DH1200 POD-AC UNITS F12 Cx L2** |  |  |  |  |  |  |  |  |  |  |
|  | 07 | **DC1-DH1200 POD-AC UNITS R12 Cx L2** |  |  |  |  |  |  |  |  |  |  |
|  | 04 | **DC1-DH1200 BUS-R1X/BUS-R2X Cx L2** |  | 2026-02-18 | 2026-03-11 |  |  |  |  |  |  |  |
| DC1-BUS-L2-1050 |  | DH1200 BUS-R2 (R12) MAINTENANCE BUS Duct L2 Checklist | 3d | 2026-02-18 | 2026-02-20 | QTS-7181, QTS-9211 | 42d | 5d |  | LAY | CFCI | Riley Warring |
| DC1-BUS-L2-1040 |  | DH1200 BUS-R1 (R22) CATCHER BUS Duct L2 Checklist | 3d | 2026-03-09 | 2026-03-11 | QTS-7131 | 30d | 5d |  | LAY | CFCI - Bus duct complete (PRED) | Riley Warring |

Notes:
- DC1-MOD01-L2-2140: Steps: Vendor Pre-Energization Checklist; CXA Pre-Energization Inspection; PEI/Clean-Walk
- DC1-MOD01-L2-2150: Steps: Vendor Pre-Energization Checklist; CXA Pre-Energization Inspection; PEI/Clean-Walk
- DC1-MOD01-L2-2160: Steps: Vendor Pre-Energization Checklist; CXA Pre-Energization Inspection; PEI/Clean-Walk
- DC1-MOD01-L2-2170: Steps: Vendor Pre-Energization Checklist; CXA Pre-Energization Inspection; PEI/Clean-Walk
- DC1-MOD01-L2-2180: Steps: Vendor Pre-Energization Checklist; CXA Pre-Energization Inspection; PEI/Clean-Walk
- DC1-MOD01-L2-2190: Steps: Vendor Pre-Energization Checklist; CXA Pre-Energization Inspection; PEI/Clean-Walk
- DC1-MOD01-L2-2200: Steps: Vendor Pre-Energization Checklist; CXA Pre-Energization Inspection; PEI/Clean-Walk
- DC1-UPS-M-L2-2200: Steps: EC Pre-Energization Checklist; Vendor Pre-Energization Checklist; CXA Pre-Energization Inspection; PEI/Clean-Walk
- DC1-UPS-M-L2-2140: Steps: EC Pre-Energization Checklist; Vendor Pre-Energization Checklist; CXA Pre-Energization Inspection; PEI/Clean-Walk
- DC1-UPS-M-L2-2150: Steps: EC Pre-Energization Checklist; Vendor Pre-Energization Checklist; CXA Pre-Energization Inspection; PEI/Clean-Walk
- DC1-UPS-M-L2-2160: Steps: EC Pre-Energization Checklist; Vendor Pre-Energization Checklist; CXA Pre-Energization Inspection; PEI/Clean-Walk
- DC1-UPS-M-L2-2170: Steps: EC Pre-Energization Checklist; Vendor Pre-Energization Checklist; CXA Pre-Energization Inspection; PEI/Clean-Walk
- DC1-UPS-M-L2-2180: Steps: EC Pre-Energization Checklist; Vendor Pre-Energization Checklist; CXA Pre-Energization Inspection; PEI/Clean-Walk
- DC1-UPS-M-L2-2190: Steps: EC Pre-Energization Checklist; Vendor Pre-Energization Checklist; CXA Pre-Energization Inspection; PEI/Clean-Walk
- DC1-BUS-L2-1050: Steps: EC Pre-Energization Checklist; Vendor Pre-Energization Checklist; CXA Pre-Energization Inspection; PEI/Clean-Walk
- DC1-BUS-L2-1040: Steps: EC Pre-Energization Checklist; Vendor Pre-Energization Checklist; CXA Pre-Energization Inspection; PEI/Clean-Walk

| ID | WBS | Activity | Duration | Start | Finish | Predecessors | Total float | Free float | Layton Responsible Party | Vendor Responsible Party |
| --- | --- | --- | --- | --- | --- | --- | --- | --- | --- | --- |
|  | 05 | **DC1-DH1200 ATS Cx L2** |  | 2026-02-19 | 2026-03-12 |  |  |  |  |  |
|  | 01 | **DC1-DH1200 ATS-A12 Cx L2** |  | 2026-02-19 | 2026-02-23 |  |  |  |  |  |
| DC1-ATS-L2-2720 |  | DH1200 ATS-A12-01 L2 Checklist | 3d | 2026-02-19 | 2026-02-23 | QTS-18151 | 42d | 17d | Riley Warring | MAV |
| DC1-ATS-L2-2730 |  | DH1200 ATS-A12-02 L2 Checklist | 3d | 2026-02-19 | 2026-02-23 | QTS-18151 | 42d | 17d | Riley Warring | MAV |
| DC1-ATS-L2-2740 |  | DH1200 ATS-A12-03 L2 Checklist | 3d | 2026-02-19 | 2026-02-23 | QTS-18151 | 42d | 17d | Riley Warring | MAV |
| DC1-ATS-L2-2750 |  | DH1200 ATS-A12-04 L2 Checklist | 3d | 2026-02-19 | 2026-02-23 | QTS-18151 | 42d | 17d | Riley Warring | MAV |
| DC1-ATS-L2-2760 |  | DH1200 ATS-A12-05 L2 Checklist | 3d | 2026-02-19 | 2026-02-23 | QTS-18151 | 42d | 17d | Riley Warring | MAV |
| DC1-ATS-L2-2770 |  | DH1200 ATS-A12-06 L2 Checklist | 3d | 2026-02-19 | 2026-02-23 | QTS-18151 | 42d | 17d | Riley Warring | MAV |
|  | 02 | **DC1-DH1200 ATS-B12 Cx L2** |  | 2026-02-19 | 2026-02-23 |  |  |  |  |  |
| DC1-ATS-L2-2780 |  | DH1200 ATS-B12-01 L2 Checklist | 3d | 2026-02-19 | 2026-02-23 | QTS-9231 | 42d | 17d | Riley Warring | MAV |
| DC1-ATS-L2-2790 |  | DH1200 ATS-B12-02 L2 Checklist | 3d | 2026-02-19 | 2026-02-23 | QTS-9231 | 42d | 17d | Riley Warring | MAV |
| DC1-ATS-L2-2800 |  | DH1200 ATS-B12-03 L2 Checklist | 3d | 2026-02-19 | 2026-02-23 | QTS-9231 | 42d | 17d | Riley Warring | MAV |
| DC1-ATS-L2-2810 |  | DH1200 ATS-B12-04 L2 Checklist | 3d | 2026-02-19 | 2026-02-23 | QTS-9231 | 42d | 17d | Riley Warring | MAV |
| DC1-ATS-L2-2820 |  | DH1200 ATS-B12-05 L2 Checklist | 3d | 2026-02-19 | 2026-02-23 | QTS-9231 | 42d | 17d | Riley Warring | MAV |
| DC1-ATS-L2-2830 |  | DH1200 ATS-B12-06 L2 Checklist | 3d | 2026-02-19 | 2026-02-23 | QTS-9231 | 42d | 17d | Riley Warring | MAV |
|  | 03 | **DC1-DH1200 ATS-C12 Cx L2** |  | 2026-03-02 | 2026-03-04 |  |  |  |  |  |
| DC1-ATS-L2-2840 |  | DH1200 ATS-C12-01 L2 Checklist | 3d | 2026-03-02 | 2026-03-04 | QTS-9261 | 35d | 10d | Riley Warring | MAV |
| DC1-ATS-L2-2850 |  | DH1200 ATS-C12-02 L2 Checklist | 3d | 2026-03-02 | 2026-03-04 | QTS-9261 | 35d | 10d | Riley Warring | MAV |
| DC1-ATS-L2-2860 |  | DH1200 ATS-C12-03 L2 Checklist | 3d | 2026-03-02 | 2026-03-04 | QTS-9261 | 35d | 10d | Riley Warring | MAV |
| DC1-ATS-L2-2870 |  | DH1200 ATS-C12-04 L2 Checklist | 3d | 2026-03-02 | 2026-03-04 | QTS-9261 | 35d | 10d | Riley Warring | MAV |
| DC1-ATS-L2-2880 |  | DH1200 ATS-C12-05 L2 Checklist | 3d | 2026-03-02 | 2026-03-04 | QTS-9261 | 35d | 10d | Riley Warring | MAV |
| DC1-ATS-L2-2890 |  | DH1200 ATS-C12-06 L2 Checklist | 3d | 2026-03-02 | 2026-03-04 | QTS-9261 | 35d | 10d | Riley Warring | MAV |
|  | 04 | **DC1-DH1200 ATS-D12 Cx L2** |  | 2026-03-02 | 2026-03-04 |  |  |  |  |  |
| DC1-ATS-L2-2900 |  | DH1200 ATS-D12-01 L2 Checklist | 3d | 2026-03-02 | 2026-03-04 | QTS-9291 | 35d | 10d | Riley Warring | MAV |
| DC1-ATS-L2-2910 |  | DH1200 ATS-D12-02 L2 Checklist | 3d | 2026-03-02 | 2026-03-04 | QTS-9291 | 35d | 10d | Riley Warring | MAV |
| DC1-ATS-L2-2920 |  | DH1200 ATS-D12-03 L2 Checklist | 3d | 2026-03-02 | 2026-03-04 | QTS-9291 | 35d | 10d | Riley Warring | MAV |
| DC1-ATS-L2-2930 |  | DH1200 ATS-D12-04 L2 Checklist | 3d | 2026-03-02 | 2026-03-04 | QTS-9291 | 35d | 10d | Riley Warring | MAV |
| DC1-ATS-L2-2940 |  | DH1200 ATS-D12-05 L2 Checklist | 3d | 2026-03-02 | 2026-03-04 | QTS-9291 | 35d | 10d | Riley Warring | MAV |
| DC1-ATS-L2-2950 |  | DH1200 ATS-D12-06 L2 Checklist | 3d | 2026-03-02 | 2026-03-04 | QTS-9291 | 35d | 10d | Riley Warring | MAV |

Notes:
- DC1-ATS-L2-2720: Steps: EC Installation Checklist; CC Installation Checklist; Vendor Pre-Energization Checklist; CXA Pre-Energization Inspection; PEI/Clean-Walk
- DC1-ATS-L2-2730: Steps: EC Installation Checklist; CC Installation Checklist; Vendor Pre-Energization Checklist; CXA Pre-Energization Inspection; PEI/Clean-Walk
- DC1-ATS-L2-2740: Steps: EC Installation Checklist; CC Installation Checklist; Vendor Pre-Energization Checklist; CXA Pre-Energization Inspection; PEI/Clean-Walk
- DC1-ATS-L2-2750: Steps: EC Installation Checklist; CC Installation Checklist; Vendor Pre-Energization Checklist; CXA Pre-Energization Inspection; PEI/Clean-Walk
- DC1-ATS-L2-2760: Steps: EC Installation Checklist; CC Installation Checklist; Vendor Pre-Energization Checklist; CXA Pre-Energization Inspection; PEI/Clean-Walk
- DC1-ATS-L2-2770: Steps: EC Installation Checklist; CC Installation Checklist; Vendor Pre-Energization Checklist; CXA Pre-Energization Inspection; PEI/Clean-Walk
- DC1-ATS-L2-2780: Steps: EC Installation Checklist; CC Installation Checklist; Vendor Pre-Energization Checklist; CXA Pre-Energization Inspection; PEI/Clean-Walk
- DC1-ATS-L2-2790: Steps: EC Installation Checklist; CC Installation Checklist; Vendor Pre-Energization Checklist; CXA Pre-Energization Inspection; PEI/Clean-Walk
- DC1-ATS-L2-2800: Steps: EC Installation Checklist; CC Installation Checklist; Vendor Pre-Energization Checklist; CXA Pre-Energization Inspection; PEI/Clean-Walk
- DC1-ATS-L2-2810: Steps: EC Installation Checklist; CC Installation Checklist; Vendor Pre-Energization Checklist; CXA Pre-Energization Inspection; PEI/Clean-Walk
- DC1-ATS-L2-2820: Steps: EC Installation Checklist; CC Installation Checklist; Vendor Pre-Energization Checklist; CXA Pre-Energization Inspection; PEI/Clean-Walk
- DC1-ATS-L2-2830: Steps: EC Installation Checklist; CC Installation Checklist; Vendor Pre-Energization Checklist; CXA Pre-Energization Inspection; PEI/Clean-Walk
- DC1-ATS-L2-2840: Steps: EC Installation Checklist; CC Installation Checklist; Vendor Pre-Energization Checklist; CXA Pre-Energization Inspection; PEI/Clean-Walk
- DC1-ATS-L2-2850: Steps: EC Installation Checklist; CC Installation Checklist; Vendor Pre-Energization Checklist; CXA Pre-Energization Inspection; PEI/Clean-Walk
- DC1-ATS-L2-2860: Steps: EC Installation Checklist; CC Installation Checklist; Vendor Pre-Energization Checklist; CXA Pre-Energization Inspection; PEI/Clean-Walk
- DC1-ATS-L2-2870: Steps: EC Installation Checklist; CC Installation Checklist; Vendor Pre-Energization Checklist; CXA Pre-Energization Inspection; PEI/Clean-Walk
- DC1-ATS-L2-2880: Steps: EC Installation Checklist; CC Installation Checklist; Vendor Pre-Energization Checklist; CXA Pre-Energization Inspection; PEI/Clean-Walk
- DC1-ATS-L2-2890: Steps: EC Installation Checklist; CC Installation Checklist; Vendor Pre-Energization Checklist; CXA Pre-Energization Inspection; PEI/Clean-Walk
- DC1-ATS-L2-2900: Steps: EC Installation Checklist; CC Installation Checklist; Vendor Pre-Energization Checklist; CXA Pre-Energization Inspection; PEI/Clean-Walk
- DC1-ATS-L2-2910: Steps: EC Installation Checklist; CC Installation Checklist; Vendor Pre-Energization Checklist; CXA Pre-Energization Inspection; PEI/Clean-Walk
- DC1-ATS-L2-2920: Steps: EC Installation Checklist; CC Installation Checklist; Vendor Pre-Energization Checklist; CXA Pre-Energization Inspection; PEI/Clean-Walk
- DC1-ATS-L2-2930: Steps: EC Installation Checklist; CC Installation Checklist; Vendor Pre-Energization Checklist; CXA Pre-Energization Inspection; PEI/Clean-Walk
- DC1-ATS-L2-2940: Steps: EC Installation Checklist; CC Installation Checklist; Vendor Pre-Energization Checklist; CXA Pre-Energization Inspection; PEI/Clean-Walk
- DC1-ATS-L2-2950: Steps: EC Installation Checklist; CC Installation Checklist; Vendor Pre-Energization Checklist; CXA Pre-Energization Inspection; PEI/Clean-Walk

| ID | WBS | Activity | Duration | Start | Finish | Predecessors | Total float | Free float | Layton Responsible Party | Vendor Responsible Party |
| --- | --- | --- | --- | --- | --- | --- | --- | --- | --- | --- |
|  | 05 | **DC1-DH1200 ATS-E12 Cx L2** |  | 2026-03-10 | 2026-03-12 |  |  |  |  |  |
| DC1-ATS-L2-2960 |  | DH1200 ATS-E12-01 L2 Checklist | 3d | 2026-03-10 | 2026-03-12 | QTS-9321 | 29d | 4d | Riley Warring | MAV |
| DC1-ATS-L2-2970 |  | DH1200 ATS-E12-02 L2 Checklist | 3d | 2026-03-10 | 2026-03-12 | QTS-9321 | 29d | 4d | Riley Warring | MAV |
| DC1-ATS-L2-2980 |  | DH1200 ATS-E12-03 L2 Checklist | 3d | 2026-03-10 | 2026-03-12 | QTS-9321 | 29d | 4d | Riley Warring | MAV |
| DC1-ATS-L2-2990 |  | DH1200 ATS-E12-04 L2 Checklist | 3d | 2026-03-10 | 2026-03-12 | QTS-9321 | 29d | 4d | Riley Warring | MAV |
| DC1-ATS-L2-3000 |  | DH1200 ATS-E12-05 L2 Checklist | 3d | 2026-03-10 | 2026-03-12 | QTS-9321 | 29d | 4d | Riley Warring | MAV |
| DC1-ATS-L2-3010 |  | DH1200 ATS-E12-06 L2 Checklist | 3d | 2026-03-10 | 2026-03-12 | QTS-9321 | 29d | 4d | Riley Warring | MAV |
|  | 06 | **DC1-DH1200 ATS-F12 Cx L2** |  | 2026-03-09 | 2026-03-11 |  |  |  |  |  |
| DC1-ATS-L2-3020 |  | DH1200 ATS-F12-01 L2 Checklist | 3d | 2026-03-09 | 2026-03-11 | QTS-9351 | 30d | 5d | Riley Warring | MAV |
| DC1-ATS-L2-3030 |  | DH1200 ATS-F12-02 L2 Checklist | 3d | 2026-03-09 | 2026-03-11 | QTS-9351 | 30d | 5d | Riley Warring | MAV |
| DC1-ATS-L2-3040 |  | DH1200 ATS-F12-03 L2 Checklist | 3d | 2026-03-09 | 2026-03-11 | QTS-9351 | 30d | 5d | Riley Warring | MAV |
| DC1-ATS-L2-3050 |  | DH1200 ATS-F12-04 L2 Checklist | 3d | 2026-03-09 | 2026-03-11 | QTS-9351 | 30d | 5d | Riley Warring | MAV |
| DC1-ATS-L2-3060 |  | DH1200 ATS-F12-05 L2 Checklist | 3d | 2026-03-09 | 2026-03-11 | QTS-9351 | 30d | 5d | Riley Warring | MAV |
| DC1-ATS-L2-3070 |  | DH1200 ATS-F12-06 L2 Checklist | 3d | 2026-03-09 | 2026-03-11 | QTS-9351 | 30d | 5d | Riley Warring | MAV |
|  | 06 | **DC1-DH1200 CODs Cx L2** |  | 2026-02-27 | 2026-03-12 |  |  |  |  |  |
|  | 01 | **DC1-DH1200 COD A12 Cx L2** |  | 2026-02-27 | 2026-03-03 |  |  |  |  |  |
| DC1-COD-L2-2720 |  | DH1200 COD-A12-01 L2 Checklist | 3d | 2026-02-27 | 2026-03-03 | QTS - 7660, QTS-18161 | 37d | 12d | Riley Warring | SIE |
| DC1-COD-L2-2730 |  | DH1200 COD-A12-02 L2 Checklist | 3d | 2026-02-27 | 2026-03-03 | QTS - 7660, QTS-18161 | 37d | 12d | Riley Warring | SIE |
| DC1-COD-L2-2740 |  | DH1200 COD-A12-03 L2 Checklist | 3d | 2026-02-27 | 2026-03-03 | QTS - 7660, QTS-18161 | 37d | 12d | Riley Warring | SIE |
| DC1-COD-L2-2750 |  | DH1200 COD-A12-04 L2 Checklist | 3d | 2026-02-27 | 2026-03-03 | QTS - 7660, QTS-18161 | 37d | 12d | Riley Warring | SIE |
| DC1-COD-L2-2760 |  | DH1200 COD-A12-05 L2 Checklist | 3d | 2026-02-27 | 2026-03-03 | QTS - 7660, QTS-18161 | 37d | 12d | Riley Warring | SIE |
| DC1-COD-L2-2770 |  | DH1200 COD-A12-06 L2 Checklist | 3d | 2026-02-27 | 2026-03-03 | QTS - 7660, QTS-18161 | 37d | 12d | Riley Warring | SIE |
|  | 02 | **DC1-DH1200 COD B12 Cx L2** |  | 2026-02-27 | 2026-03-03 |  |  |  |  |  |
| DC1-COD-L2-2780 |  | DH1200 COD-B12-01 L2 Checklist | 3d | 2026-02-27 | 2026-03-03 | QTS - 7660, QTS-9241 | 37d | 12d | Riley Warring | SIE |
| DC1-COD-L2-2790 |  | DH1200 COD-B12-02 L2 Checklist | 3d | 2026-02-27 | 2026-03-03 | QTS - 7660, QTS-9241 | 37d | 12d | Riley Warring | SIE |
| DC1-COD-L2-2800 |  | DH1200 COD-B12-03 L2 Checklist | 3d | 2026-02-27 | 2026-03-03 | QTS - 7660, QTS-9241 | 37d | 12d | Riley Warring | SIE |
| DC1-COD-L2-2810 |  | DH1200 COD-B12-04 L2 Checklist | 3d | 2026-02-27 | 2026-03-03 | QTS - 7660, QTS-9241 | 37d | 12d | Riley Warring | SIE |
| DC1-COD-L2-2820 |  | DH1200 COD-B12-05 L2 Checklist | 3d | 2026-02-27 | 2026-03-03 | QTS - 7660, QTS-9241 | 37d | 12d | Riley Warring | SIE |
| DC1-COD-L2-2830 |  | DH1200 COD-B12-06 L2 Checklist | 3d | 2026-02-27 | 2026-03-03 | QTS - 7660, QTS-9241 | 37d | 12d | Riley Warring | SIE |

Notes:
- DC1-ATS-L2-2960: Steps: EC Installation Checklist; CC Installation Checklist; Vendor Pre-Energization Checklist; CXA Pre-Energization Inspection; PEI/Clean-Walk
- DC1-ATS-L2-2970: Steps: EC Installation Checklist; CC Installation Checklist; Vendor Pre-Energization Checklist; CXA Pre-Energization Inspection; PEI/Clean-Walk
- DC1-ATS-L2-2980: Steps: EC Installation Checklist; CC Installation Checklist; Vendor Pre-Energization Checklist; CXA Pre-Energization Inspection; PEI/Clean-Walk
- DC1-ATS-L2-2990: Steps: EC Installation Checklist; CC Installation Checklist; Vendor Pre-Energization Checklist; CXA Pre-Energization Inspection; PEI/Clean-Walk
- DC1-ATS-L2-3000: Steps: EC Installation Checklist; CC Installation Checklist; Vendor Pre-Energization Checklist; CXA Pre-Energization Inspection; PEI/Clean-Walk
- DC1-ATS-L2-3010: Steps: EC Installation Checklist; CC Installation Checklist; Vendor Pre-Energization Checklist; CXA Pre-Energization Inspection; PEI/Clean-Walk
- DC1-ATS-L2-3020: Steps: EC Installation Checklist; CC Installation Checklist; Vendor Pre-Energization Checklist; CXA Pre-Energization Inspection; PEI/Clean-Walk
- DC1-ATS-L2-3030: Steps: EC Installation Checklist; CC Installation Checklist; Vendor Pre-Energization Checklist; CXA Pre-Energization Inspection; PEI/Clean-Walk
- DC1-ATS-L2-3040: Steps: EC Installation Checklist; CC Installation Checklist; Vendor Pre-Energization Checklist; CXA Pre-Energization Inspection; PEI/Clean-Walk
- DC1-ATS-L2-3050: Steps: EC Installation Checklist; CC Installation Checklist; Vendor Pre-Energization Checklist; CXA Pre-Energization Inspection; PEI/Clean-Walk
- DC1-ATS-L2-3060: Steps: EC Installation Checklist; CC Installation Checklist; Vendor Pre-Energization Checklist; CXA Pre-Energization Inspection; PEI/Clean-Walk
- DC1-ATS-L2-3070: Steps: EC Installation Checklist; CC Installation Checklist; Vendor Pre-Energization Checklist; CXA Pre-Energization Inspection; PEI/Clean-Walk
- DC1-COD-L2-2720: Steps: EC Installation Checklist; CC Installation Checklist; Vendor Pre-Energization Checklist; CXA Pre-Energization Inspection; PEI/Clean-Walk
- DC1-COD-L2-2730: Steps: EC Installation Checklist; CC Installation Checklist; Vendor Pre-Energization Checklist; CXA Pre-Energization Inspection; PEI/Clean-Walk
- DC1-COD-L2-2740: Steps: EC Installation Checklist; CC Installation Checklist; Vendor Pre-Energization Checklist; CXA Pre-Energization Inspection; PEI/Clean-Walk
- DC1-COD-L2-2750: Steps: EC Installation Checklist; CC Installation Checklist; Vendor Pre-Energization Checklist; CXA Pre-Energization Inspection; PEI/Clean-Walk
- DC1-COD-L2-2760: Steps: EC Installation Checklist; CC Installation Checklist; Vendor Pre-Energization Checklist; CXA Pre-Energization Inspection; PEI/Clean-Walk
- DC1-COD-L2-2770: Steps: EC Installation Checklist; CC Installation Checklist; Vendor Pre-Energization Checklist; CXA Pre-Energization Inspection; PEI/Clean-Walk
- DC1-COD-L2-2780: Steps: EC Installation Checklist; CC Installation Checklist; Vendor Pre-Energization Checklist; CXA Pre-Energization Inspection; PEI/Clean-Walk
- DC1-COD-L2-2790: Steps: EC Installation Checklist; CC Installation Checklist; Vendor Pre-Energization Checklist; CXA Pre-Energization Inspection; PEI/Clean-Walk
- DC1-COD-L2-2800: Steps: EC Installation Checklist; CC Installation Checklist; Vendor Pre-Energization Checklist; CXA Pre-Energization Inspection; PEI/Clean-Walk
- DC1-COD-L2-2810: Steps: EC Installation Checklist; CC Installation Checklist; Vendor Pre-Energization Checklist; CXA Pre-Energization Inspection; PEI/Clean-Walk
- DC1-COD-L2-2820: Steps: EC Installation Checklist; CC Installation Checklist; Vendor Pre-Energization Checklist; CXA Pre-Energization Inspection; PEI/Clean-Walk
- DC1-COD-L2-2830: Steps: EC Installation Checklist; CC Installation Checklist; Vendor Pre-Energization Checklist; CXA Pre-Energization Inspection; PEI/Clean-Walk

| ID | WBS | Activity | Duration | Start | Finish | Predecessors | Total float | Free float | Layton Responsible Party | Vendor Responsible Party |
| --- | --- | --- | --- | --- | --- | --- | --- | --- | --- | --- |
|  | 03 | **DC1-DH1200 COD C12 Cx L2** |  | 2026-03-09 | 2026-03-11 |  |  |  |  |  |
| DC1-COD-L2-2840 |  | DH1200 COD-C12-01 L2 Checklist | 3d | 2026-03-09 | 2026-03-11 | QTS - 8120, QTS-9271 | 31d | 6d | Riley Warring | SIE |
| DC1-COD-L2-2850 |  | DH1200 COD-C12-02 L2 Checklist | 3d | 2026-03-09 | 2026-03-11 | QTS - 8120, QTS-9271 | 31d | 6d | Riley Warring | SIE |
| DC1-COD-L2-2860 |  | DH1200 COD-C12-03 L2 Checklist | 3d | 2026-03-09 | 2026-03-11 | QTS - 8120, QTS-9271 | 31d | 6d | Riley Warring | SIE |
| DC1-COD-L2-2870 |  | DH1200 COD-C12-04 L2 Checklist | 3d | 2026-03-09 | 2026-03-11 | QTS - 8120, QTS-9271 | 31d | 6d | Riley Warring | SIE |
| DC1-COD-L2-2880 |  | DH1200 COD-C12-05 L2 Checklist | 3d | 2026-03-09 | 2026-03-11 | QTS - 8120, QTS-9271 | 31d | 6d | Riley Warring | SIE |
| DC1-COD-L2-2890 |  | DH1200 COD-C12-06 L2 Checklist | 3d | 2026-03-09 | 2026-03-11 | QTS - 8120, QTS-9271 | 31d | 6d | Riley Warring | SIE |
|  | 04 | **DC1-DH1200 COD D12 Cx L2** |  | 2026-03-09 | 2026-03-11 |  |  |  |  |  |
| DC1-COD-L2-2900 |  | DH1200 COD-D12-01 L2 Checklist | 3d | 2026-03-09 | 2026-03-11 | QTS - 8120, QTS-9301 | 31d | 6d | Riley Warring | SIE |
| DC1-COD-L2-2910 |  | DH1200 COD-D12-02 L2 Checklist | 3d | 2026-03-09 | 2026-03-11 | QTS - 8120, QTS-9301 | 31d | 6d | Riley Warring | SIE |
| DC1-COD-L2-2920 |  | DH1200 COD-D12-03 L2 Checklist | 3d | 2026-03-09 | 2026-03-11 | QTS - 8120, QTS-9301 | 31d | 6d | Riley Warring | SIE |
| DC1-COD-L2-2930 |  | DH1200 COD-D12-04 L2 Checklist | 3d | 2026-03-09 | 2026-03-11 | QTS - 8120, QTS-9301 | 31d | 6d | Riley Warring | SIE |
| DC1-COD-L2-2940 |  | DH1200 COD-D12-05 L2 Checklist | 3d | 2026-03-09 | 2026-03-11 | QTS - 8120, QTS-9301 | 31d | 6d | Riley Warring | SIE |
| DC1-COD-L2-2950 |  | DH1200 COD-D12-06 L2 Checklist | 3d | 2026-03-09 | 2026-03-11 | QTS - 8120, QTS-9301 | 31d | 6d | Riley Warring | SIE |
|  | 05 | **DC1-DH1200 COD E12 Cx L2** |  | 2026-03-10 | 2026-03-12 |  |  |  |  |  |
| DC1-COD-L2-2960 |  | DH1200 COD-E12-01 L2 Checklist | 3d | 2026-03-10 | 2026-03-12 | QTS - 8350, QTS-9331 | 30d | 5d | Riley Warring | SIE |
| DC1-COD-L2-2970 |  | DH1200 COD-E12-02 L2 Checklist | 3d | 2026-03-10 | 2026-03-12 | QTS - 8350, QTS-9331 | 30d | 5d | Riley Warring | SIE |
| DC1-COD-L2-2980 |  | DH1200 COD-E12-03 L2 Checklist | 3d | 2026-03-10 | 2026-03-12 | QTS - 8350, QTS-9331 | 30d | 5d | Riley Warring | SIE |
| DC1-COD-L2-2990 |  | DH1200 COD-E12-04 L2 Checklist | 3d | 2026-03-10 | 2026-03-12 | QTS - 8350, QTS-9331 | 30d | 5d | Riley Warring | SIE |
| DC1-COD-L2-3000 |  | DH1200 COD-E12-05 L2 Checklist | 3d | 2026-03-10 | 2026-03-12 | QTS - 8350, QTS-9331 | 30d | 5d | Riley Warring | SIE |
| DC1-COD-L2-3010 |  | DH1200 COD-E12-06 L2 Checklist | 3d | 2026-03-10 | 2026-03-12 | QTS - 8350, QTS-9331 | 30d | 5d | Riley Warring | SIE |
|  | 06 | **DC1-DH1200 COD F12 Cx L2** |  | 2026-03-09 | 2026-03-11 |  |  |  |  |  |
| DC1-COD-L2-3020 |  | DH1200 COD-F12-01 L2 Checklist | 3d | 2026-03-09 | 2026-03-11 | QTS - 8350, QTS-9361 | 31d | 6d | Riley Warring | SIE |
| DC1-COD-L2-3030 |  | DH1200 COD-F12-02 L2 Checklist | 3d | 2026-03-09 | 2026-03-11 | QTS - 8350, QTS-9361 | 31d | 6d | Riley Warring | SIE |
| DC1-COD-L2-3040 |  | DH1200 COD-F12-03 L2 Checklist | 3d | 2026-03-09 | 2026-03-11 | QTS - 8350, QTS-9361 | 31d | 6d | Riley Warring | SIE |
| DC1-COD-L2-3050 |  | DH1200 COD-F12-04 L2 Checklist | 3d | 2026-03-09 | 2026-03-11 | QTS - 8350, QTS-9361 | 31d | 6d | Riley Warring | SIE |
| DC1-COD-L2-3060 |  | DH1200 COD-F12-05 L2 Checklist | 3d | 2026-03-09 | 2026-03-11 | QTS - 8350, QTS-9361 | 31d | 6d | Riley Warring | SIE |
| DC1-COD-L2-3070 |  | DH1200 COD-F12-06 L2 Checklist | 3d | 2026-03-09 | 2026-03-11 | QTS - 8350, QTS-9361 | 31d | 6d | Riley Warring | SIE |

Notes:
- DC1-COD-L2-2840: Steps: EC Installation Checklist; CC Installation Checklist; Vendor Pre-Energization Checklist; CXA Pre-Energization Inspection; PEI/Clean-Walk
- DC1-COD-L2-2850: Steps: EC Installation Checklist; CC Installation Checklist; Vendor Pre-Energization Checklist; CXA Pre-Energization Inspection; PEI/Clean-Walk
- DC1-COD-L2-2860: Steps: EC Installation Checklist; CC Installation Checklist; Vendor Pre-Energization Checklist; CXA Pre-Energization Inspection; PEI/Clean-Walk
- DC1-COD-L2-2870: Steps: EC Installation Checklist; CC Installation Checklist; Vendor Pre-Energization Checklist; CXA Pre-Energization Inspection; PEI/Clean-Walk
- DC1-COD-L2-2880: Steps: EC Installation Checklist; CC Installation Checklist; Vendor Pre-Energization Checklist; CXA Pre-Energization Inspection; PEI/Clean-Walk
- DC1-COD-L2-2890: Steps: EC Installation Checklist; CC Installation Checklist; Vendor Pre-Energization Checklist; CXA Pre-Energization Inspection; PEI/Clean-Walk
- DC1-COD-L2-2900: Steps: EC Installation Checklist; CC Installation Checklist; Vendor Pre-Energization Checklist; CXA Pre-Energization Inspection; PEI/Clean-Walk
- DC1-COD-L2-2910: Steps: EC Installation Checklist; CC Installation Checklist; Vendor Pre-Energization Checklist; CXA Pre-Energization Inspection; PEI/Clean-Walk
- DC1-COD-L2-2920: Steps: EC Installation Checklist; CC Installation Checklist; Vendor Pre-Energization Checklist; CXA Pre-Energization Inspection; PEI/Clean-Walk
- DC1-COD-L2-2930: Steps: EC Installation Checklist; CC Installation Checklist; Vendor Pre-Energization Checklist; CXA Pre-Energization Inspection; PEI/Clean-Walk
- DC1-COD-L2-2940: Steps: EC Installation Checklist; CC Installation Checklist; Vendor Pre-Energization Checklist; CXA Pre-Energization Inspection; PEI/Clean-Walk
- DC1-COD-L2-2950: Steps: EC Installation Checklist; CC Installation Checklist; Vendor Pre-Energization Checklist; CXA Pre-Energization Inspection; PEI/Clean-Walk
- DC1-COD-L2-2960: Steps: EC Installation Checklist; CC Installation Checklist; Vendor Pre-Energization Checklist; CXA Pre-Energization Inspection; PEI/Clean-Walk
- DC1-COD-L2-2970: Steps: EC Installation Checklist; CC Installation Checklist; Vendor Pre-Energization Checklist; CXA Pre-Energization Inspection; PEI/Clean-Walk
- DC1-COD-L2-2980: Steps: EC Installation Checklist; CC Installation Checklist; Vendor Pre-Energization Checklist; CXA Pre-Energization Inspection; PEI/Clean-Walk
- DC1-COD-L2-2990: Steps: EC Installation Checklist; CC Installation Checklist; Vendor Pre-Energization Checklist; CXA Pre-Energization Inspection; PEI/Clean-Walk
- DC1-COD-L2-3000: Steps: EC Installation Checklist; CC Installation Checklist; Vendor Pre-Energization Checklist; CXA Pre-Energization Inspection; PEI/Clean-Walk
- DC1-COD-L2-3010: Steps: EC Installation Checklist; CC Installation Checklist; Vendor Pre-Energization Checklist; CXA Pre-Energization Inspection; PEI/Clean-Walk
- DC1-COD-L2-3020: Steps: EC Installation Checklist; CC Installation Checklist; Vendor Pre-Energization Checklist; CXA Pre-Energization Inspection; PEI/Clean-Walk
- DC1-COD-L2-3030: Steps: EC Installation Checklist; CC Installation Checklist; Vendor Pre-Energization Checklist; CXA Pre-Energization Inspection; PEI/Clean-Walk
- DC1-COD-L2-3040: Steps: EC Installation Checklist; CC Installation Checklist; Vendor Pre-Energization Checklist; CXA Pre-Energization Inspection; PEI/Clean-Walk
- DC1-COD-L2-3050: Steps: EC Installation Checklist; CC Installation Checklist; Vendor Pre-Energization Checklist; CXA Pre-Energization Inspection; PEI/Clean-Walk
- DC1-COD-L2-3060: Steps: EC Installation Checklist; CC Installation Checklist; Vendor Pre-Energization Checklist; CXA Pre-Energization Inspection; PEI/Clean-Walk
- DC1-COD-L2-3070: Steps: EC Installation Checklist; CC Installation Checklist; Vendor Pre-Energization Checklist; CXA Pre-Energization Inspection; PEI/Clean-Walk

| ID | WBS | Activity | Duration | Start | Finish | Predecessors | Total float | Free float | Layton Responsible Party | Vendor Responsible Party |
| --- | --- | --- | --- | --- | --- | --- | --- | --- | --- | --- |
|  | 07 | **DC1-DH1200 RPPs Cx L2** |  | 2026-02-10 | 2026-02-25 |  |  |  |  |  |
|  | 01 | **DC1-DH1200 RPP A12 Cx L2** |  | 2026-02-10 | 2026-02-12 |  |  |  |  |  |
| DC1-RPP-L2-2720 |  | DH1200 RPP-A12-01 A/B L2 Checklist | 3d | 2026-02-10 | 2026-02-12 | QTS - 7660 | 74d | 26d | Riley Warring | SQD |
| DC1-RPP-L2-2730 |  | DH1200 RPP-A12-02 A/B L2 Checklist | 3d | 2026-02-10 | 2026-02-12 | QTS - 7660 | 74d | 26d | Riley Warring | SQD |
| DC1-RPP-L2-2740 |  | DH1200 RPP-A12-03 A/B L2 Checklist | 3d | 2026-02-10 | 2026-02-12 | QTS - 7660 | 74d | 26d | Riley Warring | SQD |
| DC1-RPP-L2-2750 |  | DH1200 RPP-A12-04 A/B L2 Checklist | 3d | 2026-02-10 | 2026-02-12 | QTS - 7660 | 74d | 26d | Riley Warring | SQD |
| DC1-RPP-L2-2760 |  | DH1200 RPP-A12-05 A/B L2 Checklist | 3d | 2026-02-10 | 2026-02-12 | QTS - 7660 | 74d | 26d | Riley Warring | SQD |
| DC1-RPP-L2-2770 |  | DH1200 RPP-A12-06 A/B L2 Checklist | 3d | 2026-02-10 | 2026-02-12 | QTS - 7660 | 74d | 26d | Riley Warring | SQD |
|  | 02 | **DC1-DH1200 RPP B12 Cx L2** |  | 2026-02-10 | 2026-02-12 |  |  |  |  |  |
| DC1-RPP-L2-2780 |  | DH1200 RPP-B12-01 A/B L2 Checklist | 3d | 2026-02-10 | 2026-02-12 | QTS - 7660 | 74d | 26d | Riley Warring | SQD |
| DC1-RPP-L2-2790 |  | DH1200 RPP-B12-02 A/B L2 Checklist | 3d | 2026-02-10 | 2026-02-12 | QTS - 7660 | 74d | 26d | Riley Warring | SQD |
| DC1-RPP-L2-2800 |  | DH1200 RPP-B12-03 A/B L2 Checklist | 3d | 2026-02-10 | 2026-02-12 | QTS - 7660 | 74d | 26d | Riley Warring | SQD |
| DC1-RPP-L2-2810 |  | DH1200 RPP-B12-04 A/B L2 Checklist | 3d | 2026-02-10 | 2026-02-12 | QTS - 7660 | 74d | 26d | Riley Warring | SQD |
| DC1-RPP-L2-2820 |  | DH1200 RPP-B12-05 A/B L2 Checklist | 3d | 2026-02-10 | 2026-02-12 | QTS - 7660 | 74d | 26d | Riley Warring | SQD |
| DC1-RPP-L2-2830 |  | DH1200 RPP-B12-06 A/B L2 Checklist | 3d | 2026-02-10 | 2026-02-12 | QTS - 7660 | 74d | 26d | Riley Warring | SQD |
|  | 03 | **DC1-DH1200 RPP C12 Cx L2** |  | 2026-02-16 | 2026-02-18 |  |  |  |  |  |
| DC1-RPP-L2-2840 |  | DH1200 RPP-C12-01 A/B L2 Checklist | 3d | 2026-02-16 | 2026-02-18 | QTS - 8120 | 70d | 22d | Riley Warring | SQD |
| DC1-RPP-L2-2850 |  | DH1200 RPP-C12-02 A/B L2 Checklist | 3d | 2026-02-16 | 2026-02-18 | QTS - 8120 | 70d | 22d | Riley Warring | SQD |
| DC1-RPP-L2-2860 |  | DH1200 RPP-C12-03 A/B L2 Checklist | 3d | 2026-02-16 | 2026-02-18 | QTS - 8120 | 70d | 22d | Riley Warring | SQD |
| DC1-RPP-L2-2870 |  | DH1200 RPP-C12-04 A/B L2 Checklist | 3d | 2026-02-16 | 2026-02-18 | QTS - 8120 | 70d | 22d | Riley Warring | SQD |
| DC1-RPP-L2-2880 |  | DH1200 RPP-C12-05 A/B L2 Checklist | 3d | 2026-02-16 | 2026-02-18 | QTS - 8120 | 70d | 22d | Riley Warring | SQD |
| DC1-RPP-L2-2890 |  | DH1200 RPP-C12-06 A/B L2 Checklist | 3d | 2026-02-16 | 2026-02-18 | QTS - 8120 | 70d | 22d | Riley Warring | SQD |
|  | 04 | **DC1-DH1200 RPP D12 Cx L2** |  | 2026-02-16 | 2026-02-18 |  |  |  |  |  |
| DC1-RPP-L2-2900 |  | DH1200 RPP-D12-01 A/B L2 Checklist | 3d | 2026-02-16 | 2026-02-18 | QTS - 8120 | 70d | 22d | Riley Warring | SQD |
| DC1-RPP-L2-2910 |  | DH1200 RPP-D12-02 A/B L2 Checklist | 3d | 2026-02-16 | 2026-02-18 | QTS - 8120 | 70d | 22d | Riley Warring | SQD |
| DC1-RPP-L2-2920 |  | DH1200 RPP-D12-03 A/B L2 Checklist | 3d | 2026-02-16 | 2026-02-18 | QTS - 8120 | 70d | 22d | Riley Warring | SQD |
| DC1-RPP-L2-2930 |  | DH1200 RPP-D12-04 A/B L2 Checklist | 3d | 2026-02-16 | 2026-02-18 | QTS - 8120 | 70d | 22d | Riley Warring | SQD |
| DC1-RPP-L2-2940 |  | DH1200 RPP-D12-05 A/B L2 Checklist | 3d | 2026-02-16 | 2026-02-18 | QTS - 8120 | 70d | 22d | Riley Warring | SQD |
| DC1-RPP-L2-2950 |  | DH1200 RPP-D12-06 A/B L2 Checklist | 3d | 2026-02-16 | 2026-02-18 | QTS - 8120 | 70d | 22d | Riley Warring | SQD |

Notes:
- DC1-RPP-L2-2720: Steps: EC Installation Checklist; CC Installation Checklist; Vendor Pre-Energization Checklist; CXA Pre-Energization Inspection; PEI/Clean-Walk
- DC1-RPP-L2-2730: Steps: EC Installation Checklist; CC Installation Checklist; Vendor Pre-Energization Checklist; CXA Pre-Energization Inspection; PEI/Clean-Walk
- DC1-RPP-L2-2740: Steps: EC Installation Checklist; CC Installation Checklist; Vendor Pre-Energization Checklist; CXA Pre-Energization Inspection; PEI/Clean-Walk
- DC1-RPP-L2-2750: Steps: EC Installation Checklist; CC Installation Checklist; Vendor Pre-Energization Checklist; CXA Pre-Energization Inspection; PEI/Clean-Walk
- DC1-RPP-L2-2760: Steps: EC Installation Checklist; CC Installation Checklist; Vendor Pre-Energization Checklist; CXA Pre-Energization Inspection; PEI/Clean-Walk
- DC1-RPP-L2-2770: Steps: EC Installation Checklist; CC Installation Checklist; Vendor Pre-Energization Checklist; CXA Pre-Energization Inspection; PEI/Clean-Walk
- DC1-RPP-L2-2780: Steps: EC Installation Checklist; CC Installation Checklist; Vendor Pre-Energization Checklist; CXA Pre-Energization Inspection; PEI/Clean-Walk
- DC1-RPP-L2-2790: Steps: EC Installation Checklist; CC Installation Checklist; Vendor Pre-Energization Checklist; CXA Pre-Energization Inspection; PEI/Clean-Walk
- DC1-RPP-L2-2800: Steps: EC Installation Checklist; CC Installation Checklist; Vendor Pre-Energization Checklist; CXA Pre-Energization Inspection; PEI/Clean-Walk
- DC1-RPP-L2-2810: Steps: EC Installation Checklist; CC Installation Checklist; Vendor Pre-Energization Checklist; CXA Pre-Energization Inspection; PEI/Clean-Walk
- DC1-RPP-L2-2820: Steps: EC Installation Checklist; CC Installation Checklist; Vendor Pre-Energization Checklist; CXA Pre-Energization Inspection; PEI/Clean-Walk
- DC1-RPP-L2-2830: Steps: EC Installation Checklist; CC Installation Checklist; Vendor Pre-Energization Checklist; CXA Pre-Energization Inspection; PEI/Clean-Walk
- DC1-RPP-L2-2840: Steps: EC Installation Checklist; CC Installation Checklist; Vendor Pre-Energization Checklist; CXA Pre-Energization Inspection; PEI/Clean-Walk
- DC1-RPP-L2-2850: Steps: EC Installation Checklist; CC Installation Checklist; Vendor Pre-Energization Checklist; CXA Pre-Energization Inspection; PEI/Clean-Walk
- DC1-RPP-L2-2860: Steps: EC Installation Checklist; CC Installation Checklist; Vendor Pre-Energization Checklist; CXA Pre-Energization Inspection; PEI/Clean-Walk
- DC1-RPP-L2-2870: Steps: EC Installation Checklist; CC Installation Checklist; Vendor Pre-Energization Checklist; CXA Pre-Energization Inspection; PEI/Clean-Walk
- DC1-RPP-L2-2880: Steps: EC Installation Checklist; CC Installation Checklist; Vendor Pre-Energization Checklist; CXA Pre-Energization Inspection; PEI/Clean-Walk
- DC1-RPP-L2-2890: Steps: EC Installation Checklist; CC Installation Checklist; Vendor Pre-Energization Checklist; CXA Pre-Energization Inspection; PEI/Clean-Walk
- DC1-RPP-L2-2900: Steps: EC Installation Checklist; CC Installation Checklist; Vendor Pre-Energization Checklist; CXA Pre-Energization Inspection; PEI/Clean-Walk
- DC1-RPP-L2-2910: Steps: EC Installation Checklist; CC Installation Checklist; Vendor Pre-Energization Checklist; CXA Pre-Energization Inspection; PEI/Clean-Walk
- DC1-RPP-L2-2920: Steps: EC Installation Checklist; CC Installation Checklist; Vendor Pre-Energization Checklist; CXA Pre-Energization Inspection; PEI/Clean-Walk
- DC1-RPP-L2-2930: Steps: EC Installation Checklist; CC Installation Checklist; Vendor Pre-Energization Checklist; CXA Pre-Energization Inspection; PEI/Clean-Walk
- DC1-RPP-L2-2940: Steps: EC Installation Checklist; CC Installation Checklist; Vendor Pre-Energization Checklist; CXA Pre-Energization Inspection; PEI/Clean-Walk
- DC1-RPP-L2-2950: Steps: EC Installation Checklist; CC Installation Checklist; Vendor Pre-Energization Checklist; CXA Pre-Energization Inspection; PEI/Clean-Walk

| ID | WBS | Activity | Duration | Start | Finish | Predecessors | Total float | Free float | Layton Responsible Party | Vendor Responsible Party |
| --- | --- | --- | --- | --- | --- | --- | --- | --- | --- | --- |
|  | 05 | **DC1-DH1200 RPP E12 Cx L2** |  | 2026-02-23 | 2026-02-25 |  |  |  |  |  |
| DC1-RPP-L2-2960 |  | DH1200 RPP-E12-01 A/B L2 Checklist | 3d | 2026-02-23 | 2026-02-25 | QTS - 8350 | 65d | 17d | Riley Warring | SQD |
| DC1-RPP-L2-2970 |  | DH1200 RPP-E12-02 A/B L2 Checklist | 3d | 2026-02-23 | 2026-02-25 | QTS - 8350 | 65d | 17d | Riley Warring | SQD |
| DC1-RPP-L2-2980 |  | DH1200 RPP-E12-03 A/B L2 Checklist | 3d | 2026-02-23 | 2026-02-25 | QTS - 8350 | 65d | 17d | Riley Warring | SQD |
| DC1-RPP-L2-2990 |  | DH1200 RPP-E12-04 A/B L2 Checklist | 3d | 2026-02-23 | 2026-02-25 | QTS - 8350 | 65d | 17d | Riley Warring | SQD |
| DC1-RPP-L2-3000 |  | DH1200 RPP-E12-05 A/B L2 Checklist | 3d | 2026-02-23 | 2026-02-25 | QTS - 8350 | 65d | 17d | Riley Warring | SQD |
| DC1-RPP-L2-3010 |  | DH1200 RPP-E12-06 A/B L2 Checklist | 3d | 2026-02-23 | 2026-02-25 | QTS - 8350 | 65d | 17d | Riley Warring | SQD |
|  | 06 | **DC1-DH1200 RPP F12 Cx L2** |  | 2026-02-23 | 2026-02-25 |  |  |  |  |  |
| DC1-RPP-L2-3020 |  | DH1200 RPP-F12-01 A/B L2 Checklist | 3d | 2026-02-23 | 2026-02-25 | QTS - 8350 | 65d | 17d | Riley Warring | SQD |
| DC1-RPP-L2-3030 |  | DH1200 RPP-F12-02 A/B L2 Checklist | 3d | 2026-02-23 | 2026-02-25 | QTS - 8350 | 65d | 17d | Riley Warring | SQD |
| DC1-RPP-L2-3040 |  | DH1200 RPP-F12-03 A/B L2 Checklist | 3d | 2026-02-23 | 2026-02-25 | QTS - 8350 | 65d | 17d | Riley Warring | SQD |
| DC1-RPP-L2-3050 |  | DH1200 RPP-F12-04 A/B L2 Checklist | 3d | 2026-02-23 | 2026-02-25 | QTS - 8350 | 65d | 17d | Riley Warring | SQD |
| DC1-RPP-L2-3060 |  | DH1200 RPP-F12-05 A/B L2 Checklist | 3d | 2026-02-23 | 2026-02-25 | QTS - 8350 | 65d | 17d | Riley Warring | SQD |
| DC1-RPP-L2-3070 |  | DH1200 RPP-F12-06 A/B L2 Checklist | 3d | 2026-02-23 | 2026-02-25 | QTS - 8350 | 65d | 17d | Riley Warring | SQD |
|  | 08 | **DC1-DH1200 MOD-02 Cx L2** |  | 2026-02-20 | 2026-03-20 |  |  |  |  |  |
| DC1-MOD02-L2-2140 |  | DH1200 MOD-A12-02 L2 Checklist | 3d | 2026-02-20 | 2026-02-24 | QTS-43771 | 19d | 0d |  | PHE |
| DC1-MOD02-L2-2150 |  | DH1200 MOD-B12-02 L2 Checklist | 3d | 2026-02-25 | 2026-02-27 | DC1-MOD02-L2-2140 | 19d | 0d |  | PHE |
| DC1-MOD02-L2-2160 |  | DH1200 MOD-C12-02 L2 Checklist | 3d | 2026-03-02 | 2026-03-04 | DC1-MOD02-L2-2150 | 19d | 0d |  | PHE |
| DC1-MOD02-L2-2170 |  | DH1200 MOD-D12-02 L2 Checklist | 3d | 2026-03-05 | 2026-03-09 | DC1-MOD02-L2-2160 | 19d | 0d |  | PHE |
| DC1-MOD02-L2-2180 |  | DH1200 MOD-E12-02 L2 Checklist | 3d | 2026-03-10 | 2026-03-12 | DC1-MOD02-L2-2170 | 19d | 0d |  | PHE |
| DC1-MOD02-L2-2190 |  | DH1200 MOD-F12-02 L2 Checklist | 3d | 2026-03-13 | 2026-03-17 | DC1-MOD02-L2-2180 | 19d | 0d |  | PHE |
| DC1-MOD02-L2-2200 |  | DH1200 MOD-R12-02 L2 Checklist | 3d | 2026-03-18 | 2026-03-20 | DC1-MOD02-L2-2190 | 19d | 0d |  | PHE |
|  | 09 | **DC1-DH1200 MOD-03 Cx L2** |  | 2026-03-23 | 2026-04-15 |  |  |  |  |  |
| DC1-MOD03-L2-2140 |  | DH1200 MOD-A12-03 L2 Checklist | 3d | 2026-03-23 | 2026-03-25 | QTS-43751, QTS - 7710, QTS - 8500 | 0d |  | Riley Warring | PHE |
| DC1-MOD03-L2-2150 |  | DH1200 MOD-B12-03 L2 Checklist | 3d | 2026-03-26 | 2026-03-30 | DC1-MOD03-L2-2140, QTS - 7710, QTS - 8500 | 0d |  | Riley Warring | PHE |
| DC1-MOD03-L2-2160 |  | DH1200 MOD-C12-03 L2 Checklist | 3d | 2026-03-31 | 2026-04-02 | DC1-MOD03-L2-2150 | 0d |  | Riley Warring | PHE |
| DC1-MOD03-L2-2170 |  | DH1200 MOD-D12-03 L2 Checklist | 3d | 2026-04-03 | 2026-04-07 | DC1-MOD03-L2-2160, QTS - 8500, QTS - 7710 | 0d |  | Riley Warring | PHE |
| DC1-MOD03-L2-2180 |  | DH1200 MOD-E12-03 L2 Checklist | 3d | 2026-04-08 | 2026-04-10 | DC1-MOD03-L2-2170, QTS - 8500, QTS - 7710 | 0d |  | Riley Warring | PHE |
| DC1-MOD03-L2-2190 |  | DH1200 MOD-F12-03 L2 Checklist | 3d | 2026-04-13 | 2026-04-15 | DC1-MOD03-L2-2180, QTS - 8500, QTS - 7710 | 0d |  | Riley Warring | PHE |
| DC1-MOD03-L2-2200 |  | DH1200 MOD-R12-03 L2 Checklist | 3d | 2026-04-13 | 2026-04-15 | DC1-MOD03-L2-2190 SS, QTS - 8500, QTS - 7710 | 0d |  | Riley Warring | PHE |

Notes:
- DC1-RPP-L2-2960: Steps: EC Installation Checklist; CC Installation Checklist; Vendor Pre-Energization Checklist; CXA Pre-Energization Inspection; PEI/Clean-Walk
- DC1-RPP-L2-2970: Steps: EC Installation Checklist; CC Installation Checklist; Vendor Pre-Energization Checklist; CXA Pre-Energization Inspection; PEI/Clean-Walk
- DC1-RPP-L2-2980: Steps: EC Installation Checklist; CC Installation Checklist; Vendor Pre-Energization Checklist; CXA Pre-Energization Inspection; PEI/Clean-Walk
- DC1-RPP-L2-2990: Steps: EC Installation Checklist; CC Installation Checklist; Vendor Pre-Energization Checklist; CXA Pre-Energization Inspection; PEI/Clean-Walk
- DC1-RPP-L2-3000: Steps: EC Installation Checklist; CC Installation Checklist; Vendor Pre-Energization Checklist; CXA Pre-Energization Inspection; PEI/Clean-Walk
- DC1-RPP-L2-3010: Steps: EC Installation Checklist; CC Installation Checklist; Vendor Pre-Energization Checklist; CXA Pre-Energization Inspection; PEI/Clean-Walk
- DC1-RPP-L2-3020: Steps: EC Installation Checklist; CC Installation Checklist; Vendor Pre-Energization Checklist; CXA Pre-Energization Inspection; PEI/Clean-Walk
- DC1-RPP-L2-3030: Steps: EC Installation Checklist; CC Installation Checklist; Vendor Pre-Energization Checklist; CXA Pre-Energization Inspection; PEI/Clean-Walk
- DC1-RPP-L2-3040: Steps: EC Installation Checklist; CC Installation Checklist; Vendor Pre-Energization Checklist; CXA Pre-Energization Inspection; PEI/Clean-Walk
- DC1-RPP-L2-3050: Steps: EC Installation Checklist; CC Installation Checklist; Vendor Pre-Energization Checklist; CXA Pre-Energization Inspection; PEI/Clean-Walk
- DC1-RPP-L2-3060: Steps: EC Installation Checklist; CC Installation Checklist; Vendor Pre-Energization Checklist; CXA Pre-Energization Inspection; PEI/Clean-Walk
- DC1-RPP-L2-3070: Steps: EC Installation Checklist; CC Installation Checklist; Vendor Pre-Energization Checklist; CXA Pre-Energization Inspection; PEI/Clean-Walk
- DC1-MOD02-L2-2140: Steps: EC Installation Checklist; CC Installation Checklist; Vendor Pre-Energization Checklist; CXA Pre-Energization Inspection; PEI/Clean-Walk
- DC1-MOD02-L2-2150: Steps: EC Installation Checklist; CC Installation Checklist; Vendor Pre-Energization Checklist; CXA Pre-Energization Inspection; PEI/Clean-Walk
- DC1-MOD02-L2-2160: Steps: EC Installation Checklist; CC Installation Checklist; Vendor Pre-Energization Checklist; CXA Pre-Energization Inspection; PEI/Clean-Walk
- DC1-MOD02-L2-2170: Steps: EC Installation Checklist; CC Installation Checklist; Vendor Pre-Energization Checklist; CXA Pre-Energization Inspection; PEI/Clean-Walk
- DC1-MOD02-L2-2180: Steps: EC Installation Checklist; CC Installation Checklist; Vendor Pre-Energization Checklist; CXA Pre-Energization Inspection; PEI/Clean-Walk
- DC1-MOD02-L2-2190: Steps: EC Installation Checklist; CC Installation Checklist; Vendor Pre-Energization Checklist; CXA Pre-Energization Inspection; PEI/Clean-Walk
- DC1-MOD02-L2-2200: Steps: EC Installation Checklist; CC Installation Checklist; Vendor Pre-Energization Checklist; CXA Pre-Energization Inspection; PEI/Clean-Walk
- DC1-MOD03-L2-2140: Steps: EC Installation Checklist; CC Installation Checklist; Vendor Pre-Energization Checklist; CXA Pre-Energization Inspection; PEI/Clean-Walk
- DC1-MOD03-L2-2150: Steps: EC Installation Checklist; CC Installation Checklist; Vendor Pre-Energization Checklist; CXA Pre-Energization Inspection; PEI/Clean-Walk
- DC1-MOD03-L2-2160: Steps: EC Installation Checklist; CC Installation Checklist; Vendor Pre-Energization Checklist; CXA Pre-Energization Inspection; PEI/Clean-Walk
- DC1-MOD03-L2-2170: Steps: EC Installation Checklist; CC Installation Checklist; Vendor Pre-Energization Checklist; CXA Pre-Energization Inspection; PEI/Clean-Walk
- DC1-MOD03-L2-2180: Steps: EC Installation Checklist; CC Installation Checklist; Vendor Pre-Energization Checklist; CXA Pre-Energization Inspection; PEI/Clean-Walk
- DC1-MOD03-L2-2190: Steps: EC Installation Checklist; CC Installation Checklist; Vendor Pre-Energization Checklist; CXA Pre-Energization Inspection; PEI/Clean-Walk
- DC1-MOD03-L2-2200: Steps: EC Installation Checklist; CC Installation Checklist; Vendor Pre-Energization Checklist; CXA Pre-Energization Inspection; PEI/Clean-Walk

| ID | WBS | Activity | Duration | Start | Finish | Predecessors | Total float | Free float | Layton Responsible Party | Vendor Responsible Party |
| --- | --- | --- | --- | --- | --- | --- | --- | --- | --- | --- |
|  | 10 | **DC1-DH1200 CDUs Cx L2** |  | 2026-03-12 | 2026-04-06 |  |  |  |  |  |
| DC1-CDU-L2-3030 |  | CDU-DH1200-01 L2 Checklist | 3d | 2026-03-12 | 2026-03-16 | QTS - 7710, QTS - 8810 | 46d | 0d | Riley Warring | VER |
| DC1-CDU-L2-3040 |  | CDU-DH1200-02 L2 Checklist | 3d | 2026-03-12 | 2026-03-16 | DC1-CDU-L2-3030 SS, QTS - 7710, QTS - 8810 | 46d | 0d | Riley Warring | VER |
| DC1-CDU-L2-3050 |  | CDU-DH1200-03 L2 Checklist | 3d | 2026-03-12 | 2026-03-16 | DC1-CDU-L2-3040 SS, QTS - 7710, QTS - 8810 | 46d | 6d | Riley Warring | VER |
| DC1-CDU-L2-3060 |  | CDU-DH1200-04 L2 Checklist | 3d | 2026-03-20 | 2026-03-24 | DC1-CDU-L2-3050 SS, QTS - 8830, QTS - 7710 | 40d | 0d | Riley Warring | VER |
| DC1-CDU-L2-3070 |  | CDU-DH1200-05 L2 Checklist | 3d | 2026-03-20 | 2026-03-24 | DC1-CDU-L2-3060 SS, QTS - 8830, QTS - 7710 | 40d | 0d | Riley Warring | VER |
| DC1-CDU-L2-3080 |  | CDU-DH1200-06 L2 Checklist | 3d | 2026-03-20 | 2026-03-24 | DC1-CDU-L2-3070 SS, QTS - 8830, QTS - 7710 | 40d | 0d | Riley Warring | VER |
| DC1-CDU-L2-3120 |  | CDU-DH1200-10 L2 Checklist | 3d | 2026-03-25 | 2026-03-27 | DC1-CDU-L2-3060, QTS - 8500, QTS - 8680 | 40d | 0d | Riley Warring | VER |
| DC1-CDU-L2-3130 |  | CDU-DH1200-11 L2 Checklist | 3d | 2026-03-25 | 2026-03-27 | DC1-CDU-L2-3070, QTS - 8500, QTS - 8680 | 40d | 0d | Riley Warring | VER |
| DC1-CDU-L2-3140 |  | CDU-DH1200-12 L2 Checklist | 3d | 2026-03-25 | 2026-03-27 | DC1-CDU-L2-3080, QTS - 8500, QTS - 8680 | 40d | 0d | Riley Warring | VER |
| DC1-CDU-L2-3090 |  | CDU-DH1200-07 L2 Checklist | 3d | 2026-03-30 | 2026-04-01 | QTS - 7710, DC1-CDU-L2-3030, QTS - 8850 | 37d | 0d | Riley Warring | VER |
| DC1-CDU-L2-3100 |  | CDU-DH1200-08 L2 Checklist | 3d | 2026-03-30 | 2026-04-01 | DC1-CDU-L2-3040, QTS - 7710, QTS - 8850 | 37d | 0d | Riley Warring | VER |
| DC1-CDU-L2-3110 |  | CDU-DH1200-09 L2 Checklist | 3d | 2026-03-30 | 2026-04-01 | DC1-CDU-L2-3050, QTS - 7710, QTS - 8850 | 37d | 0d | Riley Warring | VER |
| DC1-CDU-L2-3180 |  | CDU-DH1200-16 L2 Checklist | 3d | 2026-03-30 | 2026-04-01 | DC1-CDU-L2-3120, QTS - 8500, QTS - 8710 | 40d | 2d | Riley Warring | VER |
| DC1-CDU-L2-3190 |  | CDU-DH1200-17 L2 Checklist | 3d | 2026-03-30 | 2026-04-01 | DC1-CDU-L2-3130, QTS - 8500, QTS - 8710 | 40d | 2d | Riley Warring | VER |
| DC1-CDU-L2-3200 |  | CDU-DH1200-18 L2 Checklist | 3d | 2026-03-30 | 2026-04-01 | DC1-CDU-L2-3140, QTS - 8500, QTS - 8710 | 40d | 2d | Riley Warring | VER |
| DC1-CDU-L2-3150 |  | CDU-DH1200-13 L2 Checklist | 3d | 2026-04-02 | 2026-04-06 | DC1-CDU-L2-3090, QTS - 8500, QTS - 8700 | 37d | 0d | Riley Warring | VER |
| DC1-CDU-L2-3160 |  | CDU-DH1200-14 L2 Checklist | 3d | 2026-04-02 | 2026-04-06 | DC1-CDU-L2-3100, QTS - 8500, QTS - 8700 | 37d | 0d | Riley Warring | VER |
| DC1-CDU-L2-3170 |  | CDU-DH1200-15 L2 Checklist | 3d | 2026-04-02 | 2026-04-06 | DC1-CDU-L2-3110, QTS - 8500, QTS - 8700 | 37d | 0d | Riley Warring | VER |
|  | 11 | **DC1-DH1200 CHLR Cx L2** |  | 2026-02-17 | 2026-03-11 |  |  |  |  |  |
| DC1-CHLR-L2-1140 |  | DH1200 CHLR-1RT40-A12 L2 Checklist | 3d | 2026-02-17 | 2026-02-19 | QTS-18661 | 32d | 0d | Riley Warring | TAS |
| DC1-CHLR-L2-1150 |  | DH1200 CHLR-1RT40-B12 L2 Checklist | 3d | 2026-02-20 | 2026-02-24 | DC1-CHLR-L2-1140 | 32d | 0d | Riley Warring | TAS |
| DC1-CHLR-L2-1170 |  | DH1200 CHLR-1RT40-D12 L2 Checklist | 3d | 2026-02-24 | 2026-02-26 | QTS-43801 | 24d | 0d | Riley Warring | TAS |
| DC1-CHLR-L2-1160 |  | DH1200 CHLR-1RT40-C12 L2 Checklist | 3d | 2026-02-25 | 2026-02-27 | DC1-CHLR-L2-1150 | 32d | 0d | Riley Warring | TAS |
| DC1-CHLR-L2-1180 |  | DH1200 CHLR-1RT40-E12 L2 Checklist | 3d | 2026-02-27 | 2026-03-03 | DC1-CHLR-L2-1170 | 24d | 0d | Riley Warring | TAS |
| DC1-CHLR-L2-1190 |  | DH1200 CHLR-1RT40-F12 L2 Checklist | 3d | 2026-03-04 | 2026-03-06 | DC1-CHLR-L2-1180 | 24d | 0d | Riley Warring | TAS |
| DC1-CHLR-L2-1200 |  | DH1200 CHLR-1RT40-R12 L2 Checklist | 3d | 2026-03-09 | 2026-03-11 | DC1-CHLR-L2-1190 | 24d | 0d | Riley Warring | TAS |

Notes:
- DC1-CDU-L2-3030: Steps: EC Installation Checklist; MC Installation Checklist; CC Installation Checklist; Vendor Pre-Energization Checklist; CXA Pre-Energization Inspection; PEI/Clean-Walk
- DC1-CDU-L2-3040: Steps: EC Installation Checklist; MC Installation Checklist; CC Installation Checklist; Vendor Pre-Energization Checklist; CXA Pre-Energization Inspection; PEI/Clean-Walk
- DC1-CDU-L2-3050: Steps: EC Installation Checklist; CC Installation Checklist; MC Installation Checklist; Vendor Pre-Energization Checklist; CXA Pre-Energization Inspection; PEI/Clean-Walk
- DC1-CDU-L2-3060: Steps: EC Installation Checklist; MC Installation Checklist; CC Installation Checklist; Vendor Pre-Energization Checklist; CXA Pre-Energization Inspection; PEI/Clean-Walk
- DC1-CDU-L2-3070: Steps: EC Installation Checklist; MC Installation Checklist; CC Installation Checklist; Vendor Pre-Energization Checklist; CXA Pre-Energization Inspection; PEI/Clean-Walk
- DC1-CDU-L2-3080: Steps: EC Installation Checklist; MC Installation Checklist; CC Installation Checklist; Vendor Pre-Energization Checklist; CXA Pre-Energization Inspection; PEI/Clean-Walk
- DC1-CDU-L2-3120: Steps: EC Installation Checklist; MC Installation Checklist; CC Installation Checklist; Vendor Pre-Energization Checklist; CXA Pre-Energization Inspection; PEI/Clean-Walk
- DC1-CDU-L2-3130: Steps: EC Installation Checklist; MC Installation Checklist; CC Installation Checklist; Vendor Pre-Energization Checklist; CXA Pre-Energization Inspection; PEI/Clean-Walk
- DC1-CDU-L2-3140: Steps: EC Installation Checklist; MC Installation Checklist; CC Installation Checklist; Vendor Pre-Energization Checklist; CXA Pre-Energization Inspection; PEI/Clean-Walk
- DC1-CDU-L2-3090: Steps: EC Installation Checklist; MC Installation Checklist; CC Installation Checklist; Vendor Pre-Energization Checklist; CXA Pre-Energization Inspection; PEI/Clean-Walk
- DC1-CDU-L2-3100: Steps: EC Installation Checklist; MC Installation Checklist; CC Installation Checklist; Vendor Pre-Energization Checklist; CXA Pre-Energization Inspection; PEI/Clean-Walk
- DC1-CDU-L2-3110: Steps: EC Installation Checklist; MC Installation Checklist; CC Installation Checklist; Vendor Pre-Energization Checklist; CXA Pre-Energization Inspection; PEI/Clean-Walk
- DC1-CDU-L2-3180: Steps: EC Installation Checklist; MC Installation Checklist; CC Installation Checklist; Vendor Pre-Energization Checklist; CXA Pre-Energization Inspection; PEI/Clean-Walk
- DC1-CDU-L2-3190: Steps: EC Installation Checklist; MC Installation Checklist; CC Installation Checklist; Vendor Pre-Energization Checklist; CXA Pre-Energization Inspection; PEI/Clean-Walk
- DC1-CDU-L2-3200: Steps: EC Installation Checklist; MC Installation Checklist; CC Installation Checklist; Vendor Pre-Energization Checklist; CXA Pre-Energization Inspection; PEI/Clean-Walk
- DC1-CDU-L2-3150: Steps: EC Installation Checklist; MC Installation Checklist; CC Installation Checklist; Vendor Pre-Energization Checklist; CXA Pre-Energization Inspection; PEI/Clean-Walk
- DC1-CDU-L2-3160: Steps: EC Installation Checklist; MC Installation Checklist; CC Installation Checklist; Vendor Pre-Energization Checklist; CXA Pre-Energization Inspection; PEI/Clean-Walk
- DC1-CDU-L2-3170: Steps: EC Installation Checklist; MC Installation Checklist; CC Installation Checklist; Vendor Pre-Energization Checklist; CXA Pre-Energization Inspection; PEI/Clean-Walk
- DC1-CHLR-L2-1140: Steps: EC Installation Checklist; MC Installation Checklist; CC Installation Checklist; Vendor Pre-Energization Checklist; CXA Pre-Energization Inspection; PEI/Clean-Walk
- DC1-CHLR-L2-1150: Steps: EC Installation Checklist; MC Installation Checklist; CC Installation Checklist; Vendor Pre-Energization Checklist; CXA Pre-Energization Inspection; PEI/Clean-Walk
- DC1-CHLR-L2-1170: Steps: EC Installation Checklist; MC Installation Checklist; CC Installation Checklist; Vendor Pre-Energization Checklist; CXA Pre-Energization Inspection; PEI/Clean-Walk
- DC1-CHLR-L2-1160: Steps: EC Installation Checklist; MC Installation Checklist; CC Installation Checklist; Vendor Pre-Energization Checklist; CXA Pre-Energization Inspection; PEI/Clean-Walk
- DC1-CHLR-L2-1180: Steps: EC Installation Checklist; MC Installation Checklist; CC Installation Checklist; Vendor Pre-Energization Checklist; CXA Pre-Energization Inspection; PEI/Clean-Walk
- DC1-CHLR-L2-1190: Steps: EC Installation Checklist; MC Installation Checklist; CC Installation Checklist; Vendor Pre-Energization Checklist; CXA Pre-Energization Inspection; PEI/Clean-Walk
- DC1-CHLR-L2-1200: Steps: EC Installation Checklist; MC Installation Checklist; CC Installation Checklist; Vendor Pre-Energization Checklist; CXA Pre-Energization Inspection; PEI/Clean-Walk

| ID | WBS | Activity | Duration | Start | Finish | Predecessors | Total float | Free float | Notes | Layton Responsible Party | Vendor Responsible Party |
| --- | --- | --- | --- | --- | --- | --- | --- | --- | --- | --- | --- |
|  | 12 | **DC1-DH1200 CHWP Cx L2** |  | 2026-02-19 | 2026-03-12 |  |  |  |  |  |  |
| DC1-CHWP-L2-Cx-2140 |  | DH1200 CHWP-1RT40-A12 L2 Checklist | 3d | 2026-02-19 | 2026-02-23 | QTS-18971 | 12d | 0d | CFCI | Riley Warring | LAY |
| DC1-CHWP-L2-Cx-2150 |  | DH1200 CHWP-1RT40-B12 L2 Checklist | 3d | 2026-02-24 | 2026-02-26 | DC1-CHWP-L2-Cx-2140 | 12d | 0d | CFCI | Riley Warring | LAY |
| DC1-CHWP-L2-Cx-2170 |  | DH1200 CHWP-1RT40-D12 L2 Checklist | 3d | 2026-02-26 | 2026-03-02 | QTS-43811 | 5d | 0d | CFCI | Riley Warring | LAY |
| DC1-CHWP-L2-Cx-2160 |  | DH1200 CHWP-1RT40-C12 L2 Checklist | 3d | 2026-02-27 | 2026-03-03 | DC1-CHWP-L2-Cx-2150 | 12d | 1d | CFCI | Riley Warring | LAY |
| DC1-CHWP-L2-Cx-2180 |  | DH1200 CHWP-1RT40-E12 L2 Checklist | 3d | 2026-03-02 | 2026-03-04 | DC1-CHWP-L2-Cx-2170 SS+2d | 5d | 0d | CFCI | Riley Warring | LAY |
| DC1-CHWP-L2-Cx-2190 |  | DH1200 CHWP-1RT40-F12 L2 Checklist | 3d | 2026-03-05 | 2026-03-09 | DC1-CHWP-L2-Cx-2180 | 5d | 0d | CFCI | Riley Warring | LAY |
| DC1-CHWP-L2-Cx-2200 |  | DH1200 CHWP-1RT40-R12 L2 Checklist | 3d | 2026-03-10 | 2026-03-12 | DC1-CHWP-L2-Cx-2190 | 5d | 0d | CFCI | Riley Warring | LAY |
|  | 13 | **DC1-DH1200 CRAH/DOAS Cx L2** |  | 2026-02-25 | 2026-03-04 |  |  |  |  |  |  |
| DC1-CRAH-L2-2640 |  | DH1200 CRAH-DH-01 L2 Checklist | 3d | 2026-02-25 | 2026-02-27 | QTS-15481, QTS-46661 | 34d | 15d |  |  | UMAS |
| DC1-CRAH-L2-2650 |  | DH1200 CRAH-DH-02 L2 Checklist | 3d | 2026-02-25 | 2026-02-27 | QTS-15481, QTS-46661 | 34d | 12d |  |  | UMAS |
| DC1-CRAH-L2-2660 |  | DH1200 CRAH-DH-03 L2 Checklist | 3d | 2026-02-25 | 2026-02-27 | QTS-15481, QTS-46661 | 34d | 9d |  |  | UMAS |
| DC1-CRAH-L2-2670 |  | DH1200 CRAH-DH-04 L2 Checklist | 3d | 2026-02-25 | 2026-02-27 | QTS-15481, QTS-46661 | 34d | 6d |  |  | UMAS |
| DC1-CRAH-L2-2680 |  | DH1200 CRAH-DH-05 L2 Checklist | 3d | 2026-02-25 | 2026-02-27 | QTS-15481, QTS-46661 | 34d | 15d |  |  | UMAS |
| DC1-CRAH-L2-2690 |  | DH1200 CRAH-DH-06 L2 Checklist | 3d | 2026-02-25 | 2026-02-27 | QTS-15481, QTS-46661 | 34d | 12d |  |  | UMAS |
| DC1-CRAH-L2-2700 |  | DH1200 CRAH-DH-07 L2 Checklist | 3d | 2026-02-25 | 2026-02-27 | QTS-15481, QTS-46661 | 34d | 9d |  |  | UMAS |
| DC1-CRAH-L2-2710 |  | DH1200 CRAH-DH-08 L2 Checklist | 3d | 2026-02-25 | 2026-02-27 | QTS-15481, QTS-46661 | 34d | 15d |  |  | UMAS |
| DC1-CRAH-L2-2720 |  | DH1200 CRAH-DH-09 L2 Checklist | 3d | 2026-02-25 | 2026-02-27 | QTS-15481, QTS-46661 | 34d | 12d |  |  | UMAS |
| DC1-CRAH-L2-2730 |  | DH1200 CRAH-DH-10 L2 Checklist | 3d | 2026-02-25 | 2026-02-27 | QTS-15481, QTS-46661 | 34d | 9d |  |  | UMAS |
| DC1-CRAH-L2-2740 |  | DH1200 CRAH-DH-11 L2 Checklist | 3d | 2026-02-25 | 2026-02-27 | QTS-15481, QTS-46661 | 34d | 15d |  |  | UMAS |
| DC1-CRAH-L2-2750 |  | DH1200 CRAH-DH-12 L2 Checklist | 3d | 2026-02-25 | 2026-02-27 | QTS-15481, QTS-46661 | 34d | 12d |  |  | UMAS |
| DC1-CRAH-L2-2760 |  | DH1200 CRAH-DH-13 L2 Checklist | 3d | 2026-02-25 | 2026-02-27 | QTS-15481, QTS-46661 | 34d | 9d |  |  | UMAS |
| DC1-CRAH-L2-2770 |  | DH1200 CRAH-DH-14 L2 Checklist | 3d | 2026-02-25 | 2026-02-27 | QTS-15481, QTS-46661 | 34d | 6d |  |  | UMAS |
| DC1-CRAH-L2-2780 |  | DH1200 CRAH-DH-15 L2 Checklist | 3d | 2026-02-25 | 2026-02-27 | QTS-46661, QTS-16331 | 34d | 0d |  |  | UMAS |
| DC1-CRAH-L2-2790 |  | DH1200 CRAH-DH-16 L2 Checklist | 3d | 2026-02-25 | 2026-02-27 | QTS-46661, QTS-16331 | 34d | 3d |  |  | UMAS |
| DC1-CRAH-L2-2800 |  | DH1200 CRAH-DH-17 L2 Checklist | 3d | 2026-02-25 | 2026-02-27 | QTS-46661, QTS-16331 | 34d | 6d |  |  | UMAS |
| DC1-CRAH-L2-2810 |  | DH1200 CRAH-DH-18 L2 Checklist | 3d | 2026-02-25 | 2026-02-27 | QTS-46661, QTS-16331 | 34d | 9d |  |  | UMAS |
| DC1-CRAH-L2-2820 |  | DH1200 CRAH-DH-19 L2 Checklist | 3d | 2026-02-25 | 2026-02-27 | QTS-46661, QTS-16331 | 34d | 12d |  |  | UMAS |
| DC1-CRAH-L2-2830 |  | DH1200 CRAH-DH-20 L2 Checklist | 3d | 2026-02-25 | 2026-02-27 | QTS-46661, QTS-16331 | 34d | 15d |  |  | UMAS |
| DC1-CRAH-L2-2840 |  | DH1200 CRAH-DH-21 L2 Checklist | 3d | 2026-02-25 | 2026-02-27 | QTS-46661, QTS-16331 | 34d | 15d |  |  | UMAS |
| DC1-CRAH-L2-2850 |  | DH1200 CRAH-DH-22 L2 Checklist | 3d | 2026-02-25 | 2026-02-27 | QTS-46661, QTS-16331 | 34d | 3d |  |  | UMAS |
| DC1-CRAH-L2-2860 |  | DH1200 CRAH-DH-23 L2 Checklist | 3d | 2026-02-25 | 2026-02-27 | QTS-46661, QTS-16331 | 34d | 6d |  |  | UMAS |
| DC1-CRAH-L2-2870 |  | DH1200 CRAH-DH-24 L2 Checklist | 3d | 2026-02-25 | 2026-02-27 | QTS-46661, QTS-16331 | 34d | 9d |  |  | UMAS |
| DC1-CRAH-L2-2880 |  | DH1200 CRAH-DH-25 L2 Checklist | 3d | 2026-02-25 | 2026-02-27 | QTS-46661, QTS-16331 | 34d | 12d |  |  | UMAS |
| DC1-CRAH-L2-2890 |  | DH1200 CRAH-DH-26 L2 Checklist | 3d | 2026-02-25 | 2026-02-27 | QTS-46661, QTS-16331 | 34d | 15d |  |  | UMAS |
| DC1-CRAH-L2-2900 |  | DH1200 CRAH-DH-27 L2 Checklist | 3d | 2026-02-25 | 2026-02-27 | QTS-46661, QTS-16331 | 34d | 12d |  |  | UMAS |
| DC1-CRAH-L2-2910 |  | DH1200 CRAH-DH-28 L2 Checklist | 3d | 2026-02-25 | 2026-02-27 | QTS-46661, QTS-16331 | 34d | 15d |  |  | UMAS |
| DC1-CRAH-L2-2920 |  | DH1200 CRAH-EG1202-01 L2 Checklist | 3d | 2026-02-25 | 2026-02-27 | QTS-46661, QTS-46641 | 34d | 12d |  |  | VER |
| DC1-CRAH-L2-2930 |  | DH1200 CRAH-EG1202-02 L2 Checklist | 3d | 2026-02-25 | 2026-02-27 | QTS-46661, QTS-46641 | 34d | 6d |  |  | VER |
| DC1-CRAH-L2-2940 |  | DH1200 CRAH-EG1202-03 L2 Checklist | 3d | 2026-02-25 | 2026-02-27 | QTS-46661, QTS-46641 | 34d | 3d |  |  | VER |
| DC1-CRAH-L2-2950 |  | DH1200 CRAH-EG1202-04 L2 Checklist | 3d | 2026-02-25 | 2026-02-27 | QTS-46661, QTS-46641 | 34d | 0d |  |  | VER |
| DC1-DOAS-L2-2040 |  | DH1200 DOAS-01 L2 Checklist | 3d | 2026-03-02 | 2026-03-04 | QTS-46671, QTS-50241 | 31d | 12d |  |  | TAS |
| DC1-DOAS-L2-2050 |  | DH1200 DOAS-02 L2 Checklist | 3d | 2026-03-02 | 2026-03-04 | QTS-46671, QTS-50241 | 31d | 9d |  |  | TAS |

Notes:
- DC1-CHWP-L2-Cx-2140: Steps: EC Installation Checklist; MC Installation Checklist; CC Installation Checklist; Vendor Pre-Energization Checklist; CXA Pre-Energization Inspection; PEI/Clean-Walk
- DC1-CHWP-L2-Cx-2150: Steps: EC Installation Checklist; MC Installation Checklist; CC Installation Checklist; Vendor Pre-Energization Checklist; CXA Pre-Energization Inspection; PEI/Clean-Walk
- DC1-CHWP-L2-Cx-2170: Steps: EC Installation Checklist; MC Installation Checklist; CC Installation Checklist; Vendor Pre-Energization Checklist; CXA Pre-Energization Inspection; PEI/Clean-Walk
- DC1-CHWP-L2-Cx-2160: Steps: EC Installation Checklist; MC Installation Checklist; CC Installation Checklist; Vendor Pre-Energization Checklist; CXA Pre-Energization Inspection; PEI/Clean-Walk
- DC1-CHWP-L2-Cx-2180: Steps: EC Installation Checklist; MC Installation Checklist; CC Installation Checklist; Vendor Pre-Energization Checklist; CXA Pre-Energization Inspection; PEI/Clean-Walk
- DC1-CHWP-L2-Cx-2190: Steps: EC Installation Checklist; MC Installation Checklist; CC Installation Checklist; Vendor Pre-Energization Checklist; CXA Pre-Energization Inspection; PEI/Clean-Walk
- DC1-CHWP-L2-Cx-2200: Steps: EC Installation Checklist; MC Installation Checklist; CC Installation Checklist; Vendor Pre-Energization Checklist; CXA Pre-Energization Inspection; PEI/Clean-Walk
- DC1-CRAH-L2-2640: Steps: EC Installation Checklist; MC Installation Checklist; CC Installation Checklist; Vendor Pre-Energization Checklist; CXA Pre-Energization Inspection; PEI/Clean-Walk
- DC1-CRAH-L2-2650: Steps: EC Installation Checklist; MC Installation Checklist; CC Installation Checklist; Vendor Pre-Energization Checklist; CXA Pre-Energization Inspection; PEI/Clean-Walk
- DC1-CRAH-L2-2660: Steps: EC Installation Checklist; MC Installation Checklist; CC Installation Checklist; Vendor Pre-Energization Checklist; CXA Pre-Energization Inspection; PEI/Clean-Walk
- DC1-CRAH-L2-2670: Steps: EC Installation Checklist; MC Installation Checklist; CC Installation Checklist; Vendor Pre-Energization Checklist; CXA Pre-Energization Inspection; PEI/Clean-Walk
- DC1-CRAH-L2-2680: Steps: EC Installation Checklist; MC Installation Checklist; CC Installation Checklist; Vendor Pre-Energization Checklist; CXA Pre-Energization Inspection; PEI/Clean-Walk
- DC1-CRAH-L2-2690: Steps: EC Installation Checklist; MC Installation Checklist; CC Installation Checklist; Vendor Pre-Energization Checklist; CXA Pre-Energization Inspection; PEI/Clean-Walk
- DC1-CRAH-L2-2700: Steps: EC Installation Checklist; MC Installation Checklist; CC Installation Checklist; Vendor Pre-Energization Checklist; CXA Pre-Energization Inspection; PEI/Clean-Walk
- DC1-CRAH-L2-2710: Steps: EC Installation Checklist; MC Installation Checklist; CC Installation Checklist; Vendor Pre-Energization Checklist; CXA Pre-Energization Inspection; PEI/Clean-Walk
- DC1-CRAH-L2-2720: Steps: EC Installation Checklist; MC Installation Checklist; CC Installation Checklist; Vendor Pre-Energization Checklist; CXA Pre-Energization Inspection; PEI/Clean-Walk
- DC1-CRAH-L2-2730: Steps: EC Installation Checklist; MC Installation Checklist; CC Installation Checklist; Vendor Pre-Energization Checklist; CXA Pre-Energization Inspection; PEI/Clean-Walk
- DC1-CRAH-L2-2740: Steps: EC Installation Checklist; MC Installation Checklist; CC Installation Checklist; Vendor Pre-Energization Checklist; CXA Pre-Energization Inspection; PEI/Clean-Walk
- DC1-CRAH-L2-2750: Steps: EC Installation Checklist; MC Installation Checklist; CC Installation Checklist; Vendor Pre-Energization Checklist; CXA Pre-Energization Inspection; PEI/Clean-Walk
- DC1-CRAH-L2-2760: Steps: EC Installation Checklist; MC Installation Checklist; CC Installation Checklist; Vendor Pre-Energization Checklist; CXA Pre-Energization Inspection; PEI/Clean-Walk
- DC1-CRAH-L2-2770: Steps: EC Installation Checklist; MC Installation Checklist; CC Installation Checklist; Vendor Pre-Energization Checklist; CXA Pre-Energization Inspection; PEI/Clean-Walk
- DC1-CRAH-L2-2780: Steps: EC Installation Checklist; MC Installation Checklist; CC Installation Checklist; Vendor Pre-Energization Checklist; CXA Pre-Energization Inspection; PEI/Clean-Walk
- DC1-CRAH-L2-2790: Steps: EC Installation Checklist; MC Installation Checklist; CC Installation Checklist; Vendor Pre-Energization Checklist; CXA Pre-Energization Inspection; PEI/Clean-Walk
- DC1-CRAH-L2-2800: Steps: EC Installation Checklist; MC Installation Checklist; CC Installation Checklist; Vendor Pre-Energization Checklist; CXA Pre-Energization Inspection; PEI/Clean-Walk
- DC1-CRAH-L2-2810: Steps: EC Installation Checklist; MC Installation Checklist; CC Installation Checklist; Vendor Pre-Energization Checklist; CXA Pre-Energization Inspection; PEI/Clean-Walk
- DC1-CRAH-L2-2820: Steps: EC Installation Checklist; MC Installation Checklist; CC Installation Checklist; Vendor Pre-Energization Checklist; CXA Pre-Energization Inspection; PEI/Clean-Walk
- DC1-CRAH-L2-2830: Steps: EC Installation Checklist; MC Installation Checklist; CC Installation Checklist; Vendor Pre-Energization Checklist; CXA Pre-Energization Inspection; PEI/Clean-Walk
- DC1-CRAH-L2-2840: Steps: EC Installation Checklist; MC Installation Checklist; CC Installation Checklist; Vendor Pre-Energization Checklist; CXA Pre-Energization Inspection; PEI/Clean-Walk
- DC1-CRAH-L2-2850: Steps: EC Installation Checklist; MC Installation Checklist; CC Installation Checklist; Vendor Pre-Energization Checklist; CXA Pre-Energization Inspection; PEI/Clean-Walk
- DC1-CRAH-L2-2860: Steps: EC Installation Checklist; MC Installation Checklist; CC Installation Checklist; Vendor Pre-Energization Checklist; CXA Pre-Energization Inspection; PEI/Clean-Walk
- DC1-CRAH-L2-2870: Steps: EC Installation Checklist; MC Installation Checklist; CC Installation Checklist; Vendor Pre-Energization Checklist; CXA Pre-Energization Inspection; PEI/Clean-Walk
- DC1-CRAH-L2-2880: Steps: EC Installation Checklist; MC Installation Checklist; CC Installation Checklist; Vendor Pre-Energization Checklist; CXA Pre-Energization Inspection; PEI/Clean-Walk
- DC1-CRAH-L2-2890: Steps: EC Installation Checklist; MC Installation Checklist; CC Installation Checklist; Vendor Pre-Energization Checklist; CXA Pre-Energization Inspection; PEI/Clean-Walk
- DC1-CRAH-L2-2900: Steps: EC Installation Checklist; MC Installation Checklist; CC Installation Checklist; Vendor Pre-Energization Checklist; CXA Pre-Energization Inspection; PEI/Clean-Walk
- DC1-CRAH-L2-2910: Steps: EC Installation Checklist; MC Installation Checklist; CC Installation Checklist; Vendor Pre-Energization Checklist; CXA Pre-Energization Inspection; PEI/Clean-Walk
- DC1-CRAH-L2-2920: Steps: EC Installation Checklist; MC Installation Checklist; CC Installation Checklist; Vendor Pre-Energization Checklist; CXA Pre-Energization Inspection; PEI/Clean-Walk
- DC1-CRAH-L2-2930: Steps: EC Installation Checklist; MC Installation Checklist; CC Installation Checklist; Vendor Pre-Energization Checklist; CXA Pre-Energization Inspection; PEI/Clean-Walk
- DC1-CRAH-L2-2940: Steps: EC Installation Checklist; MC Installation Checklist; CC Installation Checklist; Vendor Pre-Energization Checklist; CXA Pre-Energization Inspection; PEI/Clean-Walk
- DC1-CRAH-L2-2950: Steps: EC Installation Checklist; MC Installation Checklist; CC Installation Checklist; Vendor Pre-Energization Checklist; CXA Pre-Energization Inspection; PEI/Clean-Walk
- DC1-DOAS-L2-2040: Steps: EC Installation Checklist; MC Installation Checklist; CC Installation Checklist; Vendor Pre-Energization Checklist; CXA Pre-Energization Inspection; PEI/Clean-Walk
- DC1-DOAS-L2-2050: Steps: EC Installation Checklist; MC Installation Checklist; CC Installation Checklist; Vendor Pre-Energization Checklist; CXA Pre-Energization Inspection; PEI/Clean-Walk

| ID | WBS | Activity | Duration | Start | Finish | Predecessors | Total float | Free float | Vendor Responsible Party |
| --- | --- | --- | --- | --- | --- | --- | --- | --- | --- |
|  | 03 | **Data Hall 1200 Cx L3** |  | 2026-02-27 | 2026-06-22 |  |  |  |  |
|  | 01 | **DC1-DH1200 Generators Cx L3** |  | 2026-03-02 | 2026-03-23 |  |  |  |  |
|  | 01 | **DC1-DH1200-GEN-A12 Cx L3** |  | 2026-03-02 | 2026-03-05 |  |  |  |  |
| DC1-GEN-L3-CX-2420 |  | DC1-GEN-A12 FTE | 1d | 2026-03-02 | 2026-03-02 | DC1-GEN-L2-2140, DC1-SWD-L3-CX-2420 | 39d | 0d | ROS |
| DC1-GEN-L3-CX-2430 |  | DC1-GEN-A12 L3 Startup | 2d | 2026-03-03 | 2026-03-04 | DC1-GEN-L3-CX-2420 | 39d | 0d | HLT |
| DC1-GEN-L3-CX-2440 |  | DC1-GEN-A12 BMS/EPMS | 1d | 2026-03-05 | 2026-03-05 | DC1-GEN-L3-CX-2430 | 39d |  | PRM |
|  | 02 | **DC1-DH1200-GEN-B12 Cx L3** |  | 2026-03-02 | 2026-03-05 |  |  |  |  |
| DC1-GEN-L3-CX-2450 |  | DC1-GEN-B12 FTE | 1d | 2026-03-02 | 2026-03-02 | DC1-GEN-L2-2150, DC1-SWD-L3-CX-2450 | 39d | 0d | ROS |
| DC1-GEN-L3-CX-2460 |  | DC1-GEN-B12 L3 Startup | 2d | 2026-03-03 | 2026-03-04 | DC1-GEN-L3-CX-2450 | 39d | 0d | HLT |
| DC1-GEN-L3-CX-2470 |  | DC1-GEN-B12 BMS/EPMS | 1d | 2026-03-05 | 2026-03-05 | DC1-GEN-L3-CX-2460 | 39d |  | PRM |
|  | 03 | **DC1-DH1200-GEN-C12 Cx L3** |  | 2026-03-02 | 2026-03-05 |  |  |  |  |
| DC1-GEN-L3-CX-2480 |  | DC1-GEN-C12 FTE | 1d | 2026-03-02 | 2026-03-02 | DC1-GEN-L2-2160, DC1-SWD-L3-CX-2480 | 39d | 0d | ROS |
| DC1-GEN-L3-CX-2490 |  | DC1-GEN-C12 L3 Startup | 2d | 2026-03-03 | 2026-03-04 | DC1-GEN-L3-CX-2480 | 39d | 0d | HLT |
| DC1-GEN-L3-CX-2500 |  | DC1-GEN-C12 BMS/EPMS | 1d | 2026-03-05 | 2026-03-05 | DC1-GEN-L3-CX-2490 | 39d |  | PRM |
|  | 04 | **DC1-DH1200-GEN-D12 Cx L3** |  | 2026-03-05 | 2026-03-10 |  |  |  |  |
| DC1-GEN-L3-CX-2510 |  | DC1-GEN-D12 FTE | 1d | 2026-03-05 | 2026-03-05 | DC1-GEN-L2-2170, DC1-SWD-L3-CX-2510 | 36d | 0d | ROS |
| DC1-GEN-L3-CX-2520 |  | DC1-GEN-D12 L3 Startup | 2d | 2026-03-06 | 2026-03-09 | DC1-GEN-L3-CX-2510 | 36d | 0d | HLT |
| DC1-GEN-L3-CX-2530 |  | DC1-GEN-D12 BMS/EPMS | 1d | 2026-03-10 | 2026-03-10 | DC1-GEN-L3-CX-2520 | 36d |  | PRM |
|  | 05 | **DC1-DH1200-GEN-E12 Cx L3** |  | 2026-03-10 | 2026-03-13 |  |  |  |  |
| DC1-GEN-L3-CX-2540 |  | DC1-GEN-E12 FTE | 1d | 2026-03-10 | 2026-03-10 | DC1-GEN-L2-2180, DC1-SWD-L3-CX-2540 | 33d | 0d | ROS |
| DC1-GEN-L3-CX-2550 |  | DC1-GEN-E12 L3 Startup | 2d | 2026-03-11 | 2026-03-12 | DC1-GEN-L3-CX-2540 | 33d | 0d | HLT |
| DC1-GEN-L3-CX-2560 |  | DC1-GEN-E12 BMS/EPMS | 1d | 2026-03-13 | 2026-03-13 | DC1-GEN-L3-CX-2550 | 33d |  | PRM |
|  | 06 | **DC1-DH1200-GEN-F12 Cx L3** |  | 2026-03-13 | 2026-03-18 |  |  |  |  |
| DC1-GEN-L3-CX-2570 |  | DC1-GEN-F12 FTE | 1d | 2026-03-13 | 2026-03-13 | DC1-GEN-L2-2190, DC1-SWD-L3-CX-2570 | 30d | 0d | ROS |
| DC1-GEN-L3-CX-2580 |  | DC1-GEN-F12 L3 Startup | 2d | 2026-03-16 | 2026-03-17 | DC1-GEN-L3-CX-2570 | 30d | 0d | HLT |
| DC1-GEN-L3-CX-2590 |  | DC1-GEN-F12 BMS/EPMS | 1d | 2026-03-18 | 2026-03-18 | DC1-GEN-L3-CX-2580 | 30d |  | PRM |

Notes:
- DC1-GEN-L3-CX-2430: Steps: EC Startup Report; Vendor Startup
- DC1-GEN-L3-CX-2460: Steps: EC Startup Report; Vendor Startup
- DC1-GEN-L3-CX-2490: Steps: EC Startup Report; Vendor Startup
- DC1-GEN-L3-CX-2520: Steps: EC Startup Report; Vendor Startup
- DC1-GEN-L3-CX-2550: Steps: EC Startup Report; Vendor Startup
- DC1-GEN-L3-CX-2580: Steps: EC Startup Report; Vendor Startup

| ID | WBS | Activity | Duration | Start | Finish | Predecessors | Total float | Free float | Vendor Responsible Party | Notes | Layton Responsible Party |
| --- | --- | --- | --- | --- | --- | --- | --- | --- | --- | --- | --- |
|  | 07 | **DC1-DH1200-GEN-R12 Cx L3** |  | 2026-03-18 | 2026-03-23 |  |  |  |  |  |  |
| DC1-GEN-L3-CX-2600 |  | DC1-GEN-R12 FTE | 1d | 2026-03-18 | 2026-03-18 | DC1-GEN-L2-2200, DC1-SWD-L3-CX-2600 | 27d | 0d | ROS |  |  |
| DC1-GEN-L3-CX-2610 |  | DC1-GEN-R12 L3 Startup | 2d | 2026-03-19 | 2026-03-20 | DC1-GEN-L3-CX-2600 | 27d | 0d | HLT |  |  |
| DC1-GEN-L3-CX-2620 |  | DC1-GEN-R12 BMS/EPMS | 1d | 2026-03-23 | 2026-03-23 | DC1-GEN-L3-CX-2610 | 27d |  | PRM |  |  |
|  | 02 | **DC1-DH1200 MV XFMRs Cx L3** |  | 2026-02-27 | 2026-03-09 |  |  |  |  |  |  |
|  | 01 | **DC1-DH1200 MV-XFMR-A12 Cx L3** |  | 2026-02-27 | 2026-03-04 |  |  |  |  |  |  |
| DC1-XFM-L3-CX-1420 |  | DC1-XFMR-A12 FTE | 1d | 2026-02-27 | 2026-02-27 | DC1-XFMR-L2-2140, DC1-SWD-L2-2140, DC1-SWD-L2-2190 | 11d | 0d | ROS | MVG FTE Pred | Riley Warring |
| DC1-XFM-L3-CX-1430 |  | DC1-XFMR-A12 L3 Startup | 2d | 2026-03-02 | 2026-03-03 | DC1-XFM-L3-CX-1420 | 40d | 0d | VTC |  |  |
| DC1-XFM-L3-CX-1440 |  | DC1-XFMR-A12 BMS/EPMS | 1d | 2026-03-04 | 2026-03-04 | DC1-XFM-L3-CX-1430 | 40d |  | PRM |  |  |
|  | 02 | **DC1-DH1200 MV-XFMR-B12 Cx L3** |  | 2026-02-27 | 2026-03-04 |  |  |  |  |  |  |
| DC1-XFM-L3-CX-1450 |  | DC1-XFMR-B12 FTE | 1d | 2026-02-27 | 2026-02-27 | DC1-XFMR-L2-2150, DC1-SWD-L2-2150, DC1-SWD-L2-2190 | 11d | 0d | ROS | MVG FTE Pred | Riley Warring |
| DC1-XFM-L3-CX-1460 |  | DC1-XFMR-B12 L3 Startup | 2d | 2026-03-02 | 2026-03-03 | DC1-XFM-L3-CX-1450 | 40d | 0d | VTC |  |  |
| DC1-XFM-L3-CX-1470 |  | DC1-XFMR-B12 BMS/EPMS | 1d | 2026-03-04 | 2026-03-04 | DC1-XFM-L3-CX-1460 | 40d |  | PRM |  |  |
|  | 03 | **DC1-DH1200 MV-XFMR-C12 Cx L3** |  | 2026-02-27 | 2026-03-04 |  |  |  |  |  |  |
| DC1-XFM-L3-CX-1480 |  | DC1-XFMR-C12 FTE | 1d | 2026-02-27 | 2026-02-27 | DC1-XFMR-L2-2160, DC1-SWD-L2-2160, DC1-SWD-L2-2190 | 11d | 0d | ROS | MVG FTE Pred | Riley Warring |
| DC1-XFM-L3-CX-1490 |  | DC1-XFMR-C12 L3 Startup | 2d | 2026-03-02 | 2026-03-03 | DC1-XFM-L3-CX-1480 | 40d | 0d | VTC |  |  |
| DC1-XFM-L3-CX-1500 |  | DC1-XFMR-C12 BMS/EPMS | 1d | 2026-03-04 | 2026-03-04 | DC1-XFM-L3-CX-1490 | 40d |  | PRM |  |  |
|  | 04 | **DC1-DH1200 MV-XFMR-D12 Cx L3** |  | 2026-03-02 | 2026-03-05 |  |  |  |  |  |  |
| DC1-XFM-L3-CX-1510 |  | DC1-XFMR-D12 FTE | 1d | 2026-03-02 | 2026-03-02 | DC1-XFMR-L2-2170, DC1-SWD-L2-2170, DC1-SWD-L2-2190 | 10d | 0d | ROS | MVG FTE Pred | Riley Warring |
| DC1-XFM-L3-CX-1520 |  | DC1-XFMR-D12 L3 Startup | 2d | 2026-03-03 | 2026-03-04 | DC1-XFM-L3-CX-1510 | 39d | 0d | VTC |  |  |
| DC1-XFM-L3-CX-1530 |  | DC1-XFMR-D12 BMS/EPMS | 1d | 2026-03-05 | 2026-03-05 | DC1-XFM-L3-CX-1520 | 39d |  | PRM |  |  |
|  | 05 | **DC1-DH1200 MV-XFMR-E12 Cx L3** |  | 2026-03-03 | 2026-03-06 |  |  |  |  |  |  |
| DC1-XFM-L3-CX-1540 |  | DC1-XFMR-E12 FTE | 1d | 2026-03-03 | 2026-03-03 | DC1-XFMR-L2-2180, DC1-SWD-L2-2180, DC1-SWD-L2-2190 | 9d | 0d | ROS | MVG FTE Pred | Riley Warring |
| DC1-XFM-L3-CX-1550 |  | DC1-XFMR-E12 L3 Startup | 2d | 2026-03-04 | 2026-03-05 | DC1-XFM-L3-CX-1540 | 38d | 0d | VTC |  |  |
| DC1-XFM-L3-CX-1560 |  | DC1-XFMR-E12 BMS/EPMS | 1d | 2026-03-06 | 2026-03-06 | DC1-XFM-L3-CX-1550 | 38d |  | PRM |  |  |

Notes:
- DC1-GEN-L3-CX-2610: Steps: EC Startup Report; Vendor Startup
- DC1-XFM-L3-CX-1430: Steps: EC Startup Report; Vendor Startup
- DC1-XFM-L3-CX-1460: Steps: EC Startup Report; Vendor Startup
- DC1-XFM-L3-CX-1490: Steps: EC Startup Report; Vendor Startup
- DC1-XFM-L3-CX-1520: Steps: EC Startup Report; Vendor Startup
- DC1-XFM-L3-CX-1550: Steps: EC Startup Report; Vendor Startup

| ID | WBS | Activity | Duration | Start | Finish | Predecessors | Total float | Free float | Notes | Layton Responsible Party | Vendor Responsible Party |
| --- | --- | --- | --- | --- | --- | --- | --- | --- | --- | --- | --- |
|  | 06 | **DC1-DH1200 MV-XFMR-F12 Cx L3** |  | 2026-03-04 | 2026-03-09 |  |  |  |  |  |  |
| DC1-XFM-L3-CX-1570 |  | DC1-XFMR-F12 FTE | 1d | 2026-03-04 | 2026-03-04 | DC1-XFMR-L2-2190, DC1-SWD-L2-2190 | 8d | 0d | MVG FTE Pred | Riley Warring | ROS |
| DC1-XFM-L3-CX-1580 |  | DC1-XFMR-F12 L3 Startup | 2d | 2026-03-05 | 2026-03-06 | DC1-XFM-L3-CX-1570 | 37d | 0d |  |  | VTC |
| DC1-XFM-L3-CX-1590 |  | DC1-XFMR-F12 BMS/EPMS | 1d | 2026-03-09 | 2026-03-09 | DC1-XFM-L3-CX-1580 | 37d |  |  |  | PRM |
|  | 07 | **DC1-DH1200 MV-XFMR-R12 Cx L3** |  | 2026-02-27 | 2026-03-04 |  |  |  |  |  |  |
| DC1-XFM-L3-CX-1600 |  | DC1-XFMR-R12 FTE | 1d | 2026-02-27 | 2026-02-27 | DC1-XFMR-L2-2200, DC1-SWD-L2-2200, DC1-SWD-L2-2190 | 11d | 0d | MVG FTE Pred | Riley Warring | ROS |
| DC1-XFM-L3-CX-1610 |  | DC1-XFMR-R12 L3 Startup | 2d | 2026-03-02 | 2026-03-03 | DC1-XFM-L3-CX-1600 | 40d | 0d |  |  | VTC |
| DC1-XFM-L3-CX-1620 |  | DC1-XFMR-R12 BMS/EPMS | 1d | 2026-03-04 | 2026-03-04 | DC1-XFM-L3-CX-1610 | 40d |  |  |  | PRM |
|  | 03 | **DC1-DH1200 PODS Cx L3** |  | 2026-02-27 | 2026-03-16 |  |  |  |  |  |  |
|  | 01 | **DC1-DH1200 SWDs Cx L3** |  | 2026-02-27 | 2026-03-09 |  |  |  |  |  |  |
|  | 01 | **DC1-DH1200-SWD-A12 Cx L3** |  | 2026-02-27 | 2026-03-04 |  |  |  |  |  |  |
| DC1-SWD-L3-CX-2420 |  | DC1-SWD-A12 FTE | 1d | 2026-02-27 | 2026-02-27 | DC1-SWD-L2-2140, DC1-XFM-L3-CX-1420 SS | 11d | 0d |  | Riley Warring | ROS |
| DC1-SWD-L3-CX-2430 |  | DC1-SWD-A12 L3 Startup | 2d | 2026-03-02 | 2026-03-03 | DC1-SWD-L3-CX-2420, QTS-1931 | 40d | 0d |  |  | SIE |
| DC1-SWD-L3-CX-2440 |  | DC1-SWD-A12 BMS/EPMS | 1d | 2026-03-04 | 2026-03-04 | DC1-SWD-L3-CX-2430 | 40d |  |  |  | PRM |
|  | 02 | **DC1-DH1200-SWD-B12 Cx L3** |  | 2026-02-27 | 2026-03-04 |  |  |  |  |  |  |
| DC1-SWD-L3-CX-2450 |  | DC1-SWD-B12 FTE | 1d | 2026-02-27 | 2026-02-27 | DC1-SWD-L2-2150, DC1-XFM-L3-CX-1450 SS | 11d | 0d |  | Riley Warring | ROS |
| DC1-SWD-L3-CX-2460 |  | DC1-SWD-B12 L3 Startup | 2d | 2026-03-02 | 2026-03-03 | DC1-SWD-L3-CX-2450, QTS-1931 | 40d | 0d |  |  | SIE |
| DC1-SWD-L3-CX-2470 |  | DC1-SWD-B12 BMS/EPMS | 1d | 2026-03-04 | 2026-03-04 | DC1-SWD-L3-CX-2460 | 40d |  |  |  | PRM |
|  | 03 | **DC1-DH1200-SWD-C12 Cx L3** |  | 2026-02-27 | 2026-03-04 |  |  |  |  |  |  |
| DC1-SWD-L3-CX-2480 |  | DC1-SWD-C12 FTE | 1d | 2026-02-27 | 2026-02-27 | DC1-SWD-L2-2160, DC1-XFM-L3-CX-1480 SS | 11d | 0d |  | Riley Warring | ROS |
| DC1-SWD-L3-CX-2490 |  | DC1-SWD-C12 L3 Startup | 2d | 2026-03-02 | 2026-03-03 | DC1-SWD-L3-CX-2480, QTS-1931 | 40d | 0d |  |  | SIE |
| DC1-SWD-L3-CX-2500 |  | DC1-SWD-C12 BMS/EPMS | 1d | 2026-03-04 | 2026-03-04 | DC1-SWD-L3-CX-2490 | 40d |  |  |  | PRM |
|  | 04 | **DC1-DH1200-SWD-D12 Cx L3** |  | 2026-03-02 | 2026-03-05 |  |  |  |  |  |  |
| DC1-SWD-L3-CX-2510 |  | DC1-SWD-D12 FTE | 1d | 2026-03-02 | 2026-03-02 | DC1-SWD-L2-2170, DC1-XFM-L3-CX-1510 SS | 10d | 0d |  | Riley Warring | ROS |
| DC1-SWD-L3-CX-2520 |  | DC1-SWD-D12 L3 Startup | 2d | 2026-03-03 | 2026-03-04 | DC1-SWD-L3-CX-2510, QTS-1931 | 39d | 0d |  |  | SIE |
| DC1-SWD-L3-CX-2530 |  | DC1-SWD-D12 BMS/EPMS | 1d | 2026-03-05 | 2026-03-05 | DC1-SWD-L3-CX-2520 | 39d |  |  |  | PRM |

Notes:
- DC1-XFM-L3-CX-1580: Steps: EC Startup Report; Vendor Startup
- DC1-XFM-L3-CX-1610: Steps: EC Startup Report; Vendor Startup
- DC1-SWD-L3-CX-2430: Steps: EC Startup Report; Vendor Startup
- DC1-SWD-L3-CX-2460: Steps: EC Startup Report; Vendor Startup
- DC1-SWD-L3-CX-2490: Steps: EC Startup Report; Vendor Startup
- DC1-SWD-L3-CX-2520: Steps: EC Startup Report; Vendor Startup

| ID | WBS | Activity | Duration | Start | Finish | Predecessors | Total float | Free float | Layton Responsible Party | Vendor Responsible Party | Notes |
| --- | --- | --- | --- | --- | --- | --- | --- | --- | --- | --- | --- |
|  | 05 | **DC1-DH1200-SWD-E12 Cx L3** |  | 2026-03-03 | 2026-03-06 |  |  |  |  |  |  |
| DC1-SWD-L3-CX-2540 |  | DC1-SWD-E12 FTE | 1d | 2026-03-03 | 2026-03-03 | DC1-SWD-L2-2180, DC1-XFM-L3-CX-1540 SS | 9d | 0d | Riley Warring | ROS |  |
| DC1-SWD-L3-CX-2550 |  | DC1-SWD-E12 L3 Startup | 2d | 2026-03-04 | 2026-03-05 | DC1-SWD-L3-CX-2540, QTS-1931 | 38d | 0d |  | SIE |  |
| DC1-SWD-L3-CX-2560 |  | DC1-SWD-E12 BMS/EPMS | 1d | 2026-03-06 | 2026-03-06 | DC1-SWD-L3-CX-2550 | 38d |  |  | PRM |  |
|  | 06 | **DC1-DH1200-SWD-F12 Cx L3** |  | 2026-03-04 | 2026-03-09 |  |  |  |  |  |  |
| DC1-SWD-L3-CX-2570 |  | DC1-SWD-F12 FTE | 1d | 2026-03-04 | 2026-03-04 | DC1-SWD-L2-2190, DC1-XFM-L3-CX-1570 SS | 8d | 0d | Riley Warring | ROS |  |
| DC1-SWD-L3-CX-2580 |  | DC1-SWD-F12 L3 Startup | 2d | 2026-03-05 | 2026-03-06 | DC1-SWD-L3-CX-2570, QTS-1931 | 37d | 0d |  | SIE |  |
| DC1-SWD-L3-CX-2590 |  | DC1-SWD-F12 BMS/EPMS | 1d | 2026-03-09 | 2026-03-09 | DC1-SWD-L3-CX-2580 | 37d |  |  | PRM |  |
|  | 07 | **DC1-DH1200-SWD-R12 Cx L3** |  | 2026-02-27 | 2026-03-04 |  |  |  |  |  |  |
| DC1-SWD-L3-CX-2600 |  | DC1-SWD-R12 FTE | 1d | 2026-02-27 | 2026-02-27 | DC1-SWD-L2-2200, DC1-XFM-L3-CX-1600 SS | 11d | 0d | Riley Warring | ROS |  |
| DC1-SWD-L3-CX-2610 |  | DC1-SWD-R12 L3 Startup | 2d | 2026-03-02 | 2026-03-03 | DC1-SWD-L3-CX-2600, QTS-1931 | 40d | 0d |  | SIE |  |
| DC1-SWD-L3-CX-2620 |  | DC1-SWD-R12 BMS/EPMS | 1d | 2026-03-04 | 2026-03-04 | DC1-SWD-L3-CX-2610 | 40d |  |  | PRM |  |
|  | 02 | **DC1-DH1200 MOD-01s Cx L3** |  | 2026-02-27 | 2026-03-09 |  |  |  |  |  |  |
|  | 01 | **DC1-DH1200-MOD-A12-01 Cx L3** |  | 2026-02-27 | 2026-03-04 |  |  |  |  |  |  |
| DC1-MOD1-L3-CX-2420 |  | DC1-MOD-01-A12 FTE | 1d | 2026-02-27 | 2026-02-27 | DC1-MOD01-L2-2140, DC1-SWD-L3-CX-2420 SS | 11d | 0d | Riley Warring | ROS |  |
| DC1-MOD1-L3-CX-2430 |  | DC1-MOD-01-A12 L3 Startup | 2d | 2026-03-02 | 2026-03-03 | DC1-MOD1-L3-CX-2420 | 40d | 0d |  | PHE | Vendor Only |
| DC1-MOD1-L3-CX-2440 |  | DC1-MOD-01-A12 BMS/EPMS | 1d | 2026-03-04 | 2026-03-04 | DC1-MOD1-L3-CX-2430 | 40d |  |  | PRM |  |
|  | 02 | **DC1-DH1200-MOD-B12-01 Cx L3** |  | 2026-02-27 | 2026-03-04 |  |  |  |  |  |  |
| DC1-MOD1-L3-CX-2450 |  | DC1-MOD-01-B12 FTE | 1d | 2026-02-27 | 2026-02-27 | DC1-MOD01-L2-2150, DC1-SWD-L3-CX-2450 SS | 11d | 0d | Riley Warring | ROS |  |
| DC1-MOD1-L3-CX-2460 |  | DC1-MOD-01-B12 L3 Startup | 2d | 2026-03-02 | 2026-03-03 | DC1-MOD1-L3-CX-2450 | 40d | 0d |  | PHE | Vendor Only |
| DC1-MOD1-L3-CX-2470 |  | DC1-MOD-01-B12 BMS/EPMS | 1d | 2026-03-04 | 2026-03-04 | DC1-MOD1-L3-CX-2460 | 40d |  |  | PRM |  |
|  | 03 | **DC1-DH1200-MOD-C12-01 Cx L3** |  | 2026-02-27 | 2026-03-04 |  |  |  |  |  |  |
| DC1-MOD1-L3-CX-2480 |  | DC1-MOD-01-C12 FTE | 1d | 2026-02-27 | 2026-02-27 | DC1-MOD01-L2-2160, DC1-SWD-L3-CX-2480 SS | 11d | 0d | Riley Warring | ROS |  |
| DC1-MOD1-L3-CX-2490 |  | DC1-MOD-01-C12 L3 Startup | 2d | 2026-03-02 | 2026-03-03 | DC1-MOD1-L3-CX-2480 | 40d | 0d |  | PHE | Vendor Only |
| DC1-MOD1-L3-CX-2500 |  | DC1-MOD-01-C12 BMS/EPMS | 1d | 2026-03-04 | 2026-03-04 | DC1-MOD1-L3-CX-2490 | 40d |  |  | PRM |  |

Notes:
- DC1-SWD-L3-CX-2550: Steps: EC Startup Report; Vendor Startup
- DC1-SWD-L3-CX-2580: Steps: EC Startup Report; Vendor Startup
- DC1-SWD-L3-CX-2610: Steps: EC Startup Report; Vendor Startup

| ID | WBS | Activity | Duration | Start | Finish | Predecessors | Total float | Free float | Layton Responsible Party | Vendor Responsible Party | Notes |
| --- | --- | --- | --- | --- | --- | --- | --- | --- | --- | --- | --- |
|  | 04 | **DC1-DH1200-MOD-D12-01 Cx L3** |  | 2026-03-02 | 2026-03-05 |  |  |  |  |  |  |
| DC1-MOD1-L3-CX-2510 |  | DC1-MOD-01-D12 FTE | 1d | 2026-03-02 | 2026-03-02 | DC1-MOD01-L2-2170, DC1-SWD-L3-CX-2510 SS | 10d | 0d | Riley Warring | ROS |  |
| DC1-MOD1-L3-CX-2520 |  | DC1-MOD-01-D12 L3 Startup | 2d | 2026-03-03 | 2026-03-04 | DC1-MOD1-L3-CX-2510 | 39d | 0d |  | PHE | Vendor Only |
| DC1-MOD1-L3-CX-2530 |  | DC1-MOD-01-D12 BMS/EPMS | 1d | 2026-03-05 | 2026-03-05 | DC1-MOD1-L3-CX-2520 | 39d |  |  | PRM |  |
|  | 05 | **DC1-DH1200-MOD-E12-01 Cx L3** |  | 2026-03-03 | 2026-03-06 |  |  |  |  |  |  |
| DC1-MOD1-L3-CX-2540 |  | DC1-MOD-01-E12 FTE | 1d | 2026-03-03 | 2026-03-03 | DC1-MOD01-L2-2180, DC1-SWD-L3-CX-2540 SS | 9d | 0d | Riley Warring | ROS |  |
| DC1-MOD1-L3-CX-2550 |  | DC1-MOD-01-E12 L3 Startup | 2d | 2026-03-04 | 2026-03-05 | DC1-MOD1-L3-CX-2540 | 38d | 0d |  | PHE | Vendor Only |
| DC1-MOD1-L3-CX-2560 |  | DC1-MOD-01-E12 BMS/EPMS | 1d | 2026-03-06 | 2026-03-06 | DC1-MOD1-L3-CX-2550 | 38d |  |  | PRM |  |
|  | 06 | **DC1-DH1200-MOD-F12-01 Cx L3** |  | 2026-03-04 | 2026-03-09 |  |  |  |  |  |  |
| DC1-MOD1-L3-CX-2570 |  | DC1-MOD-01-F12 FTE | 1d | 2026-03-04 | 2026-03-04 | DC1-MOD01-L2-2190, DC1-SWD-L3-CX-2570 SS | 8d | 0d | Riley Warring | ROS |  |
| DC1-MOD1-L3-CX-2580 |  | DC1-MOD-01-F12 L3 Startup | 2d | 2026-03-05 | 2026-03-06 | DC1-MOD1-L3-CX-2570 | 37d | 0d |  | PHE | Vendor Only |
| DC1-MOD1-L3-CX-2590 |  | DC1-MOD-01-F12 BMS/EPMS | 1d | 2026-03-09 | 2026-03-09 | DC1-MOD1-L3-CX-2580 | 37d |  |  | PRM |  |
|  | 07 | **DC1-DH1200-MOD-R12-01 Cx L3** |  | 2026-02-27 | 2026-03-04 |  |  |  |  |  |  |
| DC1-MOD1-L3-CX-2600 |  | DC1-MOD-01-R12 FTE | 1d | 2026-02-27 | 2026-02-27 | DC1-MOD01-L2-2200, DC1-SWD-L3-CX-2600 SS | 11d | 0d | Riley Warring | ROS |  |
| DC1-MOD1-L3-CX-2610 |  | DC1-MOD-01-R12 L3 Startup | 2d | 2026-03-02 | 2026-03-03 | DC1-MOD1-L3-CX-2600 | 40d | 0d |  | PHE | Vendor Only |
| DC1-MOD1-L3-CX-2620 |  | DC1-MOD-01-R12 BMS/EPMS | 1d | 2026-03-04 | 2026-03-04 | DC1-MOD1-L3-CX-2610 | 40d |  |  | PRM |  |
|  | 03 | **DC1-DH1200 UPS-M Cx L3** |  | 2026-03-05 | 2026-03-16 |  |  |  |  |  |  |
|  | 01 | **DC1-DH1200-UPS-M-A12-01 Cx L3** |  | 2026-03-05 | 2026-03-10 |  |  |  |  |  |  |
| DC1-UPSM-L3-CX-2420 |  | DC1-UPS-M-A12 FTE | 1d | 2026-03-05 | 2026-03-05 | DC1-UPS-M-L2-2140, DC1-COMP-L3-CX-2430, DC1-FAN-L3-CX-2430, DC1-MOD1-L3-CX-2420 | 11d | 0d | Riley Warring | ROS |  |
| DC1-UPSM-L3-CX-2430 |  | DC1-UPS-M-A12 L3 Startup | 2d | 2026-03-06 | 2026-03-09 | DC1-UPSM-L3-CX-2420 | 36d | 0d |  | VER |  |
| DC1-UPSM-L3-CX-2440 |  | DC1-UPS-M-A12 BMS/EPMS | 1d | 2026-03-10 | 2026-03-10 | DC1-UPSM-L3-CX-2430 | 36d |  |  | PRM |  |
|  | 02 | **DC1-DH1200-UPS-M-B12-01 Cx L3** |  | 2026-03-05 | 2026-03-10 |  |  |  |  |  |  |
| DC1-UPSM-L3-CX-2450 |  | DC1-UPS-M-B12 FTE | 1d | 2026-03-05 | 2026-03-05 | DC1-UPS-M-L2-2150, DC1-COMP-L3-CX-2460, DC1-FAN-L3-CX-2460, DC1-MOD1-L3-CX-2450 | 11d | 0d | Riley Warring | ROS |  |
| DC1-UPSM-L3-CX-2460 |  | DC1-UPS-M-B12 L3 Startup | 2d | 2026-03-06 | 2026-03-09 | DC1-UPSM-L3-CX-2450 | 36d | 0d |  | VER |  |
| DC1-UPSM-L3-CX-2470 |  | DC1-UPS-M-B12 BMS/EPMS | 1d | 2026-03-10 | 2026-03-10 | DC1-UPSM-L3-CX-2460 | 36d |  |  | PRM |  |

Notes:
- DC1-UPSM-L3-CX-2430: Steps: EC Startup Report; Vendor Startup
- DC1-UPSM-L3-CX-2460: Steps: EC Startup Report; Vendor Startup

| ID | WBS | Activity | Duration | Start | Finish | Predecessors | Total float | Free float | Layton Responsible Party | Vendor Responsible Party | Notes |
| --- | --- | --- | --- | --- | --- | --- | --- | --- | --- | --- | --- |
|  | 03 | **DC1-DH1200-UPS-M-C12-01 Cx L3** |  | 2026-03-05 | 2026-03-10 |  |  |  |  |  |  |
| DC1-UPSM-L3-CX-2480 |  | DC1-UPS-M-C12 FTE | 1d | 2026-03-05 | 2026-03-05 | DC1-UPS-M-L2-2160, DC1-COMP-L3-CX-2490, DC1-FAN-L3-CX-2490, DC1-MOD1-L3-CX-2480 | 11d | 0d | Riley Warring | ROS |  |
| DC1-UPSM-L3-CX-2490 |  | DC1-UPS-M-C12 L3 Startup | 2d | 2026-03-06 | 2026-03-09 | DC1-UPSM-L3-CX-2480 | 36d | 0d |  | VER |  |
| DC1-UPSM-L3-CX-2500 |  | DC1-UPS-M-C12 BMS/EPMS | 1d | 2026-03-10 | 2026-03-10 | DC1-UPSM-L3-CX-2490 | 36d |  |  | PRM |  |
|  | 04 | **DC1-DH1200-UPS-M-D12-01 Cx L3** |  | 2026-03-06 | 2026-03-11 |  |  |  |  |  |  |
| DC1-UPSM-L3-CX-2510 |  | DC1-UPS-M-D12 FTE | 1d | 2026-03-06 | 2026-03-06 | DC1-UPS-M-L2-2170, DC1-COMP-L3-CX-2520, DC1-FAN-L3-CX-2520, DC1-MOD1-L3-CX-2510 | 10d | 0d | Riley Warring | ROS |  |
| DC1-UPSM-L3-CX-2520 |  | DC1-UPS-M-D12 L3 Startup | 2d | 2026-03-09 | 2026-03-10 | DC1-UPSM-L3-CX-2510 | 35d | 0d |  | VER |  |
| DC1-UPSM-L3-CX-2530 |  | DC1-UPS-M-D12 BMS/EPMS | 1d | 2026-03-11 | 2026-03-11 | DC1-UPSM-L3-CX-2520 | 35d |  |  | PRM |  |
|  | 05 | **DC1-DH1200-UPS-M-E12-01 Cx L3** |  | 2026-03-09 | 2026-03-12 |  |  |  |  |  |  |
| DC1-UPSM-L3-CX-2540 |  | DC1-UPS-M-E12 FTE | 1d | 2026-03-09 | 2026-03-09 | DC1-UPS-M-L2-2180, DC1-COMP-L3-CX-2550, DC1-FAN-L3-CX-2550, DC1-MOD1-L3-CX-2540 | 9d | 0d | Riley Warring | ROS |  |
| DC1-UPSM-L3-CX-2550 |  | DC1-UPS-M-E12 L3 Startup | 2d | 2026-03-10 | 2026-03-11 | DC1-UPSM-L3-CX-2540 | 34d | 0d |  | VER |  |
| DC1-UPSM-L3-CX-2560 |  | DC1-UPS-M-E12 BMS/EPMS | 1d | 2026-03-12 | 2026-03-12 | DC1-UPSM-L3-CX-2550 | 34d |  |  | PRM |  |
|  | 06 | **DC1-DH1200-UPS-M-F12-01 Cx L3** |  | 2026-03-11 | 2026-03-16 |  |  |  |  |  |  |
| DC1-UPSM-L3-CX-2570 |  | DC1-UPS-M-F12 FTE | 1d | 2026-03-11 | 2026-03-11 | DC1-UPS-M-L2-2190, DC1-COMP-L3-CX-2580, DC1-FAN-L3-CX-2580, DC1-MOD1-L3-CX-2570 | 7d | 0d | Riley Warring | ROS |  |
| DC1-UPSM-L3-CX-2580 |  | DC1-UPS-M-F12 L3 Startup | 2d | 2026-03-12 | 2026-03-13 | DC1-UPSM-L3-CX-2570 | 32d | 0d |  | VER |  |
| DC1-UPSM-L3-CX-2590 |  | DC1-UPS-M-F12 BMS/EPMS | 1d | 2026-03-16 | 2026-03-16 | DC1-UPSM-L3-CX-2580 | 32d |  |  | PRM |  |
|  | 07 | **DC1-DH1200-UPS-M-R12-01 Cx L3** |  | 2026-03-05 | 2026-03-10 |  |  |  |  |  |  |
| DC1-UPSM-L3-CX-2600 |  | DC1-UPS-M-R12 FTE | 1d | 2026-03-05 | 2026-03-05 | DC1-UPS-M-L2-2200, DC1-COMP-L3-CX-2610, DC1-FAN-L3-CX-2610, DC1-MOD1-L3-CX-2600 | 11d | 0d | Riley Warring | ROS |  |
| DC1-UPSM-L3-CX-2610 |  | DC1-UPS-M-R12 L3 Startup | 2d | 2026-03-06 | 2026-03-09 | DC1-UPSM-L3-CX-2600 | 36d | 0d |  | VER |  |
| DC1-UPSM-L3-CX-2620 |  | DC1-UPS-M-R12 BMS/EPMS | 1d | 2026-03-10 | 2026-03-10 | DC1-UPSM-L3-CX-2610 | 36d |  |  | PRM |  |
|  | 04 | **DC1-DH1200 COMPRESSOR/FAN UNITS Cx L3** |  | 2026-03-02 | 2026-03-10 |  |  |  |  |  |  |
|  | 01 | **DC1-DH1200 POD-AC UNITS A12 Cx L3** |  | 2026-03-02 | 2026-03-05 |  |  |  |  |  |  |
| DC1-COMP-L3-CX-2420 |  | DC1-COMP-A12-01 FTE (2) | 1d | 2026-03-02 | 2026-03-02 | DC1-MOD1-L3-CX-2420 | 11d | 0d | Riley Warring | ROS |  |
| DC1-FAN-L3-CX-2420 |  | DC1-FAN-A12-01 FTE (2) | 1d | 2026-03-02 | 2026-03-02 | DC1-MOD1-L3-CX-2420 | 11d | 0d | Riley Warring | ROS |  |
| DC1-COMP-L3-CX-2430 |  | DC1-COMP-A12-01 L3 Startup (2) | 2d | 2026-03-03 | 2026-03-04 | DC1-COMP-L3-CX-2420 | 11d | 0d | Riley Warring | CAP | Vendor Only |
| DC1-FAN-L3-CX-2430 |  | DC1-FAN-A12-01 L3 Startup (2) | 2d | 2026-03-03 | 2026-03-04 | DC1-FAN-L3-CX-2420 | 11d | 0d | Riley Warring | FBB | Vendor Only |
| DC1-COMP-L3-CX-2440 |  | DC1-COMP-A12-01 BMS/EPMS (2) | 1d | 2026-03-05 | 2026-03-05 | DC1-COMP-L3-CX-2430 | 39d | 34d |  | PRM |  |
| DC1-FAN-L3-CX-2440 |  | DC1-FAN-A12-01 BMS/EPMS (2) | 1d | 2026-03-05 | 2026-03-05 | DC1-FAN-L3-CX-2430 | 39d | 34d |  | PRM |  |

Notes:
- DC1-UPSM-L3-CX-2490: Steps: EC Startup Report; Vendor Startup
- DC1-UPSM-L3-CX-2520: Steps: EC Startup Report; Vendor Startup
- DC1-UPSM-L3-CX-2550: Steps: EC Startup Report; Vendor Startup
- DC1-UPSM-L3-CX-2580: Steps: EC Startup Report; Vendor Startup
- DC1-UPSM-L3-CX-2610: Steps: EC Startup Report; Vendor Startup

| ID | WBS | Activity | Duration | Start | Finish | Predecessors | Total float | Free float | Layton Responsible Party | Vendor Responsible Party | Notes |
| --- | --- | --- | --- | --- | --- | --- | --- | --- | --- | --- | --- |
|  | 02 | **DC1-DH1200 POD-AC UNITS B12 Cx L3** |  | 2026-03-02 | 2026-03-05 |  |  |  |  |  |  |
| DC1-COMP-L3-CX-2450 |  | DC1-COMP-B12-01 FTE (2) | 1d | 2026-03-02 | 2026-03-02 | DC1-MOD1-L3-CX-2450 | 11d | 0d | Riley Warring | ROS |  |
| DC1-FAN-L3-CX-2450 |  | DC1-FAN-B12-01 FTE (2) | 1d | 2026-03-02 | 2026-03-02 | DC1-MOD1-L3-CX-2450 | 11d | 0d | Riley Warring | ROS |  |
| DC1-COMP-L3-CX-2460 |  | DC1-COMP-B12-01 L3 Startup (2) | 2d | 2026-03-03 | 2026-03-04 | DC1-COMP-L3-CX-2450 | 11d | 0d | Riley Warring | CAP | Vendor Only |
| DC1-FAN-L3-CX-2460 |  | DC1-FAN-B12-01 L3 Startup (2) | 2d | 2026-03-03 | 2026-03-04 | DC1-FAN-L3-CX-2450 | 11d | 0d | Riley Warring | FBB | Vendor Only |
| DC1-COMP-L3-CX-2470 |  | DC1-COMP-B12-01 BMS/EPMS (2) | 1d | 2026-03-05 | 2026-03-05 | DC1-COMP-L3-CX-2460 | 39d | 34d |  | PRM |  |
| DC1-FAN-L3-CX-2470 |  | DC1-FAN-B12-01 BMS/EPMS (2) | 1d | 2026-03-05 | 2026-03-05 | DC1-FAN-L3-CX-2460 | 39d | 34d |  | PRM |  |
|  | 03 | **DC1-DH1200 POD-AC UNITS C12 Cx L3** |  | 2026-03-02 | 2026-03-05 |  |  |  |  |  |  |
| DC1-COMP-L3-CX-2480 |  | DC1-COMP-C12-01 FTE (2) | 1d | 2026-03-02 | 2026-03-02 | DC1-MOD1-L3-CX-2480 | 11d | 0d | Riley Warring | ROS |  |
| DC1-FAN-L3-CX-2480 |  | DC1-FAN-C12-01 FTE (2) | 1d | 2026-03-02 | 2026-03-02 | DC1-MOD1-L3-CX-2480 | 11d | 0d | Riley Warring | ROS |  |
| DC1-COMP-L3-CX-2490 |  | DC1-COMP-C12-01 L3 Startup (2) | 2d | 2026-03-03 | 2026-03-04 | DC1-COMP-L3-CX-2480 | 11d | 0d | Riley Warring | CAP | Vendor Only |
| DC1-FAN-L3-CX-2490 |  | DC1-FAN-C12-01 L3 Startup (2) | 2d | 2026-03-03 | 2026-03-04 | DC1-FAN-L3-CX-2480 | 11d | 0d | Riley Warring | FBB | Vendor Only |
| DC1-COMP-L3-CX-2500 |  | DC1-COMP-C12-01 BMS/EPMS (2) | 1d | 2026-03-05 | 2026-03-05 | DC1-COMP-L3-CX-2490 | 39d | 34d |  | PRM |  |
| DC1-FAN-L3-CX-2500 |  | DC1-FAN-C12-01 BMS/EPMS (2) | 1d | 2026-03-05 | 2026-03-05 | DC1-FAN-L3-CX-2490 | 39d | 34d |  | PRM |  |
|  | 04 | **DC1-DH1200 POD-AC UNITS D12 Cx L3** |  | 2026-03-03 | 2026-03-06 |  |  |  |  |  |  |
| DC1-COMP-L3-CX-2510 |  | DC1-COMP-D12-01 FTE (2) | 1d | 2026-03-03 | 2026-03-03 | DC1-MOD1-L3-CX-2510 | 10d | 0d | Riley Warring | ROS |  |
| DC1-FAN-L3-CX-2510 |  | DC1-FAN-D12-01 FTE (2) | 1d | 2026-03-03 | 2026-03-03 | DC1-MOD1-L3-CX-2510 | 10d | 0d | Riley Warring | ROS |  |
| DC1-COMP-L3-CX-2520 |  | DC1-COMP-D12-01 L3 Startup (2) | 2d | 2026-03-04 | 2026-03-05 | DC1-COMP-L3-CX-2510 | 10d | 0d | Riley Warring | CAP | Vendor Only |
| DC1-FAN-L3-CX-2520 |  | DC1-FAN-D12-01 L3 Startup (2) | 2d | 2026-03-04 | 2026-03-05 | DC1-FAN-L3-CX-2510 | 10d | 0d | Riley Warring | FBB | Vendor Only |
| DC1-COMP-L3-CX-2530 |  | DC1-COMP-D12-01 BMS/EPMS (2) | 1d | 2026-03-06 | 2026-03-06 | DC1-COMP-L3-CX-2520 | 38d | 33d |  | PRM |  |
| DC1-FAN-L3-CX-2530 |  | DC1-FAN-D12-01 BMS/EPMS (2) | 1d | 2026-03-06 | 2026-03-06 | DC1-FAN-L3-CX-2520 | 38d | 33d |  | PRM |  |
|  | 05 | **DC1-DH1200 POD-AC UNITS E12 Cx L3** |  | 2026-03-04 | 2026-03-09 |  |  |  |  |  |  |
| DC1-COMP-L3-CX-2540 |  | DC1-COMP-E12-01 FTE (2) | 1d | 2026-03-04 | 2026-03-04 | DC1-MOD1-L3-CX-2540 | 9d | 0d | Riley Warring | ROS |  |
| DC1-FAN-L3-CX-2540 |  | DC1-FAN-E12-01 FTE (2) | 1d | 2026-03-04 | 2026-03-04 | DC1-MOD1-L3-CX-2540 | 9d | 0d | Riley Warring | ROS |  |
| DC1-COMP-L3-CX-2550 |  | DC1-COMP-E12-01 L3 Startup (2) | 2d | 2026-03-05 | 2026-03-06 | DC1-COMP-L3-CX-2540 | 9d | 0d | Riley Warring | CAP | Vendor Only |
| DC1-FAN-L3-CX-2550 |  | DC1-FAN-E12-01 L3 Startup (2) | 2d | 2026-03-05 | 2026-03-06 | DC1-FAN-L3-CX-2540 | 9d | 0d | Riley Warring | FBB | Vendor Only |
| DC1-COMP-L3-CX-2560 |  | DC1-COMP-E12-01 BMS/EPMS (2) | 1d | 2026-03-09 | 2026-03-09 | DC1-COMP-L3-CX-2550 | 37d | 32d |  | PRM |  |
| DC1-FAN-L3-CX-2560 |  | DC1-FAN-E12-01 BMS/EPMS (2) | 1d | 2026-03-09 | 2026-03-09 | DC1-FAN-L3-CX-2550 | 37d | 32d |  | PRM |  |

| ID | WBS | Activity | Duration | Start | Finish | Predecessors | Total float | Free float | Layton Responsible Party | Vendor Responsible Party | Notes |
| --- | --- | --- | --- | --- | --- | --- | --- | --- | --- | --- | --- |
|  | 06 | **DC1-DH1200 POD-AC UNITS F12 Cx L3** |  | 2026-03-05 | 2026-03-10 |  |  |  |  |  |  |
| DC1-COMP-L3-CX-2570 |  | DC1-COMP-F12-01 FTE (2) | 1d | 2026-03-05 | 2026-03-05 | DC1-MOD1-L3-CX-2570 | 8d | 0d | Riley Warring | ROS |  |
| DC1-FAN-L3-CX-2570 |  | DC1-FAN-F12-01 FTE (2) | 1d | 2026-03-05 | 2026-03-05 | DC1-MOD1-L3-CX-2570 | 8d | 0d | Riley Warring | ROS |  |
| DC1-COMP-L3-CX-2580 |  | DC1-COMP-F12-01 L3 Startup (2) | 2d | 2026-03-06 | 2026-03-09 | DC1-COMP-L3-CX-2570 | 8d | 0d | Riley Warring | CAP | Vendor Only |
| DC1-FAN-L3-CX-2580 |  | DC1-FAN-F12-01 L3 Startup (2) | 2d | 2026-03-06 | 2026-03-09 | DC1-FAN-L3-CX-2570 | 8d | 0d | Riley Warring | FBB | Vendor Only |
| DC1-COMP-L3-CX-2590 |  | DC1-COMP-F12-01 BMS/EPMS (2) | 1d | 2026-03-10 | 2026-03-10 | DC1-COMP-L3-CX-2580 | 36d | 31d |  | PRM |  |
| DC1-FAN-L3-CX-2590 |  | DC1-FAN-F12-01 BMS/EPMS (2) | 1d | 2026-03-10 | 2026-03-10 | DC1-FAN-L3-CX-2580 | 36d | 31d |  | PRM |  |
|  | 07 | **DC1-DH1200 POD-AC UNITS R12 Cx L3** |  | 2026-03-02 | 2026-03-05 |  |  |  |  |  |  |
| DC1-COMP-L3-CX-2600 |  | DC1-COMP-R12-01 FTE (2) | 1d | 2026-03-02 | 2026-03-02 | DC1-MOD1-L3-CX-2600 | 11d | 0d | Riley Warring | ROS |  |
| DC1-FAN-L3-CX-2600 |  | DC1-FAN-R12-01 FTE (2) | 1d | 2026-03-02 | 2026-03-02 | DC1-MOD1-L3-CX-2600 | 11d | 0d | Riley Warring | ROS |  |
| DC1-COMP-L3-CX-2610 |  | DC1-COMP-R12-01 L3 Startup (2) | 2d | 2026-03-03 | 2026-03-04 | DC1-COMP-L3-CX-2600 | 11d | 0d | Riley Warring | CAP | Vendor Only |
| DC1-FAN-L3-CX-2610 |  | DC1-FAN-R12-01 L3 Startup (2) | 2d | 2026-03-03 | 2026-03-04 | DC1-FAN-L3-CX-2600 | 11d | 0d | Riley Warring | FBB | Vendor Only |
| DC1-COMP-L3-CX-2620 |  | DC1-COMP-R12-01 BMS/EPMS (2) | 1d | 2026-03-05 | 2026-03-05 | DC1-COMP-L3-CX-2610 | 39d | 34d |  | PRM |  |
| DC1-FAN-L3-CX-2620 |  | DC1-FAN-R12-01 BMS/EPMS (2) | 1d | 2026-03-05 | 2026-03-05 | DC1-FAN-L3-CX-2610 | 39d | 34d |  | PRM |  |
|  | 04 | **DC1-DH1200 BUS-R1X/BUS-R2X Cx L3** |  | 2026-03-02 | 2026-03-24 |  |  |  |  |  |  |
|  | 01 | **DC1-DH1200 BUS-R1 CATCHER BUS DUCT Cx L3** |  | 2026-03-19 | 2026-03-24 |  |  |  |  |  |  |
| DC1-BUS-L3-CX-2120 |  | DC1-DH1200-BUS-R1 (R22) CATCHER BUS FTE | 1d | 2026-03-19 | 2026-03-19 | DC1-BUS-L2-1020, DC1-BUS-L2-1040, DC1-SWD-L3-CX-2600 SS | 25d | 0d | Riley Warring | ROS | CFCI |
| DC1-BUS-L3-CX-2130 |  | DC1-DH1200-BUS-R1 (R22) CATCHER BUS L3 Startup | 2d | 2026-03-20 | 2026-03-23 | DC1-BUS-L3-CX-2120 | 26d | 0d |  | LAY | CFCI |
| DC1-BUS-L3-CX-2140 |  | DC1-DH1200-BUS-R1 (R22) CATCHER BUS BMS/EPMS | 1d | 2026-03-24 | 2026-03-24 | DC1-BUS-L3-CX-2130 | 26d |  |  | PRM | CFCI |
|  | 02 | **DC1-DH1200 BUS-R2 MAINTENANCE BUS DUCT Cx L3** |  | 2026-03-02 | 2026-03-05 |  |  |  |  |  |  |
| DC1-BUS-L3-CX-2150 |  | DC1-DH1200-BUS-R2 (R12) MAINTENANCE BUS FTE | 1d | 2026-03-02 | 2026-03-02 | DC1-BUS-L2-1030, DC1-BUS-L2-1050, DC1-SWD-L3-CX-2600 | 37d | 0d | Riley Warring | ROS | CFCI |
| DC1-BUS-L3-CX-2160 |  | DC1-DH1200-BUS-R2 (R12) MAINTENANCE BUS L3 Startup | 2d | 2026-03-03 | 2026-03-04 | DC1-BUS-L3-CX-2150 | 39d | 0d |  | LAY | CFCI |
| DC1-BUS-L3-CX-2170 |  | DC1-DH1200-BUS-R2 (R12) MAINTENANCE BUS BMS/EPMS | 1d | 2026-03-05 | 2026-03-05 | DC1-BUS-L3-CX-2160 | 39d |  |  | PRM | CFCI |
|  | 05 | **DC1-DH1200 ATS Cx L3** |  | 2026-03-19 | 2026-03-24 |  |  |  |  |  |  |
|  | 01 | **DC1-DH1200 ATS-A12 Cx L3** |  | 2026-03-19 | 2026-03-24 |  |  |  |  |  |  |
|  | 01 | **DC1-DH1200-ATS-A12-01 Cx L3** |  | 2026-03-19 | 2026-03-24 |  |  |  |  |  |  |
| DC1-ATS-L3-CX-3625 |  | DC1-ATS-A12-01 FTE | 1d | 2026-03-19 | 2026-03-19 | DC1-ATS-L2-2720, DC1-BUS-L3-CX-2120 SS, DC1-SWD-L3-CX-2420 SS | 25d | 0d | Riley Warring | ROS | SWD - FS |
| DC1-ATS-L3-CX-3635 |  | DC1-ATS-A12-01 L3 Startup | 2d | 2026-03-20 | 2026-03-23 | DC1-ATS-L3-CX-3625 | 26d | 0d |  | MAV |  |
| DC1-ATS-L3-CX-3645 |  | DC1-ATS-A12-01 BMS/EPMS | 1d | 2026-03-24 | 2026-03-24 | DC1-ATS-L3-CX-3635 | 26d |  |  | PRM |  |

Notes:
- DC1-BUS-L3-CX-2130: Steps: EC Startup Report; Vendor Startup
- DC1-BUS-L3-CX-2160: Steps: EC Startup Report; Vendor Startup
- DC1-ATS-L3-CX-3635: Steps: EC Startup Report; Vendor Startup

| ID | WBS | Activity | Duration | Start | Finish | Predecessors | Total float | Free float | Notes | Layton Responsible Party | Vendor Responsible Party |
| --- | --- | --- | --- | --- | --- | --- | --- | --- | --- | --- | --- |
|  | 02 | **DC1-DH1200-ATS-A12-02 Cx L3** |  | 2026-03-19 | 2026-03-24 |  |  |  |  |  |  |
| DC1-ATS-L3-CX-3655 |  | DC1-ATS-A12-02 FTE | 1d | 2026-03-19 | 2026-03-19 | DC1-ATS-L2-2730, DC1-BUS-L3-CX-2120 SS, DC1-BUS-L3-CX-2150 SS | 25d | 0d | SWD - FS | Riley Warring | ROS |
| DC1-ATS-L3-CX-3665 |  | DC1-ATS-A12-02 L3 Startup | 2d | 2026-03-20 | 2026-03-23 | DC1-ATS-L3-CX-3655 | 26d | 0d |  |  | MAV |
| DC1-ATS-L3-CX-3675 |  | DC1-ATS-A12-02 BMS/EPMS | 1d | 2026-03-24 | 2026-03-24 | DC1-ATS-L3-CX-3665 | 26d |  |  |  | PRM |
|  | 03 | **DC1-DH1200-ATS-A12-03 Cx L3** |  | 2026-03-19 | 2026-03-24 |  |  |  |  |  |  |
| DC1-ATS-L3-CX-3685 |  | DC1-ATS-A12-03 FTE | 1d | 2026-03-19 | 2026-03-19 | DC1-ATS-L2-2740, DC1-BUS-L3-CX-2120 SS, DC1-SWD-L3-CX-2420 SS | 25d | 0d | SWD - FS | Riley Warring | ROS |
| DC1-ATS-L3-CX-3695 |  | DC1-ATS-A12-03 L3 Startup | 2d | 2026-03-20 | 2026-03-23 | DC1-ATS-L3-CX-3685 | 26d | 0d |  |  | MAV |
| DC1-ATS-L3-CX-3705 |  | DC1-ATS-A12-03 BMS/EPMS | 1d | 2026-03-24 | 2026-03-24 | DC1-ATS-L3-CX-3695 | 26d |  |  |  | PRM |
|  | 04 | **DC1-DH1200-ATS-A12-04 Cx L3** |  | 2026-03-19 | 2026-03-24 |  |  |  |  |  |  |
| DC1-ATS-L3-CX-3715 |  | DC1-ATS-A12-04 FTE | 1d | 2026-03-19 | 2026-03-19 | DC1-ATS-L2-2750, DC1-BUS-L3-CX-2120 SS, DC1-BUS-L3-CX-2150 SS | 25d | 0d | SWD - FS | Riley Warring | ROS |
| DC1-ATS-L3-CX-3725 |  | DC1-ATS-A12-04 L3 Startup | 2d | 2026-03-20 | 2026-03-23 | DC1-ATS-L3-CX-3715 | 26d | 0d |  |  | MAV |
| DC1-ATS-L3-CX-3735 |  | DC1-ATS-A12-04 BMS/EPMS | 1d | 2026-03-24 | 2026-03-24 | DC1-ATS-L3-CX-3725 | 26d |  |  |  | PRM |
|  | 05 | **DC1-DH1200-ATS-A12-05 Cx L3** |  | 2026-03-19 | 2026-03-24 |  |  |  |  |  |  |
| DC1-ATS-L3-CX-3745 |  | DC1-ATS-A12-05 FTE | 1d | 2026-03-19 | 2026-03-19 | DC1-ATS-L2-2760, DC1-BUS-L3-CX-2120 SS, DC1-SWD-L3-CX-2420 SS | 25d | 0d | SWD - FS | Riley Warring | ROS |
| DC1-ATS-L3-CX-3755 |  | DC1-ATS-A12-05 L3 Startup | 2d | 2026-03-20 | 2026-03-23 | DC1-ATS-L3-CX-3745 | 26d | 0d |  |  | MAV |
| DC1-ATS-L3-CX-3765 |  | DC1-ATS-A12-05 BMS/EPMS | 1d | 2026-03-24 | 2026-03-24 | DC1-ATS-L3-CX-3755 | 26d |  |  |  | PRM |
|  | 06 | **DC1-DH1200-ATS-A12-06 Cx L3** |  | 2026-03-19 | 2026-03-24 |  |  |  |  |  |  |
| DC1-ATS-L3-CX-3775 |  | DC1-ATS-A12-06 FTE | 1d | 2026-03-19 | 2026-03-19 | DC1-BUS-L3-CX-2120 SS, DC1-BUS-L3-CX-2150 SS, DC1-ATS-L2-2770 | 25d | 0d | SWD - FS | Riley Warring | ROS |
| DC1-ATS-L3-CX-3785 |  | DC1-ATS-A12-06 L3 Startup | 2d | 2026-03-20 | 2026-03-23 | DC1-ATS-L3-CX-3775 | 26d | 0d |  |  | MAV |
| DC1-ATS-L3-CX-3795 |  | DC1-ATS-A12-06 BMS/EPMS | 1d | 2026-03-24 | 2026-03-24 | DC1-ATS-L3-CX-3785 | 26d |  |  |  | PRM |
|  | 02 | **DC1-DH1200 ATS-B12 Cx L3** |  | 2026-03-19 | 2026-03-24 |  |  |  |  |  |  |
|  | 01 | **DC1-DH1200-ATS-B12-01 Cx L3** |  | 2026-03-19 | 2026-03-24 |  |  |  |  |  |  |
| DC1-ATS-L3-CX-3805 |  | DC1-ATS-B12-01 FTE | 1d | 2026-03-19 | 2026-03-19 | DC1-ATS-L2-2780, DC1-BUS-L3-CX-2120 SS, DC1-SWD-L3-CX-2450 SS | 25d | 0d |  | Riley Warring | ROS |
| DC1-ATS-L3-CX-3815 |  | DC1-ATS-B12-01 L3 Startup | 2d | 2026-03-20 | 2026-03-23 | DC1-ATS-L3-CX-3805 | 26d | 0d |  |  | MAV |
| DC1-ATS-L3-CX-3825 |  | DC1-ATS-B12-01 BMS/EPMS | 1d | 2026-03-24 | 2026-03-24 | DC1-ATS-L3-CX-3815 | 26d |  |  |  | PRM |

Notes:
- DC1-ATS-L3-CX-3665: Steps: EC Startup Report; Vendor Startup
- DC1-ATS-L3-CX-3695: Steps: EC Startup Report; Vendor Startup
- DC1-ATS-L3-CX-3725: Steps: EC Startup Report; Vendor Startup
- DC1-ATS-L3-CX-3755: Steps: EC Startup Report; Vendor Startup
- DC1-ATS-L3-CX-3785: Steps: EC Startup Report; Vendor Startup
- DC1-ATS-L3-CX-3815: Steps: EC Startup Report; Vendor Startup

| ID | WBS | Activity | Duration | Start | Finish | Predecessors | Total float | Free float | Layton Responsible Party | Vendor Responsible Party |
| --- | --- | --- | --- | --- | --- | --- | --- | --- | --- | --- |
|  | 02 | **DC1-DH1200-ATS-B12-02 Cx L3** |  | 2026-03-19 | 2026-03-24 |  |  |  |  |  |
| DC1-ATS-L3-CX-3835 |  | DC1-ATS-B12-02 FTE | 1d | 2026-03-19 | 2026-03-19 | DC1-ATS-L2-2790, DC1-BUS-L3-CX-2120 SS, DC1-BUS-L3-CX-2150 | 25d | 0d | Riley Warring | ROS |
| DC1-ATS-L3-CX-3845 |  | DC1-ATS-B12-02 L3 Startup | 2d | 2026-03-20 | 2026-03-23 | DC1-ATS-L3-CX-3835 | 26d | 0d |  | MAV |
| DC1-ATS-L3-CX-3855 |  | DC1-ATS-B12-02 BMS/EPMS | 1d | 2026-03-24 | 2026-03-24 | DC1-ATS-L3-CX-3845 | 26d |  |  | PRM |
|  | 03 | **DC1-DH1200-ATS-B12-03 Cx L3** |  | 2026-03-19 | 2026-03-24 |  |  |  |  |  |
| DC1-ATS-L3-CX-3865 |  | DC1-ATS-B12-03 FTE | 1d | 2026-03-19 | 2026-03-19 | DC1-ATS-L2-2800, DC1-BUS-L3-CX-2120 SS, DC1-SWD-L3-CX-2450 SS | 25d | 0d | Riley Warring | ROS |
| DC1-ATS-L3-CX-3875 |  | DC1-ATS-B12-03 L3 Startup | 2d | 2026-03-20 | 2026-03-23 | DC1-ATS-L3-CX-3865 | 26d | 0d |  | MAV |
| DC1-ATS-L3-CX-3885 |  | DC1-ATS-B12-03 BMS/EPMS | 1d | 2026-03-24 | 2026-03-24 | DC1-ATS-L3-CX-3875 | 26d |  |  | PRM |
|  | 04 | **DC1-DH1200-ATS-B12-04 Cx L3** |  | 2026-03-19 | 2026-03-24 |  |  |  |  |  |
| DC1-ATS-L3-CX-3895 |  | DC1-ATS-B12-04 FTE | 1d | 2026-03-19 | 2026-03-19 | DC1-ATS-L2-2810, DC1-BUS-L3-CX-2120 SS, DC1-BUS-L3-CX-2150 | 25d | 0d | Riley Warring | ROS |
| DC1-ATS-L3-CX-3905 |  | DC1-ATS-B12-04 L3 Startup | 2d | 2026-03-20 | 2026-03-23 | DC1-ATS-L3-CX-3895 | 26d | 0d |  | MAV |
| DC1-ATS-L3-CX-3915 |  | DC1-ATS-B12-04 BMS/EPMS | 1d | 2026-03-24 | 2026-03-24 | DC1-ATS-L3-CX-3905 | 26d |  |  | PRM |
|  | 05 | **DC1-DH1200-ATS-B12-05 Cx L3** |  | 2026-03-19 | 2026-03-24 |  |  |  |  |  |
| DC1-ATS-L3-CX-3925 |  | DC1-ATS-B12-05 FTE | 1d | 2026-03-19 | 2026-03-19 | DC1-ATS-L2-2820, DC1-BUS-L3-CX-2120 SS, DC1-SWD-L3-CX-2450 SS | 25d | 0d | Riley Warring | ROS |
| DC1-ATS-L3-CX-3935 |  | DC1-ATS-B12-05 L3 Startup | 2d | 2026-03-20 | 2026-03-23 | DC1-ATS-L3-CX-3925 | 26d | 0d |  | MAV |
| DC1-ATS-L3-CX-3945 |  | DC1-ATS-B12-05 BMS/EPMS | 1d | 2026-03-24 | 2026-03-24 | DC1-ATS-L3-CX-3935 | 26d |  |  | PRM |
|  | 06 | **DC1-DH1200-ATS-B12-06 Cx L3** |  | 2026-03-19 | 2026-03-24 |  |  |  |  |  |
| DC1-ATS-L3-CX-3955 |  | DC1-ATS-B12-06 FTE | 1d | 2026-03-19 | 2026-03-19 | DC1-ATS-L2-2830, DC1-BUS-L3-CX-2120 SS, DC1-BUS-L3-CX-2150 | 25d | 0d | Riley Warring | ROS |
| DC1-ATS-L3-CX-3965 |  | DC1-ATS-B12-06 L3 Startup | 2d | 2026-03-20 | 2026-03-23 | DC1-ATS-L3-CX-3955 | 26d | 0d |  | MAV |
| DC1-ATS-L3-CX-3975 |  | DC1-ATS-B12-06 BMS/EPMS | 1d | 2026-03-24 | 2026-03-24 | DC1-ATS-L3-CX-3965 | 26d |  |  | PRM |
|  | 03 | **DC1-DH1200 ATS-C12 Cx L3** |  | 2026-03-19 | 2026-03-24 |  |  |  |  |  |
|  | 01 | **DC1-DH1200-ATS-C12-01 Cx L3** |  | 2026-03-19 | 2026-03-24 |  |  |  |  |  |
| DC1-ATS-L3-CX-3985 |  | DC1-ATS-C12-01 FTE | 1d | 2026-03-19 | 2026-03-19 | DC1-ATS-L2-2840, DC1-BUS-L3-CX-2120 SS, DC1-SWD-L3-CX-2480 SS | 25d | 0d | Riley Warring | ROS |
| DC1-ATS-L3-CX-3995 |  | DC1-ATS-C12-01 L3 Startup | 2d | 2026-03-20 | 2026-03-23 | DC1-ATS-L3-CX-3985 | 26d | 0d |  | MAV |
| DC1-ATS-L3-CX-4005 |  | DC1-ATS-C12-01 BMS/EPMS | 1d | 2026-03-24 | 2026-03-24 | DC1-ATS-L3-CX-3995 | 26d |  |  | PRM |

Notes:
- DC1-ATS-L3-CX-3845: Steps: EC Startup Report; Vendor Startup
- DC1-ATS-L3-CX-3875: Steps: EC Startup Report; Vendor Startup
- DC1-ATS-L3-CX-3905: Steps: EC Startup Report; Vendor Startup
- DC1-ATS-L3-CX-3935: Steps: EC Startup Report; Vendor Startup
- DC1-ATS-L3-CX-3965: Steps: EC Startup Report; Vendor Startup
- DC1-ATS-L3-CX-3995: Steps: EC Startup Report; Vendor Startup

| ID | WBS | Activity | Duration | Start | Finish | Predecessors | Total float | Free float | Layton Responsible Party | Vendor Responsible Party |
| --- | --- | --- | --- | --- | --- | --- | --- | --- | --- | --- |
|  | 02 | **DC1-DH1200-ATS-C12-02 Cx L3** |  | 2026-03-19 | 2026-03-24 |  |  |  |  |  |
| DC1-ATS-L3-CX-4015 |  | DC1-ATS-C12-02 FTE | 1d | 2026-03-19 | 2026-03-19 | DC1-ATS-L2-2850, DC1-BUS-L3-CX-2120 SS, DC1-BUS-L3-CX-2150 | 25d | 0d | Riley Warring | ROS |
| DC1-ATS-L3-CX-4025 |  | DC1-ATS-C12-02 L3 Startup | 2d | 2026-03-20 | 2026-03-23 | DC1-ATS-L3-CX-4015 | 26d | 0d |  | MAV |
| DC1-ATS-L3-CX-4035 |  | DC1-ATS-C12-02 BMS/EPMS | 1d | 2026-03-24 | 2026-03-24 | DC1-ATS-L3-CX-4025 | 26d |  |  | PRM |
|  | 03 | **DC1-DH1200-ATS-C12-03 Cx L3** |  | 2026-03-19 | 2026-03-24 |  |  |  |  |  |
| DC1-ATS-L3-CX-4045 |  | DC1-ATS-C12-03 FTE | 1d | 2026-03-19 | 2026-03-19 | DC1-ATS-L2-2860, DC1-BUS-L3-CX-2120 SS, DC1-SWD-L3-CX-2480 SS | 25d | 0d | Riley Warring | ROS |
| DC1-ATS-L3-CX-4055 |  | DC1-ATS-C12-03 L3 Startup | 2d | 2026-03-20 | 2026-03-23 | DC1-ATS-L3-CX-4045 | 26d | 0d |  | MAV |
| DC1-ATS-L3-CX-4065 |  | DC1-ATS-C12-03 BMS/EPMS | 1d | 2026-03-24 | 2026-03-24 | DC1-ATS-L3-CX-4055 | 26d |  |  | PRM |
|  | 04 | **DC1-DH1200-ATS-C12-04 Cx L3** |  | 2026-03-19 | 2026-03-24 |  |  |  |  |  |
| DC1-ATS-L3-CX-4075 |  | DC1-ATS-C12-04 FTE | 1d | 2026-03-19 | 2026-03-19 | DC1-ATS-L2-2870, DC1-BUS-L3-CX-2120 SS, DC1-BUS-L3-CX-2150 | 25d | 0d | Riley Warring | ROS |
| DC1-ATS-L3-CX-4085 |  | DC1-ATS-C12-04 L3 Startup | 2d | 2026-03-20 | 2026-03-23 | DC1-ATS-L3-CX-4075 | 26d | 0d |  | MAV |
| DC1-ATS-L3-CX-4095 |  | DC1-ATS-C12-04 BMS/EPMS | 1d | 2026-03-24 | 2026-03-24 | DC1-ATS-L3-CX-4085 | 26d |  |  | PRM |
|  | 05 | **DC1-DH1200-ATS-C12-05 Cx L3** |  | 2026-03-19 | 2026-03-24 |  |  |  |  |  |
| DC1-ATS-L3-CX-4105 |  | DC1-ATS-C12-05 FTE | 1d | 2026-03-19 | 2026-03-19 | DC1-ATS-L2-2880, DC1-BUS-L3-CX-2120 SS, DC1-SWD-L3-CX-2480 SS | 25d | 0d | Riley Warring | ROS |
| DC1-ATS-L3-CX-4115 |  | DC1-ATS-C12-05 L3 Startup | 2d | 2026-03-20 | 2026-03-23 | DC1-ATS-L3-CX-4105 | 26d | 0d |  | MAV |
| DC1-ATS-L3-CX-4125 |  | DC1-ATS-C12-05 BMS/EPMS | 1d | 2026-03-24 | 2026-03-24 | DC1-ATS-L3-CX-4115 | 26d |  |  | PRM |
|  | 06 | **DC1-DH1200-ATS-C12-06 Cx L3** |  | 2026-03-19 | 2026-03-24 |  |  |  |  |  |
| DC1-ATS-L3-CX-4135 |  | DC1-ATS-C12-06 FTE | 1d | 2026-03-19 | 2026-03-19 | DC1-ATS-L2-2890, DC1-BUS-L3-CX-2120 SS, DC1-BUS-L3-CX-2150 | 25d | 0d | Riley Warring | ROS |
| DC1-ATS-L3-CX-4145 |  | DC1-ATS-C12-06 L3 Startup | 2d | 2026-03-20 | 2026-03-23 | DC1-ATS-L3-CX-4135 | 26d | 0d |  | MAV |
| DC1-ATS-L3-CX-4155 |  | DC1-ATS-C12-06 BMS/EPMS | 1d | 2026-03-24 | 2026-03-24 | DC1-ATS-L3-CX-4145 | 26d |  |  | PRM |
|  | 04 | **DC1-DH1200 ATS-D12 Cx L3** |  | 2026-03-19 | 2026-03-24 |  |  |  |  |  |
|  | 01 | **DC1-DH1200-ATS-D12-01 Cx L3** |  | 2026-03-19 | 2026-03-24 |  |  |  |  |  |
| DC1-ATS-L3-CX-4165 |  | DC1-ATS-D12-01 FTE | 1d | 2026-03-19 | 2026-03-19 | DC1-ATS-L2-2900, DC1-BUS-L3-CX-2120 SS, DC1-SWD-L3-CX-2510 SS | 25d | 0d | Riley Warring | ROS |
| DC1-ATS-L3-CX-4175 |  | DC1-ATS-D12-01 L3 Startup | 2d | 2026-03-20 | 2026-03-23 | DC1-ATS-L3-CX-4165 | 26d | 0d |  | MAV |
| DC1-ATS-L3-CX-4185 |  | DC1-ATS-D12-01 BMS/EPMS | 1d | 2026-03-24 | 2026-03-24 | DC1-ATS-L3-CX-4175 | 26d |  |  | PRM |

Notes:
- DC1-ATS-L3-CX-4025: Steps: EC Startup Report; Vendor Startup
- DC1-ATS-L3-CX-4055: Steps: EC Startup Report; Vendor Startup
- DC1-ATS-L3-CX-4085: Steps: EC Startup Report; Vendor Startup
- DC1-ATS-L3-CX-4115: Steps: EC Startup Report; Vendor Startup
- DC1-ATS-L3-CX-4145: Steps: EC Startup Report; Vendor Startup
- DC1-ATS-L3-CX-4175: Steps: EC Startup Report; Vendor Startup

| ID | WBS | Activity | Duration | Start | Finish | Predecessors | Total float | Free float | Layton Responsible Party | Vendor Responsible Party |
| --- | --- | --- | --- | --- | --- | --- | --- | --- | --- | --- |
|  | 02 | **DC1-DH1200-ATS-D12-02 Cx L3** |  | 2026-03-19 | 2026-03-24 |  |  |  |  |  |
| DC1-ATS-L3-CX-4195 |  | DC1-ATS-D12-02 FTE | 1d | 2026-03-19 | 2026-03-19 | DC1-ATS-L2-2910, DC1-BUS-L3-CX-2120 SS, DC1-BUS-L3-CX-2150 | 25d | 0d | Riley Warring | ROS |
| DC1-ATS-L3-CX-4205 |  | DC1-ATS-D12-02 L3 Startup | 2d | 2026-03-20 | 2026-03-23 | DC1-ATS-L3-CX-4195 | 26d | 0d |  | MAV |
| DC1-ATS-L3-CX-4215 |  | DC1-ATS-D12-02 BMS/EPMS | 1d | 2026-03-24 | 2026-03-24 | DC1-ATS-L3-CX-4205 | 26d |  |  | PRM |
|  | 03 | **DC1-DH1200-ATS-D12-03 Cx L3** |  | 2026-03-19 | 2026-03-24 |  |  |  |  |  |
| DC1-ATS-L3-CX-4225 |  | DC1-ATS-D12-03 FTE | 1d | 2026-03-19 | 2026-03-19 | DC1-ATS-L2-2920, DC1-BUS-L3-CX-2120 SS, DC1-SWD-L3-CX-2510 SS | 25d | 0d | Riley Warring | ROS |
| DC1-ATS-L3-CX-4235 |  | DC1-ATS-D12-03 L3 Startup | 2d | 2026-03-20 | 2026-03-23 | DC1-ATS-L3-CX-4225 | 26d | 0d |  | MAV |
| DC1-ATS-L3-CX-4245 |  | DC1-ATS-D12-03 BMS/EPMS | 1d | 2026-03-24 | 2026-03-24 | DC1-ATS-L3-CX-4235 | 26d |  |  | PRM |
|  | 04 | **DC1-DH1200-ATS-D12-04 Cx L3** |  | 2026-03-19 | 2026-03-24 |  |  |  |  |  |
| DC1-ATS-L3-CX-4255 |  | DC1-ATS-D12-04 FTE | 1d | 2026-03-19 | 2026-03-19 | DC1-ATS-L2-2930, DC1-BUS-L3-CX-2120 SS, DC1-BUS-L3-CX-2150 | 25d | 0d | Riley Warring | ROS |
| DC1-ATS-L3-CX-4265 |  | DC1-ATS-D12-04 L3 Startup | 2d | 2026-03-20 | 2026-03-23 | DC1-ATS-L3-CX-4255 | 26d | 0d |  | MAV |
| DC1-ATS-L3-CX-4275 |  | DC1-ATS-D12-04 BMS/EPMS | 1d | 2026-03-24 | 2026-03-24 | DC1-ATS-L3-CX-4265 | 26d |  |  | PRM |
|  | 05 | **DC1-DH1200-ATS-D12-05 Cx L3** |  | 2026-03-19 | 2026-03-24 |  |  |  |  |  |
| DC1-ATS-L3-CX-4285 |  | DC1-ATS-D12-05 FTE | 1d | 2026-03-19 | 2026-03-19 | DC1-ATS-L2-2940, DC1-BUS-L3-CX-2120 SS, DC1-SWD-L3-CX-2510 SS | 25d | 0d | Riley Warring | ROS |
| DC1-ATS-L3-CX-4295 |  | DC1-ATS-D12-05 L3 Startup | 2d | 2026-03-20 | 2026-03-23 | DC1-ATS-L3-CX-4285 | 26d | 0d |  | MAV |
| DC1-ATS-L3-CX-4305 |  | DC1-ATS-D12-05 BMS/EPMS | 1d | 2026-03-24 | 2026-03-24 | DC1-ATS-L3-CX-4295 | 26d |  |  | PRM |
|  | 06 | **DC1-DH1200-ATS-D12-06 Cx L3** |  | 2026-03-19 | 2026-03-24 |  |  |  |  |  |
| DC1-ATS-L3-CX-4315 |  | DC1-ATS-D12-06 FTE | 1d | 2026-03-19 | 2026-03-19 | DC1-ATS-L2-2950, DC1-BUS-L3-CX-2120 SS, DC1-BUS-L3-CX-2150 | 25d | 0d | Riley Warring | ROS |
| DC1-ATS-L3-CX-4325 |  | DC1-ATS-D12-06 L3 Startup | 2d | 2026-03-20 | 2026-03-23 | DC1-ATS-L3-CX-4315 | 26d | 0d |  | MAV |
| DC1-ATS-L3-CX-4335 |  | DC1-ATS-D12-06 BMS/EPMS | 1d | 2026-03-24 | 2026-03-24 | DC1-ATS-L3-CX-4325 | 26d |  |  | PRM |
|  | 05 | **DC1-DH1200 ATS-E12 Cx L3** |  | 2026-03-19 | 2026-03-24 |  |  |  |  |  |
|  | 01 | **DC1-DH1200-ATS-E12-01 Cx L3** |  | 2026-03-19 | 2026-03-24 |  |  |  |  |  |
| DC1-ATS-L3-CX-4345 |  | DC1-ATS-E12-01 FTE | 1d | 2026-03-19 | 2026-03-19 | DC1-ATS-L2-2960, DC1-BUS-L3-CX-2120 SS, DC1-SWD-L3-CX-2540 SS | 25d | 0d | Riley Warring | ROS |
| DC1-ATS-L3-CX-4355 |  | DC1-ATS-E12-01 L3 Startup | 2d | 2026-03-20 | 2026-03-23 | DC1-ATS-L3-CX-4345 | 26d | 0d |  | MAV |
| DC1-ATS-L3-CX-4365 |  | DC1-ATS-E12-01 BMS/EPMS | 1d | 2026-03-24 | 2026-03-24 | DC1-ATS-L3-CX-4355 | 26d |  |  | PRM |

Notes:
- DC1-ATS-L3-CX-4205: Steps: EC Startup Report; Vendor Startup
- DC1-ATS-L3-CX-4235: Steps: EC Startup Report; Vendor Startup
- DC1-ATS-L3-CX-4265: Steps: EC Startup Report; Vendor Startup
- DC1-ATS-L3-CX-4295: Steps: EC Startup Report; Vendor Startup
- DC1-ATS-L3-CX-4325: Steps: EC Startup Report; Vendor Startup
- DC1-ATS-L3-CX-4355: Steps: EC Startup Report; Vendor Startup

| ID | WBS | Activity | Duration | Start | Finish | Predecessors | Total float | Free float | Layton Responsible Party | Vendor Responsible Party |
| --- | --- | --- | --- | --- | --- | --- | --- | --- | --- | --- |
|  | 02 | **DC1-DH1200-ATS-E12-02 Cx L3** |  | 2026-03-19 | 2026-03-24 |  |  |  |  |  |
| DC1-ATS-L3-CX-4375 |  | DC1-ATS-E12-02 FTE | 1d | 2026-03-19 | 2026-03-19 | DC1-ATS-L2-2970, DC1-BUS-L3-CX-2120 SS, DC1-BUS-L3-CX-2150 | 25d | 0d | Riley Warring | ROS |
| DC1-ATS-L3-CX-4385 |  | DC1-ATS-E12-02 L3 Startup | 2d | 2026-03-20 | 2026-03-23 | DC1-ATS-L3-CX-4375 | 26d | 0d |  | MAV |
| DC1-ATS-L3-CX-4395 |  | DC1-ATS-E12-02 BMS/EPMS | 1d | 2026-03-24 | 2026-03-24 | DC1-ATS-L3-CX-4385 | 26d |  |  | PRM |
|  | 03 | **DC1-DH1200-ATS-E12-03 Cx L3** |  | 2026-03-19 | 2026-03-24 |  |  |  |  |  |
| DC1-ATS-L3-CX-4405 |  | DC1-ATS-E12-03 FTE | 1d | 2026-03-19 | 2026-03-19 | DC1-ATS-L2-2980, DC1-BUS-L3-CX-2120 SS, DC1-SWD-L3-CX-2540 SS | 25d | 0d | Riley Warring | ROS |
| DC1-ATS-L3-CX-4415 |  | DC1-ATS-E12-03 L3 Startup | 2d | 2026-03-20 | 2026-03-23 | DC1-ATS-L3-CX-4405 | 26d | 0d |  | MAV |
| DC1-ATS-L3-CX-4425 |  | DC1-ATS-E12-03 BMS/EPMS | 1d | 2026-03-24 | 2026-03-24 | DC1-ATS-L3-CX-4415 | 26d |  |  | PRM |
|  | 04 | **DC1-DH1200-ATS-E12-04 Cx L3** |  | 2026-03-19 | 2026-03-24 |  |  |  |  |  |
| DC1-ATS-L3-CX-4435 |  | DC1-ATS-E12-04 FTE | 1d | 2026-03-19 | 2026-03-19 | DC1-ATS-L2-2990, DC1-BUS-L3-CX-2120 SS, DC1-BUS-L3-CX-2150 | 25d | 0d | Riley Warring | ROS |
| DC1-ATS-L3-CX-4445 |  | DC1-ATS-E12-04 L3 Startup | 2d | 2026-03-20 | 2026-03-23 | DC1-ATS-L3-CX-4435 | 26d | 0d |  | MAV |
| DC1-ATS-L3-CX-4455 |  | DC1-ATS-E12-04 BMS/EPMS | 1d | 2026-03-24 | 2026-03-24 | DC1-ATS-L3-CX-4445 | 26d |  |  | PRM |
|  | 05 | **DC1-DH1200-ATS-E12-05 Cx L3** |  | 2026-03-19 | 2026-03-24 |  |  |  |  |  |
| DC1-ATS-L3-CX-4465 |  | DC1-ATS-E12-05 FTE | 1d | 2026-03-19 | 2026-03-19 | DC1-ATS-L2-3000, DC1-BUS-L3-CX-2120 SS, DC1-SWD-L3-CX-2540 SS | 25d | 0d | Riley Warring | ROS |
| DC1-ATS-L3-CX-4475 |  | DC1-ATS-E12-05 L3 Startup | 2d | 2026-03-20 | 2026-03-23 | DC1-ATS-L3-CX-4465 | 26d | 0d |  | MAV |
| DC1-ATS-L3-CX-4485 |  | DC1-ATS-E12-05 BMS/EPMS | 1d | 2026-03-24 | 2026-03-24 | DC1-ATS-L3-CX-4475 | 26d |  |  | PRM |
|  | 06 | **DC1-DH1200-ATS-E12-06 Cx L3** |  | 2026-03-19 | 2026-03-24 |  |  |  |  |  |
| DC1-ATS-L3-CX-4495 |  | DC1-ATS-E12-06 FTE | 1d | 2026-03-19 | 2026-03-19 | DC1-ATS-L2-3010, DC1-BUS-L3-CX-2120 SS, DC1-BUS-L3-CX-2150 | 25d | 0d | Riley Warring | ROS |
| DC1-ATS-L3-CX-4505 |  | DC1-ATS-E12-06 L3 Startup | 2d | 2026-03-20 | 2026-03-23 | DC1-ATS-L3-CX-4495 | 26d | 0d |  | MAV |
| DC1-ATS-L3-CX-4515 |  | DC1-ATS-E12-06 BMS/EPMS | 1d | 2026-03-24 | 2026-03-24 | DC1-ATS-L3-CX-4505 | 26d |  |  | PRM |
|  | 06 | **DC1-DH1200 ATS-F12 Cx L3** |  | 2026-03-19 | 2026-03-24 |  |  |  |  |  |
|  | 01 | **DC1-DH1200-ATS-F12-01 Cx L3** |  | 2026-03-19 | 2026-03-24 |  |  |  |  |  |
| DC1-ATS-L3-CX-4525 |  | DC1-ATS-F12-01 FTE | 1d | 2026-03-19 | 2026-03-19 | DC1-ATS-L2-3020, DC1-BUS-L3-CX-2120 SS, DC1-SWD-L3-CX-2570 SS | 25d | 0d | Riley Warring | ROS |
| DC1-ATS-L3-CX-4535 |  | DC1-ATS-F12-01 L3 Startup | 2d | 2026-03-20 | 2026-03-23 | DC1-ATS-L3-CX-4525 | 26d | 0d |  | MAV |
| DC1-ATS-L3-CX-4545 |  | DC1-ATS-F12-01 BMS/EPMS | 1d | 2026-03-24 | 2026-03-24 | DC1-ATS-L3-CX-4535 | 26d |  |  | PRM |

Notes:
- DC1-ATS-L3-CX-4385: Steps: EC Startup Report; Vendor Startup
- DC1-ATS-L3-CX-4415: Steps: EC Startup Report; Vendor Startup
- DC1-ATS-L3-CX-4445: Steps: EC Startup Report; Vendor Startup
- DC1-ATS-L3-CX-4475: Steps: EC Startup Report; Vendor Startup
- DC1-ATS-L3-CX-4505: Steps: EC Startup Report; Vendor Startup
- DC1-ATS-L3-CX-4535: Steps: EC Startup Report; Vendor Startup

| ID | WBS | Activity | Duration | Start | Finish | Predecessors | Total float | Free float | Layton Responsible Party | Vendor Responsible Party |
| --- | --- | --- | --- | --- | --- | --- | --- | --- | --- | --- |
|  | 02 | **DC1-DH1200-ATS-F12-02 Cx L3** |  | 2026-03-19 | 2026-03-24 |  |  |  |  |  |
| DC1-ATS-L3-CX-4555 |  | DC1-ATS-F12-02 FTE | 1d | 2026-03-19 | 2026-03-19 | DC1-ATS-L2-3030, DC1-BUS-L3-CX-2120 SS, DC1-BUS-L3-CX-2150 | 25d | 0d | Riley Warring | ROS |
| DC1-ATS-L3-CX-4565 |  | DC1-ATS-F12-02 L3 Startup | 2d | 2026-03-20 | 2026-03-23 | DC1-ATS-L3-CX-4555 | 26d | 0d |  | MAV |
| DC1-ATS-L3-CX-4575 |  | DC1-ATS-F12-02 BMS/EPMS | 1d | 2026-03-24 | 2026-03-24 | DC1-ATS-L3-CX-4565 | 26d |  |  | PRM |
|  | 03 | **DC1-DH1200-ATS-F12-03 Cx L3** |  | 2026-03-19 | 2026-03-24 |  |  |  |  |  |
| DC1-ATS-L3-CX-4585 |  | DC1-ATS-F12-03 FTE | 1d | 2026-03-19 | 2026-03-19 | DC1-ATS-L2-3040, DC1-BUS-L3-CX-2120 SS, DC1-SWD-L3-CX-2570 SS | 25d | 0d | Riley Warring | ROS |
| DC1-ATS-L3-CX-4595 |  | DC1-ATS-F12-03 L3 Startup | 2d | 2026-03-20 | 2026-03-23 | DC1-ATS-L3-CX-4585 | 26d | 0d |  | MAV |
| DC1-ATS-L3-CX-4605 |  | DC1-ATS-F12-03 BMS/EPMS | 1d | 2026-03-24 | 2026-03-24 | DC1-ATS-L3-CX-4595 | 26d |  |  | PRM |
|  | 04 | **DC1-DH1200-ATS-F12-04 Cx L3** |  | 2026-03-19 | 2026-03-24 |  |  |  |  |  |
| DC1-ATS-L3-CX-4615 |  | DC1-ATS-F12-04 FTE | 1d | 2026-03-19 | 2026-03-19 | DC1-ATS-L2-3050, DC1-BUS-L3-CX-2120 SS, DC1-BUS-L3-CX-2150 | 25d | 0d | Riley Warring | ROS |
| DC1-ATS-L3-CX-4625 |  | DC1-ATS-F12-04 L3 Startup | 2d | 2026-03-20 | 2026-03-23 | DC1-ATS-L3-CX-4615 | 26d | 0d |  | MAV |
| DC1-ATS-L3-CX-4635 |  | DC1-ATS-F12-04 BMS/EPMS | 1d | 2026-03-24 | 2026-03-24 | DC1-ATS-L3-CX-4625 | 26d |  |  | PRM |
|  | 05 | **DC1-DH1200-ATS-F12-05 Cx L3** |  | 2026-03-19 | 2026-03-24 |  |  |  |  |  |
| DC1-ATS-L3-CX-4645 |  | DC1-ATS-F12-05 FTE | 1d | 2026-03-19 | 2026-03-19 | DC1-ATS-L2-3060, DC1-BUS-L3-CX-2120 SS, DC1-SWD-L3-CX-2570 SS | 25d | 0d | Riley Warring | ROS |
| DC1-ATS-L3-CX-4655 |  | DC1-ATS-F12-05 L3 Startup | 2d | 2026-03-20 | 2026-03-23 | DC1-ATS-L3-CX-4645 | 26d | 0d |  | MAV |
| DC1-ATS-L3-CX-4665 |  | DC1-ATS-F12-05 BMS/EPMS | 1d | 2026-03-24 | 2026-03-24 | DC1-ATS-L3-CX-4655 | 26d |  |  | PRM |
|  | 06 | **DC1-DH1200-ATS-F12-06 Cx L3** |  | 2026-03-19 | 2026-03-24 |  |  |  |  |  |
| DC1-ATS-L3-CX-4675 |  | DC1-ATS-F12-06 FTE | 1d | 2026-03-19 | 2026-03-19 | DC1-ATS-L2-3070, DC1-BUS-L3-CX-2120 SS, DC1-BUS-L3-CX-2150 | 25d | 0d | Riley Warring | ROS |
| DC1-ATS-L3-CX-4685 |  | DC1-ATS-F12-06 L3 Startup | 2d | 2026-03-20 | 2026-03-23 | DC1-ATS-L3-CX-4675 | 26d | 0d |  | MAV |
| DC1-ATS-L3-CX-4695 |  | DC1-ATS-F12-06 BMS/EPMS | 1d | 2026-03-24 | 2026-03-24 | DC1-ATS-L3-CX-4685 | 26d |  |  | PRM |
|  | 06 | **DC1-DH1200 CODs Cx L3** |  | 2026-03-20 | 2026-03-25 |  |  |  |  |  |
|  | 01 | **DC1-DH1200-COD-A12 Cx L3** |  | 2026-03-20 | 2026-03-25 |  |  |  |  |  |
|  | 01 | **DC1-DH1200-COD-A12-01 Cx L3** |  | 2026-03-20 | 2026-03-25 |  |  |  |  |  |
| DC1-COD-L3-CX-3625 |  | DC1-COD-A12-01 FTE | 1d | 2026-03-20 | 2026-03-20 | DC1-COD-L2-2720, DC1-ATS-L3-CX-3625, QTS-1080.4 FS+3d | 25d | 0d | Riley Warring | ROS |
| DC1-COD-L3-CX-3635 |  | DC1-COD-A12-01 L3 Startup | 2d | 2026-03-23 | 2026-03-24 | DC1-COD-L3-CX-3625 | 25d | 0d | Riley Warring | SIE |
| DC1-COD-L3-CX-3645 |  | DC1-COD-A12-01 BMS/EPMS | 1d | 2026-03-25 | 2026-03-25 | DC1-COD-L3-CX-3635 | 25d |  | Riley Warring | PRM |

Notes:
- DC1-ATS-L3-CX-4565: Steps: EC Startup Report; Vendor Startup
- DC1-ATS-L3-CX-4595: Steps: EC Startup Report; Vendor Startup
- DC1-ATS-L3-CX-4625: Steps: EC Startup Report; Vendor Startup
- DC1-ATS-L3-CX-4655: Steps: EC Startup Report; Vendor Startup
- DC1-ATS-L3-CX-4685: Steps: EC Startup Report; Vendor Startup
- DC1-COD-L3-CX-3635: Steps: EC Startup Report; Vendor Startup

| ID | WBS | Activity | Duration | Start | Finish | Predecessors | Total float | Free float | Layton Responsible Party | Vendor Responsible Party |
| --- | --- | --- | --- | --- | --- | --- | --- | --- | --- | --- |
|  | 02 | **DC1-DH1200-COD-A12-02 Cx L3** |  | 2026-03-20 | 2026-03-25 |  |  |  |  |  |
| DC1-COD-L3-CX-3655 |  | DC1-COD-A12-02 FTE | 1d | 2026-03-20 | 2026-03-20 | DC1-COD-L2-2730, DC1-ATS-L3-CX-3655 | 25d | 0d | Riley Warring | ROS |
| DC1-COD-L3-CX-3665 |  | DC1-COD-A12-02 L3 Startup | 2d | 2026-03-23 | 2026-03-24 | DC1-COD-L3-CX-3655 | 25d | 0d | Riley Warring | SIE |
| DC1-COD-L3-CX-3675 |  | DC1-COD-A12-02 BMS/EPMS | 1d | 2026-03-25 | 2026-03-25 | DC1-COD-L3-CX-3665 | 25d |  | Riley Warring | PRM |
|  | 03 | **DC1-DH1200-COD-A12-03 Cx L3** |  | 2026-03-20 | 2026-03-25 |  |  |  |  |  |
| DC1-COD-L3-CX-3685 |  | DC1-COD-A12-03 FTE | 1d | 2026-03-20 | 2026-03-20 | DC1-COD-L2-2740, DC1-ATS-L3-CX-3685 | 25d | 0d | Riley Warring | ROS |
| DC1-COD-L3-CX-3695 |  | DC1-COD-A12-03 L3 Startup | 2d | 2026-03-23 | 2026-03-24 | DC1-COD-L3-CX-3685 | 25d | 0d | Riley Warring | SIE |
| DC1-COD-L3-CX-3705 |  | DC1-COD-A12-03 BMS/EPMS | 1d | 2026-03-25 | 2026-03-25 | DC1-COD-L3-CX-3695 | 25d |  | Riley Warring | PRM |
|  | 04 | **DC1-DH1200-COD-A12-04 Cx L3** |  | 2026-03-20 | 2026-03-25 |  |  |  |  |  |
| DC1-COD-L3-CX-3715 |  | DC1-COD-A12-04 FTE | 1d | 2026-03-20 | 2026-03-20 | DC1-COD-L2-2750, DC1-ATS-L3-CX-3715 | 25d | 0d | Riley Warring | ROS |
| DC1-COD-L3-CX-3725 |  | DC1-COD-A12-04 L3 Startup | 2d | 2026-03-23 | 2026-03-24 | DC1-COD-L3-CX-3715 | 25d | 0d | Riley Warring | SIE |
| DC1-COD-L3-CX-3735 |  | DC1-COD-A12-04 BMS/EPMS | 1d | 2026-03-25 | 2026-03-25 | DC1-COD-L3-CX-3725 | 25d |  | Riley Warring | PRM |
|  | 05 | **DC1-DH1200-COD-A12-05 Cx L3** |  | 2026-03-20 | 2026-03-25 |  |  |  |  |  |
| DC1-COD-L3-CX-3745 |  | DC1-COD-A12-05 FTE | 1d | 2026-03-20 | 2026-03-20 | DC1-COD-L2-2760, DC1-ATS-L3-CX-3745 | 25d | 0d | Riley Warring | ROS |
| DC1-COD-L3-CX-3755 |  | DC1-COD-A12-05 L3 Startup | 2d | 2026-03-23 | 2026-03-24 | DC1-COD-L3-CX-3745 | 25d | 0d | Riley Warring | SIE |
| DC1-COD-L3-CX-3765 |  | DC1-COD-A12-05 BMS/EPMS | 1d | 2026-03-25 | 2026-03-25 | DC1-COD-L3-CX-3755 | 25d |  | Riley Warring | PRM |
|  | 06 | **DC1-DH1200-COD-A12-06 Cx L3** |  | 2026-03-20 | 2026-03-25 |  |  |  |  |  |
| DC1-COD-L3-CX-3775 |  | DC1-COD-A12-06 FTE | 1d | 2026-03-20 | 2026-03-20 | DC1-COD-L2-2770, DC1-ATS-L3-CX-3775 | 25d | 0d | Riley Warring | ROS |
| DC1-COD-L3-CX-3785 |  | DC1-COD-A12-06 L3 Startup | 2d | 2026-03-23 | 2026-03-24 | DC1-COD-L3-CX-3775 | 25d | 0d | Riley Warring | SIE |
| DC1-COD-L3-CX-3795 |  | DC1-COD-A12-06 BMS/EPMS | 1d | 2026-03-25 | 2026-03-25 | DC1-COD-L3-CX-3785 | 25d |  | Riley Warring | PRM |
|  | 02 | **DC1-DH1200-COD-B12 Cx L3** |  | 2026-03-20 | 2026-03-25 |  |  |  |  |  |
|  | 01 | **DC1-DH1200-COD-B12-01 Cx L3** |  | 2026-03-20 | 2026-03-25 |  |  |  |  |  |
| DC1-COD-L3-CX-3805 |  | DC1-COD-B12-01 FTE | 1d | 2026-03-20 | 2026-03-20 | DC1-COD-L2-2780, DC1-ATS-L3-CX-3805, QTS-1080.4 | 25d | 0d | Riley Warring | ROS |
| DC1-COD-L3-CX-3815 |  | DC1-COD-B12-01 L3 Startup | 2d | 2026-03-23 | 2026-03-24 | DC1-COD-L3-CX-3805 | 25d | 0d | Riley Warring | SIE |
| DC1-COD-L3-CX-3825 |  | DC1-COD-B12-01 BMS/EPMS | 1d | 2026-03-25 | 2026-03-25 | DC1-COD-L3-CX-3815 | 25d |  | Riley Warring | PRM |

Notes:
- DC1-COD-L3-CX-3665: Steps: EC Startup Report; Vendor Startup
- DC1-COD-L3-CX-3695: Steps: EC Startup Report; Vendor Startup
- DC1-COD-L3-CX-3725: Steps: EC Startup Report; Vendor Startup
- DC1-COD-L3-CX-3755: Steps: EC Startup Report; Vendor Startup
- DC1-COD-L3-CX-3785: Steps: EC Startup Report; Vendor Startup
- DC1-COD-L3-CX-3815: Steps: EC Startup Report; Vendor Startup

| ID | WBS | Activity | Duration | Start | Finish | Predecessors | Total float | Free float | Layton Responsible Party | Vendor Responsible Party |
| --- | --- | --- | --- | --- | --- | --- | --- | --- | --- | --- |
|  | 02 | **DC1-DH1200-COD-B12-02 Cx L3** |  | 2026-03-20 | 2026-03-25 |  |  |  |  |  |
| DC1-COD-L3-CX-3835 |  | DC1-COD-B12-02 FTE | 1d | 2026-03-20 | 2026-03-20 | DC1-COD-L2-2790, DC1-ATS-L3-CX-3835 | 25d | 0d | Riley Warring | ROS |
| DC1-COD-L3-CX-3845 |  | DC1-COD-B12-02 L3 Startup | 2d | 2026-03-23 | 2026-03-24 | DC1-COD-L3-CX-3835 | 25d | 0d | Riley Warring | SIE |
| DC1-COD-L3-CX-3855 |  | DC1-COD-B12-02 BMS/EPMS | 1d | 2026-03-25 | 2026-03-25 | DC1-COD-L3-CX-3845 | 25d |  | Riley Warring | PRM |
|  | 03 | **DC1-DH1200-COD-B12-03 Cx L3** |  | 2026-03-20 | 2026-03-25 |  |  |  |  |  |
| DC1-COD-L3-CX-3865 |  | DC1-COD-B12-03 FTE | 1d | 2026-03-20 | 2026-03-20 | DC1-COD-L2-2800, DC1-ATS-L3-CX-3865 | 25d | 0d | Riley Warring | ROS |
| DC1-COD-L3-CX-3875 |  | DC1-COD-B12-03 L3 Startup | 2d | 2026-03-23 | 2026-03-24 | DC1-COD-L3-CX-3865 | 25d | 0d | Riley Warring | SIE |
| DC1-COD-L3-CX-3885 |  | DC1-COD-B12-03 BMS/EPMS | 1d | 2026-03-25 | 2026-03-25 | DC1-COD-L3-CX-3875 | 25d |  | Riley Warring | PRM |
|  | 04 | **DC1-DH1200-COD-B12-04 Cx L3** |  | 2026-03-20 | 2026-03-25 |  |  |  |  |  |
| DC1-COD-L3-CX-3895 |  | DC1-COD-B12-04 FTE | 1d | 2026-03-20 | 2026-03-20 | DC1-COD-L2-2810, DC1-ATS-L3-CX-3895 | 25d | 0d | Riley Warring | ROS |
| DC1-COD-L3-CX-3905 |  | DC1-COD-B12-04 L3 Startup | 2d | 2026-03-23 | 2026-03-24 | DC1-COD-L3-CX-3895 | 25d | 0d | Riley Warring | SIE |
| DC1-COD-L3-CX-3915 |  | DC1-COD-B12-04 BMS/EPMS | 1d | 2026-03-25 | 2026-03-25 | DC1-COD-L3-CX-3905 | 25d |  | Riley Warring | PRM |
|  | 05 | **DC1-DH1200-COD-B12-05 Cx L3** |  | 2026-03-20 | 2026-03-25 |  |  |  |  |  |
| DC1-COD-L3-CX-3925 |  | DC1-COD-B12-05 FTE | 1d | 2026-03-20 | 2026-03-20 | DC1-COD-L2-2820, DC1-ATS-L3-CX-3925 | 25d | 0d | Riley Warring | ROS |
| DC1-COD-L3-CX-3935 |  | DC1-COD-B12-05 L3 Startup | 2d | 2026-03-23 | 2026-03-24 | DC1-COD-L3-CX-3925 | 25d | 0d | Riley Warring | SIE |
| DC1-COD-L3-CX-3945 |  | DC1-COD-B12-05 BMS/EPMS | 1d | 2026-03-25 | 2026-03-25 | DC1-COD-L3-CX-3935 | 25d |  | Riley Warring | PRM |
|  | 06 | **DC1-DH1200-COD-B12-06 Cx L3** |  | 2026-03-20 | 2026-03-25 |  |  |  |  |  |
| DC1-COD-L3-CX-3955 |  | DC1-COD-B12-06 FTE | 1d | 2026-03-20 | 2026-03-20 | DC1-COD-L2-2830, DC1-ATS-L3-CX-3955 | 25d | 0d | Riley Warring | ROS |
| DC1-COD-L3-CX-3965 |  | DC1-COD-B12-06 L3 Startup | 2d | 2026-03-23 | 2026-03-24 | DC1-COD-L3-CX-3955 | 25d | 0d | Riley Warring | SIE |
| DC1-COD-L3-CX-3975 |  | DC1-COD-B12-06 BMS/EPMS | 1d | 2026-03-25 | 2026-03-25 | DC1-COD-L3-CX-3965 | 25d |  | Riley Warring | PRM |
|  | 03 | **DC1-DH1200-COD-C12 Cx L3** |  | 2026-03-20 | 2026-03-25 |  |  |  |  |  |
|  | 01 | **DC1-DH1200-COD-C12-01 Cx L3** |  | 2026-03-20 | 2026-03-25 |  |  |  |  |  |
| DC1-COD-L3-CX-3985 |  | DC1-COD-C12-01 FTE | 1d | 2026-03-20 | 2026-03-20 | DC1-COD-L2-2840, DC1-ATS-L3-CX-3985, QTS-1080.4 | 25d | 0d | Riley Warring | ROS |
| DC1-COD-L3-CX-3995 |  | DC1-COD-C12-01 L3 Startup | 2d | 2026-03-23 | 2026-03-24 | DC1-COD-L3-CX-3985 | 25d | 0d | Riley Warring | SIE |
| DC1-COD-L3-CX-4005 |  | DC1-COD-C12-01 BMS/EPMS | 1d | 2026-03-25 | 2026-03-25 | DC1-COD-L3-CX-3995 | 25d |  | Riley Warring | PRM |

Notes:
- DC1-COD-L3-CX-3845: Steps: EC Startup Report; Vendor Startup
- DC1-COD-L3-CX-3875: Steps: EC Startup Report; Vendor Startup
- DC1-COD-L3-CX-3905: Steps: EC Startup Report; Vendor Startup
- DC1-COD-L3-CX-3935: Steps: EC Startup Report; Vendor Startup
- DC1-COD-L3-CX-3965: Steps: EC Startup Report; Vendor Startup
- DC1-COD-L3-CX-3995: Steps: EC Startup Report; Vendor Startup

| ID | WBS | Activity | Duration | Start | Finish | Predecessors | Total float | Free float | Layton Responsible Party | Vendor Responsible Party |
| --- | --- | --- | --- | --- | --- | --- | --- | --- | --- | --- |
|  | 02 | **DC1-DH1200-COD-C12-02 Cx L3** |  | 2026-03-20 | 2026-03-25 |  |  |  |  |  |
| DC1-COD-L3-CX-4015 |  | DC1-COD-C12-02 FTE | 1d | 2026-03-20 | 2026-03-20 | DC1-COD-L2-2850, DC1-ATS-L3-CX-4015 | 25d | 0d | Riley Warring | ROS |
| DC1-COD-L3-CX-4025 |  | DC1-COD-C12-02 L3 Startup | 2d | 2026-03-23 | 2026-03-24 | DC1-COD-L3-CX-4015 | 25d | 0d | Riley Warring | SIE |
| DC1-COD-L3-CX-4035 |  | DC1-COD-C12-02 BMS/EPMS | 1d | 2026-03-25 | 2026-03-25 | DC1-COD-L3-CX-4025 | 25d |  | Riley Warring | PRM |
|  | 03 | **DC1-DH1200-COD-C12-03 Cx L3** |  | 2026-03-20 | 2026-03-25 |  |  |  |  |  |
| DC1-COD-L3-CX-4045 |  | DC1-COD-C12-03 FTE | 1d | 2026-03-20 | 2026-03-20 | DC1-COD-L2-2860, DC1-ATS-L3-CX-4045 | 25d | 0d | Riley Warring | ROS |
| DC1-COD-L3-CX-4055 |  | DC1-COD-C12-03 L3 Startup | 2d | 2026-03-23 | 2026-03-24 | DC1-COD-L3-CX-4045 | 25d | 0d | Riley Warring | SIE |
| DC1-COD-L3-CX-4065 |  | DC1-COD-C12-03 BMS/EPMS | 1d | 2026-03-25 | 2026-03-25 | DC1-COD-L3-CX-4055 | 25d |  | Riley Warring | PRM |
|  | 04 | **DC1-DH1200-COD-C12-04 Cx L3** |  | 2026-03-20 | 2026-03-25 |  |  |  |  |  |
| DC1-COD-L3-CX-4075 |  | DC1-COD-C12-04 FTE | 1d | 2026-03-20 | 2026-03-20 | DC1-COD-L2-2870, DC1-ATS-L3-CX-4075 | 25d | 0d | Riley Warring | ROS |
| DC1-COD-L3-CX-4085 |  | DC1-COD-C12-04 L3 Startup | 2d | 2026-03-23 | 2026-03-24 | DC1-COD-L3-CX-4075 | 25d | 0d | Riley Warring | SIE |
| DC1-COD-L3-CX-4095 |  | DC1-COD-C12-04 BMS/EPMS | 1d | 2026-03-25 | 2026-03-25 | DC1-COD-L3-CX-4085 | 25d |  | Riley Warring | PRM |
|  | 05 | **DC1-DH1200-COD-C12-05 Cx L3** |  | 2026-03-20 | 2026-03-25 |  |  |  |  |  |
| DC1-COD-L3-CX-4105 |  | DC1-COD-C12-05 FTE | 1d | 2026-03-20 | 2026-03-20 | DC1-COD-L2-2880, DC1-ATS-L3-CX-4105 | 25d | 0d | Riley Warring | ROS |
| DC1-COD-L3-CX-4115 |  | DC1-COD-C12-05 L3 Startup | 2d | 2026-03-23 | 2026-03-24 | DC1-COD-L3-CX-4105 | 25d | 0d | Riley Warring | SIE |
| DC1-COD-L3-CX-4125 |  | DC1-COD-C12-05 BMS/EPMS | 1d | 2026-03-25 | 2026-03-25 | DC1-COD-L3-CX-4115 | 25d |  | Riley Warring | PRM |
|  | 06 | **DC1-DH1200-COD-C12-06 Cx L3** |  | 2026-03-20 | 2026-03-25 |  |  |  |  |  |
| DC1-COD-L3-CX-4135 |  | DC1-COD-C12-06 FTE | 1d | 2026-03-20 | 2026-03-20 | DC1-COD-L2-2890, DC1-ATS-L3-CX-4135 | 25d | 0d | Riley Warring | ROS |
| DC1-COD-L3-CX-4145 |  | DC1-COD-C12-06 L3 Startup | 2d | 2026-03-23 | 2026-03-24 | DC1-COD-L3-CX-4135 | 25d | 0d | Riley Warring | SIE |
| DC1-COD-L3-CX-4155 |  | DC1-COD-C12-06 BMS/EPMS | 1d | 2026-03-25 | 2026-03-25 | DC1-COD-L3-CX-4145 | 25d |  | Riley Warring | PRM |
|  | 04 | **DC1-DH1200-COD-D12 Cx L3** |  | 2026-03-20 | 2026-03-25 |  |  |  |  |  |
|  | 01 | **DC1-DH1200-COD-D12-01 Cx L3** |  | 2026-03-20 | 2026-03-25 |  |  |  |  |  |
| DC1-COD-L3-CX-4165 |  | DC1-COD-D12-01 FTE | 1d | 2026-03-20 | 2026-03-20 | DC1-COD-L2-2900, DC1-ATS-L3-CX-4165, QTS-1080.4 | 25d | 0d | Riley Warring | ROS |
| DC1-COD-L3-CX-4175 |  | DC1-COD-D12-01 L3 Startup | 2d | 2026-03-23 | 2026-03-24 | DC1-COD-L3-CX-4165 | 25d | 0d | Riley Warring | SIE |
| DC1-COD-L3-CX-4185 |  | DC1-COD-D12-01 BMS/EPMS | 1d | 2026-03-25 | 2026-03-25 | DC1-COD-L3-CX-4175 | 25d |  | Riley Warring | PRM |

Notes:
- DC1-COD-L3-CX-4025: Steps: EC Startup Report; Vendor Startup
- DC1-COD-L3-CX-4055: Steps: EC Startup Report; Vendor Startup
- DC1-COD-L3-CX-4085: Steps: EC Startup Report; Vendor Startup
- DC1-COD-L3-CX-4115: Steps: EC Startup Report; Vendor Startup
- DC1-COD-L3-CX-4145: Steps: EC Startup Report; Vendor Startup
- DC1-COD-L3-CX-4175: Steps: EC Startup Report; Vendor Startup

| ID | WBS | Activity | Duration | Start | Finish | Predecessors | Total float | Free float | Layton Responsible Party | Vendor Responsible Party |
| --- | --- | --- | --- | --- | --- | --- | --- | --- | --- | --- |
|  | 02 | **DC1-DH1200-COD-D12-02 Cx L3** |  | 2026-03-20 | 2026-03-25 |  |  |  |  |  |
| DC1-COD-L3-CX-4195 |  | DC1-COD-D12-02 FTE | 1d | 2026-03-20 | 2026-03-20 | DC1-COD-L2-2910, DC1-ATS-L3-CX-4195 | 25d | 0d | Riley Warring | ROS |
| DC1-COD-L3-CX-4205 |  | DC1-COD-D12-02 L3 Startup | 2d | 2026-03-23 | 2026-03-24 | DC1-COD-L3-CX-4195 | 25d | 0d | Riley Warring | SIE |
| DC1-COD-L3-CX-4215 |  | DC1-COD-D12-02 BMS/EPMS | 1d | 2026-03-25 | 2026-03-25 | DC1-COD-L3-CX-4205 | 25d |  | Riley Warring | PRM |
|  | 03 | **DC1-DH1200-COD-D12-03 Cx L3** |  | 2026-03-20 | 2026-03-25 |  |  |  |  |  |
| DC1-COD-L3-CX-4225 |  | DC1-COD-D12-03 FTE | 1d | 2026-03-20 | 2026-03-20 | DC1-COD-L2-2920, DC1-ATS-L3-CX-4225 | 25d | 0d | Riley Warring | ROS |
| DC1-COD-L3-CX-4235 |  | DC1-COD-D12-03 L3 Startup | 2d | 2026-03-23 | 2026-03-24 | DC1-COD-L3-CX-4225 | 25d | 0d | Riley Warring | SIE |
| DC1-COD-L3-CX-4245 |  | DC1-COD-D12-03 BMS/EPMS | 1d | 2026-03-25 | 2026-03-25 | DC1-COD-L3-CX-4235 | 25d |  | Riley Warring | PRM |
|  | 04 | **DC1-DH1200-COD-D12-04 Cx L3** |  | 2026-03-20 | 2026-03-25 |  |  |  |  |  |
| DC1-COD-L3-CX-4255 |  | DC1-COD-D12-04 FTE | 1d | 2026-03-20 | 2026-03-20 | DC1-COD-L2-2930, DC1-ATS-L3-CX-4255 | 25d | 0d | Riley Warring | ROS |
| DC1-COD-L3-CX-4265 |  | DC1-COD-D12-04 L3 Startup | 2d | 2026-03-23 | 2026-03-24 | DC1-COD-L3-CX-4255 | 25d | 0d | Riley Warring | SIE |
| DC1-COD-L3-CX-4275 |  | DC1-COD-D12-04 BMS/EPMS | 1d | 2026-03-25 | 2026-03-25 | DC1-COD-L3-CX-4265 | 25d |  | Riley Warring | PRM |
|  | 05 | **DC1-DH1200-COD-D12-05 Cx L3** |  | 2026-03-20 | 2026-03-25 |  |  |  |  |  |
| DC1-COD-L3-CX-4285 |  | DC1-COD-D12-05 FTE | 1d | 2026-03-20 | 2026-03-20 | DC1-COD-L2-2940, DC1-ATS-L3-CX-4285 | 25d | 0d | Riley Warring | ROS |
| DC1-COD-L3-CX-4295 |  | DC1-COD-D12-05 L3 Startup | 2d | 2026-03-23 | 2026-03-24 | DC1-COD-L3-CX-4285 | 25d | 0d | Riley Warring | SIE |
| DC1-COD-L3-CX-4305 |  | DC1-COD-D12-05 BMS/EPMS | 1d | 2026-03-25 | 2026-03-25 | DC1-COD-L3-CX-4295 | 25d |  | Riley Warring | PRM |
|  | 06 | **DC1-DH1200-COD-D12-06 Cx L3** |  | 2026-03-20 | 2026-03-25 |  |  |  |  |  |
| DC1-COD-L3-CX-4315 |  | DC1-COD-D12-06 FTE | 1d | 2026-03-20 | 2026-03-20 | DC1-COD-L2-2950, DC1-ATS-L3-CX-4315 | 25d | 0d | Riley Warring | ROS |
| DC1-COD-L3-CX-4325 |  | DC1-COD-D12-06 L3 Startup | 2d | 2026-03-23 | 2026-03-24 | DC1-COD-L3-CX-4315 | 25d | 0d | Riley Warring | SIE |
| DC1-COD-L3-CX-4335 |  | DC1-COD-D12-06 BMS/EPMS | 1d | 2026-03-25 | 2026-03-25 | DC1-COD-L3-CX-4325 | 25d |  | Riley Warring | PRM |
|  | 05 | **DC1-DH1200-COD-E12 Cx L3** |  | 2026-03-20 | 2026-03-25 |  |  |  |  |  |
|  | 01 | **DC1-DH1200-ATS-E12-01 Cx L3** |  | 2026-03-20 | 2026-03-25 |  |  |  |  |  |
| DC1-COD-L3-CX-4345 |  | DC1-COD-E12-01 FTE | 1d | 2026-03-20 | 2026-03-20 | DC1-COD-L2-2960, DC1-ATS-L3-CX-4345, QTS-1080.4 | 25d | 0d | Riley Warring | ROS |
| DC1-COD-L3-CX-4355 |  | DC1-COD-E12-01 L3 Startup | 2d | 2026-03-23 | 2026-03-24 | DC1-COD-L3-CX-4345 | 25d | 0d | Riley Warring | SIE |
| DC1-COD-L3-CX-4365 |  | DC1-COD-E12-01 BMS/EPMS | 1d | 2026-03-25 | 2026-03-25 | DC1-COD-L3-CX-4355 | 25d |  | Riley Warring | PRM |

Notes:
- DC1-COD-L3-CX-4205: Steps: EC Startup Report; Vendor Startup
- DC1-COD-L3-CX-4235: Steps: EC Startup Report; Vendor Startup
- DC1-COD-L3-CX-4265: Steps: EC Startup Report; Vendor Startup
- DC1-COD-L3-CX-4295: Steps: EC Startup Report; Vendor Startup
- DC1-COD-L3-CX-4325: Steps: EC Startup Report; Vendor Startup
- DC1-COD-L3-CX-4355: Steps: EC Startup Report; Vendor Startup

| ID | WBS | Activity | Duration | Start | Finish | Predecessors | Total float | Free float | Layton Responsible Party | Vendor Responsible Party |
| --- | --- | --- | --- | --- | --- | --- | --- | --- | --- | --- |
|  | 02 | **DC1-DH1200-ATS-E12-02 Cx L3** |  | 2026-03-20 | 2026-03-25 |  |  |  |  |  |
| DC1-COD-L3-CX-4375 |  | DC1-COD-E12-02 FTE | 1d | 2026-03-20 | 2026-03-20 | DC1-COD-L2-2970, DC1-ATS-L3-CX-4375 | 25d | 0d | Riley Warring | ROS |
| DC1-COD-L3-CX-4385 |  | DC1-COD-E12-02 L3 Startup | 2d | 2026-03-23 | 2026-03-24 | DC1-COD-L3-CX-4375 | 25d | 0d | Riley Warring | SIE |
| DC1-COD-L3-CX-4395 |  | DC1-COD-E12-02 BMS/EPMS | 1d | 2026-03-25 | 2026-03-25 | DC1-COD-L3-CX-4385 | 25d |  | Riley Warring | PRM |
|  | 03 | **DC1-DH1200-ATS-E12-03 Cx L3** |  | 2026-03-20 | 2026-03-25 |  |  |  |  |  |
| DC1-COD-L3-CX-4405 |  | DC1-COD-E12-03 FTE | 1d | 2026-03-20 | 2026-03-20 | DC1-COD-L2-2980, DC1-ATS-L3-CX-4405 | 25d | 0d | Riley Warring | ROS |
| DC1-COD-L3-CX-4415 |  | DC1-COD-E12-03 L3 Startup | 2d | 2026-03-23 | 2026-03-24 | DC1-COD-L3-CX-4405 | 25d | 0d | Riley Warring | SIE |
| DC1-COD-L3-CX-4425 |  | DC1-COD-E12-03 BMS/EPMS | 1d | 2026-03-25 | 2026-03-25 | DC1-COD-L3-CX-4415 | 25d |  | Riley Warring | PRM |
|  | 04 | **DC1-DH1200-ATS-E12-04 Cx L3** |  | 2026-03-20 | 2026-03-25 |  |  |  |  |  |
| DC1-COD-L3-CX-4435 |  | DC1-COD-E12-04 FTE | 1d | 2026-03-20 | 2026-03-20 | DC1-COD-L2-2990, DC1-ATS-L3-CX-4435 | 25d | 0d | Riley Warring | ROS |
| DC1-COD-L3-CX-4445 |  | DC1-COD-E12-04 L3 Startup | 2d | 2026-03-23 | 2026-03-24 | DC1-COD-L3-CX-4435 | 25d | 0d | Riley Warring | SIE |
| DC1-COD-L3-CX-4455 |  | DC1-COD-E12-04 BMS/EPMS | 1d | 2026-03-25 | 2026-03-25 | DC1-COD-L3-CX-4445 | 25d |  | Riley Warring | PRM |
|  | 05 | **DC1-DH1200-ATS-E12-05 Cx L3** |  | 2026-03-20 | 2026-03-25 |  |  |  |  |  |
| DC1-COD-L3-CX-4465 |  | DC1-COD-E12-05 FTE | 1d | 2026-03-20 | 2026-03-20 | DC1-COD-L2-3000, DC1-ATS-L3-CX-4465 | 25d | 0d | Riley Warring | ROS |
| DC1-COD-L3-CX-4475 |  | DC1-COD-E12-05 L3 Startup | 2d | 2026-03-23 | 2026-03-24 | DC1-COD-L3-CX-4465 | 25d | 0d | Riley Warring | SIE |
| DC1-COD-L3-CX-4485 |  | DC1-COD-E12-05 BMS/EPMS | 1d | 2026-03-25 | 2026-03-25 | DC1-COD-L3-CX-4475 | 25d |  | Riley Warring | PRM |
|  | 06 | **DC1-DH1200-ATS-E12-06 Cx L3** |  | 2026-03-20 | 2026-03-25 |  |  |  |  |  |
| DC1-COD-L3-CX-4495 |  | DC1-COD-E12-06 FTE | 1d | 2026-03-20 | 2026-03-20 | DC1-COD-L2-3010, DC1-ATS-L3-CX-4495 | 25d | 0d | Riley Warring | ROS |
| DC1-COD-L3-CX-4505 |  | DC1-COD-E12-06 L3 Startup | 2d | 2026-03-23 | 2026-03-24 | DC1-COD-L3-CX-4495 | 25d | 0d | Riley Warring | SIE |
| DC1-COD-L3-CX-4515 |  | DC1-COD-E12-06 BMS/EPMS | 1d | 2026-03-25 | 2026-03-25 | DC1-COD-L3-CX-4505 | 25d |  | Riley Warring | PRM |
|  | 06 | **DC1-DH1200-COD-F12 Cx L3** |  | 2026-03-20 | 2026-03-25 |  |  |  |  |  |
|  | 01 | **DC1-DH1200-COD-F12-01 Cx L3** |  | 2026-03-20 | 2026-03-25 |  |  |  |  |  |
| DC1-COD-L3-CX-4525 |  | DC1-COD-F12-01 FTE | 1d | 2026-03-20 | 2026-03-20 | DC1-COD-L2-3020, DC1-ATS-L3-CX-4525, QTS-1080.4 | 25d | 0d | Riley Warring | ROS |
| DC1-COD-L3-CX-4535 |  | DC1-COD-F12-01 L3 Startup | 2d | 2026-03-23 | 2026-03-24 | DC1-COD-L3-CX-4525 | 25d | 0d | Riley Warring | SIE |
| DC1-COD-L3-CX-4545 |  | DC1-COD-F12-01 BMS/EPMS | 1d | 2026-03-25 | 2026-03-25 | DC1-COD-L3-CX-4535 | 25d |  | Riley Warring | PRM |

Notes:
- DC1-COD-L3-CX-4385: Steps: EC Startup Report; Vendor Startup
- DC1-COD-L3-CX-4415: Steps: EC Startup Report; Vendor Startup
- DC1-COD-L3-CX-4445: Steps: EC Startup Report; Vendor Startup
- DC1-COD-L3-CX-4475: Steps: EC Startup Report; Vendor Startup
- DC1-COD-L3-CX-4505: Steps: EC Startup Report; Vendor Startup
- DC1-COD-L3-CX-4535: Steps: EC Startup Report; Vendor Startup

| ID | WBS | Activity | Duration | Start | Finish | Predecessors | Total float | Free float | Layton Responsible Party | Vendor Responsible Party |
| --- | --- | --- | --- | --- | --- | --- | --- | --- | --- | --- |
|  | 02 | **DC1-DH1200-COD-F12-02 Cx L3** |  | 2026-03-20 | 2026-03-25 |  |  |  |  |  |
| DC1-COD-L3-CX-4555 |  | DC1-COD-F12-02 FTE | 1d | 2026-03-20 | 2026-03-20 | DC1-COD-L2-3030, DC1-ATS-L3-CX-4555 | 25d | 0d | Riley Warring | ROS |
| DC1-COD-L3-CX-4565 |  | DC1-COD-F12-02 L3 Startup | 2d | 2026-03-23 | 2026-03-24 | DC1-COD-L3-CX-4555 | 25d | 0d | Riley Warring | SIE |
| DC1-COD-L3-CX-4575 |  | DC1-COD-F12-02 BMS/EPMS | 1d | 2026-03-25 | 2026-03-25 | DC1-COD-L3-CX-4565 | 25d |  | Riley Warring | PRM |
|  | 03 | **DC1-DH1200-COD-F12-03 Cx L3** |  | 2026-03-20 | 2026-03-25 |  |  |  |  |  |
| DC1-COD-L3-CX-4585 |  | DC1-COD-F12-03 FTE | 1d | 2026-03-20 | 2026-03-20 | DC1-COD-L2-3040, DC1-ATS-L3-CX-4585 | 25d | 0d | Riley Warring | ROS |
| DC1-COD-L3-CX-4595 |  | DC1-COD-F12-03 L3 Startup | 2d | 2026-03-23 | 2026-03-24 | DC1-COD-L3-CX-4585 | 25d | 0d | Riley Warring | SIE |
| DC1-COD-L3-CX-4605 |  | DC1-COD-F12-03 BMS/EPMS | 1d | 2026-03-25 | 2026-03-25 | DC1-COD-L3-CX-4595 | 25d |  | Riley Warring | PRM |
|  | 04 | **DC1-DH1200-COD-F12-04 Cx L3** |  | 2026-03-20 | 2026-03-25 |  |  |  |  |  |
| DC1-COD-L3-CX-4615 |  | DC1-COD-F12-04 FTE | 1d | 2026-03-20 | 2026-03-20 | DC1-COD-L2-3050, DC1-ATS-L3-CX-4615 | 25d | 0d | Riley Warring | ROS |
| DC1-COD-L3-CX-4625 |  | DC1-COD-F12-04 L3 Startup | 2d | 2026-03-23 | 2026-03-24 | DC1-COD-L3-CX-4615 | 25d | 0d | Riley Warring | SIE |
| DC1-COD-L3-CX-4635 |  | DC1-COD-F12-04 BMS/EPMS | 1d | 2026-03-25 | 2026-03-25 | DC1-COD-L3-CX-4625 | 25d |  | Riley Warring | PRM |
|  | 05 | **DC1-DH1200-COD-F12-05 Cx L3** |  | 2026-03-20 | 2026-03-25 |  |  |  |  |  |
| DC1-COD-L3-CX-4645 |  | DC1-COD-F12-05 FTE | 1d | 2026-03-20 | 2026-03-20 | DC1-COD-L2-3060, DC1-ATS-L3-CX-4645 | 25d | 0d | Riley Warring | ROS |
| DC1-COD-L3-CX-4655 |  | DC1-COD-F12-05 L3 Startup | 2d | 2026-03-23 | 2026-03-24 | DC1-COD-L3-CX-4645 | 25d | 0d | Riley Warring | SIE |
| DC1-COD-L3-CX-4665 |  | DC1-COD-F12-05 BMS/EPMS | 1d | 2026-03-25 | 2026-03-25 | DC1-COD-L3-CX-4655 | 25d |  | Riley Warring | PRM |
|  | 06 | **DC1-DH1200-COD-F12-06 Cx L3** |  | 2026-03-20 | 2026-03-25 |  |  |  |  |  |
| DC1-COD-L3-CX-4675 |  | DC1-COD-F12-06 FTE | 1d | 2026-03-20 | 2026-03-20 | DC1-COD-L2-3070, DC1-ATS-L3-CX-4675 | 25d | 0d | Riley Warring | ROS |
| DC1-COD-L3-CX-4685 |  | DC1-COD-F12-06 L3 Startup | 2d | 2026-03-23 | 2026-03-24 | DC1-COD-L3-CX-4675 | 25d | 0d | Riley Warring | SIE |
| DC1-COD-L3-CX-4695 |  | DC1-COD-F12-06 BMS/EPMS | 1d | 2026-03-25 | 2026-03-25 | DC1-COD-L3-CX-4685 | 25d |  | Riley Warring | PRM |
|  | 07 | **DC1-DH1200 RPPs Cx L3** |  | 2026-03-23 | 2026-03-26 |  |  |  |  |  |
|  | 01 | **DC1-DH1200-RPP-A12 Cx L3** |  | 2026-03-23 | 2026-03-26 |  |  |  |  |  |
|  | 01 | **DC1-DH1200-RPP-A12-01 Cx L3** |  | 2026-03-23 | 2026-03-26 |  |  |  |  |  |
| DC1-RPP-L3-CX-3625 |  | DC1-RPP-A12-01 A/B FTE | 1d | 2026-03-23 | 2026-03-23 | DC1-RPP-L2-2720, DC1-COD-L3-CX-3625 | 48d | 0d | Riley Warring | ROS |
| DC1-RPP-L3-CX-3635 |  | DC1-RPP-A12-01 A/B L3 Startup | 2d | 2026-03-24 | 2026-03-25 | DC1-RPP-L3-CX-3625 | 48d | 0d | Riley Warring | SQD |
| DC1-RPP-L3-CX-3645 |  | DC1-RPP-A12-01 A/B BMS/EPMS | 1d | 2026-03-26 | 2026-03-26 | DC1-RPP-L3-CX-3635 | 48d | 29d | Riley Warring | PRM |

Notes:
- DC1-COD-L3-CX-4565: Steps: EC Startup Report; Vendor Startup
- DC1-COD-L3-CX-4595: Steps: EC Startup Report; Vendor Startup
- DC1-COD-L3-CX-4625: Steps: EC Startup Report; Vendor Startup
- DC1-COD-L3-CX-4655: Steps: EC Startup Report; Vendor Startup
- DC1-COD-L3-CX-4685: Steps: EC Startup Report; Vendor Startup
- DC1-RPP-L3-CX-3635: Steps: EC Startup Report; Vendor Startup

| ID | WBS | Activity | Duration | Start | Finish | Predecessors | Total float | Free float | Layton Responsible Party | Vendor Responsible Party |
| --- | --- | --- | --- | --- | --- | --- | --- | --- | --- | --- |
|  | 02 | **DC1-DH1200-RPP-A12-02 Cx L3** |  | 2026-03-23 | 2026-03-26 |  |  |  |  |  |
| DC1-RPP-L3-CX-3655 |  | DC1-RPP-A12-02 A/B FTE | 1d | 2026-03-23 | 2026-03-23 | DC1-RPP-L2-2730, DC1-COD-L3-CX-3655 | 48d | 0d | Riley Warring | ROS |
| DC1-RPP-L3-CX-3665 |  | DC1-RPP-A12-02 A/B L3 Startup | 2d | 2026-03-24 | 2026-03-25 | DC1-RPP-L3-CX-3655 | 48d | 0d | Riley Warring | SQD |
| DC1-RPP-L3-CX-3675 |  | DC1-RPP-A12-02 A/B BMS/EPMS | 1d | 2026-03-26 | 2026-03-26 | DC1-RPP-L3-CX-3665 | 48d | 29d | Riley Warring | PRM |
|  | 03 | **DC1-DH1200-RPP-A12-03 Cx L3** |  | 2026-03-23 | 2026-03-26 |  |  |  |  |  |
| DC1-RPP-L3-CX-3685 |  | DC1-RPP-A12-03 A/B FTE | 1d | 2026-03-23 | 2026-03-23 | DC1-RPP-L2-2740, DC1-COD-L3-CX-3685 | 48d | 0d | Riley Warring | ROS |
| DC1-RPP-L3-CX-3695 |  | DC1-RPP-A12-03 A/B L3 Startup | 2d | 2026-03-24 | 2026-03-25 | DC1-RPP-L3-CX-3685 | 48d | 0d | Riley Warring | SQD |
| DC1-RPP-L3-CX-3705 |  | DC1-RPP-A12-03 A/B BMS/EPMS | 1d | 2026-03-26 | 2026-03-26 | DC1-RPP-L3-CX-3695 | 48d | 29d | Riley Warring | PRM |
|  | 04 | **DC1-DH1200-RPP-A12-04 Cx L3** |  | 2026-03-23 | 2026-03-26 |  |  |  |  |  |
| DC1-RPP-L3-CX-3715 |  | DC1-RPP-A12-04 A/B FTE | 1d | 2026-03-23 | 2026-03-23 | DC1-RPP-L2-2750, DC1-COD-L3-CX-3715 | 48d | 0d | Riley Warring | ROS |
| DC1-RPP-L3-CX-3725 |  | DC1-RPP-A12-04 A/B L3 Startup | 2d | 2026-03-24 | 2026-03-25 | DC1-RPP-L3-CX-3715 | 48d | 0d | Riley Warring | SQD |
| DC1-RPP-L3-CX-3735 |  | DC1-RPP-A12-04 A/B BMS/EPMS | 1d | 2026-03-26 | 2026-03-26 | DC1-RPP-L3-CX-3725 | 48d | 29d | Riley Warring | PRM |
|  | 05 | **DC1-DH1200-RPP-A12-05 Cx L3** |  | 2026-03-23 | 2026-03-26 |  |  |  |  |  |
| DC1-RPP-L3-CX-3745 |  | DC1-RPP-A12-05 A/B FTE | 1d | 2026-03-23 | 2026-03-23 | DC1-RPP-L2-2760, DC1-COD-L3-CX-3745 | 48d | 0d | Riley Warring | ROS |
| DC1-RPP-L3-CX-3755 |  | DC1-RPP-A12-05 A/B L3 Startup | 2d | 2026-03-24 | 2026-03-25 | DC1-RPP-L3-CX-3745 | 48d | 0d | Riley Warring | SQD |
| DC1-RPP-L3-CX-3765 |  | DC1-RPP-A12-05 A/B BMS/EPMS | 1d | 2026-03-26 | 2026-03-26 | DC1-RPP-L3-CX-3755 | 48d | 29d | Riley Warring | PRM |
|  | 06 | **DC1-DH1200-RPP-A12-06 Cx L3** |  | 2026-03-23 | 2026-03-26 |  |  |  |  |  |
| DC1-RPP-L3-CX-3775 |  | DC1-RPP-A12-06 A/B FTE | 1d | 2026-03-23 | 2026-03-23 | DC1-RPP-L2-2770, DC1-COD-L3-CX-3775 | 48d | 0d | Riley Warring | ROS |
| DC1-RPP-L3-CX-3785 |  | DC1-RPP-A12-06 A/B L3 Startup | 2d | 2026-03-24 | 2026-03-25 | DC1-RPP-L3-CX-3775 | 48d | 0d | Riley Warring | SQD |
| DC1-RPP-L3-CX-3795 |  | DC1-RPP-A12-06 A/B BMS/EPMS | 1d | 2026-03-26 | 2026-03-26 | DC1-RPP-L3-CX-3785 | 48d | 29d | Riley Warring | PRM |
|  | 02 | **DC1-DH1200-RPP-B12 Cx L3** |  | 2026-03-23 | 2026-03-26 |  |  |  |  |  |
|  | 01 | **DC1-DH1200-RPP-B12-01 Cx L3** |  | 2026-03-23 | 2026-03-26 |  |  |  |  |  |
| DC1-RPP-L3-CX-3805 |  | DC1-RPP-B12-01 A/B FTE | 1d | 2026-03-23 | 2026-03-23 | DC1-RPP-L2-2780, DC1-COD-L3-CX-3805 | 48d | 0d | Riley Warring | ROS |
| DC1-RPP-L3-CX-3815 |  | DC1-RPP-B12-01 A/B L3 Startup | 2d | 2026-03-24 | 2026-03-25 | DC1-RPP-L3-CX-3805 | 48d | 0d | Riley Warring | SQD |
| DC1-RPP-L3-CX-3825 |  | DC1-RPP-B12-01 A/B BMS/EPMS | 1d | 2026-03-26 | 2026-03-26 | DC1-RPP-L3-CX-3815 | 48d | 29d | Riley Warring | PRM |

Notes:
- DC1-RPP-L3-CX-3665: Steps: EC Startup Report; Vendor Startup
- DC1-RPP-L3-CX-3695: Steps: EC Startup Report; Vendor Startup
- DC1-RPP-L3-CX-3725: Steps: EC Startup Report; Vendor Startup
- DC1-RPP-L3-CX-3755: Steps: EC Startup Report; Vendor Startup
- DC1-RPP-L3-CX-3785: Steps: EC Startup Report; Vendor Startup
- DC1-RPP-L3-CX-3815: Steps: EC Startup Report; Vendor Startup

| ID | WBS | Activity | Duration | Start | Finish | Predecessors | Total float | Free float | Layton Responsible Party | Vendor Responsible Party |
| --- | --- | --- | --- | --- | --- | --- | --- | --- | --- | --- |
|  | 02 | **DC1-DH1200-RPP-B12-02 Cx L3** |  | 2026-03-23 | 2026-03-26 |  |  |  |  |  |
| DC1-RPP-L3-CX-3835 |  | DC1-RPP-B12-02 A/B FTE | 1d | 2026-03-23 | 2026-03-23 | DC1-RPP-L2-2790, DC1-COD-L3-CX-3835 | 48d | 0d | Riley Warring | ROS |
| DC1-RPP-L3-CX-3845 |  | DC1-RPP-B12-02 A/B L3 Startup | 2d | 2026-03-24 | 2026-03-25 | DC1-RPP-L3-CX-3835 | 48d | 0d | Riley Warring | SQD |
| DC1-RPP-L3-CX-3855 |  | DC1-RPP-B12-02 A/B BMS/EPMS | 1d | 2026-03-26 | 2026-03-26 | DC1-RPP-L3-CX-3845 | 48d | 29d | Riley Warring | PRM |
|  | 03 | **DC1-DH1200-RPP-B12-03 Cx L3** |  | 2026-03-23 | 2026-03-26 |  |  |  |  |  |
| DC1-RPP-L3-CX-3865 |  | DC1-RPP-B12-03 A/B FTE | 1d | 2026-03-23 | 2026-03-23 | DC1-RPP-L2-2800, DC1-COD-L3-CX-3865 | 48d | 0d | Riley Warring | ROS |
| DC1-RPP-L3-CX-3875 |  | DC1-RPP-B12-03 A/B L3 Startup | 2d | 2026-03-24 | 2026-03-25 | DC1-RPP-L3-CX-3865 | 48d | 0d | Riley Warring | SQD |
| DC1-RPP-L3-CX-3885 |  | DC1-RPP-B12-03 A/B BMS/EPMS | 1d | 2026-03-26 | 2026-03-26 | DC1-RPP-L3-CX-3875 | 48d | 29d | Riley Warring | PRM |
|  | 04 | **DC1-DH1200-RPP-B12-04 Cx L3** |  | 2026-03-23 | 2026-03-26 |  |  |  |  |  |
| DC1-RPP-L3-CX-3895 |  | DC1-RPP-B12-04 A/B FTE | 1d | 2026-03-23 | 2026-03-23 | DC1-RPP-L2-2810, DC1-COD-L3-CX-3895 | 48d | 0d | Riley Warring | ROS |
| DC1-RPP-L3-CX-3905 |  | DC1-RPP-B12-04 A/B L3 Startup | 2d | 2026-03-24 | 2026-03-25 | DC1-RPP-L3-CX-3895 | 48d | 0d | Riley Warring | SQD |
| DC1-RPP-L3-CX-3915 |  | DC1-RPP-B12-04 A/B BMS/EPMS | 1d | 2026-03-26 | 2026-03-26 | DC1-RPP-L3-CX-3905 | 48d | 29d | Riley Warring | PRM |
|  | 05 | **DC1-DH1200-RPP-B12-05 Cx L3** |  | 2026-03-23 | 2026-03-26 |  |  |  |  |  |
| DC1-RPP-L3-CX-3925 |  | DC1-RPP-B12-05 A/B FTE | 1d | 2026-03-23 | 2026-03-23 | DC1-RPP-L2-2820, DC1-COD-L3-CX-3925 | 48d | 0d | Riley Warring | ROS |
| DC1-RPP-L3-CX-3935 |  | DC1-RPP-B12-05 A/B L3 Startup | 2d | 2026-03-24 | 2026-03-25 | DC1-RPP-L3-CX-3925 | 48d | 0d | Riley Warring | SQD |
| DC1-RPP-L3-CX-3945 |  | DC1-RPP-B12-05 A/B BMS/EPMS | 1d | 2026-03-26 | 2026-03-26 | DC1-RPP-L3-CX-3935 | 48d | 29d | Riley Warring | PRM |
|  | 06 | **DC1-DH1200-RPP-B12-06 Cx L3** |  | 2026-03-23 | 2026-03-26 |  |  |  |  |  |
| DC1-RPP-L3-CX-3955 |  | DC1-RPP-B12-06 A/B FTE | 1d | 2026-03-23 | 2026-03-23 | DC1-RPP-L2-2830, DC1-COD-L3-CX-3955 | 48d | 0d | Riley Warring | ROS |
| DC1-RPP-L3-CX-3965 |  | DC1-RPP-B12-06 A/B L3 Startup | 2d | 2026-03-24 | 2026-03-25 | DC1-RPP-L3-CX-3955 | 48d | 0d | Riley Warring | SQD |
| DC1-RPP-L3-CX-3975 |  | DC1-RPP-B12-06 A/B BMS/EPMS | 1d | 2026-03-26 | 2026-03-26 | DC1-RPP-L3-CX-3965 | 48d | 29d | Riley Warring | PRM |
|  | 03 | **DC1-DH1200-RPP-C12 Cx L3** |  | 2026-03-23 | 2026-03-26 |  |  |  |  |  |
|  | 01 | **DC1-DH1200-RPP-C12-01 Cx L3** |  | 2026-03-23 | 2026-03-26 |  |  |  |  |  |
| DC1-RPP-L3-CX-3985 |  | DC1-RPP-C12-01 A/B FTE | 1d | 2026-03-23 | 2026-03-23 | DC1-RPP-L2-2840, DC1-COD-L3-CX-3985 | 48d | 0d | Riley Warring | ROS |
| DC1-RPP-L3-CX-3995 |  | DC1-RPP-C12-01 A/B L3 Startup | 2d | 2026-03-24 | 2026-03-25 | DC1-RPP-L3-CX-3985 | 48d | 0d | Riley Warring | SQD |
| DC1-RPP-L3-CX-4005 |  | DC1-RPP-C12-01 A/B BMS/EPMS | 1d | 2026-03-26 | 2026-03-26 | DC1-RPP-L3-CX-3995 | 48d | 29d | Riley Warring | PRM |

Notes:
- DC1-RPP-L3-CX-3845: Steps: EC Startup Report; Vendor Startup
- DC1-RPP-L3-CX-3875: Steps: EC Startup Report; Vendor Startup
- DC1-RPP-L3-CX-3905: Steps: EC Startup Report; Vendor Startup
- DC1-RPP-L3-CX-3935: Steps: EC Startup Report; Vendor Startup
- DC1-RPP-L3-CX-3965: Steps: EC Startup Report; Vendor Startup
- DC1-RPP-L3-CX-3995: Steps: EC Startup Report; Vendor Startup

| ID | WBS | Activity | Duration | Start | Finish | Predecessors | Total float | Free float | Layton Responsible Party | Vendor Responsible Party |
| --- | --- | --- | --- | --- | --- | --- | --- | --- | --- | --- |
|  | 02 | **DC1-DH1200-RPP-C12-02 Cx L3** |  | 2026-03-23 | 2026-03-26 |  |  |  |  |  |
| DC1-RPP-L3-CX-4015 |  | DC1-RPP-C12-02 A/B FTE | 1d | 2026-03-23 | 2026-03-23 | DC1-RPP-L2-2850, DC1-COD-L3-CX-4015 | 48d | 0d | Riley Warring | ROS |
| DC1-RPP-L3-CX-4025 |  | DC1-RPP-C12-02 A/B L3 Startup | 2d | 2026-03-24 | 2026-03-25 | DC1-RPP-L3-CX-4015 | 48d | 0d | Riley Warring | SQD |
| DC1-RPP-L3-CX-4035 |  | DC1-RPP-C12-02 A/B BMS/EPMS | 1d | 2026-03-26 | 2026-03-26 | DC1-RPP-L3-CX-4025 | 48d | 29d | Riley Warring | PRM |
|  | 03 | **DC1-DH1200-RPP-C12-03 Cx L3** |  | 2026-03-23 | 2026-03-26 |  |  |  |  |  |
| DC1-RPP-L3-CX-4045 |  | DC1-RPP-C12-03 A/B FTE | 1d | 2026-03-23 | 2026-03-23 | DC1-RPP-L2-2860, DC1-COD-L3-CX-4045 | 48d | 0d | Riley Warring | ROS |
| DC1-RPP-L3-CX-4055 |  | DC1-RPP-C12-03 A/B L3 Startup | 2d | 2026-03-24 | 2026-03-25 | DC1-RPP-L3-CX-4045 | 48d | 0d | Riley Warring | SQD |
| DC1-RPP-L3-CX-4065 |  | DC1-RPP-C12-03 A/B BMS/EPMS | 1d | 2026-03-26 | 2026-03-26 | DC1-RPP-L3-CX-4055 | 48d | 29d | Riley Warring | PRM |
|  | 04 | **DC1-DH1200-RPP-C12-04 Cx L3** |  | 2026-03-23 | 2026-03-26 |  |  |  |  |  |
| DC1-RPP-L3-CX-4075 |  | DC1-RPP-C12-04 A/B FTE | 1d | 2026-03-23 | 2026-03-23 | DC1-RPP-L2-2870, DC1-COD-L3-CX-4075 | 48d | 0d | Riley Warring | ROS |
| DC1-RPP-L3-CX-4085 |  | DC1-RPP-C12-04 A/B L3 Startup | 2d | 2026-03-24 | 2026-03-25 | DC1-RPP-L3-CX-4075 | 48d | 0d | Riley Warring | SQD |
| DC1-RPP-L3-CX-4095 |  | DC1-RPP-C12-04 A/B BMS/EPMS | 1d | 2026-03-26 | 2026-03-26 | DC1-RPP-L3-CX-4085 | 48d | 29d | Riley Warring | PRM |
|  | 05 | **DC1-DH1200-RPP-C12-05 Cx L3** |  | 2026-03-23 | 2026-03-26 |  |  |  |  |  |
| DC1-RPP-L3-CX-4105 |  | DC1-RPP-C12-05 A/B FTE | 1d | 2026-03-23 | 2026-03-23 | DC1-RPP-L2-2880, DC1-COD-L3-CX-4105 | 48d | 0d | Riley Warring | ROS |
| DC1-RPP-L3-CX-4115 |  | DC1-RPP-C12-05 A/B L3 Startup | 2d | 2026-03-24 | 2026-03-25 | DC1-RPP-L3-CX-4105 | 48d | 0d | Riley Warring | SQD |
| DC1-RPP-L3-CX-4125 |  | DC1-RPP-C12-05 A/B BMS/EPMS | 1d | 2026-03-26 | 2026-03-26 | DC1-RPP-L3-CX-4115 | 48d | 29d | Riley Warring | PRM |
|  | 06 | **DC1-DH1200-RPP-C12-06 Cx L3** |  | 2026-03-23 | 2026-03-26 |  |  |  |  |  |
| DC1-RPP-L3-CX-4135 |  | DC1-RPP-C12-06 A/B FTE | 1d | 2026-03-23 | 2026-03-23 | DC1-RPP-L2-2890, DC1-COD-L3-CX-4135 | 48d | 0d | Riley Warring | ROS |
| DC1-RPP-L3-CX-4145 |  | DC1-RPP-C12-06 A/B L3 Startup | 2d | 2026-03-24 | 2026-03-25 | DC1-RPP-L3-CX-4135 | 48d | 0d | Riley Warring | SQD |
| DC1-RPP-L3-CX-4155 |  | DC1-RPP-C12-06 A/B BMS/EPMS | 1d | 2026-03-26 | 2026-03-26 | DC1-RPP-L3-CX-4145 | 48d | 29d | Riley Warring | PRM |
|  | 04 | **DC1-DH1200-RPP-D12 Cx L3** |  | 2026-03-23 | 2026-03-26 |  |  |  |  |  |
|  | 01 | **DC1-DH1200-RPP-D12-01 Cx L3** |  | 2026-03-23 | 2026-03-26 |  |  |  |  |  |
| DC1-RPP-L3-CX-4165 |  | DC1-RPP-D12-01 A/B FTE | 1d | 2026-03-23 | 2026-03-23 | DC1-RPP-L2-2900, DC1-COD-L3-CX-4165 | 48d | 0d | Riley Warring | ROS |
| DC1-RPP-L3-CX-4175 |  | DC1-RPP-D12-01 A/B L3 Startup | 2d | 2026-03-24 | 2026-03-25 | DC1-RPP-L3-CX-4165 | 48d | 0d | Riley Warring | SQD |
| DC1-RPP-L3-CX-4185 |  | DC1-RPP-D12-01 A/B BMS/EPMS | 1d | 2026-03-26 | 2026-03-26 | DC1-RPP-L3-CX-4175 | 48d | 29d | Riley Warring | PRM |

Notes:
- DC1-RPP-L3-CX-4025: Steps: EC Startup Report; Vendor Startup
- DC1-RPP-L3-CX-4055: Steps: EC Startup Report; Vendor Startup
- DC1-RPP-L3-CX-4085: Steps: EC Startup Report; Vendor Startup
- DC1-RPP-L3-CX-4115: Steps: EC Startup Report; Vendor Startup
- DC1-RPP-L3-CX-4145: Steps: EC Startup Report; Vendor Startup
- DC1-RPP-L3-CX-4175: Steps: EC Startup Report; Vendor Startup

| ID | WBS | Activity | Duration | Start | Finish | Predecessors | Total float | Free float | Layton Responsible Party | Vendor Responsible Party |
| --- | --- | --- | --- | --- | --- | --- | --- | --- | --- | --- |
|  | 02 | **DC1-DH1200-RPP-D12-02 Cx L3** |  | 2026-03-23 | 2026-03-26 |  |  |  |  |  |
| DC1-RPP-L3-CX-4195 |  | DC1-RPP-D12-02 A/B FTE | 1d | 2026-03-23 | 2026-03-23 | DC1-RPP-L2-2910, DC1-COD-L3-CX-4195 | 48d | 0d | Riley Warring | ROS |
| DC1-RPP-L3-CX-4205 |  | DC1-RPP-D12-02 A/B L3 Startup | 2d | 2026-03-24 | 2026-03-25 | DC1-RPP-L3-CX-4195 | 48d | 0d | Riley Warring | SQD |
| DC1-RPP-L3-CX-4215 |  | DC1-RPP-D12-02 A/B BMS/EPMS | 1d | 2026-03-26 | 2026-03-26 | DC1-RPP-L3-CX-4205 | 48d | 29d | Riley Warring | PRM |
|  | 03 | **DC1-DH1200-RPP-D12-03 Cx L3** |  | 2026-03-23 | 2026-03-26 |  |  |  |  |  |
| DC1-RPP-L3-CX-4225 |  | DC1-RPP-D12-03 A/B FTE | 1d | 2026-03-23 | 2026-03-23 | DC1-RPP-L2-2920, DC1-COD-L3-CX-4225 | 48d | 0d | Riley Warring | ROS |
| DC1-RPP-L3-CX-4235 |  | DC1-RPP-D12-03 A/B L3 Startup | 2d | 2026-03-24 | 2026-03-25 | DC1-RPP-L3-CX-4225 | 48d | 0d | Riley Warring | SQD |
| DC1-RPP-L3-CX-4245 |  | DC1-RPP-D12-03 A/B BMS/EPMS | 1d | 2026-03-26 | 2026-03-26 | DC1-RPP-L3-CX-4235 | 48d | 29d | Riley Warring | PRM |
|  | 04 | **DC1-DH1200-RPP-D12-04 Cx L3** |  | 2026-03-23 | 2026-03-26 |  |  |  |  |  |
| DC1-RPP-L3-CX-4255 |  | DC1-RPP-D12-04 A/B FTE | 1d | 2026-03-23 | 2026-03-23 | DC1-RPP-L2-2930, DC1-COD-L3-CX-4255 | 48d | 0d | Riley Warring | ROS |
| DC1-RPP-L3-CX-4265 |  | DC1-RPP-D12-04 A/B L3 Startup | 2d | 2026-03-24 | 2026-03-25 | DC1-RPP-L3-CX-4255 | 48d | 0d | Riley Warring | SQD |
| DC1-RPP-L3-CX-4275 |  | DC1-RPP-D12-04 A/B BMS/EPMS | 1d | 2026-03-26 | 2026-03-26 | DC1-RPP-L3-CX-4265 | 48d | 29d | Riley Warring | PRM |
|  | 05 | **DC1-DH1200-RPP-D12-05 Cx L3** |  | 2026-03-23 | 2026-03-26 |  |  |  |  |  |
| DC1-RPP-L3-CX-4285 |  | DC1-RPP-D12-05 A/B FTE | 1d | 2026-03-23 | 2026-03-23 | DC1-RPP-L2-2940, DC1-COD-L3-CX-4285 | 48d | 0d | Riley Warring | ROS |
| DC1-RPP-L3-CX-4295 |  | DC1-RPP-D12-05 A/B L3 Startup | 2d | 2026-03-24 | 2026-03-25 | DC1-RPP-L3-CX-4285 | 48d | 0d | Riley Warring | SQD |
| DC1-RPP-L3-CX-4305 |  | DC1-RPP-D12-05 A/B BMS/EPMS | 1d | 2026-03-26 | 2026-03-26 | DC1-RPP-L3-CX-4295 | 48d | 29d | Riley Warring | PRM |
|  | 06 | **DC1-DH1200-RPP-D12-06 Cx L3** |  | 2026-03-23 | 2026-03-26 |  |  |  |  |  |
| DC1-RPP-L3-CX-4315 |  | DC1-RPP-D12-06 A/B FTE | 1d | 2026-03-23 | 2026-03-23 | DC1-RPP-L2-2950, DC1-COD-L3-CX-4315 | 48d | 0d | Riley Warring | ROS |
| DC1-RPP-L3-CX-4325 |  | DC1-RPP-D12-06 A/B L3 Startup | 2d | 2026-03-24 | 2026-03-25 | DC1-RPP-L3-CX-4315 | 48d | 0d | Riley Warring | SQD |
| DC1-RPP-L3-CX-4335 |  | DC1-RPP-D12-06 A/B BMS/EPMS | 1d | 2026-03-26 | 2026-03-26 | DC1-RPP-L3-CX-4325 | 48d | 29d | Riley Warring | PRM |
|  | 05 | **DC1-DH1200-RPP-E12 Cx L3** |  | 2026-03-23 | 2026-03-26 |  |  |  |  |  |
|  | 01 | **DC1-DH1200-RPP-E12-01 Cx L3** |  | 2026-03-23 | 2026-03-26 |  |  |  |  |  |
| DC1-RPP-L3-CX-4345 |  | DC1-RPP-E12-01 A/B FTE | 1d | 2026-03-23 | 2026-03-23 | DC1-RPP-L2-2960, DC1-COD-L3-CX-4345 | 48d | 0d | Riley Warring | ROS |
| DC1-RPP-L3-CX-4355 |  | DC1-RPP-E12-01 A/B L3 Startup | 2d | 2026-03-24 | 2026-03-25 | DC1-RPP-L3-CX-4345 | 48d | 0d | Riley Warring | SQD |
| DC1-RPP-L3-CX-4365 |  | DC1-RPP-E12-01 A/B BMS/EPMS | 1d | 2026-03-26 | 2026-03-26 | DC1-RPP-L3-CX-4355 | 48d | 29d | Riley Warring | PRM |

Notes:
- DC1-RPP-L3-CX-4205: Steps: EC Startup Report; Vendor Startup
- DC1-RPP-L3-CX-4235: Steps: EC Startup Report; Vendor Startup
- DC1-RPP-L3-CX-4265: Steps: EC Startup Report; Vendor Startup
- DC1-RPP-L3-CX-4295: Steps: EC Startup Report; Vendor Startup
- DC1-RPP-L3-CX-4325: Steps: EC Startup Report; Vendor Startup
- DC1-RPP-L3-CX-4355: Steps: EC Startup Report; Vendor Startup

| ID | WBS | Activity | Duration | Start | Finish | Predecessors | Total float | Free float | Layton Responsible Party | Vendor Responsible Party |
| --- | --- | --- | --- | --- | --- | --- | --- | --- | --- | --- |
|  | 02 | **DC1-DH1200-RPP-E12-02 Cx L3** |  | 2026-03-23 | 2026-03-26 |  |  |  |  |  |
| DC1-RPP-L3-CX-4375 |  | DC1-RPP-E12-02 A/B FTE | 1d | 2026-03-23 | 2026-03-23 | DC1-RPP-L2-2970, DC1-COD-L3-CX-4375 | 48d | 0d | Riley Warring | ROS |
| DC1-RPP-L3-CX-4385 |  | DC1-RPP-E12-02 A/B L3 Startup | 2d | 2026-03-24 | 2026-03-25 | DC1-RPP-L3-CX-4375 | 48d | 0d | Riley Warring | SQD |
| DC1-RPP-L3-CX-4395 |  | DC1-RPP-E12-02 A/B BMS/EPMS | 1d | 2026-03-26 | 2026-03-26 | DC1-RPP-L3-CX-4385 | 48d | 29d | Riley Warring | PRM |
|  | 03 | **DC1-DH1200-RPP-E12-03 Cx L3** |  | 2026-03-23 | 2026-03-26 |  |  |  |  |  |
| DC1-RPP-L3-CX-4405 |  | DC1-RPP-E12-03 A/B FTE | 1d | 2026-03-23 | 2026-03-23 | DC1-RPP-L2-2980, DC1-COD-L3-CX-4405 | 48d | 0d | Riley Warring | ROS |
| DC1-RPP-L3-CX-4415 |  | DC1-RPP-E12-03 A/B L3 Startup | 2d | 2026-03-24 | 2026-03-25 | DC1-RPP-L3-CX-4405 | 48d | 0d | Riley Warring | SQD |
| DC1-RPP-L3-CX-4425 |  | DC1-RPP-E12-03 A/B BMS/EPMS | 1d | 2026-03-26 | 2026-03-26 | DC1-RPP-L3-CX-4415 | 48d | 29d | Riley Warring | PRM |
|  | 04 | **DC1-DH1200-RPP-E12-04 Cx L3** |  | 2026-03-23 | 2026-03-26 |  |  |  |  |  |
| DC1-RPP-L3-CX-4435 |  | DC1-RPP-E12-04 A/B FTE | 1d | 2026-03-23 | 2026-03-23 | DC1-RPP-L2-2990, DC1-COD-L3-CX-4435 | 48d | 0d | Riley Warring | ROS |
| DC1-RPP-L3-CX-4445 |  | DC1-RPP-E12-04 A/B L3 Startup | 2d | 2026-03-24 | 2026-03-25 | DC1-RPP-L3-CX-4435 | 48d | 0d | Riley Warring | SQD |
| DC1-RPP-L3-CX-4455 |  | DC1-RPP-E12-04 A/B BMS/EPMS | 1d | 2026-03-26 | 2026-03-26 | DC1-RPP-L3-CX-4445 | 48d | 29d | Riley Warring | PRM |
|  | 05 | **DC1-DH1200-RPP-E12-05 Cx L3** |  | 2026-03-23 | 2026-03-26 |  |  |  |  |  |
| DC1-RPP-L3-CX-4465 |  | DC1-RPP-E12-05 A/B FTE | 1d | 2026-03-23 | 2026-03-23 | DC1-RPP-L2-3000, DC1-COD-L3-CX-4465 | 48d | 0d | Riley Warring | ROS |
| DC1-RPP-L3-CX-4475 |  | DC1-RPP-E12-05 A/B L3 Startup | 2d | 2026-03-24 | 2026-03-25 | DC1-RPP-L3-CX-4465 | 48d | 0d | Riley Warring | SQD |
| DC1-RPP-L3-CX-4485 |  | DC1-RPP-E12-05 A/B BMS/EPMS | 1d | 2026-03-26 | 2026-03-26 | DC1-RPP-L3-CX-4475 | 48d | 29d | Riley Warring | PRM |
|  | 06 | **DC1-DH1200-RPP-E12-06 Cx L3** |  | 2026-03-23 | 2026-03-26 |  |  |  |  |  |
| DC1-RPP-L3-CX-4495 |  | DC1-RPP-E12-06 A/B FTE | 1d | 2026-03-23 | 2026-03-23 | DC1-RPP-L2-3010, DC1-COD-L3-CX-4495 | 48d | 0d | Riley Warring | ROS |
| DC1-RPP-L3-CX-4505 |  | DC1-RPP-E12-06 A/B L3 Startup | 2d | 2026-03-24 | 2026-03-25 | DC1-RPP-L3-CX-4495 | 48d | 0d | Riley Warring | SQD |
| DC1-RPP-L3-CX-4515 |  | DC1-RPP-E12-06 A/B BMS/EPMS | 1d | 2026-03-26 | 2026-03-26 | DC1-RPP-L3-CX-4505 | 48d | 29d | Riley Warring | PRM |
|  | 06 | **DC1-DH1200-RPP-F12 Cx L3** |  | 2026-03-23 | 2026-03-26 |  |  |  |  |  |
|  | 01 | **DC1-DH1200-RPP-F12-01 Cx L3** |  | 2026-03-23 | 2026-03-26 |  |  |  |  |  |
| DC1-RPP-L3-CX-4525 |  | DC1-RPP-F12-01 A/B FTE | 1d | 2026-03-23 | 2026-03-23 | DC1-RPP-L2-3020, DC1-COD-L3-CX-4525 | 48d | 0d | Riley Warring | ROS |
| DC1-RPP-L3-CX-4535 |  | DC1-RPP-F12-01 A/B L3 Startup | 2d | 2026-03-24 | 2026-03-25 | DC1-RPP-L3-CX-4525 | 48d | 0d | Riley Warring | SQD |
| DC1-RPP-L3-CX-4545 |  | DC1-RPP-F12-01 A/B BMS/EPMS | 1d | 2026-03-26 | 2026-03-26 | DC1-RPP-L3-CX-4535 | 48d | 29d | Riley Warring | PRM |

Notes:
- DC1-RPP-L3-CX-4385: Steps: EC Startup Report; Vendor Startup
- DC1-RPP-L3-CX-4415: Steps: EC Startup Report; Vendor Startup
- DC1-RPP-L3-CX-4445: Steps: EC Startup Report; Vendor Startup
- DC1-RPP-L3-CX-4475: Steps: EC Startup Report; Vendor Startup
- DC1-RPP-L3-CX-4505: Steps: EC Startup Report; Vendor Startup
- DC1-RPP-L3-CX-4535: Steps: EC Startup Report; Vendor Startup

| ID | WBS | Activity | Duration | Start | Finish | Predecessors | Total float | Free float | Layton Responsible Party | Vendor Responsible Party |
| --- | --- | --- | --- | --- | --- | --- | --- | --- | --- | --- |
|  | 02 | **DC1-DH1200-RPP-F12-02 Cx L3** |  | 2026-03-23 | 2026-03-26 |  |  |  |  |  |
| DC1-RPP-L3-CX-4555 |  | DC1-RPP-F12-02 A/B FTE | 1d | 2026-03-23 | 2026-03-23 | DC1-RPP-L2-3030, DC1-COD-L3-CX-4555 | 48d | 0d | Riley Warring | ROS |
| DC1-RPP-L3-CX-4565 |  | DC1-RPP-F12-02 A/B L3 Startup | 2d | 2026-03-24 | 2026-03-25 | DC1-RPP-L3-CX-4555 | 48d | 0d | Riley Warring | SQD |
| DC1-RPP-L3-CX-4575 |  | DC1-RPP-F12-02 A/B BMS/EPMS | 1d | 2026-03-26 | 2026-03-26 | DC1-RPP-L3-CX-4565 | 48d | 29d | Riley Warring | PRM |
|  | 03 | **DC1-DH1200-RPP-F12-03 Cx L3** |  | 2026-03-23 | 2026-03-26 |  |  |  |  |  |
| DC1-RPP-L3-CX-4585 |  | DC1-RPP-F12-03 A/B FTE | 1d | 2026-03-23 | 2026-03-23 | DC1-RPP-L2-3040, DC1-COD-L3-CX-4585 | 48d | 0d | Riley Warring | ROS |
| DC1-RPP-L3-CX-4595 |  | DC1-RPP-F12-03 A/B L3 Startup | 2d | 2026-03-24 | 2026-03-25 | DC1-RPP-L3-CX-4585 | 48d | 0d | Riley Warring | SQD |
| DC1-RPP-L3-CX-4605 |  | DC1-RPP-F12-03 A/B BMS/EPMS | 1d | 2026-03-26 | 2026-03-26 | DC1-RPP-L3-CX-4595 | 48d | 29d | Riley Warring | PRM |
|  | 04 | **DC1-DH1200-RPP-F12-04 Cx L3** |  | 2026-03-23 | 2026-03-26 |  |  |  |  |  |
| DC1-RPP-L3-CX-4615 |  | DC1-RPP-F12-04 A/B FTE | 1d | 2026-03-23 | 2026-03-23 | DC1-RPP-L2-3050, DC1-COD-L3-CX-4615 | 48d | 0d | Riley Warring | ROS |
| DC1-RPP-L3-CX-4625 |  | DC1-RPP-F12-04 A/B L3 Startup | 2d | 2026-03-24 | 2026-03-25 | DC1-RPP-L3-CX-4615 | 48d | 0d | Riley Warring | SQD |
| DC1-RPP-L3-CX-4635 |  | DC1-RPP-F12-04 A/B BMS/EPMS | 1d | 2026-03-26 | 2026-03-26 | DC1-RPP-L3-CX-4625 | 48d | 29d | Riley Warring | PRM |
|  | 05 | **DC1-DH1200-RPP-F12-05 Cx L3** |  | 2026-03-23 | 2026-03-26 |  |  |  |  |  |
| DC1-RPP-L3-CX-4645 |  | DC1-RPP-F12-05 A/B FTE | 1d | 2026-03-23 | 2026-03-23 | DC1-RPP-L2-3060, DC1-COD-L3-CX-4645 | 48d | 0d | Riley Warring | ROS |
| DC1-RPP-L3-CX-4655 |  | DC1-RPP-F12-05 A/B L3 Startup | 2d | 2026-03-24 | 2026-03-25 | DC1-RPP-L3-CX-4645 | 48d | 0d | Riley Warring | SQD |
| DC1-RPP-L3-CX-4665 |  | DC1-RPP-F12-05 A/B BMS/EPMS | 1d | 2026-03-26 | 2026-03-26 | DC1-RPP-L3-CX-4655 | 48d | 29d | Riley Warring | PRM |
|  | 06 | **DC1-DH1200-RPP-F12-06 Cx L3** |  | 2026-03-23 | 2026-03-26 |  |  |  |  |  |
| DC1-RPP-L3-CX-4675 |  | DC1-RPP-F12-06 A/B FTE | 1d | 2026-03-23 | 2026-03-23 | DC1-RPP-L2-3070, DC1-COD-L3-CX-4675 | 48d | 0d | Riley Warring | ROS |
| DC1-RPP-L3-CX-4685 |  | DC1-RPP-F12-06 A/B L3 Startup | 2d | 2026-03-24 | 2026-03-25 | DC1-RPP-L3-CX-4675 | 48d | 0d | Riley Warring | SQD |
| DC1-RPP-L3-CX-4695 |  | DC1-RPP-F12-06 A/B BMS/EPMS | 1d | 2026-03-26 | 2026-03-26 | DC1-RPP-L3-CX-4685 | 48d | 29d | Riley Warring | PRM |
|  | 08 | **DC1-DH1200 MOD-02 Cx L3** |  | 2026-03-02 | 2026-03-26 |  |  |  |  |  |
|  | 01 | **DC1-DH1200 MOD-A12-02 Cx L3** |  | 2026-03-02 | 2026-03-05 |  |  |  |  |  |
| DC1-MOD2-L3-Cx-2420 |  | DC1-MOD-A12-02 FTE | 1d | 2026-03-02 | 2026-03-02 | DC1-MOD02-L2-2140, DC1-SWD-L3-CX-2420 | 34d | 0d | Riley Warring | ROS |
| DC1-MOD2-L3-Cx-2430 |  | DC1-MOD-A12-02 L3 Startup | 2d | 2026-03-03 | 2026-03-04 | DC1-MOD2-L3-Cx-2420 | 39d | 0d |  | PHE |
| DC1-MOD2-L3-Cx-2440 |  | DC1-MOD-A12-02 BMS/EPMS | 1d | 2026-03-05 | 2026-03-05 | DC1-MOD2-L3-Cx-2430 | 39d |  |  | PRM |

Notes:
- DC1-RPP-L3-CX-4565: Steps: EC Startup Report; Vendor Startup
- DC1-RPP-L3-CX-4595: Steps: EC Startup Report; Vendor Startup
- DC1-RPP-L3-CX-4625: Steps: EC Startup Report; Vendor Startup
- DC1-RPP-L3-CX-4655: Steps: EC Startup Report; Vendor Startup
- DC1-RPP-L3-CX-4685: Steps: EC Startup Report; Vendor Startup
- DC1-MOD2-L3-Cx-2430: Steps: EC Startup Report; Vendor Startup

| ID | WBS | Activity | Duration | Start | Finish | Predecessors | Total float | Free float | Layton Responsible Party | Vendor Responsible Party |
| --- | --- | --- | --- | --- | --- | --- | --- | --- | --- | --- |
|  | 02 | **DC1-DH1200 MOD-B12-02 Cx L3** |  | 2026-03-02 | 2026-03-05 |  |  |  |  |  |
| DC1-MOD2-L3-Cx-2450 |  | DC1-MOD-B12-02 FTE | 1d | 2026-03-02 | 2026-03-02 | DC1-MOD02-L2-2150, DC1-SWD-L3-CX-2450 | 34d | 0d | Riley Warring | ROS |
| DC1-MOD2-L3-Cx-2460 |  | DC1-MOD-B12-02 L3 Startup | 2d | 2026-03-03 | 2026-03-04 | DC1-MOD2-L3-Cx-2450 | 39d | 0d |  | PHE |
| DC1-MOD2-L3-Cx-2470 |  | DC1-MOD-B12-02 BMS/EPMS | 1d | 2026-03-05 | 2026-03-05 | DC1-MOD2-L3-Cx-2460 | 39d |  |  | PRM |
|  | 03 | **DC1-DH1200 MOD-C12-02 Cx L3** |  | 2026-03-05 | 2026-03-10 |  |  |  |  |  |
| DC1-MOD2-L3-Cx-2480 |  | DC1-MOD-C12-02 FTE | 1d | 2026-03-05 | 2026-03-05 | DC1-MOD02-L2-2160, DC1-SWD-L3-CX-2480 | 31d | 0d | Riley Warring | ROS |
| DC1-MOD2-L3-Cx-2490 |  | DC1-MOD-C12-02 L3 Startup | 2d | 2026-03-06 | 2026-03-09 | DC1-MOD2-L3-Cx-2480 | 36d | 0d |  | PHE |
| DC1-MOD2-L3-Cx-2500 |  | DC1-MOD-C12-02 BMS/EPMS | 1d | 2026-03-10 | 2026-03-10 | DC1-MOD2-L3-Cx-2490 | 36d |  |  | PRM |
|  | 04 | **DC1-DH1200 MOD-D12-02 Cx L3** |  | 2026-03-10 | 2026-03-13 |  |  |  |  |  |
| DC1-MOD2-L3-Cx-2510 |  | DC1-MOD-D12-02 FTE | 1d | 2026-03-10 | 2026-03-10 | DC1-MOD02-L2-2170, DC1-SWD-L3-CX-2510 | 28d | 0d | Riley Warring | ROS |
| DC1-MOD2-L3-Cx-2520 |  | DC1-MOD-D12-02 L3 Startup | 2d | 2026-03-11 | 2026-03-12 | DC1-MOD2-L3-Cx-2510 | 33d | 0d |  | PHE |
| DC1-MOD2-L3-Cx-2530 |  | DC1-MOD-D12-02 BMS/EPMS | 1d | 2026-03-13 | 2026-03-13 | DC1-MOD2-L3-Cx-2520 | 33d |  |  | PRM |
|  | 05 | **DC1-DH1200 MOD-E12-02 Cx L3** |  | 2026-03-13 | 2026-03-18 |  |  |  |  |  |
| DC1-MOD2-L3-Cx-2540 |  | DC1-MOD-E12-02 FTE | 1d | 2026-03-13 | 2026-03-13 | DC1-MOD02-L2-2180, DC1-SWD-L3-CX-2540 | 25d | 0d | Riley Warring | ROS |
| DC1-MOD2-L3-Cx-2550 |  | DC1-MOD-E12-02 L3 Startup | 2d | 2026-03-16 | 2026-03-17 | DC1-MOD2-L3-Cx-2540 | 30d | 0d |  | PHE |
| DC1-MOD2-L3-Cx-2560 |  | DC1-MOD-E12-02 BMS/EPMS | 1d | 2026-03-18 | 2026-03-18 | DC1-MOD2-L3-Cx-2550 | 30d |  |  | PRM |
|  | 06 | **DC1-DH1200 MOD-F12-02 Cx L3** |  | 2026-03-18 | 2026-03-23 |  |  |  |  |  |
| DC1-MOD2-L3-Cx-2570 |  | DC1-MOD-F12-02 FTE | 1d | 2026-03-18 | 2026-03-18 | DC1-MOD02-L2-2190, DC1-SWD-L3-CX-2570 | 22d | 0d | Riley Warring | ROS |
| DC1-MOD2-L3-Cx-2580 |  | DC1-MOD-F12-02 L3 Startup | 2d | 2026-03-19 | 2026-03-20 | DC1-MOD2-L3-Cx-2570 | 27d | 0d |  | PHE |
| DC1-MOD2-L3-Cx-2590 |  | DC1-MOD-F12-02 BMS/EPMS | 1d | 2026-03-23 | 2026-03-23 | DC1-MOD2-L3-Cx-2580 | 27d |  |  | PRM |
|  | 07 | **DC1-DH1200 MOD-R12-02 Cx L3** |  | 2026-03-23 | 2026-03-26 |  |  |  |  |  |
| DC1-MOD2-L3-Cx-2600 |  | DC1-MOD-R12-02 FTE | 1d | 2026-03-23 | 2026-03-23 | DC1-MOD02-L2-2200, DC1-SWD-L3-CX-2600 | 19d | 0d | Riley Warring | ROS |
| DC1-MOD2-L3-Cx-2610 |  | DC1-MOD-R12-02 L3 Startup | 2d | 2026-03-24 | 2026-03-25 | DC1-MOD2-L3-Cx-2600 | 24d | 0d |  | PHE |
| DC1-MOD2-L3-Cx-2620 |  | DC1-MOD-R12-02 BMS/EPMS | 1d | 2026-03-26 | 2026-03-26 | DC1-MOD2-L3-Cx-2610 | 24d |  |  | PRM |

Notes:
- DC1-MOD2-L3-Cx-2460: Steps: EC Startup Report; Vendor Startup
- DC1-MOD2-L3-Cx-2490: Steps: EC Startup Report; Vendor Startup
- DC1-MOD2-L3-Cx-2520: Steps: EC Startup Report; Vendor Startup
- DC1-MOD2-L3-Cx-2550: Steps: EC Startup Report; Vendor Startup
- DC1-MOD2-L3-Cx-2580: Steps: EC Startup Report; Vendor Startup
- DC1-MOD2-L3-Cx-2610: Steps: EC Startup Report; Vendor Startup

| ID | WBS | Activity | Duration | Start | Finish | Predecessors | Total float | Free float | Layton Responsible Party | Vendor Responsible Party |
| --- | --- | --- | --- | --- | --- | --- | --- | --- | --- | --- |
|  | 09 | **DC1-DH1200 MOD-03 Cx L3** |  | 2026-03-26 | 2026-04-29 |  |  |  |  |  |
|  | 01 | **DC1-DH1200 MOD-A12-03 Cx L3** |  | 2026-03-26 | 2026-03-31 |  |  |  |  |  |
| DC1-MOD3-L3-Cx-2420 |  | DC1-MOD-A12-03 FTE | 1d | 2026-03-26 | 2026-03-26 | DC1-MOD03-L2-2140, DC1-UPSM-L3-CX-2420 | 21d | 0d | Riley Warring | ROS |
| DC1-MOD3-L3-Cx-2430 |  | DC1-MOD-A12-03 L3 Startup | 2d | 2026-03-27 | 2026-03-30 | DC1-MOD3-L3-Cx-2420 | 21d | 0d | Riley Warring | PHE |
| DC1-MOD3-L3-Cx-2440 |  | DC1-MOD-A12-03 BMS/EPMS | 1d | 2026-03-31 | 2026-03-31 | DC1-MOD3-L3-Cx-2430 | 21d |  | Riley Warring | PRM |
|  | 02 | **DC1-DH1200 MOD-B12-03 Cx L3** |  | 2026-03-31 | 2026-04-03 |  |  |  |  |  |
| DC1-MOD3-L3-Cx-2450 |  | DC1-MOD-B12-03 FTE | 1d | 2026-03-31 | 2026-03-31 | DC1-MOD03-L2-2150, DC1-UPSM-L3-CX-2450 | 18d | 0d | Riley Warring | ROS |
| DC1-MOD3-L3-Cx-2460 |  | DC1-MOD-B12-03 L3 Startup | 2d | 2026-04-01 | 2026-04-02 | DC1-MOD3-L3-Cx-2450 | 18d | 0d | Riley Warring | PHE |
| DC1-MOD3-L3-Cx-2470 |  | DC1-MOD-B12-03 BMS/EPMS | 1d | 2026-04-03 | 2026-04-03 | DC1-MOD3-L3-Cx-2460 | 18d |  | Riley Warring | PRM |
|  | 03 | **DC1-DH1200 MOD-C12-03 Cx L3** |  | 2026-04-03 | 2026-04-08 |  |  |  |  |  |
| DC1-MOD3-L3-Cx-2480 |  | DC1-MOD-C12-03 FTE | 1d | 2026-04-03 | 2026-04-03 | DC1-MOD03-L2-2160, DC1-UPSM-L3-CX-2480 | 15d | 0d | Riley Warring | ROS |
| DC1-MOD3-L3-Cx-2490 |  | DC1-MOD-C12-03 L3 Startup | 2d | 2026-04-06 | 2026-04-07 | DC1-MOD3-L3-Cx-2480 | 15d | 0d | Riley Warring | PHE |
| DC1-MOD3-L3-Cx-2500 |  | DC1-MOD-C12-03 BMS/EPMS | 1d | 2026-04-08 | 2026-04-08 | DC1-MOD3-L3-Cx-2490 | 15d |  | Riley Warring | PRM |
|  | 04 | **DC1-DH1200 MOD-D12-03 Cx L3** |  | 2026-04-08 | 2026-04-13 |  |  |  |  |  |
| DC1-MOD3-L3-Cx-2510 |  | DC1-MOD-D12-03 FTE | 1d | 2026-04-08 | 2026-04-08 | DC1-MOD03-L2-2170, DC1-UPSM-L3-CX-2510 | 12d | 0d | Riley Warring | ROS |
| DC1-MOD3-L3-Cx-2520 |  | DC1-MOD-D12-03 L3 Startup | 2d | 2026-04-09 | 2026-04-10 | DC1-MOD3-L3-Cx-2510 | 12d | 0d | Riley Warring | PHE |
| DC1-MOD3-L3-Cx-2530 |  | DC1-MOD-D12-03 BMS/EPMS | 1d | 2026-04-13 | 2026-04-13 | DC1-MOD3-L3-Cx-2520 | 12d |  | Riley Warring | PRM |
|  | 05 | **DC1-DH1200 MOD-E12-03 Cx L3** |  | 2026-04-13 | 2026-04-16 |  |  |  |  |  |
| DC1-MOD3-L3-Cx-2540 |  | DC1-MOD-E12-03 FTE | 1d | 2026-04-13 | 2026-04-13 | DC1-MOD03-L2-2180, DC1-UPSM-L3-CX-2540 | 9d | 0d | Riley Warring | ROS |
| DC1-MOD3-L3-Cx-2550 |  | DC1-MOD-E12-03 L3 Startup | 2d | 2026-04-14 | 2026-04-15 | DC1-MOD3-L3-Cx-2540 | 9d | 0d | Riley Warring | PHE |
| DC1-MOD3-L3-Cx-2560 |  | DC1-MOD-E12-03 BMS/EPMS | 1d | 2026-04-16 | 2026-04-16 | DC1-MOD3-L3-Cx-2550 | 9d |  | Riley Warring | PRM |
|  | 06 | **DC1-DH1200 MOD-F12-03 Cx L3** |  | 2026-04-16 | 2026-04-21 |  |  |  |  |  |
| DC1-MOD3-L3-Cx-2570 |  | DC1-MOD-F12-03 FTE | 1d | 2026-04-16 | 2026-04-16 | DC1-MOD03-L2-2190, DC1-UPSM-L3-CX-2570 | 6d | 0d | Riley Warring | ROS |
| DC1-MOD3-L3-Cx-2580 |  | DC1-MOD-F12-03 L3 Startup | 2d | 2026-04-17 | 2026-04-20 | DC1-MOD3-L3-Cx-2570 | 6d | 0d | Riley Warring | PHE |
| DC1-MOD3-L3-Cx-2590 |  | DC1-MOD-F12-03 BMS/EPMS | 1d | 2026-04-21 | 2026-04-21 | DC1-MOD3-L3-Cx-2580 | 6d |  | Riley Warring | PRM |

Notes:
- DC1-MOD3-L3-Cx-2430: Steps: EC Startup Report; Vendor Startup
- DC1-MOD3-L3-Cx-2460: Steps: EC Startup Report; Vendor Startup
- DC1-MOD3-L3-Cx-2490: Steps: EC Startup Report; Vendor Startup
- DC1-MOD3-L3-Cx-2520: Steps: EC Startup Report; Vendor Startup
- DC1-MOD3-L3-Cx-2550: Steps: EC Startup Report; Vendor Startup
- DC1-MOD3-L3-Cx-2580: Steps: EC Startup Report; Vendor Startup

| ID | WBS | Activity | Duration | Start | Finish | Predecessors | Total float | Free float | Layton Responsible Party | Vendor Responsible Party |
| --- | --- | --- | --- | --- | --- | --- | --- | --- | --- | --- |
|  | 07 | **DC1-DH1200 MOD-R12-03 Cx L3** |  | 2026-04-16 | 2026-04-29 |  |  |  |  |  |
| DC1-MOD3-L3-Cx-2600 |  | DC1-MOD-R12-03 FTE | 1d | 2026-04-16 | 2026-04-16 | DC1-MOD03-L2-2200, DC1-UPSM-L3-CX-2600 | 0d |  | Riley Warring | ROS |
| DC1-MOD3-L3-Cx-2610 |  | DC1-MOD-R12-03 L3 Startup | 2d | 2026-04-17 | 2026-04-20 | DC1-MOD3-L3-Cx-2600 | 0d |  | Riley Warring | PHE |
| DC1-MOD3-L3-Cx-2620 |  | DC1-MOD-R12-03 BMS/EPMS | 1d | 2026-04-29 | 2026-04-29 | DC1-MOD3-L3-Cx-2610 FS+6d | 0d |  | Riley Warring | PRM |
|  | 10 | **DC1-DH1200 CDUs Cx L3** |  | 2026-03-27 | 2026-04-10 |  |  |  |  |  |
|  | 1 | **DC1-CDU-DH1200-01 Cx L3** |  | 2026-03-27 | 2026-04-01 |  |  |  |  |  |
| DC1-CDU-L3-CX-4165 |  | CDU-DH1200-01 FTE | 1d | 2026-03-27 | 2026-03-27 | DC1-CDU-L2-3030, DC1-MOD3-L3-Cx-2420 | 44d | 0d | Riley Warring | ROS |
| DC1-CDU-L3-CX-4175 |  | CDU-DH1200-01 L3 Startup | 2d | 2026-03-30 | 2026-03-31 | DC1-CDU-L3-CX-4165 | 44d | 0d | Riley Warring | VER |
| DC1-CDU-L3-CX-4185 |  | CDU-DH1200-01 BMS/EPMS | 1d | 2026-04-01 | 2026-04-01 | DC1-CDU-L3-CX-4175 | 44d | 25d | Riley Warring | PRM |
|  | 04 | **DC1-CDU-DH1200-04 Cx L3** |  | 2026-03-27 | 2026-04-01 |  |  |  |  |  |
| DC1-CDU-L3-CX-4255 |  | CDU-DH1200-04 FTE | 1d | 2026-03-27 | 2026-03-27 | DC1-CDU-L2-3060, DC1-MOD3-L3-Cx-2420 | 44d | 0d | Riley Warring | ROS |
| DC1-CDU-L3-CX-4265 |  | CDU-DH1200-04 L3 Startup | 2d | 2026-03-30 | 2026-03-31 | DC1-CDU-L3-CX-4255 | 44d | 0d | Riley Warring | VER |
| DC1-CDU-L3-CX-4275 |  | CDU-DH1200-04 BMS/EPMS | 1d | 2026-04-01 | 2026-04-01 | DC1-CDU-L3-CX-4265 | 44d | 25d | Riley Warring | PRM |
|  | 2 | **DC1-CDU-DH1200-02 Cx L3** |  | 2026-03-27 | 2026-04-01 |  |  |  |  |  |
| DC1-CDU-L3-CX-4195 |  | CDU-DH1200-02 FTE | 1d | 2026-03-27 | 2026-03-27 | DC1-CDU-L2-3040, DC1-MOD3-L3-Cx-2420 | 44d | 0d | Riley Warring | ROS |
| DC1-CDU-L3-CX-4205 |  | CDU-DH1200-02 L3 Startup | 2d | 2026-03-30 | 2026-03-31 | DC1-CDU-L3-CX-4195 | 44d | 0d | Riley Warring | VER |
| DC1-CDU-L3-CX-4215 |  | CDU-DH1200-02 BMS/EPMS | 1d | 2026-04-01 | 2026-04-01 | DC1-CDU-L3-CX-4205 | 44d | 25d | Riley Warring | PRM |
|  | 3 | **DC1-CDU-DH1200-03 Cx L3** |  | 2026-03-27 | 2026-04-01 |  |  |  |  |  |
| DC1-CDU-L3-CX-4225 |  | CDU-DH1200-03 FTE | 1d | 2026-03-27 | 2026-03-27 | DC1-CDU-L2-3050, DC1-MOD3-L3-Cx-2420 | 44d | 0d | Riley Warring | ROS |
| DC1-CDU-L3-CX-4235 |  | CDU-DH1200-03 L3 Startup | 2d | 2026-03-30 | 2026-03-31 | DC1-CDU-L3-CX-4225 | 44d | 0d | Riley Warring | VER |
| DC1-CDU-L3-CX-4245 |  | CDU-DH1200-03 BMS/EPMS | 1d | 2026-04-01 | 2026-04-01 | DC1-CDU-L3-CX-4235 | 44d | 25d | Riley Warring | PRM |
|  | 05 | **DC1-CDU-DH1200-05 Cx L3** |  | 2026-03-27 | 2026-04-01 |  |  |  |  |  |
| DC1-CDU-L3-CX-4285 |  | CDU-DH1200-05 FTE | 1d | 2026-03-27 | 2026-03-27 | DC1-CDU-L2-3070, DC1-MOD3-L3-Cx-2420 | 44d | 0d | Riley Warring | ROS |
| DC1-CDU-L3-CX-4295 |  | CDU-DH1200-05 L3 Startup | 2d | 2026-03-30 | 2026-03-31 | DC1-CDU-L3-CX-4285 | 44d | 0d | Riley Warring | VER |
| DC1-CDU-L3-CX-4305 |  | CDU-DH1200-05 BMS/EPMS | 1d | 2026-04-01 | 2026-04-01 | DC1-CDU-L3-CX-4295 | 44d | 25d | Riley Warring | PRM |

Notes:
- DC1-MOD3-L3-Cx-2610: Steps: EC Startup Report; Vendor Startup
- DC1-CDU-L3-CX-4175: Steps: EC Startup Report; MC Installation Checklist; Vendor Startup
- DC1-CDU-L3-CX-4265: Steps: EC Startup Report; MC Installation Checklist; Vendor Startup
- DC1-CDU-L3-CX-4205: Steps: EC Startup Report; MC Installation Checklist; Vendor Startup
- DC1-CDU-L3-CX-4235: Steps: EC Startup Report; MC Installation Checklist; Vendor Startup
- DC1-CDU-L3-CX-4295: Steps: EC Startup Report; MC Installation Checklist; Vendor Startup

| ID | WBS | Activity | Duration | Start | Finish | Predecessors | Total float | Free float | Layton Responsible Party | Vendor Responsible Party |
| --- | --- | --- | --- | --- | --- | --- | --- | --- | --- | --- |
|  | 06 | **DC1-CDU-DH1200-06 Cx L3** |  | 2026-03-27 | 2026-04-01 |  |  |  |  |  |
| DC1-CDU-L3-CX-4315 |  | CDU-DH1200-06 FTE | 1d | 2026-03-27 | 2026-03-27 | DC1-CDU-L2-3080, DC1-MOD3-L3-Cx-2420 | 44d | 0d | Riley Warring | ROS |
| DC1-CDU-L3-CX-4325 |  | CDU-DH1200-06 L3 Startup | 2d | 2026-03-30 | 2026-03-31 | DC1-CDU-L3-CX-4315 | 44d | 0d | Riley Warring | VER |
| DC1-CDU-L3-CX-4335 |  | CDU-DH1200-06 BMS/EPMS | 1d | 2026-04-01 | 2026-04-01 | DC1-CDU-L3-CX-4325 | 44d | 25d | Riley Warring | PRM |
|  | 4 | **DC1-CDU-DH1200-07 Cx L3** |  | 2026-04-02 | 2026-04-07 |  |  |  |  |  |
| DC1-CDU-L3-CX-4345 |  | CDU-DH1200-07 FTE | 1d | 2026-04-02 | 2026-04-02 | DC1-CDU-L2-3090, DC1-MOD3-L3-Cx-2450 | 40d | 0d | Riley Warring | ROS |
| DC1-CDU-L3-CX-4355 |  | CDU-DH1200-07 L3 Startup | 2d | 2026-04-03 | 2026-04-06 | DC1-CDU-L3-CX-4345 | 40d | 0d | Riley Warring | VER |
| DC1-CDU-L3-CX-4365 |  | CDU-DH1200-07 BMS/EPMS | 1d | 2026-04-07 | 2026-04-07 | DC1-CDU-L3-CX-4355 | 40d | 21d | Riley Warring | PRM |
|  | 5 | **DC1-CDU-DH1200-08 Cx L3** |  | 2026-04-02 | 2026-04-07 |  |  |  |  |  |
| DC1-CDU-L3-CX-4375 |  | CDU-DH1200-08 FTE | 1d | 2026-04-02 | 2026-04-02 | DC1-CDU-L2-3100, DC1-MOD3-L3-Cx-2450 | 40d | 0d | Riley Warring | ROS |
| DC1-CDU-L3-CX-4385 |  | CDU-DH1200-08 L3 Startup | 2d | 2026-04-03 | 2026-04-06 | DC1-CDU-L3-CX-4375 | 40d | 0d | Riley Warring | VER |
| DC1-CDU-L3-CX-4395 |  | CDU-DH1200-08 BMS/EPMS | 1d | 2026-04-07 | 2026-04-07 | DC1-CDU-L3-CX-4385 | 40d | 21d | Riley Warring | PRM |
|  | 6 | **DC1-CDU-DH1200-09 Cx L3** |  | 2026-04-02 | 2026-04-07 |  |  |  |  |  |
| DC1-CDU-L3-CX-4405 |  | CDU-DH1200-09 FTE | 1d | 2026-04-02 | 2026-04-02 | DC1-CDU-L2-3110, DC1-MOD3-L3-Cx-2450 | 40d | 0d | Riley Warring | ROS |
| DC1-CDU-L3-CX-4415 |  | CDU-DH1200-09 L3 Startup | 2d | 2026-04-03 | 2026-04-06 | DC1-CDU-L3-CX-4405 | 40d | 0d | Riley Warring | VER |
| DC1-CDU-L3-CX-4425 |  | CDU-DH1200-09 BMS/EPMS | 1d | 2026-04-07 | 2026-04-07 | DC1-CDU-L3-CX-4415 | 40d | 21d | Riley Warring | PRM |
|  | 7 | **DC1-CDU-DH1200-10 Cx L3** |  | 2026-04-01 | 2026-04-06 |  |  |  |  |  |
| DC1-CDU-L3-CX-4435 |  | CDU-DH1200-10 FTE | 1d | 2026-04-01 | 2026-04-01 | DC1-CDU-L2-3120, DC1-MOD3-L3-Cx-2450 | 41d | 0d | Riley Warring | ROS |
| DC1-CDU-L3-CX-4445 |  | CDU-DH1200-10 L3 Startup | 2d | 2026-04-02 | 2026-04-03 | DC1-CDU-L3-CX-4435 | 41d | 0d | Riley Warring | VER |
| DC1-CDU-L3-CX-4455 |  | CDU-DH1200-10 BMS/EPMS | 1d | 2026-04-06 | 2026-04-06 | DC1-CDU-L3-CX-4445 | 41d | 22d | Riley Warring | PRM |
|  | 8 | **DC1-CDU-DH1200-11 Cx L3** |  | 2026-04-01 | 2026-04-06 |  |  |  |  |  |
| DC1-CDU-L3-CX-4465 |  | CDU-DH1200-11 FTE | 1d | 2026-04-01 | 2026-04-01 | DC1-CDU-L2-3130, DC1-MOD3-L3-Cx-2450 | 41d | 0d | Riley Warring | ROS |
| DC1-CDU-L3-CX-4475 |  | CDU-DH1200-11 L3 Startup | 2d | 2026-04-02 | 2026-04-03 | DC1-CDU-L3-CX-4465 | 41d | 0d | Riley Warring | VER |
| DC1-CDU-L3-CX-4485 |  | CDU-DH1200-11 BMS/EPMS | 1d | 2026-04-06 | 2026-04-06 | DC1-CDU-L3-CX-4475 | 41d | 22d | Riley Warring | PRM |

Notes:
- DC1-CDU-L3-CX-4325: Steps: EC Startup Report; MC Installation Checklist; Vendor Startup
- DC1-CDU-L3-CX-4355: Steps: EC Startup Report; MC Installation Checklist; Vendor Startup
- DC1-CDU-L3-CX-4385: Steps: EC Startup Report; MC Installation Checklist; Vendor Startup
- DC1-CDU-L3-CX-4415: Steps: EC Startup Report; MC Installation Checklist; Vendor Startup
- DC1-CDU-L3-CX-4445: Steps: EC Startup Report; MC Installation Checklist; Vendor Startup
- DC1-CDU-L3-CX-4475: Steps: EC Startup Report; MC Installation Checklist; Vendor Startup

| ID | WBS | Activity | Duration | Start | Finish | Predecessors | Total float | Free float | Layton Responsible Party | Vendor Responsible Party |
| --- | --- | --- | --- | --- | --- | --- | --- | --- | --- | --- |
|  | 9 | **DC1-CDU-DH1200-12 Cx L3** |  | 2026-04-01 | 2026-04-06 |  |  |  |  |  |
| DC1-CDU-L3-CX-4495 |  | CDU-DH1200-12 FTE | 1d | 2026-04-01 | 2026-04-01 | DC1-CDU-L2-3140, DC1-MOD3-L3-Cx-2450 | 41d | 0d | Riley Warring | ROS |
| DC1-CDU-L3-CX-4505 |  | CDU-DH1200-12 L3 Startup | 2d | 2026-04-02 | 2026-04-03 | DC1-CDU-L3-CX-4495 | 41d | 0d | Riley Warring | VER |
| DC1-CDU-L3-CX-4515 |  | CDU-DH1200-12 BMS/EPMS | 1d | 2026-04-06 | 2026-04-06 | DC1-CDU-L3-CX-4505 | 41d | 22d | Riley Warring | PRM |
|  | 10 | **DC1-CDU-DH1200-13 Cx L3** |  | 2026-04-07 | 2026-04-10 |  |  |  |  |  |
| DC1-CDU-L3-CX-4525 |  | CDU-DH1200-13 FTE | 1d | 2026-04-07 | 2026-04-07 | DC1-CDU-L2-3150, DC1-MOD3-L3-Cx-2480 | 37d | 0d | Riley Warring | ROS |
| DC1-CDU-L3-CX-4535 |  | CDU-DH1200-13 L3 Startup | 2d | 2026-04-08 | 2026-04-09 | DC1-CDU-L3-CX-4525 | 37d | 0d | Riley Warring | VER |
| DC1-CDU-L3-CX-4545 |  | CDU-DH1200-13 BMS/EPMS | 1d | 2026-04-10 | 2026-04-10 | DC1-CDU-L3-CX-4535 | 37d | 18d | Riley Warring | PRM |
|  | 11 | **DC1-CDU-DH1200-14 Cx L3** |  | 2026-04-07 | 2026-04-10 |  |  |  |  |  |
| DC1-CDU-L3-CX-4555 |  | CDU-DH1200-14 FTE | 1d | 2026-04-07 | 2026-04-07 | DC1-CDU-L2-3160, DC1-MOD3-L3-Cx-2480 | 37d | 0d | Riley Warring | ROS |
| DC1-CDU-L3-CX-4565 |  | CDU-DH1200-14 L3 Startup | 2d | 2026-04-08 | 2026-04-09 | DC1-CDU-L3-CX-4555 | 37d | 0d | Riley Warring | VER |
| DC1-CDU-L3-CX-4575 |  | CDU-DH1200-14 BMS/EPMS | 1d | 2026-04-10 | 2026-04-10 | DC1-CDU-L3-CX-4565 | 37d | 18d | Riley Warring | PRM |
|  | 12 | **DC1-CDU-DH1200-15 Cx L3** |  | 2026-04-07 | 2026-04-10 |  |  |  |  |  |
| DC1-CDU-L3-CX-4585 |  | CDU-DH1200-15 FTE | 1d | 2026-04-07 | 2026-04-07 | DC1-CDU-L2-3170, DC1-MOD3-L3-Cx-2480 | 37d | 0d | Riley Warring | ROS |
| DC1-CDU-L3-CX-4595 |  | CDU-DH1200-15 L3 Startup | 2d | 2026-04-08 | 2026-04-09 | DC1-CDU-L3-CX-4585 | 37d | 0d | Riley Warring | VER |
| DC1-CDU-L3-CX-4605 |  | CDU-DH1200-15 BMS/EPMS | 1d | 2026-04-10 | 2026-04-10 | DC1-CDU-L3-CX-4595 | 37d | 18d | Riley Warring | PRM |
|  | 13 | **DC1-CDU-DH1200-16 Cx L3** |  | 2026-04-06 | 2026-04-09 |  |  |  |  |  |
| DC1-CDU-L3-CX-4615 |  | CDU-DH1200-16 FTE | 1d | 2026-04-06 | 2026-04-06 | DC1-CDU-L2-3180, DC1-MOD3-L3-Cx-2480 | 38d | 0d | Riley Warring | ROS |
| DC1-CDU-L3-CX-4625 |  | CDU-DH1200-16 L3 Startup | 2d | 2026-04-07 | 2026-04-08 | DC1-CDU-L3-CX-4615 | 38d | 0d | Riley Warring | VER |
| DC1-CDU-L3-CX-4635 |  | CDU-DH1200-16 BMS/EPMS | 1d | 2026-04-09 | 2026-04-09 | DC1-CDU-L3-CX-4625 | 38d | 19d | Riley Warring | PRM |
|  | 14 | **DC1-CDU-DH1200-17 Cx L3** |  | 2026-04-06 | 2026-04-09 |  |  |  |  |  |
| DC1-CDU-L3-CX-4645 |  | CDU-DH1200-17 FTE | 1d | 2026-04-06 | 2026-04-06 | DC1-CDU-L2-3190, DC1-MOD3-L3-Cx-2480 | 38d | 0d | Riley Warring | ROS |
| DC1-CDU-L3-CX-4655 |  | CDU-DH1200-17 L3 Startup | 2d | 2026-04-07 | 2026-04-08 | DC1-CDU-L3-CX-4645 | 38d | 0d | Riley Warring | VER |
| DC1-CDU-L3-CX-4665 |  | CDU-DH1200-17 BMS/EPMS | 1d | 2026-04-09 | 2026-04-09 | DC1-CDU-L3-CX-4655 | 38d | 19d | Riley Warring | PRM |

Notes:
- DC1-CDU-L3-CX-4505: Steps: EC Startup Report; MC Installation Checklist; Vendor Startup
- DC1-CDU-L3-CX-4535: Steps: EC Startup Report; MC Installation Checklist; Vendor Startup
- DC1-CDU-L3-CX-4565: Steps: EC Startup Report; MC Installation Checklist; Vendor Startup
- DC1-CDU-L3-CX-4595: Steps: EC Startup Report; MC Installation Checklist; Vendor Startup
- DC1-CDU-L3-CX-4625: Steps: EC Startup Report; MC Installation Checklist; Vendor Startup
- DC1-CDU-L3-CX-4655: Steps: EC Startup Report; MC Installation Checklist; Vendor Startup

| ID | WBS | Activity | Duration | Start | Finish | Predecessors | Total float | Free float | Layton Responsible Party | Vendor Responsible Party |
| --- | --- | --- | --- | --- | --- | --- | --- | --- | --- | --- |
|  | 15 | **DC1-CDU-DH1200-18 Cx L3** |  | 2026-04-06 | 2026-04-09 |  |  |  |  |  |
| DC1-CDU-L3-CX-4675 |  | CDU-DH1200-18 FTE | 1d | 2026-04-06 | 2026-04-06 | DC1-CDU-L2-3200, DC1-MOD3-L3-Cx-2480 | 38d | 0d | Riley Warring | ROS |
| DC1-CDU-L3-CX-4685 |  | CDU-DH1200-18 L3 Startup | 2d | 2026-04-07 | 2026-04-08 | DC1-CDU-L3-CX-4675 | 38d | 0d | Riley Warring | VER |
| DC1-CDU-L3-CX-4695 |  | CDU-DH1200-18 BMS/EPMS | 1d | 2026-04-09 | 2026-04-09 | DC1-CDU-L3-CX-4685 | 38d | 19d | Riley Warring | PRM |
|  | 11 | **DC1-DH1200 CHLR-1RT40 Cx L3** |  | 2026-02-27 | 2026-03-26 |  |  |  |  |  |
|  | 01 | **DC1-DH1200 CHLR-1RT40-A12 Cx L3** |  | 2026-02-27 | 2026-03-26 |  |  |  |  |  |
| DC1-CHLR-L3-Cx-2490 |  | DC1-CHLR-1RT40-A12 FTE | 1d | 2026-02-27 | 2026-02-27 | DC1-SWD-L3-CX-2420 SS, DC1-CHLR-L2-1140 | 38d | 0d | Riley Warring | ROS |
| DC1-CHLR-L3-Cx-2700 |  | DC1-CHLR-1RT40-A12 Heat Up | 2d | 2026-03-02 | 2026-03-03 | DC1-CHLR-L3-Cx-2490 | 38d | 14d | Riley Warring | LAY |
| DC1-CHLR-L3-Cx-2500 |  | DC1-CHLR-1RT40-A12 L3 Startup | 2d | 2026-03-24 | 2026-03-25 | DC1-CHLR-L3-Cx-2700, DC1-DH1200-LB-1010 SS | 24d | 0d | Riley Warring | TAS |
| DC1-CHLR-L3-Cx-2510 |  | DC1-CHLR-1RT40-A12 BMS/EPMS | 1d | 2026-03-26 | 2026-03-26 | DC1-CHLR-L3-Cx-2500 | 24d | 19d | Riley Warring | PRM |
|  | 02 | **DC1-DH1200 CHLR-1RT40-B12 Cx L3** |  | 2026-02-27 | 2026-03-26 |  |  |  |  |  |
| DC1-CHLR-L3-Cx-2520 |  | DC1-CHLR-1RT40-B12 FTE | 1d | 2026-02-27 | 2026-02-27 | DC1-SWD-L3-CX-2450 SS, DC1-CHLR-L2-1150 | 33d | 0d | Riley Warring | ROS |
| DC1-CHLR-L3-Cx-2710 |  | DC1-CHLR-1RT40-B12 Heat Up | 2d | 2026-03-02 | 2026-03-03 | DC1-CHLR-L3-Cx-2520 | 33d | 9d | Riley Warring | LAY |
| DC1-CHLR-L3-Cx-2530 |  | DC1-CHLR-1RT40-B12 L3 Startup | 2d | 2026-03-24 | 2026-03-25 | DC1-CHLR-L3-Cx-2710, DC1-DH1200-LB-1010 SS | 24d | 0d | Riley Warring | TAS |
| DC1-CHLR-L3-Cx-2540 |  | DC1-CHLR-1RT40-B12 BMS/EPMS | 1d | 2026-03-26 | 2026-03-26 | DC1-CHLR-L3-Cx-2530 | 24d | 19d | Riley Warring | PRM |
|  | 03 | **DC1-DH1200 CHLR-1RT40-C12 Cx L3** |  | 2026-03-02 | 2026-03-26 |  |  |  |  |  |
| DC1-CHLR-L3-Cx-2550 |  | DC1-CHLR-1RT40-C12 FTE | 1d | 2026-03-02 | 2026-03-02 | DC1-SWD-L3-CX-2480 SS, DC1-CHLR-L2-1160 | 32d | 0d | Riley Warring | ROS |
| DC1-CHLR-L3-Cx-2720 |  | DC1-CHLR-1RT40-C12 Heat Up | 2d | 2026-03-03 | 2026-03-04 | DC1-CHLR-L3-Cx-2550 | 32d | 8d | Riley Warring | LAY |
| DC1-CHLR-L3-Cx-2560 |  | DC1-CHLR-1RT40-C12 L3 Startup | 2d | 2026-03-24 | 2026-03-25 | DC1-CHLR-L3-Cx-2720, DC1-DH1200-LB-1010 SS | 24d | 0d | Riley Warring | TAS |
| DC1-CHLR-L3-Cx-2570 |  | DC1-CHLR-1RT40-C12 BMS/EPMS | 1d | 2026-03-26 | 2026-03-26 | DC1-CHLR-L3-Cx-2560 | 24d | 19d | Riley Warring | PRM |
|  | 04 | **DC1-DH1200 CHLR-1RT40-D12 Cx L3** |  | 2026-03-02 | 2026-03-26 |  |  |  |  |  |
| DC1-CHLR-L3-Cx-2580 |  | DC1-CHLR-1RT40-D12 FTE | 1d | 2026-03-02 | 2026-03-02 | DC1-SWD-L3-CX-2510 SS, DC1-CHLR-L2-1170 | 32d | 0d | Riley Warring | ROS |
| DC1-CHLR-L3-Cx-2730 |  | DC1-CHLR-1RT40-D12 Heat Up | 2d | 2026-03-03 | 2026-03-04 | DC1-CHLR-L3-Cx-2580 | 32d | 8d | Riley Warring | LAY |
| DC1-CHLR-L3-Cx-2590 |  | DC1-CHLR-1RT40-D12 L3 Startup | 2d | 2026-03-24 | 2026-03-25 | DC1-CHLR-L3-Cx-2730, DC1-DH1200-LB-1010 SS | 24d | 0d | Riley Warring | TAS |
| DC1-CHLR-L3-Cx-2600 |  | DC1-CHLR-1RT40-D12 BMS/EPMS | 1d | 2026-03-26 | 2026-03-26 | DC1-CHLR-L3-Cx-2590 | 24d | 19d | Riley Warring | PRM |

Notes:
- DC1-CDU-L3-CX-4685: Steps: EC Startup Report; MC Installation Checklist; Vendor Startup
- DC1-CHLR-L3-Cx-2500: Steps: EC Startup Report; MC Startup Report; Vendor Startup
- DC1-CHLR-L3-Cx-2530: Steps: EC Startup Report; MC Startup Report; Vendor Startup
- DC1-CHLR-L3-Cx-2560: Steps: EC Startup Report; MC Startup Report; Vendor Startup
- DC1-CHLR-L3-Cx-2590: Steps: EC Startup Report; MC Startup Report; Vendor Startup

| ID | WBS | Activity | Duration | Start | Finish | Predecessors | Total float | Free float | Layton Responsible Party | Vendor Responsible Party | Notes |
| --- | --- | --- | --- | --- | --- | --- | --- | --- | --- | --- | --- |
|  | 05 | **DC1-DH1200 CHLR-1RT40-E12 Cx L3** |  | 2026-03-04 | 2026-03-26 |  |  |  |  |  |  |
| DC1-CHLR-L3-Cx-2610 |  | DC1-CHLR-1RT40-E12 FTE | 1d | 2026-03-04 | 2026-03-04 | DC1-SWD-L3-CX-2540 SS, DC1-CHLR-L2-1180 | 30d | 0d | Riley Warring | ROS |  |
| DC1-CHLR-L3-Cx-2740 |  | DC1-CHLR-1RT40-E12 Heat Up | 2d | 2026-03-05 | 2026-03-06 | DC1-CHLR-L3-Cx-2610 | 30d | 6d | Riley Warring | LAY |  |
| DC1-CHLR-L3-Cx-2620 |  | DC1-CHLR-1RT40-E12 L3 Startup | 2d | 2026-03-24 | 2026-03-25 | DC1-CHLR-L3-Cx-2740, DC1-DH1200-LB-1010 SS | 24d | 0d | Riley Warring | TAS |  |
| DC1-CHLR-L3-Cx-2630 |  | DC1-CHLR-1RT40-E12 BMS/EPMS | 1d | 2026-03-26 | 2026-03-26 | DC1-CHLR-L3-Cx-2620 | 24d | 19d | Riley Warring | PRM |  |
|  | 06 | **DC1-DH1200 CHLR-1RT40-F12 Cx L3** |  | 2026-03-09 | 2026-03-26 |  |  |  |  |  |  |
| DC1-CHLR-L3-Cx-2640 |  | DC1-CHLR-1RT40-F12 FTE | 1d | 2026-03-09 | 2026-03-09 | DC1-SWD-L3-CX-2570 SS, DC1-CHLR-L2-1190 | 27d | 0d | Riley Warring | ROS |  |
| DC1-CHLR-L3-Cx-2750 |  | DC1-CHLR-1RT40-F12 Heat Up | 2d | 2026-03-10 | 2026-03-11 | DC1-CHLR-L3-Cx-2640 | 27d | 3d | Riley Warring | LAY |  |
| DC1-CHLR-L3-Cx-2650 |  | DC1-CHLR-1RT40-F12 L3 Startup | 2d | 2026-03-24 | 2026-03-25 | DC1-CHLR-L3-Cx-2750, DC1-DH1200-LB-1010 SS | 24d | 0d | Riley Warring | TAS |  |
| DC1-CHLR-L3-Cx-2660 |  | DC1-CHLR-1RT40-F12 BMS/EPMS | 1d | 2026-03-26 | 2026-03-26 | DC1-CHLR-L3-Cx-2650 | 24d | 19d | Riley Warring | PRM |  |
|  | 07 | **DC1-DH1200 CHLR-1RT40-R12 Cx L3** |  | 2026-03-12 | 2026-03-26 |  |  |  |  |  |  |
| DC1-CHLR-L3-Cx-2670 |  | DC1-CHLR-1RT40-R12 FTE | 1d | 2026-03-12 | 2026-03-12 | DC1-SWD-L3-CX-2600 SS, DC1-CHLR-L2-1200 | 24d | 0d | Riley Warring | ROS |  |
| DC1-CHLR-L3-Cx-2760 |  | DC1-CHLR-1RT40-R12 Heat Up | 2d | 2026-03-13 | 2026-03-16 | DC1-CHLR-L3-Cx-2670 | 24d | 0d | Riley Warring | LAY |  |
| DC1-CHLR-L3-Cx-2680 |  | DC1-CHLR-1RT40-R12 L3 Startup | 2d | 2026-03-24 | 2026-03-25 | DC1-CHLR-L3-Cx-2760, DC1-DH1200-LB-1010 SS | 24d | 0d | Riley Warring | TAS |  |
| DC1-CHLR-L3-Cx-2690 |  | DC1-CHLR-1RT40-R12 BMS/EPMS | 1d | 2026-03-26 | 2026-03-26 | DC1-CHLR-L3-Cx-2680 | 24d | 19d | Riley Warring | PRM |  |
|  | 12 | **DC1-DH1200 CHWP-1RT40 Cx L3** |  | 2026-03-05 | 2026-03-18 |  |  |  |  |  |  |
|  | 01 | **DC1-DH1200 CHWP-1RT40-A12 Cx L3** |  | 2026-03-05 | 2026-03-10 |  |  |  |  |  |  |
| DC1-CHWP-L3-Cx-2420 |  | DC1-CHWP-1RT40-A12 FTE | 1d | 2026-03-05 | 2026-03-05 | DC1-UPSM-L3-CX-2420 SS, DC1-CHWP-L2-Cx-2140 | 11d | 0d | Riley Warring | ROS | CFCI |
| DC1-CHWP-L3-Cx-2430 |  | DC1-CHWP1RT40-A12 L3 Startup | 2d | 2026-03-06 | 2026-03-09 | DC1-CHWP-L3-Cx-2420, QTS-101090 | 11d | 0d | Riley Warring | LAY | CFCI |
| DC1-CHWP-L3-Cx-2440 |  | DC1-CHWP-1RT40-A12 BMS/EPMS | 1d | 2026-03-10 | 2026-03-10 | DC1-CHWP-L3-Cx-2430 | 11d | 6d | Riley Warring | PRM | CFCI |
|  | 02 | **DC1-DH1200 CHWP-1RT40-B12 Cx L3** |  | 2026-03-05 | 2026-03-10 |  |  |  |  |  |  |
| DC1-CHWP-L3-Cx-2450 |  | DC1-CHWP-1RT40-B12 FTE | 1d | 2026-03-05 | 2026-03-05 | DC1-UPSM-L3-CX-2450 SS, DC1-CHWP-L2-Cx-2150 | 11d | 0d | Riley Warring | ROS | CFCI |
| DC1-CHWP-L3-Cx-2460 |  | DC1-CHWP-1RT40-B12 L3 Startup | 2d | 2026-03-06 | 2026-03-09 | DC1-CHWP-L3-Cx-2450, QTS-101090 | 11d | 0d | Riley Warring | LAY | CFCI |
| DC1-CHWP-L3-Cx-2470 |  | DC1-CHWP-1RT40-B12 BMS/EPMS | 1d | 2026-03-10 | 2026-03-10 | DC1-CHWP-L3-Cx-2460 | 11d | 6d | Riley Warring | PRM | CFCI |

Notes:
- DC1-CHLR-L3-Cx-2620: Steps: EC Startup Report; MC Startup Report; Vendor Startup
- DC1-CHLR-L3-Cx-2650: Steps: EC Startup Report; MC Startup Report; Vendor Startup
- DC1-CHLR-L3-Cx-2680: Steps: EC Startup Report; MC Startup Report; Vendor Startup
- DC1-CHWP-L3-Cx-2430: Steps: EC Startup Report; MC Startup Report; Vendor Startup
- DC1-CHWP-L3-Cx-2460: Steps: EC Startup Report; MC Startup Report; Vendor Startup

| ID | WBS | Activity | Duration | Start | Finish | Predecessors | Total float | Free float | Notes | Layton Responsible Party | Vendor Responsible Party |
| --- | --- | --- | --- | --- | --- | --- | --- | --- | --- | --- | --- |
|  | 03 | **DC1-DH1200 CHWP-1RT40-C12 Cx L3** |  | 2026-03-05 | 2026-03-10 |  |  |  |  |  |  |
| DC1-CHWP-L3-Cx-2480 |  | DC1-CHWP-1RT40-C12 FTE | 1d | 2026-03-05 | 2026-03-05 | DC1-UPSM-L3-CX-2480 SS, DC1-CHWP-L2-Cx-2160 | 11d | 0d | CFCI | Riley Warring | ROS |
| DC1-CHWP-L3-Cx-2490 |  | DC1-CHWP-1RT40-C12 L3 Startup | 2d | 2026-03-06 | 2026-03-09 | DC1-CHWP-L3-Cx-2480, QTS-101090 | 11d | 0d | CFCI | Riley Warring | LAY |
| DC1-CHWP-L3-Cx-2500 |  | DC1-CHWP-1RT40-C12 BMS/EPMS | 1d | 2026-03-10 | 2026-03-10 | DC1-CHWP-L3-Cx-2490 | 11d | 6d | CFCI | Riley Warring | PRM |
|  | 04 | **DC1-DH1200 CHWP-1RT40-D12 Cx L3** |  | 2026-03-06 | 2026-03-11 |  |  |  |  |  |  |
| DC1-CHWP-L3-Cx-2510 |  | DC1-CHWP-1RT40-D12 FTE | 1d | 2026-03-06 | 2026-03-06 | DC1-UPSM-L3-CX-2510 SS, DC1-CHWP-L2-Cx-2170 | 10d | 0d | CFCI | Riley Warring | ROS |
| DC1-CHWP-L3-Cx-2520 |  | DC1-CHWP-1RT40-D12 L3 Startup | 2d | 2026-03-09 | 2026-03-10 | DC1-CHWP-L3-Cx-2510, QTS-101090 | 10d | 0d | CFCI | Riley Warring | LAY |
| DC1-CHWP-L3-Cx-2530 |  | DC1-CHWP-1RT40-D12 BMS/EPMS | 1d | 2026-03-11 | 2026-03-11 | DC1-CHWP-L3-Cx-2520 | 10d | 5d | CFCI | Riley Warring | PRM |
|  | 05 | **DC1-DH1200 CHWP-1RT40-E12 Cx L3** |  | 2026-03-09 | 2026-03-12 |  |  |  |  |  |  |
| DC1-CHWP-L3-Cx-2540 |  | DC1-CHWP-1RT40-E12 FTE | 1d | 2026-03-09 | 2026-03-09 | DC1-UPSM-L3-CX-2540 SS, DC1-CHWP-L2-Cx-2180 | 9d | 0d | CFCI | Riley Warring | ROS |
| DC1-CHWP-L3-Cx-2550 |  | DC1-CHWP-1RT40-E12 L3 Startup | 2d | 2026-03-10 | 2026-03-11 | DC1-CHWP-L3-Cx-2540, QTS-101090 | 9d | 0d | CFCI | Riley Warring | LAY |
| DC1-CHWP-L3-Cx-2560 |  | DC1-CHWP-1RT40-E12 BMS/EPMS | 1d | 2026-03-12 | 2026-03-12 | DC1-CHWP-L3-Cx-2550 | 9d | 4d | CFCI | Riley Warring | PRM |
|  | 06 | **DC1-DH1200 CHWP-1RT40-F12 Cx L3** |  | 2026-03-11 | 2026-03-16 |  |  |  |  |  |  |
| DC1-CHWP-L3-Cx-2570 |  | DC1-CHWP-1RT40-F12 FTE | 1d | 2026-03-11 | 2026-03-11 | DC1-UPSM-L3-CX-2570 SS, DC1-CHWP-L2-Cx-2190 | 7d | 0d | CFCI | Riley Warring | ROS |
| DC1-CHWP-L3-Cx-2580 |  | DC1-CHWP-1RT40-F12 L3 Startup | 2d | 2026-03-12 | 2026-03-13 | DC1-CHWP-L3-Cx-2570, QTS-101090 | 7d | 0d | CFCI | Riley Warring | LAY |
| DC1-CHWP-L3-Cx-2590 |  | DC1-CHWP-1RT40-F12 BMS/EPMS | 1d | 2026-03-16 | 2026-03-16 | DC1-CHWP-L3-Cx-2580 | 7d | 2d | CFCI | Riley Warring | PRM |
|  | 07 | **DC1-DH1200 CHWP-1RT40-R12 Cx L3** |  | 2026-03-13 | 2026-03-18 |  |  |  |  |  |  |
| DC1-CHWP-L3-Cx-2600 |  | DC1-CHWP-1RT40-R12 FTE | 1d | 2026-03-13 | 2026-03-13 | DC1-UPSM-L3-CX-2600 SS, DC1-CHWP-L2-Cx-2200 | 5d | 0d | CFCI | Riley Warring | ROS |
| DC1-CHWP-L3-Cx-2610 |  | DC1-CHWP-1RT40-R12 L3 Startup | 2d | 2026-03-16 | 2026-03-17 | DC1-CHWP-L3-Cx-2600, QTS-101090 | 5d | 0d | CFCI | Riley Warring | LAY |
| DC1-CHWP-L3-Cx-2620 |  | DC1-CHWP-1RT40-R12 BMS/EPMS | 1d | 2026-03-18 | 2026-03-18 | DC1-CHWP-L3-Cx-2610 | 5d | 0d | CFCI | Riley Warring | PRM |
|  | 13 | **DC1-DH1200 CRAH/DOAS Cx L3** |  | 2026-03-02 | 2026-03-26 |  |  |  |  |  |  |
|  | 01 | **DH1200 CRAH-DH-01 L3** |  | 2026-03-23 | 2026-03-26 |  |  |  |  |  |  |
| DC1-CRAH-L3-Cx-3920 |  | DC1-DH1200-CRAH-DH-01 FTE | 1d | 2026-03-23 | 2026-03-23 | DC1-MOD2-L3-Cx-2600 SS, DC1-MOD2-L3-Cx-2510 SS, DC1-CRAH-L2-2640 | 19d | 0d |  | Riley Warring | ROS |
| DC1-CRAH-L3-Cx-3930 |  | DC1-DH1200-CRAH-DH-01 L3 Startup | 2d | 2026-03-24 | 2026-03-25 | DC1-CRAH-L3-Cx-3920 | 19d | 0d |  | Riley Warring | UMAS |
| DC1-CRAH-L3-Cx-3940 |  | DC1-DH1200-CRAH-DH-01 BMS/EPMS | 1d | 2026-03-26 | 2026-03-26 | DC1-CRAH-L3-Cx-3930 | 19d | 0d |  | Riley Warring | PRM |

Notes:
- DC1-CHWP-L3-Cx-2490: Steps: EC Startup Report; MC Startup Report; Vendor Startup
- DC1-CHWP-L3-Cx-2520: Steps: EC Startup Report; MC Startup Report; Vendor Startup
- DC1-CHWP-L3-Cx-2550: Steps: EC Startup Report; MC Startup Report; Vendor Startup
- DC1-CHWP-L3-Cx-2580: Steps: EC Startup Report; MC Startup Report; Vendor Startup
- DC1-CHWP-L3-Cx-2610: Steps: EC Startup Report; MC Startup Report; Vendor Startup
- DC1-CRAH-L3-Cx-3930: Steps: EC Startup Checklist; MC Startup Checklist; Vendor Startup

| ID | WBS | Activity | Duration | Start | Finish | Predecessors | Total float | Free float | Layton Responsible Party | Vendor Responsible Party |
| --- | --- | --- | --- | --- | --- | --- | --- | --- | --- | --- |
|  | 02 | **DH1200 CRAH-DH-02 L3** |  | 2026-03-18 | 2026-03-23 |  |  |  |  |  |
| DC1-CRAH-L3-Cx-3950 |  | DC1-DH1200-CRAH-DH-02 FTE | 1d | 2026-03-18 | 2026-03-18 | DC1-MOD2-L3-Cx-2480 SS, DC1-MOD2-L3-Cx-2570 SS, DC1-CRAH-L2-2650 | 22d | 0d | Riley Warring | ROS |
| DC1-CRAH-L3-Cx-3960 |  | DC1-DH1200-CRAH-DH-02 L3 Startup | 2d | 2026-03-19 | 2026-03-20 | DC1-CRAH-L3-Cx-3950 | 22d | 0d | Riley Warring | UMAS |
| DC1-CRAH-L3-Cx-3970 |  | DC1-DH1200-CRAH-DH-02 BMS/EPMS | 1d | 2026-03-23 | 2026-03-23 | DC1-CRAH-L3-Cx-3960 | 22d | 3d | Riley Warring | PRM |
|  | 03 | **DH1200 CRAH-DH-03 L3** |  | 2026-03-13 | 2026-03-18 |  |  |  |  |  |
| DC1-CRAH-L3-Cx-3980 |  | DC1-DH1200-CRAH-DH-03 FTE | 1d | 2026-03-13 | 2026-03-13 | DC1-MOD2-L3-Cx-2450 SS, DC1-MOD2-L3-Cx-2540 SS, DC1-CRAH-L2-2660 | 25d | 0d | Riley Warring | ROS |
| DC1-CRAH-L3-Cx-3990 |  | DC1-DH1200-CRAH-DH-03 L3 Startup | 2d | 2026-03-16 | 2026-03-17 | DC1-CRAH-L3-Cx-3980 | 25d | 0d | Riley Warring | UMAS |
| DC1-CRAH-L3-Cx-4000 |  | DC1-DH1200-CRAH-DH-03 BMS/EPMS | 1d | 2026-03-18 | 2026-03-18 | DC1-CRAH-L3-Cx-3990 | 25d | 6d | Riley Warring | PRM |
|  | 04 | **DH1200 CRAH-DH-04 L3** |  | 2026-03-10 | 2026-03-13 |  |  |  |  |  |
| DC1-CRAH-L3-Cx-4010 |  | DC1-DH1200-CRAH-DH-04 FTE | 1d | 2026-03-10 | 2026-03-10 | DC1-MOD2-L3-Cx-2420 SS, DC1-MOD2-L3-Cx-2510 SS, DC1-CRAH-L2-2670 | 28d | 0d | Riley Warring | ROS |
| DC1-CRAH-L3-Cx-4020 |  | DC1-DH1200-CRAH-DH-04 L3 Startup | 2d | 2026-03-11 | 2026-03-12 | DC1-CRAH-L3-Cx-4010 | 28d | 0d | Riley Warring | UMAS |
| DC1-CRAH-L3-Cx-4030 |  | DC1-DH1200-CRAH-DH-04 BMS/EPMS | 1d | 2026-03-13 | 2026-03-13 | DC1-CRAH-L3-Cx-4020 | 28d | 9d | Riley Warring | PRM |
|  | 05 | **DH1200 CRAH-DH-05 L3** |  | 2026-03-23 | 2026-03-26 |  |  |  |  |  |
| DC1-CRAH-L3-Cx-4040 |  | DC1-DH1200-CRAH-DH-05 FTE | 1d | 2026-03-23 | 2026-03-23 | DC1-MOD2-L3-Cx-2600 SS, DC1-MOD2-L3-Cx-2480 SS, DC1-CRAH-L2-2680 | 19d | 0d | Riley Warring | ROS |
| DC1-CRAH-L3-Cx-4050 |  | DC1-DH1200-CRAH-DH-05 L3 Startup | 2d | 2026-03-24 | 2026-03-25 | DC1-CRAH-L3-Cx-4040 | 19d | 0d | Riley Warring | UMAS |
| DC1-CRAH-L3-Cx-4060 |  | DC1-DH1200-CRAH-DH-05 BMS/EPMS | 1d | 2026-03-26 | 2026-03-26 | DC1-CRAH-L3-Cx-4050 | 19d | 0d | Riley Warring | PRM |
|  | 06 | **DH1200 CRAH-DH-06 L3** |  | 2026-03-18 | 2026-03-23 |  |  |  |  |  |
| DC1-CRAH-L3-Cx-4070 |  | DC1-DH1200-CRAH-DH-06 FTE | 1d | 2026-03-18 | 2026-03-18 | DC1-MOD2-L3-Cx-2450 SS, DC1-MOD2-L3-Cx-2570 SS, DC1-CRAH-L2-2690 | 22d | 0d | Riley Warring | ROS |
| DC1-CRAH-L3-Cx-4080 |  | DC1-DH1200-CRAH-DH-06 L3 Startup | 2d | 2026-03-19 | 2026-03-20 | DC1-CRAH-L3-Cx-4070 | 22d | 0d | Riley Warring | UMAS |
| DC1-CRAH-L3-Cx-4090 |  | DC1-DH1200-CRAH-DH-06 BMS/EPMS | 1d | 2026-03-23 | 2026-03-23 | DC1-CRAH-L3-Cx-4080 | 22d | 3d | Riley Warring | PRM |
|  | 07 | **DH1200 CRAH-DH-07 L3** |  | 2026-03-13 | 2026-03-18 |  |  |  |  |  |
| DC1-CRAH-L3-Cx-4100 |  | DC1-DH1200-CRAH-DH-07 FTE | 1d | 2026-03-13 | 2026-03-13 | DC1-MOD2-L3-Cx-2420 SS, DC1-MOD2-L3-Cx-2540 SS, DC1-CRAH-L2-2700 | 25d | 0d | Riley Warring | ROS |
| DC1-CRAH-L3-Cx-4110 |  | DC1-DH1200-CRAH-DH-07 L3 Startup | 2d | 2026-03-16 | 2026-03-17 | DC1-CRAH-L3-Cx-4100 | 25d | 0d | Riley Warring | UMAS |
| DC1-CRAH-L3-Cx-4120 |  | DC1-DH1200-CRAH-DH-07 BMS/EPMS | 1d | 2026-03-18 | 2026-03-18 | DC1-CRAH-L3-Cx-4110 | 25d | 6d | Riley Warring | PRM |

Notes:
- DC1-CRAH-L3-Cx-3960: Steps: EC Startup Checklist; MC Startup Checklist; Vendor Startup
- DC1-CRAH-L3-Cx-3990: Steps: EC Startup Checklist; MC Startup Checklist; Vendor Startup
- DC1-CRAH-L3-Cx-4020: Steps: EC Startup Checklist; MC Startup Checklist; Vendor Startup
- DC1-CRAH-L3-Cx-4050: Steps: EC Startup Checklist; MC Startup Checklist; Vendor Startup
- DC1-CRAH-L3-Cx-4080: Steps: EC Startup Checklist; MC Startup Checklist; Vendor Startup
- DC1-CRAH-L3-Cx-4110: Steps: EC Startup Checklist; MC Startup Checklist; Vendor Startup

| ID | WBS | Activity | Duration | Start | Finish | Predecessors | Total float | Free float | Layton Responsible Party | Vendor Responsible Party |
| --- | --- | --- | --- | --- | --- | --- | --- | --- | --- | --- |
|  | 08 | **DH1200 CRAH-DH-08 L3** |  | 2026-03-23 | 2026-03-26 |  |  |  |  |  |
| DC1-CRAH-L3-Cx-4130 |  | DC1-DH1200-CRAH-DH-08 FTE | 1d | 2026-03-23 | 2026-03-23 | DC1-MOD2-L3-Cx-2600 SS, DC1-MOD2-L3-Cx-2480 SS, DC1-CRAH-L2-2710 | 19d | 0d | Riley Warring | ROS |
| DC1-CRAH-L3-Cx-4140 |  | DC1-DH1200-CRAH-DH-08 L3 Startup | 2d | 2026-03-24 | 2026-03-25 | DC1-CRAH-L3-Cx-4130 | 19d | 0d | Riley Warring | UMAS |
| DC1-CRAH-L3-Cx-4150 |  | DC1-DH1200-CRAH-DH-08 BMS/EPMS | 1d | 2026-03-26 | 2026-03-26 | DC1-CRAH-L3-Cx-4140 | 19d | 0d | Riley Warring | PRM |
|  | 09 | **DH1200 CRAH-DH-09 L3** |  | 2026-03-18 | 2026-03-23 |  |  |  |  |  |
| DC1-CRAH-L3-Cx-4160 |  | DC1-DH1200-CRAH-DH-09 FTE | 1d | 2026-03-18 | 2026-03-18 | DC1-MOD2-L3-Cx-2450 SS, DC1-MOD2-L3-Cx-2570 SS, DC1-CRAH-L2-2720 | 22d | 0d | Riley Warring | ROS |
| DC1-CRAH-L3-Cx-4170 |  | DC1-DH1200-CRAH-DH-09 L3 Startup | 2d | 2026-03-19 | 2026-03-20 | DC1-CRAH-L3-Cx-4160 | 22d | 0d | Riley Warring | UMAS |
| DC1-CRAH-L3-Cx-4180 |  | DC1-DH1200-CRAH-DH-09 BMS/EPMS | 1d | 2026-03-23 | 2026-03-23 | DC1-CRAH-L3-Cx-4170 | 22d | 3d | Riley Warring | PRM |
|  | 10 | **DH1200 CRAH-DH-10 L3** |  | 2026-03-13 | 2026-03-18 |  |  |  |  |  |
| DC1-CRAH-L3-Cx-4190 |  | DC1-DH1200-CRAH-DH-10 FTE | 1d | 2026-03-13 | 2026-03-13 | DC1-MOD2-L3-Cx-2420 SS, DC1-MOD2-L3-Cx-2540 SS, DC1-CRAH-L2-2730 | 25d | 0d | Riley Warring | ROS |
| DC1-CRAH-L3-Cx-4200 |  | DC1-DH1200-CRAH-DH-10 L3 Startup | 2d | 2026-03-16 | 2026-03-17 | DC1-CRAH-L3-Cx-4190 | 25d | 0d | Riley Warring | UMAS |
| DC1-CRAH-L3-Cx-4210 |  | DC1-DH1200-CRAH-DH-10 BMS/EPMS | 1d | 2026-03-18 | 2026-03-18 | DC1-CRAH-L3-Cx-4200 | 25d | 6d | Riley Warring | PRM |
|  | 11 | **DH1200 CRAH-DH-11 L3** |  | 2026-03-23 | 2026-03-26 |  |  |  |  |  |
| DC1-CRAH-L3-Cx-4220 |  | DC1-DH1200-CRAH-DH-11 FTE | 1d | 2026-03-23 | 2026-03-23 | DC1-MOD2-L3-Cx-2600 SS, DC1-MOD2-L3-Cx-2510 SS, DC1-CRAH-L2-2740 | 19d | 0d | Riley Warring | ROS |
| DC1-CRAH-L3-Cx-4230 |  | DC1-DH1200-CRAH-DH-11 L3 Startup | 2d | 2026-03-24 | 2026-03-25 | DC1-CRAH-L3-Cx-4220 | 19d | 0d | Riley Warring | UMAS |
| DC1-CRAH-L3-Cx-4240 |  | DC1-DH1200-CRAH-DH-11 BMS/EPMS | 1d | 2026-03-26 | 2026-03-26 | DC1-CRAH-L3-Cx-4230 | 19d | 0d | Riley Warring | PRM |
|  | 12 | **DH1200 CRAH-DH-12 L3** |  | 2026-03-18 | 2026-03-23 |  |  |  |  |  |
| DC1-CRAH-L3-Cx-4250 |  | DC1-DH1200-CRAH-DH-12 FTE | 1d | 2026-03-18 | 2026-03-18 | DC1-MOD2-L3-Cx-2480 SS, DC1-MOD2-L3-Cx-2570 SS, DC1-CRAH-L2-2750 | 22d | 0d | Riley Warring | ROS |
| DC1-CRAH-L3-Cx-4260 |  | DC1-DH1200-CRAH-DH-12 L3 Startup | 2d | 2026-03-19 | 2026-03-20 | DC1-CRAH-L3-Cx-4250 | 22d | 0d | Riley Warring | UMAS |
| DC1-CRAH-L3-Cx-4270 |  | DC1-DH1200-CRAH-DH-12 BMS/EPMS | 1d | 2026-03-23 | 2026-03-23 | DC1-CRAH-L3-Cx-4260 | 22d | 3d | Riley Warring | PRM |
|  | 13 | **DH1200 CRAH-DH-13 L3** |  | 2026-03-13 | 2026-03-18 |  |  |  |  |  |
| DC1-CRAH-L3-Cx-4280 |  | DC1-DH1200-CRAH-DH-13 FTE | 1d | 2026-03-13 | 2026-03-13 | DC1-MOD2-L3-Cx-2450 SS, DC1-MOD2-L3-Cx-2540 SS, DC1-CRAH-L2-2760 | 25d | 0d | Riley Warring | ROS |
| DC1-CRAH-L3-Cx-4290 |  | DC1-DH1200-CRAH-DH-13 L3 Startup | 2d | 2026-03-16 | 2026-03-17 | DC1-CRAH-L3-Cx-4280 | 25d | 0d | Riley Warring | UMAS |
| DC1-CRAH-L3-Cx-4300 |  | DC1-DH1200-CRAH-DH-13 BMS/EPMS | 1d | 2026-03-18 | 2026-03-18 | DC1-CRAH-L3-Cx-4290 | 25d | 6d | Riley Warring | PRM |

Notes:
- DC1-CRAH-L3-Cx-4140: Steps: EC Startup Checklist; MC Startup Checklist; Vendor Startup
- DC1-CRAH-L3-Cx-4170: Steps: EC Startup Checklist; MC Startup Checklist; Vendor Startup
- DC1-CRAH-L3-Cx-4200: Steps: EC Startup Checklist; MC Startup Checklist; Vendor Startup
- DC1-CRAH-L3-Cx-4230: Steps: EC Startup Checklist; MC Startup Checklist; Vendor Startup
- DC1-CRAH-L3-Cx-4260: Steps: EC Startup Checklist; MC Startup Checklist; Vendor Startup
- DC1-CRAH-L3-Cx-4290: Steps: EC Startup Checklist; MC Startup Checklist; Vendor Startup

| ID | WBS | Activity | Duration | Start | Finish | Predecessors | Total float | Free float | Layton Responsible Party | Vendor Responsible Party |
| --- | --- | --- | --- | --- | --- | --- | --- | --- | --- | --- |
|  | 14 | **DH1200 CRAH-DH-14 L3** |  | 2026-03-10 | 2026-03-13 |  |  |  |  |  |
| DC1-CRAH-L3-Cx-4310 |  | DC1-DH1200-CRAH-DH-14 FTE | 1d | 2026-03-10 | 2026-03-10 | DC1-MOD2-L3-Cx-2420 SS, DC1-MOD2-L3-Cx-2510 SS, DC1-CRAH-L2-2770 | 28d | 0d | Riley Warring | ROS |
| DC1-CRAH-L3-Cx-4320 |  | DC1-DH1200-CRAH-DH-14 L3 Startup | 2d | 2026-03-11 | 2026-03-12 | DC1-CRAH-L3-Cx-4310 | 28d | 0d | Riley Warring | UMAS |
| DC1-CRAH-L3-Cx-4330 |  | DC1-DH1200-CRAH-DH-14 BMS/EPMS | 1d | 2026-03-13 | 2026-03-13 | DC1-CRAH-L3-Cx-4320 | 28d | 9d | Riley Warring | PRM |
|  | 15 | **DH1200 CRAH-DH-15 L3** |  | 2026-03-02 | 2026-03-05 |  |  |  |  |  |
| DC1-CRAH-L3-Cx-4340 |  | DC1-DH1200-CRAH-DH-15 FTE | 1d | 2026-03-02 | 2026-03-02 | DC1-MOD2-L3-Cx-2420 SS, DC1-MOD2-L3-Cx-2450 SS, DC1-CRAH-L2-2780 | 34d | 0d | Riley Warring | ROS |
| DC1-CRAH-L3-Cx-4350 |  | DC1-DH1200-CRAH-DH-15 L3 Startup | 2d | 2026-03-03 | 2026-03-04 | DC1-CRAH-L3-Cx-4340 | 34d | 0d | Riley Warring | UMAS |
| DC1-CRAH-L3-Cx-4360 |  | DC1-DH1200-CRAH-DH-15 BMS/EPMS | 1d | 2026-03-05 | 2026-03-05 | DC1-CRAH-L3-Cx-4350 | 34d | 15d | Riley Warring | PRM |
|  | 16 | **DH1200 CRAH-DH-16 L3** |  | 2026-03-05 | 2026-03-10 |  |  |  |  |  |
| DC1-CRAH-L3-Cx-4370 |  | DC1-DH1200-CRAH-DH-16 FTE | 1d | 2026-03-05 | 2026-03-05 | DC1-MOD2-L3-Cx-2450 SS, DC1-MOD2-L3-Cx-2480 SS, DC1-CRAH-L2-2790 | 31d | 0d | Riley Warring | ROS |
| DC1-CRAH-L3-Cx-4380 |  | DC1-DH1200-CRAH-DH-16 L3 Startup | 2d | 2026-03-06 | 2026-03-09 | DC1-CRAH-L3-Cx-4370 | 31d | 0d | Riley Warring | UMAS |
| DC1-CRAH-L3-Cx-4390 |  | DC1-DH1200-CRAH-DH-16 BMS/EPMS | 1d | 2026-03-10 | 2026-03-10 | DC1-CRAH-L3-Cx-4380 | 31d | 12d | Riley Warring | PRM |
|  | 17 | **DH1200 CRAH-DH-17 L3** |  | 2026-03-10 | 2026-03-13 |  |  |  |  |  |
| DC1-CRAH-L3-Cx-4400 |  | DC1-DH1200-CRAH-DH-17 FTE | 1d | 2026-03-10 | 2026-03-10 | DC1-MOD2-L3-Cx-2480 SS, DC1-MOD2-L3-Cx-2510 SS, DC1-CRAH-L2-2800 | 28d | 0d | Riley Warring | ROS |
| DC1-CRAH-L3-Cx-4410 |  | DC1-DH1200-CRAH-DH-17 L3 Startup | 2d | 2026-03-11 | 2026-03-12 | DC1-CRAH-L3-Cx-4400 | 28d | 0d | Riley Warring | UMAS |
| DC1-CRAH-L3-Cx-4420 |  | DC1-DH1200-CRAH-DH-17 BMS/EPMS | 1d | 2026-03-13 | 2026-03-13 | DC1-CRAH-L3-Cx-4410 | 28d | 9d | Riley Warring | PRM |
|  | 18 | **DH1200 CRAH-DH-18 L3** |  | 2026-03-13 | 2026-03-18 |  |  |  |  |  |
| DC1-CRAH-L3-Cx-4430 |  | DC1-DH1200-CRAH-DH-18 FTE | 1d | 2026-03-13 | 2026-03-13 | DC1-MOD2-L3-Cx-2510 SS, DC1-MOD2-L3-Cx-2540 SS, DC1-CRAH-L2-2810 | 25d | 0d | Riley Warring | ROS |
| DC1-CRAH-L3-Cx-4440 |  | DC1-DH1200-CRAH-DH-18 L3 Startup | 2d | 2026-03-16 | 2026-03-17 | DC1-CRAH-L3-Cx-4430 | 25d | 0d | Riley Warring | UMAS |
| DC1-CRAH-L3-Cx-4450 |  | DC1-DH1200-CRAH-DH-18 BMS/EPMS | 1d | 2026-03-18 | 2026-03-18 | DC1-CRAH-L3-Cx-4440 | 25d | 6d | Riley Warring | PRM |
|  | 19 | **DH1200 CRAH-DH-19 L3** |  | 2026-03-18 | 2026-03-23 |  |  |  |  |  |
| DC1-CRAH-L3-Cx-4460 |  | DC1-DH1200-CRAH-DH-19 FTE | 1d | 2026-03-18 | 2026-03-18 | DC1-MOD2-L3-Cx-2540 SS, DC1-MOD2-L3-Cx-2570 SS, DC1-CRAH-L2-2820 | 22d | 0d | Riley Warring | ROS |
| DC1-CRAH-L3-Cx-4470 |  | DC1-DH1200-CRAH-DH-19 L3 Startup | 2d | 2026-03-19 | 2026-03-20 | DC1-CRAH-L3-Cx-4460 | 22d | 0d | Riley Warring | UMAS |
| DC1-CRAH-L3-Cx-4480 |  | DC1-DH1200-CRAH-DH-19 BMS/EPMS | 1d | 2026-03-23 | 2026-03-23 | DC1-CRAH-L3-Cx-4470 | 22d | 3d | Riley Warring | PRM |

Notes:
- DC1-CRAH-L3-Cx-4320: Steps: EC Startup Checklist; MC Startup Checklist; Vendor Startup
- DC1-CRAH-L3-Cx-4350: Steps: EC Startup Checklist; MC Startup Checklist; Vendor Startup
- DC1-CRAH-L3-Cx-4380: Steps: EC Startup Checklist; MC Startup Checklist; Vendor Startup
- DC1-CRAH-L3-Cx-4410: Steps: EC Startup Checklist; MC Startup Checklist; Vendor Startup
- DC1-CRAH-L3-Cx-4440: Steps: EC Startup Checklist; MC Startup Checklist; Vendor Startup
- DC1-CRAH-L3-Cx-4470: Steps: EC Startup Checklist; MC Startup Checklist; Vendor Startup

| ID | WBS | Activity | Duration | Start | Finish | Predecessors | Total float | Free float | Layton Responsible Party | Vendor Responsible Party |
| --- | --- | --- | --- | --- | --- | --- | --- | --- | --- | --- |
|  | 20 | **DH1200 CRAH-DH-20 L3** |  | 2026-03-23 | 2026-03-26 |  |  |  |  |  |
| DC1-CRAH-L3-Cx-4490 |  | DC1-DH1200-CRAH-DH-20 FTE | 1d | 2026-03-23 | 2026-03-23 | DC1-MOD2-L3-Cx-2600 SS, DC1-MOD2-L3-Cx-2570 SS, DC1-CRAH-L2-2830 | 19d | 0d | Riley Warring | ROS |
| DC1-CRAH-L3-Cx-4500 |  | DC1-DH1200-CRAH-DH-20 L3 Startup | 2d | 2026-03-24 | 2026-03-25 | DC1-CRAH-L3-Cx-4490 | 19d | 0d | Riley Warring | UMAS |
| DC1-CRAH-L3-Cx-4510 |  | DC1-DH1200-CRAH-DH-20 BMS/EPMS | 1d | 2026-03-26 | 2026-03-26 | DC1-CRAH-L3-Cx-4500 | 19d | 0d | Riley Warring | PRM |
|  | 21 | **DH1200 CRAH-DH-21 L3** |  | 2026-03-23 | 2026-03-26 |  |  |  |  |  |
| DC1-CRAH-L3-Cx-4520 |  | DC1-DH1200-CRAH-DH-21 FTE | 1d | 2026-03-23 | 2026-03-23 | DC1-MOD2-L3-Cx-2420 SS, DC1-CRAH-L2-2840, DC1-MOD2-L3-Cx-2600 SS | 19d | 0d | Riley Warring | ROS |
| DC1-CRAH-L3-Cx-4530 |  | DC1-DH1200-CRAH-DH-21 L3 Startup | 2d | 2026-03-24 | 2026-03-25 | DC1-CRAH-L3-Cx-4520 | 19d | 0d | Riley Warring | UMAS |
| DC1-CRAH-L3-Cx-4540 |  | DC1-DH1200-CRAH-DH-21 BMS/EPMS | 1d | 2026-03-26 | 2026-03-26 | DC1-CRAH-L3-Cx-4530 | 19d | 0d | Riley Warring | PRM |
|  | 22 | **DH1200 CRAH-DH-22 L3** |  | 2026-03-05 | 2026-03-10 |  |  |  |  |  |
| DC1-CRAH-L3-Cx-4550 |  | DC1-DH1200-CRAH-DH-22 FTE | 1d | 2026-03-05 | 2026-03-05 | DC1-MOD2-L3-Cx-2420 SS, DC1-MOD2-L3-Cx-2480 SS, DC1-CRAH-L2-2850 | 31d | 0d | Riley Warring | ROS |
| DC1-CRAH-L3-Cx-4560 |  | DC1-DH1200-CRAH-DH-22 L3 Startup | 2d | 2026-03-06 | 2026-03-09 | DC1-CRAH-L3-Cx-4550 | 31d | 0d | Riley Warring | UMAS |
| DC1-CRAH-L3-Cx-4570 |  | DC1-DH1200-CRAH-DH-22 BMS/EPMS | 1d | 2026-03-10 | 2026-03-10 | DC1-CRAH-L3-Cx-4560 | 31d | 12d | Riley Warring | PRM |
|  | 23 | **DH1200 CRAH-DH-23 L3** |  | 2026-03-10 | 2026-03-13 |  |  |  |  |  |
| DC1-CRAH-L3-Cx-4580 |  | DC1-DH1200-CRAH-DH-23 FTE | 1d | 2026-03-10 | 2026-03-10 | DC1-MOD2-L3-Cx-2450 SS, DC1-MOD2-L3-Cx-2510 SS, DC1-CRAH-L2-2860 | 28d | 0d | Riley Warring | ROS |
| DC1-CRAH-L3-Cx-4590 |  | DC1-DH1200-CRAH-DH-23 L3 Startup | 2d | 2026-03-11 | 2026-03-12 | DC1-CRAH-L3-Cx-4580 | 28d | 0d | Riley Warring | UMAS |
| DC1-CRAH-L3-Cx-4600 |  | DC1-DH1200-CRAH-DH-23 BMS/EPMS | 1d | 2026-03-13 | 2026-03-13 | DC1-CRAH-L3-Cx-4590 | 28d | 9d | Riley Warring | PRM |
|  | 24 | **DH1200 CRAH-DH-24 L3** |  | 2026-03-13 | 2026-03-18 |  |  |  |  |  |
| DC1-CRAH-L3-Cx-4610 |  | DC1-DH1200-CRAH-DH-24 FTE | 1d | 2026-03-13 | 2026-03-13 | DC1-MOD2-L3-Cx-2480 SS, DC1-MOD2-L3-Cx-2540 SS, DC1-CRAH-L2-2870 | 25d | 0d | Riley Warring | ROS |
| DC1-CRAH-L3-Cx-4620 |  | DC1-DH1200-CRAH-DH-24 L3 Startup | 2d | 2026-03-16 | 2026-03-17 | DC1-CRAH-L3-Cx-4610 | 25d | 0d | Riley Warring | UMAS |
| DC1-CRAH-L3-Cx-4630 |  | DC1-DH1200-CRAH-DH-24 BMS/EPMS | 1d | 2026-03-18 | 2026-03-18 | DC1-CRAH-L3-Cx-4620 | 25d | 6d | Riley Warring | PRM |
|  | 25 | **DH1200 CRAH-DH-25 L3** |  | 2026-03-18 | 2026-03-23 |  |  |  |  |  |
| DC1-CRAH-L3-Cx-4640 |  | DC1-DH1200-CRAH-DH-25 FTE | 1d | 2026-03-18 | 2026-03-18 | DC1-MOD2-L3-Cx-2510 SS, DC1-MOD2-L3-Cx-2570 SS, DC1-CRAH-L2-2880 | 22d | 0d | Riley Warring | ROS |
| DC1-CRAH-L3-Cx-4650 |  | DC1-DH1200-CRAH-DH-25 L3 Startup | 2d | 2026-03-19 | 2026-03-20 | DC1-CRAH-L3-Cx-4640 | 22d | 0d | Riley Warring | UMAS |
| DC1-CRAH-L3-Cx-4660 |  | DC1-DH1200-CRAH-DH-25 BMS/EPMS | 1d | 2026-03-23 | 2026-03-23 | DC1-CRAH-L3-Cx-4650 | 22d | 3d | Riley Warring | PRM |

Notes:
- DC1-CRAH-L3-Cx-4500: Steps: EC Startup Checklist; MC Startup Checklist; Vendor Startup
- DC1-CRAH-L3-Cx-4530: Steps: EC Startup Checklist; MC Startup Checklist; Vendor Startup
- DC1-CRAH-L3-Cx-4560: Steps: EC Startup Checklist; MC Startup Checklist; Vendor Startup
- DC1-CRAH-L3-Cx-4590: Steps: EC Startup Checklist; MC Startup Checklist; Vendor Startup
- DC1-CRAH-L3-Cx-4620: Steps: EC Startup Checklist; MC Startup Checklist; Vendor Startup
- DC1-CRAH-L3-Cx-4650: Steps: EC Startup Checklist; MC Startup Checklist; Vendor Startup

| ID | WBS | Activity | Duration | Start | Finish | Predecessors | Total float | Free float | Layton Responsible Party | Vendor Responsible Party |
| --- | --- | --- | --- | --- | --- | --- | --- | --- | --- | --- |
|  | 26 | **DH1200 CRAH-DH-26 L3** |  | 2026-03-23 | 2026-03-26 |  |  |  |  |  |
| DC1-CRAH-L3-Cx-4670 |  | DC1-DH1200-CRAH-DH-26 FTE | 1d | 2026-03-23 | 2026-03-23 | DC1-MOD2-L3-Cx-2600 SS, DC1-MOD2-L3-Cx-2540 SS, DC1-CRAH-L2-2890 | 19d | 0d | Riley Warring | ROS |
| DC1-CRAH-L3-Cx-4680 |  | DC1-DH1200-CRAH-DH-26 L3 Startup | 2d | 2026-03-24 | 2026-03-25 | DC1-CRAH-L3-Cx-4670 | 19d | 0d | Riley Warring | UMAS |
| DC1-CRAH-L3-Cx-4690 |  | DC1-DH1200-CRAH-DH-26 BMS/EPMS | 1d | 2026-03-26 | 2026-03-26 | DC1-CRAH-L3-Cx-4680 | 19d | 0d | Riley Warring | PRM |
|  | 27 | **DH1200 CRAH-DH-27 L3** |  | 2026-03-18 | 2026-03-23 |  |  |  |  |  |
| DC1-CRAH-L3-Cx-4700 |  | DC1-DH1200-CRAH-DH-27 FTE | 1d | 2026-03-18 | 2026-03-18 | DC1-MOD2-L3-Cx-2420 SS, DC1-MOD2-L3-Cx-2570 SS, DC1-CRAH-L2-2900 | 22d | 0d | Riley Warring | ROS |
| DC1-CRAH-L3-Cx-4710 |  | DC1-DH1200-CRAH-DH-27 L3 Startup | 2d | 2026-03-19 | 2026-03-20 | DC1-CRAH-L3-Cx-4700 | 22d | 0d | Riley Warring | UMAS |
| DC1-CRAH-L3-Cx-4720 |  | DC1-DH1200-CRAH-DH-27 BMS/EPMS | 1d | 2026-03-23 | 2026-03-23 | DC1-CRAH-L3-Cx-4710 | 22d | 3d | Riley Warring | PRM |
|  | 28 | **DH1200 CRAH-DH-28 L3** |  | 2026-03-23 | 2026-03-26 |  |  |  |  |  |
| DC1-CRAH-L3-Cx-4730 |  | DC1-DH1200-CRAH-DH-28 FTE | 1d | 2026-03-23 | 2026-03-23 | DC1-MOD2-L3-Cx-2450 SS, DC1-CRAH-L2-2910, DC1-MOD2-L3-Cx-2600 SS | 19d | 0d | Riley Warring | ROS |
| DC1-CRAH-L3-Cx-4740 |  | DC1-DH1200-CRAH-DH-28 L3 Startup | 2d | 2026-03-24 | 2026-03-25 | DC1-CRAH-L3-Cx-4730 | 19d | 0d | Riley Warring | UMAS |
| DC1-CRAH-L3-Cx-4750 |  | DC1-DH1200-CRAH-DH-28 BMS/EPMS | 1d | 2026-03-26 | 2026-03-26 | DC1-CRAH-L3-Cx-4740 | 19d | 0d | Riley Warring | PRM |
|  | 29 | **DH1200 CRAH-EG-01 L3** |  | 2026-03-18 | 2026-03-23 |  |  |  |  |  |
| DC1-CRAH-L3-Cx-4760 |  | DC1-DH1200-CRAH-EG-1202-01 FTE | 1d | 2026-03-18 | 2026-03-18 | DC1-CRAH-L2-2920, DC1-MOD2-L3-Cx-2570 SS | 22d | 0d | Riley Warring | ROS |
| DC1-CRAH-L3-Cx-4770 |  | DC1-DH1200-CRAH-EG-1202-01 L3 Startup | 2d | 2026-03-19 | 2026-03-20 | DC1-CRAH-L3-Cx-4760 | 22d | 0d | Riley Warring | VER |
| DC1-CRAH-L3-Cx-4780 |  | DC1-DH1200-CRAH-EG-1202-01 BMS/EPMS | 1d | 2026-03-23 | 2026-03-23 | DC1-CRAH-L3-Cx-4770 | 22d | 3d | Riley Warring | PRM |
|  | 30 | **DH1200 CRAH-EG-02 L3** |  | 2026-03-10 | 2026-03-13 |  |  |  |  |  |
| DC1-CRAH-L3-Cx-4790 |  | DC1-DH1200-CRAH-EG-1202-02 FTE | 1d | 2026-03-10 | 2026-03-10 | DC1-MOD2-L3-Cx-2510 SS, DC1-CRAH-L2-2930 | 28d | 0d | Riley Warring | ROS |
| DC1-CRAH-L3-Cx-4800 |  | DC1-DH1200-CRAH-EG-1202-02 L3 Startup | 2d | 2026-03-11 | 2026-03-12 | DC1-CRAH-L3-Cx-4790 | 28d | 0d | Riley Warring | VER |
| DC1-CRAH-L3-Cx-4810 |  | DC1-DH1200-CRAH-EG-1202-02 BMS/EPMS | 1d | 2026-03-13 | 2026-03-13 | DC1-CRAH-L3-Cx-4800 | 28d | 9d | Riley Warring | PRM |
|  | 31 | **DH1200 CRAH-EG-03 L3** |  | 2026-03-05 | 2026-03-10 |  |  |  |  |  |
| DC1-CRAH-L3-Cx-4820 |  | DC1-DH1200-CRAH-EG-1202-03 FTE | 1d | 2026-03-05 | 2026-03-05 | DC1-MOD2-L3-Cx-2480 SS, DC1-CRAH-L2-2940 | 31d | 0d | Riley Warring | ROS |
| DC1-CRAH-L3-Cx-4830 |  | DC1-DH1200-CRAH-EG-1202-03 L3 Startup | 2d | 2026-03-06 | 2026-03-09 | DC1-CRAH-L3-Cx-4820 | 31d | 0d | Riley Warring | VER |
| DC1-CRAH-L3-Cx-4840 |  | DC1-DH1200-CRAH-EG-1202-03 BMS/EPMS | 1d | 2026-03-10 | 2026-03-10 | DC1-CRAH-L3-Cx-4830 | 31d | 12d | Riley Warring | PRM |

Notes:
- DC1-CRAH-L3-Cx-4680: Steps: EC Startup Checklist; MC Startup Checklist; Vendor Startup
- DC1-CRAH-L3-Cx-4710: Steps: EC Startup Checklist; MC Startup Checklist; Vendor Startup
- DC1-CRAH-L3-Cx-4740: Steps: EC Startup Checklist; MC Startup Checklist; Vendor Startup
- DC1-CRAH-L3-Cx-4770: Steps: EC Startup Checklist; MC Startup Checklist; Vendor Startup
- DC1-CRAH-L3-Cx-4800: Steps: EC Startup Checklist; MC Startup Checklist; Vendor Startup
- DC1-CRAH-L3-Cx-4830: Steps: EC Startup Checklist; MC Startup Checklist; Vendor Startup

| ID | WBS | Activity | Duration | Start | Finish | Predecessors | Total float | Free float | Calendar | Layton Responsible Party | Vendor Responsible Party |
| --- | --- | --- | --- | --- | --- | --- | --- | --- | --- | --- | --- |
|  | 32 | **DH1200 CRAH-EG-04 L3** |  | 2026-03-02 | 2026-03-05 |  |  |  |  |  |  |
| DC1-CRAH-L3-Cx-4850 |  | DC1-DH1200-CRAH-EG-1202-04 FTE | 1d | 2026-03-02 | 2026-03-02 | DC1-CRAH-L2-2950, DC1-MOD2-L3-Cx-2420 SS | 34d | 0d |  | Riley Warring | ROS |
| DC1-CRAH-L3-Cx-4860 |  | DC1-DH1200-CRAH-EG-1202-04 L3 Startup | 2d | 2026-03-03 | 2026-03-04 | DC1-CRAH-L3-Cx-4850 | 34d | 0d |  | Riley Warring | VER |
| DC1-CRAH-L3-Cx-4870 |  | DC1-DH1200-CRAH-EG-1202-04 BMS/EPMS | 1d | 2026-03-05 | 2026-03-05 | DC1-CRAH-L3-Cx-4860 | 34d | 15d |  | Riley Warring | PRM |
|  | 33 | **DC1-DH1200-DOAS-RT-01 L3** |  | 2026-03-23 | 2026-03-26 |  |  |  |  |  |  |
| DC1-DOAS-L3-Cx-2120 |  | DC1-DH1200-DOAS-RT-01 FTE | 1d | 2026-03-23 | 2026-03-23 | DC1-DOAS-L2-2040, DC1-MOD2-L3-Cx-2600 SS | 19d | 0d |  | Riley Warring | ROS |
| DC1-DOAS-L3-Cx-2130 |  | DC1-DH1200-DOAS-RT-01 L3 Startup | 2d | 2026-03-24 | 2026-03-25 | DC1-DOAS-L3-Cx-2120 | 19d | 0d |  | Riley Warring | TAS |
| DC1-DOAS-L3-Cx-2140 |  | DC1-DH1200-DOAS-RT-01 BMS/EPMS | 1d | 2026-03-26 | 2026-03-26 | DC1-DOAS-L3-Cx-2130 | 19d | 0d |  | Riley Warring | PRM |
|  | 34 | **DC1-DH1200-DOAS-RT-02 L3** |  | 2026-03-18 | 2026-03-23 |  |  |  |  |  |  |
| DC1-DOAS-L3-Cx-2150 |  | DC1-DH1200-DOAS-RT-02 FTE | 1d | 2026-03-18 | 2026-03-18 | DC1-DOAS-L2-2050, DC1-MOD2-L3-Cx-2570 SS | 22d | 0d |  | Riley Warring | ROS |
| DC1-DOAS-L3-Cx-2160 |  | DC1-DH1200-DOAS-RT-02 L3 Startup | 2d | 2026-03-19 | 2026-03-20 | DC1-DOAS-L3-Cx-2150 | 22d | 0d |  | Riley Warring | TAS |
| DC1-DOAS-L3-Cx-2170 |  | DC1-DH1200-DOAS-RT-02 BMS/EPMS | 1d | 2026-03-23 | 2026-03-23 | DC1-DOAS-L3-Cx-2160 | 22d | 3d |  | Riley Warring | PRM |
|  | 14 | **DC1-DH1200 LOADBANK** |  | 2026-03-17 | 2026-06-22 |  |  |  |  |  |  |
| DC1-DH1200-LB-1000 |  | DC1-DH1200 Connect Loadbanks (Connect to RPP, Maybe CODs Extra Breaker) | 5d | 2026-03-17 | 2026-03-23 | QTS - 7660, QTS - 8120, QTS - 8350, DC1-CHLR-L3-Cx-2710, DC1-CHLR-L3-Cx-2720, DC1-CHLR-L3-Cx-2730, DC1-CHLR-L3-Cx-2740, DC1-CHLR-L3-Cx-2750, DC1-CHLR-L3-Cx-2760 | 24d | 0d |  | Riley Warring | PHE |
| DC1-DH1200-LB-1010 |  | DC1-DH1200 Burn in Chillers | 5d | 2026-03-24 | 2026-03-30 | DC1-DH1200-LB-1000, DC1-COD-L3-CX-3625, DC1-COD-L3-CX-3655, DC1-COD-L3-CX-3685, DC1-COD-L3-CX-3715, DC1-COD-L3-CX-3745, DC1-COD-L3-CX-3775, DC1-COD-L3-CX-3805, DC1-COD-L3-CX-3835, DC1-COD-L3-CX-3865, DC1-COD-L3-CX-3895, DC1-COD-L3-CX-3925, DC1-COD-L3-CX-3955, DC1-COD-L3-CX-3985, DC1-COD-L3-CX-4015, DC1-COD-L3-CX-4045, DC1-COD-L3-CX-4075, DC1-COD-L3-CX-4105, DC1-COD-L3-CX-4135, DC1-COD-L3-CX-4165, DC1-COD-L3-CX-4195, DC1-COD-L3-CX-4225, DC1-COD-L3-CX-4255, DC1-COD-L3-CX-4285, DC1-COD-L3-CX-4315, DC1-COD-L3-CX-4345, DC1-COD-L3-CX-4375, DC1-COD-L3-CX-4405, DC1-COD-L3-CX-4435, DC1-COD-L3-CX-4465, DC1-COD-L3-CX-4495, DC1-COD-L3-CX-4525, DC1-COD-L3-CX-4555, DC1-COD-L3-CX-4585, DC1-COD-L3-CX-4615, DC1-COD-L3-CX-4645, DC1-COD-L3-CX-4675 | 24d | 0d |  | Riley Warring | LAY |
| DC1-DH1200-LB-1040 |  | DC1-DH1200 Water Load Bank (Secondary Side) | 12d | 2026-06-02 | 2026-06-17 | DC1-IST-2020 | 2d | 0d |  | Riley Warring | LAY |
| DC1-DH1200-LB-1030 |  | DC1-DH1200 10% Continuity Testing RPP Whips | 2d | 2026-06-18 | 2026-06-19 | DC1-DH1200-LB-1040, QTS - 8670, QTS - 8780, QTS - 8790 | 7d | 0d |  | Riley Warring | PHE |
| DC1-DH1200-LB-1050 |  | DC1-DH1200 Install DanFoss Connectors | 2d | 2026-06-19 | 2026-06-22 | DC1-DH1200-LB-1030 SS+1d | 7d | 5d |  | Riley Warring | PHE |
|  | 15 | **DC1-DH1200 TAB** |  | 2026-03-19 | 2026-04-02 |  |  |  |  |  |  |
| DC1-DH1200-TAB-1000 |  | DC1-DH1200 Water Tab (Industrial Loop) | 10d | 2026-03-19 | 2026-04-01 | QTS-101050, DC1-CHWP-L3-Cx-2440, DC1-CHWP-L3-Cx-2470, DC1-CHWP-L3-Cx-2500, DC1-CHWP-L3-Cx-2530, DC1-CHWP-L3-Cx-2560, DC1-CHWP-L3-Cx-2590, DC1-CHWP-L3-Cx-2620 | 5d | 0d |  | Riley Warring | LAY |
| DC1-DH1200-TAB-1010 |  | DC1-DH1200 Air Tab | 5d | 2026-03-27 | 2026-04-02 | QTS-1004390, DC1-CRAH-L3-Cx-3940, DC1-CRAH-L3-Cx-3970, DC1-CRAH-L3-Cx-4000, DC1-CRAH-L3-Cx-4030, DC1-CRAH-L3-Cx-4060, DC1-CRAH-L3-Cx-4090, DC1-CRAH-L3-Cx-4120, DC1-CRAH-L3-Cx-4150, DC1-CRAH-L3-Cx-4180, DC1-CRAH-L3-Cx-4210, DC1-CRAH-L3-Cx-4240, DC1-CRAH-L3-Cx-4270, DC1-CRAH-L3-Cx-4300, DC1-CRAH-L3-Cx-4330, DC1-CRAH-L3-Cx-4360, DC1-CRAH-L3-Cx-4390, DC1-CRAH-L3-Cx-4420, DC1-CRAH-L3-Cx-4450, DC1-CRAH-L3-Cx-4480, DC1-CRAH-L3-Cx-4510, DC1-CRAH-L3-Cx-4540, DC1-CRAH-L3-Cx-4570, DC1-CRAH-L3-Cx-4600, DC1-CRAH-L3-Cx-4630, DC1-CRAH-L3-Cx-4660, DC1-CRAH-L3-Cx-4690, DC1-CRAH-L3-Cx-4720, DC1-CRAH-L3-Cx-4750, DC1-CRAH-L3-Cx-4780, DC1-CRAH-L3-Cx-4810, DC1-CRAH-L3-Cx-4840, DC1-CRAH-L3-Cx-4870, DC1-DOAS-L3-Cx-2140, DC1-DOAS-L3-Cx-2170 | 19d | 14d |  | Riley Warring | LAY |
|  | 04 | **Data Hall 1200 Cx L4** |  | 2026-04-02 | 2026-06-29 |  |  |  |  |  |  |
| DC1-MECH-L4-Cx-1130 |  | DC1 Data Hall 1200 BMS/EPMS Integration | 15d | 2026-04-02 | 2026-04-22 | DC1-DH1200-TAB-1000 | 5d | 0d | **GLOBAL - 5 Day Workweek w/ Basic Holidays |  |  |
| DC1-MECH-L4-Cx-1030 |  | DC1 Data Hall 1200 Mechanical L4 | 20d | 2026-04-23 | 2026-05-20 | DC1-MECH-L4-Cx-1130, DC1-DOAS-L3-Cx-2170, DC1-CHLR-L3-Cx-2510, DC1-CHLR-L3-Cx-2540, DC1-CHLR-L3-Cx-2570, DC1-CHLR-L3-Cx-2600, DC1-CHLR-L3-Cx-2630, DC1-CHLR-L3-Cx-2660, DC1-CHLR-L3-Cx-2690, DC1-CHWP-L3-Cx-2440, DC1-CHWP-L3-Cx-2470, DC1-CHWP-L3-Cx-2500, DC1-CHWP-L3-Cx-2530, DC1-CHWP-L3-Cx-2560, DC1-CHWP-L3-Cx-2590, DC1-CHWP-L3-Cx-2620, DC1-CRAH-L3-Cx-3940, DC1-CRAH-L3-Cx-3970, DC1-CRAH-L3-Cx-4000, DC1-CRAH-L3-Cx-4030, DC1-CRAH-L3-Cx-4060, DC1-CRAH-L3-Cx-4090, DC1-CRAH-L3-Cx-4120, DC1-CRAH-L3-Cx-4150, DC1-CRAH-L3-Cx-4180, DC1-CRAH-L3-Cx-4210, DC1-CRAH-L3-Cx-4240, DC1-CRAH-L3-Cx-4270, DC1-CRAH-L3-Cx-4300, DC1-CRAH-L3-Cx-4330, DC1-CRAH-L3-Cx-4360, DC1-CRAH-L3-Cx-4390, DC1-CRAH-L3-Cx-4420, DC1-CRAH-L3-Cx-4450, DC1-CRAH-L3-Cx-4480, DC1-CRAH-L3-Cx-4510, DC1-CRAH-L3-Cx-4540, DC1-CRAH-L3-Cx-4570, DC1-CRAH-L3-Cx-4600, DC1-CRAH-L3-Cx-4630, DC1-CRAH-L3-Cx-4660, DC1-CRAH-L3-Cx-4690, DC1-CRAH-L3-Cx-4720, DC1-CRAH-L3-Cx-4750, DC1-CRAH-L3-Cx-4780, DC1-CRAH-L3-Cx-4810, DC1-CRAH-L3-Cx-4840, DC1-CRAH-L3-Cx-4870, DC1-DOAS-L3-Cx-2140, DC1-DOAS-L3-Cx-2170 FF, DC1-COMP-L3-CX-2440, DC1-FAN-L3-CX-2440, DC1-COMP-L3-CX-2470, DC1-FAN-L3-CX-2470, DC1-COMP-L3-CX-2500, DC1-FAN-L3-CX-2500, DC1-COMP-L3-CX-2530, DC1-FAN-L3-CX-2530, DC1-COMP-L3-CX-2560, DC1-FAN-L3-CX-2560, DC1-COMP-L3-CX-2590, DC1-FAN-L3-CX-2590, DC1-COMP-L3-CX-2620, DC1-FAN-L3-CX-2620, DC1-DH1200-TAB-1010 | 5d |  |  | Riley Warring | LAY |
| DC1-ELEC-L4-Cx-1030 |  | DC1 Data Hall 1200 Electrical L4 | 20d | 2026-04-30 | 2026-05-28 | DC1-GEN-L3-CX-2440, DC1-GEN-L3-CX-2470, DC1-GEN-L3-CX-2500, DC1-GEN-L3-CX-2530, DC1-GEN-L3-CX-2560, DC1-GEN-L3-CX-2590, DC1-GEN-L3-CX-2620, DC1-XFM-L3-CX-1440, DC1-XFM-L3-CX-1470, DC1-XFM-L3-CX-1500, DC1-XFM-L3-CX-1530, DC1-XFM-L3-CX-1560, DC1-XFM-L3-CX-1590, DC1-XFM-L3-CX-1620, DC1-SWD-L3-CX-2440, DC1-SWD-L3-CX-2470, DC1-SWD-L3-CX-2500, DC1-SWD-L3-CX-2530, DC1-SWD-L3-CX-2560, DC1-SWD-L3-CX-2590, DC1-SWD-L3-CX-2620, DC1-MOD1-L3-CX-2440, DC1-MOD1-L3-CX-2470, DC1-MOD1-L3-CX-2500, DC1-MOD1-L3-CX-2530, DC1-MOD1-L3-CX-2560, DC1-MOD1-L3-CX-2590, DC1-MOD1-L3-CX-2620, DC1-UPSM-L3-CX-2440, DC1-UPSM-L3-CX-2470, DC1-UPSM-L3-CX-2500, DC1-UPSM-L3-CX-2530, DC1-UPSM-L3-CX-2560, DC1-UPSM-L3-CX-2590, DC1-UPSM-L3-CX-2620, DC1-ATS-L3-CX-3645, DC1-ATS-L3-CX-3675, DC1-ATS-L3-CX-3705, DC1-ATS-L3-CX-3735, DC1-ATS-L3-CX-3765, DC1-ATS-L3-CX-3795, DC1-ATS-L3-CX-3825, DC1-ATS-L3-CX-3855, DC1-ATS-L3-CX-3885, DC1-ATS-L3-CX-3915, DC1-ATS-L3-CX-3945, DC1-ATS-L3-CX-3975, DC1-ATS-L3-CX-4005, DC1-ATS-L3-CX-4035, DC1-ATS-L3-CX-4065, DC1-ATS-L3-CX-4095, DC1-ATS-L3-CX-4125, DC1-ATS-L3-CX-4155, DC1-ATS-L3-CX-4185, DC1-ATS-L3-CX-4215, DC1-ATS-L3-CX-4245, DC1-ATS-L3-CX-4275, DC1-ATS-L3-CX-4305, DC1-ATS-L3-CX-4335, DC1-ATS-L3-CX-4365, DC1-ATS-L3-CX-4395, DC1-ATS-L3-CX-4425, DC1-ATS-L3-CX-4455, DC1-ATS-L3-CX-4485, DC1-ATS-L3-CX-4515, DC1-ATS-L3-CX-4545, DC1-ATS-L3-CX-4575, DC1-ATS-L3-CX-4605, DC1-ATS-L3-CX-4635, DC1-ATS-L3-CX-4665, DC1-ATS-L3-CX-4695, DC1-COD-L3-CX-3645, DC1-COD-L3-CX-3675, DC1-COD-L3-CX-3705, DC1-COD-L3-CX-3735, DC1-COD-L3-CX-3765, DC1-COD-L3-CX-3795, DC1-COD-L3-CX-3825, DC1-COD-L3-CX-3855, DC1-COD-L3-CX-3885, DC1-COD-L3-CX-3915, DC1-COD-L3-CX-3945, DC1-COD-L3-CX-3975, DC1-COD-L3-CX-4005, DC1-COD-L3-CX-4035, DC1-COD-L3-CX-4065, DC1-COD-L3-CX-4095, DC1-COD-L3-CX-4125, DC1-COD-L3-CX-4155, DC1-COD-L3-CX-4185, DC1-COD-L3-CX-4215, DC1-COD-L3-CX-4245, DC1-COD-L3-CX-4275, DC1-COD-L3-CX-4305, DC1-COD-L3-CX-4335, DC1-COD-L3-CX-4365, DC1-COD-L3-CX-4395, DC1-COD-L3-CX-4425, DC1-COD-L3-CX-4455, DC1-COD-L3-CX-4485, DC1-COD-L3-CX-4515, DC1-COD-L3-CX-4545, DC1-COD-L3-CX-4575, DC1-COD-L3-CX-4605, DC1-COD-L3-CX-4635, DC1-COD-L3-CX-4665, DC1-COD-L3-CX-4695, DC1-MOD2-L3-Cx-2440, DC1-MOD2-L3-Cx-2470, DC1-MOD2-L3-Cx-2500, DC1-MOD2-L3-Cx-2530, DC1-MOD2-L3-Cx-2560, DC1-MOD2-L3-Cx-2590, DC1-MOD2-L3-Cx-2620, DC1-MOD3-L3-Cx-2440, DC1-MOD3-L3-Cx-2470, DC1-MOD3-L3-Cx-2500, DC1-MOD3-L3-Cx-2530, DC1-MOD3-L3-Cx-2560, DC1-MOD3-L3-Cx-2590, DC1-MOD3-L3-Cx-2620, DC1-BUS-L3-CX-2140, DC1-BUS-L3-CX-2170 | 0d |  |  | Riley Warring | LAY |
| DC1-ELEC-L4-Cx-1080 |  | DC1 Data Hall 1200 Electrical L4 (TFO) | 20d | 2026-05-07 | 2026-06-04 | DC1-MOD3-L3-Cx-2620, DC1-CDU-L3-CX-4695, DC1-CDU-L3-CX-4665, DC1-CDU-L3-CX-4635, DC1-CDU-L3-CX-4605, DC1-CDU-L3-CX-4575, DC1-CDU-L3-CX-4545, DC1-CDU-L3-CX-4515, DC1-CDU-L3-CX-4485, DC1-CDU-L3-CX-4455, DC1-CDU-L3-CX-4425, DC1-CDU-L3-CX-4395, DC1-CDU-L3-CX-4365, DC1-CDU-L3-CX-4335, DC1-CDU-L3-CX-4305, DC1-CDU-L3-CX-4275, DC1-CDU-L3-CX-4245, DC1-CDU-L3-CX-4215, DC1-CDU-L3-CX-4185, DC1-RPP-L3-CX-3645, DC1-RPP-L3-CX-3675, DC1-RPP-L3-CX-3705, DC1-RPP-L3-CX-3735, DC1-RPP-L3-CX-3765, DC1-RPP-L3-CX-3795, DC1-RPP-L3-CX-3825, DC1-RPP-L3-CX-3855, DC1-RPP-L3-CX-3885, DC1-RPP-L3-CX-3915, DC1-RPP-L3-CX-3945, DC1-RPP-L3-CX-3975, DC1-RPP-L3-CX-4005, DC1-RPP-L3-CX-4035, DC1-RPP-L3-CX-4065, DC1-RPP-L3-CX-4095, DC1-RPP-L3-CX-4125, DC1-RPP-L3-CX-4155, DC1-RPP-L3-CX-4185, DC1-RPP-L3-CX-4215, DC1-RPP-L3-CX-4245, DC1-RPP-L3-CX-4275, DC1-RPP-L3-CX-4335, DC1-RPP-L3-CX-4305, DC1-RPP-L3-CX-4365, DC1-RPP-L3-CX-4395, DC1-RPP-L3-CX-4425, DC1-RPP-L3-CX-4455, DC1-RPP-L3-CX-4485, DC1-RPP-L3-CX-4515, DC1-RPP-L3-CX-4545, DC1-RPP-L3-CX-4575, DC1-RPP-L3-CX-4605, DC1-RPP-L3-CX-4635, DC1-RPP-L3-CX-4665, DC1-RPP-L3-CX-4695, QTS - 7780, QTS - 8610, QTS - 8630, QTS - 8160, QTS - 8390, QTS - 7760, QTS - 7790, QTS - 8170, QTS - 8400, QTS - 8600, QTS - 8490, QTS - 8550, QTS - 8620, QTS - 2620 | 19d | 17d |  | Riley Warring | LAY |
| DC1-MECH-L4-Cx-1080 |  | DC1 Data Hall 1200 Mechanical L4 (TFO) | 20d | 2026-06-02 | 2026-06-29 | DC1-DH1200-LB-1040 SS, DC1-CDU-L3-CX-4695, DC1-CDU-L3-CX-4665, DC1-CDU-L3-CX-4635, DC1-CDU-L3-CX-4605, DC1-CDU-L3-CX-4575, DC1-CDU-L3-CX-4545, DC1-CDU-L3-CX-4515, DC1-CDU-L3-CX-4485, DC1-CDU-L3-CX-4455, DC1-CDU-L3-CX-4425, DC1-CDU-L3-CX-4395, DC1-CDU-L3-CX-4365, DC1-CDU-L3-CX-4335, DC1-CDU-L3-CX-4305, DC1-CDU-L3-CX-4275, DC1-CDU-L3-CX-4245, DC1-CDU-L3-CX-4215, DC1-CDU-L3-CX-4185, QTS - 7780, QTS - 8610, QTS - 8630, QTS - 8160, QTS - 8390, QTS - 7760, QTS - 7790, QTS - 8170, QTS - 8400, QTS - 8600, QTS - 8490, QTS - 8550, QTS - 2620 | 2d | 0d |  | Riley Warring | LAY |

Notes:
- DC1-CRAH-L3-Cx-4860: Steps: EC Startup Checklist; MC Startup Checklist; Vendor Startup
- DC1-DOAS-L3-Cx-2130: Steps: EC Startup Checklist; MC Startup Checklist; Vendor Startup
- DC1-DOAS-L3-Cx-2160: Steps: EC Startup Checklist; MC Startup Checklist; Vendor Startup

| ID | WBS | Activity | Duration | Start | Finish | Predecessors | Total float | Free float | Layton Responsible Party | Vendor Responsible Party |
| --- | --- | --- | --- | --- | --- | --- | --- | --- | --- | --- |
|  | 02 | **Data Hall 1200 Mechanical Cx L4** |  |  |  |  |  |  |  |  |
|  | 01 | **Data Hall 1200 Electrical Cx L4** |  |  |  |  |  |  |  |  |
|  | 05 | **Data Hall 1200 Cx L5** |  | 2026-05-29 | 2026-06-01 |  |  |  |  |  |
| DC1-IST-2020 |  | DC1 Data Hall 1200 IST (6/1/26) | 2d | 2026-05-29 | 2026-06-01 | DC1-ELEC-L4-Cx-1030, DC1-MECH-L4-Cx-1030 | 0d |  | Riley Warring | LAY |
|  | 06 | **Data Hall 2300 Commissioning** |  | 2026-02-16 | 2026-08-26 |  |  |  |  |  |
|  | 02 | **Data Hall 2300 Cx L2** |  | 2026-02-16 | 2026-06-05 |  |  |  |  |  |
|  | 01 | **DC1-DH2300 Generators Cx L2** |  | 2026-03-30 | 2026-04-27 |  |  |  |  |  |
| DC1-GEN-L2-2210 |  | DH2300 GEN-A23 L2 Checklist | 3d | 2026-03-30 | 2026-04-01 | QTS-17441, QTS-1000310, QTS-1001220 | 39d | 0d |  | HLT |
| DC1-GEN-L2-2220 |  | DH2300 GEN-B23 L2 Checklist | 3d | 2026-04-02 | 2026-04-06 | DC1-GEN-L2-2210, QTS-1000310, QTS-1001220 | 39d | 0d |  | HLT |
| DC1-GEN-L2-2230 |  | DH2300 GEN-C23 L2 Checklist | 3d | 2026-04-07 | 2026-04-09 | DC1-GEN-L2-2220, QTS-1000310, QTS-1001220 | 39d | 0d |  | HLT |
| DC1-GEN-L2-2240 |  | DH2300 GEN-D23 L2 Checklist | 3d | 2026-04-10 | 2026-04-14 | DC1-GEN-L2-2230, QTS-1000310, QTS-1001220 | 39d | 0d |  | HLT |
| DC1-GEN-L2-2250 |  | DH2300 GEN-E23 L2 Checklist | 3d | 2026-04-15 | 2026-04-17 | DC1-GEN-L2-2240, QTS-1000310, QTS-1001220 | 39d | 0d |  | HLT |
| DC1-GEN-L2-2260 |  | DH2300 GEN-F23 L2 Checklist | 3d | 2026-04-20 | 2026-04-22 | DC1-GEN-L2-2250, QTS-1000310, QTS-1001220 | 39d | 0d |  | HLT |
| DC1-GEN-L2-2270 |  | DH2300 GEN-R23 L2 Checklist | 3d | 2026-04-23 | 2026-04-27 | DC1-GEN-L2-2260, QTS-1000310, QTS-1001220 | 39d | 0d |  | HLT |
|  | 02 | **DC1-DH2300 MV XFMRs Cx L2** |  | 2026-03-31 | 2026-04-15 |  |  |  |  |  |
| DC1-XFMR-L2-2270 |  | DH2300 XFMR-R23 L2 Checklist | 3d | 2026-03-31 | 2026-04-02 | QTS-15931, QTS-42871 | 8d | 0d | Riley Warring | VTC |
| DC1-XFMR-L2-2210 |  | DH2300 XFMR-A23 L2 Checklist | 3d | 2026-04-02 | 2026-04-06 | DC1-XFMR-L2-2270 SS+2d, QTS-42871 | 8d | 0d | Riley Warring | VTC |
| DC1-XFMR-L2-2220 |  | DH2300 XFMR-B23 L2 Checklist | 3d | 2026-04-06 | 2026-04-08 | DC1-XFMR-L2-2210 SS+2d, QTS-42871 | 8d | 0d | Riley Warring | VTC |
| DC1-XFMR-L2-2230 |  | DH2300 XFMR-C23 L2 Checklist | 3d | 2026-04-08 | 2026-04-10 | DC1-XFMR-L2-2220 SS+2d, QTS-42871 | 8d | 0d | Riley Warring | VTC |
| DC1-XFMR-L2-2240 |  | DH2300 XFMR-D23 L2 Checklist | 3d | 2026-04-09 | 2026-04-13 | DC1-XFMR-L2-2230 SS+1d, QTS-42871 | 8d | 0d | Riley Warring | VTC |
| DC1-XFMR-L2-2250 |  | DH2300 XFMR-E23 L2 Checklist | 3d | 2026-04-10 | 2026-04-14 | DC1-XFMR-L2-2240 SS+1d, QTS-42871 | 8d | 0d | Riley Warring | VTC |
| DC1-XFMR-L2-2260 |  | DH2300 XFMR-F23 L2 Checklist | 3d | 2026-04-13 | 2026-04-15 | DC1-XFMR-L2-2250 SS+1d, QTS-42871 | 8d | 0d | Riley Warring | VTC |
|  | 03 | **DC1-DH2300 PODS** |  | 2026-02-16 | 2026-04-15 |  |  |  |  |  |
|  | 01 | **DC1-DH2300 SWDs Cx L2** |  | 2026-03-31 | 2026-04-15 |  |  |  |  |  |
| DC1-SWD-L2-2270 |  | DH2300 SWD-R23 L2 Checklist | 3d | 2026-03-31 | 2026-04-02 | QTS-15931, QTS-17441, QTS-41401 | 8d | 0d | Riley Warring | SIE |
| DC1-SWD-L2-2210 |  | DH2300 SWD-A23 L2 Checklist | 3d | 2026-04-02 | 2026-04-06 | DC1-SWD-L2-2270 SS+2d | 8d | 0d | Riley Warring | SIE |
| DC1-SWD-L2-2220 |  | DH2300 SWD-B23 L2 Checklist | 3d | 2026-04-06 | 2026-04-08 | DC1-SWD-L2-2210 SS+2d | 8d | 0d | Riley Warring | SIE |
| DC1-SWD-L2-2230 |  | DH2300 SWD-C23 L2 Checklist | 3d | 2026-04-08 | 2026-04-10 | DC1-SWD-L2-2220 SS+2d | 8d | 0d | Riley Warring | SIE |
| DC1-SWD-L2-2240 |  | DH2300 SWD-D23 L2 Checklist | 3d | 2026-04-09 | 2026-04-13 | DC1-SWD-L2-2230 SS+1d | 8d | 0d | Riley Warring | SIE |
| DC1-SWD-L2-2250 |  | DH2300 SWD-E23 L2 Checklist | 3d | 2026-04-10 | 2026-04-14 | DC1-SWD-L2-2240 SS+1d | 8d | 0d | Riley Warring | SIE |
| DC1-SWD-L2-2260 |  | DH2300 SWD-F23 L2 Checklist | 3d | 2026-04-13 | 2026-04-15 | DC1-SWD-L2-2250 SS+1d | 8d | 0d | Riley Warring | SIE |

Notes:
- DC1-GEN-L2-2210: Steps: EC Installation Checklist; MC Installation Checklist; CC Installation Checklist; Vendor Pre-Energization Checklist; CXA Pre-Energization Inspection; PEI/Clean-Walk
- DC1-GEN-L2-2220: Steps: EC Installation Checklist; MC Installation Checklist; CC Installation Checklist; Vendor Pre-Energization Checklist; CXA Pre-Energization Inspection; PEI/Clean-Walk
- DC1-GEN-L2-2230: Steps: EC Installation Checklist; MC Installation Checklist; CC Installation Checklist; Vendor Pre-Energization Checklist; CXA Pre-Energization Inspection; PEI/Clean-Walk
- DC1-GEN-L2-2240: Steps: EC Installation Checklist; MC Installation Checklist; CC Installation Checklist; Vendor Pre-Energization Checklist; CXA Pre-Energization Inspection; PEI/Clean-Walk
- DC1-GEN-L2-2250: Steps: EC Installation Checklist; MC Installation Checklist; CC Installation Checklist; Vendor Pre-Energization Checklist; CXA Pre-Energization Inspection; PEI/Clean-Walk
- DC1-GEN-L2-2260: Steps: EC Installation Checklist; MC Installation Checklist; CC Installation Checklist; Vendor Pre-Energization Checklist; CXA Pre-Energization Inspection; PEI/Clean-Walk
- DC1-GEN-L2-2270: Steps: EC Installation Checklist; MC Installation Checklist; CC Installation Checklist; Vendor Pre-Energization Checklist; CXA Pre-Energization Inspection; PEI/Clean-Walk
- DC1-XFMR-L2-2270: Steps: EC Installation Checklist; CC Installation Checklist; Vendor Pre-Energization Checklist; CXA Pre-Energization Inspection; PEI/Clean-Walk
- DC1-XFMR-L2-2210: Steps: EC Installation Checklist; CC Installation Checklist; Vendor Pre-Energization Checklist; CXA Pre-Energization Inspection; PEI/Clean-Walk
- DC1-XFMR-L2-2220: Steps: EC Installation Checklist; CC Installation Checklist; Vendor Pre-Energization Checklist; CXA Pre-Energization Inspection; PEI/Clean-Walk
- DC1-XFMR-L2-2230: Steps: EC Installation Checklist; CC Installation Checklist; Vendor Pre-Energization Checklist; CXA Pre-Energization Inspection; PEI/Clean-Walk
- DC1-XFMR-L2-2240: Steps: EC Installation Checklist; CC Installation Checklist; Vendor Pre-Energization Checklist; CXA Pre-Energization Inspection; PEI/Clean-Walk
- DC1-XFMR-L2-2250: Steps: EC Installation Checklist; CC Installation Checklist; Vendor Pre-Energization Checklist; CXA Pre-Energization Inspection; PEI/Clean-Walk
- DC1-XFMR-L2-2260: Steps: EC Installation Checklist; CC Installation Checklist; Vendor Pre-Energization Checklist; CXA Pre-Energization Inspection; PEI/Clean-Walk
- DC1-SWD-L2-2270: Steps: EC Pre-Energization Checklist; Vendor Pre-Energization Checklist; CXA Pre-Energization Inspection; PEI/Clean-Walk
- DC1-SWD-L2-2210: Steps: EC Pre-Energization Checklist; Vendor Pre-Energization Checklist; CXA Pre-Energization Inspection; PEI/Clean-Walk
- DC1-SWD-L2-2220: Steps: EC Pre-Energization Checklist; Vendor Pre-Energization Checklist; CXA Pre-Energization Inspection; PEI/Clean-Walk
- DC1-SWD-L2-2230: Steps: EC Pre-Energization Checklist; Vendor Pre-Energization Checklist; CXA Pre-Energization Inspection; PEI/Clean-Walk
- DC1-SWD-L2-2240: Steps: EC Pre-Energization Checklist; Vendor Pre-Energization Checklist; CXA Pre-Energization Inspection; PEI/Clean-Walk
- DC1-SWD-L2-2250: Steps: EC Pre-Energization Checklist; Vendor Pre-Energization Checklist; CXA Pre-Energization Inspection; PEI/Clean-Walk
- DC1-SWD-L2-2260: Steps: EC Pre-Energization Checklist; Vendor Pre-Energization Checklist; CXA Pre-Energization Inspection; PEI/Clean-Walk

| ID | WBS | Activity | Duration | Start | Finish | Predecessors | Total float | Free float | Notes | Vendor Responsible Party | Layton Responsible Party |
| --- | --- | --- | --- | --- | --- | --- | --- | --- | --- | --- | --- |
|  | 02 | **DC1-DH2300 MOD-01s Cx L2** |  | 2026-02-16 | 2026-03-16 |  |  |  |  |  |  |
| DC1-MOD01-L2-2210 |  | DH2300 MOD-A23-01 L2 Checklist | 3d | 2026-02-16 | 2026-02-18 | QTS-13571 | 40d | 0d | Do we need? | PHE |  |
| DC1-MOD01-L2-2220 |  | DH2300 MOD-B23-01 L2 Checklist | 3d | 2026-02-19 | 2026-02-23 | DC1-MOD01-L2-2210 | 40d | 0d | Do we need? | PHE |  |
| DC1-MOD01-L2-2230 |  | DH2300 MOD-C23-01 L2 Checklist | 3d | 2026-02-24 | 2026-02-26 | DC1-MOD01-L2-2220 | 40d | 0d | Do we need? | PHE |  |
| DC1-MOD01-L2-2240 |  | DH2300 MOD-D23-01 L2 Checklist | 3d | 2026-02-27 | 2026-03-03 | DC1-MOD01-L2-2230 | 40d | 0d | Do we need? | PHE |  |
| DC1-MOD01-L2-2250 |  | DH2300 MOD-E23-01 L2 Checklist | 3d | 2026-03-04 | 2026-03-06 | DC1-MOD01-L2-2240 | 40d | 0d | Do we need? | PHE |  |
| DC1-MOD01-L2-2260 |  | DH2300 MOD-F23-01 L2 Checklist | 3d | 2026-03-09 | 2026-03-11 | DC1-MOD01-L2-2250 | 40d | 0d | Do we need? | PHE |  |
| DC1-MOD01-L2-2270 |  | DH2300 MOD-R23-01 L2 Checklist | 3d | 2026-03-12 | 2026-03-16 | DC1-MOD01-L2-2260 | 40d | 22d | Do we need? | PHE |  |
|  | 03 | **DC1-DH2300 UPS-M Cx L2** |  | 2026-02-16 | 2026-03-16 |  |  |  |  |  |  |
| DC1-UPS-M-L2-2210 |  | DH2300 UPS-M-A23 L2 Checklist | 3d | 2026-02-16 | 2026-02-18 | QTS-13571 | 44d | 0d |  | VER |  |
| DC1-UPS-M-L2-2220 |  | DH2300 UPS-M-B23 L2 Checklist | 3d | 2026-02-19 | 2026-02-23 | DC1-UPS-M-L2-2210 | 44d | 0d |  | VER |  |
| DC1-UPS-M-L2-2230 |  | DH2300 UPS-M-C23 L2 Checklist | 3d | 2026-02-24 | 2026-02-26 | DC1-UPS-M-L2-2220 | 44d | 0d |  | VER |  |
| DC1-UPS-M-L2-2240 |  | DH2300 UPS-M-D23 L2 Checklist | 3d | 2026-02-27 | 2026-03-03 | DC1-UPS-M-L2-2230 | 44d | 0d |  | VER |  |
| DC1-UPS-M-L2-2250 |  | DH2300 UPS-M-E23 L2 Checklist | 3d | 2026-03-04 | 2026-03-06 | DC1-UPS-M-L2-2240 | 44d | 0d |  | VER |  |
| DC1-UPS-M-L2-2260 |  | DH2300 UPS-M-F23 L2 Checklist | 3d | 2026-03-09 | 2026-03-11 | DC1-UPS-M-L2-2250 | 44d | 0d |  | VER |  |
| DC1-UPS-M-L2-2270 |  | DH2300 UPS-M-R23 L2 Checklist | 3d | 2026-03-12 | 2026-03-16 | DC1-UPS-M-L2-2260 | 44d | 32d |  | VER |  |
|  | 04 | **DC1-DH2300 COMPRESSOR/FAN UNITS Cx L2** |  |  |  |  |  |  |  |  |  |
|  | 01 | **DC1-DH2300 POD-AC UNITS A23 Cx L2** |  |  |  |  |  |  |  |  |  |
|  | 02 | **DC1-DH2300 POD-AC UNITS B23 Cx L2** |  |  |  |  |  |  |  |  |  |
|  | 03 | **DC1-DH2300 POD-AC UNITS C23 Cx L2** |  |  |  |  |  |  |  |  |  |
|  | 04 | **DC1-DH2300 POD-AC UNITS D23 Cx L2** |  |  |  |  |  |  |  |  |  |
|  | 05 | **DC1-DH2300 POD-AC UNITS E23 Cx L2** |  |  |  |  |  |  |  |  |  |
|  | 06 | **DC1-DH2300 POD-AC UNITS F23 Cx L2** |  |  |  |  |  |  |  |  |  |
|  | 07 | **DC1-DH2300 POD-AC UNITS R23 Cx L2** |  |  |  |  |  |  |  |  |  |
|  | 04 | **DC1-DH2300 BUS-R1X/BUS-R2X Cx L2** |  | 2026-03-13 | 2026-05-05 |  |  |  |  |  |  |
| DC1-BUS-L2-1070 |  | DH2300 BUS-R1 (R13) CATCHER BUS Duct L2 Checklist | 3d | 2026-03-13 | 2026-03-17 | QTS-7281 | 34d |  | CFCI | LAY |  |
| DC1-BUS-L2-1060 |  | DH2300 BUS-R2 (R23) MAINTENANCE BUS Duct L2 Checklist | 3d | 2026-05-01 | 2026-05-05 | QTS-7231, QTS-9371 | 0d |  | CFCI - Bus duct complete (PRED) | LAY | Riley Warring |

Notes:
- DC1-MOD01-L2-2210: Steps: Vendor Pre-Energization Checklist; CXA Pre-Energization Inspection; PEI/Clean-Walk
- DC1-MOD01-L2-2220: Steps: Vendor Pre-Energization Checklist; CXA Pre-Energization Inspection; PEI/Clean-Walk
- DC1-MOD01-L2-2230: Steps: Vendor Pre-Energization Checklist; CXA Pre-Energization Inspection; PEI/Clean-Walk
- DC1-MOD01-L2-2240: Steps: Vendor Pre-Energization Checklist; CXA Pre-Energization Inspection; PEI/Clean-Walk
- DC1-MOD01-L2-2250: Steps: Vendor Pre-Energization Checklist; CXA Pre-Energization Inspection; PEI/Clean-Walk
- DC1-MOD01-L2-2260: Steps: Vendor Pre-Energization Checklist; CXA Pre-Energization Inspection; PEI/Clean-Walk
- DC1-MOD01-L2-2270: Steps: Vendor Pre-Energization Checklist; CXA Pre-Energization Inspection; PEI/Clean-Walk
- DC1-UPS-M-L2-2210: Steps: EC Pre-Energization Checklist; Vendor Pre-Energization Checklist; CXA Pre-Energization Inspection; PEI/Clean-Walk
- DC1-UPS-M-L2-2220: Steps: EC Pre-Energization Checklist; Vendor Pre-Energization Checklist; CXA Pre-Energization Inspection; PEI/Clean-Walk
- DC1-UPS-M-L2-2230: Steps: EC Pre-Energization Checklist; Vendor Pre-Energization Checklist; CXA Pre-Energization Inspection; PEI/Clean-Walk
- DC1-UPS-M-L2-2240: Steps: EC Pre-Energization Checklist; Vendor Pre-Energization Checklist; CXA Pre-Energization Inspection; PEI/Clean-Walk
- DC1-UPS-M-L2-2250: Steps: EC Pre-Energization Checklist; Vendor Pre-Energization Checklist; CXA Pre-Energization Inspection; PEI/Clean-Walk
- DC1-UPS-M-L2-2260: Steps: EC Pre-Energization Checklist; Vendor Pre-Energization Checklist; CXA Pre-Energization Inspection; PEI/Clean-Walk
- DC1-UPS-M-L2-2270: Steps: EC Pre-Energization Checklist; Vendor Pre-Energization Checklist; CXA Pre-Energization Inspection; PEI/Clean-Walk
- DC1-BUS-L2-1070: Steps: EC Pre-Energization Checklist; Vendor Pre-Energization Checklist; CXA Pre-Energization Inspection; PEI/Clean-Walk
- DC1-BUS-L2-1060: Steps: EC Pre-Energization Checklist; Vendor Pre-Energization Checklist; CXA Pre-Energization Inspection; PEI/Clean-Walk

| ID | WBS | Activity | Duration | Start | Finish | Predecessors | Total float | Vendor Responsible Party |
| --- | --- | --- | --- | --- | --- | --- | --- | --- |
|  | 05 | **DC1-DH2300 ATS Cx L2** |  | 2026-03-31 | 2026-04-20 |  |  |  |
|  | 01 | **DC1-DH2300 ATS A23 Cx L2** |  | 2026-03-31 | 2026-04-02 |  |  |  |
| DC1-ATS-L2-3080 |  | DH2300 ATS-A23-01 L2 Checklist | 3d | 2026-03-31 | 2026-04-02 | QTS-18181 | 23d | MAV |
| DC1-ATS-L2-3090 |  | DH2300 ATS-A23-02 L2 Checklist | 3d | 2026-03-31 | 2026-04-02 | QTS-18181 | 23d | MAV |
| DC1-ATS-L2-3100 |  | DH2300 ATS-A23-03 L2 Checklist | 3d | 2026-03-31 | 2026-04-02 | QTS-18181 | 23d | MAV |
| DC1-ATS-L2-3110 |  | DH2300 ATS-A23-04 L2 Checklist | 3d | 2026-03-31 | 2026-04-02 | QTS-18181 | 23d | MAV |
| DC1-ATS-L2-3120 |  | DH2300 ATS-A23-05 L2 Checklist | 3d | 2026-03-31 | 2026-04-02 | QTS-18181 | 23d | MAV |
| DC1-ATS-L2-3130 |  | DH2300 ATS-A23-06 L2 Checklist | 3d | 2026-03-31 | 2026-04-02 | QTS-18181 | 23d | MAV |
|  | 02 | **DC1-DH2300 ATS B23 Cx L2** |  | 2026-03-31 | 2026-04-02 |  |  |  |
| DC1-ATS-L2-3140 |  | DH2300 ATS-B23-01 L2 Checklist | 3d | 2026-03-31 | 2026-04-02 | QTS-9391 | 23d | MAV |
| DC1-ATS-L2-3150 |  | DH2300 ATS-B23-02 L2 Checklist | 3d | 2026-03-31 | 2026-04-02 | QTS-9391 | 23d | MAV |
| DC1-ATS-L2-3160 |  | DH2300 ATS-B23-03 L2 Checklist | 3d | 2026-03-31 | 2026-04-02 | QTS-9391 | 23d | MAV |
| DC1-ATS-L2-3170 |  | DH2300 ATS-B23-04 L2 Checklist | 3d | 2026-03-31 | 2026-04-02 | QTS-9391 | 23d | MAV |
| DC1-ATS-L2-3180 |  | DH2300 ATS-B23-05 L2 Checklist | 3d | 2026-03-31 | 2026-04-02 | QTS-9391 | 23d | MAV |
| DC1-ATS-L2-3190 |  | DH2300 ATS-B23-06 L2 Checklist | 3d | 2026-03-31 | 2026-04-02 | QTS-9391 | 23d | MAV |
|  | 03 | **DC1-DH2300 ATS C23 Cx L2** |  | 2026-04-08 | 2026-04-10 |  |  |  |
| DC1-ATS-L2-3200 |  | DH2300 ATS-C23-01 L2 Checklist | 3d | 2026-04-08 | 2026-04-10 | QTS-9421 | 17d | MAV |
| DC1-ATS-L2-3210 |  | DH2300 ATS-C23-02 L2 Checklist | 3d | 2026-04-08 | 2026-04-10 | QTS-9421 | 17d | MAV |
| DC1-ATS-L2-3220 |  | DH2300 ATS-C23-03 L2 Checklist | 3d | 2026-04-08 | 2026-04-10 | QTS-9421 | 17d | MAV |
| DC1-ATS-L2-3230 |  | DH2300 ATS-C23-04 L2 Checklist | 3d | 2026-04-08 | 2026-04-10 | QTS-9421 | 17d | MAV |
| DC1-ATS-L2-3240 |  | DH2300 ATS-C23-05 L2 Checklist | 3d | 2026-04-08 | 2026-04-10 | QTS-9421 | 17d | MAV |
| DC1-ATS-L2-3250 |  | DH2300 ATS-C23-06 L2 Checklist | 3d | 2026-04-08 | 2026-04-10 | QTS-9421 | 17d | MAV |
|  | 04 | **DC1-DH2300 ATS D23 Cx L2** |  | 2026-04-08 | 2026-04-10 |  |  |  |
| DC1-ATS-L2-3260 |  | DH2300 ATS-D23-01 L2 Checklist | 3d | 2026-04-08 | 2026-04-10 | QTS-9451 | 17d | MAV |
| DC1-ATS-L2-3270 |  | DH2300 ATS-D23-02 L2 Checklist | 3d | 2026-04-08 | 2026-04-10 | QTS-9451 | 17d | MAV |
| DC1-ATS-L2-3280 |  | DH2300 ATS-D23-03 L2 Checklist | 3d | 2026-04-08 | 2026-04-10 | QTS-9451 | 17d | MAV |
| DC1-ATS-L2-3290 |  | DH2300 ATS-D23-04 L2 Checklist | 3d | 2026-04-08 | 2026-04-10 | QTS-9451 | 17d | MAV |
| DC1-ATS-L2-3300 |  | DH2300 ATS-D23-05 L2 Checklist | 3d | 2026-04-08 | 2026-04-10 | QTS-9451 | 17d | MAV |
| DC1-ATS-L2-3310 |  | DH2300 ATS-D23-06 L2 Checklist | 3d | 2026-04-08 | 2026-04-10 | QTS-9451 | 17d | MAV |

Notes:
- DC1-ATS-L2-3080: Steps: EC Installation Checklist; CC Installation Checklist; Vendor Pre-Energization Checklist; CXA Pre-Energization Inspection; PEI/Clean-Walk
- DC1-ATS-L2-3090: Steps: EC Installation Checklist; CC Installation Checklist; Vendor Pre-Energization Checklist; CXA Pre-Energization Inspection; PEI/Clean-Walk
- DC1-ATS-L2-3100: Steps: EC Installation Checklist; CC Installation Checklist; Vendor Pre-Energization Checklist; CXA Pre-Energization Inspection; PEI/Clean-Walk
- DC1-ATS-L2-3110: Steps: EC Installation Checklist; CC Installation Checklist; Vendor Pre-Energization Checklist; CXA Pre-Energization Inspection; PEI/Clean-Walk
- DC1-ATS-L2-3120: Steps: EC Installation Checklist; CC Installation Checklist; Vendor Pre-Energization Checklist; CXA Pre-Energization Inspection; PEI/Clean-Walk
- DC1-ATS-L2-3130: Steps: EC Installation Checklist; CC Installation Checklist; Vendor Pre-Energization Checklist; CXA Pre-Energization Inspection; PEI/Clean-Walk
- DC1-ATS-L2-3140: Steps: EC Installation Checklist; CC Installation Checklist; Vendor Pre-Energization Checklist; CXA Pre-Energization Inspection; PEI/Clean-Walk
- DC1-ATS-L2-3150: Steps: EC Installation Checklist; CC Installation Checklist; Vendor Pre-Energization Checklist; CXA Pre-Energization Inspection; PEI/Clean-Walk
- DC1-ATS-L2-3160: Steps: EC Installation Checklist; CC Installation Checklist; Vendor Pre-Energization Checklist; CXA Pre-Energization Inspection; PEI/Clean-Walk
- DC1-ATS-L2-3170: Steps: EC Installation Checklist; CC Installation Checklist; Vendor Pre-Energization Checklist; CXA Pre-Energization Inspection; PEI/Clean-Walk
- DC1-ATS-L2-3180: Steps: EC Installation Checklist; CC Installation Checklist; Vendor Pre-Energization Checklist; CXA Pre-Energization Inspection; PEI/Clean-Walk
- DC1-ATS-L2-3190: Steps: EC Installation Checklist; CC Installation Checklist; Vendor Pre-Energization Checklist; CXA Pre-Energization Inspection; PEI/Clean-Walk
- DC1-ATS-L2-3200: Steps: EC Installation Checklist; CC Installation Checklist; Vendor Pre-Energization Checklist; CXA Pre-Energization Inspection; PEI/Clean-Walk
- DC1-ATS-L2-3210: Steps: EC Installation Checklist; CC Installation Checklist; Vendor Pre-Energization Checklist; CXA Pre-Energization Inspection; PEI/Clean-Walk
- DC1-ATS-L2-3220: Steps: EC Installation Checklist; CC Installation Checklist; Vendor Pre-Energization Checklist; CXA Pre-Energization Inspection; PEI/Clean-Walk
- DC1-ATS-L2-3230: Steps: EC Installation Checklist; CC Installation Checklist; Vendor Pre-Energization Checklist; CXA Pre-Energization Inspection; PEI/Clean-Walk
- DC1-ATS-L2-3240: Steps: EC Installation Checklist; CC Installation Checklist; Vendor Pre-Energization Checklist; CXA Pre-Energization Inspection; PEI/Clean-Walk
- DC1-ATS-L2-3250: Steps: EC Installation Checklist; CC Installation Checklist; Vendor Pre-Energization Checklist; CXA Pre-Energization Inspection; PEI/Clean-Walk
- DC1-ATS-L2-3260: Steps: EC Installation Checklist; CC Installation Checklist; Vendor Pre-Energization Checklist; CXA Pre-Energization Inspection; PEI/Clean-Walk
- DC1-ATS-L2-3270: Steps: EC Installation Checklist; CC Installation Checklist; Vendor Pre-Energization Checklist; CXA Pre-Energization Inspection; PEI/Clean-Walk
- DC1-ATS-L2-3280: Steps: EC Installation Checklist; CC Installation Checklist; Vendor Pre-Energization Checklist; CXA Pre-Energization Inspection; PEI/Clean-Walk
- DC1-ATS-L2-3290: Steps: EC Installation Checklist; CC Installation Checklist; Vendor Pre-Energization Checklist; CXA Pre-Energization Inspection; PEI/Clean-Walk
- DC1-ATS-L2-3300: Steps: EC Installation Checklist; CC Installation Checklist; Vendor Pre-Energization Checklist; CXA Pre-Energization Inspection; PEI/Clean-Walk
- DC1-ATS-L2-3310: Steps: EC Installation Checklist; CC Installation Checklist; Vendor Pre-Energization Checklist; CXA Pre-Energization Inspection; PEI/Clean-Walk

| ID | WBS | Activity | Duration | Start | Finish | Predecessors | Total float | Vendor Responsible Party | Layton Responsible Party |
| --- | --- | --- | --- | --- | --- | --- | --- | --- | --- |
|  | 05 | **DC1-DH2300 ATS E23 Cx L2** |  | 2026-04-16 | 2026-04-20 |  |  |  |  |
| DC1-ATS-L2-3320 |  | DH2300 ATS-E23-01 L2 Checklist | 3d | 2026-04-16 | 2026-04-20 | QTS-9481 | 11d | MAV |  |
| DC1-ATS-L2-3330 |  | DH2300 ATS-E23-02 L2 Checklist | 3d | 2026-04-16 | 2026-04-20 | QTS-9481 | 11d | MAV |  |
| DC1-ATS-L2-3340 |  | DH2300 ATS-E23-03 L2 Checklist | 3d | 2026-04-16 | 2026-04-20 | QTS-9481 | 11d | MAV |  |
| DC1-ATS-L2-3350 |  | DH2300 ATS-E23-04 L2 Checklist | 3d | 2026-04-16 | 2026-04-20 | QTS-9481 | 11d | MAV |  |
| DC1-ATS-L2-3360 |  | DH2300 ATS-E23-05 L2 Checklist | 3d | 2026-04-16 | 2026-04-20 | QTS-9481 | 11d | MAV |  |
| DC1-ATS-L2-3370 |  | DH2300 ATS-E23-06 L2 Checklist | 3d | 2026-04-16 | 2026-04-20 | QTS-9481 | 11d | MAV |  |
|  | 06 | **DC1-DH2300 ATS F23 Cx L2** |  | 2026-04-16 | 2026-04-20 |  |  |  |  |
| DC1-ATS-L2-3380 |  | DH2300 ATS-F23-01 L2 Checklist | 3d | 2026-04-16 | 2026-04-20 | QTS-9511 | 11d | MAV |  |
| DC1-ATS-L2-3390 |  | DH2300 ATS-F23-02 L2 Checklist | 3d | 2026-04-16 | 2026-04-20 | QTS-9511 | 11d | MAV |  |
| DC1-ATS-L2-3400 |  | DH2300 ATS-F23-03 L2 Checklist | 3d | 2026-04-16 | 2026-04-20 | QTS-9511 | 11d | MAV |  |
| DC1-ATS-L2-3410 |  | DH2300 ATS-F23-04 L2 Checklist | 3d | 2026-04-16 | 2026-04-20 | QTS-9511 | 11d | MAV |  |
| DC1-ATS-L2-3420 |  | DH2300 ATS-F23-05 L2 Checklist | 3d | 2026-04-16 | 2026-04-20 | QTS-9511 | 11d | MAV |  |
| DC1-ATS-L2-3430 |  | DH2300 ATS-F23-06 L2 Checklist | 3d | 2026-04-16 | 2026-04-20 | QTS-9511 | 11d | MAV |  |
|  | 06 | **DC1-DH2300 CODs Cx L2** |  | 2026-04-08 | 2026-04-28 |  |  |  |  |
|  | 01 | **DC1-DH2300 COD A23 Cx L2** |  | 2026-04-24 | 2026-04-28 |  |  |  |  |
| DC1-COD-L2-3080 |  | DH2300 COD-A23-01 L2 Checklist | 3d | 2026-04-24 | 2026-04-28 | QTS - 6340, QTS-18191 | 6d | SIE | Riley Warring |
| DC1-COD-L2-3090 |  | DH2300 COD-A23-02 L2 Checklist | 3d | 2026-04-24 | 2026-04-28 | QTS - 6340, QTS-18191 | 6d | SIE | Riley Warring |
| DC1-COD-L2-3100 |  | DH2300 COD-A23-03 L2 Checklist | 3d | 2026-04-24 | 2026-04-28 | QTS - 6340, QTS-18191 | 6d | SIE | Riley Warring |
| DC1-COD-L2-3110 |  | DH2300 COD-A23-04 L2 Checklist | 3d | 2026-04-24 | 2026-04-28 | QTS - 6340, QTS-18191 | 6d | SIE | Riley Warring |
| DC1-COD-L2-3120 |  | DH2300 COD-A23-05 L2 Checklist | 3d | 2026-04-24 | 2026-04-28 | QTS - 6340, QTS-18191 | 6d | SIE | Riley Warring |
| DC1-COD-L2-3130 |  | DH2300 COD-A23-06 L2 Checklist | 3d | 2026-04-24 | 2026-04-28 | QTS - 6340, QTS-18191 | 6d | SIE | Riley Warring |
|  | 02 | **DC1-DH2300 COD B23 Cx L2** |  | 2026-04-24 | 2026-04-28 |  |  |  |  |
| DC1-COD-L2-3140 |  | DH2300 COD-B23-01 L2 Checklist | 3d | 2026-04-24 | 2026-04-28 | QTS - 6340, QTS-9401 | 6d | SIE | Riley Warring |
| DC1-COD-L2-3150 |  | DH2300 COD-B23-02 L2 Checklist | 3d | 2026-04-24 | 2026-04-28 | QTS - 6340, QTS-9401 | 6d | SIE | Riley Warring |
| DC1-COD-L2-3160 |  | DH2300 COD-B23-03 L2 Checklist | 3d | 2026-04-24 | 2026-04-28 | QTS - 6340, QTS-9401 | 6d | SIE | Riley Warring |
| DC1-COD-L2-3170 |  | DH2300 COD-B23-04 L2 Checklist | 3d | 2026-04-24 | 2026-04-28 | QTS - 6340, QTS-9401 | 6d | SIE | Riley Warring |
| DC1-COD-L2-3180 |  | DH2300 COD-B23-05 L2 Checklist | 3d | 2026-04-24 | 2026-04-28 | QTS - 6340, QTS-9401 | 6d | SIE | Riley Warring |
| DC1-COD-L2-3190 |  | DH2300 COD-B23-06 L2 Checklist | 3d | 2026-04-24 | 2026-04-28 | QTS - 6340, QTS-9401 | 6d | SIE | Riley Warring |

Notes:
- DC1-ATS-L2-3320: Steps: EC Installation Checklist; CC Installation Checklist; Vendor Pre-Energization Checklist; CXA Pre-Energization Inspection; PEI/Clean-Walk
- DC1-ATS-L2-3330: Steps: EC Installation Checklist; CC Installation Checklist; Vendor Pre-Energization Checklist; CXA Pre-Energization Inspection; PEI/Clean-Walk
- DC1-ATS-L2-3340: Steps: EC Installation Checklist; CC Installation Checklist; Vendor Pre-Energization Checklist; CXA Pre-Energization Inspection; PEI/Clean-Walk
- DC1-ATS-L2-3350: Steps: EC Installation Checklist; CC Installation Checklist; Vendor Pre-Energization Checklist; CXA Pre-Energization Inspection; PEI/Clean-Walk
- DC1-ATS-L2-3360: Steps: EC Installation Checklist; CC Installation Checklist; Vendor Pre-Energization Checklist; CXA Pre-Energization Inspection; PEI/Clean-Walk
- DC1-ATS-L2-3370: Steps: EC Installation Checklist; CC Installation Checklist; Vendor Pre-Energization Checklist; CXA Pre-Energization Inspection; PEI/Clean-Walk
- DC1-ATS-L2-3380: Steps: EC Installation Checklist; CC Installation Checklist; Vendor Pre-Energization Checklist; CXA Pre-Energization Inspection; PEI/Clean-Walk
- DC1-ATS-L2-3390: Steps: EC Installation Checklist; CC Installation Checklist; Vendor Pre-Energization Checklist; CXA Pre-Energization Inspection; PEI/Clean-Walk
- DC1-ATS-L2-3400: Steps: EC Installation Checklist; CC Installation Checklist; Vendor Pre-Energization Checklist; CXA Pre-Energization Inspection; PEI/Clean-Walk
- DC1-ATS-L2-3410: Steps: EC Installation Checklist; CC Installation Checklist; Vendor Pre-Energization Checklist; CXA Pre-Energization Inspection; PEI/Clean-Walk
- DC1-ATS-L2-3420: Steps: EC Installation Checklist; CC Installation Checklist; Vendor Pre-Energization Checklist; CXA Pre-Energization Inspection; PEI/Clean-Walk
- DC1-ATS-L2-3430: Steps: EC Installation Checklist; CC Installation Checklist; Vendor Pre-Energization Checklist; CXA Pre-Energization Inspection; PEI/Clean-Walk
- DC1-COD-L2-3080: Steps: EC Installation Checklist; CC Installation Checklist; Vendor Pre-Energization Checklist; CXA Pre-Energization Inspection; PEI/Clean-Walk
- DC1-COD-L2-3090: Steps: EC Installation Checklist; CC Installation Checklist; Vendor Pre-Energization Checklist; CXA Pre-Energization Inspection; PEI/Clean-Walk
- DC1-COD-L2-3100: Steps: EC Installation Checklist; CC Installation Checklist; Vendor Pre-Energization Checklist; CXA Pre-Energization Inspection; PEI/Clean-Walk
- DC1-COD-L2-3110: Steps: EC Installation Checklist; CC Installation Checklist; Vendor Pre-Energization Checklist; CXA Pre-Energization Inspection; PEI/Clean-Walk
- DC1-COD-L2-3120: Steps: EC Installation Checklist; CC Installation Checklist; Vendor Pre-Energization Checklist; CXA Pre-Energization Inspection; PEI/Clean-Walk
- DC1-COD-L2-3130: Steps: EC Installation Checklist; CC Installation Checklist; Vendor Pre-Energization Checklist; CXA Pre-Energization Inspection; PEI/Clean-Walk
- DC1-COD-L2-3140: Steps: EC Installation Checklist; CC Installation Checklist; Vendor Pre-Energization Checklist; CXA Pre-Energization Inspection; PEI/Clean-Walk
- DC1-COD-L2-3150: Steps: EC Installation Checklist; CC Installation Checklist; Vendor Pre-Energization Checklist; CXA Pre-Energization Inspection; PEI/Clean-Walk
- DC1-COD-L2-3160: Steps: EC Installation Checklist; CC Installation Checklist; Vendor Pre-Energization Checklist; CXA Pre-Energization Inspection; PEI/Clean-Walk
- DC1-COD-L2-3170: Steps: EC Installation Checklist; CC Installation Checklist; Vendor Pre-Energization Checklist; CXA Pre-Energization Inspection; PEI/Clean-Walk
- DC1-COD-L2-3180: Steps: EC Installation Checklist; CC Installation Checklist; Vendor Pre-Energization Checklist; CXA Pre-Energization Inspection; PEI/Clean-Walk
- DC1-COD-L2-3190: Steps: EC Installation Checklist; CC Installation Checklist; Vendor Pre-Energization Checklist; CXA Pre-Energization Inspection; PEI/Clean-Walk

| ID | WBS | Activity | Duration | Start | Finish | Predecessors | Total float | Layton Responsible Party | Vendor Responsible Party |
| --- | --- | --- | --- | --- | --- | --- | --- | --- | --- |
|  | 03 | **DC1-DH2300 COD C23 Cx L2** |  | 2026-04-16 | 2026-04-20 |  |  |  |  |
| DC1-COD-L2-3200 |  | DH2300 COD-C23-01 L2 Checklist | 3d | 2026-04-16 | 2026-04-20 | QTS - 6800, QTS-9431 | 12d | Riley Warring | SIE |
| DC1-COD-L2-3210 |  | DH2300 COD-C23-02 L2 Checklist | 3d | 2026-04-16 | 2026-04-20 | QTS - 6800, QTS-9431 | 12d | Riley Warring | SIE |
| DC1-COD-L2-3220 |  | DH2300 COD-C23-03 L2 Checklist | 3d | 2026-04-16 | 2026-04-20 | QTS - 6800, QTS-9431 | 12d | Riley Warring | SIE |
| DC1-COD-L2-3230 |  | DH2300 COD-C23-04 L2 Checklist | 3d | 2026-04-16 | 2026-04-20 | QTS - 6800, QTS-9431 | 12d | Riley Warring | SIE |
| DC1-COD-L2-3240 |  | DH2300 COD-C23-05 L2 Checklist | 3d | 2026-04-16 | 2026-04-20 | QTS - 6800, QTS-9431 | 12d | Riley Warring | SIE |
| DC1-COD-L2-3250 |  | DH2300 COD-C23-06 L2 Checklist | 3d | 2026-04-16 | 2026-04-20 | QTS - 6800, QTS-9431 | 12d | Riley Warring | SIE |
|  | 04 | **DC1-DH2300 COD D23 Cx L2** |  | 2026-04-08 | 2026-04-10 |  |  |  |  |
| DC1-COD-L2-3260 |  | DH2300 COD-D23-01 L2 Checklist | 3d | 2026-04-08 | 2026-04-10 | QTS - 6800, QTS-9461 | 18d | Riley Warring | SIE |
| DC1-COD-L2-3270 |  | DH2300 COD-D23-02 L2 Checklist | 3d | 2026-04-08 | 2026-04-10 | QTS - 6800, QTS-9461 | 18d | Riley Warring | SIE |
| DC1-COD-L2-3280 |  | DH2300 COD-D23-03 L2 Checklist | 3d | 2026-04-08 | 2026-04-10 | QTS - 6800, QTS-9461 | 18d | Riley Warring | SIE |
| DC1-COD-L2-3290 |  | DH2300 COD-D23-04 L2 Checklist | 3d | 2026-04-08 | 2026-04-10 | QTS - 6800, QTS-9461 | 18d | Riley Warring | SIE |
| DC1-COD-L2-3300 |  | DH2300 COD-D23-05 L2 Checklist | 3d | 2026-04-08 | 2026-04-10 | QTS - 6800, QTS-9461 | 18d | Riley Warring | SIE |
| DC1-COD-L2-3310 |  | DH2300 COD-D23-06 L2 Checklist | 3d | 2026-04-08 | 2026-04-10 | QTS - 6800, QTS-9461 | 18d | Riley Warring | SIE |
|  | 05 | **DC1-DH2300 COD E23 Cx L2** |  | 2026-04-24 | 2026-04-28 |  |  |  |  |
| DC1-COD-L2-3320 |  | DH2300 COD-E23-01 L2 Checklist | 3d | 2026-04-24 | 2026-04-28 | QTS - 7030, QTS-9491 | 6d | Riley Warring | SIE |
| DC1-COD-L2-3330 |  | DH2300 COD-E23-02 L2 Checklist | 3d | 2026-04-24 | 2026-04-28 | QTS - 7030, QTS-9491 | 6d | Riley Warring | SIE |
| DC1-COD-L2-3340 |  | DH2300 COD-E23-03 L2 Checklist | 3d | 2026-04-24 | 2026-04-28 | QTS - 7030, QTS-9491 | 6d | Riley Warring | SIE |
| DC1-COD-L2-3350 |  | DH2300 COD-E23-04 L2 Checklist | 3d | 2026-04-24 | 2026-04-28 | QTS - 7030, QTS-9491 | 6d | Riley Warring | SIE |
| DC1-COD-L2-3360 |  | DH2300 COD-E23-05 L2 Checklist | 3d | 2026-04-24 | 2026-04-28 | QTS - 7030, QTS-9491 | 6d | Riley Warring | SIE |
| DC1-COD-L2-3370 |  | DH2300 COD-E23-06 L2 Checklist | 3d | 2026-04-24 | 2026-04-28 | QTS - 7030, QTS-9491 | 6d | Riley Warring | SIE |
|  | 06 | **DC1-DH2300 COD F23 Cx L2** |  | 2026-04-24 | 2026-04-28 |  |  |  |  |
| DC1-COD-L2-3380 |  | DH2300 COD-F23-01 L2 Checklist | 3d | 2026-04-24 | 2026-04-28 | QTS - 7030, QTS-9521 | 6d | Riley Warring | SIE |
| DC1-COD-L2-3390 |  | DH2300 COD-F23-02 L2 Checklist | 3d | 2026-04-24 | 2026-04-28 | QTS - 7030, QTS-9521 | 6d | Riley Warring | SIE |
| DC1-COD-L2-3400 |  | DH2300 COD-F23-03 L2 Checklist | 3d | 2026-04-24 | 2026-04-28 | QTS - 7030, QTS-9521 | 6d | Riley Warring | SIE |
| DC1-COD-L2-3410 |  | DH2300 COD-F23-04 L2 Checklist | 3d | 2026-04-24 | 2026-04-28 | QTS - 7030, QTS-9521 | 6d | Riley Warring | SIE |
| DC1-COD-L2-3420 |  | DH2300 COD-F23-05 L2 Checklist | 3d | 2026-04-24 | 2026-04-28 | QTS - 7030, QTS-9521 | 6d | Riley Warring | SIE |
| DC1-COD-L2-3430 |  | DH2300 COD-F23-06 L2 Checklist | 3d | 2026-04-24 | 2026-04-28 | QTS - 7030, QTS-9521 | 6d | Riley Warring | SIE |

Notes:
- DC1-COD-L2-3200: Steps: EC Installation Checklist; CC Installation Checklist; Vendor Pre-Energization Checklist; CXA Pre-Energization Inspection; PEI/Clean-Walk
- DC1-COD-L2-3210: Steps: EC Installation Checklist; CC Installation Checklist; Vendor Pre-Energization Checklist; CXA Pre-Energization Inspection; PEI/Clean-Walk
- DC1-COD-L2-3220: Steps: EC Installation Checklist; CC Installation Checklist; Vendor Pre-Energization Checklist; CXA Pre-Energization Inspection; PEI/Clean-Walk
- DC1-COD-L2-3230: Steps: EC Installation Checklist; CC Installation Checklist; Vendor Pre-Energization Checklist; CXA Pre-Energization Inspection; PEI/Clean-Walk
- DC1-COD-L2-3240: Steps: EC Installation Checklist; CC Installation Checklist; Vendor Pre-Energization Checklist; CXA Pre-Energization Inspection; PEI/Clean-Walk
- DC1-COD-L2-3250: Steps: EC Installation Checklist; CC Installation Checklist; Vendor Pre-Energization Checklist; CXA Pre-Energization Inspection; PEI/Clean-Walk
- DC1-COD-L2-3260: Steps: EC Installation Checklist; CC Installation Checklist; Vendor Pre-Energization Checklist; CXA Pre-Energization Inspection; PEI/Clean-Walk
- DC1-COD-L2-3270: Steps: EC Installation Checklist; CC Installation Checklist; Vendor Pre-Energization Checklist; CXA Pre-Energization Inspection; PEI/Clean-Walk
- DC1-COD-L2-3280: Steps: EC Installation Checklist; CC Installation Checklist; Vendor Pre-Energization Checklist; CXA Pre-Energization Inspection; PEI/Clean-Walk
- DC1-COD-L2-3290: Steps: EC Installation Checklist; CC Installation Checklist; Vendor Pre-Energization Checklist; CXA Pre-Energization Inspection; PEI/Clean-Walk
- DC1-COD-L2-3300: Steps: EC Installation Checklist; CC Installation Checklist; Vendor Pre-Energization Checklist; CXA Pre-Energization Inspection; PEI/Clean-Walk
- DC1-COD-L2-3310: Steps: EC Installation Checklist; CC Installation Checklist; Vendor Pre-Energization Checklist; CXA Pre-Energization Inspection; PEI/Clean-Walk
- DC1-COD-L2-3320: Steps: EC Installation Checklist; CC Installation Checklist; Vendor Pre-Energization Checklist; CXA Pre-Energization Inspection; PEI/Clean-Walk
- DC1-COD-L2-3330: Steps: EC Installation Checklist; CC Installation Checklist; Vendor Pre-Energization Checklist; CXA Pre-Energization Inspection; PEI/Clean-Walk
- DC1-COD-L2-3340: Steps: EC Installation Checklist; CC Installation Checklist; Vendor Pre-Energization Checklist; CXA Pre-Energization Inspection; PEI/Clean-Walk
- DC1-COD-L2-3350: Steps: EC Installation Checklist; CC Installation Checklist; Vendor Pre-Energization Checklist; CXA Pre-Energization Inspection; PEI/Clean-Walk
- DC1-COD-L2-3360: Steps: EC Installation Checklist; CC Installation Checklist; Vendor Pre-Energization Checklist; CXA Pre-Energization Inspection; PEI/Clean-Walk
- DC1-COD-L2-3370: Steps: EC Installation Checklist; CC Installation Checklist; Vendor Pre-Energization Checklist; CXA Pre-Energization Inspection; PEI/Clean-Walk
- DC1-COD-L2-3380: Steps: EC Installation Checklist; CC Installation Checklist; Vendor Pre-Energization Checklist; CXA Pre-Energization Inspection; PEI/Clean-Walk
- DC1-COD-L2-3390: Steps: EC Installation Checklist; CC Installation Checklist; Vendor Pre-Energization Checklist; CXA Pre-Energization Inspection; PEI/Clean-Walk
- DC1-COD-L2-3400: Steps: EC Installation Checklist; CC Installation Checklist; Vendor Pre-Energization Checklist; CXA Pre-Energization Inspection; PEI/Clean-Walk
- DC1-COD-L2-3410: Steps: EC Installation Checklist; CC Installation Checklist; Vendor Pre-Energization Checklist; CXA Pre-Energization Inspection; PEI/Clean-Walk
- DC1-COD-L2-3420: Steps: EC Installation Checklist; CC Installation Checklist; Vendor Pre-Energization Checklist; CXA Pre-Energization Inspection; PEI/Clean-Walk
- DC1-COD-L2-3430: Steps: EC Installation Checklist; CC Installation Checklist; Vendor Pre-Energization Checklist; CXA Pre-Energization Inspection; PEI/Clean-Walk

| ID | WBS | Activity | Duration | Start | Finish | Predecessors | Total float | Free float | Layton Responsible Party | Vendor Responsible Party |
| --- | --- | --- | --- | --- | --- | --- | --- | --- | --- | --- |
|  | 07 | **DC1-DH2300 RPPs Cx L2** |  | 2026-04-07 | 2026-04-28 |  |  |  |  |  |
|  | 01 | **DC1-DH2300 RPP A23 Cx L2** |  | 2026-04-24 | 2026-04-28 |  |  |  |  |  |
| DC1-RPP-L2-3080 |  | DH2300 RPP-A23-01 A/B L2 Checklist | 3d | 2026-04-24 | 2026-04-28 | QTS - 6340 | 60d | 7d | Riley Warring | SQD |
| DC1-RPP-L2-3090 |  | DH2300 RPP-A23-02 A/B L2 Checklist | 3d | 2026-04-24 | 2026-04-28 | QTS - 6340 | 60d | 7d | Riley Warring | SQD |
| DC1-RPP-L2-3100 |  | DH2300 RPP-A23-03 A/B L2 Checklist | 3d | 2026-04-24 | 2026-04-28 | QTS - 6340 | 60d | 7d | Riley Warring | SQD |
| DC1-RPP-L2-3110 |  | DH2300 RPP-A23-04 A/B L2 Checklist | 3d | 2026-04-24 | 2026-04-28 | QTS - 6340 | 60d | 7d | Riley Warring | SQD |
| DC1-RPP-L2-3120 |  | DH2300 RPP-A23-05 A/B L2 Checklist | 3d | 2026-04-24 | 2026-04-28 | QTS - 6340 | 60d | 7d | Riley Warring | SQD |
| DC1-RPP-L2-3130 |  | DH2300 RPP-A23-06 A/B L2 Checklist | 3d | 2026-04-24 | 2026-04-28 | QTS - 6340 | 60d | 7d | Riley Warring | SQD |
|  | 02 | **DC1-DH2300 RPP B23 Cx L2** |  | 2026-04-24 | 2026-04-28 |  |  |  |  |  |
| DC1-RPP-L2-3140 |  | DH2300 RPP-B23-01 A/B L2 Checklist | 3d | 2026-04-24 | 2026-04-28 | QTS - 6340 | 60d | 7d | Riley Warring | SQD |
| DC1-RPP-L2-3150 |  | DH2300 RPP-B23-02 A/B L2 Checklist | 3d | 2026-04-24 | 2026-04-28 | QTS - 6340 | 60d | 7d | Riley Warring | SQD |
| DC1-RPP-L2-3160 |  | DH2300 RPP-B23-03 A/B L2 Checklist | 3d | 2026-04-24 | 2026-04-28 | QTS - 6340 | 60d | 7d | Riley Warring | SQD |
| DC1-RPP-L2-3170 |  | DH2300 RPP-B23-04 A/B L2 Checklist | 3d | 2026-04-24 | 2026-04-28 | QTS - 6340 | 60d | 7d | Riley Warring | SQD |
| DC1-RPP-L2-3180 |  | DH2300 RPP-B23-05 A/B L2 Checklist | 3d | 2026-04-24 | 2026-04-28 | QTS - 6340 | 60d | 7d | Riley Warring | SQD |
| DC1-RPP-L2-3190 |  | DH2300 RPP-B23-06 A/B L2 Checklist | 3d | 2026-04-24 | 2026-04-28 | QTS - 6340 | 60d | 7d | Riley Warring | SQD |
|  | 03 | **DC1-DH2300 RPP C23 Cx L2** |  | 2026-04-07 | 2026-04-09 |  |  |  |  |  |
| DC1-RPP-L2-3200 |  | DH2300 RPP-C23-01 A/B L2 Checklist | 3d | 2026-04-07 | 2026-04-09 | QTS - 6800 | 73d | 20d | Riley Warring | SQD |
| DC1-RPP-L2-3210 |  | DH2300 RPP-C23-02 A/B L2 Checklist | 3d | 2026-04-07 | 2026-04-09 | QTS - 6800 | 73d | 20d | Riley Warring | SQD |
| DC1-RPP-L2-3220 |  | DH2300 RPP-C23-03 A/B L2 Checklist | 3d | 2026-04-07 | 2026-04-09 | QTS - 6800 | 73d | 20d | Riley Warring | SQD |
| DC1-RPP-L2-3230 |  | DH2300 RPP-C23-04 A/B L2 Checklist | 3d | 2026-04-07 | 2026-04-09 | QTS - 6800 | 73d | 20d | Riley Warring | SQD |
| DC1-RPP-L2-3240 |  | DH2300 RPP-C23-05 A/B L2 Checklist | 3d | 2026-04-07 | 2026-04-09 | QTS - 6800 | 73d | 20d | Riley Warring | SQD |
| DC1-RPP-L2-3250 |  | DH2300 RPP-C23-06 A/B L2 Checklist | 3d | 2026-04-07 | 2026-04-09 | QTS - 6800 | 73d | 20d | Riley Warring | SQD |
|  | 04 | **DC1-DH2300 RPP D23 Cx L2** |  | 2026-04-07 | 2026-04-09 |  |  |  |  |  |
| DC1-RPP-L2-3260 |  | DH2300 RPP-D23-01 A/B L2 Checklist | 3d | 2026-04-07 | 2026-04-09 | QTS - 6800 | 73d | 20d | Riley Warring | SQD |
| DC1-RPP-L2-3270 |  | DH2300 RPP-D23-02 A/B L2 Checklist | 3d | 2026-04-07 | 2026-04-09 | QTS - 6800 | 73d | 20d | Riley Warring | SQD |
| DC1-RPP-L2-3280 |  | DH2300 RPP-D23-03 A/B L2 Checklist | 3d | 2026-04-07 | 2026-04-09 | QTS - 6800 | 73d | 20d | Riley Warring | SQD |
| DC1-RPP-L2-3290 |  | DH2300 RPP-D23-04 A/B L2 Checklist | 3d | 2026-04-07 | 2026-04-09 | QTS - 6800 | 73d | 20d | Riley Warring | SQD |
| DC1-RPP-L2-3300 |  | DH2300 RPP-D23-05 A/B L2 Checklist | 3d | 2026-04-07 | 2026-04-09 | QTS - 6800 | 73d | 20d | Riley Warring | SQD |
| DC1-RPP-L2-3310 |  | DH2300 RPP-D23-06 A/B L2 Checklist | 3d | 2026-04-07 | 2026-04-09 | QTS - 6800 | 73d | 20d | Riley Warring | SQD |

Notes:
- DC1-RPP-L2-3080: Steps: EC Installation Checklist; CC Installation Checklist; Vendor Pre-Energization Checklist; CXA Pre-Energization Inspection; PEI/Clean-Walk
- DC1-RPP-L2-3090: Steps: EC Installation Checklist; CC Installation Checklist; Vendor Pre-Energization Checklist; CXA Pre-Energization Inspection; PEI/Clean-Walk
- DC1-RPP-L2-3100: Steps: EC Installation Checklist; CC Installation Checklist; Vendor Pre-Energization Checklist; CXA Pre-Energization Inspection; PEI/Clean-Walk
- DC1-RPP-L2-3110: Steps: EC Installation Checklist; CC Installation Checklist; Vendor Pre-Energization Checklist; CXA Pre-Energization Inspection; PEI/Clean-Walk
- DC1-RPP-L2-3120: Steps: EC Installation Checklist; CC Installation Checklist; Vendor Pre-Energization Checklist; CXA Pre-Energization Inspection; PEI/Clean-Walk
- DC1-RPP-L2-3130: Steps: EC Installation Checklist; CC Installation Checklist; Vendor Pre-Energization Checklist; CXA Pre-Energization Inspection; PEI/Clean-Walk
- DC1-RPP-L2-3140: Steps: EC Installation Checklist; CC Installation Checklist; Vendor Pre-Energization Checklist; CXA Pre-Energization Inspection; PEI/Clean-Walk
- DC1-RPP-L2-3150: Steps: EC Installation Checklist; CC Installation Checklist; Vendor Pre-Energization Checklist; CXA Pre-Energization Inspection; PEI/Clean-Walk
- DC1-RPP-L2-3160: Steps: EC Installation Checklist; CC Installation Checklist; Vendor Pre-Energization Checklist; CXA Pre-Energization Inspection; PEI/Clean-Walk
- DC1-RPP-L2-3170: Steps: EC Installation Checklist; CC Installation Checklist; Vendor Pre-Energization Checklist; CXA Pre-Energization Inspection; PEI/Clean-Walk
- DC1-RPP-L2-3180: Steps: EC Installation Checklist; CC Installation Checklist; Vendor Pre-Energization Checklist; CXA Pre-Energization Inspection; PEI/Clean-Walk
- DC1-RPP-L2-3190: Steps: EC Installation Checklist; CC Installation Checklist; Vendor Pre-Energization Checklist; CXA Pre-Energization Inspection; PEI/Clean-Walk
- DC1-RPP-L2-3200: Steps: EC Installation Checklist; CC Installation Checklist; Vendor Pre-Energization Checklist; CXA Pre-Energization Inspection; PEI/Clean-Walk
- DC1-RPP-L2-3210: Steps: EC Installation Checklist; CC Installation Checklist; Vendor Pre-Energization Checklist; CXA Pre-Energization Inspection; PEI/Clean-Walk
- DC1-RPP-L2-3220: Steps: EC Installation Checklist; CC Installation Checklist; Vendor Pre-Energization Checklist; CXA Pre-Energization Inspection; PEI/Clean-Walk
- DC1-RPP-L2-3230: Steps: EC Installation Checklist; CC Installation Checklist; Vendor Pre-Energization Checklist; CXA Pre-Energization Inspection; PEI/Clean-Walk
- DC1-RPP-L2-3240: Steps: EC Installation Checklist; CC Installation Checklist; Vendor Pre-Energization Checklist; CXA Pre-Energization Inspection; PEI/Clean-Walk
- DC1-RPP-L2-3250: Steps: EC Installation Checklist; CC Installation Checklist; Vendor Pre-Energization Checklist; CXA Pre-Energization Inspection; PEI/Clean-Walk
- DC1-RPP-L2-3260: Steps: EC Installation Checklist; CC Installation Checklist; Vendor Pre-Energization Checklist; CXA Pre-Energization Inspection; PEI/Clean-Walk
- DC1-RPP-L2-3270: Steps: EC Installation Checklist; CC Installation Checklist; Vendor Pre-Energization Checklist; CXA Pre-Energization Inspection; PEI/Clean-Walk
- DC1-RPP-L2-3280: Steps: EC Installation Checklist; CC Installation Checklist; Vendor Pre-Energization Checklist; CXA Pre-Energization Inspection; PEI/Clean-Walk
- DC1-RPP-L2-3290: Steps: EC Installation Checklist; CC Installation Checklist; Vendor Pre-Energization Checklist; CXA Pre-Energization Inspection; PEI/Clean-Walk
- DC1-RPP-L2-3300: Steps: EC Installation Checklist; CC Installation Checklist; Vendor Pre-Energization Checklist; CXA Pre-Energization Inspection; PEI/Clean-Walk
- DC1-RPP-L2-3310: Steps: EC Installation Checklist; CC Installation Checklist; Vendor Pre-Energization Checklist; CXA Pre-Energization Inspection; PEI/Clean-Walk

| ID | WBS | Activity | Duration | Start | Finish | Predecessors | Total float | Free float | Layton Responsible Party | Vendor Responsible Party |
| --- | --- | --- | --- | --- | --- | --- | --- | --- | --- | --- |
|  | 05 | **DC1-DH2300 RPP E23 Cx L2** |  | 2026-04-10 | 2026-04-14 |  |  |  |  |  |
| DC1-RPP-L2-3320 |  | DH2300 RPP-E23-01 A/B L2 Checklist | 3d | 2026-04-10 | 2026-04-14 | QTS - 7030 | 70d | 17d | Riley Warring | SQD |
| DC1-RPP-L2-3330 |  | DH2300 RPP-E23-02 A/B L2 Checklist | 3d | 2026-04-10 | 2026-04-14 | QTS - 7030 | 70d | 17d | Riley Warring | SQD |
| DC1-RPP-L2-3340 |  | DH2300 RPP-E23-03 A/B L2 Checklist | 3d | 2026-04-10 | 2026-04-14 | QTS - 7030 | 70d | 17d | Riley Warring | SQD |
| DC1-RPP-L2-3350 |  | DH2300 RPP-E23-04 A/B L2 Checklist | 3d | 2026-04-10 | 2026-04-14 | QTS - 7030 | 70d | 17d | Riley Warring | SQD |
| DC1-RPP-L2-3360 |  | DH2300 RPP-E23-05 A/B L2 Checklist | 3d | 2026-04-10 | 2026-04-14 | QTS - 7030 | 70d | 17d | Riley Warring | SQD |
| DC1-RPP-L2-3370 |  | DH2300 RPP-E23-06 A/B L2 Checklist | 3d | 2026-04-10 | 2026-04-14 | QTS - 7030 | 70d | 17d | Riley Warring | SQD |
|  | 06 | **DC1-DH2300 RPP F23 Cx L2** |  | 2026-04-10 | 2026-04-14 |  |  |  |  |  |
| DC1-RPP-L2-3380 |  | DH2300 RPP-F23-01 A/B L2 Checklist | 3d | 2026-04-10 | 2026-04-14 | QTS - 7030 | 70d | 17d | Riley Warring | SQD |
| DC1-RPP-L2-3390 |  | DH2300 RPP-F23-02 A/B L2 Checklist | 3d | 2026-04-10 | 2026-04-14 | QTS - 7030 | 70d | 17d | Riley Warring | SQD |
| DC1-RPP-L2-3400 |  | DH2300 RPP-F23-03 A/B L2 Checklist | 3d | 2026-04-10 | 2026-04-14 | QTS - 7030 | 70d | 17d | Riley Warring | SQD |
| DC1-RPP-L2-3410 |  | DH2300 RPP-F23-04 A/B L2 Checklist | 3d | 2026-04-10 | 2026-04-14 | QTS - 7030 | 70d | 17d | Riley Warring | SQD |
| DC1-RPP-L2-3420 |  | DH2300 RPP-F23-05 A/B L2 Checklist | 3d | 2026-04-10 | 2026-04-14 | QTS - 7030 | 70d | 17d | Riley Warring | SQD |
| DC1-RPP-L2-3430 |  | DH2300 RPP-F23-06 A/B L2 Checklist | 3d | 2026-04-10 | 2026-04-14 | QTS - 7030 | 70d | 17d | Riley Warring | SQD |
|  | 08 | **DC1-DH2300 MOD-02 Cx L2** |  | 2026-04-27 | 2026-05-26 |  |  |  |  |  |
| DC1-MOD02-L2-2210 |  | DH2300 MOD-A23-02 L2 Checklist | 3d | 2026-04-27 | 2026-04-29 | QTS-46721, QTS-43821, QTS-16111, QTS-18541, QTS-18001, QTS-44531 | 13d | 0d |  | PHE |
| DC1-MOD02-L2-2220 |  | DH2300 MOD-B23-02 L2 Checklist | 3d | 2026-04-30 | 2026-05-04 | DC1-MOD02-L2-2210 | 13d | 0d |  | PHE |
| DC1-MOD02-L2-2230 |  | DH2300 MOD-C23-02 L2 Checklist | 3d | 2026-05-05 | 2026-05-07 | DC1-MOD02-L2-2220 | 13d | 0d |  | PHE |
| DC1-MOD02-L2-2240 |  | DH2300 MOD-D23-02 L2 Checklist | 3d | 2026-05-08 | 2026-05-12 | DC1-MOD02-L2-2230 | 13d | 0d |  | PHE |
| DC1-MOD02-L2-2250 |  | DH2300 MOD-E23-02 L2 Checklist | 3d | 2026-05-13 | 2026-05-15 | DC1-MOD02-L2-2240 | 13d | 0d |  | PHE |
| DC1-MOD02-L2-2260 |  | DH2300 MOD-F23-02 L2 Checklist | 3d | 2026-05-18 | 2026-05-20 | DC1-MOD02-L2-2250 | 13d | 0d |  | PHE |
| DC1-MOD02-L2-2270 |  | DH2300 MOD-R23-02 L2 Checklist | 3d | 2026-05-21 | 2026-05-26 | DC1-MOD02-L2-2260 | 13d | 0d |  | PHE |
|  | 09 | **DC1-DH2300 MOD-03 Cx L2** |  | 2026-04-27 | 2026-05-26 |  |  |  |  |  |
| DC1-MOD03-L2-2210 |  | DH2300 MOD-A23-03 L2 Checklist | 3d | 2026-04-27 | 2026-04-29 | QTS-43821, QTS-16111, QTS-18541, QTS-18001, QTS-44531 | 19d | 0d |  | PHE |
| DC1-MOD03-L2-2220 |  | DH2300 MOD-B23-03 L2 Checklist | 3d | 2026-04-30 | 2026-05-04 | DC1-MOD03-L2-2210, QTS-16111, QTS-18541, QTS-18001, QTS-44531 | 19d | 0d |  | PHE |
| DC1-MOD03-L2-2230 |  | DH2300 MOD-C23-03 L2 Checklist | 3d | 2026-05-05 | 2026-05-07 | DC1-MOD03-L2-2220, QTS-16111, QTS-18541, QTS-18001, QTS-44531 | 19d | 0d |  | PHE |
| DC1-MOD03-L2-2240 |  | DH2300 MOD-D23-03 L2 Checklist | 3d | 2026-05-08 | 2026-05-12 | DC1-MOD03-L2-2230, QTS-16111, QTS-18541, QTS-18001, QTS-44531 | 19d | 0d |  | PHE |
| DC1-MOD03-L2-2250 |  | DH2300 MOD-E23-03 L2 Checklist | 3d | 2026-05-13 | 2026-05-15 | DC1-MOD03-L2-2240, QTS-16111, QTS-18541, QTS-18001, QTS-44531 | 19d | 0d |  | PHE |
| DC1-MOD03-L2-2260 |  | DH2300 MOD-F23-03 L2 Checklist | 3d | 2026-05-18 | 2026-05-20 | DC1-MOD03-L2-2250, QTS-16111, QTS-18541, QTS-18001, QTS-44531 | 19d | 0d |  | PHE |
| DC1-MOD03-L2-2270 |  | DH2300 MOD-R23-03 L2 Checklist | 3d | 2026-05-21 | 2026-05-26 | DC1-MOD03-L2-2260, QTS-16111, QTS-18541, QTS-18001, QTS-44531 | 19d | 0d |  | PHE |

Notes:
- DC1-RPP-L2-3320: Steps: EC Installation Checklist; CC Installation Checklist; Vendor Pre-Energization Checklist; CXA Pre-Energization Inspection; PEI/Clean-Walk
- DC1-RPP-L2-3330: Steps: EC Installation Checklist; CC Installation Checklist; Vendor Pre-Energization Checklist; CXA Pre-Energization Inspection; PEI/Clean-Walk
- DC1-RPP-L2-3340: Steps: EC Installation Checklist; CC Installation Checklist; Vendor Pre-Energization Checklist; CXA Pre-Energization Inspection; PEI/Clean-Walk
- DC1-RPP-L2-3350: Steps: EC Installation Checklist; CC Installation Checklist; Vendor Pre-Energization Checklist; CXA Pre-Energization Inspection; PEI/Clean-Walk
- DC1-RPP-L2-3360: Steps: EC Installation Checklist; CC Installation Checklist; Vendor Pre-Energization Checklist; CXA Pre-Energization Inspection; PEI/Clean-Walk
- DC1-RPP-L2-3370: Steps: EC Installation Checklist; CC Installation Checklist; Vendor Pre-Energization Checklist; CXA Pre-Energization Inspection; PEI/Clean-Walk
- DC1-RPP-L2-3380: Steps: EC Installation Checklist; CC Installation Checklist; Vendor Pre-Energization Checklist; CXA Pre-Energization Inspection; PEI/Clean-Walk
- DC1-RPP-L2-3390: Steps: EC Installation Checklist; CC Installation Checklist; Vendor Pre-Energization Checklist; CXA Pre-Energization Inspection; PEI/Clean-Walk
- DC1-RPP-L2-3400: Steps: EC Installation Checklist; CC Installation Checklist; Vendor Pre-Energization Checklist; CXA Pre-Energization Inspection; PEI/Clean-Walk
- DC1-RPP-L2-3410: Steps: EC Installation Checklist; CC Installation Checklist; Vendor Pre-Energization Checklist; CXA Pre-Energization Inspection; PEI/Clean-Walk
- DC1-RPP-L2-3420: Steps: EC Installation Checklist; CC Installation Checklist; Vendor Pre-Energization Checklist; CXA Pre-Energization Inspection; PEI/Clean-Walk
- DC1-RPP-L2-3430: Steps: EC Installation Checklist; CC Installation Checklist; Vendor Pre-Energization Checklist; CXA Pre-Energization Inspection; PEI/Clean-Walk
- DC1-MOD02-L2-2210: Steps: EC Installation Checklist; CC Installation Checklist; Vendor Pre-Energization Checklist; CXA Pre-Energization Inspection; PEI/Clean-Walk
- DC1-MOD02-L2-2220: Steps: EC Installation Checklist; CC Installation Checklist; Vendor Pre-Energization Checklist; CXA Pre-Energization Inspection; PEI/Clean-Walk
- DC1-MOD02-L2-2230: Steps: EC Installation Checklist; CC Installation Checklist; Vendor Pre-Energization Checklist; CXA Pre-Energization Inspection; PEI/Clean-Walk
- DC1-MOD02-L2-2240: Steps: EC Installation Checklist; CC Installation Checklist; Vendor Pre-Energization Checklist; CXA Pre-Energization Inspection; PEI/Clean-Walk
- DC1-MOD02-L2-2250: Steps: EC Installation Checklist; CC Installation Checklist; Vendor Pre-Energization Checklist; CXA Pre-Energization Inspection; PEI/Clean-Walk
- DC1-MOD02-L2-2260: Steps: EC Installation Checklist; CC Installation Checklist; Vendor Pre-Energization Checklist; CXA Pre-Energization Inspection; PEI/Clean-Walk
- DC1-MOD02-L2-2270: Steps: EC Installation Checklist; CC Installation Checklist; Vendor Pre-Energization Checklist; CXA Pre-Energization Inspection; PEI/Clean-Walk
- DC1-MOD03-L2-2210: Steps: EC Installation Checklist; CC Installation Checklist; Vendor Pre-Energization Checklist; CXA Pre-Energization Inspection; PEI/Clean-Walk
- DC1-MOD03-L2-2220: Steps: EC Installation Checklist; CC Installation Checklist; Vendor Pre-Energization Checklist; CXA Pre-Energization Inspection; PEI/Clean-Walk
- DC1-MOD03-L2-2230: Steps: EC Installation Checklist; CC Installation Checklist; Vendor Pre-Energization Checklist; CXA Pre-Energization Inspection; PEI/Clean-Walk
- DC1-MOD03-L2-2240: Steps: EC Installation Checklist; CC Installation Checklist; Vendor Pre-Energization Checklist; CXA Pre-Energization Inspection; PEI/Clean-Walk
- DC1-MOD03-L2-2250: Steps: EC Installation Checklist; CC Installation Checklist; Vendor Pre-Energization Checklist; CXA Pre-Energization Inspection; PEI/Clean-Walk
- DC1-MOD03-L2-2260: Steps: EC Installation Checklist; CC Installation Checklist; Vendor Pre-Energization Checklist; CXA Pre-Energization Inspection; PEI/Clean-Walk
- DC1-MOD03-L2-2270: Steps: EC Installation Checklist; CC Installation Checklist; Vendor Pre-Energization Checklist; CXA Pre-Energization Inspection; PEI/Clean-Walk

| ID | WBS | Activity | Duration | Start | Finish | Predecessors | Total float | Free float | Layton Responsible Party | Vendor Responsible Party |
| --- | --- | --- | --- | --- | --- | --- | --- | --- | --- | --- |
|  | 10 | **DC1-DH2300 CDUs Cx L2** |  | 2026-05-11 | 2026-06-05 |  |  |  |  |  |
| DC1-CDU-L2-3510 |  | CDU-DH2300-01 L2 Checklist | 3d | 2026-05-11 | 2026-05-13 | QTS - 6390, QTS - 7490 | 49d | 0d | Riley Warring | VER |
| DC1-CDU-L2-3520 |  | CDU-DH2300-02 L2 Checklist | 3d | 2026-05-11 | 2026-05-13 | QTS - 6390, QTS - 7490 | 49d | 0d | Riley Warring | VER |
| DC1-CDU-L2-3530 |  | CDU-DH2300-03 L2 Checklist | 3d | 2026-05-11 | 2026-05-13 | QTS - 6390, QTS - 7490 | 49d | 0d | Riley Warring | VER |
| DC1-CDU-L2-3600 |  | CDU-DH2300-10 L2 Checklist | 3d | 2026-05-18 | 2026-05-20 | QTS - 7180, QTS - 7360 | 44d | 0d |  | VER |
| DC1-CDU-L2-3610 |  | CDU-DH2300-11 L2 Checklist | 3d | 2026-05-18 | 2026-05-20 | QTS - 7180, QTS - 7360 | 44d | 0d |  | VER |
| DC1-CDU-L2-3620 |  | CDU-DH2300-12 L2 Checklist | 3d | 2026-05-18 | 2026-05-20 | QTS - 7180, QTS - 7360 | 44d | 0d |  | VER |
| DC1-CDU-L2-3540 |  | CDU-DH2300-04 L2 Checklist | 3d | 2026-05-19 | 2026-05-21 | QTS - 7510, QTS - 6390 | 43d | 0d | Riley Warring | VER |
| DC1-CDU-L2-3550 |  | CDU-DH2300-05 L2 Checklist | 3d | 2026-05-19 | 2026-05-21 | QTS - 7510, QTS - 6390 | 43d | 0d | Riley Warring | VER |
| DC1-CDU-L2-3560 |  | CDU-DH2300-06 L2 Checklist | 3d | 2026-05-19 | 2026-05-21 | QTS - 7510, QTS - 6390 | 43d | 0d | Riley Warring | VER |
| DC1-CDU-L2-3630 |  | CDU-DH2300-13 L2 Checklist | 3d | 2026-05-26 | 2026-05-28 | QTS - 7380, QTS - 7180 | 39d | 0d |  | VER |
| DC1-CDU-L2-3640 |  | CDU-DH2300-14 L2 Checklist | 3d | 2026-05-26 | 2026-05-28 | QTS - 7380, QTS - 7180 | 39d | 0d |  | VER |
| DC1-CDU-L2-3650 |  | CDU-DH2300-15 L2 Checklist | 3d | 2026-05-26 | 2026-05-28 | QTS - 7380, QTS - 7180 | 39d | 0d |  | VER |
| DC1-CDU-L2-3570 |  | CDU-DH2300-07 L2 Checklist | 3d | 2026-05-28 | 2026-06-01 | QTS - 6390, QTS - 7530 | 37d | 0d | Riley Warring | VER |
| DC1-CDU-L2-3580 |  | CDU-DH2300-08 L2 Checklist | 3d | 2026-05-28 | 2026-06-01 | QTS - 6390, QTS - 7530 | 37d | 0d | Riley Warring | VER |
| DC1-CDU-L2-3590 |  | CDU-DH2300-09 L2 Checklist | 3d | 2026-05-28 | 2026-06-01 | QTS - 6390, QTS - 7530 | 37d | 0d | Riley Warring | VER |
| DC1-CDU-L2-3660 |  | CDU-DH2300-16 L2 Checklist | 3d | 2026-06-03 | 2026-06-05 | QTS - 7180, QTS - 7390 | 33d | 0d |  | VER |
| DC1-CDU-L2-3670 |  | CDU-DH2300-17 L2 Checklist | 3d | 2026-06-03 | 2026-06-05 | QTS - 7180, QTS - 7390 | 33d | 0d |  | VER |
| DC1-CDU-L2-3680 |  | CDU-DH2300-18 L2 Checklist | 3d | 2026-06-03 | 2026-06-05 | QTS - 7180, QTS - 7390 | 33d | 0d |  | VER |
|  | 11 | **DC1-DH2300 CHLR Cx L2** |  | 2026-02-25 | 2026-03-19 |  |  |  |  |  |
| DC1-CHLR-L2-1210 |  | DH2300 CHLR-1RT40-A23 L2 Checklist | 3d | 2026-02-25 | 2026-02-27 | QTS-18681 | 35d | 0d |  | TAS |
| DC1-CHLR-L2-1220 |  | DH2300 CHLR-1RT40-B23 L2 Checklist | 3d | 2026-03-02 | 2026-03-04 | DC1-CHLR-L2-1210 | 35d | 0d |  | TAS |
| DC1-CHLR-L2-1240 |  | DH2300 CHLR-1RT40-D23 L2 Checklist | 3d | 2026-03-04 | 2026-03-06 | QTS-41401 | 27d | 0d | Riley Warring | TAS |
| DC1-CHLR-L2-1230 |  | DH2300 CHLR-1RT40-C23 L2 Checklist | 3d | 2026-03-05 | 2026-03-09 | DC1-CHLR-L2-1220 | 35d | 27d |  | TAS |
| DC1-CHLR-L2-1250 |  | DH2300 CHLR-1RT40-E23 L2 Checklist | 3d | 2026-03-09 | 2026-03-11 | DC1-CHLR-L2-1240 | 27d | 0d | Riley Warring | TAS |
| DC1-CHLR-L2-1260 |  | DH2300 CHLR-1RT40-F23 L2 Checklist | 3d | 2026-03-12 | 2026-03-16 | DC1-CHLR-L2-1250 | 27d | 0d | Riley Warring | TAS |
| DC1-CHLR-L2-1270 |  | DH2300 CHLR-1RT40-R23 L2 Checklist | 3d | 2026-03-17 | 2026-03-19 | DC1-CHLR-L2-1260 | 27d | 19d | Riley Warring | TAS |

Notes:
- DC1-CDU-L2-3510: Steps: EC Installation Checklist; MC Installation Checklist; CC Installation Checklist; Vendor Pre-Energization Checklist; CXA Pre-Energization Inspection; PEI/Clean-Walk
- DC1-CDU-L2-3520: Steps: EC Installation Checklist; MC Installation Checklist; CC Installation Checklist; Vendor Pre-Energization Checklist; CXA Pre-Energization Inspection; PEI/Clean-Walk
- DC1-CDU-L2-3530: Steps: EC Installation Checklist; CC Installation Checklist; MC Installation Checklist; Vendor Pre-Energization Checklist; CXA Pre-Energization Inspection; PEI/Clean-Walk
- DC1-CDU-L2-3600: Steps: EC Installation Checklist; MC Installation Checklist; CC Installation Checklist; Vendor Pre-Energization Checklist; CXA Pre-Energization Inspection; PEI/Clean-Walk
- DC1-CDU-L2-3610: Steps: EC Installation Checklist; MC Installation Checklist; CC Installation Checklist; Vendor Pre-Energization Checklist; CXA Pre-Energization Inspection; PEI/Clean-Walk
- DC1-CDU-L2-3620: Steps: EC Installation Checklist; MC Installation Checklist; CC Installation Checklist; Vendor Pre-Energization Checklist; CXA Pre-Energization Inspection; PEI/Clean-Walk
- DC1-CDU-L2-3540: Steps: EC Installation Checklist; MC Installation Checklist; CC Installation Checklist; Vendor Pre-Energization Checklist; CXA Pre-Energization Inspection; PEI/Clean-Walk
- DC1-CDU-L2-3550: Steps: EC Installation Checklist; MC Installation Checklist; CC Installation Checklist; Vendor Pre-Energization Checklist; CXA Pre-Energization Inspection; PEI/Clean-Walk
- DC1-CDU-L2-3560: Steps: EC Installation Checklist; MC Installation Checklist; CC Installation Checklist; Vendor Pre-Energization Checklist; CXA Pre-Energization Inspection; PEI/Clean-Walk
- DC1-CDU-L2-3630: Steps: EC Installation Checklist; MC Installation Checklist; CC Installation Checklist; Vendor Pre-Energization Checklist; CXA Pre-Energization Inspection; PEI/Clean-Walk
- DC1-CDU-L2-3640: Steps: EC Installation Checklist; MC Installation Checklist; CC Installation Checklist; Vendor Pre-Energization Checklist; CXA Pre-Energization Inspection; PEI/Clean-Walk
- DC1-CDU-L2-3650: Steps: EC Installation Checklist; MC Installation Checklist; CC Installation Checklist; Vendor Pre-Energization Checklist; CXA Pre-Energization Inspection; PEI/Clean-Walk
- DC1-CDU-L2-3570: Steps: EC Installation Checklist; MC Installation Checklist; CC Installation Checklist; Vendor Pre-Energization Checklist; CXA Pre-Energization Inspection; PEI/Clean-Walk
- DC1-CDU-L2-3580: Steps: EC Installation Checklist; MC Installation Checklist; CC Installation Checklist; Vendor Pre-Energization Checklist; CXA Pre-Energization Inspection; PEI/Clean-Walk
- DC1-CDU-L2-3590: Steps: EC Installation Checklist; MC Installation Checklist; CC Installation Checklist; Vendor Pre-Energization Checklist; CXA Pre-Energization Inspection; PEI/Clean-Walk
- DC1-CDU-L2-3660: Steps: EC Installation Checklist; MC Installation Checklist; CC Installation Checklist; Vendor Pre-Energization Checklist; CXA Pre-Energization Inspection; PEI/Clean-Walk
- DC1-CDU-L2-3670: Steps: EC Installation Checklist; MC Installation Checklist; CC Installation Checklist; Vendor Pre-Energization Checklist; CXA Pre-Energization Inspection; PEI/Clean-Walk
- DC1-CDU-L2-3680: Steps: EC Installation Checklist; MC Installation Checklist; CC Installation Checklist; Vendor Pre-Energization Checklist; CXA Pre-Energization Inspection; PEI/Clean-Walk
- DC1-CHLR-L2-1210: Steps: EC Installation Checklist; MC Installation Checklist; CC Installation Checklist; Vendor Pre-Energization Checklist; CXA Pre-Energization Inspection; PEI/Clean-Walk
- DC1-CHLR-L2-1220: Steps: EC Installation Checklist; MC Installation Checklist; CC Installation Checklist; Vendor Pre-Energization Checklist; CXA Pre-Energization Inspection; PEI/Clean-Walk
- DC1-CHLR-L2-1240: Steps: EC Installation Checklist; MC Installation Checklist; CC Installation Checklist; Vendor Pre-Energization Checklist; CXA Pre-Energization Inspection; PEI/Clean-Walk
- DC1-CHLR-L2-1230: Steps: EC Installation Checklist; MC Installation Checklist; CC Installation Checklist; Vendor Pre-Energization Checklist; CXA Pre-Energization Inspection; PEI/Clean-Walk
- DC1-CHLR-L2-1250: Steps: EC Installation Checklist; MC Installation Checklist; CC Installation Checklist; Vendor Pre-Energization Checklist; CXA Pre-Energization Inspection; PEI/Clean-Walk
- DC1-CHLR-L2-1260: Steps: EC Installation Checklist; MC Installation Checklist; CC Installation Checklist; Vendor Pre-Energization Checklist; CXA Pre-Energization Inspection; PEI/Clean-Walk
- DC1-CHLR-L2-1270: Steps: EC Installation Checklist; MC Installation Checklist; CC Installation Checklist; Vendor Pre-Energization Checklist; CXA Pre-Energization Inspection; PEI/Clean-Walk

| ID | WBS | Activity | Duration | Start | Finish | Predecessors | Total float | Free float | Notes | Vendor Responsible Party |
| --- | --- | --- | --- | --- | --- | --- | --- | --- | --- | --- |
|  | 12 | **DC1-DH2300 CHWP Cx L2** |  | 2026-02-27 | 2026-03-23 |  |  |  |  |  |
| DC1-CHWP-L2-Cx-2210 |  | DH2300 CHWP-1RT40-A23 L2 Checklist | 3d | 2026-02-27 | 2026-03-03 | QTS-18981 | 47d | 0d | CFCI | LAY |
| DC1-CHWP-L2-Cx-2220 |  | DH2300 CHWP-1RT40-B23 L2 Checklist | 3d | 2026-03-04 | 2026-03-06 | DC1-CHWP-L2-Cx-2210 | 47d | 0d | CFCI | LAY |
| DC1-CHWP-L2-Cx-2240 |  | DH2300 CHWP-1RT40-D23 L2 Checklist | 3d | 2026-03-06 | 2026-03-10 | QTS-41421 | 39d | 0d | CFCI | LAY |
| DC1-CHWP-L2-Cx-2230 |  | DH2300 CHWP-1RT40-C23 L2 Checklist | 3d | 2026-03-09 | 2026-03-11 | DC1-CHWP-L2-Cx-2220 | 47d | 31d | CFCI | LAY |
| DC1-CHWP-L2-Cx-2250 |  | DH2300 CHWP-1RT40-E23 L2 Checklist | 3d | 2026-03-11 | 2026-03-13 | DC1-CHWP-L2-Cx-2240 | 39d | 0d | CFCI | LAY |
| DC1-CHWP-L2-Cx-2260 |  | DH2300 CHWP-1RT40-F23 L2 Checklist | 3d | 2026-03-16 | 2026-03-18 | DC1-CHWP-L2-Cx-2250 | 39d | 0d | CFCI | LAY |
| DC1-CHWP-L2-Cx-2270 |  | DH2300 CHWP-1RT40-R23 L2 Checklist | 3d | 2026-03-19 | 2026-03-23 | DC1-CHWP-L2-Cx-2260 | 39d | 27d | CFCI | LAY |
|  | 13 | **DC1-DH2300 CRAH/DOAS Cx L2** |  | 2026-04-14 | 2026-04-22 |  |  |  |  |  |
| DC1-CRAH-L2-2960 |  | DH2300 CRAH-DH-01 L2 Checklist | 3d | 2026-04-14 | 2026-04-16 | QTS-46721, QTS-15501 | 41d | 28d |  | UMAS |
| DC1-CRAH-L2-2970 |  | DH2300 CRAH-DH-02 L2 Checklist | 3d | 2026-04-14 | 2026-04-16 | QTS-15501, QTS-46721 | 41d | 24d |  | UMAS |
| DC1-CRAH-L2-2980 |  | DH2300 CRAH-DH-03 L2 Checklist | 3d | 2026-04-14 | 2026-04-16 | QTS-15501, QTS-46721 | 41d | 21d |  | UMAS |
| DC1-CRAH-L2-2990 |  | DH2300 CRAH-DH-04 L2 Checklist | 3d | 2026-04-14 | 2026-04-16 | QTS-15501, QTS-46721 | 41d | 18d |  | UMAS |
| DC1-CRAH-L2-3000 |  | DH2300 CRAH-DH-05 L2 Checklist | 3d | 2026-04-14 | 2026-04-16 | QTS-15501, QTS-46721 | 41d | 27d |  | UMAS |
| DC1-CRAH-L2-3010 |  | DH2300 CRAH-DH-06 L2 Checklist | 3d | 2026-04-14 | 2026-04-16 | QTS-15501, QTS-46721 | 41d | 24d |  | UMAS |
| DC1-CRAH-L2-3020 |  | DH2300 CRAH-DH-07 L2 Checklist | 3d | 2026-04-14 | 2026-04-16 | QTS-15501, QTS-46721 | 41d | 21d |  | UMAS |
| DC1-CRAH-L2-3030 |  | DH2300 CRAH-DH-08 L2 Checklist | 3d | 2026-04-14 | 2026-04-16 | QTS-15501, QTS-46721 | 41d | 27d |  | UMAS |
| DC1-CRAH-L2-3040 |  | DH2300 CRAH-DH-09 L2 Checklist | 3d | 2026-04-14 | 2026-04-16 | QTS-15501, QTS-46721 | 41d | 24d |  | UMAS |
| DC1-CRAH-L2-3050 |  | DH2300 CRAH-DH-10 L2 Checklist | 3d | 2026-04-14 | 2026-04-16 | QTS-15501, QTS-46721 | 41d | 21d |  | UMAS |
| DC1-CRAH-L2-3060 |  | DH2300 CRAH-DH-11 L2 Checklist | 3d | 2026-04-14 | 2026-04-16 | QTS-15501, QTS-46721 | 41d | 27d |  | UMAS |
| DC1-CRAH-L2-3070 |  | DH2300 CRAH-DH-12 L2 Checklist | 3d | 2026-04-14 | 2026-04-16 | QTS-15501, QTS-46721 | 41d | 24d |  | UMAS |
| DC1-CRAH-L2-3080 |  | DH2300 CRAH-DH-13 L2 Checklist | 3d | 2026-04-14 | 2026-04-16 | QTS-15501, QTS-46721 | 41d | 21d |  | UMAS |
| DC1-CRAH-L2-3090 |  | DH2300 CRAH-DH-14 L2 Checklist | 3d | 2026-04-14 | 2026-04-16 | QTS-15501, QTS-46721 | 41d | 18d |  | UMAS |
| DC1-CRAH-L2-3100 |  | DH2300 CRAH-DH-15 L2 Checklist | 3d | 2026-04-14 | 2026-04-16 | QTS-46721, QTS-16381, QTS-16391 | 41d | 12d |  | UMAS |
| DC1-CRAH-L2-3110 |  | DH2300 CRAH-DH-16 L2 Checklist | 3d | 2026-04-14 | 2026-04-16 | QTS-46721, QTS-16381, QTS-16391 | 41d | 15d |  | UMAS |
| DC1-CRAH-L2-3120 |  | DH2300 CRAH-DH-17 L2 Checklist | 3d | 2026-04-14 | 2026-04-16 | QTS-46721, QTS-16381, QTS-16391 | 41d | 18d |  | UMAS |
| DC1-CRAH-L2-3130 |  | DH2300 CRAH-DH-18 L2 Checklist | 3d | 2026-04-14 | 2026-04-16 | QTS-46721, QTS-16381, QTS-16391 | 41d | 21d |  | UMAS |
| DC1-CRAH-L2-3140 |  | DH2300 CRAH-DH-19 L2 Checklist | 3d | 2026-04-14 | 2026-04-16 | QTS-46721, QTS-16381, QTS-16391 | 41d | 24d |  | UMAS |
| DC1-CRAH-L2-3150 |  | DH2300 CRAH-DH-20 L2 Checklist | 3d | 2026-04-14 | 2026-04-16 | QTS-46721, QTS-16381, QTS-16391 | 41d | 27d |  | UMAS |
| DC1-CRAH-L2-3160 |  | DH2300 CRAH-DH-21 L2 Checklist | 3d | 2026-04-14 | 2026-04-16 | QTS-46721, QTS-16381, QTS-16391 | 41d | 27d |  | UMAS |
| DC1-CRAH-L2-3170 |  | DH2300 CRAH-DH-22 L2 Checklist | 3d | 2026-04-14 | 2026-04-16 | QTS-46721, QTS-16381, QTS-16391 | 41d | 15d |  | UMAS |
| DC1-CRAH-L2-3180 |  | DH2300 CRAH-DH-23 L2 Checklist | 3d | 2026-04-14 | 2026-04-16 | QTS-46721, QTS-16381, QTS-16391 | 41d | 18d |  | UMAS |
| DC1-CRAH-L2-3190 |  | DH2300 CRAH-DH-24 L2 Checklist | 3d | 2026-04-14 | 2026-04-16 | QTS-46721, QTS-16381, QTS-16391 | 41d | 21d |  | UMAS |
| DC1-CRAH-L2-3200 |  | DH2300 CRAH-DH-25 L2 Checklist | 3d | 2026-04-14 | 2026-04-16 | QTS-46721, QTS-16381, QTS-16391 | 41d | 24d |  | UMAS |
| DC1-CRAH-L2-3210 |  | DH2300 CRAH-DH-26 L2 Checklist | 3d | 2026-04-14 | 2026-04-16 | QTS-46721, QTS-16381, QTS-16391 | 41d | 27d |  | UMAS |
| DC1-CRAH-L2-3220 |  | DH2300 CRAH-DH-27 L2 Checklist | 3d | 2026-04-14 | 2026-04-16 | QTS-46721, QTS-16381, QTS-16391 | 41d | 24d |  | UMAS |
| DC1-CRAH-L2-3230 |  | DH2300 CRAH-DH-28 L2 Checklist | 3d | 2026-04-14 | 2026-04-16 | QTS-46721, QTS-16381, QTS-16391 | 41d | 27d |  | UMAS |
| DC1-CRAH-L2-3240 |  | DH2300 CRAH-EG2302-01 L2 Checklist | 3d | 2026-04-14 | 2026-04-16 | QTS-46721, QTS-46701 | 41d | 24d |  | VER |
| DC1-CRAH-L2-3250 |  | DH2300 CRAH-EG2302-02 L2 Checklist | 3d | 2026-04-14 | 2026-04-16 | QTS-46721, QTS-46701 | 41d | 18d |  | VER |
| DC1-CRAH-L2-3260 |  | DH2300 CRAH-EG2302-03 L2 Checklist | 3d | 2026-04-14 | 2026-04-16 | QTS-46721, QTS-46701 | 41d | 15d |  | VER |
| DC1-CRAH-L2-3270 |  | DH2300 CRAH-EG2302-04 L2 Checklist | 3d | 2026-04-14 | 2026-04-16 | QTS-46721 | 41d | 9d |  | VER |
| DC1-DOAS-L2-2060 |  | DH2300 DOAS-01 L2 Checklist | 3d | 2026-04-20 | 2026-04-22 | QTS-46731, QTS-50281 | 37d | 5d |  | TAS |
| DC1-DOAS-L2-2070 |  | DH2300 DOAS-02 L2 Checklist | 3d | 2026-04-20 | 2026-04-22 | QTS-46731, QTS-50281 | 37d | 23d |  | TAS |

Notes:
- DC1-CHWP-L2-Cx-2210: Steps: EC Installation Checklist; MC Installation Checklist; CC Installation Checklist; Vendor Pre-Energization Checklist; CXA Pre-Energization Inspection; PEI/Clean-Walk
- DC1-CHWP-L2-Cx-2220: Steps: EC Installation Checklist; MC Installation Checklist; CC Installation Checklist; Vendor Pre-Energization Checklist; CXA Pre-Energization Inspection; PEI/Clean-Walk
- DC1-CHWP-L2-Cx-2240: Steps: EC Installation Checklist; MC Installation Checklist; CC Installation Checklist; Vendor Pre-Energization Checklist; CXA Pre-Energization Inspection; PEI/Clean-Walk
- DC1-CHWP-L2-Cx-2230: Steps: EC Installation Checklist; MC Installation Checklist; CC Installation Checklist; Vendor Pre-Energization Checklist; CXA Pre-Energization Inspection; PEI/Clean-Walk
- DC1-CHWP-L2-Cx-2250: Steps: EC Installation Checklist; MC Installation Checklist; CC Installation Checklist; Vendor Pre-Energization Checklist; CXA Pre-Energization Inspection; PEI/Clean-Walk
- DC1-CHWP-L2-Cx-2260: Steps: EC Installation Checklist; MC Installation Checklist; CC Installation Checklist; Vendor Pre-Energization Checklist; CXA Pre-Energization Inspection; PEI/Clean-Walk
- DC1-CHWP-L2-Cx-2270: Steps: EC Installation Checklist; MC Installation Checklist; CC Installation Checklist; Vendor Pre-Energization Checklist; CXA Pre-Energization Inspection; PEI/Clean-Walk
- DC1-CRAH-L2-2960: Steps: EC Installation Checklist; MC Installation Checklist; CC Installation Checklist; Vendor Pre-Energization Checklist; CXA Pre-Energization Inspection; PEI/Clean-Walk
- DC1-CRAH-L2-2970: Steps: EC Installation Checklist; MC Installation Checklist; CC Installation Checklist; Vendor Pre-Energization Checklist; CXA Pre-Energization Inspection; PEI/Clean-Walk
- DC1-CRAH-L2-2980: Steps: EC Installation Checklist; MC Installation Checklist; CC Installation Checklist; Vendor Pre-Energization Checklist; CXA Pre-Energization Inspection; PEI/Clean-Walk
- DC1-CRAH-L2-2990: Steps: EC Installation Checklist; MC Installation Checklist; CC Installation Checklist; Vendor Pre-Energization Checklist; CXA Pre-Energization Inspection; PEI/Clean-Walk
- DC1-CRAH-L2-3000: Steps: EC Installation Checklist; MC Installation Checklist; CC Installation Checklist; Vendor Pre-Energization Checklist; CXA Pre-Energization Inspection; PEI/Clean-Walk
- DC1-CRAH-L2-3010: Steps: EC Installation Checklist; MC Installation Checklist; CC Installation Checklist; Vendor Pre-Energization Checklist; CXA Pre-Energization Inspection; PEI/Clean-Walk
- DC1-CRAH-L2-3020: Steps: EC Installation Checklist; MC Installation Checklist; CC Installation Checklist; Vendor Pre-Energization Checklist; CXA Pre-Energization Inspection; PEI/Clean-Walk
- DC1-CRAH-L2-3030: Steps: EC Installation Checklist; MC Installation Checklist; CC Installation Checklist; Vendor Pre-Energization Checklist; CXA Pre-Energization Inspection; PEI/Clean-Walk
- DC1-CRAH-L2-3040: Steps: EC Installation Checklist; MC Installation Checklist; CC Installation Checklist; Vendor Pre-Energization Checklist; CXA Pre-Energization Inspection; PEI/Clean-Walk
- DC1-CRAH-L2-3050: Steps: EC Installation Checklist; MC Installation Checklist; CC Installation Checklist; Vendor Pre-Energization Checklist; CXA Pre-Energization Inspection; PEI/Clean-Walk
- DC1-CRAH-L2-3060: Steps: EC Installation Checklist; MC Installation Checklist; CC Installation Checklist; Vendor Pre-Energization Checklist; CXA Pre-Energization Inspection; PEI/Clean-Walk
- DC1-CRAH-L2-3070: Steps: EC Installation Checklist; MC Installation Checklist; CC Installation Checklist; Vendor Pre-Energization Checklist; CXA Pre-Energization Inspection; PEI/Clean-Walk
- DC1-CRAH-L2-3080: Steps: EC Installation Checklist; MC Installation Checklist; CC Installation Checklist; Vendor Pre-Energization Checklist; CXA Pre-Energization Inspection; PEI/Clean-Walk
- DC1-CRAH-L2-3090: Steps: EC Installation Checklist; MC Installation Checklist; CC Installation Checklist; Vendor Pre-Energization Checklist; CXA Pre-Energization Inspection; PEI/Clean-Walk
- DC1-CRAH-L2-3100: Steps: EC Installation Checklist; MC Installation Checklist; CC Installation Checklist; Vendor Pre-Energization Checklist; CXA Pre-Energization Inspection; PEI/Clean-Walk
- DC1-CRAH-L2-3110: Steps: EC Installation Checklist; MC Installation Checklist; CC Installation Checklist; Vendor Pre-Energization Checklist; CXA Pre-Energization Inspection; PEI/Clean-Walk
- DC1-CRAH-L2-3120: Steps: EC Installation Checklist; MC Installation Checklist; CC Installation Checklist; Vendor Pre-Energization Checklist; CXA Pre-Energization Inspection; PEI/Clean-Walk
- DC1-CRAH-L2-3130: Steps: EC Installation Checklist; MC Installation Checklist; CC Installation Checklist; Vendor Pre-Energization Checklist; CXA Pre-Energization Inspection; PEI/Clean-Walk
- DC1-CRAH-L2-3140: Steps: EC Installation Checklist; MC Installation Checklist; CC Installation Checklist; Vendor Pre-Energization Checklist; CXA Pre-Energization Inspection; PEI/Clean-Walk
- DC1-CRAH-L2-3150: Steps: EC Installation Checklist; MC Installation Checklist; CC Installation Checklist; Vendor Pre-Energization Checklist; CXA Pre-Energization Inspection; PEI/Clean-Walk
- DC1-CRAH-L2-3160: Steps: EC Installation Checklist; MC Installation Checklist; CC Installation Checklist; Vendor Pre-Energization Checklist; CXA Pre-Energization Inspection; PEI/Clean-Walk
- DC1-CRAH-L2-3170: Steps: EC Installation Checklist; MC Installation Checklist; CC Installation Checklist; Vendor Pre-Energization Checklist; CXA Pre-Energization Inspection; PEI/Clean-Walk
- DC1-CRAH-L2-3180: Steps: EC Installation Checklist; MC Installation Checklist; CC Installation Checklist; Vendor Pre-Energization Checklist; CXA Pre-Energization Inspection; PEI/Clean-Walk
- DC1-CRAH-L2-3190: Steps: EC Installation Checklist; MC Installation Checklist; CC Installation Checklist; Vendor Pre-Energization Checklist; CXA Pre-Energization Inspection; PEI/Clean-Walk
- DC1-CRAH-L2-3200: Steps: EC Installation Checklist; MC Installation Checklist; CC Installation Checklist; Vendor Pre-Energization Checklist; CXA Pre-Energization Inspection; PEI/Clean-Walk
- DC1-CRAH-L2-3210: Steps: EC Installation Checklist; MC Installation Checklist; CC Installation Checklist; Vendor Pre-Energization Checklist; CXA Pre-Energization Inspection; PEI/Clean-Walk
- DC1-CRAH-L2-3220: Steps: EC Installation Checklist; MC Installation Checklist; CC Installation Checklist; Vendor Pre-Energization Checklist; CXA Pre-Energization Inspection; PEI/Clean-Walk
- DC1-CRAH-L2-3230: Steps: EC Installation Checklist; MC Installation Checklist; CC Installation Checklist; Vendor Pre-Energization Checklist; CXA Pre-Energization Inspection; PEI/Clean-Walk
- DC1-CRAH-L2-3240: Steps: EC Installation Checklist; MC Installation Checklist; CC Installation Checklist; Vendor Pre-Energization Checklist; CXA Pre-Energization Inspection; PEI/Clean-Walk
- DC1-CRAH-L2-3250: Steps: EC Installation Checklist; MC Installation Checklist; CC Installation Checklist; Vendor Pre-Energization Checklist; CXA Pre-Energization Inspection; PEI/Clean-Walk
- DC1-CRAH-L2-3260: Steps: EC Installation Checklist; MC Installation Checklist; CC Installation Checklist; Vendor Pre-Energization Checklist; CXA Pre-Energization Inspection; PEI/Clean-Walk
- DC1-CRAH-L2-3270: Steps: EC Installation Checklist; MC Installation Checklist; CC Installation Checklist; Vendor Pre-Energization Checklist; CXA Pre-Energization Inspection; PEI/Clean-Walk
- DC1-DOAS-L2-2060: Steps: EC Installation Checklist; MC Installation Checklist; CC Installation Checklist; Vendor Pre-Energization Checklist; CXA Pre-Energization Inspection; PEI/Clean-Walk
- DC1-DOAS-L2-2070: Steps: EC Installation Checklist; MC Installation Checklist; CC Installation Checklist; Vendor Pre-Energization Checklist; CXA Pre-Energization Inspection; PEI/Clean-Walk

| ID | WBS | Activity | Duration | Start | Finish | Predecessors | Total float | Free float | Vendor Responsible Party |
| --- | --- | --- | --- | --- | --- | --- | --- | --- | --- |
|  | 03 | **Data Hall 2300 Cx L3** |  | 2026-04-16 | 2026-08-19 |  |  |  |  |
|  | 01 | **DC1-DH2300 Generators Cx L3** |  | 2026-04-17 | 2026-05-01 |  |  |  |  |
|  | 01 | **DC1-DH2300-GEN-A23 Cx L3** |  | 2026-04-17 | 2026-04-22 |  |  |  |  |
| DC1-GEN-L3-CX-2630 |  | DC1-GEN-A23 FTE | 1d | 2026-04-17 | 2026-04-17 | DC1-GEN-L2-2210, DC1-SWD-L3-CX-2630 | 46d | 0d | ROS |
| DC1-GEN-L3-CX-2640 |  | DC1-GEN-A23 L3 Startup | 2d | 2026-04-20 | 2026-04-21 | DC1-GEN-L3-CX-2630 | 46d | 0d | HLT |
| DC1-GEN-L3-CX-2650 |  | DC1-GEN-A23 BMS/EPMS | 1d | 2026-04-22 | 2026-04-22 | DC1-GEN-L3-CX-2640 | 46d | 27d | PRM |
|  | 02 | **DC1-DH2300-GEN-B23 Cx L3** |  | 2026-04-17 | 2026-04-22 |  |  |  |  |
| DC1-GEN-L3-CX-2660 |  | DC1-GEN-B23 FTE | 1d | 2026-04-17 | 2026-04-17 | DC1-GEN-L2-2220, DC1-SWD-L3-CX-2660 | 46d | 0d | ROS |
| DC1-GEN-L3-CX-2670 |  | DC1-GEN-B23 L3 Startup | 2d | 2026-04-20 | 2026-04-21 | DC1-GEN-L3-CX-2660 | 46d | 0d | HLT |
| DC1-GEN-L3-CX-2680 |  | DC1-GEN-B23 BMS/EPMS | 1d | 2026-04-22 | 2026-04-22 | DC1-GEN-L3-CX-2670 | 46d | 27d | PRM |
|  | 03 | **DC1-DH2300-GEN-C23 Cx L3** |  | 2026-04-17 | 2026-04-22 |  |  |  |  |
| DC1-GEN-L3-CX-2690 |  | DC1-GEN-C23 FTE | 1d | 2026-04-17 | 2026-04-17 | DC1-GEN-L2-2230, DC1-SWD-L3-CX-2690 | 46d | 0d | ROS |
| DC1-GEN-L3-CX-2700 |  | DC1-GEN-C23 L3 Startup | 2d | 2026-04-20 | 2026-04-21 | DC1-GEN-L3-CX-2690 | 46d | 0d | HLT |
| DC1-GEN-L3-CX-2710 |  | DC1-GEN-C23 BMS/EPMS | 1d | 2026-04-22 | 2026-04-22 | DC1-GEN-L3-CX-2700 | 46d | 27d | PRM |
|  | 04 | **DC1-DH2300-GEN-D23 Cx L3** |  | 2026-04-17 | 2026-04-22 |  |  |  |  |
| DC1-GEN-L3-CX-2720 |  | DC1-GEN-D23 FTE | 1d | 2026-04-17 | 2026-04-17 | DC1-GEN-L2-2240, DC1-SWD-L3-CX-2720 | 46d | 0d | ROS |
| DC1-GEN-L3-CX-2730 |  | DC1-GEN-D23 L3 Startup | 2d | 2026-04-20 | 2026-04-21 | DC1-GEN-L3-CX-2720 | 46d | 0d | HLT |
| DC1-GEN-L3-CX-2740 |  | DC1-GEN-D23 BMS/EPMS | 1d | 2026-04-22 | 2026-04-22 | DC1-GEN-L3-CX-2730 | 46d | 27d | PRM |
|  | 05 | **DC1-DH2300-GEN-E23 Cx L3** |  | 2026-04-20 | 2026-04-23 |  |  |  |  |
| DC1-GEN-L3-CX-2750 |  | DC1-GEN-E23 FTE | 1d | 2026-04-20 | 2026-04-20 | DC1-GEN-L2-2250, DC1-SWD-L3-CX-2750 | 45d | 0d | ROS |
| DC1-GEN-L3-CX-2760 |  | DC1-GEN-E23 L3 Startup | 2d | 2026-04-21 | 2026-04-22 | DC1-GEN-L3-CX-2750 | 45d | 0d | HLT |
| DC1-GEN-L3-CX-2770 |  | DC1-GEN-E23 BMS/EPMS | 1d | 2026-04-23 | 2026-04-23 | DC1-GEN-L3-CX-2760 | 45d | 26d | PRM |
|  | 06 | **DC1-DH2300-GEN-F23 Cx L3** |  | 2026-04-23 | 2026-04-28 |  |  |  |  |
| DC1-GEN-L3-CX-2780 |  | DC1-GEN-F23 FTE | 1d | 2026-04-23 | 2026-04-23 | DC1-GEN-L2-2260, DC1-SWD-L3-CX-2780 | 42d | 0d | ROS |
| DC1-GEN-L3-CX-2790 |  | DC1-GEN-F23 L3 Startup | 2d | 2026-04-24 | 2026-04-27 | DC1-GEN-L3-CX-2780 | 42d | 0d | HLT |
| DC1-GEN-L3-CX-2800 |  | DC1-GEN-F23 BMS/EPMS | 1d | 2026-04-28 | 2026-04-28 | DC1-GEN-L3-CX-2790 | 42d | 23d | PRM |

Notes:
- DC1-GEN-L3-CX-2640: Steps: EC Startup Report; Vendor Startup
- DC1-GEN-L3-CX-2670: Steps: EC Startup Report; Vendor Startup
- DC1-GEN-L3-CX-2700: Steps: EC Startup Report; Vendor Startup
- DC1-GEN-L3-CX-2730: Steps: EC Startup Report; Vendor Startup
- DC1-GEN-L3-CX-2760: Steps: EC Startup Report; Vendor Startup
- DC1-GEN-L3-CX-2790: Steps: EC Startup Report; Vendor Startup

| ID | WBS | Activity | Duration | Start | Finish | Predecessors | Total float | Free float | Vendor Responsible Party | Notes | Layton Responsible Party |
| --- | --- | --- | --- | --- | --- | --- | --- | --- | --- | --- | --- |
|  | 07 | **DC1-DH2300-GEN-R23 Cx L3** |  | 2026-04-28 | 2026-05-01 |  |  |  |  |  |  |
| DC1-GEN-L3-CX-2810 |  | DC1-GEN-R23 FTE | 1d | 2026-04-28 | 2026-04-28 | DC1-GEN-L2-2270, DC1-SWD-L3-CX-2810 | 39d | 0d | ROS |  |  |
| DC1-GEN-L3-CX-2820 |  | DC1-GEN-R23 L3 Startup | 2d | 2026-04-29 | 2026-04-30 | DC1-GEN-L3-CX-2810 | 39d | 0d | HLT |  |  |
| DC1-GEN-L3-CX-2830 |  | DC1-GEN-R23 BMS/EPMS | 1d | 2026-05-01 | 2026-05-01 | DC1-GEN-L3-CX-2820 | 39d | 20d | PRM |  |  |
|  | 02 | **DC1-DH2300 MV XFMRs Cx L3** |  | 2026-04-16 | 2026-04-21 |  |  |  |  |  |  |
|  | 01 | **DC1-DH2300 MV-XFMR-A23 Cx L3** |  | 2026-04-16 | 2026-04-21 |  |  |  |  |  |  |
| DC1-XFM-L3-CX-1630 |  | DC1-XFMR-A23 FTE | 1d | 2026-04-16 | 2026-04-16 | DC1-XFMR-L2-2210, DC1-SWD-L2-2210, DC1-XFMR-L2-2260 | 8d | 0d | ROS | MVG FTE Pred | Riley Warring |
| DC1-XFM-L3-CX-1640 |  | DC1-XFMR-A23 L3 Startup | 2d | 2026-04-17 | 2026-04-20 | DC1-XFM-L3-CX-1630 | 47d | 0d | VTC |  |  |
| DC1-XFM-L3-CX-1650 |  | DC1-XFMR-A23 BMS/EPMS | 1d | 2026-04-21 | 2026-04-21 | DC1-XFM-L3-CX-1640 | 47d | 28d | PRM |  |  |
|  | 02 | **DC1-DH2300 MV-XFMR-B23 Cx L3** |  | 2026-04-16 | 2026-04-21 |  |  |  |  |  |  |
| DC1-XFM-L3-CX-1660 |  | DC1-XFMR-B23 FTE | 1d | 2026-04-16 | 2026-04-16 | DC1-XFMR-L2-2220, DC1-SWD-L2-2220, DC1-XFMR-L2-2260 | 8d | 0d | ROS | MVG FTE Pred | Riley Warring |
| DC1-XFM-L3-CX-1670 |  | DC1-XFMR-B23 L3 Startup | 2d | 2026-04-17 | 2026-04-20 | DC1-XFM-L3-CX-1660 | 47d | 0d | VTC |  |  |
| DC1-XFM-L3-CX-1680 |  | DC1-XFMR-B23 BMS/EPMS | 1d | 2026-04-21 | 2026-04-21 | DC1-XFM-L3-CX-1670 | 47d | 28d | PRM |  |  |
|  | 03 | **DC1-DH2300 MV-XFMR-C23 Cx L3** |  | 2026-04-16 | 2026-04-21 |  |  |  |  |  |  |
| DC1-XFM-L3-CX-1690 |  | DC1-XFMR-C23 FTE | 1d | 2026-04-16 | 2026-04-16 | DC1-XFMR-L2-2230, DC1-SWD-L2-2230, DC1-XFMR-L2-2260 | 8d | 0d | ROS | MVG FTE Pred | Riley Warring |
| DC1-XFM-L3-CX-1700 |  | DC1-XFMR-C23 L3 Startup | 2d | 2026-04-17 | 2026-04-20 | DC1-XFM-L3-CX-1690 | 47d | 0d | VTC |  |  |
| DC1-XFM-L3-CX-1710 |  | DC1-XFMR-C23 BMS/EPMS | 1d | 2026-04-21 | 2026-04-21 | DC1-XFM-L3-CX-1700 | 47d | 28d | PRM |  |  |
|  | 04 | **DC1-DH2300 MV-XFMR-D23 Cx L3** |  | 2026-04-16 | 2026-04-21 |  |  |  |  |  |  |
| DC1-XFM-L3-CX-1720 |  | DC1-XFMR-D23 FTE | 1d | 2026-04-16 | 2026-04-16 | DC1-XFMR-L2-2240, DC1-SWD-L2-2240, DC1-XFMR-L2-2260 | 8d | 0d | ROS | MVG FTE Pred | Riley Warring |
| DC1-XFM-L3-CX-1730 |  | DC1-XFMR-D23 L3 Startup | 2d | 2026-04-17 | 2026-04-20 | DC1-XFM-L3-CX-1720 | 47d | 0d | VTC |  |  |
| DC1-XFM-L3-CX-1740 |  | DC1-XFMR-D23 BMS/EPMS | 1d | 2026-04-21 | 2026-04-21 | DC1-XFM-L3-CX-1730 | 47d | 28d | PRM |  |  |
|  | 05 | **DC1-DH2300 MV-XFMR-E23 Cx L3** |  | 2026-04-16 | 2026-04-21 |  |  |  |  |  |  |
| DC1-XFM-L3-CX-1750 |  | DC1-XFMR-E23 FTE | 1d | 2026-04-16 | 2026-04-16 | DC1-XFMR-L2-2250, DC1-SWD-L2-2250, DC1-XFMR-L2-2260 | 8d | 0d | ROS | MVG FTE Pred | Riley Warring |
| DC1-XFM-L3-CX-1760 |  | DC1-XFMR-E23 L3 Startup | 2d | 2026-04-17 | 2026-04-20 | DC1-XFM-L3-CX-1750 | 47d | 0d | VTC |  |  |
| DC1-XFM-L3-CX-1770 |  | DC1-XFMR-E23 BMS/EPMS | 1d | 2026-04-21 | 2026-04-21 | DC1-XFM-L3-CX-1760 | 47d | 28d | PRM |  |  |

Notes:
- DC1-GEN-L3-CX-2820: Steps: EC Startup Report; Vendor Startup
- DC1-XFM-L3-CX-1640: Steps: EC Startup Report; Vendor Startup
- DC1-XFM-L3-CX-1670: Steps: EC Startup Report; Vendor Startup
- DC1-XFM-L3-CX-1700: Steps: EC Startup Report; Vendor Startup
- DC1-XFM-L3-CX-1730: Steps: EC Startup Report; Vendor Startup
- DC1-XFM-L3-CX-1760: Steps: EC Startup Report; Vendor Startup
