# QTS - PHX3 DC1 (54MW) Construction Schedule - Current TFO Baseline

Schedule from Primavera P6, 2024-11-13 to 2026-08-26, data date 2026-01-14, A marks actual dates.

| ID | WBS | Activity | Duration | Start | Finish | Predecessors | Total float | Free float | Notes | Layton Responsible Party | Vendor Responsible Party |
| --- | --- | --- | --- | --- | --- | --- | --- | --- | --- | --- | --- |
|  | 06 | **DC1-DH2300 MV-XFMR-F23 Cx L3** |  | 2026-04-16 | 2026-04-21 |  |  |  |  |  |  |
| DC1-XFM-L3-CX-1780 |  | DC1-XFMR-F23 FTE | 1d | 2026-04-16 | 2026-04-16 | DC1-XFMR-L2-2260, DC1-SWD-L2-2260 | 8d | 0d | MVG FTE Pred | Riley Warring | ROS |
| DC1-XFM-L3-CX-1790 |  | DC1-XFMR-F23 L3 Startup | 2d | 2026-04-17 | 2026-04-20 | DC1-XFM-L3-CX-1780 | 47d | 0d |  |  | VTC |
| DC1-XFM-L3-CX-1800 |  | DC1-XFMR-F23 BMS/EPMS | 1d | 2026-04-21 | 2026-04-21 | DC1-XFM-L3-CX-1790 | 47d | 28d |  |  | PRM |
|  | 07 | **DC1-DH2300 MV-XFMR-R23 Cx L3** |  | 2026-04-16 | 2026-04-21 |  |  |  |  |  |  |
| DC1-XFM-L3-CX-1810 |  | DC1-XFMR-R23 FTE | 1d | 2026-04-16 | 2026-04-16 | DC1-XFMR-L2-2270, DC1-SWD-L2-2270, DC1-XFMR-L2-2260 | 8d | 0d | MVG FTE Pred | Riley Warring | ROS |
| DC1-XFM-L3-CX-1820 |  | DC1-XFMR-R23 L3 Startup | 2d | 2026-04-17 | 2026-04-20 | DC1-XFM-L3-CX-1810 | 47d | 0d |  |  | VTC |
| DC1-XFM-L3-CX-1830 |  | DC1-XFMR-R23 BMS/EPMS | 1d | 2026-04-21 | 2026-04-21 | DC1-XFM-L3-CX-1820 | 47d | 28d |  |  | PRM |
|  | 03 | **DC1-DH2300 PODS Cx L3** |  | 2026-04-16 | 2026-05-05 |  |  |  |  |  |  |
|  | 01 | **DC1-DH2300 SWDs Cx L3** |  | 2026-04-16 | 2026-04-21 |  |  |  |  |  |  |
|  | 01 | **DC1-DH2300-SWD-A23 Cx L3** |  | 2026-04-16 | 2026-04-21 |  |  |  |  |  |  |
| DC1-SWD-L3-CX-2630 |  | DC1-SWD-A23 FTE | 1d | 2026-04-16 | 2026-04-16 | DC1-SWD-L2-2210, DC1-XFM-L3-CX-1630 SS, DC1-SWD-L2-2260 | 8d | 0d |  | Riley Warring | ROS |
| DC1-SWD-L3-CX-2640 |  | DC1-SWD-A23 L3 Startup | 2d | 2026-04-17 | 2026-04-20 | DC1-SWD-L3-CX-2630, QTS-2061 | 47d | 0d |  |  | SIE |
| DC1-SWD-L3-CX-2650 |  | DC1-SWD-A23 BMS/EPMS | 1d | 2026-04-21 | 2026-04-21 | DC1-SWD-L3-CX-2640 | 47d | 28d |  |  | PRM |
|  | 02 | **DC1-DH2300-SWD-B23 Cx L3** |  | 2026-04-16 | 2026-04-21 |  |  |  |  |  |  |
| DC1-SWD-L3-CX-2660 |  | DC1-SWD-B23 FTE | 1d | 2026-04-16 | 2026-04-16 | DC1-SWD-L2-2220, DC1-XFM-L3-CX-1660 SS, DC1-SWD-L2-2260 | 8d | 0d |  | Riley Warring | ROS |
| DC1-SWD-L3-CX-2670 |  | DC1-SWD-B23 L3 Startup | 2d | 2026-04-17 | 2026-04-20 | DC1-SWD-L3-CX-2660, QTS-2061 | 47d | 0d |  |  | SIE |
| DC1-SWD-L3-CX-2680 |  | DC1-SWD-B23 BMS/EPMS | 1d | 2026-04-21 | 2026-04-21 | DC1-SWD-L3-CX-2670 | 47d | 28d |  |  | PRM |
|  | 03 | **DC1-DH2300-SWD-C23 Cx L3** |  | 2026-04-16 | 2026-04-21 |  |  |  |  |  |  |
| DC1-SWD-L3-CX-2690 |  | DC1-SWD-C23 FTE | 1d | 2026-04-16 | 2026-04-16 | DC1-SWD-L2-2230, DC1-XFM-L3-CX-1690 SS, DC1-SWD-L2-2260 | 8d | 0d |  | Riley Warring | ROS |
| DC1-SWD-L3-CX-2700 |  | DC1-SWD-C23 L3 Startup | 2d | 2026-04-17 | 2026-04-20 | DC1-SWD-L3-CX-2690, QTS-2061 | 47d | 0d |  |  | SIE |
| DC1-SWD-L3-CX-2710 |  | DC1-SWD-C23 BMS/EPMS | 1d | 2026-04-21 | 2026-04-21 | DC1-SWD-L3-CX-2700 | 47d | 28d |  |  | PRM |
|  | 04 | **DC1-DH2300-SWD-D23 Cx L3** |  | 2026-04-16 | 2026-04-21 |  |  |  |  |  |  |
| DC1-SWD-L3-CX-2720 |  | DC1-SWD-D23 FTE | 1d | 2026-04-16 | 2026-04-16 | DC1-SWD-L2-2240, DC1-XFM-L3-CX-1720 SS, DC1-SWD-L2-2260 | 8d | 0d |  | Riley Warring | ROS |
| DC1-SWD-L3-CX-2730 |  | DC1-SWD-D23 L3 Startup | 2d | 2026-04-17 | 2026-04-20 | DC1-SWD-L3-CX-2720, QTS-2061 | 47d | 0d |  |  | SIE |
| DC1-SWD-L3-CX-2740 |  | DC1-SWD-D23 BMS/EPMS | 1d | 2026-04-21 | 2026-04-21 | DC1-SWD-L3-CX-2730 | 47d | 28d |  |  | PRM |

Notes:
- DC1-XFM-L3-CX-1790: Steps: EC Startup Report; Vendor Startup
- DC1-XFM-L3-CX-1820: Steps: EC Startup Report; Vendor Startup
- DC1-SWD-L3-CX-2640: Steps: EC Startup Report; Vendor Startup
- DC1-SWD-L3-CX-2670: Steps: EC Startup Report; Vendor Startup
- DC1-SWD-L3-CX-2700: Steps: EC Startup Report; Vendor Startup
- DC1-SWD-L3-CX-2730: Steps: EC Startup Report; Vendor Startup

| ID | WBS | Activity | Duration | Start | Finish | Predecessors | Total float | Free float | Layton Responsible Party | Vendor Responsible Party | Notes |
| --- | --- | --- | --- | --- | --- | --- | --- | --- | --- | --- | --- |
|  | 05 | **DC1-DH2300-SWD-E23 Cx L3** |  | 2026-04-16 | 2026-04-21 |  |  |  |  |  |  |
| DC1-SWD-L3-CX-2750 |  | DC1-SWD-E23 FTE | 1d | 2026-04-16 | 2026-04-16 | DC1-SWD-L2-2250, DC1-XFM-L3-CX-1750 SS, DC1-SWD-L2-2260 | 8d | 0d | Riley Warring | ROS |  |
| DC1-SWD-L3-CX-2760 |  | DC1-SWD-E23 L3 Startup | 2d | 2026-04-17 | 2026-04-20 | DC1-SWD-L3-CX-2750, QTS-2061 | 47d | 0d |  | SIE |  |
| DC1-SWD-L3-CX-2770 |  | DC1-SWD-E23 BMS/EPMS | 1d | 2026-04-21 | 2026-04-21 | DC1-SWD-L3-CX-2760 | 47d | 28d |  | PRM |  |
|  | 06 | **DC1-DH2300-SWD-F23 Cx L3** |  | 2026-04-16 | 2026-04-21 |  |  |  |  |  |  |
| DC1-SWD-L3-CX-2780 |  | DC1-SWD-F23 FTE | 1d | 2026-04-16 | 2026-04-16 | DC1-SWD-L2-2260, DC1-XFM-L3-CX-1780 SS | 8d | 0d | Riley Warring | ROS |  |
| DC1-SWD-L3-CX-2790 |  | DC1-SWD-F23 L3 Startup | 2d | 2026-04-17 | 2026-04-20 | DC1-SWD-L3-CX-2780, QTS-2061 | 47d | 0d |  | SIE |  |
| DC1-SWD-L3-CX-2800 |  | DC1-SWD-F23 BMS/EPMS | 1d | 2026-04-21 | 2026-04-21 | DC1-SWD-L3-CX-2790 | 47d | 28d |  | PRM |  |
|  | 07 | **DC1-DH2300-SWD-R23 Cx L3** |  | 2026-04-16 | 2026-04-21 |  |  |  |  |  |  |
| DC1-SWD-L3-CX-2810 |  | DC1-SWD-R23 FTE | 1d | 2026-04-16 | 2026-04-16 | DC1-SWD-L2-2270, DC1-XFM-L3-CX-1810 SS, DC1-SWD-L2-2260 | 8d | 0d | Riley Warring | ROS |  |
| DC1-SWD-L3-CX-2820 |  | DC1-SWD-R23 L3 Startup | 2d | 2026-04-17 | 2026-04-20 | DC1-SWD-L3-CX-2810, QTS-2061 | 47d | 0d |  | SIE |  |
| DC1-SWD-L3-CX-2830 |  | DC1-SWD-R23 BMS/EPMS | 1d | 2026-04-21 | 2026-04-21 | DC1-SWD-L3-CX-2820 | 47d | 28d |  | PRM |  |
|  | 02 | **DC1-DH2300 MOD-01s Cx L3** |  | 2026-04-16 | 2026-04-21 |  |  |  |  |  |  |
|  | 01 | **DC1-DH2300-MOD-A23-01 Cx L3** |  | 2026-04-16 | 2026-04-21 |  |  |  |  |  |  |
| DC1-MOD1-L3-CX-2630 |  | DC1-MOD-01-A23 FTE | 1d | 2026-04-16 | 2026-04-16 | DC1-MOD01-L2-2210, DC1-SWD-L3-CX-2630 SS | 12d | 0d |  | ROS |  |
| DC1-MOD1-L3-CX-2640 |  | DC1-MOD-01-A23 L3 Startup | 2d | 2026-04-17 | 2026-04-20 | DC1-MOD1-L3-CX-2630 | 47d | 0d |  | PHE | Vendor Only |
| DC1-MOD1-L3-CX-2650 |  | DC1-MOD-01-A23 BMS/EPMS | 1d | 2026-04-21 | 2026-04-21 | DC1-MOD1-L3-CX-2640 | 47d | 28d |  | PRM |  |
|  | 02 | **DC1-DH2300-MOD-B23-01 Cx L3** |  | 2026-04-16 | 2026-04-21 |  |  |  |  |  |  |
| DC1-MOD1-L3-CX-2660 |  | DC1-MOD-01-B23 FTE | 1d | 2026-04-16 | 2026-04-16 | DC1-MOD01-L2-2220, DC1-SWD-L3-CX-2660 SS | 13d | 0d |  | ROS |  |
| DC1-MOD1-L3-CX-2670 |  | DC1-MOD-01-B23 L3 Startup | 2d | 2026-04-17 | 2026-04-20 | DC1-MOD1-L3-CX-2660 | 47d | 0d |  | PHE | Vendor Only |
| DC1-MOD1-L3-CX-2680 |  | DC1-MOD-01-B23 BMS/EPMS | 1d | 2026-04-21 | 2026-04-21 | DC1-MOD1-L3-CX-2670 | 47d | 28d |  | PRM |  |
|  | 03 | **DC1-DH2300-MOD-C23-01 Cx L3** |  | 2026-04-16 | 2026-04-21 |  |  |  |  |  |  |
| DC1-MOD1-L3-CX-2690 |  | DC1-MOD-01-C23 FTE | 1d | 2026-04-16 | 2026-04-16 | DC1-MOD01-L2-2230, DC1-SWD-L3-CX-2690 SS | 14d | 0d |  | ROS |  |
| DC1-MOD1-L3-CX-2700 |  | DC1-MOD-01-C23 L3 Startup | 2d | 2026-04-17 | 2026-04-20 | DC1-MOD1-L3-CX-2690 | 47d | 0d |  | PHE | Vendor Only |
| DC1-MOD1-L3-CX-2710 |  | DC1-MOD-01-C23 BMS/EPMS | 1d | 2026-04-21 | 2026-04-21 | DC1-MOD1-L3-CX-2700 | 47d | 28d |  | PRM |  |

Notes:
- DC1-SWD-L3-CX-2760: Steps: EC Startup Report; Vendor Startup
- DC1-SWD-L3-CX-2790: Steps: EC Startup Report; Vendor Startup
- DC1-SWD-L3-CX-2820: Steps: EC Startup Report; Vendor Startup

| ID | WBS | Activity | Duration | Start | Finish | Predecessors | Total float | Free float | Vendor Responsible Party | Notes |
| --- | --- | --- | --- | --- | --- | --- | --- | --- | --- | --- |
|  | 04 | **DC1-DH2300-MOD-D23-01 Cx L3** |  | 2026-04-16 | 2026-04-21 |  |  |  |  |  |
| DC1-MOD1-L3-CX-2720 |  | DC1-MOD-01-D23 FTE | 1d | 2026-04-16 | 2026-04-16 | DC1-MOD01-L2-2240, DC1-SWD-L3-CX-2720 SS | 15d | 0d | ROS |  |
| DC1-MOD1-L3-CX-2730 |  | DC1-MOD-01-D23 L3 Startup | 2d | 2026-04-17 | 2026-04-20 | DC1-MOD1-L3-CX-2720 | 47d | 0d | PHE | Vendor Only |
| DC1-MOD1-L3-CX-2740 |  | DC1-MOD-01-D23 BMS/EPMS | 1d | 2026-04-21 | 2026-04-21 | DC1-MOD1-L3-CX-2730 | 47d | 28d | PRM |  |
|  | 05 | **DC1-DH2300-MOD-E23-01 Cx L3** |  | 2026-04-16 | 2026-04-21 |  |  |  |  |  |
| DC1-MOD1-L3-CX-2750 |  | DC1-MOD-01-E23 FTE | 1d | 2026-04-16 | 2026-04-16 | DC1-MOD01-L2-2250, DC1-SWD-L3-CX-2750 SS | 16d | 0d | ROS |  |
| DC1-MOD1-L3-CX-2760 |  | DC1-MOD-01-E23 L3 Startup | 2d | 2026-04-17 | 2026-04-20 | DC1-MOD1-L3-CX-2750 | 47d | 0d | PHE | Vendor Only |
| DC1-MOD1-L3-CX-2770 |  | DC1-MOD-01-E23 BMS/EPMS | 1d | 2026-04-21 | 2026-04-21 | DC1-MOD1-L3-CX-2760 | 47d | 28d | PRM |  |
|  | 06 | **DC1-DH2300-MOD-F23-01 Cx L3** |  | 2026-04-16 | 2026-04-21 |  |  |  |  |  |
| DC1-MOD1-L3-CX-2780 |  | DC1-MOD-01-F23 FTE | 1d | 2026-04-16 | 2026-04-16 | DC1-MOD01-L2-2260, DC1-SWD-L3-CX-2780 SS | 17d | 0d | ROS |  |
| DC1-MOD1-L3-CX-2790 |  | DC1-MOD-01-F23 L3 Startup | 2d | 2026-04-17 | 2026-04-20 | DC1-MOD1-L3-CX-2780 | 47d | 0d | PHE | Vendor Only |
| DC1-MOD1-L3-CX-2800 |  | DC1-MOD-01-F23 BMS/EPMS | 1d | 2026-04-21 | 2026-04-21 | DC1-MOD1-L3-CX-2790 | 47d | 28d | PRM |  |
|  | 07 | **DC1-DH2300-MOD-R23-01 Cx L3** |  | 2026-04-16 | 2026-04-21 |  |  |  |  |  |
| DC1-MOD1-L3-CX-2810 |  | DC1-MOD-01-R23 FTE | 1d | 2026-04-16 | 2026-04-16 | DC1-MOD01-L2-2270, DC1-SWD-L3-CX-2810 SS | 18d | 0d | ROS |  |
| DC1-MOD1-L3-CX-2820 |  | DC1-MOD-01-R23 L3 Startup | 2d | 2026-04-17 | 2026-04-20 | DC1-MOD1-L3-CX-2810 | 47d | 0d | PHE | Vendor Only |
| DC1-MOD1-L3-CX-2830 |  | DC1-MOD-01-R23 BMS/EPMS | 1d | 2026-04-21 | 2026-04-21 | DC1-MOD1-L3-CX-2820 | 47d | 28d | PRM |  |
|  | 03 | **DC1-DH2300 UPS-M Cx L3** |  | 2026-04-22 | 2026-05-05 |  |  |  |  |  |
|  | 01 | **DC1-DH2300-UPS-M-A23-01 Cx L3** |  | 2026-04-22 | 2026-04-27 |  |  |  |  |  |
| DC1-UPSM-L3-CX-2630 |  | DC1-UPS-M-A23 FTE | 1d | 2026-04-22 | 2026-04-22 | DC1-UPS-M-L2-2210, DC1-COMP-L3-CX-2640, DC1-FAN-L3-CX-2640, DC1-MOD1-L3-CX-2630 | 12d | 0d | ROS |  |
| DC1-UPSM-L3-CX-2640 |  | DC1-UPS-M-A23 L3 Startup | 2d | 2026-04-23 | 2026-04-24 | DC1-UPSM-L3-CX-2630 | 43d | 0d | VER |  |
| DC1-UPSM-L3-CX-2650 |  | DC1-UPS-M-A23 BMS/EPMS | 1d | 2026-04-27 | 2026-04-27 | DC1-UPSM-L3-CX-2640 | 43d | 24d | PRM |  |
|  | 02 | **DC1-DH2300-UPS-M-B23-01 Cx L3** |  | 2026-04-23 | 2026-04-28 |  |  |  |  |  |
| DC1-UPSM-L3-CX-2660 |  | DC1-UPS-M-B23 FTE | 1d | 2026-04-23 | 2026-04-23 | DC1-UPS-M-L2-2220, DC1-COMP-L3-CX-2670, DC1-FAN-L3-CX-2670, DC1-MOD1-L3-CX-2660, DC1-UPSM-L3-CX-2630 | 12d | 0d | ROS |  |
| DC1-UPSM-L3-CX-2670 |  | DC1-UPS-M-B23 L3 Startup | 2d | 2026-04-24 | 2026-04-27 | DC1-UPSM-L3-CX-2660 | 42d | 0d | VER |  |
| DC1-UPSM-L3-CX-2680 |  | DC1-UPS-M-B23 BMS/EPMS | 1d | 2026-04-28 | 2026-04-28 | DC1-UPSM-L3-CX-2670 | 42d | 23d | PRM |  |

Notes:
- DC1-UPSM-L3-CX-2640: Steps: EC Startup Report; Vendor Startup
- DC1-UPSM-L3-CX-2670: Steps: EC Startup Report; Vendor Startup

| ID | WBS | Activity | Duration | Start | Finish | Predecessors | Total float | Free float | Vendor Responsible Party | Notes |
| --- | --- | --- | --- | --- | --- | --- | --- | --- | --- | --- |
|  | 03 | **DC1-DH2300-UPS-M-C23-01 Cx L3** |  | 2026-04-24 | 2026-04-29 |  |  |  |  |  |
| DC1-UPSM-L3-CX-2690 |  | DC1-UPS-M-C23 FTE | 1d | 2026-04-24 | 2026-04-24 | DC1-UPS-M-L2-2230, DC1-COMP-L3-CX-2700, DC1-FAN-L3-CX-2700, DC1-MOD1-L3-CX-2690, DC1-UPSM-L3-CX-2660 | 12d | 0d | ROS |  |
| DC1-UPSM-L3-CX-2700 |  | DC1-UPS-M-C23 L3 Startup | 2d | 2026-04-27 | 2026-04-28 | DC1-UPSM-L3-CX-2690 | 41d | 0d | VER |  |
| DC1-UPSM-L3-CX-2710 |  | DC1-UPS-M-C23 BMS/EPMS | 1d | 2026-04-29 | 2026-04-29 | DC1-UPSM-L3-CX-2700 | 41d | 22d | PRM |  |
|  | 04 | **DC1-DH2300-UPS-M-D23-01 Cx L3** |  | 2026-04-27 | 2026-04-30 |  |  |  |  |  |
| DC1-UPSM-L3-CX-2720 |  | DC1-UPS-M-D23 FTE | 1d | 2026-04-27 | 2026-04-27 | DC1-UPS-M-L2-2240, DC1-COMP-L3-CX-2730, DC1-FAN-L3-CX-2730, DC1-MOD1-L3-CX-2720, DC1-UPSM-L3-CX-2690 | 12d | 0d | ROS |  |
| DC1-UPSM-L3-CX-2730 |  | DC1-UPS-M-D23 L3 Startup | 2d | 2026-04-28 | 2026-04-29 | DC1-UPSM-L3-CX-2720 | 40d | 0d | VER |  |
| DC1-UPSM-L3-CX-2740 |  | DC1-UPS-M-D23 BMS/EPMS | 1d | 2026-04-30 | 2026-04-30 | DC1-UPSM-L3-CX-2730 | 40d | 21d | PRM |  |
|  | 05 | **DC1-DH2300-UPS-M-E23-01 Cx L3** |  | 2026-04-28 | 2026-05-01 |  |  |  |  |  |
| DC1-UPSM-L3-CX-2750 |  | DC1-UPS-M-E23 FTE | 1d | 2026-04-28 | 2026-04-28 | DC1-UPS-M-L2-2250, DC1-COMP-L3-CX-2760, DC1-FAN-L3-CX-2760, DC1-MOD1-L3-CX-2750, DC1-UPSM-L3-CX-2720 | 12d | 0d | ROS |  |
| DC1-UPSM-L3-CX-2760 |  | DC1-UPS-M-E23 L3 Startup | 2d | 2026-04-29 | 2026-04-30 | DC1-UPSM-L3-CX-2750 | 39d | 0d | VER |  |
| DC1-UPSM-L3-CX-2770 |  | DC1-UPS-M-E23 BMS/EPMS | 1d | 2026-05-01 | 2026-05-01 | DC1-UPSM-L3-CX-2760 | 39d | 20d | PRM |  |
|  | 06 | **DC1-DH2300-UPS-M-F23-01 Cx L3** |  | 2026-04-29 | 2026-05-04 |  |  |  |  |  |
| DC1-UPSM-L3-CX-2780 |  | DC1-UPS-M-F23 FTE | 1d | 2026-04-29 | 2026-04-29 | DC1-UPS-M-L2-2260, DC1-COMP-L3-CX-2790, DC1-FAN-L3-CX-2790, DC1-MOD1-L3-CX-2780, DC1-UPSM-L3-CX-2750 | 12d | 0d | ROS |  |
| DC1-UPSM-L3-CX-2790 |  | DC1-UPS-M-F23 L3 Startup | 2d | 2026-04-30 | 2026-05-01 | DC1-UPSM-L3-CX-2780 | 38d | 0d | VER |  |
| DC1-UPSM-L3-CX-2800 |  | DC1-UPS-M-F23 BMS/EPMS | 1d | 2026-05-04 | 2026-05-04 | DC1-UPSM-L3-CX-2790 | 38d | 19d | PRM |  |
|  | 07 | **DC1-DH2300-UPS-M-R23-01 Cx L3** |  | 2026-04-30 | 2026-05-05 |  |  |  |  |  |
| DC1-UPSM-L3-CX-2810 |  | DC1-UPS-M-R23 FTE | 1d | 2026-04-30 | 2026-04-30 | DC1-UPS-M-L2-2270, DC1-COMP-L3-CX-2820, DC1-FAN-L3-CX-2820, DC1-MOD1-L3-CX-2810, DC1-UPSM-L3-CX-2780 | 12d | 0d | ROS |  |
| DC1-UPSM-L3-CX-2820 |  | DC1-UPS-M-R23 L3 Startup | 2d | 2026-05-01 | 2026-05-04 | DC1-UPSM-L3-CX-2810 | 37d | 0d | VER |  |
| DC1-UPSM-L3-CX-2830 |  | DC1-UPS-M-R23 BMS/EPMS | 1d | 2026-05-05 | 2026-05-05 | DC1-UPSM-L3-CX-2820 | 37d | 18d | PRM |  |
|  | 04 | **DC1-DH2300 COMPRESSOR/FAN UNITS Cx L3** |  | 2026-04-17 | 2026-04-22 |  |  |  |  |  |
|  | 01 | **DC1-DH2300 POD-AC UNITS A23 Cx L3** |  | 2026-04-17 | 2026-04-22 |  |  |  |  |  |
| DC1-COMP-L3-CX-2630 |  | DC1-COMP-A23-01 FTE (2) | 1d | 2026-04-17 | 2026-04-17 | DC1-MOD1-L3-CX-2630 | 12d | 0d | ROS |  |
| DC1-FAN-L3-CX-2630 |  | DC1-FAN-A23-01 FTE (2) | 1d | 2026-04-17 | 2026-04-17 | DC1-MOD1-L3-CX-2630 | 12d | 0d | ROS |  |
| DC1-COMP-L3-CX-2640 |  | DC1-COMP-A23-01 L3 Startup (2) | 2d | 2026-04-20 | 2026-04-21 | DC1-COMP-L3-CX-2630 | 12d | 0d | CAP | Vendor Only |
| DC1-FAN-L3-CX-2640 |  | DC1-FAN-A23-01 L3 Startup (2) | 2d | 2026-04-20 | 2026-04-21 | DC1-FAN-L3-CX-2630 | 12d | 0d | FBB | Vendor Only |
| DC1-COMP-L3-CX-2650 |  | DC1-COMP-A23-01 BMS/EPMS (2) | 1d | 2026-04-22 | 2026-04-22 | DC1-COMP-L3-CX-2640 | 46d |  | PRM |  |
| DC1-FAN-L3-CX-2650 |  | DC1-FAN-A23-01 BMS/EPMS (2) | 1d | 2026-04-22 | 2026-04-22 | DC1-FAN-L3-CX-2640 | 46d |  | PRM |  |

Notes:
- DC1-UPSM-L3-CX-2700: Steps: EC Startup Report; Vendor Startup
- DC1-UPSM-L3-CX-2730: Steps: EC Startup Report; Vendor Startup
- DC1-UPSM-L3-CX-2760: Steps: EC Startup Report; Vendor Startup
- DC1-UPSM-L3-CX-2790: Steps: EC Startup Report; Vendor Startup
- DC1-UPSM-L3-CX-2820: Steps: EC Startup Report; Vendor Startup

| ID | WBS | Activity | Duration | Start | Finish | Predecessors | Total float | Free float | Vendor Responsible Party | Notes |
| --- | --- | --- | --- | --- | --- | --- | --- | --- | --- | --- |
|  | 02 | **DC1-DH2300 POD-AC UNITS B23 Cx L3** |  | 2026-04-17 | 2026-04-22 |  |  |  |  |  |
| DC1-COMP-L3-CX-2660 |  | DC1-COMP-B23-01 FTE (2) | 1d | 2026-04-17 | 2026-04-17 | DC1-MOD1-L3-CX-2660 | 13d | 0d | ROS |  |
| DC1-FAN-L3-CX-2660 |  | DC1-FAN-B23-01 FTE (2) | 1d | 2026-04-17 | 2026-04-17 | DC1-MOD1-L3-CX-2660 | 13d | 0d | ROS |  |
| DC1-COMP-L3-CX-2670 |  | DC1-COMP-B23-01 L3 Startup (2) | 2d | 2026-04-20 | 2026-04-21 | DC1-COMP-L3-CX-2660 | 13d | 0d | CAP | Vendor Only |
| DC1-FAN-L3-CX-2670 |  | DC1-FAN-B23-01 L3 Startup (2) | 2d | 2026-04-20 | 2026-04-21 | DC1-FAN-L3-CX-2660 | 13d | 0d | FBB | Vendor Only |
| DC1-COMP-L3-CX-2680 |  | DC1-COMP-B23-01 BMS/EPMS (2) | 1d | 2026-04-22 | 2026-04-22 | DC1-COMP-L3-CX-2670 | 46d |  | PRM |  |
| DC1-FAN-L3-CX-2680 |  | DC1-FAN-B23-01 BMS/EPMS (2) | 1d | 2026-04-22 | 2026-04-22 | DC1-FAN-L3-CX-2670 | 46d |  | PRM |  |
|  | 03 | **DC1-DH2300 POD-AC UNITS C23 Cx L3** |  | 2026-04-17 | 2026-04-22 |  |  |  |  |  |
| DC1-COMP-L3-CX-2690 |  | DC1-COMP-C23-01 FTE (2) | 1d | 2026-04-17 | 2026-04-17 | DC1-MOD1-L3-CX-2690 | 14d | 0d | ROS |  |
| DC1-FAN-L3-CX-2690 |  | DC1-FAN-C23-01 FTE (2) | 1d | 2026-04-17 | 2026-04-17 | DC1-MOD1-L3-CX-2690 | 14d | 0d | ROS |  |
| DC1-COMP-L3-CX-2700 |  | DC1-COMP-C23-01 L3 Startup (2) | 2d | 2026-04-20 | 2026-04-21 | DC1-COMP-L3-CX-2690 | 14d | 0d | CAP | Vendor Only |
| DC1-FAN-L3-CX-2700 |  | DC1-FAN-C23-01 L3 Startup (2) | 2d | 2026-04-20 | 2026-04-21 | DC1-FAN-L3-CX-2690 | 14d | 0d | FBB | Vendor Only |
| DC1-COMP-L3-CX-2710 |  | DC1-COMP-C23-01 BMS/EPMS (2) | 1d | 2026-04-22 | 2026-04-22 | DC1-COMP-L3-CX-2700 | 46d |  | PRM |  |
| DC1-FAN-L3-CX-2710 |  | DC1-FAN-C23-01 BMS/EPMS (2) | 1d | 2026-04-22 | 2026-04-22 | DC1-FAN-L3-CX-2700 | 46d |  | PRM |  |
|  | 04 | **DC1-DH2300 POD-AC UNITS D23 Cx L3** |  | 2026-04-17 | 2026-04-22 |  |  |  |  |  |
| DC1-COMP-L3-CX-2720 |  | DC1-COMP-D23-01 FTE (2) | 1d | 2026-04-17 | 2026-04-17 | DC1-MOD1-L3-CX-2720 | 15d | 0d | ROS |  |
| DC1-FAN-L3-CX-2720 |  | DC1-FAN-D23-01 FTE (2) | 1d | 2026-04-17 | 2026-04-17 | DC1-MOD1-L3-CX-2720 | 15d | 0d | ROS |  |
| DC1-COMP-L3-CX-2730 |  | DC1-COMP-D23-01 L3 Startup (2) | 2d | 2026-04-20 | 2026-04-21 | DC1-COMP-L3-CX-2720 | 15d | 0d | CAP | Vendor Only |
| DC1-FAN-L3-CX-2730 |  | DC1-FAN-D23-01 L3 Startup (2) | 2d | 2026-04-20 | 2026-04-21 | DC1-FAN-L3-CX-2720 | 15d | 0d | FBB | Vendor Only |
| DC1-COMP-L3-CX-2740 |  | DC1-COMP-D23-01 BMS/EPMS (2) | 1d | 2026-04-22 | 2026-04-22 | DC1-COMP-L3-CX-2730 | 46d |  | PRM |  |
| DC1-FAN-L3-CX-2740 |  | DC1-FAN-D23-01 BMS/EPMS (2) | 1d | 2026-04-22 | 2026-04-22 | DC1-FAN-L3-CX-2730 | 46d |  | PRM |  |
|  | 05 | **DC1-DH2300 POD-AC UNITS E23 Cx L3** |  | 2026-04-17 | 2026-04-22 |  |  |  |  |  |
| DC1-COMP-L3-CX-2750 |  | DC1-COMP-E23-01 FTE (2) | 1d | 2026-04-17 | 2026-04-17 | DC1-MOD1-L3-CX-2750 | 16d | 0d | ROS |  |
| DC1-FAN-L3-CX-2750 |  | DC1-FAN-E23-01 FTE (2) | 1d | 2026-04-17 | 2026-04-17 | DC1-MOD1-L3-CX-2750 | 16d | 0d | ROS |  |
| DC1-COMP-L3-CX-2760 |  | DC1-COMP-E23-01 L3 Startup (2) | 2d | 2026-04-20 | 2026-04-21 | DC1-COMP-L3-CX-2750 | 16d | 0d | CAP | Vendor Only |
| DC1-FAN-L3-CX-2760 |  | DC1-FAN-E23-01 L3 Startup (2) | 2d | 2026-04-20 | 2026-04-21 | DC1-FAN-L3-CX-2750 | 16d | 0d | FBB | Vendor Only |
| DC1-COMP-L3-CX-2770 |  | DC1-COMP-E23-01 BMS/EPMS (2) | 1d | 2026-04-22 | 2026-04-22 | DC1-COMP-L3-CX-2760 | 46d |  | PRM |  |
| DC1-FAN-L3-CX-2770 |  | DC1-FAN-E23-01 BMS/EPMS (2) | 1d | 2026-04-22 | 2026-04-22 | DC1-FAN-L3-CX-2760 | 46d |  | PRM |  |

| ID | WBS | Activity | Duration | Start | Finish | Predecessors | Total float | Free float | Vendor Responsible Party | Notes | Layton Responsible Party |
| --- | --- | --- | --- | --- | --- | --- | --- | --- | --- | --- | --- |
|  | 06 | **DC1-DH2300 POD-AC UNITS F23 Cx L3** |  | 2026-04-17 | 2026-04-22 |  |  |  |  |  |  |
| DC1-COMP-L3-CX-2780 |  | DC1-COMP-F23-01 FTE (2) | 1d | 2026-04-17 | 2026-04-17 | DC1-MOD1-L3-CX-2780 | 17d | 0d | ROS |  |  |
| DC1-FAN-L3-CX-2780 |  | DC1-FAN-F23-01 FTE (2) | 1d | 2026-04-17 | 2026-04-17 | DC1-MOD1-L3-CX-2780 | 17d | 0d | ROS |  |  |
| DC1-COMP-L3-CX-2790 |  | DC1-COMP-F23-01 L3 Startup (2) | 2d | 2026-04-20 | 2026-04-21 | DC1-COMP-L3-CX-2780 | 17d | 0d | CAP | Vendor Only |  |
| DC1-FAN-L3-CX-2790 |  | DC1-FAN-F23-01 L3 Startup (2) | 2d | 2026-04-20 | 2026-04-21 | DC1-FAN-L3-CX-2780 | 17d | 0d | FBB | Vendor Only |  |
| DC1-COMP-L3-CX-2800 |  | DC1-COMP-F23-01 BMS/EPMS (2) | 1d | 2026-04-22 | 2026-04-22 | DC1-COMP-L3-CX-2790 | 46d |  | PRM |  |  |
| DC1-FAN-L3-CX-2800 |  | DC1-FAN-F23-01 BMS/EPMS (2) | 1d | 2026-04-22 | 2026-04-22 | DC1-FAN-L3-CX-2790 | 46d |  | PRM |  |  |
|  | 07 | **DC1-DH2300 POD-AC UNITS R23 Cx L3** |  | 2026-04-17 | 2026-04-22 |  |  |  |  |  |  |
| DC1-COMP-L3-CX-2810 |  | DC1-COMP-R23-01 FTE (2) | 1d | 2026-04-17 | 2026-04-17 | DC1-MOD1-L3-CX-2810 | 18d | 0d | ROS |  |  |
| DC1-FAN-L3-CX-2810 |  | DC1-FAN-R23-01 FTE (2) | 1d | 2026-04-17 | 2026-04-17 | DC1-MOD1-L3-CX-2810 | 18d | 0d | ROS |  |  |
| DC1-COMP-L3-CX-2820 |  | DC1-COMP-R23-01 L3 Startup (2) | 2d | 2026-04-20 | 2026-04-21 | DC1-COMP-L3-CX-2810 | 18d | 0d | CAP | Vendor Only |  |
| DC1-FAN-L3-CX-2820 |  | DC1-FAN-R23-01 L3 Startup (2) | 2d | 2026-04-20 | 2026-04-21 | DC1-FAN-L3-CX-2810 | 18d | 0d | FBB | Vendor Only |  |
| DC1-COMP-L3-CX-2830 |  | DC1-COMP-R23-01 BMS/EPMS (2) | 1d | 2026-04-22 | 2026-04-22 | DC1-COMP-L3-CX-2820 | 46d |  | PRM |  |  |
| DC1-FAN-L3-CX-2830 |  | DC1-FAN-R23-01 BMS/EPMS (2) | 1d | 2026-04-22 | 2026-04-22 | DC1-FAN-L3-CX-2820 | 46d |  | PRM |  |  |
|  | 04 | **DC1-DH2300 BUS-R1X/BUS-R2X Cx L3** |  | 2026-05-05 | 2026-05-11 |  |  |  |  |  |  |
|  | 01 | **DC1-DH2300 BUS-R2 MAINTENANCE BUS DUCT Cx L3** |  | 2026-05-06 | 2026-05-11 |  |  |  |  |  |  |
| DC1-BUS-L3-CX-2180 |  | DC1-DH2300-BUS-R2 (R23) MAINTENANCE BUS FTE | 1d | 2026-05-06 | 2026-05-06 | DC1-BUS-L2-1080, DC1-BUS-L2-1060, DC1-SWD-L3-CX-2810 SS | 0d |  | ROS | CFCI | Riley Warring |
| DC1-BUS-L3-CX-2190 |  | DC1-DH2300-BUS-R2 (R23) MAINTENANCE BUS L3 Startup | 2d | 2026-05-07 | 2026-05-08 | DC1-BUS-L3-CX-2180 | 33d | 0d | LAY | CFCI |  |
| DC1-BUS-L3-CX-2200 |  | DC1-DH2300-BUS-R2 (R23) MAINTENANCE BUS BMS/EPMS | 1d | 2026-05-11 | 2026-05-11 | DC1-BUS-L3-CX-2190 | 33d | 14d | PRM | CFCI |  |
|  | 02 | **DC1-DH2300 BUS-R1 CATCHER BUS DUCT Cx L3** |  | 2026-05-05 | 2026-05-08 |  |  |  |  |  |  |
| DC1-BUS-L3-CX-2210 |  | DC1-DH2300-BUS-R1 (R13) CATCHER BUS FTE | 1d | 2026-05-05 | 2026-05-05 | DC1-BUS-L2-1090, DC1-BUS-L2-1070, DC1-SWD-L3-CX-3020 | 0d |  | ROS | CFCI | Riley Warring |
| DC1-BUS-L3-CX-2220 |  | DC1-DH2300-BUS-R1 (R13) CATCHER BUS L3 Startup | 2d | 2026-05-06 | 2026-05-07 | DC1-BUS-L3-CX-2210 | 34d | 0d | LAY | CFCI |  |
| DC1-BUS-L3-CX-2230 |  | DC1-DH2300-BUS-R1 (R13) CATCHER BUS BMS/EPMS | 1d | 2026-05-08 | 2026-05-08 | DC1-BUS-L3-CX-2220 | 34d | 15d | PRM | CFCI |  |
|  | 05 | **DC1-DH2300 ATS Cx L3** |  | 2026-05-06 | 2026-05-11 |  |  |  |  |  |  |
|  | 01 | **DC1-DH2300 ATS-A23 Cx L3** |  | 2026-05-06 | 2026-05-11 |  |  |  |  |  |  |
|  | 01 | **DC1-DH2300-ATS-A23-01 Cx L3** |  | 2026-05-06 | 2026-05-11 |  |  |  |  |  |  |
| DC1-ATS-L3-CX-4705 |  | DC1-ATS-A23-01 FTE | 1d | 2026-05-06 | 2026-05-06 | DC1-ATS-L2-3080, DC1-BUS-L3-CX-2180 SS, DC1-SWD-L3-CX-2630 SS | 0d |  | ROS | SWD - FS | Riley Warring |
| DC1-ATS-L3-CX-4715 |  | DC1-ATS-A23-01 L3 Startup | 2d | 2026-05-07 | 2026-05-08 | DC1-ATS-L3-CX-4705 | 33d | 0d | MAV |  |  |
| DC1-ATS-L3-CX-4725 |  | DC1-ATS-A23-01 BMS/EPMS | 1d | 2026-05-11 | 2026-05-11 | DC1-ATS-L3-CX-4715 | 33d | 14d | PRM |  |  |

Notes:
- DC1-BUS-L3-CX-2190: Steps: EC Startup Report; Vendor Startup
- DC1-BUS-L3-CX-2220: Steps: EC Startup Report; Vendor Startup
- DC1-ATS-L3-CX-4715: Steps: EC Startup Report; Vendor Startup

| ID | WBS | Activity | Duration | Start | Finish | Predecessors | Total float | Free float | Notes | Layton Responsible Party | Vendor Responsible Party |
| --- | --- | --- | --- | --- | --- | --- | --- | --- | --- | --- | --- |
|  | 02 | **DC1-DH2300-ATS-A23-02 Cx L3** |  | 2026-05-06 | 2026-05-11 |  |  |  |  |  |  |
| DC1-ATS-L3-CX-4735 |  | DC1-ATS-A23-02 FTE | 1d | 2026-05-06 | 2026-05-06 | DC1-ATS-L2-3090, DC1-BUS-L3-CX-2180 SS, DC1-BUS-L3-CX-2210 SS | 0d |  | SWD - FS | Riley Warring | ROS |
| DC1-ATS-L3-CX-4745 |  | DC1-ATS-A23-02 L3 Startup | 2d | 2026-05-07 | 2026-05-08 | DC1-ATS-L3-CX-4735 | 33d | 0d |  |  | MAV |
| DC1-ATS-L3-CX-4755 |  | DC1-ATS-A23-02 BMS/EPMS | 1d | 2026-05-11 | 2026-05-11 | DC1-ATS-L3-CX-4745 | 33d | 14d |  |  | PRM |
|  | 03 | **DC1-DH2300-ATS-A23-03 Cx L3** |  | 2026-05-06 | 2026-05-11 |  |  |  |  |  |  |
| DC1-ATS-L3-CX-4765 |  | DC1-ATS-A23-03 FTE | 1d | 2026-05-06 | 2026-05-06 | DC1-ATS-L2-3100, DC1-BUS-L3-CX-2180 SS, DC1-SWD-L3-CX-2630 SS | 0d |  | SWD - FS | Riley Warring | ROS |
| DC1-ATS-L3-CX-4775 |  | DC1-ATS-A23-03 L3 Startup | 2d | 2026-05-07 | 2026-05-08 | DC1-ATS-L3-CX-4765 | 33d | 0d |  |  | MAV |
| DC1-ATS-L3-CX-4785 |  | DC1-ATS-A23-03 BMS/EPMS | 1d | 2026-05-11 | 2026-05-11 | DC1-ATS-L3-CX-4775 | 33d | 14d |  |  | PRM |
|  | 04 | **DC1-DH2300-ATS-A23-04 Cx L3** |  | 2026-05-06 | 2026-05-11 |  |  |  |  |  |  |
| DC1-ATS-L3-CX-4795 |  | DC1-ATS-A23-04 FTE | 1d | 2026-05-06 | 2026-05-06 | DC1-ATS-L2-3110, DC1-BUS-L3-CX-2180 SS, DC1-BUS-L3-CX-2210 SS | 0d |  | SWD - FS | Riley Warring | ROS |
| DC1-ATS-L3-CX-4805 |  | DC1-ATS-A23-04 L3 Startup | 2d | 2026-05-07 | 2026-05-08 | DC1-ATS-L3-CX-4795 | 33d | 0d |  |  | MAV |
| DC1-ATS-L3-CX-4815 |  | DC1-ATS-A23-04 BMS/EPMS | 1d | 2026-05-11 | 2026-05-11 | DC1-ATS-L3-CX-4805 | 33d | 14d |  |  | PRM |
|  | 05 | **DC1-DH2300-ATS-A23-05 Cx L3** |  | 2026-05-06 | 2026-05-11 |  |  |  |  |  |  |
| DC1-ATS-L3-CX-4825 |  | DC1-ATS-A23-05 FTE | 1d | 2026-05-06 | 2026-05-06 | DC1-ATS-L2-3120, DC1-BUS-L3-CX-2180 SS, DC1-SWD-L3-CX-2630 SS | 0d |  | SWD - FS | Riley Warring | ROS |
| DC1-ATS-L3-CX-4835 |  | DC1-ATS-A23-05 L3 Startup | 2d | 2026-05-07 | 2026-05-08 | DC1-ATS-L3-CX-4825 | 33d | 0d |  |  | MAV |
| DC1-ATS-L3-CX-4845 |  | DC1-ATS-A23-05 BMS/EPMS | 1d | 2026-05-11 | 2026-05-11 | DC1-ATS-L3-CX-4835 | 33d | 14d |  |  | PRM |
|  | 06 | **DC1-DH2300-ATS-A23-06 Cx L3** |  | 2026-05-06 | 2026-05-11 |  |  |  |  |  |  |
| DC1-ATS-L3-CX-4855 |  | DC1-ATS-A23-06 FTE | 1d | 2026-05-06 | 2026-05-06 | DC1-BUS-L3-CX-2180 SS, DC1-BUS-L3-CX-2210 SS, DC1-ATS-L2-3130 | 0d |  | SWD - FS | Riley Warring | ROS |
| DC1-ATS-L3-CX-4865 |  | DC1-ATS-A23-06 L3 Startup | 2d | 2026-05-07 | 2026-05-08 | DC1-ATS-L3-CX-4855 | 33d | 0d |  |  | MAV |
| DC1-ATS-L3-CX-4875 |  | DC1-ATS-A23-06 BMS/EPMS | 1d | 2026-05-11 | 2026-05-11 | DC1-ATS-L3-CX-4865 | 33d | 14d |  |  | PRM |
|  | 02 | **DC1-DH2300 ATS-B23 Cx L3** |  | 2026-05-06 | 2026-05-11 |  |  |  |  |  |  |
|  | 01 | **DC1-DH2300-ATS-B23-01 Cx L3** |  | 2026-05-06 | 2026-05-11 |  |  |  |  |  |  |
| DC1-ATS-L3-CX-4885 |  | DC1-ATS-B23-01 FTE | 1d | 2026-05-06 | 2026-05-06 | DC1-ATS-L2-3140, DC1-BUS-L3-CX-2180 SS, DC1-SWD-L3-CX-2660 SS | 0d |  |  | Riley Warring | ROS |
| DC1-ATS-L3-CX-4895 |  | DC1-ATS-B23-01 L3 Startup | 2d | 2026-05-07 | 2026-05-08 | DC1-ATS-L3-CX-4885 | 33d | 0d |  |  | MAV |
| DC1-ATS-L3-CX-4905 |  | DC1-ATS-B23-01 BMS/EPMS | 1d | 2026-05-11 | 2026-05-11 | DC1-ATS-L3-CX-4895 | 33d | 14d |  |  | PRM |

Notes:
- DC1-ATS-L3-CX-4745: Steps: EC Startup Report; Vendor Startup
- DC1-ATS-L3-CX-4775: Steps: EC Startup Report; Vendor Startup
- DC1-ATS-L3-CX-4805: Steps: EC Startup Report; Vendor Startup
- DC1-ATS-L3-CX-4835: Steps: EC Startup Report; Vendor Startup
- DC1-ATS-L3-CX-4865: Steps: EC Startup Report; Vendor Startup
- DC1-ATS-L3-CX-4895: Steps: EC Startup Report; Vendor Startup

| ID | WBS | Activity | Duration | Start | Finish | Predecessors | Total float | Free float | Layton Responsible Party | Vendor Responsible Party |
| --- | --- | --- | --- | --- | --- | --- | --- | --- | --- | --- |
|  | 02 | **DC1-DH2300-ATS-B23-02 Cx L3** |  | 2026-05-06 | 2026-05-11 |  |  |  |  |  |
| DC1-ATS-L3-CX-4915 |  | DC1-ATS-B23-02 FTE | 1d | 2026-05-06 | 2026-05-06 | DC1-ATS-L2-3150, DC1-BUS-L3-CX-2180 SS, DC1-BUS-L3-CX-2210 | 0d |  | Riley Warring | ROS |
| DC1-ATS-L3-CX-4925 |  | DC1-ATS-B23-02 L3 Startup | 2d | 2026-05-07 | 2026-05-08 | DC1-ATS-L3-CX-4915 | 33d | 0d |  | MAV |
| DC1-ATS-L3-CX-4935 |  | DC1-ATS-B23-02 BMS/EPMS | 1d | 2026-05-11 | 2026-05-11 | DC1-ATS-L3-CX-4925 | 33d | 14d |  | PRM |
|  | 03 | **DC1-DH2300-ATS-B23-03 Cx L3** |  | 2026-05-06 | 2026-05-11 |  |  |  |  |  |
| DC1-ATS-L3-CX-4945 |  | DC1-ATS-B23-03 FTE | 1d | 2026-05-06 | 2026-05-06 | DC1-ATS-L2-3160, DC1-BUS-L3-CX-2180 SS, DC1-SWD-L3-CX-2660 SS | 0d |  | Riley Warring | ROS |
| DC1-ATS-L3-CX-4955 |  | DC1-ATS-B23-03 L3 Startup | 2d | 2026-05-07 | 2026-05-08 | DC1-ATS-L3-CX-4945 | 33d | 0d |  | MAV |
| DC1-ATS-L3-CX-4965 |  | DC1-ATS-B23-03 BMS/EPMS | 1d | 2026-05-11 | 2026-05-11 | DC1-ATS-L3-CX-4955 | 33d | 14d |  | PRM |
|  | 04 | **DC1-DH2300-ATS-B23-04 Cx L3** |  | 2026-05-06 | 2026-05-11 |  |  |  |  |  |
| DC1-ATS-L3-CX-4975 |  | DC1-ATS-B23-04 FTE | 1d | 2026-05-06 | 2026-05-06 | DC1-ATS-L2-3170, DC1-BUS-L3-CX-2180 SS, DC1-BUS-L3-CX-2210 | 0d |  | Riley Warring | ROS |
| DC1-ATS-L3-CX-4985 |  | DC1-ATS-B23-04 L3 Startup | 2d | 2026-05-07 | 2026-05-08 | DC1-ATS-L3-CX-4975 | 33d | 0d |  | MAV |
| DC1-ATS-L3-CX-4995 |  | DC1-ATS-B23-04 BMS/EPMS | 1d | 2026-05-11 | 2026-05-11 | DC1-ATS-L3-CX-4985 | 33d | 14d |  | PRM |
|  | 05 | **DC1-DH2300-ATS-B23-05 Cx L3** |  | 2026-05-06 | 2026-05-11 |  |  |  |  |  |
| DC1-ATS-L3-CX-5005 |  | DC1-ATS-B23-05 FTE | 1d | 2026-05-06 | 2026-05-06 | DC1-ATS-L2-3180, DC1-BUS-L3-CX-2180 SS, DC1-SWD-L3-CX-2660 SS | 0d |  | Riley Warring | ROS |
| DC1-ATS-L3-CX-5015 |  | DC1-ATS-B23-05 L3 Startup | 2d | 2026-05-07 | 2026-05-08 | DC1-ATS-L3-CX-5005 | 33d | 0d |  | MAV |
| DC1-ATS-L3-CX-5025 |  | DC1-ATS-B23-05 BMS/EPMS | 1d | 2026-05-11 | 2026-05-11 | DC1-ATS-L3-CX-5015 | 33d | 14d |  | PRM |
|  | 06 | **DC1-DH2300-ATS-B23-06 Cx L3** |  | 2026-05-06 | 2026-05-11 |  |  |  |  |  |
| DC1-ATS-L3-CX-5035 |  | DC1-ATS-B23-06 FTE | 1d | 2026-05-06 | 2026-05-06 | DC1-ATS-L2-3190, DC1-BUS-L3-CX-2180 SS, DC1-BUS-L3-CX-2210 | 0d |  | Riley Warring | ROS |
| DC1-ATS-L3-CX-5045 |  | DC1-ATS-B23-06 L3 Startup | 2d | 2026-05-07 | 2026-05-08 | DC1-ATS-L3-CX-5035 | 33d | 0d |  | MAV |
| DC1-ATS-L3-CX-5055 |  | DC1-ATS-B23-06 BMS/EPMS | 1d | 2026-05-11 | 2026-05-11 | DC1-ATS-L3-CX-5045 | 33d | 14d |  | PRM |
|  | 03 | **DC1-DH2300 ATS-C23 Cx L3** |  | 2026-05-06 | 2026-05-11 |  |  |  |  |  |
|  | 01 | **DC1-DH2300-ATS-C23-01 Cx L3** |  | 2026-05-06 | 2026-05-11 |  |  |  |  |  |
| DC1-ATS-L3-CX-5065 |  | DC1-ATS-C23-01 FTE | 1d | 2026-05-06 | 2026-05-06 | DC1-ATS-L2-3200, DC1-BUS-L3-CX-2180 SS, DC1-SWD-L3-CX-2690 SS | 0d |  | Riley Warring | ROS |
| DC1-ATS-L3-CX-5075 |  | DC1-ATS-C23-01 L3 Startup | 2d | 2026-05-07 | 2026-05-08 | DC1-ATS-L3-CX-5065 | 33d | 0d |  | MAV |
| DC1-ATS-L3-CX-5085 |  | DC1-ATS-C23-01 BMS/EPMS | 1d | 2026-05-11 | 2026-05-11 | DC1-ATS-L3-CX-5075 | 33d | 14d |  | PRM |

Notes:
- DC1-ATS-L3-CX-4925: Steps: EC Startup Report; Vendor Startup
- DC1-ATS-L3-CX-4955: Steps: EC Startup Report; Vendor Startup
- DC1-ATS-L3-CX-4985: Steps: EC Startup Report; Vendor Startup
- DC1-ATS-L3-CX-5015: Steps: EC Startup Report; Vendor Startup
- DC1-ATS-L3-CX-5045: Steps: EC Startup Report; Vendor Startup
- DC1-ATS-L3-CX-5075: Steps: EC Startup Report; Vendor Startup

| ID | WBS | Activity | Duration | Start | Finish | Predecessors | Total float | Free float | Layton Responsible Party | Vendor Responsible Party |
| --- | --- | --- | --- | --- | --- | --- | --- | --- | --- | --- |
|  | 02 | **DC1-DH2300-ATS-C23-02 Cx L3** |  | 2026-05-06 | 2026-05-11 |  |  |  |  |  |
| DC1-ATS-L3-CX-5095 |  | DC1-ATS-C23-02 FTE | 1d | 2026-05-06 | 2026-05-06 | DC1-ATS-L2-3210, DC1-BUS-L3-CX-2180 SS, DC1-BUS-L3-CX-2210 | 0d |  | Riley Warring | ROS |
| DC1-ATS-L3-CX-5105 |  | DC1-ATS-C23-02 L3 Startup | 2d | 2026-05-07 | 2026-05-08 | DC1-ATS-L3-CX-5095 | 33d | 0d |  | MAV |
| DC1-ATS-L3-CX-5115 |  | DC1-ATS-C23-02 BMS/EPMS | 1d | 2026-05-11 | 2026-05-11 | DC1-ATS-L3-CX-5105 | 33d | 14d |  | PRM |
|  | 03 | **DC1-DH2300-ATS-C23-03 Cx L3** |  | 2026-05-06 | 2026-05-11 |  |  |  |  |  |
| DC1-ATS-L3-CX-5125 |  | DC1-ATS-C23-03 FTE | 1d | 2026-05-06 | 2026-05-06 | DC1-ATS-L2-3220, DC1-BUS-L3-CX-2180 SS, DC1-SWD-L3-CX-2690 SS | 0d |  | Riley Warring | ROS |
| DC1-ATS-L3-CX-5135 |  | DC1-ATS-C23-03 L3 Startup | 2d | 2026-05-07 | 2026-05-08 | DC1-ATS-L3-CX-5125 | 33d | 0d |  | MAV |
| DC1-ATS-L3-CX-5145 |  | DC1-ATS-C23-03 BMS/EPMS | 1d | 2026-05-11 | 2026-05-11 | DC1-ATS-L3-CX-5135 | 33d | 14d |  | PRM |
|  | 04 | **DC1-DH2300-ATS-C23-04 Cx L3** |  | 2026-05-06 | 2026-05-11 |  |  |  |  |  |
| DC1-ATS-L3-CX-5155 |  | DC1-ATS-C23-04 FTE | 1d | 2026-05-06 | 2026-05-06 | DC1-ATS-L2-3230, DC1-BUS-L3-CX-2180 SS, DC1-BUS-L3-CX-2210 | 0d |  | Riley Warring | ROS |
| DC1-ATS-L3-CX-5165 |  | DC1-ATS-C23-04 L3 Startup | 2d | 2026-05-07 | 2026-05-08 | DC1-ATS-L3-CX-5155 | 33d | 0d |  | MAV |
| DC1-ATS-L3-CX-5175 |  | DC1-ATS-C23-04 BMS/EPMS | 1d | 2026-05-11 | 2026-05-11 | DC1-ATS-L3-CX-5165 | 33d | 14d |  | PRM |
|  | 05 | **DC1-DH2300-ATS-C23-05 Cx L3** |  | 2026-05-06 | 2026-05-11 |  |  |  |  |  |
| DC1-ATS-L3-CX-5185 |  | DC1-ATS-C23-05 FTE | 1d | 2026-05-06 | 2026-05-06 | DC1-ATS-L2-3240, DC1-BUS-L3-CX-2180 SS, DC1-SWD-L3-CX-2690 SS | 0d |  | Riley Warring | ROS |
| DC1-ATS-L3-CX-5195 |  | DC1-ATS-C23-05 L3 Startup | 2d | 2026-05-07 | 2026-05-08 | DC1-ATS-L3-CX-5185 | 33d | 0d |  | MAV |
| DC1-ATS-L3-CX-5205 |  | DC1-ATS-C23-05 BMS/EPMS | 1d | 2026-05-11 | 2026-05-11 | DC1-ATS-L3-CX-5195 | 33d | 14d |  | PRM |
|  | 06 | **DC1-DH2300-ATS-C23-06 Cx L3** |  | 2026-05-06 | 2026-05-11 |  |  |  |  |  |
| DC1-ATS-L3-CX-5215 |  | DC1-ATS-C23-06 FTE | 1d | 2026-05-06 | 2026-05-06 | DC1-ATS-L2-3250, DC1-BUS-L3-CX-2180 SS, DC1-BUS-L3-CX-2210 | 0d |  | Riley Warring | ROS |
| DC1-ATS-L3-CX-5225 |  | DC1-ATS-C23-06 L3 Startup | 2d | 2026-05-07 | 2026-05-08 | DC1-ATS-L3-CX-5215 | 33d | 0d |  | MAV |
| DC1-ATS-L3-CX-5235 |  | DC1-ATS-C23-06 BMS/EPMS | 1d | 2026-05-11 | 2026-05-11 | DC1-ATS-L3-CX-5225 | 33d | 14d |  | PRM |
|  | 04 | **DC1-DH2300 ATS-D23 Cx L3** |  | 2026-05-06 | 2026-05-11 |  |  |  |  |  |
|  | 01 | **DC1-DH2300-ATS-D23-01 Cx L3** |  | 2026-05-06 | 2026-05-11 |  |  |  |  |  |
| DC1-ATS-L3-CX-5245 |  | DC1-ATS-D23-01 FTE | 1d | 2026-05-06 | 2026-05-06 | DC1-ATS-L2-3260, DC1-BUS-L3-CX-2180 SS, DC1-SWD-L3-CX-2720 SS | 0d |  | Riley Warring | ROS |
| DC1-ATS-L3-CX-5255 |  | DC1-ATS-D23-01 L3 Startup | 2d | 2026-05-07 | 2026-05-08 | DC1-ATS-L3-CX-5245 | 33d | 0d |  | MAV |
| DC1-ATS-L3-CX-5265 |  | DC1-ATS-D23-01 BMS/EPMS | 1d | 2026-05-11 | 2026-05-11 | DC1-ATS-L3-CX-5255 | 33d | 14d |  | PRM |

Notes:
- DC1-ATS-L3-CX-5105: Steps: EC Startup Report; Vendor Startup
- DC1-ATS-L3-CX-5135: Steps: EC Startup Report; Vendor Startup
- DC1-ATS-L3-CX-5165: Steps: EC Startup Report; Vendor Startup
- DC1-ATS-L3-CX-5195: Steps: EC Startup Report; Vendor Startup
- DC1-ATS-L3-CX-5225: Steps: EC Startup Report; Vendor Startup
- DC1-ATS-L3-CX-5255: Steps: EC Startup Report; Vendor Startup

| ID | WBS | Activity | Duration | Start | Finish | Predecessors | Total float | Free float | Layton Responsible Party | Vendor Responsible Party |
| --- | --- | --- | --- | --- | --- | --- | --- | --- | --- | --- |
|  | 02 | **DC1-DH2300-ATS-D23-02 Cx L3** |  | 2026-05-06 | 2026-05-11 |  |  |  |  |  |
| DC1-ATS-L3-CX-5275 |  | DC1-ATS-D23-02 FTE | 1d | 2026-05-06 | 2026-05-06 | DC1-ATS-L2-3270, DC1-BUS-L3-CX-2180 SS, DC1-BUS-L3-CX-2210 | 0d |  | Riley Warring | ROS |
| DC1-ATS-L3-CX-5285 |  | DC1-ATS-D23-02 L3 Startup | 2d | 2026-05-07 | 2026-05-08 | DC1-ATS-L3-CX-5275 | 33d | 0d |  | MAV |
| DC1-ATS-L3-CX-5295 |  | DC1-ATS-D23-02 BMS/EPMS | 1d | 2026-05-11 | 2026-05-11 | DC1-ATS-L3-CX-5285 | 33d | 14d |  | PRM |
|  | 03 | **DC1-DH2300-ATS-D23-03 Cx L3** |  | 2026-05-06 | 2026-05-11 |  |  |  |  |  |
| DC1-ATS-L3-CX-5305 |  | DC1-ATS-D23-03 FTE | 1d | 2026-05-06 | 2026-05-06 | DC1-ATS-L2-3280, DC1-BUS-L3-CX-2180 SS, DC1-SWD-L3-CX-2720 SS | 0d |  | Riley Warring | ROS |
| DC1-ATS-L3-CX-5315 |  | DC1-ATS-D23-03 L3 Startup | 2d | 2026-05-07 | 2026-05-08 | DC1-ATS-L3-CX-5305 | 33d | 0d |  | MAV |
| DC1-ATS-L3-CX-5325 |  | DC1-ATS-D23-03 BMS/EPMS | 1d | 2026-05-11 | 2026-05-11 | DC1-ATS-L3-CX-5315 | 33d | 14d |  | PRM |
|  | 04 | **DC1-DH2300-ATS-D23-04 Cx L3** |  | 2026-05-06 | 2026-05-11 |  |  |  |  |  |
| DC1-ATS-L3-CX-5335 |  | DC1-ATS-D23-04 FTE | 1d | 2026-05-06 | 2026-05-06 | DC1-ATS-L2-3290, DC1-BUS-L3-CX-2180 SS, DC1-BUS-L3-CX-2210 | 0d |  | Riley Warring | ROS |
| DC1-ATS-L3-CX-5345 |  | DC1-ATS-D23-04 L3 Startup | 2d | 2026-05-07 | 2026-05-08 | DC1-ATS-L3-CX-5335 | 33d | 0d |  | MAV |
| DC1-ATS-L3-CX-5355 |  | DC1-ATS-D23-04 BMS/EPMS | 1d | 2026-05-11 | 2026-05-11 | DC1-ATS-L3-CX-5345 | 33d | 14d |  | PRM |
|  | 05 | **DC1-DH2300-ATS-D23-05 Cx L3** |  | 2026-05-06 | 2026-05-11 |  |  |  |  |  |
| DC1-ATS-L3-CX-5365 |  | DC1-ATS-D23-05 FTE | 1d | 2026-05-06 | 2026-05-06 | DC1-ATS-L2-3300, DC1-BUS-L3-CX-2180 SS, DC1-SWD-L3-CX-2720 SS | 0d |  | Riley Warring | ROS |
| DC1-ATS-L3-CX-5375 |  | DC1-ATS-D23-05 L3 Startup | 2d | 2026-05-07 | 2026-05-08 | DC1-ATS-L3-CX-5365 | 33d | 0d |  | MAV |
| DC1-ATS-L3-CX-5385 |  | DC1-ATS-D23-05 BMS/EPMS | 1d | 2026-05-11 | 2026-05-11 | DC1-ATS-L3-CX-5375 | 33d | 14d |  | PRM |
|  | 06 | **DC1-DH2300-ATS-D23-06 Cx L3** |  | 2026-05-06 | 2026-05-11 |  |  |  |  |  |
| DC1-ATS-L3-CX-5395 |  | DC1-ATS-D23-06 FTE | 1d | 2026-05-06 | 2026-05-06 | DC1-ATS-L2-3310, DC1-BUS-L3-CX-2180 SS, DC1-BUS-L3-CX-2210 | 0d |  | Riley Warring | ROS |
| DC1-ATS-L3-CX-5405 |  | DC1-ATS-D23-06 L3 Startup | 2d | 2026-05-07 | 2026-05-08 | DC1-ATS-L3-CX-5395 | 33d | 0d |  | MAV |
| DC1-ATS-L3-CX-5415 |  | DC1-ATS-D23-06 BMS/EPMS | 1d | 2026-05-11 | 2026-05-11 | DC1-ATS-L3-CX-5405 | 33d | 14d |  | PRM |
|  | 05 | **DC1-DH2300 ATS-E23 Cx L3** |  | 2026-05-06 | 2026-05-11 |  |  |  |  |  |
|  | 01 | **DC1-DH2300-ATS-E23-01 Cx L3** |  | 2026-05-06 | 2026-05-11 |  |  |  |  |  |
| DC1-ATS-L3-CX-5425 |  | DC1-ATS-E23-01 FTE | 1d | 2026-05-06 | 2026-05-06 | DC1-ATS-L2-3320, DC1-BUS-L3-CX-2180 SS, DC1-SWD-L3-CX-2750 SS | 0d |  | Riley Warring | ROS |
| DC1-ATS-L3-CX-5435 |  | DC1-ATS-E23-01 L3 Startup | 2d | 2026-05-07 | 2026-05-08 | DC1-ATS-L3-CX-5425 | 33d | 0d |  | MAV |
| DC1-ATS-L3-CX-5445 |  | DC1-ATS-E23-01 BMS/EPMS | 1d | 2026-05-11 | 2026-05-11 | DC1-ATS-L3-CX-5435 | 33d | 14d |  | PRM |

Notes:
- DC1-ATS-L3-CX-5285: Steps: EC Startup Report; Vendor Startup
- DC1-ATS-L3-CX-5315: Steps: EC Startup Report; Vendor Startup
- DC1-ATS-L3-CX-5345: Steps: EC Startup Report; Vendor Startup
- DC1-ATS-L3-CX-5375: Steps: EC Startup Report; Vendor Startup
- DC1-ATS-L3-CX-5405: Steps: EC Startup Report; Vendor Startup
- DC1-ATS-L3-CX-5435: Steps: EC Startup Report; Vendor Startup

| ID | WBS | Activity | Duration | Start | Finish | Predecessors | Total float | Free float | Layton Responsible Party | Vendor Responsible Party |
| --- | --- | --- | --- | --- | --- | --- | --- | --- | --- | --- |
|  | 02 | **DC1-DH2300-ATS-E23-02 Cx L3** |  | 2026-05-06 | 2026-05-11 |  |  |  |  |  |
| DC1-ATS-L3-CX-5455 |  | DC1-ATS-E23-02 FTE | 1d | 2026-05-06 | 2026-05-06 | DC1-ATS-L2-3330, DC1-BUS-L3-CX-2180 SS, DC1-BUS-L3-CX-2210 | 0d |  | Riley Warring | ROS |
| DC1-ATS-L3-CX-5465 |  | DC1-ATS-E23-02 L3 Startup | 2d | 2026-05-07 | 2026-05-08 | DC1-ATS-L3-CX-5455 | 33d | 0d |  | MAV |
| DC1-ATS-L3-CX-5475 |  | DC1-ATS-E23-02 BMS/EPMS | 1d | 2026-05-11 | 2026-05-11 | DC1-ATS-L3-CX-5465 | 33d | 14d |  | PRM |
|  | 03 | **DC1-DH2300-ATS-E23-03 Cx L3** |  | 2026-05-06 | 2026-05-11 |  |  |  |  |  |
| DC1-ATS-L3-CX-5485 |  | DC1-ATS-E23-03 FTE | 1d | 2026-05-06 | 2026-05-06 | DC1-ATS-L2-3340, DC1-BUS-L3-CX-2180 SS, DC1-SWD-L3-CX-2750 SS | 0d |  | Riley Warring | ROS |
| DC1-ATS-L3-CX-5495 |  | DC1-ATS-E23-03 L3 Startup | 2d | 2026-05-07 | 2026-05-08 | DC1-ATS-L3-CX-5485 | 33d | 0d |  | MAV |
| DC1-ATS-L3-CX-5505 |  | DC1-ATS-E23-03 BMS/EPMS | 1d | 2026-05-11 | 2026-05-11 | DC1-ATS-L3-CX-5495 | 33d | 14d |  | PRM |
|  | 04 | **DC1-DH2300-ATS-E23-04 Cx L3** |  | 2026-05-06 | 2026-05-11 |  |  |  |  |  |
| DC1-ATS-L3-CX-5515 |  | DC1-ATS-E23-04 FTE | 1d | 2026-05-06 | 2026-05-06 | DC1-ATS-L2-3350, DC1-BUS-L3-CX-2180 SS, DC1-BUS-L3-CX-2210 | 0d |  | Riley Warring | ROS |
| DC1-ATS-L3-CX-5525 |  | DC1-ATS-E23-04 L3 Startup | 2d | 2026-05-07 | 2026-05-08 | DC1-ATS-L3-CX-5515 | 33d | 0d |  | MAV |
| DC1-ATS-L3-CX-5535 |  | DC1-ATS-E23-04 BMS/EPMS | 1d | 2026-05-11 | 2026-05-11 | DC1-ATS-L3-CX-5525 | 33d | 14d |  | PRM |
|  | 05 | **DC1-DH2300-ATS-E23-05 Cx L3** |  | 2026-05-06 | 2026-05-11 |  |  |  |  |  |
| DC1-ATS-L3-CX-5545 |  | DC1-ATS-E23-05 FTE | 1d | 2026-05-06 | 2026-05-06 | DC1-ATS-L2-3360, DC1-BUS-L3-CX-2180 SS, DC1-SWD-L3-CX-2750 SS | 0d |  | Riley Warring | ROS |
| DC1-ATS-L3-CX-5555 |  | DC1-ATS-E23-05 L3 Startup | 2d | 2026-05-07 | 2026-05-08 | DC1-ATS-L3-CX-5545 | 33d | 0d |  | MAV |
| DC1-ATS-L3-CX-5565 |  | DC1-ATS-E23-05 BMS/EPMS | 1d | 2026-05-11 | 2026-05-11 | DC1-ATS-L3-CX-5555 | 33d | 14d |  | PRM |
|  | 06 | **DC1-DH2300-ATS-E23-06 Cx L3** |  | 2026-05-06 | 2026-05-11 |  |  |  |  |  |
| DC1-ATS-L3-CX-5575 |  | DC1-ATS-E23-06 FTE | 1d | 2026-05-06 | 2026-05-06 | DC1-ATS-L2-3370, DC1-BUS-L3-CX-2180 SS, DC1-BUS-L3-CX-2210 | 0d |  | Riley Warring | ROS |
| DC1-ATS-L3-CX-5585 |  | DC1-ATS-E23-06 L3 Startup | 2d | 2026-05-07 | 2026-05-08 | DC1-ATS-L3-CX-5575 | 33d | 0d |  | MAV |
| DC1-ATS-L3-CX-5595 |  | DC1-ATS-E23-06 BMS/EPMS | 1d | 2026-05-11 | 2026-05-11 | DC1-ATS-L3-CX-5585 | 33d | 14d |  | PRM |
|  | 06 | **DC1-DH2300 ATS-F23 Cx L3** |  | 2026-05-06 | 2026-05-11 |  |  |  |  |  |
|  | 01 | **DC1-DH2300-ATS-F23-01 Cx L3** |  | 2026-05-06 | 2026-05-11 |  |  |  |  |  |
| DC1-ATS-L3-CX-5605 |  | DC1-ATS-F23-01 FTE | 1d | 2026-05-06 | 2026-05-06 | DC1-ATS-L2-3380, DC1-BUS-L3-CX-2180 SS, DC1-SWD-L3-CX-2780 SS | 0d |  | Riley Warring | ROS |
| DC1-ATS-L3-CX-5615 |  | DC1-ATS-F23-01 L3 Startup | 2d | 2026-05-07 | 2026-05-08 | DC1-ATS-L3-CX-5605 | 33d | 0d |  | MAV |
| DC1-ATS-L3-CX-5625 |  | DC1-ATS-F23-01 BMS/EPMS | 1d | 2026-05-11 | 2026-05-11 | DC1-ATS-L3-CX-5615 | 33d | 14d |  | PRM |

Notes:
- DC1-ATS-L3-CX-5465: Steps: EC Startup Report; Vendor Startup
- DC1-ATS-L3-CX-5495: Steps: EC Startup Report; Vendor Startup
- DC1-ATS-L3-CX-5525: Steps: EC Startup Report; Vendor Startup
- DC1-ATS-L3-CX-5555: Steps: EC Startup Report; Vendor Startup
- DC1-ATS-L3-CX-5585: Steps: EC Startup Report; Vendor Startup
- DC1-ATS-L3-CX-5615: Steps: EC Startup Report; Vendor Startup

| ID | WBS | Activity | Duration | Start | Finish | Predecessors | Total float | Free float | Layton Responsible Party | Vendor Responsible Party |
| --- | --- | --- | --- | --- | --- | --- | --- | --- | --- | --- |
|  | 02 | **DC1-DH2300-ATS-F23-02 Cx L3** |  | 2026-05-06 | 2026-05-11 |  |  |  |  |  |
| DC1-ATS-L3-CX-5635 |  | DC1-ATS-F23-02 FTE | 1d | 2026-05-06 | 2026-05-06 | DC1-ATS-L2-3390, DC1-BUS-L3-CX-2180 SS, DC1-BUS-L3-CX-2210 | 0d |  | Riley Warring | ROS |
| DC1-ATS-L3-CX-5645 |  | DC1-ATS-F23-02 L3 Startup | 2d | 2026-05-07 | 2026-05-08 | DC1-ATS-L3-CX-5635 | 33d | 0d |  | MAV |
| DC1-ATS-L3-CX-5655 |  | DC1-ATS-F23-02 BMS/EPMS | 1d | 2026-05-11 | 2026-05-11 | DC1-ATS-L3-CX-5645 | 33d | 14d |  | PRM |
|  | 03 | **DC1-DH2300-ATS-F23-03 Cx L3** |  | 2026-05-06 | 2026-05-11 |  |  |  |  |  |
| DC1-ATS-L3-CX-5665 |  | DC1-ATS-F23-03 FTE | 1d | 2026-05-06 | 2026-05-06 | DC1-ATS-L2-3400, DC1-BUS-L3-CX-2180 SS, DC1-SWD-L3-CX-2780 SS | 0d |  | Riley Warring | ROS |
| DC1-ATS-L3-CX-5675 |  | DC1-ATS-F23-03 L3 Startup | 2d | 2026-05-07 | 2026-05-08 | DC1-ATS-L3-CX-5665 | 33d | 0d |  | MAV |
| DC1-ATS-L3-CX-5685 |  | DC1-ATS-F23-03 BMS/EPMS | 1d | 2026-05-11 | 2026-05-11 | DC1-ATS-L3-CX-5675 | 33d | 14d |  | PRM |
|  | 04 | **DC1-DH2300-ATS-F23-04 Cx L3** |  | 2026-05-06 | 2026-05-11 |  |  |  |  |  |
| DC1-ATS-L3-CX-5695 |  | DC1-ATS-F23-04 FTE | 1d | 2026-05-06 | 2026-05-06 | DC1-ATS-L2-3410, DC1-BUS-L3-CX-2180 SS, DC1-BUS-L3-CX-2210 | 0d |  | Riley Warring | ROS |
| DC1-ATS-L3-CX-5705 |  | DC1-ATS-F23-04 L3 Startup | 2d | 2026-05-07 | 2026-05-08 | DC1-ATS-L3-CX-5695 | 33d | 0d |  | MAV |
| DC1-ATS-L3-CX-5715 |  | DC1-ATS-F23-04 BMS/EPMS | 1d | 2026-05-11 | 2026-05-11 | DC1-ATS-L3-CX-5705 | 33d | 14d |  | PRM |
|  | 05 | **DC1-DH2300-ATS-F23-05 Cx L3** |  | 2026-05-06 | 2026-05-11 |  |  |  |  |  |
| DC1-ATS-L3-CX-5725 |  | DC1-ATS-F23-05 FTE | 1d | 2026-05-06 | 2026-05-06 | DC1-ATS-L2-3420, DC1-BUS-L3-CX-2180 SS, DC1-SWD-L3-CX-2780 SS | 0d |  | Riley Warring | ROS |
| DC1-ATS-L3-CX-5735 |  | DC1-ATS-F23-05 L3 Startup | 2d | 2026-05-07 | 2026-05-08 | DC1-ATS-L3-CX-5725 | 33d | 0d |  | MAV |
| DC1-ATS-L3-CX-5745 |  | DC1-ATS-F23-05 BMS/EPMS | 1d | 2026-05-11 | 2026-05-11 | DC1-ATS-L3-CX-5735 | 33d | 14d |  | PRM |
|  | 06 | **DC1-DH2300-ATS-F23-06 Cx L3** |  | 2026-05-06 | 2026-05-11 |  |  |  |  |  |
| DC1-ATS-L3-CX-5755 |  | DC1-ATS-F23-06 FTE | 1d | 2026-05-06 | 2026-05-06 | DC1-ATS-L2-3430, DC1-BUS-L3-CX-2180 SS, DC1-BUS-L3-CX-2210 | 0d |  | Riley Warring | ROS |
| DC1-ATS-L3-CX-5765 |  | DC1-ATS-F23-06 L3 Startup | 2d | 2026-05-07 | 2026-05-08 | DC1-ATS-L3-CX-5755 | 33d | 0d |  | MAV |
| DC1-ATS-L3-CX-5775 |  | DC1-ATS-F23-06 BMS/EPMS | 1d | 2026-05-11 | 2026-05-11 | DC1-ATS-L3-CX-5765 | 33d | 14d |  | PRM |
|  | 06 | **DC1-DH2300 CODs Cx L3** |  | 2026-05-07 | 2026-05-12 |  |  |  |  |  |
|  | 01 | **DC1-DH2300-COD-A23 Cx L3** |  | 2026-05-07 | 2026-05-12 |  |  |  |  |  |
|  | 01 | **DC1-DH2300-COD-A23-01 Cx L3** |  | 2026-05-07 | 2026-05-12 |  |  |  |  |  |
| DC1-COD-L3-CX-4705 |  | DC1-COD-A23-01 FTE | 1d | 2026-05-07 | 2026-05-07 | DC1-COD-L2-3080, DC1-ATS-L3-CX-4705, QTS-1080.5 | 0d |  | Riley Warring | ROS |
| DC1-COD-L3-CX-4715 |  | DC1-COD-A23-01 L3 Startup | 2d | 2026-05-08 | 2026-05-11 | DC1-COD-L3-CX-4705 | 32d | 0d |  | SIE |
| DC1-COD-L3-CX-4725 |  | DC1-COD-A23-01 BMS/EPMS | 1d | 2026-05-12 | 2026-05-12 | DC1-COD-L3-CX-4715 | 32d | 13d |  | PRM |

Notes:
- DC1-ATS-L3-CX-5645: Steps: EC Startup Report; Vendor Startup
- DC1-ATS-L3-CX-5675: Steps: EC Startup Report; Vendor Startup
- DC1-ATS-L3-CX-5705: Steps: EC Startup Report; Vendor Startup
- DC1-ATS-L3-CX-5735: Steps: EC Startup Report; Vendor Startup
- DC1-ATS-L3-CX-5765: Steps: EC Startup Report; Vendor Startup
- DC1-COD-L3-CX-4715: Steps: EC Startup Report; Vendor Startup

| ID | WBS | Activity | Duration | Start | Finish | Predecessors | Total float | Free float | Layton Responsible Party | Vendor Responsible Party |
| --- | --- | --- | --- | --- | --- | --- | --- | --- | --- | --- |
|  | 02 | **DC1-DH2300-COD-A23-02 Cx L3** |  | 2026-05-07 | 2026-05-12 |  |  |  |  |  |
| DC1-COD-L3-CX-4735 |  | DC1-COD-A23-02 FTE | 1d | 2026-05-07 | 2026-05-07 | DC1-COD-L2-3090, DC1-ATS-L3-CX-4735 | 0d |  | Riley Warring | ROS |
| DC1-COD-L3-CX-4745 |  | DC1-COD-A23-02 L3 Startup | 2d | 2026-05-08 | 2026-05-11 | DC1-COD-L3-CX-4735 | 32d | 0d |  | SIE |
| DC1-COD-L3-CX-4755 |  | DC1-COD-A23-02 BMS/EPMS | 1d | 2026-05-12 | 2026-05-12 | DC1-COD-L3-CX-4745 | 32d | 13d |  | PRM |
|  | 03 | **DC1-DH2300-COD-A23-03 Cx L3** |  | 2026-05-07 | 2026-05-12 |  |  |  |  |  |
| DC1-COD-L3-CX-4765 |  | DC1-COD-A23-03 FTE | 1d | 2026-05-07 | 2026-05-07 | DC1-COD-L2-3100, DC1-ATS-L3-CX-4765 | 0d |  | Riley Warring | ROS |
| DC1-COD-L3-CX-4775 |  | DC1-COD-A23-03 L3 Startup | 2d | 2026-05-08 | 2026-05-11 | DC1-COD-L3-CX-4765 | 32d | 0d |  | SIE |
| DC1-COD-L3-CX-4785 |  | DC1-COD-A23-03 BMS/EPMS | 1d | 2026-05-12 | 2026-05-12 | DC1-COD-L3-CX-4775 | 32d | 13d |  | PRM |
|  | 04 | **DC1-DH2300-COD-A23-04 Cx L3** |  | 2026-05-07 | 2026-05-12 |  |  |  |  |  |
| DC1-COD-L3-CX-4795 |  | DC1-COD-A23-04 FTE | 1d | 2026-05-07 | 2026-05-07 | DC1-COD-L2-3110, DC1-ATS-L3-CX-4795 | 0d |  | Riley Warring | ROS |
| DC1-COD-L3-CX-4805 |  | DC1-COD-A23-04 L3 Startup | 2d | 2026-05-08 | 2026-05-11 | DC1-COD-L3-CX-4795 | 32d | 0d |  | SIE |
| DC1-COD-L3-CX-4815 |  | DC1-COD-A23-04 BMS/EPMS | 1d | 2026-05-12 | 2026-05-12 | DC1-COD-L3-CX-4805 | 32d | 13d |  | PRM |
|  | 05 | **DC1-DH2300-COD-A23-05 Cx L3** |  | 2026-05-07 | 2026-05-12 |  |  |  |  |  |
| DC1-COD-L3-CX-4825 |  | DC1-COD-A23-05 FTE | 1d | 2026-05-07 | 2026-05-07 | DC1-COD-L2-3120, DC1-ATS-L3-CX-4825 | 0d |  | Riley Warring | ROS |
| DC1-COD-L3-CX-4835 |  | DC1-COD-A23-05 L3 Startup | 2d | 2026-05-08 | 2026-05-11 | DC1-COD-L3-CX-4825 | 32d | 0d |  | SIE |
| DC1-COD-L3-CX-4845 |  | DC1-COD-A23-05 BMS/EPMS | 1d | 2026-05-12 | 2026-05-12 | DC1-COD-L3-CX-4835 | 32d | 13d |  | PRM |
|  | 06 | **DC1-DH2300-COD-A23-06 Cx L3** |  | 2026-05-07 | 2026-05-12 |  |  |  |  |  |
| DC1-COD-L3-CX-4855 |  | DC1-COD-A23-06 FTE | 1d | 2026-05-07 | 2026-05-07 | DC1-COD-L2-3130, DC1-ATS-L3-CX-4855 | 0d |  | Riley Warring | ROS |
| DC1-COD-L3-CX-4865 |  | DC1-COD-A23-06 L3 Startup | 2d | 2026-05-08 | 2026-05-11 | DC1-COD-L3-CX-4855 | 32d | 0d |  | SIE |
| DC1-COD-L3-CX-4875 |  | DC1-COD-A23-06 BMS/EPMS | 1d | 2026-05-12 | 2026-05-12 | DC1-COD-L3-CX-4865 | 32d | 13d |  | PRM |
|  | 02 | **DC1-DH2300-COD-B23 Cx L3** |  | 2026-05-07 | 2026-05-12 |  |  |  |  |  |
|  | 01 | **DC1-DH2300-COD-B23-01 Cx L3** |  | 2026-05-07 | 2026-05-12 |  |  |  |  |  |
| DC1-COD-L3-CX-4885 |  | DC1-COD-B23-01 FTE | 1d | 2026-05-07 | 2026-05-07 | DC1-COD-L2-3140, DC1-ATS-L3-CX-4885, QTS-1080.5 | 0d |  | Riley Warring | ROS |
| DC1-COD-L3-CX-4895 |  | DC1-COD-B23-01 L3 Startup | 2d | 2026-05-08 | 2026-05-11 | DC1-COD-L3-CX-4885 | 32d | 0d |  | SIE |
| DC1-COD-L3-CX-4905 |  | DC1-COD-B23-01 BMS/EPMS | 1d | 2026-05-12 | 2026-05-12 | DC1-COD-L3-CX-4895 | 32d | 13d |  | PRM |

Notes:
- DC1-COD-L3-CX-4745: Steps: EC Startup Report; Vendor Startup
- DC1-COD-L3-CX-4775: Steps: EC Startup Report; Vendor Startup
- DC1-COD-L3-CX-4805: Steps: EC Startup Report; Vendor Startup
- DC1-COD-L3-CX-4835: Steps: EC Startup Report; Vendor Startup
- DC1-COD-L3-CX-4865: Steps: EC Startup Report; Vendor Startup
- DC1-COD-L3-CX-4895: Steps: EC Startup Report; Vendor Startup

| ID | WBS | Activity | Duration | Start | Finish | Predecessors | Total float | Free float | Layton Responsible Party | Vendor Responsible Party |
| --- | --- | --- | --- | --- | --- | --- | --- | --- | --- | --- |
|  | 02 | **DC1-DH2300-COD-B23-02 Cx L3** |  | 2026-05-07 | 2026-05-12 |  |  |  |  |  |
| DC1-COD-L3-CX-4915 |  | DC1-COD-B23-02 FTE | 1d | 2026-05-07 | 2026-05-07 | DC1-COD-L2-3150, DC1-ATS-L3-CX-4915 | 0d |  | Riley Warring | ROS |
| DC1-COD-L3-CX-4925 |  | DC1-COD-B23-02 L3 Startup | 2d | 2026-05-08 | 2026-05-11 | DC1-COD-L3-CX-4915 | 32d | 0d |  | SIE |
| DC1-COD-L3-CX-4935 |  | DC1-COD-B23-02 BMS/EPMS | 1d | 2026-05-12 | 2026-05-12 | DC1-COD-L3-CX-4925 | 32d | 13d |  | PRM |
|  | 03 | **DC1-DH2300-COD-B23-03 Cx L3** |  | 2026-05-07 | 2026-05-12 |  |  |  |  |  |
| DC1-COD-L3-CX-4945 |  | DC1-COD-B23-03 FTE | 1d | 2026-05-07 | 2026-05-07 | DC1-COD-L2-3160, DC1-ATS-L3-CX-4945 | 0d |  | Riley Warring | ROS |
| DC1-COD-L3-CX-4955 |  | DC1-COD-B23-03 L3 Startup | 2d | 2026-05-08 | 2026-05-11 | DC1-COD-L3-CX-4945 | 32d | 0d |  | SIE |
| DC1-COD-L3-CX-4965 |  | DC1-COD-B23-03 BMS/EPMS | 1d | 2026-05-12 | 2026-05-12 | DC1-COD-L3-CX-4955 | 32d | 13d |  | PRM |
|  | 04 | **DC1-DH2300-COD-B23-04 Cx L3** |  | 2026-05-07 | 2026-05-12 |  |  |  |  |  |
| DC1-COD-L3-CX-4975 |  | DC1-COD-B23-04 FTE | 1d | 2026-05-07 | 2026-05-07 | DC1-COD-L2-3170, DC1-ATS-L3-CX-4975 | 0d |  | Riley Warring | ROS |
| DC1-COD-L3-CX-4985 |  | DC1-COD-B23-04 L3 Startup | 2d | 2026-05-08 | 2026-05-11 | DC1-COD-L3-CX-4975 | 32d | 0d |  | SIE |
| DC1-COD-L3-CX-4995 |  | DC1-COD-B23-04 BMS/EPMS | 1d | 2026-05-12 | 2026-05-12 | DC1-COD-L3-CX-4985 | 32d | 13d |  | PRM |
|  | 05 | **DC1-DH2300-COD-B23-05 Cx L3** |  | 2026-05-07 | 2026-05-12 |  |  |  |  |  |
| DC1-COD-L3-CX-5005 |  | DC1-COD-B23-05 FTE | 1d | 2026-05-07 | 2026-05-07 | DC1-COD-L2-3180, DC1-ATS-L3-CX-5005 | 0d |  | Riley Warring | ROS |
| DC1-COD-L3-CX-5015 |  | DC1-COD-B23-05 L3 Startup | 2d | 2026-05-08 | 2026-05-11 | DC1-COD-L3-CX-5005 | 32d | 0d |  | SIE |
| DC1-COD-L3-CX-5025 |  | DC1-COD-B23-05 BMS/EPMS | 1d | 2026-05-12 | 2026-05-12 | DC1-COD-L3-CX-5015 | 32d | 13d |  | PRM |
|  | 06 | **DC1-DH2300-COD-B23-06 Cx L3** |  | 2026-05-07 | 2026-05-12 |  |  |  |  |  |
| DC1-COD-L3-CX-5035 |  | DC1-COD-B23-06 FTE | 1d | 2026-05-07 | 2026-05-07 | DC1-COD-L2-3190, DC1-ATS-L3-CX-5035 | 0d |  | Riley Warring | ROS |
| DC1-COD-L3-CX-5045 |  | DC1-COD-B23-06 L3 Startup | 2d | 2026-05-08 | 2026-05-11 | DC1-COD-L3-CX-5035 | 32d | 0d |  | SIE |
| DC1-COD-L3-CX-5055 |  | DC1-COD-B23-06 BMS/EPMS | 1d | 2026-05-12 | 2026-05-12 | DC1-COD-L3-CX-5045 | 32d | 13d |  | PRM |
|  | 03 | **DC1-DH2300-COD-C23 Cx L3** |  | 2026-05-07 | 2026-05-12 |  |  |  |  |  |
|  | 01 | **DC1-DH2300-COD-C23-01 Cx L3** |  | 2026-05-07 | 2026-05-12 |  |  |  |  |  |
| DC1-COD-L3-CX-5065 |  | DC1-COD-C23-01 FTE | 1d | 2026-05-07 | 2026-05-07 | DC1-COD-L2-3200, DC1-ATS-L3-CX-5065, QTS-1080.5 | 0d |  | Riley Warring | ROS |
| DC1-COD-L3-CX-5075 |  | DC1-COD-C23-01 L3 Startup | 2d | 2026-05-08 | 2026-05-11 | DC1-COD-L3-CX-5065 | 32d | 0d |  | SIE |
| DC1-COD-L3-CX-5085 |  | DC1-COD-C23-01 BMS/EPMS | 1d | 2026-05-12 | 2026-05-12 | DC1-COD-L3-CX-5075 | 32d | 13d |  | PRM |

Notes:
- DC1-COD-L3-CX-4925: Steps: EC Startup Report; Vendor Startup
- DC1-COD-L3-CX-4955: Steps: EC Startup Report; Vendor Startup
- DC1-COD-L3-CX-4985: Steps: EC Startup Report; Vendor Startup
- DC1-COD-L3-CX-5015: Steps: EC Startup Report; Vendor Startup
- DC1-COD-L3-CX-5045: Steps: EC Startup Report; Vendor Startup
- DC1-COD-L3-CX-5075: Steps: EC Startup Report; Vendor Startup

| ID | WBS | Activity | Duration | Start | Finish | Predecessors | Total float | Free float | Layton Responsible Party | Vendor Responsible Party |
| --- | --- | --- | --- | --- | --- | --- | --- | --- | --- | --- |
|  | 02 | **DC1-DH2300-COD-C23-02 Cx L3** |  | 2026-05-07 | 2026-05-12 |  |  |  |  |  |
| DC1-COD-L3-CX-5095 |  | DC1-COD-C23-02 FTE | 1d | 2026-05-07 | 2026-05-07 | DC1-COD-L2-3210, DC1-ATS-L3-CX-5095 | 0d |  | Riley Warring | ROS |
| DC1-COD-L3-CX-5105 |  | DC1-COD-C23-02 L3 Startup | 2d | 2026-05-08 | 2026-05-11 | DC1-COD-L3-CX-5095 | 32d | 0d |  | SIE |
| DC1-COD-L3-CX-5115 |  | DC1-COD-C23-02 BMS/EPMS | 1d | 2026-05-12 | 2026-05-12 | DC1-COD-L3-CX-5105 | 32d | 13d |  | PRM |
|  | 03 | **DC1-DH2300-COD-C23-03 Cx L3** |  | 2026-05-07 | 2026-05-12 |  |  |  |  |  |
| DC1-COD-L3-CX-5125 |  | DC1-COD-C23-03 FTE | 1d | 2026-05-07 | 2026-05-07 | DC1-COD-L2-3220, DC1-ATS-L3-CX-5125 | 0d |  | Riley Warring | ROS |
| DC1-COD-L3-CX-5135 |  | DC1-COD-C23-03 L3 Startup | 2d | 2026-05-08 | 2026-05-11 | DC1-COD-L3-CX-5125 | 32d | 0d |  | SIE |
| DC1-COD-L3-CX-5145 |  | DC1-COD-C23-03 BMS/EPMS | 1d | 2026-05-12 | 2026-05-12 | DC1-COD-L3-CX-5135 | 32d | 13d |  | PRM |
|  | 04 | **DC1-DH2300-COD-C23-04 Cx L3** |  | 2026-05-07 | 2026-05-12 |  |  |  |  |  |
| DC1-COD-L3-CX-5155 |  | DC1-COD-C23-04 FTE | 1d | 2026-05-07 | 2026-05-07 | DC1-COD-L2-3230, DC1-ATS-L3-CX-5155 | 0d |  | Riley Warring | ROS |
| DC1-COD-L3-CX-5165 |  | DC1-COD-C23-04 L3 Startup | 2d | 2026-05-08 | 2026-05-11 | DC1-COD-L3-CX-5155 | 32d | 0d |  | SIE |
| DC1-COD-L3-CX-5175 |  | DC1-COD-C23-04 BMS/EPMS | 1d | 2026-05-12 | 2026-05-12 | DC1-COD-L3-CX-5165 | 32d | 13d |  | PRM |
|  | 05 | **DC1-DH2300-COD-C23-05 Cx L3** |  | 2026-05-07 | 2026-05-12 |  |  |  |  |  |
| DC1-COD-L3-CX-5185 |  | DC1-COD-C23-05 FTE | 1d | 2026-05-07 | 2026-05-07 | DC1-COD-L2-3240, DC1-ATS-L3-CX-5185 | 0d |  | Riley Warring | ROS |
| DC1-COD-L3-CX-5195 |  | DC1-COD-C23-05 L3 Startup | 2d | 2026-05-08 | 2026-05-11 | DC1-COD-L3-CX-5185 | 32d | 0d |  | SIE |
| DC1-COD-L3-CX-5205 |  | DC1-COD-C23-05 BMS/EPMS | 1d | 2026-05-12 | 2026-05-12 | DC1-COD-L3-CX-5195 | 32d | 13d |  | PRM |
|  | 06 | **DC1-DH2300-COD-C23-06 Cx L3** |  | 2026-05-07 | 2026-05-12 |  |  |  |  |  |
| DC1-COD-L3-CX-5215 |  | DC1-COD-C23-06 FTE | 1d | 2026-05-07 | 2026-05-07 | DC1-COD-L2-3250, DC1-ATS-L3-CX-5215 | 0d |  | Riley Warring | ROS |
| DC1-COD-L3-CX-5225 |  | DC1-COD-C23-06 L3 Startup | 2d | 2026-05-08 | 2026-05-11 | DC1-COD-L3-CX-5215 | 32d | 0d |  | SIE |
| DC1-COD-L3-CX-5235 |  | DC1-COD-C23-06 BMS/EPMS | 1d | 2026-05-12 | 2026-05-12 | DC1-COD-L3-CX-5225 | 32d | 13d |  | PRM |
|  | 04 | **DC1-DH2300-COD-D23 Cx L3** |  | 2026-05-07 | 2026-05-12 |  |  |  |  |  |
|  | 01 | **DC1-DH2300-COD-D23-01 Cx L3** |  | 2026-05-07 | 2026-05-12 |  |  |  |  |  |
| DC1-COD-L3-CX-5245 |  | DC1-COD-D23-01 FTE | 1d | 2026-05-07 | 2026-05-07 | DC1-COD-L2-3260, DC1-ATS-L3-CX-5245, QTS-1080.5 | 0d |  | Riley Warring | ROS |
| DC1-COD-L3-CX-5255 |  | DC1-COD-D23-01 L3 Startup | 2d | 2026-05-08 | 2026-05-11 | DC1-COD-L3-CX-5245 | 32d | 0d |  | SIE |
| DC1-COD-L3-CX-5265 |  | DC1-COD-D23-01 BMS/EPMS | 1d | 2026-05-12 | 2026-05-12 | DC1-COD-L3-CX-5255 | 32d | 13d |  | PRM |

Notes:
- DC1-COD-L3-CX-5105: Steps: EC Startup Report; Vendor Startup
- DC1-COD-L3-CX-5135: Steps: EC Startup Report; Vendor Startup
- DC1-COD-L3-CX-5165: Steps: EC Startup Report; Vendor Startup
- DC1-COD-L3-CX-5195: Steps: EC Startup Report; Vendor Startup
- DC1-COD-L3-CX-5225: Steps: EC Startup Report; Vendor Startup
- DC1-COD-L3-CX-5255: Steps: EC Startup Report; Vendor Startup

| ID | WBS | Activity | Duration | Start | Finish | Predecessors | Total float | Free float | Layton Responsible Party | Vendor Responsible Party |
| --- | --- | --- | --- | --- | --- | --- | --- | --- | --- | --- |
|  | 02 | **DC1-DH2300-COD-D23-02 Cx L3** |  | 2026-05-07 | 2026-05-12 |  |  |  |  |  |
| DC1-COD-L3-CX-5275 |  | DC1-COD-D23-02 FTE | 1d | 2026-05-07 | 2026-05-07 | DC1-COD-L2-3270, DC1-ATS-L3-CX-5275 | 0d |  | Riley Warring | ROS |
| DC1-COD-L3-CX-5285 |  | DC1-COD-D23-02 L3 Startup | 2d | 2026-05-08 | 2026-05-11 | DC1-COD-L3-CX-5275 | 32d | 0d |  | SIE |
| DC1-COD-L3-CX-5295 |  | DC1-COD-D23-02 BMS/EPMS | 1d | 2026-05-12 | 2026-05-12 | DC1-COD-L3-CX-5285 | 32d | 13d |  | PRM |
|  | 03 | **DC1-DH2300-COD-D23-03 Cx L3** |  | 2026-05-07 | 2026-05-12 |  |  |  |  |  |
| DC1-COD-L3-CX-5305 |  | DC1-COD-D23-03 FTE | 1d | 2026-05-07 | 2026-05-07 | DC1-COD-L2-3280, DC1-ATS-L3-CX-5305 | 0d |  | Riley Warring | ROS |
| DC1-COD-L3-CX-5315 |  | DC1-COD-D23-03 L3 Startup | 2d | 2026-05-08 | 2026-05-11 | DC1-COD-L3-CX-5305 | 32d | 0d |  | SIE |
| DC1-COD-L3-CX-5325 |  | DC1-COD-D23-03 BMS/EPMS | 1d | 2026-05-12 | 2026-05-12 | DC1-COD-L3-CX-5315 | 32d | 13d |  | PRM |
|  | 04 | **DC1-DH2300-COD-D23-04 Cx L3** |  | 2026-05-07 | 2026-05-12 |  |  |  |  |  |
| DC1-COD-L3-CX-5335 |  | DC1-COD-D23-04 FTE | 1d | 2026-05-07 | 2026-05-07 | DC1-COD-L2-3290, DC1-ATS-L3-CX-5335 | 0d |  | Riley Warring | ROS |
| DC1-COD-L3-CX-5345 |  | DC1-COD-D23-04 L3 Startup | 2d | 2026-05-08 | 2026-05-11 | DC1-COD-L3-CX-5335 | 32d | 0d |  | SIE |
| DC1-COD-L3-CX-5355 |  | DC1-COD-D23-04 BMS/EPMS | 1d | 2026-05-12 | 2026-05-12 | DC1-COD-L3-CX-5345 | 32d | 13d |  | PRM |
|  | 05 | **DC1-DH2300-COD-D23-05 Cx L3** |  | 2026-05-07 | 2026-05-12 |  |  |  |  |  |
| DC1-COD-L3-CX-5365 |  | DC1-COD-D23-05 FTE | 1d | 2026-05-07 | 2026-05-07 | DC1-COD-L2-3300, DC1-ATS-L3-CX-5365 | 0d |  | Riley Warring | ROS |
| DC1-COD-L3-CX-5375 |  | DC1-COD-D23-05 L3 Startup | 2d | 2026-05-08 | 2026-05-11 | DC1-COD-L3-CX-5365 | 32d | 0d |  | SIE |
| DC1-COD-L3-CX-5385 |  | DC1-COD-D23-05 BMS/EPMS | 1d | 2026-05-12 | 2026-05-12 | DC1-COD-L3-CX-5375 | 32d | 13d |  | PRM |
|  | 06 | **DC1-DH2300-COD-D23-06 Cx L3** |  | 2026-05-07 | 2026-05-12 |  |  |  |  |  |
| DC1-COD-L3-CX-5395 |  | DC1-COD-D23-06 FTE | 1d | 2026-05-07 | 2026-05-07 | DC1-COD-L2-3310, DC1-ATS-L3-CX-5395 | 0d |  | Riley Warring | ROS |
| DC1-COD-L3-CX-5405 |  | DC1-COD-D23-06 L3 Startup | 2d | 2026-05-08 | 2026-05-11 | DC1-COD-L3-CX-5395 | 32d | 0d |  | SIE |
| DC1-COD-L3-CX-5415 |  | DC1-COD-D23-06 BMS/EPMS | 1d | 2026-05-12 | 2026-05-12 | DC1-COD-L3-CX-5405 | 32d | 13d |  | PRM |
|  | 05 | **DC1-DH2300-COD-E23 Cx L3** |  | 2026-05-07 | 2026-05-12 |  |  |  |  |  |
|  | 01 | **DC1-DH2300-ATS-E23-01 Cx L3** |  | 2026-05-07 | 2026-05-12 |  |  |  |  |  |
| DC1-COD-L3-CX-5425 |  | DC1-COD-E23-01 FTE | 1d | 2026-05-07 | 2026-05-07 | DC1-COD-L2-3320, DC1-ATS-L3-CX-5425, QTS-1080.5 | 0d |  | Riley Warring | ROS |
| DC1-COD-L3-CX-5435 |  | DC1-COD-E23-01 L3 Startup | 2d | 2026-05-08 | 2026-05-11 | DC1-COD-L3-CX-5425 | 32d | 0d | Riley Warring | SIE |
| DC1-COD-L3-CX-5445 |  | DC1-COD-E23-01 BMS/EPMS | 1d | 2026-05-12 | 2026-05-12 | DC1-COD-L3-CX-5435 | 32d | 13d | Riley Warring | PRM |

Notes:
- DC1-COD-L3-CX-5285: Steps: EC Startup Report; Vendor Startup
- DC1-COD-L3-CX-5315: Steps: EC Startup Report; Vendor Startup
- DC1-COD-L3-CX-5345: Steps: EC Startup Report; Vendor Startup
- DC1-COD-L3-CX-5375: Steps: EC Startup Report; Vendor Startup
- DC1-COD-L3-CX-5405: Steps: EC Startup Report; Vendor Startup
- DC1-COD-L3-CX-5435: Steps: EC Startup Report; Vendor Startup

| ID | WBS | Activity | Duration | Start | Finish | Predecessors | Total float | Free float | Layton Responsible Party | Vendor Responsible Party |
| --- | --- | --- | --- | --- | --- | --- | --- | --- | --- | --- |
|  | 02 | **DC1-DH2300-ATS-E23-02 Cx L3** |  | 2026-05-07 | 2026-05-12 |  |  |  |  |  |
| DC1-COD-L3-CX-5455 |  | DC1-COD-E23-02 FTE | 1d | 2026-05-07 | 2026-05-07 | DC1-COD-L2-3330, DC1-ATS-L3-CX-5455 | 0d |  | Riley Warring | ROS |
| DC1-COD-L3-CX-5465 |  | DC1-COD-E23-02 L3 Startup | 2d | 2026-05-08 | 2026-05-11 | DC1-COD-L3-CX-5455 | 32d | 0d | Riley Warring | SIE |
| DC1-COD-L3-CX-5475 |  | DC1-COD-E23-02 BMS/EPMS | 1d | 2026-05-12 | 2026-05-12 | DC1-COD-L3-CX-5465 | 32d | 13d | Riley Warring | PRM |
|  | 03 | **DC1-DH2300-ATS-E23-03 Cx L3** |  | 2026-05-07 | 2026-05-12 |  |  |  |  |  |
| DC1-COD-L3-CX-5485 |  | DC1-COD-E23-03 FTE | 1d | 2026-05-07 | 2026-05-07 | DC1-COD-L2-3340, DC1-ATS-L3-CX-5485 | 0d |  | Riley Warring | ROS |
| DC1-COD-L3-CX-5495 |  | DC1-COD-E23-03 L3 Startup | 2d | 2026-05-08 | 2026-05-11 | DC1-COD-L3-CX-5485 | 32d | 0d | Riley Warring | SIE |
| DC1-COD-L3-CX-5505 |  | DC1-COD-E23-03 BMS/EPMS | 1d | 2026-05-12 | 2026-05-12 | DC1-COD-L3-CX-5495 | 32d | 13d | Riley Warring | PRM |
|  | 04 | **DC1-DH2300-ATS-E23-04 Cx L3** |  | 2026-05-07 | 2026-05-12 |  |  |  |  |  |
| DC1-COD-L3-CX-5515 |  | DC1-COD-E23-04 FTE | 1d | 2026-05-07 | 2026-05-07 | DC1-COD-L2-3350, DC1-ATS-L3-CX-5515 | 0d |  | Riley Warring | ROS |
| DC1-COD-L3-CX-5525 |  | DC1-COD-E23-04 L3 Startup | 2d | 2026-05-08 | 2026-05-11 | DC1-COD-L3-CX-5515 | 32d | 0d | Riley Warring | SIE |
| DC1-COD-L3-CX-5535 |  | DC1-COD-E23-04 BMS/EPMS | 1d | 2026-05-12 | 2026-05-12 | DC1-COD-L3-CX-5525 | 32d | 13d | Riley Warring | PRM |
|  | 05 | **DC1-DH2300-ATS-E23-05 Cx L3** |  | 2026-05-07 | 2026-05-12 |  |  |  |  |  |
| DC1-COD-L3-CX-5545 |  | DC1-COD-E23-05 FTE | 1d | 2026-05-07 | 2026-05-07 | DC1-COD-L2-3360, DC1-ATS-L3-CX-5545 | 0d |  | Riley Warring | ROS |
| DC1-COD-L3-CX-5555 |  | DC1-COD-E23-05 L3 Startup | 2d | 2026-05-08 | 2026-05-11 | DC1-COD-L3-CX-5545 | 32d | 0d | Riley Warring | SIE |
| DC1-COD-L3-CX-5565 |  | DC1-COD-E23-05 BMS/EPMS | 1d | 2026-05-12 | 2026-05-12 | DC1-COD-L3-CX-5555 | 32d | 13d | Riley Warring | PRM |
|  | 06 | **DC1-DH2300-ATS-E23-06 Cx L3** |  | 2026-05-07 | 2026-05-12 |  |  |  |  |  |
| DC1-COD-L3-CX-5575 |  | DC1-COD-E23-06 FTE | 1d | 2026-05-07 | 2026-05-07 | DC1-COD-L2-3370, DC1-ATS-L3-CX-5575 | 0d |  | Riley Warring | ROS |
| DC1-COD-L3-CX-5585 |  | DC1-COD-E23-06 L3 Startup | 2d | 2026-05-08 | 2026-05-11 | DC1-COD-L3-CX-5575 | 32d | 0d | Riley Warring | SIE |
| DC1-COD-L3-CX-5595 |  | DC1-COD-E23-06 BMS/EPMS | 1d | 2026-05-12 | 2026-05-12 | DC1-COD-L3-CX-5585 | 32d | 13d | Riley Warring | PRM |
|  | 06 | **DC1-DH2300-COD-F23 Cx L3** |  | 2026-05-07 | 2026-05-12 |  |  |  |  |  |
|  | 01 | **DC1-DH2300-COD-F23-01 Cx L3** |  | 2026-05-07 | 2026-05-12 |  |  |  |  |  |
| DC1-COD-L3-CX-5605 |  | DC1-COD-F23-01 FTE | 1d | 2026-05-07 | 2026-05-07 | DC1-COD-L2-3380, DC1-ATS-L3-CX-5605, QTS-1080.5 | 0d |  | Riley Warring | ROS |
| DC1-COD-L3-CX-5615 |  | DC1-COD-F23-01 L3 Startup | 2d | 2026-05-08 | 2026-05-11 | DC1-COD-L3-CX-5605 | 32d | 0d | Riley Warring | SIE |
| DC1-COD-L3-CX-5625 |  | DC1-COD-F23-01 BMS/EPMS | 1d | 2026-05-12 | 2026-05-12 | DC1-COD-L3-CX-5615 | 32d | 13d | Riley Warring | PRM |

Notes:
- DC1-COD-L3-CX-5465: Steps: EC Startup Report; Vendor Startup
- DC1-COD-L3-CX-5495: Steps: EC Startup Report; Vendor Startup
- DC1-COD-L3-CX-5525: Steps: EC Startup Report; Vendor Startup
- DC1-COD-L3-CX-5555: Steps: EC Startup Report; Vendor Startup
- DC1-COD-L3-CX-5585: Steps: EC Startup Report; Vendor Startup
- DC1-COD-L3-CX-5615: Steps: EC Startup Report; Vendor Startup

| ID | WBS | Activity | Duration | Start | Finish | Predecessors | Total float | Free float | Layton Responsible Party | Vendor Responsible Party |
| --- | --- | --- | --- | --- | --- | --- | --- | --- | --- | --- |
|  | 02 | **DC1-DH2300-COD-F23-02 Cx L3** |  | 2026-05-07 | 2026-05-12 |  |  |  |  |  |
| DC1-COD-L3-CX-5635 |  | DC1-COD-F23-02 FTE | 1d | 2026-05-07 | 2026-05-07 | DC1-COD-L2-3390, DC1-ATS-L3-CX-5635 | 0d |  | Riley Warring | ROS |
| DC1-COD-L3-CX-5645 |  | DC1-COD-F23-02 L3 Startup | 2d | 2026-05-08 | 2026-05-11 | DC1-COD-L3-CX-5635 | 32d | 0d | Riley Warring | SIE |
| DC1-COD-L3-CX-5655 |  | DC1-COD-F23-02 BMS/EPMS | 1d | 2026-05-12 | 2026-05-12 | DC1-COD-L3-CX-5645 | 32d | 13d | Riley Warring | PRM |
|  | 03 | **DC1-DH2300-COD-F23-03 Cx L3** |  | 2026-05-07 | 2026-05-12 |  |  |  |  |  |
| DC1-COD-L3-CX-5665 |  | DC1-COD-F23-03 FTE | 1d | 2026-05-07 | 2026-05-07 | DC1-COD-L2-3400, DC1-ATS-L3-CX-5665 | 0d |  | Riley Warring | ROS |
| DC1-COD-L3-CX-5675 |  | DC1-COD-F23-03 L3 Startup | 2d | 2026-05-08 | 2026-05-11 | DC1-COD-L3-CX-5665 | 32d | 0d | Riley Warring | SIE |
| DC1-COD-L3-CX-5685 |  | DC1-COD-F23-03 BMS/EPMS | 1d | 2026-05-12 | 2026-05-12 | DC1-COD-L3-CX-5675 | 32d | 13d | Riley Warring | PRM |
|  | 04 | **DC1-DH2300-COD-F23-04 Cx L3** |  | 2026-05-07 | 2026-05-12 |  |  |  |  |  |
| DC1-COD-L3-CX-5695 |  | DC1-COD-F23-04 FTE | 1d | 2026-05-07 | 2026-05-07 | DC1-COD-L2-3410, DC1-ATS-L3-CX-5695 | 0d |  | Riley Warring | ROS |
| DC1-COD-L3-CX-5705 |  | DC1-COD-F23-04 L3 Startup | 2d | 2026-05-08 | 2026-05-11 | DC1-COD-L3-CX-5695 | 32d | 0d | Riley Warring | SIE |
| DC1-COD-L3-CX-5715 |  | DC1-COD-F23-04 BMS/EPMS | 1d | 2026-05-12 | 2026-05-12 | DC1-COD-L3-CX-5705 | 32d | 13d | Riley Warring | PRM |
|  | 05 | **DC1-DH2300-COD-F23-05 Cx L3** |  | 2026-05-07 | 2026-05-12 |  |  |  |  |  |
| DC1-COD-L3-CX-5725 |  | DC1-COD-F23-05 FTE | 1d | 2026-05-07 | 2026-05-07 | DC1-COD-L2-3420, DC1-ATS-L3-CX-5725 | 0d |  | Riley Warring | ROS |
| DC1-COD-L3-CX-5735 |  | DC1-COD-F23-05 L3 Startup | 2d | 2026-05-08 | 2026-05-11 | DC1-COD-L3-CX-5725 | 32d | 0d | Riley Warring | SIE |
| DC1-COD-L3-CX-5745 |  | DC1-COD-F23-05 BMS/EPMS | 1d | 2026-05-12 | 2026-05-12 | DC1-COD-L3-CX-5735 | 32d | 13d | Riley Warring | PRM |
|  | 06 | **DC1-DH2300-COD-F23-06 Cx L3** |  | 2026-05-07 | 2026-05-12 |  |  |  |  |  |
| DC1-COD-L3-CX-5755 |  | DC1-COD-F23-06 FTE | 1d | 2026-05-07 | 2026-05-07 | DC1-COD-L2-3430, DC1-ATS-L3-CX-5755 | 0d |  | Riley Warring | ROS |
| DC1-COD-L3-CX-5765 |  | DC1-COD-F23-06 L3 Startup | 2d | 2026-05-08 | 2026-05-11 | DC1-COD-L3-CX-5755 | 32d | 0d | Riley Warring | SIE |
| DC1-COD-L3-CX-5775 |  | DC1-COD-F23-06 BMS/EPMS | 1d | 2026-05-12 | 2026-05-12 | DC1-COD-L3-CX-5765 | 32d | 13d | Riley Warring | PRM |
|  | 07 | **DC1-DH2300 RPPs Cx L3** |  | 2026-05-08 | 2026-05-13 |  |  |  |  |  |
|  | 01 | **DC1-DH2300-RPP-A23 Cx L3** |  | 2026-05-08 | 2026-05-13 |  |  |  |  |  |
|  | 01 | **DC1-DH2300-RPP-A23-01 Cx L3** |  | 2026-05-08 | 2026-05-13 |  |  |  |  |  |
| DC1-RPP-L3-CX-4705 |  | DC1-RPP-A23-01 A/B FTE | 1d | 2026-05-08 | 2026-05-08 | DC1-RPP-L2-3080, DC1-COD-L3-CX-4705 | 53d | 0d | Riley Warring | ROS |
| DC1-RPP-L3-CX-4715 |  | DC1-RPP-A23-01 A/B L3 Startup | 2d | 2026-05-11 | 2026-05-12 | DC1-RPP-L3-CX-4705 | 53d | 0d | Riley Warring | SQD |
| DC1-RPP-L3-CX-4725 |  | DC1-RPP-A23-01 A/B BMS/EPMS | 1d | 2026-05-13 | 2026-05-13 | DC1-RPP-L3-CX-4715 | 53d | 21d | Riley Warring | PRM |

Notes:
- DC1-COD-L3-CX-5645: Steps: EC Startup Report; Vendor Startup
- DC1-COD-L3-CX-5675: Steps: EC Startup Report; Vendor Startup
- DC1-COD-L3-CX-5705: Steps: EC Startup Report; Vendor Startup
- DC1-COD-L3-CX-5735: Steps: EC Startup Report; Vendor Startup
- DC1-COD-L3-CX-5765: Steps: EC Startup Report; Vendor Startup
- DC1-RPP-L3-CX-4715: Steps: EC Startup Report; Vendor Startup

| ID | WBS | Activity | Duration | Start | Finish | Predecessors | Total float | Free float | Layton Responsible Party | Vendor Responsible Party |
| --- | --- | --- | --- | --- | --- | --- | --- | --- | --- | --- |
|  | 02 | **DC1-DH2300-RPP-A23-02 Cx L3** |  | 2026-05-08 | 2026-05-13 |  |  |  |  |  |
| DC1-RPP-L3-CX-4735 |  | DC1-RPP-A23-02 A/B FTE | 1d | 2026-05-08 | 2026-05-08 | DC1-RPP-L2-3090, DC1-COD-L3-CX-4735 | 53d | 0d | Riley Warring | ROS |
| DC1-RPP-L3-CX-4745 |  | DC1-RPP-A23-02 A/B L3 Startup | 2d | 2026-05-11 | 2026-05-12 | DC1-RPP-L3-CX-4735 | 53d | 0d | Riley Warring | SQD |
| DC1-RPP-L3-CX-4755 |  | DC1-RPP-A23-02 A/B BMS/EPMS | 1d | 2026-05-13 | 2026-05-13 | DC1-RPP-L3-CX-4745 | 53d | 21d | Riley Warring | PRM |
|  | 03 | **DC1-DH2300-RPP-A23-03 Cx L3** |  | 2026-05-08 | 2026-05-13 |  |  |  |  |  |
| DC1-RPP-L3-CX-4765 |  | DC1-RPP-A23-03 A/B FTE | 1d | 2026-05-08 | 2026-05-08 | DC1-RPP-L2-3100, DC1-COD-L3-CX-4765 | 53d | 0d | Riley Warring | ROS |
| DC1-RPP-L3-CX-4775 |  | DC1-RPP-A23-03 A/B L3 Startup | 2d | 2026-05-11 | 2026-05-12 | DC1-RPP-L3-CX-4765 | 53d | 0d | Riley Warring | SQD |
| DC1-RPP-L3-CX-4785 |  | DC1-RPP-A23-03 A/B BMS/EPMS | 1d | 2026-05-13 | 2026-05-13 | DC1-RPP-L3-CX-4775 | 53d | 21d | Riley Warring | PRM |
|  | 04 | **DC1-DH2300-RPP-A23-04 Cx L3** |  | 2026-05-08 | 2026-05-13 |  |  |  |  |  |
| DC1-RPP-L3-CX-4795 |  | DC1-RPP-A23-04 A/B FTE | 1d | 2026-05-08 | 2026-05-08 | DC1-RPP-L2-3110, DC1-COD-L3-CX-4795 | 53d | 0d | Riley Warring | ROS |
| DC1-RPP-L3-CX-4805 |  | DC1-RPP-A23-04 A/B L3 Startup | 2d | 2026-05-11 | 2026-05-12 | DC1-RPP-L3-CX-4795 | 53d | 0d | Riley Warring | SQD |
| DC1-RPP-L3-CX-4815 |  | DC1-RPP-A23-04 A/B BMS/EPMS | 1d | 2026-05-13 | 2026-05-13 | DC1-RPP-L3-CX-4805 | 53d | 21d | Riley Warring | PRM |
|  | 05 | **DC1-DH2300-RPP-A23-05 Cx L3** |  | 2026-05-08 | 2026-05-13 |  |  |  |  |  |
| DC1-RPP-L3-CX-4825 |  | DC1-RPP-A23-05 A/B FTE | 1d | 2026-05-08 | 2026-05-08 | DC1-RPP-L2-3120, DC1-COD-L3-CX-4825 | 53d | 0d | Riley Warring | ROS |
| DC1-RPP-L3-CX-4835 |  | DC1-RPP-A23-05 A/B L3 Startup | 2d | 2026-05-11 | 2026-05-12 | DC1-RPP-L3-CX-4825 | 53d | 0d | Riley Warring | SQD |
| DC1-RPP-L3-CX-4845 |  | DC1-RPP-A23-05 A/B BMS/EPMS | 1d | 2026-05-13 | 2026-05-13 | DC1-RPP-L3-CX-4835 | 53d | 21d | Riley Warring | PRM |
|  | 06 | **DC1-DH2300-RPP-A23-06 Cx L3** |  | 2026-05-08 | 2026-05-13 |  |  |  |  |  |
| DC1-RPP-L3-CX-4855 |  | DC1-RPP-A23-06 A/B FTE | 1d | 2026-05-08 | 2026-05-08 | DC1-RPP-L2-3130, DC1-COD-L3-CX-4855 | 53d | 0d | Riley Warring | ROS |
| DC1-RPP-L3-CX-4865 |  | DC1-RPP-A23-06 A/B L3 Startup | 2d | 2026-05-11 | 2026-05-12 | DC1-RPP-L3-CX-4855 | 53d | 0d | Riley Warring | SQD |
| DC1-RPP-L3-CX-4875 |  | DC1-RPP-A23-06 A/B BMS/EPMS | 1d | 2026-05-13 | 2026-05-13 | DC1-RPP-L3-CX-4865 | 53d | 21d | Riley Warring | PRM |
|  | 02 | **DC1-DH2300-RPP-B23 Cx L3** |  | 2026-05-08 | 2026-05-13 |  |  |  |  |  |
|  | 01 | **DC1-DH2300-RPP-B23-01 Cx L3** |  | 2026-05-08 | 2026-05-13 |  |  |  |  |  |
| DC1-RPP-L3-CX-4885 |  | DC1-RPP-B23-01 A/B FTE | 1d | 2026-05-08 | 2026-05-08 | DC1-RPP-L2-3140, DC1-COD-L3-CX-4885 | 53d | 0d | Riley Warring | ROS |
| DC1-RPP-L3-CX-4895 |  | DC1-RPP-B23-01 A/B L3 Startup | 2d | 2026-05-11 | 2026-05-12 | DC1-RPP-L3-CX-4885 | 53d | 0d | Riley Warring | SQD |
| DC1-RPP-L3-CX-4905 |  | DC1-RPP-B23-01 A/B BMS/EPMS | 1d | 2026-05-13 | 2026-05-13 | DC1-RPP-L3-CX-4895 | 53d | 21d | Riley Warring | PRM |

Notes:
- DC1-RPP-L3-CX-4745: Steps: EC Startup Report; Vendor Startup
- DC1-RPP-L3-CX-4775: Steps: EC Startup Report; Vendor Startup
- DC1-RPP-L3-CX-4805: Steps: EC Startup Report; Vendor Startup
- DC1-RPP-L3-CX-4835: Steps: EC Startup Report; Vendor Startup
- DC1-RPP-L3-CX-4865: Steps: EC Startup Report; Vendor Startup
- DC1-RPP-L3-CX-4895: Steps: EC Startup Report; Vendor Startup

| ID | WBS | Activity | Duration | Start | Finish | Predecessors | Total float | Free float | Layton Responsible Party | Vendor Responsible Party |
| --- | --- | --- | --- | --- | --- | --- | --- | --- | --- | --- |
|  | 02 | **DC1-DH2300-RPP-B23-02 Cx L3** |  | 2026-05-08 | 2026-05-13 |  |  |  |  |  |
| DC1-RPP-L3-CX-4915 |  | DC1-RPP-B23-02 A/B FTE | 1d | 2026-05-08 | 2026-05-08 | DC1-RPP-L2-3150, DC1-COD-L3-CX-4915 | 53d | 0d | Riley Warring | ROS |
| DC1-RPP-L3-CX-4925 |  | DC1-RPP-B23-02 A/B L3 Startup | 2d | 2026-05-11 | 2026-05-12 | DC1-RPP-L3-CX-4915 | 53d | 0d | Riley Warring | SQD |
| DC1-RPP-L3-CX-4935 |  | DC1-RPP-B23-02 A/B BMS/EPMS | 1d | 2026-05-13 | 2026-05-13 | DC1-RPP-L3-CX-4925 | 53d | 21d | Riley Warring | PRM |
|  | 03 | **DC1-DH2300-RPP-B23-03 Cx L3** |  | 2026-05-08 | 2026-05-13 |  |  |  |  |  |
| DC1-RPP-L3-CX-4945 |  | DC1-RPP-B23-03 A/B FTE | 1d | 2026-05-08 | 2026-05-08 | DC1-RPP-L2-3160, DC1-COD-L3-CX-4945 | 53d | 0d | Riley Warring | ROS |
| DC1-RPP-L3-CX-4955 |  | DC1-RPP-B23-03 A/B L3 Startup | 2d | 2026-05-11 | 2026-05-12 | DC1-RPP-L3-CX-4945 | 53d | 0d | Riley Warring | SQD |
| DC1-RPP-L3-CX-4965 |  | DC1-RPP-B23-03 A/B BMS/EPMS | 1d | 2026-05-13 | 2026-05-13 | DC1-RPP-L3-CX-4955 | 53d | 21d | Riley Warring | PRM |
|  | 04 | **DC1-DH2300-RPP-B23-04 Cx L3** |  | 2026-05-08 | 2026-05-13 |  |  |  |  |  |
| DC1-RPP-L3-CX-4975 |  | DC1-RPP-B23-04 A/B FTE | 1d | 2026-05-08 | 2026-05-08 | DC1-RPP-L2-3170, DC1-COD-L3-CX-4975 | 53d | 0d | Riley Warring | ROS |
| DC1-RPP-L3-CX-4985 |  | DC1-RPP-B23-04 A/B L3 Startup | 2d | 2026-05-11 | 2026-05-12 | DC1-RPP-L3-CX-4975 | 53d | 0d | Riley Warring | SQD |
| DC1-RPP-L3-CX-4995 |  | DC1-RPP-B23-04 A/B BMS/EPMS | 1d | 2026-05-13 | 2026-05-13 | DC1-RPP-L3-CX-4985 | 53d | 21d | Riley Warring | PRM |
|  | 05 | **DC1-DH2300-RPP-B23-05 Cx L3** |  | 2026-05-08 | 2026-05-13 |  |  |  |  |  |
| DC1-RPP-L3-CX-5005 |  | DC1-RPP-B23-05 A/B FTE | 1d | 2026-05-08 | 2026-05-08 | DC1-RPP-L2-3180, DC1-COD-L3-CX-5005 | 53d | 0d | Riley Warring | ROS |
| DC1-RPP-L3-CX-5015 |  | DC1-RPP-B23-05 A/B L3 Startup | 2d | 2026-05-11 | 2026-05-12 | DC1-RPP-L3-CX-5005 | 53d | 0d | Riley Warring | SQD |
| DC1-RPP-L3-CX-5025 |  | DC1-RPP-B23-05 A/B BMS/EPMS | 1d | 2026-05-13 | 2026-05-13 | DC1-RPP-L3-CX-5015 | 53d | 21d | Riley Warring | PRM |
|  | 06 | **DC1-DH2300-RPP-B23-06 Cx L3** |  | 2026-05-08 | 2026-05-13 |  |  |  |  |  |
| DC1-RPP-L3-CX-5035 |  | DC1-RPP-B23-06 A/B FTE | 1d | 2026-05-08 | 2026-05-08 | DC1-RPP-L2-3190, DC1-COD-L3-CX-5035 | 53d | 0d | Riley Warring | ROS |
| DC1-RPP-L3-CX-5045 |  | DC1-RPP-B23-06 A/B L3 Startup | 2d | 2026-05-11 | 2026-05-12 | DC1-RPP-L3-CX-5035 | 53d | 0d | Riley Warring | SQD |
| DC1-RPP-L3-CX-5055 |  | DC1-RPP-B23-06 A/B BMS/EPMS | 1d | 2026-05-13 | 2026-05-13 | DC1-RPP-L3-CX-5045 | 53d | 21d | Riley Warring | PRM |
|  | 03 | **DC1-DH2300-RPP-C23 Cx L3** |  | 2026-05-08 | 2026-05-13 |  |  |  |  |  |
|  | 01 | **DC1-DH2300-RPP-C23-01 Cx L3** |  | 2026-05-08 | 2026-05-13 |  |  |  |  |  |
| DC1-RPP-L3-CX-5065 |  | DC1-RPP-C23-01 A/B FTE | 1d | 2026-05-08 | 2026-05-08 | DC1-RPP-L2-3200, DC1-COD-L3-CX-5065 | 53d | 0d | Riley Warring | ROS |
| DC1-RPP-L3-CX-5075 |  | DC1-RPP-C23-01 A/B L3 Startup | 2d | 2026-05-11 | 2026-05-12 | DC1-RPP-L3-CX-5065 | 53d | 0d | Riley Warring | SQD |
| DC1-RPP-L3-CX-5085 |  | DC1-RPP-C23-01 A/B BMS/EPMS | 1d | 2026-05-13 | 2026-05-13 | DC1-RPP-L3-CX-5075 | 53d | 21d | Riley Warring | PRM |

Notes:
- DC1-RPP-L3-CX-4925: Steps: EC Startup Report; Vendor Startup
- DC1-RPP-L3-CX-4955: Steps: EC Startup Report; Vendor Startup
- DC1-RPP-L3-CX-4985: Steps: EC Startup Report; Vendor Startup
- DC1-RPP-L3-CX-5015: Steps: EC Startup Report; Vendor Startup
- DC1-RPP-L3-CX-5045: Steps: EC Startup Report; Vendor Startup
- DC1-RPP-L3-CX-5075: Steps: EC Startup Report; Vendor Startup

| ID | WBS | Activity | Duration | Start | Finish | Predecessors | Total float | Free float | Layton Responsible Party | Vendor Responsible Party |
| --- | --- | --- | --- | --- | --- | --- | --- | --- | --- | --- |
|  | 02 | **DC1-DH2300-RPP-C23-02 Cx L3** |  | 2026-05-08 | 2026-05-13 |  |  |  |  |  |
| DC1-RPP-L3-CX-5095 |  | DC1-RPP-C23-02 A/B FTE | 1d | 2026-05-08 | 2026-05-08 | DC1-RPP-L2-3210, DC1-COD-L3-CX-5095 | 53d | 0d | Riley Warring | ROS |
| DC1-RPP-L3-CX-5105 |  | DC1-RPP-C23-02 A/B L3 Startup | 2d | 2026-05-11 | 2026-05-12 | DC1-RPP-L3-CX-5095 | 53d | 0d | Riley Warring | SQD |
| DC1-RPP-L3-CX-5115 |  | DC1-RPP-C23-02 A/B BMS/EPMS | 1d | 2026-05-13 | 2026-05-13 | DC1-RPP-L3-CX-5105 | 53d | 21d | Riley Warring | PRM |
|  | 03 | **DC1-DH2300-RPP-C23-03 Cx L3** |  | 2026-05-08 | 2026-05-13 |  |  |  |  |  |
| DC1-RPP-L3-CX-5125 |  | DC1-RPP-C23-03 A/B FTE | 1d | 2026-05-08 | 2026-05-08 | DC1-RPP-L2-3220, DC1-COD-L3-CX-5125 | 53d | 0d | Riley Warring | ROS |
| DC1-RPP-L3-CX-5135 |  | DC1-RPP-C23-03 A/B L3 Startup | 2d | 2026-05-11 | 2026-05-12 | DC1-RPP-L3-CX-5125 | 53d | 0d | Riley Warring | SQD |
| DC1-RPP-L3-CX-5145 |  | DC1-RPP-C23-03 A/B BMS/EPMS | 1d | 2026-05-13 | 2026-05-13 | DC1-RPP-L3-CX-5135 | 53d | 21d | Riley Warring | PRM |
|  | 04 | **DC1-DH2300-RPP-C23-04 Cx L3** |  | 2026-05-08 | 2026-05-13 |  |  |  |  |  |
| DC1-RPP-L3-CX-5155 |  | DC1-RPP-C23-04 A/B FTE | 1d | 2026-05-08 | 2026-05-08 | DC1-RPP-L2-3230, DC1-COD-L3-CX-5155 | 53d | 0d | Riley Warring | ROS |
| DC1-RPP-L3-CX-5165 |  | DC1-RPP-C23-04 A/B L3 Startup | 2d | 2026-05-11 | 2026-05-12 | DC1-RPP-L3-CX-5155 | 53d | 0d | Riley Warring | SQD |
| DC1-RPP-L3-CX-5175 |  | DC1-RPP-C23-04 A/B BMS/EPMS | 1d | 2026-05-13 | 2026-05-13 | DC1-RPP-L3-CX-5165 | 53d | 21d | Riley Warring | PRM |
|  | 05 | **DC1-DH2300-RPP-C23-05 Cx L3** |  | 2026-05-08 | 2026-05-13 |  |  |  |  |  |
| DC1-RPP-L3-CX-5185 |  | DC1-RPP-C23-05 A/B FTE | 1d | 2026-05-08 | 2026-05-08 | DC1-RPP-L2-3240, DC1-COD-L3-CX-5185 | 53d | 0d | Riley Warring | ROS |
| DC1-RPP-L3-CX-5195 |  | DC1-RPP-C23-05 A/B L3 Startup | 2d | 2026-05-11 | 2026-05-12 | DC1-RPP-L3-CX-5185 | 53d | 0d | Riley Warring | SQD |
| DC1-RPP-L3-CX-5205 |  | DC1-RPP-C23-05 A/B BMS/EPMS | 1d | 2026-05-13 | 2026-05-13 | DC1-RPP-L3-CX-5195 | 53d | 21d | Riley Warring | PRM |
|  | 06 | **DC1-DH2300-RPP-C23-06 Cx L3** |  | 2026-05-08 | 2026-05-13 |  |  |  |  |  |
| DC1-RPP-L3-CX-5215 |  | DC1-RPP-C23-06 A/B FTE | 1d | 2026-05-08 | 2026-05-08 | DC1-RPP-L2-3250, DC1-COD-L3-CX-5215 | 53d | 0d | Riley Warring | ROS |
| DC1-RPP-L3-CX-5225 |  | DC1-RPP-C23-06 A/B L3 Startup | 2d | 2026-05-11 | 2026-05-12 | DC1-RPP-L3-CX-5215 | 53d | 0d | Riley Warring | SQD |
| DC1-RPP-L3-CX-5235 |  | DC1-RPP-C23-06 A/B BMS/EPMS | 1d | 2026-05-13 | 2026-05-13 | DC1-RPP-L3-CX-5225 | 53d | 21d | Riley Warring | PRM |
|  | 04 | **DC1-DH2300-RPP-D23 Cx L3** |  | 2026-05-08 | 2026-05-13 |  |  |  |  |  |
|  | 01 | **DC1-DH2300-RPP-D23-01 Cx L3** |  | 2026-05-08 | 2026-05-13 |  |  |  |  |  |
| DC1-RPP-L3-CX-5245 |  | DC1-RPP-D23-01 A/B FTE | 1d | 2026-05-08 | 2026-05-08 | DC1-RPP-L2-3260, DC1-COD-L3-CX-5245 | 53d | 0d | Riley Warring | ROS |
| DC1-RPP-L3-CX-5255 |  | DC1-RPP-D23-01 A/B L3 Startup | 2d | 2026-05-11 | 2026-05-12 | DC1-RPP-L3-CX-5245 | 53d | 0d | Riley Warring | SQD |
| DC1-RPP-L3-CX-5265 |  | DC1-RPP-D23-01 A/B BMS/EPMS | 1d | 2026-05-13 | 2026-05-13 | DC1-RPP-L3-CX-5255 | 53d | 21d | Riley Warring | PRM |

Notes:
- DC1-RPP-L3-CX-5105: Steps: EC Startup Report; Vendor Startup
- DC1-RPP-L3-CX-5135: Steps: EC Startup Report; Vendor Startup
- DC1-RPP-L3-CX-5165: Steps: EC Startup Report; Vendor Startup
- DC1-RPP-L3-CX-5195: Steps: EC Startup Report; Vendor Startup
- DC1-RPP-L3-CX-5225: Steps: EC Startup Report; Vendor Startup
- DC1-RPP-L3-CX-5255: Steps: EC Startup Report; Vendor Startup

| ID | WBS | Activity | Duration | Start | Finish | Predecessors | Total float | Free float | Layton Responsible Party | Vendor Responsible Party |
| --- | --- | --- | --- | --- | --- | --- | --- | --- | --- | --- |
|  | 02 | **DC1-DH2300-RPP-D23-02 Cx L3** |  | 2026-05-08 | 2026-05-13 |  |  |  |  |  |
| DC1-RPP-L3-CX-5275 |  | DC1-RPP-D23-02 A/B FTE | 1d | 2026-05-08 | 2026-05-08 | DC1-RPP-L2-3270, DC1-COD-L3-CX-5275 | 53d | 0d | Riley Warring | ROS |
| DC1-RPP-L3-CX-5285 |  | DC1-RPP-D23-02 A/B L3 Startup | 2d | 2026-05-11 | 2026-05-12 | DC1-RPP-L3-CX-5275 | 53d | 0d | Riley Warring | SQD |
| DC1-RPP-L3-CX-5295 |  | DC1-RPP-D23-02 A/B BMS/EPMS | 1d | 2026-05-13 | 2026-05-13 | DC1-RPP-L3-CX-5285 | 53d | 21d | Riley Warring | PRM |
|  | 03 | **DC1-DH2300-RPP-D23-03 Cx L3** |  | 2026-05-08 | 2026-05-13 |  |  |  |  |  |
| DC1-RPP-L3-CX-5305 |  | DC1-RPP-D23-03 A/B FTE | 1d | 2026-05-08 | 2026-05-08 | DC1-RPP-L2-3280, DC1-COD-L3-CX-5305 | 53d | 0d | Riley Warring | ROS |
| DC1-RPP-L3-CX-5315 |  | DC1-RPP-D23-03 A/B L3 Startup | 2d | 2026-05-11 | 2026-05-12 | DC1-RPP-L3-CX-5305 | 53d | 0d | Riley Warring | SQD |
| DC1-RPP-L3-CX-5325 |  | DC1-RPP-D23-03 A/B BMS/EPMS | 1d | 2026-05-13 | 2026-05-13 | DC1-RPP-L3-CX-5315 | 53d | 21d | Riley Warring | PRM |
|  | 04 | **DC1-DH2300-RPP-D23-04 Cx L3** |  | 2026-05-08 | 2026-05-13 |  |  |  |  |  |
| DC1-RPP-L3-CX-5335 |  | DC1-RPP-D23-04 A/B FTE | 1d | 2026-05-08 | 2026-05-08 | DC1-RPP-L2-3290, DC1-COD-L3-CX-5335 | 53d | 0d | Riley Warring | ROS |
| DC1-RPP-L3-CX-5345 |  | DC1-RPP-D23-04 A/B L3 Startup | 2d | 2026-05-11 | 2026-05-12 | DC1-RPP-L3-CX-5335 | 53d | 0d | Riley Warring | SQD |
| DC1-RPP-L3-CX-5355 |  | DC1-RPP-D23-04 A/B BMS/EPMS | 1d | 2026-05-13 | 2026-05-13 | DC1-RPP-L3-CX-5345 | 53d | 21d | Riley Warring | PRM |
|  | 05 | **DC1-DH2300-RPP-D23-05 Cx L3** |  | 2026-05-08 | 2026-05-13 |  |  |  |  |  |
| DC1-RPP-L3-CX-5365 |  | DC1-RPP-D23-05 A/B FTE | 1d | 2026-05-08 | 2026-05-08 | DC1-RPP-L2-3300, DC1-COD-L3-CX-5365 | 53d | 0d | Riley Warring | ROS |
| DC1-RPP-L3-CX-5375 |  | DC1-RPP-D23-05 A/B L3 Startup | 2d | 2026-05-11 | 2026-05-12 | DC1-RPP-L3-CX-5365 | 53d | 0d | Riley Warring | SQD |
| DC1-RPP-L3-CX-5385 |  | DC1-RPP-D23-05 A/B BMS/EPMS | 1d | 2026-05-13 | 2026-05-13 | DC1-RPP-L3-CX-5375 | 53d | 21d | Riley Warring | PRM |
|  | 06 | **DC1-DH2300-RPP-D23-06 Cx L3** |  | 2026-05-08 | 2026-05-13 |  |  |  |  |  |
| DC1-RPP-L3-CX-5395 |  | DC1-RPP-D23-06 A/B FTE | 1d | 2026-05-08 | 2026-05-08 | DC1-RPP-L2-3310, DC1-COD-L3-CX-5395 | 53d | 0d | Riley Warring | ROS |
| DC1-RPP-L3-CX-5405 |  | DC1-RPP-D23-06 A/B L3 Startup | 2d | 2026-05-11 | 2026-05-12 | DC1-RPP-L3-CX-5395 | 53d | 0d | Riley Warring | SQD |
| DC1-RPP-L3-CX-5415 |  | DC1-RPP-D23-06 A/B BMS/EPMS | 1d | 2026-05-13 | 2026-05-13 | DC1-RPP-L3-CX-5405 | 53d | 21d | Riley Warring | PRM |
|  | 05 | **DC1-DH2300-RPP-E23 Cx L3** |  | 2026-05-08 | 2026-05-13 |  |  |  |  |  |
|  | 01 | **DC1-DH2300-RPP-E23-01 Cx L3** |  | 2026-05-08 | 2026-05-13 |  |  |  |  |  |
| DC1-RPP-L3-CX-5425 |  | DC1-RPP-E23-01 A/B FTE | 1d | 2026-05-08 | 2026-05-08 | DC1-RPP-L2-3320, DC1-COD-L3-CX-5425 | 53d | 0d | Riley Warring | ROS |
| DC1-RPP-L3-CX-5435 |  | DC1-RPP-E23-01 A/B L3 Startup | 2d | 2026-05-11 | 2026-05-12 | DC1-RPP-L3-CX-5425 | 53d | 0d | Riley Warring | SQD |
| DC1-RPP-L3-CX-5445 |  | DC1-RPP-E23-01 A/B BMS/EPMS | 1d | 2026-05-13 | 2026-05-13 | DC1-RPP-L3-CX-5435 | 53d | 21d | Riley Warring | PRM |

Notes:
- DC1-RPP-L3-CX-5285: Steps: EC Startup Report; Vendor Startup
- DC1-RPP-L3-CX-5315: Steps: EC Startup Report; Vendor Startup
- DC1-RPP-L3-CX-5345: Steps: EC Startup Report; Vendor Startup
- DC1-RPP-L3-CX-5375: Steps: EC Startup Report; Vendor Startup
- DC1-RPP-L3-CX-5405: Steps: EC Startup Report; Vendor Startup
- DC1-RPP-L3-CX-5435: Steps: EC Startup Report; Vendor Startup

| ID | WBS | Activity | Duration | Start | Finish | Predecessors | Total float | Free float | Layton Responsible Party | Vendor Responsible Party |
| --- | --- | --- | --- | --- | --- | --- | --- | --- | --- | --- |
|  | 02 | **DC1-DH2300-RPP-E23-02 Cx L3** |  | 2026-05-08 | 2026-05-13 |  |  |  |  |  |
| DC1-RPP-L3-CX-5455 |  | DC1-RPP-E23-02 A/B FTE | 1d | 2026-05-08 | 2026-05-08 | DC1-RPP-L2-3330, DC1-COD-L3-CX-5455 | 53d | 0d | Riley Warring | ROS |
| DC1-RPP-L3-CX-5465 |  | DC1-RPP-E23-02 A/B L3 Startup | 2d | 2026-05-11 | 2026-05-12 | DC1-RPP-L3-CX-5455 | 53d | 0d | Riley Warring | SQD |
| DC1-RPP-L3-CX-5475 |  | DC1-RPP-E23-02 A/B BMS/EPMS | 1d | 2026-05-13 | 2026-05-13 | DC1-RPP-L3-CX-5465 | 53d | 21d | Riley Warring | PRM |
|  | 03 | **DC1-DH2300-RPP-E23-03 Cx L3** |  | 2026-05-08 | 2026-05-13 |  |  |  |  |  |
| DC1-RPP-L3-CX-5485 |  | DC1-RPP-E23-03 A/B FTE | 1d | 2026-05-08 | 2026-05-08 | DC1-RPP-L2-3340, DC1-COD-L3-CX-5485 | 53d | 0d | Riley Warring | ROS |
| DC1-RPP-L3-CX-5495 |  | DC1-RPP-E23-03 A/B L3 Startup | 2d | 2026-05-11 | 2026-05-12 | DC1-RPP-L3-CX-5485 | 53d | 0d | Riley Warring | SQD |
| DC1-RPP-L3-CX-5505 |  | DC1-RPP-E23-03 A/B BMS/EPMS | 1d | 2026-05-13 | 2026-05-13 | DC1-RPP-L3-CX-5495 | 53d | 21d | Riley Warring | PRM |
|  | 04 | **DC1-DH2300-RPP-E23-04 Cx L3** |  | 2026-05-08 | 2026-05-13 |  |  |  |  |  |
| DC1-RPP-L3-CX-5515 |  | DC1-RPP-E23-04 A/B FTE | 1d | 2026-05-08 | 2026-05-08 | DC1-RPP-L2-3350, DC1-COD-L3-CX-5515 | 53d | 0d | Riley Warring | ROS |
| DC1-RPP-L3-CX-5525 |  | DC1-RPP-E23-04 A/B L3 Startup | 2d | 2026-05-11 | 2026-05-12 | DC1-RPP-L3-CX-5515 | 53d | 0d | Riley Warring | SQD |
| DC1-RPP-L3-CX-5535 |  | DC1-RPP-E23-04 A/B BMS/EPMS | 1d | 2026-05-13 | 2026-05-13 | DC1-RPP-L3-CX-5525 | 53d | 21d | Riley Warring | PRM |
|  | 05 | **DC1-DH2300-RPP-E23-05 Cx L3** |  | 2026-05-08 | 2026-05-13 |  |  |  |  |  |
| DC1-RPP-L3-CX-5545 |  | DC1-RPP-E23-05 A/B FTE | 1d | 2026-05-08 | 2026-05-08 | DC1-RPP-L2-3360, DC1-COD-L3-CX-5545 | 53d | 0d | Riley Warring | ROS |
| DC1-RPP-L3-CX-5555 |  | DC1-RPP-E23-05 A/B L3 Startup | 2d | 2026-05-11 | 2026-05-12 | DC1-RPP-L3-CX-5545 | 53d | 0d | Riley Warring | SQD |
| DC1-RPP-L3-CX-5565 |  | DC1-RPP-E23-05 A/B BMS/EPMS | 1d | 2026-05-13 | 2026-05-13 | DC1-RPP-L3-CX-5555 | 53d | 21d | Riley Warring | PRM |
|  | 06 | **DC1-DH2300-RPP-E23-06 Cx L3** |  | 2026-05-08 | 2026-05-13 |  |  |  |  |  |
| DC1-RPP-L3-CX-5575 |  | DC1-RPP-E23-06 A/B FTE | 1d | 2026-05-08 | 2026-05-08 | DC1-RPP-L2-3370, DC1-COD-L3-CX-5575 | 53d | 0d | Riley Warring | ROS |
| DC1-RPP-L3-CX-5585 |  | DC1-RPP-E23-06 A/B L3 Startup | 2d | 2026-05-11 | 2026-05-12 | DC1-RPP-L3-CX-5575 | 53d | 0d | Riley Warring | SQD |
| DC1-RPP-L3-CX-5595 |  | DC1-RPP-E23-06 A/B BMS/EPMS | 1d | 2026-05-13 | 2026-05-13 | DC1-RPP-L3-CX-5585 | 53d | 21d | Riley Warring | PRM |
|  | 06 | **DC1-DH2300-RPP-F23 Cx L3** |  | 2026-05-08 | 2026-05-13 |  |  |  |  |  |
|  | 01 | **DC1-DH2300-RPP-F23-01 Cx L3** |  | 2026-05-08 | 2026-05-13 |  |  |  |  |  |
| DC1-RPP-L3-CX-5605 |  | DC1-RPP-F23-01 A/B FTE | 1d | 2026-05-08 | 2026-05-08 | DC1-RPP-L2-3380, DC1-COD-L3-CX-5605 | 53d | 0d | Riley Warring | ROS |
| DC1-RPP-L3-CX-5615 |  | DC1-RPP-F23-01 A/B L3 Startup | 2d | 2026-05-11 | 2026-05-12 | DC1-RPP-L3-CX-5605 | 53d | 0d | Riley Warring | SQD |
| DC1-RPP-L3-CX-5625 |  | DC1-RPP-F23-01 A/B BMS/EPMS | 1d | 2026-05-13 | 2026-05-13 | DC1-RPP-L3-CX-5615 | 53d | 21d | Riley Warring | PRM |

Notes:
- DC1-RPP-L3-CX-5465: Steps: EC Startup Report; Vendor Startup
- DC1-RPP-L3-CX-5495: Steps: EC Startup Report; Vendor Startup
- DC1-RPP-L3-CX-5525: Steps: EC Startup Report; Vendor Startup
- DC1-RPP-L3-CX-5555: Steps: EC Startup Report; Vendor Startup
- DC1-RPP-L3-CX-5585: Steps: EC Startup Report; Vendor Startup
- DC1-RPP-L3-CX-5615: Steps: EC Startup Report; Vendor Startup

| ID | WBS | Activity | Duration | Start | Finish | Predecessors | Total float | Free float | Layton Responsible Party | Vendor Responsible Party |
| --- | --- | --- | --- | --- | --- | --- | --- | --- | --- | --- |
|  | 02 | **DC1-DH2300-RPP-F23-02 Cx L3** |  | 2026-05-08 | 2026-05-13 |  |  |  |  |  |
| DC1-RPP-L3-CX-5635 |  | DC1-RPP-F23-02 A/B FTE | 1d | 2026-05-08 | 2026-05-08 | DC1-RPP-L2-3390, DC1-COD-L3-CX-5635 | 53d | 0d | Riley Warring | ROS |
| DC1-RPP-L3-CX-5645 |  | DC1-RPP-F23-02 A/B L3 Startup | 2d | 2026-05-11 | 2026-05-12 | DC1-RPP-L3-CX-5635 | 53d | 0d | Riley Warring | SQD |
| DC1-RPP-L3-CX-5655 |  | DC1-RPP-F23-02 A/B BMS/EPMS | 1d | 2026-05-13 | 2026-05-13 | DC1-RPP-L3-CX-5645 | 53d | 21d | Riley Warring | PRM |
|  | 03 | **DC1-DH2300-RPP-F23-03 Cx L3** |  | 2026-05-08 | 2026-05-13 |  |  |  |  |  |
| DC1-RPP-L3-CX-5665 |  | DC1-RPP-F23-03 A/B FTE | 1d | 2026-05-08 | 2026-05-08 | DC1-RPP-L2-3400, DC1-COD-L3-CX-5665 | 53d | 0d | Riley Warring | ROS |
| DC1-RPP-L3-CX-5675 |  | DC1-RPP-F23-03 A/B L3 Startup | 2d | 2026-05-11 | 2026-05-12 | DC1-RPP-L3-CX-5665 | 53d | 0d | Riley Warring | SQD |
| DC1-RPP-L3-CX-5685 |  | DC1-RPP-F23-03 A/B BMS/EPMS | 1d | 2026-05-13 | 2026-05-13 | DC1-RPP-L3-CX-5675 | 53d | 21d | Riley Warring | PRM |
|  | 04 | **DC1-DH2300-RPP-F23-04 Cx L3** |  | 2026-05-08 | 2026-05-13 |  |  |  |  |  |
| DC1-RPP-L3-CX-5695 |  | DC1-RPP-F23-04 A/B FTE | 1d | 2026-05-08 | 2026-05-08 | DC1-RPP-L2-3410, DC1-COD-L3-CX-5695 | 53d | 0d | Riley Warring | ROS |
| DC1-RPP-L3-CX-5705 |  | DC1-RPP-F23-04 A/B L3 Startup | 2d | 2026-05-11 | 2026-05-12 | DC1-RPP-L3-CX-5695 | 53d | 0d | Riley Warring | SQD |
| DC1-RPP-L3-CX-5715 |  | DC1-RPP-F23-04 A/B BMS/EPMS | 1d | 2026-05-13 | 2026-05-13 | DC1-RPP-L3-CX-5705 | 53d | 21d | Riley Warring | PRM |
|  | 05 | **DC1-DH2300-RPP-F23-05 Cx L3** |  | 2026-05-08 | 2026-05-13 |  |  |  |  |  |
| DC1-RPP-L3-CX-5725 |  | DC1-RPP-F23-05 A/B FTE | 1d | 2026-05-08 | 2026-05-08 | DC1-RPP-L2-3420, DC1-COD-L3-CX-5725 | 53d | 0d | Riley Warring | ROS |
| DC1-RPP-L3-CX-5735 |  | DC1-RPP-F23-05 A/B L3 Startup | 2d | 2026-05-11 | 2026-05-12 | DC1-RPP-L3-CX-5725 | 53d | 0d | Riley Warring | SQD |
| DC1-RPP-L3-CX-5745 |  | DC1-RPP-F23-05 A/B BMS/EPMS | 1d | 2026-05-13 | 2026-05-13 | DC1-RPP-L3-CX-5735 | 53d | 21d | Riley Warring | PRM |
|  | 06 | **DC1-DH2300-RPP-F23-06 Cx L3** |  | 2026-05-08 | 2026-05-13 |  |  |  |  |  |
| DC1-RPP-L3-CX-5755 |  | DC1-RPP-F23-06 A/B FTE | 1d | 2026-05-08 | 2026-05-08 | DC1-RPP-L2-3430, DC1-COD-L3-CX-5755 | 53d | 0d | Riley Warring | ROS |
| DC1-RPP-L3-CX-5765 |  | DC1-RPP-F23-06 A/B L3 Startup | 2d | 2026-05-11 | 2026-05-12 | DC1-RPP-L3-CX-5755 | 53d | 0d | Riley Warring | SQD |
| DC1-RPP-L3-CX-5775 |  | DC1-RPP-F23-06 A/B BMS/EPMS | 1d | 2026-05-13 | 2026-05-13 | DC1-RPP-L3-CX-5765 | 53d | 21d | Riley Warring | PRM |
|  | 08 | **DC1-DH2300 MOD-02 Cx L3** |  | 2026-04-30 | 2026-06-01 |  |  |  |  |  |
|  | 01 | **DC1-DH2300 MOD-A23-02 Cx L3** |  | 2026-04-30 | 2026-05-05 |  |  |  |  |  |
| DC1-MOD2-L3-Cx-2630 |  | DC1-MOD-A23-02 FTE | 1d | 2026-04-30 | 2026-04-30 | DC1-MOD02-L2-2210, DC1-SWD-L3-CX-2630 | 32d | 0d |  | ROS |
| DC1-MOD2-L3-Cx-2640 |  | DC1-MOD-A23-02 L3 Startup | 2d | 2026-05-01 | 2026-05-04 | DC1-MOD2-L3-Cx-2630 | 37d | 0d |  | PHE |
| DC1-MOD2-L3-Cx-2650 |  | DC1-MOD-A23-02 BMS/EPMS | 1d | 2026-05-05 | 2026-05-05 | DC1-MOD2-L3-Cx-2640 | 37d | 18d |  | PRM |

Notes:
- DC1-RPP-L3-CX-5645: Steps: EC Startup Report; Vendor Startup
- DC1-RPP-L3-CX-5675: Steps: EC Startup Report; Vendor Startup
- DC1-RPP-L3-CX-5705: Steps: EC Startup Report; Vendor Startup
- DC1-RPP-L3-CX-5735: Steps: EC Startup Report; Vendor Startup
- DC1-RPP-L3-CX-5765: Steps: EC Startup Report; Vendor Startup
- DC1-MOD2-L3-Cx-2640: Steps: EC Startup Report; Vendor Startup

| ID | WBS | Activity | Duration | Start | Finish | Predecessors | Total float | Free float | Vendor Responsible Party |
| --- | --- | --- | --- | --- | --- | --- | --- | --- | --- |
|  | 02 | **DC1-DH2300 MOD-B23-02 Cx L3** |  | 2026-05-05 | 2026-05-08 |  |  |  |  |
| DC1-MOD2-L3-Cx-2660 |  | DC1-MOD-B23-02 FTE | 1d | 2026-05-05 | 2026-05-05 | DC1-MOD02-L2-2220, DC1-SWD-L3-CX-2660 | 29d | 0d | ROS |
| DC1-MOD2-L3-Cx-2670 |  | DC1-MOD-B23-02 L3 Startup | 2d | 2026-05-06 | 2026-05-07 | DC1-MOD2-L3-Cx-2660 | 34d | 0d | PHE |
| DC1-MOD2-L3-Cx-2680 |  | DC1-MOD-B23-02 BMS/EPMS | 1d | 2026-05-08 | 2026-05-08 | DC1-MOD2-L3-Cx-2670 | 34d | 15d | PRM |
|  | 03 | **DC1-DH2300 MOD-C23-02 Cx L3** |  | 2026-05-08 | 2026-05-13 |  |  |  |  |
| DC1-MOD2-L3-Cx-2690 |  | DC1-MOD-C23-02 FTE | 1d | 2026-05-08 | 2026-05-08 | DC1-MOD02-L2-2230, DC1-SWD-L3-CX-2690 | 26d | 0d | ROS |
| DC1-MOD2-L3-Cx-2700 |  | DC1-MOD-C23-02 L3 Startup | 2d | 2026-05-11 | 2026-05-12 | DC1-MOD2-L3-Cx-2690 | 31d | 0d | PHE |
| DC1-MOD2-L3-Cx-2710 |  | DC1-MOD-C23-02 BMS/EPMS | 1d | 2026-05-13 | 2026-05-13 | DC1-MOD2-L3-Cx-2700 | 31d | 12d | PRM |
|  | 04 | **DC1-DH2300 MOD-D23-02 Cx L3** |  | 2026-05-13 | 2026-05-18 |  |  |  |  |
| DC1-MOD2-L3-Cx-2720 |  | DC1-MOD-D23-02 FTE | 1d | 2026-05-13 | 2026-05-13 | DC1-MOD02-L2-2240, DC1-SWD-L3-CX-2720 | 22d | 0d | ROS |
| DC1-MOD2-L3-Cx-2730 |  | DC1-MOD-D23-02 L3 Startup | 2d | 2026-05-14 | 2026-05-15 | DC1-MOD2-L3-Cx-2720 | 28d | 0d | PHE |
| DC1-MOD2-L3-Cx-2740 |  | DC1-MOD-D23-02 BMS/EPMS | 1d | 2026-05-18 | 2026-05-18 | DC1-MOD2-L3-Cx-2730 | 28d | 9d | PRM |
|  | 05 | **DC1-DH2300 MOD-E23-02 Cx L3** |  | 2026-05-18 | 2026-05-21 |  |  |  |  |
| DC1-MOD2-L3-Cx-2750 |  | DC1-MOD-E23-02 FTE | 1d | 2026-05-18 | 2026-05-18 | DC1-MOD02-L2-2250, DC1-SWD-L3-CX-2750 | 20d | 0d | ROS |
| DC1-MOD2-L3-Cx-2760 |  | DC1-MOD-E23-02 L3 Startup | 2d | 2026-05-19 | 2026-05-20 | DC1-MOD2-L3-Cx-2750 | 25d | 0d | PHE |
| DC1-MOD2-L3-Cx-2770 |  | DC1-MOD-E23-02 BMS/EPMS | 1d | 2026-05-21 | 2026-05-21 | DC1-MOD2-L3-Cx-2760 | 25d | 6d | PRM |
|  | 06 | **DC1-DH2300 MOD-F23-02 Cx L3** |  | 2026-05-21 | 2026-05-27 |  |  |  |  |
| DC1-MOD2-L3-Cx-2780 |  | DC1-MOD-F23-02 FTE | 1d | 2026-05-21 | 2026-05-21 | DC1-MOD02-L2-2260, DC1-SWD-L3-CX-2780 | 17d | 0d | ROS |
| DC1-MOD2-L3-Cx-2790 |  | DC1-MOD-F23-02 L3 Startup | 2d | 2026-05-22 | 2026-05-26 | DC1-MOD2-L3-Cx-2780 | 22d | 0d | PHE |
| DC1-MOD2-L3-Cx-2800 |  | DC1-MOD-F23-02 BMS/EPMS | 1d | 2026-05-27 | 2026-05-27 | DC1-MOD2-L3-Cx-2790 | 22d | 3d | PRM |
|  | 07 | **DC1-DH2300 MOD-R23-02 Cx L3** |  | 2026-05-27 | 2026-06-01 |  |  |  |  |
| DC1-MOD2-L3-Cx-2810 |  | DC1-MOD-R23-02 FTE | 1d | 2026-05-27 | 2026-05-27 | DC1-MOD02-L2-2270, DC1-SWD-L3-CX-2810 | 13d | 0d | ROS |
| DC1-MOD2-L3-Cx-2820 |  | DC1-MOD-R23-02 L3 Startup | 2d | 2026-05-28 | 2026-05-29 | DC1-MOD2-L3-Cx-2810 | 19d | 0d | PHE |
| DC1-MOD2-L3-Cx-2830 |  | DC1-MOD-R23-02 BMS/EPMS | 1d | 2026-06-01 | 2026-06-01 | DC1-MOD2-L3-Cx-2820 | 19d | 0d | PRM |

Notes:
- DC1-MOD2-L3-Cx-2670: Steps: EC Startup Report; Vendor Startup
- DC1-MOD2-L3-Cx-2700: Steps: EC Startup Report; Vendor Startup
- DC1-MOD2-L3-Cx-2730: Steps: EC Startup Report; Vendor Startup
- DC1-MOD2-L3-Cx-2760: Steps: EC Startup Report; Vendor Startup
- DC1-MOD2-L3-Cx-2790: Steps: EC Startup Report; Vendor Startup
- DC1-MOD2-L3-Cx-2820: Steps: EC Startup Report; Vendor Startup

| ID | WBS | Activity | Duration | Start | Finish | Predecessors | Total float | Free float | Vendor Responsible Party |
| --- | --- | --- | --- | --- | --- | --- | --- | --- | --- |
|  | 09 | **DC1-DH2300 MOD-03 Cx L3** |  | 2026-04-30 | 2026-06-01 |  |  |  |  |
|  | 01 | **DC1-DH2300 MOD-A23-03 Cx L3** |  | 2026-04-30 | 2026-05-05 |  |  |  |  |
| DC1-MOD3-L3-Cx-2630 |  | DC1-MOD-A23-03 FTE | 1d | 2026-04-30 | 2026-04-30 | DC1-MOD03-L2-2210, DC1-UPSM-L3-CX-2630 | 37d | 0d | ROS |
| DC1-MOD3-L3-Cx-2640 |  | DC1-MOD-A23-03 L3 Startup | 2d | 2026-05-01 | 2026-05-04 | DC1-MOD3-L3-Cx-2630 | 37d | 0d | PHE |
| DC1-MOD3-L3-Cx-2650 |  | DC1-MOD-A23-03 BMS/EPMS | 1d | 2026-05-05 | 2026-05-05 | DC1-MOD3-L3-Cx-2640 | 37d | 18d | PRM |
|  | 02 | **DC1-DH2300 MOD-B23-03 Cx L3** |  | 2026-05-05 | 2026-05-08 |  |  |  |  |
| DC1-MOD3-L3-Cx-2660 |  | DC1-MOD-B23-03 FTE | 1d | 2026-05-05 | 2026-05-05 | DC1-MOD03-L2-2220, DC1-UPSM-L3-CX-2660 | 34d | 0d | ROS |
| DC1-MOD3-L3-Cx-2670 |  | DC1-MOD-B23-03 L3 Startup | 2d | 2026-05-06 | 2026-05-07 | DC1-MOD3-L3-Cx-2660 | 34d | 0d | PHE |
| DC1-MOD3-L3-Cx-2680 |  | DC1-MOD-B23-03 BMS/EPMS | 1d | 2026-05-08 | 2026-05-08 | DC1-MOD3-L3-Cx-2670 | 34d | 15d | PRM |
|  | 03 | **DC1-DH2300 MOD-C23-03 Cx L3** |  | 2026-05-08 | 2026-05-13 |  |  |  |  |
| DC1-MOD3-L3-Cx-2690 |  | DC1-MOD-C23-03 FTE | 1d | 2026-05-08 | 2026-05-08 | DC1-MOD03-L2-2230, DC1-UPSM-L3-CX-2690 | 31d | 0d | ROS |
| DC1-MOD3-L3-Cx-2700 |  | DC1-MOD-C23-03 L3 Startup | 2d | 2026-05-11 | 2026-05-12 | DC1-MOD3-L3-Cx-2690 | 31d | 0d | PHE |
| DC1-MOD3-L3-Cx-2710 |  | DC1-MOD-C23-03 BMS/EPMS | 1d | 2026-05-13 | 2026-05-13 | DC1-MOD3-L3-Cx-2700 | 31d | 12d | PRM |
|  | 04 | **DC1-DH2300 MOD-D23-03 Cx L3** |  | 2026-05-13 | 2026-05-18 |  |  |  |  |
| DC1-MOD3-L3-Cx-2720 |  | DC1-MOD-D23-03 FTE | 1d | 2026-05-13 | 2026-05-13 | DC1-MOD03-L2-2240, DC1-UPSM-L3-CX-2720 | 28d | 0d | ROS |
| DC1-MOD3-L3-Cx-2730 |  | DC1-MOD-D23-03 L3 Startup | 2d | 2026-05-14 | 2026-05-15 | DC1-MOD3-L3-Cx-2720 | 28d | 0d | PHE |
| DC1-MOD3-L3-Cx-2740 |  | DC1-MOD-D23-03 BMS/EPMS | 1d | 2026-05-18 | 2026-05-18 | DC1-MOD3-L3-Cx-2730 | 28d | 9d | PRM |
|  | 05 | **DC1-DH2300 MOD-E23-03 Cx L3** |  | 2026-05-18 | 2026-05-21 |  |  |  |  |
| DC1-MOD3-L3-Cx-2750 |  | DC1-MOD-E23-03 FTE | 1d | 2026-05-18 | 2026-05-18 | DC1-MOD03-L2-2250, DC1-UPSM-L3-CX-2750 | 25d | 0d | ROS |
| DC1-MOD3-L3-Cx-2760 |  | DC1-MOD-E23-03 L3 Startup | 2d | 2026-05-19 | 2026-05-20 | DC1-MOD3-L3-Cx-2750 | 25d | 0d | PHE |
| DC1-MOD3-L3-Cx-2770 |  | DC1-MOD-E23-03 BMS/EPMS | 1d | 2026-05-21 | 2026-05-21 | DC1-MOD3-L3-Cx-2760 | 25d | 6d | PRM |
|  | 06 | **DC1-DH2300 MOD-F23-03 Cx L3** |  | 2026-05-21 | 2026-05-27 |  |  |  |  |
| DC1-MOD3-L3-Cx-2780 |  | DC1-MOD-F23-03 FTE | 1d | 2026-05-21 | 2026-05-21 | DC1-MOD03-L2-2260, DC1-UPSM-L3-CX-2780 | 22d | 0d | ROS |
| DC1-MOD3-L3-Cx-2790 |  | DC1-MOD-F23-03 L3 Startup | 2d | 2026-05-22 | 2026-05-26 | DC1-MOD3-L3-Cx-2780 | 22d | 0d | PHE |
| DC1-MOD3-L3-Cx-2800 |  | DC1-MOD-F23-03 BMS/EPMS | 1d | 2026-05-27 | 2026-05-27 | DC1-MOD3-L3-Cx-2790 | 22d | 3d | PRM |

Notes:
- DC1-MOD3-L3-Cx-2640: Steps: EC Startup Report; Vendor Startup
- DC1-MOD3-L3-Cx-2670: Steps: EC Startup Report; Vendor Startup
- DC1-MOD3-L3-Cx-2700: Steps: EC Startup Report; Vendor Startup
- DC1-MOD3-L3-Cx-2730: Steps: EC Startup Report; Vendor Startup
- DC1-MOD3-L3-Cx-2760: Steps: EC Startup Report; Vendor Startup
- DC1-MOD3-L3-Cx-2790: Steps: EC Startup Report; Vendor Startup

| ID | WBS | Activity | Duration | Start | Finish | Predecessors | Total float | Free float | Vendor Responsible Party | Layton Responsible Party |
| --- | --- | --- | --- | --- | --- | --- | --- | --- | --- | --- |
|  | 07 | **DC1-DH2300 MOD-R23-03 Cx L3** |  | 2026-05-27 | 2026-06-01 |  |  |  |  |  |
| DC1-MOD3-L3-Cx-2810 |  | DC1-MOD-R23-03 FTE | 1d | 2026-05-27 | 2026-05-27 | DC1-MOD03-L2-2270, DC1-UPSM-L3-CX-2810 | 19d | 0d | ROS |  |
| DC1-MOD3-L3-Cx-2820 |  | DC1-MOD-R23-03 L3 Startup | 2d | 2026-05-28 | 2026-05-29 | DC1-MOD3-L3-Cx-2810 | 19d | 0d | PHE |  |
| DC1-MOD3-L3-Cx-2830 |  | DC1-MOD-R23-03 BMS/EPMS | 1d | 2026-06-01 | 2026-06-01 | DC1-MOD3-L3-Cx-2820 | 19d | 0d | PRM |  |
|  | 10 | **DC1-DH2300 CDUs Cx L3** |  | 2026-05-14 | 2026-06-11 |  |  |  |  |  |
|  | 01 | **DC1-CDU-DH2300-01 Cx L3** |  | 2026-05-14 | 2026-05-19 |  |  |  |  |  |
| DC1-CDU-L3-CX-5605 |  | CDU-DH2300-01 FTE | 1d | 2026-05-14 | 2026-05-14 | DC1-CDU-L2-3510, DC1-MOD3-L3-Cx-2630 | 49d | 0d | ROS | Riley Warring |
| DC1-CDU-L3-CX-5615 |  | CDU-DH2300-01 L3 Startup | 2d | 2026-05-15 | 2026-05-18 | DC1-CDU-L3-CX-5605 | 49d | 0d | VER | Riley Warring |
| DC1-CDU-L3-CX-5625 |  | CDU-DH2300-01 BMS/EPMS | 1d | 2026-05-19 | 2026-05-19 | DC1-CDU-L3-CX-5615 | 49d | 17d | PRM | Riley Warring |
|  | 02 | **DC1-CDU-DH2300-02 Cx L3** |  | 2026-05-14 | 2026-05-19 |  |  |  |  |  |
| DC1-CDU-L3-CX-5635 |  | CDU-DH2300-02 FTE | 1d | 2026-05-14 | 2026-05-14 | DC1-CDU-L2-3520, DC1-MOD3-L3-Cx-2630 | 49d | 0d | ROS | Riley Warring |
| DC1-CDU-L3-CX-5645 |  | CDU-DH2300-02 L3 Startup | 2d | 2026-05-15 | 2026-05-18 | DC1-CDU-L3-CX-5635 | 49d | 0d | VER | Riley Warring |
| DC1-CDU-L3-CX-5655 |  | CDU-DH2300-02 BMS/EPMS | 1d | 2026-05-19 | 2026-05-19 | DC1-CDU-L3-CX-5645 | 49d | 17d | PRM | Riley Warring |
|  | 03 | **DC1-CDU-DH2300-03 Cx L3** |  | 2026-05-14 | 2026-05-19 |  |  |  |  |  |
| DC1-CDU-L3-CX-5665 |  | CDU-DH2300-03 FTE | 1d | 2026-05-14 | 2026-05-14 | DC1-CDU-L2-3530, DC1-MOD3-L3-Cx-2630 | 49d | 0d | ROS | Riley Warring |
| DC1-CDU-L3-CX-5675 |  | CDU-DH2300-03 L3 Startup | 2d | 2026-05-15 | 2026-05-18 | DC1-CDU-L3-CX-5665 | 49d | 0d | VER | Riley Warring |
| DC1-CDU-L3-CX-5685 |  | CDU-DH2300-03 BMS/EPMS | 1d | 2026-05-19 | 2026-05-19 | DC1-CDU-L3-CX-5675 | 49d | 17d | PRM | Riley Warring |
|  | 04 | **DC1-CDU-DH2300-04 Cx L3** |  | 2026-05-22 | 2026-05-28 |  |  |  |  |  |
| DC1-CDU-L3-CX-5695 |  | CDU-DH2300-04 FTE | 1d | 2026-05-22 | 2026-05-22 | DC1-CDU-L2-3540, DC1-MOD3-L3-Cx-2630 | 43d | 0d | ROS | Riley Warring |
| DC1-CDU-L3-CX-5705 |  | CDU-DH2300-04 L3 Startup | 2d | 2026-05-26 | 2026-05-27 | DC1-CDU-L3-CX-5695 | 43d | 0d | VER | Riley Warring |
| DC1-CDU-L3-CX-5715 |  | CDU-DH2300-04 BMS/EPMS | 1d | 2026-05-28 | 2026-05-28 | DC1-CDU-L3-CX-5705 | 43d | 11d | PRM | Riley Warring |
|  | 05 | **DC1-CDU-DH2300-05 Cx L3** |  | 2026-05-22 | 2026-05-28 |  |  |  |  |  |
| DC1-CDU-L3-CX-5725 |  | CDU-DH2300-05 FTE | 1d | 2026-05-22 | 2026-05-22 | DC1-CDU-L2-3550, DC1-MOD3-L3-Cx-2630 | 43d | 0d | ROS | Riley Warring |
| DC1-CDU-L3-CX-5735 |  | CDU-DH2300-05 L3 Startup | 2d | 2026-05-26 | 2026-05-27 | DC1-CDU-L3-CX-5725 | 43d | 0d | VER | Riley Warring |
| DC1-CDU-L3-CX-5745 |  | CDU-DH2300-05 BMS/EPMS | 1d | 2026-05-28 | 2026-05-28 | DC1-CDU-L3-CX-5735 | 43d | 11d | PRM | Riley Warring |

Notes:
- DC1-MOD3-L3-Cx-2820: Steps: EC Startup Report; Vendor Startup
- DC1-CDU-L3-CX-5615: Steps: EC Startup Report; MC Installation Checklist; Vendor Startup
- DC1-CDU-L3-CX-5645: Steps: EC Startup Report; MC Installation Checklist; Vendor Startup
- DC1-CDU-L3-CX-5675: Steps: EC Startup Report; MC Installation Checklist; Vendor Startup
- DC1-CDU-L3-CX-5705: Steps: EC Startup Report; MC Installation Checklist; Vendor Startup
- DC1-CDU-L3-CX-5735: Steps: EC Startup Report; MC Installation Checklist; Vendor Startup

| ID | WBS | Activity | Duration | Start | Finish | Predecessors | Total float | Free float | Layton Responsible Party | Vendor Responsible Party |
| --- | --- | --- | --- | --- | --- | --- | --- | --- | --- | --- |
|  | 06 | **DC1-CDU-DH2300-06 Cx L3** |  | 2026-05-22 | 2026-05-28 |  |  |  |  |  |
| DC1-CDU-L3-CX-5755 |  | CDU-DH2300-06 FTE | 1d | 2026-05-22 | 2026-05-22 | DC1-CDU-L2-3560, DC1-MOD3-L3-Cx-2630 | 43d | 0d | Riley Warring | ROS |
| DC1-CDU-L3-CX-5765 |  | CDU-DH2300-06 L3 Startup | 2d | 2026-05-26 | 2026-05-27 | DC1-CDU-L3-CX-5755 | 43d | 0d | Riley Warring | VER |
| DC1-CDU-L3-CX-5775 |  | CDU-DH2300-06 BMS/EPMS | 1d | 2026-05-28 | 2026-05-28 | DC1-CDU-L3-CX-5765 | 43d | 11d | Riley Warring | PRM |
|  | 07 | **DC1-CDU-DH2300-07 Cx L3** |  | 2026-06-02 | 2026-06-05 |  |  |  |  |  |
| DC1-CDU-L3-CX-5785 |  | CDU-DH2300-07 FTE | 1d | 2026-06-02 | 2026-06-02 | DC1-CDU-L2-3570, DC1-MOD3-L3-Cx-2660 | 37d | 0d | Riley Warring | ROS |
| DC1-CDU-L3-CX-5795 |  | CDU-DH2300-07 L3 Startup | 2d | 2026-06-03 | 2026-06-04 | DC1-CDU-L3-CX-5785 | 37d | 0d | Riley Warring | VER |
| DC1-CDU-L3-CX-5805 |  | CDU-DH2300-07 BMS/EPMS | 1d | 2026-06-05 | 2026-06-05 | DC1-CDU-L3-CX-5795 | 37d | 5d | Riley Warring | PRM |
|  | 08 | **DC1-CDU-DH2300-08 Cx L3** |  | 2026-06-02 | 2026-06-05 |  |  |  |  |  |
| DC1-CDU-L3-CX-5815 |  | CDU-DH2300-08 FTE | 1d | 2026-06-02 | 2026-06-02 | DC1-CDU-L2-3580, DC1-MOD3-L3-Cx-2660 | 37d | 0d | Riley Warring | ROS |
| DC1-CDU-L3-CX-5825 |  | CDU-DH2300-08 L3 Startup | 2d | 2026-06-03 | 2026-06-04 | DC1-CDU-L3-CX-5815 | 37d | 0d | Riley Warring | VER |
| DC1-CDU-L3-CX-5835 |  | CDU-DH2300-08 BMS/EPMS | 1d | 2026-06-05 | 2026-06-05 | DC1-CDU-L3-CX-5825 | 37d | 5d | Riley Warring | PRM |
|  | 09 | **DC1-CDU-DH2300-09 Cx L3** |  | 2026-06-02 | 2026-06-05 |  |  |  |  |  |
| DC1-CDU-L3-CX-5845 |  | CDU-DH2300-09 FTE | 1d | 2026-06-02 | 2026-06-02 | DC1-CDU-L2-3590, DC1-MOD3-L3-Cx-2660 | 37d | 0d | Riley Warring | ROS |
| DC1-CDU-L3-CX-5855 |  | CDU-DH2300-09 L3 Startup | 2d | 2026-06-03 | 2026-06-04 | DC1-CDU-L3-CX-5845 | 37d | 0d | Riley Warring | VER |
| DC1-CDU-L3-CX-5865 |  | CDU-DH2300-09 BMS/EPMS | 1d | 2026-06-05 | 2026-06-05 | DC1-CDU-L3-CX-5855 | 37d | 5d | Riley Warring | PRM |
|  | 10 | **DC1-CDU-DH2300-10 Cx L3** |  | 2026-05-21 | 2026-05-27 |  |  |  |  |  |
| DC1-CDU-L3-CX-5875 |  | CDU-DH2300-10 FTE | 1d | 2026-05-21 | 2026-05-21 | DC1-CDU-L2-3600, DC1-MOD3-L3-Cx-2660 | 44d | 0d |  | ROS |
| DC1-CDU-L3-CX-5885 |  | CDU-DH2300-10 L3 Startup | 2d | 2026-05-22 | 2026-05-26 | DC1-CDU-L3-CX-5875 | 44d | 0d | Riley Warring | VER |
| DC1-CDU-L3-CX-5895 |  | CDU-DH2300-10 BMS/EPMS | 1d | 2026-05-27 | 2026-05-27 | DC1-CDU-L3-CX-5885 | 44d | 12d | Riley Warring | PRM |
|  | 11 | **DC1-CDU-DH2300-11 Cx L3** |  | 2026-05-21 | 2026-05-27 |  |  |  |  |  |
| DC1-CDU-L3-CX-5905 |  | CDU-DH2300-11 FTE | 1d | 2026-05-21 | 2026-05-21 | DC1-CDU-L2-3610, DC1-MOD3-L3-Cx-2660 | 44d | 0d |  | ROS |
| DC1-CDU-L3-CX-5915 |  | CDU-DH2300-11 L3 Startup | 2d | 2026-05-22 | 2026-05-26 | DC1-CDU-L3-CX-5905 | 44d | 0d | Riley Warring | VER |
| DC1-CDU-L3-CX-5925 |  | CDU-DH2300-11 BMS/EPMS | 1d | 2026-05-27 | 2026-05-27 | DC1-CDU-L3-CX-5915 | 44d | 12d | Riley Warring | PRM |

Notes:
- DC1-CDU-L3-CX-5765: Steps: EC Startup Report; MC Installation Checklist; Vendor Startup
- DC1-CDU-L3-CX-5795: Steps: EC Startup Report; MC Installation Checklist; Vendor Startup
- DC1-CDU-L3-CX-5825: Steps: EC Startup Report; MC Installation Checklist; Vendor Startup
- DC1-CDU-L3-CX-5855: Steps: EC Startup Report; MC Installation Checklist; Vendor Startup
- DC1-CDU-L3-CX-5885: Steps: EC Startup Report; MC Installation Checklist; Vendor Startup
- DC1-CDU-L3-CX-5915: Steps: EC Startup Report; MC Installation Checklist; Vendor Startup

| ID | WBS | Activity | Duration | Start | Finish | Predecessors | Total float | Free float | Vendor Responsible Party | Layton Responsible Party |
| --- | --- | --- | --- | --- | --- | --- | --- | --- | --- | --- |
|  | 12 | **DC1-CDU-DH2300-12 Cx L3** |  | 2026-05-21 | 2026-05-27 |  |  |  |  |  |
| DC1-CDU-L3-CX-5935 |  | CDU-DH2300-12 FTE | 1d | 2026-05-21 | 2026-05-21 | DC1-CDU-L2-3620, DC1-MOD3-L3-Cx-2660 | 44d | 0d | ROS |  |
| DC1-CDU-L3-CX-5945 |  | CDU-DH2300-12 L3 Startup | 2d | 2026-05-22 | 2026-05-26 | DC1-CDU-L3-CX-5935 | 44d | 0d | VER | Riley Warring |
| DC1-CDU-L3-CX-5955 |  | CDU-DH2300-12 BMS/EPMS | 1d | 2026-05-27 | 2026-05-27 | DC1-CDU-L3-CX-5945 | 44d | 12d | PRM | Riley Warring |
|  | 13 | **DC1-CDU-DH2300-13 Cx L3** |  | 2026-05-29 | 2026-06-03 |  |  |  |  |  |
| DC1-CDU-L3-CX-5965 |  | CDU-DH2300-13 FTE | 1d | 2026-05-29 | 2026-05-29 | DC1-CDU-L2-3630, DC1-MOD3-L3-Cx-2690 | 39d | 0d | ROS |  |
| DC1-CDU-L3-CX-5975 |  | CDU-DH2300-13 L3 Startup | 2d | 2026-06-01 | 2026-06-02 | DC1-CDU-L3-CX-5965 | 39d | 0d | VER | Riley Warring |
| DC1-CDU-L3-CX-5985 |  | CDU-DH2300-13 BMS/EPMS | 1d | 2026-06-03 | 2026-06-03 | DC1-CDU-L3-CX-5975 | 39d | 7d | PRM | Riley Warring |
|  | 14 | **DC1-CDU-DH2300-14 Cx L3** |  | 2026-05-29 | 2026-06-03 |  |  |  |  |  |
| DC1-CDU-L3-CX-5995 |  | CDU-DH2300-14 FTE | 1d | 2026-05-29 | 2026-05-29 | DC1-CDU-L2-3640, DC1-MOD3-L3-Cx-2690 | 39d | 0d | ROS |  |
| DC1-CDU-L3-CX-6005 |  | CDU-DH2300-14 L3 Startup | 2d | 2026-06-01 | 2026-06-02 | DC1-CDU-L3-CX-5995 | 39d | 0d | VER | Riley Warring |
| DC1-CDU-L3-CX-6015 |  | CDU-DH2300-14 BMS/EPMS | 1d | 2026-06-03 | 2026-06-03 | DC1-CDU-L3-CX-6005 | 39d | 7d | PRM | Riley Warring |
|  | 15 | **DC1-CDU-DH2300-15 Cx L3** |  | 2026-05-29 | 2026-06-03 |  |  |  |  |  |
| DC1-CDU-L3-CX-6025 |  | CDU-DH2300-15 FTE | 1d | 2026-05-29 | 2026-05-29 | DC1-CDU-L2-3650, DC1-MOD3-L3-Cx-2690 | 39d | 0d | ROS |  |
| DC1-CDU-L3-CX-6035 |  | CDU-DH2300-15 L3 Startup | 2d | 2026-06-01 | 2026-06-02 | DC1-CDU-L3-CX-6025 | 39d | 0d | VER | Riley Warring |
| DC1-CDU-L3-CX-6045 |  | CDU-DH2300-15 BMS/EPMS | 1d | 2026-06-03 | 2026-06-03 | DC1-CDU-L3-CX-6035 | 39d | 7d | PRM | Riley Warring |
|  | 16 | **DC1-CDU-DH2300-16 Cx L3** |  | 2026-06-08 | 2026-06-11 |  |  |  |  |  |
| DC1-CDU-L3-CX-6055 |  | CDU-DH2300-16 FTE | 1d | 2026-06-08 | 2026-06-08 | DC1-CDU-L2-3660, DC1-MOD3-L3-Cx-2690 | 33d | 0d | ROS |  |
| DC1-CDU-L3-CX-6065 |  | CDU-DH2300-16 L3 Startup | 2d | 2026-06-09 | 2026-06-10 | DC1-CDU-L3-CX-6055 | 33d | 0d | VER | Riley Warring |
| DC1-CDU-L3-CX-6075 |  | CDU-DH2300-16 BMS/EPMS | 1d | 2026-06-11 | 2026-06-11 | DC1-CDU-L3-CX-6065 | 33d | 1d | PRM | Riley Warring |
|  | 17 | **DC1-CDU-DH2300-17 Cx L3** |  | 2026-06-08 | 2026-06-11 |  |  |  |  |  |
| DC1-CDU-L3-CX-6085 |  | CDU-DH2300-17 FTE | 1d | 2026-06-08 | 2026-06-08 | DC1-CDU-L2-3670, DC1-MOD3-L3-Cx-2690 | 33d | 0d | ROS |  |
| DC1-CDU-L3-CX-6095 |  | CDU-DH2300-17 L3 Startup | 2d | 2026-06-09 | 2026-06-10 | DC1-CDU-L3-CX-6085 | 33d | 0d | VER | Riley Warring |
| DC1-CDU-L3-CX-6105 |  | CDU-DH2300-17 BMS/EPMS | 1d | 2026-06-11 | 2026-06-11 | DC1-CDU-L3-CX-6095 | 33d | 1d | PRM | Riley Warring |

Notes:
- DC1-CDU-L3-CX-5945: Steps: EC Startup Report; MC Installation Checklist; Vendor Startup
- DC1-CDU-L3-CX-5975: Steps: EC Startup Report; MC Installation Checklist; Vendor Startup
- DC1-CDU-L3-CX-6005: Steps: EC Startup Report; MC Installation Checklist; Vendor Startup
- DC1-CDU-L3-CX-6035: Steps: EC Startup Report; MC Installation Checklist; Vendor Startup
- DC1-CDU-L3-CX-6065: Steps: EC Startup Report; MC Installation Checklist; Vendor Startup
- DC1-CDU-L3-CX-6095: Steps: EC Startup Report; MC Installation Checklist; Vendor Startup

| ID | WBS | Activity | Duration | Start | Finish | Predecessors | Total float | Free float | Vendor Responsible Party | Layton Responsible Party |
| --- | --- | --- | --- | --- | --- | --- | --- | --- | --- | --- |
|  | 18 | **DC1-CDU-DH2300-18 Cx L3** |  | 2026-06-08 | 2026-06-11 |  |  |  |  |  |
| DC1-CDU-L3-CX-6115 |  | CDU-DH2300-18 FTE | 1d | 2026-06-08 | 2026-06-08 | DC1-CDU-L2-3680, DC1-MOD3-L3-Cx-2690 | 33d | 0d | ROS |  |
| DC1-CDU-L3-CX-6125 |  | CDU-DH2300-18 L3 Startup | 2d | 2026-06-09 | 2026-06-10 | DC1-CDU-L3-CX-6115 | 33d | 0d | VER | Riley Warring |
| DC1-CDU-L3-CX-6135 |  | CDU-DH2300-18 BMS/EPMS | 1d | 2026-06-11 | 2026-06-11 | DC1-CDU-L3-CX-6125 | 33d | 1d | PRM | Riley Warring |
|  | 11 | **DC1-DH2300 CHLR-1RT40 Cx L3** |  | 2026-04-16 | 2026-05-21 |  |  |  |  |  |
|  | 01 | **DC1-DH2300 CHLR-1RT40-A23 Cx L3** |  | 2026-04-16 | 2026-05-12 |  |  |  |  |  |
| DC1-CHLR-L3-Cx-2770 |  | DC1-CHLR-1RT40-A23 FTE | 1d | 2026-04-16 | 2026-04-16 | DC1-SWD-L3-CX-2630 SS, DC1-CHLR-L2-1210 | 8d | 0d | ROS | Riley Warring |
| DC1-CHLR-L3-Cx-2980 |  | DC1-CHLR-1RT40-A23 Heat Up | 2d | 2026-04-17 | 2026-04-20 | DC1-CHLR-L3-Cx-2770 | 8d | 3d | LAY | Riley Warring |
| DC1-CHLR-L3-Cx-2780 |  | DC1-CHLR-1RT40-A23 L3 Startup | 2d | 2026-05-08 | 2026-05-11 | DC1-CHLR-L3-Cx-2980, DC1-DH2300-LB-1010 SS | 7d | 0d | TAS | Riley Warring |
| DC1-CHLR-L3-Cx-2790 |  | DC1-CHLR-1RT40-A23 BMS/EPMS | 1d | 2026-05-12 | 2026-05-12 | DC1-CHLR-L3-Cx-2780 | 7d |  | PRM | Riley Warring |
|  | 02 | **DC1-DH2300 CHLR-1RT40-B23 Cx L3** |  | 2026-04-16 | 2026-05-13 |  |  |  |  |  |
| DC1-CHLR-L3-Cx-2800 |  | DC1-CHLR-1RT40-B23 FTE | 1d | 2026-04-16 | 2026-04-16 | DC1-SWD-L3-CX-2660 SS, DC1-CHLR-L2-1220 | 8d | 0d | ROS | Riley Warring |
| DC1-CHLR-L3-Cx-2990 |  | DC1-CHLR-1RT40-B23 Heat Up | 2d | 2026-04-17 | 2026-04-20 | DC1-CHLR-L3-Cx-2800 | 8d | 3d | LAY | Riley Warring |
| DC1-CHLR-L3-Cx-2810 |  | DC1-CHLR-1RT40-B23 L3 Startup | 2d | 2026-05-11 | 2026-05-12 | DC1-CHLR-L3-Cx-2990, DC1-DH2300-LB-1010 SS+1d | 6d | 0d | TAS | Riley Warring |
| DC1-CHLR-L3-Cx-2820 |  | DC1-CHLR-1RT40-B23 BMS/EPMS | 1d | 2026-05-13 | 2026-05-13 | DC1-CHLR-L3-Cx-2810 | 6d |  | PRM | Riley Warring |
|  | 03 | **DC1-DH2300 CHLR-1RT40-C23 Cx L3** |  | 2026-04-16 | 2026-05-13 |  |  |  |  |  |
| DC1-CHLR-L3-Cx-2830 |  | DC1-CHLR-1RT40-C23 FTE | 1d | 2026-04-16 | 2026-04-16 | DC1-SWD-L3-CX-2690 SS, DC1-CHLR-L2-1230 | 8d | 0d | ROS | Riley Warring |
| DC1-CHLR-L3-Cx-3000 |  | DC1-CHLR-1RT40-C23 Heat Up | 2d | 2026-04-17 | 2026-04-20 | DC1-CHLR-L3-Cx-2830 | 8d | 3d | LAY | Riley Warring |
| DC1-CHLR-L3-Cx-2840 |  | DC1-CHLR-1RT40-C23 L3 Startup | 2d | 2026-05-11 | 2026-05-12 | DC1-CHLR-L3-Cx-3000, DC1-DH2300-LB-1010 SS+1d | 6d | 0d | TAS | Riley Warring |
| DC1-CHLR-L3-Cx-2850 |  | DC1-CHLR-1RT40-C23 BMS/EPMS | 1d | 2026-05-13 | 2026-05-13 | DC1-CHLR-L3-Cx-2840 | 6d |  | PRM | Riley Warring |
|  | 04 | **DC1-DH2300 CHLR-1RT40-D23 Cx L3** |  | 2026-04-16 | 2026-05-14 |  |  |  |  |  |
| DC1-CHLR-L3-Cx-2860 |  | DC1-CHLR-1RT40-D23 FTE | 1d | 2026-04-16 | 2026-04-16 | DC1-SWD-L3-CX-2720 SS, DC1-CHLR-L2-1240 | 8d | 0d | ROS | Riley Warring |
| DC1-CHLR-L3-Cx-3010 |  | DC1-CHLR-1RT40-D23 Heat Up | 2d | 2026-04-17 | 2026-04-20 | DC1-CHLR-L3-Cx-2860 | 8d | 3d | LAY | Riley Warring |
| DC1-CHLR-L3-Cx-2870 |  | DC1-CHLR-1RT40-D23 L3 Startup | 2d | 2026-05-12 | 2026-05-13 | DC1-CHLR-L3-Cx-3010, DC1-DH2300-LB-1010 SS+2d | 5d | 0d | TAS | Riley Warring |
| DC1-CHLR-L3-Cx-2880 |  | DC1-CHLR-1RT40-D23 BMS/EPMS | 1d | 2026-05-14 | 2026-05-14 | DC1-CHLR-L3-Cx-2870 | 5d |  | PRM | Riley Warring |

Notes:
- DC1-CDU-L3-CX-6125: Steps: EC Startup Report; MC Installation Checklist; Vendor Startup
- DC1-CHLR-L3-Cx-2780: Steps: EC Startup Report; MC Startup Report; Vendor Startup
- DC1-CHLR-L3-Cx-2810: Steps: EC Startup Report; MC Startup Report; Vendor Startup
- DC1-CHLR-L3-Cx-2840: Steps: EC Startup Report; MC Startup Report; Vendor Startup
- DC1-CHLR-L3-Cx-2870: Steps: EC Startup Report; MC Startup Report; Vendor Startup

| ID | WBS | Activity | Duration | Start | Finish | Predecessors | Total float | Free float | Layton Responsible Party | Vendor Responsible Party | Notes |
| --- | --- | --- | --- | --- | --- | --- | --- | --- | --- | --- | --- |
|  | 05 | **DC1-DH2300 CHLR-1RT40-E23 Cx L3** |  | 2026-04-16 | 2026-05-14 |  |  |  |  |  |  |
| DC1-CHLR-L3-Cx-2890 |  | DC1-CHLR-1RT40-E23 FTE | 1d | 2026-04-16 | 2026-04-16 | DC1-SWD-L3-CX-2750 SS, DC1-CHLR-L2-1250 | 8d | 0d | Riley Warring | ROS |  |
| DC1-CHLR-L3-Cx-3020 |  | DC1-CHLR-1RT40-E23 Heat Up | 2d | 2026-04-17 | 2026-04-20 | DC1-CHLR-L3-Cx-2890 | 8d | 3d | Riley Warring | LAY |  |
| DC1-CHLR-L3-Cx-2900 |  | DC1-CHLR-1RT40-E23 L3 Startup | 2d | 2026-05-12 | 2026-05-13 | DC1-CHLR-L3-Cx-3020, DC1-DH2300-LB-1010 SS+2d | 5d | 0d | Riley Warring | TAS |  |
| DC1-CHLR-L3-Cx-2910 |  | DC1-CHLR-1RT40-E23 BMS/EPMS | 1d | 2026-05-14 | 2026-05-14 | DC1-CHLR-L3-Cx-2900 | 5d |  | Riley Warring | PRM |  |
|  | 06 | **DC1-DH2300 CHLR-1RT40-F23 Cx L3** |  | 2026-04-16 | 2026-05-19 |  |  |  |  |  |  |
| DC1-CHLR-L3-Cx-2920 |  | DC1-CHLR-1RT40-F23 FTE | 1d | 2026-04-16 | 2026-04-16 | DC1-SWD-L3-CX-2780 SS, DC1-CHLR-L2-1260 | 8d | 0d | Riley Warring | ROS |  |
| DC1-CHLR-L3-Cx-3030 |  | DC1-CHLR-1RT40-F23 Heat Up | 2d | 2026-04-17 | 2026-04-20 | DC1-CHLR-L3-Cx-2920 | 8d | 3d | Riley Warring | LAY |  |
| DC1-CHLR-L3-Cx-2930 |  | DC1-CHLR-1RT40-F23 L3 Startup | 2d | 2026-05-15 | 2026-05-18 | DC1-CHLR-L3-Cx-3030, DC1-DH2300-LB-1010 | 2d | 0d | Riley Warring | TAS |  |
| DC1-CHLR-L3-Cx-2940 |  | DC1-CHLR-1RT40-F23 BMS/EPMS | 1d | 2026-05-19 | 2026-05-19 | DC1-CHLR-L3-Cx-2930 | 2d |  | Riley Warring | PRM |  |
|  | 07 | **DC1-DH2300 CHLR-1RT40-R23 Cx L3** |  | 2026-04-16 | 2026-05-21 |  |  |  |  |  |  |
| DC1-CHLR-L3-Cx-2950 |  | DC1-CHLR-1RT40-R23 FTE | 1d | 2026-04-16 | 2026-04-16 | DC1-SWD-L3-CX-2810 SS, DC1-CHLR-L2-1270 | 8d | 0d | Riley Warring | ROS |  |
| DC1-CHLR-L3-Cx-3040 |  | DC1-CHLR-1RT40-R23 Heat Up | 2d | 2026-04-17 | 2026-04-20 | DC1-CHLR-L3-Cx-2950 | 8d | 3d | Riley Warring | LAY |  |
| DC1-CHLR-L3-Cx-2960 |  | DC1-CHLR-1RT40-R23 L3 Startup | 2d | 2026-05-19 | 2026-05-20 | DC1-CHLR-L3-Cx-3040, DC1-DH2300-LB-1010 FS+2d | 0d |  | Riley Warring | TAS |  |
| DC1-CHLR-L3-Cx-2970 |  | DC1-CHLR-1RT40-R23 BMS/EPMS | 1d | 2026-05-21 | 2026-05-21 | DC1-CHLR-L3-Cx-2960 | 0d |  | Riley Warring | PRM |  |
|  | 12 | **DC1-DH2300 CHWP-1RT40 Cx L3** |  | 2026-04-22 | 2026-05-05 |  |  |  |  |  |  |
|  | 01 | **DC1-DH2300 CHWP-1RT40-A23 Cx L3** |  | 2026-04-22 | 2026-04-27 |  |  |  |  |  |  |
| DC1-CHWP-L3-Cx-2630 |  | DC1-CHWP-1RT40-A23 FTE | 1d | 2026-04-22 | 2026-04-22 | DC1-UPSM-L3-CX-2630 SS, DC1-CHWP-L2-Cx-2210 | 18d | 0d |  | ROS | CFCI |
| DC1-CHWP-L3-Cx-2640 |  | DC1-CHWP1RT40-A23 L3 Startup | 2d | 2026-04-23 | 2026-04-24 | DC1-CHWP-L3-Cx-2630, QTS-101570 | 18d | 0d |  | LAY | CFCI |
| DC1-CHWP-L3-Cx-2650 |  | DC1-CHWP-1RT40-A23 BMS/EPMS | 1d | 2026-04-27 | 2026-04-27 | DC1-CHWP-L3-Cx-2640 | 18d |  |  | PRM | CFCI |
|  | 02 | **DC1-DH2300 CHWP-1RT40-B23 Cx L3** |  | 2026-04-23 | 2026-04-28 |  |  |  |  |  |  |
| DC1-CHWP-L3-Cx-2660 |  | DC1-CHWP-1RT40-B23 FTE | 1d | 2026-04-23 | 2026-04-23 | DC1-UPSM-L3-CX-2660 SS, DC1-CHWP-L2-Cx-2220 | 17d | 0d |  | ROS | CFCI |
| DC1-CHWP-L3-Cx-2670 |  | DC1-CHWP-1RT40-B23 L3 Startup | 2d | 2026-04-24 | 2026-04-27 | DC1-CHWP-L3-Cx-2660, QTS-101570 | 17d | 0d |  | LAY | CFCI |
| DC1-CHWP-L3-Cx-2680 |  | DC1-CHWP-1RT40-B23 BMS/EPMS | 1d | 2026-04-28 | 2026-04-28 | DC1-CHWP-L3-Cx-2670 | 17d |  |  | PRM | CFCI |

Notes:
- DC1-CHLR-L3-Cx-2900: Steps: EC Startup Report; MC Startup Report; Vendor Startup
- DC1-CHLR-L3-Cx-2930: Steps: EC Startup Report; MC Startup Report; Vendor Startup
- DC1-CHLR-L3-Cx-2960: Steps: EC Startup Report; MC Startup Report; Vendor Startup
- DC1-CHWP-L3-Cx-2640: Steps: EC Startup Report; MC Startup Report; Vendor Startup
- DC1-CHWP-L3-Cx-2670: Steps: EC Startup Report; MC Startup Report; Vendor Startup

| ID | WBS | Activity | Duration | Start | Finish | Predecessors | Total float | Free float | Notes | Vendor Responsible Party |
| --- | --- | --- | --- | --- | --- | --- | --- | --- | --- | --- |
|  | 03 | **DC1-DH2300 CHWP-1RT40-C23 Cx L3** |  | 2026-04-24 | 2026-04-29 |  |  |  |  |  |
| DC1-CHWP-L3-Cx-2690 |  | DC1-CHWP-1RT40-C23 FTE | 1d | 2026-04-24 | 2026-04-24 | DC1-UPSM-L3-CX-2690 SS, DC1-CHWP-L2-Cx-2230 | 16d | 0d | CFCI | ROS |
| DC1-CHWP-L3-Cx-2700 |  | DC1-CHWP-1RT40-C23 L3 Startup | 2d | 2026-04-27 | 2026-04-28 | DC1-CHWP-L3-Cx-2690, QTS-101570 | 16d | 0d | CFCI | LAY |
| DC1-CHWP-L3-Cx-2710 |  | DC1-CHWP-1RT40-C23 BMS/EPMS | 1d | 2026-04-29 | 2026-04-29 | DC1-CHWP-L3-Cx-2700 | 16d |  | CFCI | PRM |
|  | 04 | **DC1-DH2300 CHWP-1RT40-D23 Cx L3** |  | 2026-04-27 | 2026-04-30 |  |  |  |  |  |
| DC1-CHWP-L3-Cx-2720 |  | DC1-CHWP-1RT40-D23 FTE | 1d | 2026-04-27 | 2026-04-27 | DC1-UPSM-L3-CX-2720 SS, DC1-CHWP-L2-Cx-2240 | 15d | 0d | CFCI | ROS |
| DC1-CHWP-L3-Cx-2730 |  | DC1-CHWP-1RT40-D23 L3 Startup | 2d | 2026-04-28 | 2026-04-29 | DC1-CHWP-L3-Cx-2720, QTS-101570 | 15d | 0d | CFCI | LAY |
| DC1-CHWP-L3-Cx-2740 |  | DC1-CHWP-1RT40-D23 BMS/EPMS | 1d | 2026-04-30 | 2026-04-30 | DC1-CHWP-L3-Cx-2730 | 15d |  | CFCI | PRM |
|  | 05 | **DC1-DH2300 CHWP-1RT40-E23 Cx L3** |  | 2026-04-28 | 2026-05-01 |  |  |  |  |  |
| DC1-CHWP-L3-Cx-2750 |  | DC1-CHWP-1RT40-E23 FTE | 1d | 2026-04-28 | 2026-04-28 | DC1-UPSM-L3-CX-2750 SS, DC1-CHWP-L2-Cx-2250 | 14d | 0d | CFCI | ROS |
| DC1-CHWP-L3-Cx-2760 |  | DC1-CHWP-1RT40-E23 L3 Startup | 2d | 2026-04-29 | 2026-04-30 | DC1-CHWP-L3-Cx-2750, QTS-101570 | 14d | 0d | CFCI | LAY |
| DC1-CHWP-L3-Cx-2770 |  | DC1-CHWP-1RT40-E23 BMS/EPMS | 1d | 2026-05-01 | 2026-05-01 | DC1-CHWP-L3-Cx-2760 | 14d |  | CFCI | PRM |
|  | 06 | **DC1-DH2300 CHWP-1RT40-F23 Cx L3** |  | 2026-04-29 | 2026-05-04 |  |  |  |  |  |
| DC1-CHWP-L3-Cx-2780 |  | DC1-CHWP-1RT40-F23 FTE | 1d | 2026-04-29 | 2026-04-29 | DC1-UPSM-L3-CX-2780 SS, DC1-CHWP-L2-Cx-2260 | 13d | 0d | CFCI | ROS |
| DC1-CHWP-L3-Cx-2790 |  | DC1-CHWP-1RT40-F23 L3 Startup | 2d | 2026-04-30 | 2026-05-01 | DC1-CHWP-L3-Cx-2780, QTS-101570 | 13d | 0d | CFCI | LAY |
| DC1-CHWP-L3-Cx-2800 |  | DC1-CHWP-1RT40-F23 BMS/EPMS | 1d | 2026-05-04 | 2026-05-04 | DC1-CHWP-L3-Cx-2790 | 13d |  | CFCI | PRM |
|  | 07 | **DC1-DH2300 CHWP-1RT40-R23 Cx L3** |  | 2026-04-30 | 2026-05-05 |  |  |  |  |  |
| DC1-CHWP-L3-Cx-2810 |  | DC1-CHWP-1RT40-R23 FTE | 1d | 2026-04-30 | 2026-04-30 | DC1-UPSM-L3-CX-2810 SS, DC1-CHWP-L2-Cx-2270 | 12d | 0d | CFCI | ROS |
| DC1-CHWP-L3-Cx-2820 |  | DC1-CHWP-1RT40-R23 L3 Startup | 2d | 2026-05-01 | 2026-05-04 | DC1-CHWP-L3-Cx-2810, QTS-101570 | 12d | 0d | CFCI | LAY |
| DC1-CHWP-L3-Cx-2830 |  | DC1-CHWP-1RT40-R23 BMS/EPMS | 1d | 2026-05-05 | 2026-05-05 | DC1-CHWP-L3-Cx-2820 | 12d |  | CFCI | PRM |
|  | 13 | **DC1-DH2300 CRAH/DOAS Cx L3** |  | 2026-04-30 | 2026-06-02 |  |  |  |  |  |
|  | 01 | **DH2300 CRAH-DH-01 L3** |  | 2026-05-28 | 2026-06-02 |  |  |  |  |  |
| DC1-CRAH-L3-Cx-4880 |  | DC1-DH2300-CRAH-DH-01 FTE | 1d | 2026-05-28 | 2026-05-28 | DC1-MOD2-L3-Cx-2810, DC1-MOD2-L3-Cx-2720, DC1-CRAH-L2-2960 | 13d | 0d |  | ROS |
| DC1-CRAH-L3-Cx-4890 |  | DC1-DH2300-CRAH-DH-01 L3 Startup | 2d | 2026-05-29 | 2026-06-01 | DC1-CRAH-L3-Cx-4880 | 13d | 0d |  | UMAS |
| DC1-CRAH-L3-Cx-4900 |  | DC1-DH2300-CRAH-DH-01 BMS/EPMS | 1d | 2026-06-02 | 2026-06-02 | DC1-CRAH-L3-Cx-4890 | 13d | 0d |  | PRM |

Notes:
- DC1-CHWP-L3-Cx-2700: Steps: EC Startup Report; MC Startup Report; Vendor Startup
- DC1-CHWP-L3-Cx-2730: Steps: EC Startup Report; MC Startup Report; Vendor Startup
- DC1-CHWP-L3-Cx-2760: Steps: EC Startup Report; MC Startup Report; Vendor Startup
- DC1-CHWP-L3-Cx-2790: Steps: EC Startup Report; MC Startup Report; Vendor Startup
- DC1-CHWP-L3-Cx-2820: Steps: EC Startup Report; MC Startup Report; Vendor Startup
- DC1-CRAH-L3-Cx-4890: Steps: EC Startup Checklist; MC Startup Checklist; Vendor Startup

| ID | WBS | Activity | Duration | Start | Finish | Predecessors | Total float | Free float | Vendor Responsible Party |
| --- | --- | --- | --- | --- | --- | --- | --- | --- | --- |
|  | 02 | **DH2300 CRAH-DH-02 L3** |  | 2026-05-21 | 2026-05-27 |  |  |  |  |
| DC1-CRAH-L3-Cx-4910 |  | DC1-DH2300-CRAH-DH-02 FTE | 1d | 2026-05-21 | 2026-05-21 | DC1-MOD2-L3-Cx-2690 SS, DC1-MOD2-L3-Cx-2780 SS, DC1-CRAH-L2-2970 | 17d | 0d | ROS |
| DC1-CRAH-L3-Cx-4920 |  | DC1-DH2300-CRAH-DH-02 L3 Startup | 2d | 2026-05-22 | 2026-05-26 | DC1-CRAH-L3-Cx-4910 | 17d | 0d | UMAS |
| DC1-CRAH-L3-Cx-4930 |  | DC1-DH2300-CRAH-DH-02 BMS/EPMS | 1d | 2026-05-27 | 2026-05-27 | DC1-CRAH-L3-Cx-4920 | 17d | 4d | PRM |
|  | 03 | **DH2300 CRAH-DH-03 L3** |  | 2026-05-18 | 2026-05-21 |  |  |  |  |
| DC1-CRAH-L3-Cx-4940 |  | DC1-DH2300-CRAH-DH-03 FTE | 1d | 2026-05-18 | 2026-05-18 | DC1-MOD2-L3-Cx-2660 SS, DC1-MOD2-L3-Cx-2750 SS, DC1-CRAH-L2-2980 | 20d | 0d | ROS |
| DC1-CRAH-L3-Cx-4950 |  | DC1-DH2300-CRAH-DH-03 L3 Startup | 2d | 2026-05-19 | 2026-05-20 | DC1-CRAH-L3-Cx-4940 | 20d | 0d | UMAS |
| DC1-CRAH-L3-Cx-4960 |  | DC1-DH2300-CRAH-DH-03 BMS/EPMS | 1d | 2026-05-21 | 2026-05-21 | DC1-CRAH-L3-Cx-4950 | 20d | 7d | PRM |
|  | 04 | **DH2300 CRAH-DH-04 L3** |  | 2026-05-13 | 2026-05-18 |  |  |  |  |
| DC1-CRAH-L3-Cx-4970 |  | DC1-DH2300-CRAH-DH-04 FTE | 1d | 2026-05-13 | 2026-05-13 | DC1-MOD2-L3-Cx-2630 SS, DC1-MOD2-L3-Cx-2720 SS, DC1-CRAH-L2-2990 | 23d | 0d | ROS |
| DC1-CRAH-L3-Cx-4980 |  | DC1-DH2300-CRAH-DH-04 L3 Startup | 2d | 2026-05-14 | 2026-05-15 | DC1-CRAH-L3-Cx-4970 | 23d | 0d | UMAS |
| DC1-CRAH-L3-Cx-4990 |  | DC1-DH2300-CRAH-DH-04 BMS/EPMS | 1d | 2026-05-18 | 2026-05-18 | DC1-CRAH-L3-Cx-4980 | 23d | 10d | PRM |
|  | 05 | **DH2300 CRAH-DH-05 L3** |  | 2026-05-27 | 2026-06-01 |  |  |  |  |
| DC1-CRAH-L3-Cx-5000 |  | DC1-DH2300-CRAH-DH-05 FTE | 1d | 2026-05-27 | 2026-05-27 | DC1-MOD2-L3-Cx-2810 SS, DC1-MOD2-L3-Cx-2690 SS, DC1-CRAH-L2-3000 | 14d | 0d | ROS |
| DC1-CRAH-L3-Cx-5010 |  | DC1-DH2300-CRAH-DH-05 L3 Startup | 2d | 2026-05-28 | 2026-05-29 | DC1-CRAH-L3-Cx-5000 | 14d | 0d | UMAS |
| DC1-CRAH-L3-Cx-5020 |  | DC1-DH2300-CRAH-DH-05 BMS/EPMS | 1d | 2026-06-01 | 2026-06-01 | DC1-CRAH-L3-Cx-5010 | 14d | 1d | PRM |
|  | 06 | **DH2300 CRAH-DH-06 L3** |  | 2026-05-21 | 2026-05-27 |  |  |  |  |
| DC1-CRAH-L3-Cx-5030 |  | DC1-DH2300-CRAH-DH-06 FTE | 1d | 2026-05-21 | 2026-05-21 | DC1-MOD2-L3-Cx-2660 SS, DC1-MOD2-L3-Cx-2780 SS, DC1-CRAH-L2-3010 | 17d | 0d | ROS |
| DC1-CRAH-L3-Cx-5040 |  | DC1-DH2300-CRAH-DH-06 L3 Startup | 2d | 2026-05-22 | 2026-05-26 | DC1-CRAH-L3-Cx-5030 | 17d | 0d | UMAS |
| DC1-CRAH-L3-Cx-5050 |  | DC1-DH2300-CRAH-DH-06 BMS/EPMS | 1d | 2026-05-27 | 2026-05-27 | DC1-CRAH-L3-Cx-5040 | 17d | 4d | PRM |
|  | 07 | **DH2300 CRAH-DH-07 L3** |  | 2026-05-18 | 2026-05-21 |  |  |  |  |
| DC1-CRAH-L3-Cx-5060 |  | DC1-DH2300-CRAH-DH-07 FTE | 1d | 2026-05-18 | 2026-05-18 | DC1-MOD2-L3-Cx-2630 SS, DC1-MOD2-L3-Cx-2750 SS, DC1-CRAH-L2-3020 | 20d | 0d | ROS |
| DC1-CRAH-L3-Cx-5070 |  | DC1-DH2300-CRAH-DH-07 L3 Startup | 2d | 2026-05-19 | 2026-05-20 | DC1-CRAH-L3-Cx-5060 | 20d | 0d | UMAS |
| DC1-CRAH-L3-Cx-5080 |  | DC1-DH2300-CRAH-DH-07 BMS/EPMS | 1d | 2026-05-21 | 2026-05-21 | DC1-CRAH-L3-Cx-5070 | 20d | 7d | PRM |

Notes:
- DC1-CRAH-L3-Cx-4920: Steps: EC Startup Checklist; MC Startup Checklist; Vendor Startup
- DC1-CRAH-L3-Cx-4950: Steps: EC Startup Checklist; MC Startup Checklist; Vendor Startup
- DC1-CRAH-L3-Cx-4980: Steps: EC Startup Checklist; MC Startup Checklist; Vendor Startup
- DC1-CRAH-L3-Cx-5010: Steps: EC Startup Checklist; MC Startup Checklist; Vendor Startup
- DC1-CRAH-L3-Cx-5040: Steps: EC Startup Checklist; MC Startup Checklist; Vendor Startup
- DC1-CRAH-L3-Cx-5070: Steps: EC Startup Checklist; MC Startup Checklist; Vendor Startup

| ID | WBS | Activity | Duration | Start | Finish | Predecessors | Total float | Free float | Vendor Responsible Party |
| --- | --- | --- | --- | --- | --- | --- | --- | --- | --- |
|  | 08 | **DH2300 CRAH-DH-08 L3** |  | 2026-05-27 | 2026-06-01 |  |  |  |  |
| DC1-CRAH-L3-Cx-5090 |  | DC1-DH2300-CRAH-DH-08 FTE | 1d | 2026-05-27 | 2026-05-27 | DC1-MOD2-L3-Cx-2810 SS, DC1-MOD2-L3-Cx-2690 SS, DC1-CRAH-L2-3030 | 14d | 0d | ROS |
| DC1-CRAH-L3-Cx-5100 |  | DC1-DH2300-CRAH-DH-08 L3 Startup | 2d | 2026-05-28 | 2026-05-29 | DC1-CRAH-L3-Cx-5090 | 14d | 0d | UMAS |
| DC1-CRAH-L3-Cx-5110 |  | DC1-DH2300-CRAH-DH-08 BMS/EPMS | 1d | 2026-06-01 | 2026-06-01 | DC1-CRAH-L3-Cx-5100 | 14d | 1d | PRM |
|  | 09 | **DH2300 CRAH-DH-09 L3** |  | 2026-05-21 | 2026-05-27 |  |  |  |  |
| DC1-CRAH-L3-Cx-5120 |  | DC1-DH2300-CRAH-DH-09 FTE | 1d | 2026-05-21 | 2026-05-21 | DC1-MOD2-L3-Cx-2660 SS, DC1-MOD2-L3-Cx-2780 SS, DC1-CRAH-L2-3040 | 17d | 0d | ROS |
| DC1-CRAH-L3-Cx-5130 |  | DC1-DH2300-CRAH-DH-09 L3 Startup | 2d | 2026-05-22 | 2026-05-26 | DC1-CRAH-L3-Cx-5120 | 17d | 0d | UMAS |
| DC1-CRAH-L3-Cx-5140 |  | DC1-DH2300-CRAH-DH-09 BMS/EPMS | 1d | 2026-05-27 | 2026-05-27 | DC1-CRAH-L3-Cx-5130 | 17d | 4d | PRM |
|  | 10 | **DH2300 CRAH-DH-10 L3** |  | 2026-05-18 | 2026-05-21 |  |  |  |  |
| DC1-CRAH-L3-Cx-5150 |  | DC1-DH2300-CRAH-DH-10 FTE | 1d | 2026-05-18 | 2026-05-18 | DC1-MOD2-L3-Cx-2630 SS, DC1-MOD2-L3-Cx-2750 SS, DC1-CRAH-L2-3050 | 20d | 0d | ROS |
| DC1-CRAH-L3-Cx-5160 |  | DC1-DH2300-CRAH-DH-10 L3 Startup | 2d | 2026-05-19 | 2026-05-20 | DC1-CRAH-L3-Cx-5150 | 20d | 0d | UMAS |
| DC1-CRAH-L3-Cx-5170 |  | DC1-DH2300-CRAH-DH-10 BMS/EPMS | 1d | 2026-05-21 | 2026-05-21 | DC1-CRAH-L3-Cx-5160 | 20d | 7d | PRM |
|  | 11 | **DH2300 CRAH-DH-11 L3** |  | 2026-05-27 | 2026-06-01 |  |  |  |  |
| DC1-CRAH-L3-Cx-5180 |  | DC1-DH2300-CRAH-DH-11 FTE | 1d | 2026-05-27 | 2026-05-27 | DC1-MOD2-L3-Cx-2810 SS, DC1-MOD2-L3-Cx-2720 SS, DC1-CRAH-L2-3060 | 14d | 0d | ROS |
| DC1-CRAH-L3-Cx-5190 |  | DC1-DH2300-CRAH-DH-11 L3 Startup | 2d | 2026-05-28 | 2026-05-29 | DC1-CRAH-L3-Cx-5180 | 14d | 0d | UMAS |
| DC1-CRAH-L3-Cx-5200 |  | DC1-DH2300-CRAH-DH-11 BMS/EPMS | 1d | 2026-06-01 | 2026-06-01 | DC1-CRAH-L3-Cx-5190 | 14d | 1d | PRM |
|  | 12 | **DH2300 CRAH-DH-12 L3** |  | 2026-05-21 | 2026-05-27 |  |  |  |  |
| DC1-CRAH-L3-Cx-5210 |  | DC1-DH2300-CRAH-DH-12 FTE | 1d | 2026-05-21 | 2026-05-21 | DC1-MOD2-L3-Cx-2690 SS, DC1-MOD2-L3-Cx-2780 SS, DC1-CRAH-L2-3070 | 17d | 0d | ROS |
| DC1-CRAH-L3-Cx-5220 |  | DC1-DH2300-CRAH-DH-12 L3 Startup | 2d | 2026-05-22 | 2026-05-26 | DC1-CRAH-L3-Cx-5210 | 17d | 0d | UMAS |
| DC1-CRAH-L3-Cx-5230 |  | DC1-DH2300-CRAH-DH-12 BMS/EPMS | 1d | 2026-05-27 | 2026-05-27 | DC1-CRAH-L3-Cx-5220 | 17d | 4d | PRM |
|  | 13 | **DH2300 CRAH-DH-13 L3** |  | 2026-05-18 | 2026-05-21 |  |  |  |  |
| DC1-CRAH-L3-Cx-5240 |  | DC1-DH2300-CRAH-DH-13 FTE | 1d | 2026-05-18 | 2026-05-18 | DC1-MOD2-L3-Cx-2660 SS, DC1-MOD2-L3-Cx-2750 SS, DC1-CRAH-L2-3080 | 20d | 0d | ROS |
| DC1-CRAH-L3-Cx-5250 |  | DC1-DH2300-CRAH-DH-13 L3 Startup | 2d | 2026-05-19 | 2026-05-20 | DC1-CRAH-L3-Cx-5240 | 20d | 0d | UMAS |
| DC1-CRAH-L3-Cx-5260 |  | DC1-DH2300-CRAH-DH-13 BMS/EPMS | 1d | 2026-05-21 | 2026-05-21 | DC1-CRAH-L3-Cx-5250 | 20d | 7d | PRM |

Notes:
- DC1-CRAH-L3-Cx-5100: Steps: EC Startup Checklist; MC Startup Checklist; Vendor Startup
- DC1-CRAH-L3-Cx-5130: Steps: EC Startup Checklist; MC Startup Checklist; Vendor Startup
- DC1-CRAH-L3-Cx-5160: Steps: EC Startup Checklist; MC Startup Checklist; Vendor Startup
- DC1-CRAH-L3-Cx-5190: Steps: EC Startup Checklist; MC Startup Checklist; Vendor Startup
- DC1-CRAH-L3-Cx-5220: Steps: EC Startup Checklist; MC Startup Checklist; Vendor Startup
- DC1-CRAH-L3-Cx-5250: Steps: EC Startup Checklist; MC Startup Checklist; Vendor Startup

| ID | WBS | Activity | Duration | Start | Finish | Predecessors | Total float | Free float | Vendor Responsible Party |
| --- | --- | --- | --- | --- | --- | --- | --- | --- | --- |
|  | 14 | **DH2300 CRAH-DH-14 L3** |  | 2026-05-13 | 2026-05-18 |  |  |  |  |
| DC1-CRAH-L3-Cx-5270 |  | DC1-DH2300-CRAH-DH-14 FTE | 1d | 2026-05-13 | 2026-05-13 | DC1-MOD2-L3-Cx-2630 SS, DC1-MOD2-L3-Cx-2720 SS, DC1-CRAH-L2-3090 | 23d | 0d | ROS |
| DC1-CRAH-L3-Cx-5280 |  | DC1-DH2300-CRAH-DH-14 L3 Startup | 2d | 2026-05-14 | 2026-05-15 | DC1-CRAH-L3-Cx-5270 | 23d | 0d | UMAS |
| DC1-CRAH-L3-Cx-5290 |  | DC1-DH2300-CRAH-DH-14 BMS/EPMS | 1d | 2026-05-18 | 2026-05-18 | DC1-CRAH-L3-Cx-5280 | 23d | 10d | PRM |
|  | 15 | **DH2300 CRAH-DH-15 L3** |  | 2026-05-05 | 2026-05-08 |  |  |  |  |
| DC1-CRAH-L3-Cx-5300 |  | DC1-DH2300-CRAH-DH-15 FTE | 1d | 2026-05-05 | 2026-05-05 | DC1-MOD2-L3-Cx-2630 SS, DC1-MOD2-L3-Cx-2660 SS, DC1-CRAH-L2-3100 | 29d | 0d | ROS |
| DC1-CRAH-L3-Cx-5310 |  | DC1-DH2300-CRAH-DH-15 L3 Startup | 2d | 2026-05-06 | 2026-05-07 | DC1-CRAH-L3-Cx-5300 | 29d | 0d | UMAS |
| DC1-CRAH-L3-Cx-5320 |  | DC1-DH2300-CRAH-DH-15 BMS/EPMS | 1d | 2026-05-08 | 2026-05-08 | DC1-CRAH-L3-Cx-5310 | 29d | 16d | PRM |
|  | 16 | **DH2300 CRAH-DH-16 L3** |  | 2026-05-08 | 2026-05-13 |  |  |  |  |
| DC1-CRAH-L3-Cx-5330 |  | DC1-DH2300-CRAH-DH-16 FTE | 1d | 2026-05-08 | 2026-05-08 | DC1-MOD2-L3-Cx-2660 SS, DC1-MOD2-L3-Cx-2690 SS, DC1-CRAH-L2-3110 | 26d | 0d | ROS |
| DC1-CRAH-L3-Cx-5340 |  | DC1-DH2300-CRAH-DH-16 L3 Startup | 2d | 2026-05-11 | 2026-05-12 | DC1-CRAH-L3-Cx-5330 | 26d | 0d | UMAS |
| DC1-CRAH-L3-Cx-5350 |  | DC1-DH2300-CRAH-DH-16 BMS/EPMS | 1d | 2026-05-13 | 2026-05-13 | DC1-CRAH-L3-Cx-5340 | 26d | 13d | PRM |
|  | 17 | **DH2300 CRAH-DH-17 L3** |  | 2026-05-13 | 2026-05-18 |  |  |  |  |
| DC1-CRAH-L3-Cx-5360 |  | DC1-DH2300-CRAH-DH-17 FTE | 1d | 2026-05-13 | 2026-05-13 | DC1-MOD2-L3-Cx-2690 SS, DC1-MOD2-L3-Cx-2720 SS, DC1-CRAH-L2-3120 | 23d | 0d | ROS |
| DC1-CRAH-L3-Cx-5370 |  | DC1-DH2300-CRAH-DH-17 L3 Startup | 2d | 2026-05-14 | 2026-05-15 | DC1-CRAH-L3-Cx-5360 | 23d | 0d | UMAS |
| DC1-CRAH-L3-Cx-5380 |  | DC1-DH2300-CRAH-DH-17 BMS/EPMS | 1d | 2026-05-18 | 2026-05-18 | DC1-CRAH-L3-Cx-5370 | 23d | 10d | PRM |
|  | 18 | **DH2300 CRAH-DH-18 L3** |  | 2026-05-18 | 2026-05-21 |  |  |  |  |
| DC1-CRAH-L3-Cx-5390 |  | DC1-DH2300-CRAH-DH-18 FTE | 1d | 2026-05-18 | 2026-05-18 | DC1-MOD2-L3-Cx-2720 SS, DC1-MOD2-L3-Cx-2750 SS, DC1-CRAH-L2-3130 | 20d | 0d | ROS |
| DC1-CRAH-L3-Cx-5400 |  | DC1-DH2300-CRAH-DH-18 L3 Startup | 2d | 2026-05-19 | 2026-05-20 | DC1-CRAH-L3-Cx-5390 | 20d | 0d | UMAS |
| DC1-CRAH-L3-Cx-5410 |  | DC1-DH2300-CRAH-DH-18 BMS/EPMS | 1d | 2026-05-21 | 2026-05-21 | DC1-CRAH-L3-Cx-5400 | 20d | 7d | PRM |
|  | 19 | **DH2300 CRAH-DH-19 L3** |  | 2026-05-21 | 2026-05-27 |  |  |  |  |
| DC1-CRAH-L3-Cx-5420 |  | DC1-DH2300-CRAH-DH-19 FTE | 1d | 2026-05-21 | 2026-05-21 | DC1-MOD2-L3-Cx-2750 SS, DC1-MOD2-L3-Cx-2780 SS, DC1-CRAH-L2-3140 | 17d | 0d | ROS |
| DC1-CRAH-L3-Cx-5430 |  | DC1-DH2300-CRAH-DH-19 L3 Startup | 2d | 2026-05-22 | 2026-05-26 | DC1-CRAH-L3-Cx-5420 | 17d | 0d | UMAS |
| DC1-CRAH-L3-Cx-5440 |  | DC1-DH2300-CRAH-DH-19 BMS/EPMS | 1d | 2026-05-27 | 2026-05-27 | DC1-CRAH-L3-Cx-5430 | 17d | 4d | PRM |

Notes:
- DC1-CRAH-L3-Cx-5280: Steps: EC Startup Checklist; MC Startup Checklist; Vendor Startup
- DC1-CRAH-L3-Cx-5310: Steps: EC Startup Checklist; MC Startup Checklist; Vendor Startup
- DC1-CRAH-L3-Cx-5340: Steps: EC Startup Checklist; MC Startup Checklist; Vendor Startup
- DC1-CRAH-L3-Cx-5370: Steps: EC Startup Checklist; MC Startup Checklist; Vendor Startup
- DC1-CRAH-L3-Cx-5400: Steps: EC Startup Checklist; MC Startup Checklist; Vendor Startup
- DC1-CRAH-L3-Cx-5430: Steps: EC Startup Checklist; MC Startup Checklist; Vendor Startup

| ID | WBS | Activity | Duration | Start | Finish | Predecessors | Total float | Free float | Vendor Responsible Party |
| --- | --- | --- | --- | --- | --- | --- | --- | --- | --- |
|  | 20 | **DH2300 CRAH-DH-20 L3** |  | 2026-05-27 | 2026-06-01 |  |  |  |  |
| DC1-CRAH-L3-Cx-5450 |  | DC1-DH2300-CRAH-DH-20 FTE | 1d | 2026-05-27 | 2026-05-27 | DC1-MOD2-L3-Cx-2810 SS, DC1-MOD2-L3-Cx-2780 SS, DC1-CRAH-L2-3150 | 14d | 0d | ROS |
| DC1-CRAH-L3-Cx-5460 |  | DC1-DH2300-CRAH-DH-20 L3 Startup | 2d | 2026-05-28 | 2026-05-29 | DC1-CRAH-L3-Cx-5450 | 14d | 0d | UMAS |
| DC1-CRAH-L3-Cx-5470 |  | DC1-DH2300-CRAH-DH-20 BMS/EPMS | 1d | 2026-06-01 | 2026-06-01 | DC1-CRAH-L3-Cx-5460 | 14d | 1d | PRM |
|  | 21 | **DH2300 CRAH-DH-21 L3** |  | 2026-05-27 | 2026-06-01 |  |  |  |  |
| DC1-CRAH-L3-Cx-5480 |  | DC1-DH2300-CRAH-DH-21 FTE | 1d | 2026-05-27 | 2026-05-27 | DC1-MOD2-L3-Cx-2630 SS, DC1-CRAH-L2-3160, DC1-MOD2-L3-Cx-2810 SS | 14d | 0d | ROS |
| DC1-CRAH-L3-Cx-5490 |  | DC1-DH2300-CRAH-DH-21 L3 Startup | 2d | 2026-05-28 | 2026-05-29 | DC1-CRAH-L3-Cx-5480 | 14d | 0d | UMAS |
| DC1-CRAH-L3-Cx-5500 |  | DC1-DH2300-CRAH-DH-21 BMS/EPMS | 1d | 2026-06-01 | 2026-06-01 | DC1-CRAH-L3-Cx-5490 | 14d | 1d | PRM |
|  | 22 | **DH2300 CRAH-DH-22 L3** |  | 2026-05-08 | 2026-05-13 |  |  |  |  |
| DC1-CRAH-L3-Cx-5510 |  | DC1-DH2300-CRAH-DH-22 FTE | 1d | 2026-05-08 | 2026-05-08 | DC1-MOD2-L3-Cx-2630 SS, DC1-MOD2-L3-Cx-2690 SS, DC1-CRAH-L2-3170 | 26d | 0d | ROS |
| DC1-CRAH-L3-Cx-5520 |  | DC1-DH2300-CRAH-DH-22 L3 Startup | 2d | 2026-05-11 | 2026-05-12 | DC1-CRAH-L3-Cx-5510 | 26d | 0d | UMAS |
| DC1-CRAH-L3-Cx-5530 |  | DC1-DH2300-CRAH-DH-22 BMS/EPMS | 1d | 2026-05-13 | 2026-05-13 | DC1-CRAH-L3-Cx-5520 | 26d | 13d | PRM |
|  | 23 | **DH2300 CRAH-DH-23 L3** |  | 2026-05-13 | 2026-05-18 |  |  |  |  |
| DC1-CRAH-L3-Cx-5540 |  | DC1-DH2300-CRAH-DH-23 FTE | 1d | 2026-05-13 | 2026-05-13 | DC1-MOD2-L3-Cx-2660 SS, DC1-MOD2-L3-Cx-2720 SS, DC1-CRAH-L2-3180 | 23d | 0d | ROS |
| DC1-CRAH-L3-Cx-5550 |  | DC1-DH2300-CRAH-DH-23 L3 Startup | 2d | 2026-05-14 | 2026-05-15 | DC1-CRAH-L3-Cx-5540 | 23d | 0d | UMAS |
| DC1-CRAH-L3-Cx-5560 |  | DC1-DH2300-CRAH-DH-23 BMS/EPMS | 1d | 2026-05-18 | 2026-05-18 | DC1-CRAH-L3-Cx-5550 | 23d | 10d | PRM |
|  | 24 | **DH2300 CRAH-DH-24 L3** |  | 2026-05-18 | 2026-05-21 |  |  |  |  |
| DC1-CRAH-L3-Cx-5570 |  | DC1-DH2300-CRAH-DH-24 FTE | 1d | 2026-05-18 | 2026-05-18 | DC1-MOD2-L3-Cx-2690 SS, DC1-MOD2-L3-Cx-2750 SS, DC1-CRAH-L2-3190 | 20d | 0d | ROS |
| DC1-CRAH-L3-Cx-5580 |  | DC1-DH2300-CRAH-DH-24 L3 Startup | 2d | 2026-05-19 | 2026-05-20 | DC1-CRAH-L3-Cx-5570 | 20d | 0d | UMAS |
| DC1-CRAH-L3-Cx-5590 |  | DC1-DH2300-CRAH-DH-24 BMS/EPMS | 1d | 2026-05-21 | 2026-05-21 | DC1-CRAH-L3-Cx-5580 | 20d | 7d | PRM |
|  | 25 | **DH2300 CRAH-DH-25 L3** |  | 2026-05-21 | 2026-05-27 |  |  |  |  |
| DC1-CRAH-L3-Cx-5600 |  | DC1-DH2300-CRAH-DH-25 FTE | 1d | 2026-05-21 | 2026-05-21 | DC1-MOD2-L3-Cx-2720 SS, DC1-MOD2-L3-Cx-2780 SS, DC1-CRAH-L2-3200 | 17d | 0d | ROS |
| DC1-CRAH-L3-Cx-5610 |  | DC1-DH2300-CRAH-DH-25 L3 Startup | 2d | 2026-05-22 | 2026-05-26 | DC1-CRAH-L3-Cx-5600 | 17d | 0d | UMAS |
| DC1-CRAH-L3-Cx-5620 |  | DC1-DH2300-CRAH-DH-25 BMS/EPMS | 1d | 2026-05-27 | 2026-05-27 | DC1-CRAH-L3-Cx-5610 | 17d | 4d | PRM |

Notes:
- DC1-CRAH-L3-Cx-5460: Steps: EC Startup Checklist; MC Startup Checklist; Vendor Startup
- DC1-CRAH-L3-Cx-5490: Steps: EC Startup Checklist; MC Startup Checklist; Vendor Startup
- DC1-CRAH-L3-Cx-5520: Steps: EC Startup Checklist; MC Startup Checklist; Vendor Startup
- DC1-CRAH-L3-Cx-5550: Steps: EC Startup Checklist; MC Startup Checklist; Vendor Startup
- DC1-CRAH-L3-Cx-5580: Steps: EC Startup Checklist; MC Startup Checklist; Vendor Startup
- DC1-CRAH-L3-Cx-5610: Steps: EC Startup Checklist; MC Startup Checklist; Vendor Startup

| ID | WBS | Activity | Duration | Start | Finish | Predecessors | Total float | Free float | Vendor Responsible Party |
| --- | --- | --- | --- | --- | --- | --- | --- | --- | --- |
|  | 26 | **DH2300 CRAH-DH-26 L3** |  | 2026-05-27 | 2026-06-01 |  |  |  |  |
| DC1-CRAH-L3-Cx-5630 |  | DC1-DH2300-CRAH-DH-26 FTE | 1d | 2026-05-27 | 2026-05-27 | DC1-MOD2-L3-Cx-2810 SS, DC1-MOD2-L3-Cx-2750 SS, DC1-CRAH-L2-3210 | 14d | 0d | ROS |
| DC1-CRAH-L3-Cx-5640 |  | DC1-DH2300-CRAH-DH-26 L3 Startup | 2d | 2026-05-28 | 2026-05-29 | DC1-CRAH-L3-Cx-5630 | 14d | 0d | UMAS |
| DC1-CRAH-L3-Cx-5650 |  | DC1-DH2300-CRAH-DH-26 BMS/EPMS | 1d | 2026-06-01 | 2026-06-01 | DC1-CRAH-L3-Cx-5640 | 14d | 1d | PRM |
|  | 27 | **DH2300 CRAH-DH-27 L3** |  | 2026-05-21 | 2026-05-27 |  |  |  |  |
| DC1-CRAH-L3-Cx-5660 |  | DC1-DH2300-CRAH-DH-27 FTE | 1d | 2026-05-21 | 2026-05-21 | DC1-MOD2-L3-Cx-2630 SS, DC1-MOD2-L3-Cx-2780 SS, DC1-CRAH-L2-3220 | 17d | 0d | ROS |
| DC1-CRAH-L3-Cx-5670 |  | DC1-DH2300-CRAH-DH-27 L3 Startup | 2d | 2026-05-22 | 2026-05-26 | DC1-CRAH-L3-Cx-5660 | 17d | 0d | UMAS |
| DC1-CRAH-L3-Cx-5680 |  | DC1-DH2300-CRAH-DH-27 BMS/EPMS | 1d | 2026-05-27 | 2026-05-27 | DC1-CRAH-L3-Cx-5670 | 17d | 4d | PRM |
|  | 28 | **DH2300 CRAH-DH-28 L3** |  | 2026-05-27 | 2026-06-01 |  |  |  |  |
| DC1-CRAH-L3-Cx-5690 |  | DC1-DH2300-CRAH-DH-28 FTE | 1d | 2026-05-27 | 2026-05-27 | DC1-MOD2-L3-Cx-2660 SS, DC1-CRAH-L2-3230, DC1-MOD2-L3-Cx-2810 SS | 14d | 0d | ROS |
| DC1-CRAH-L3-Cx-5700 |  | DC1-DH2300-CRAH-DH-28 L3 Startup | 2d | 2026-05-28 | 2026-05-29 | DC1-CRAH-L3-Cx-5690 | 14d | 0d | UMAS |
| DC1-CRAH-L3-Cx-5710 |  | DC1-DH2300-CRAH-DH-28 BMS/EPMS | 1d | 2026-06-01 | 2026-06-01 | DC1-CRAH-L3-Cx-5700 | 14d | 1d | PRM |
|  | 29 | **DH2300 CRAH-EG-01 L3** |  | 2026-05-21 | 2026-05-27 |  |  |  |  |
| DC1-CRAH-L3-Cx-5720 |  | DC1-DH2300-CRAH-EG-2302-01 FTE | 1d | 2026-05-21 | 2026-05-21 | DC1-CRAH-L2-3240, DC1-MOD2-L3-Cx-2780 SS | 17d | 0d | ROS |
| DC1-CRAH-L3-Cx-5730 |  | DC1-DH2300-CRAH-EG-2302-01 L3 Startup | 2d | 2026-05-22 | 2026-05-26 | DC1-CRAH-L3-Cx-5720 | 17d | 0d | VER |
| DC1-CRAH-L3-Cx-5740 |  | DC1-DH2300-CRAH-EG-2302-01 BMS/EPMS | 1d | 2026-05-27 | 2026-05-27 | DC1-CRAH-L3-Cx-5730 | 17d | 4d | PRM |
|  | 30 | **DH2300 CRAH-EG-02 L3** |  | 2026-05-13 | 2026-05-18 |  |  |  |  |
| DC1-CRAH-L3-Cx-5750 |  | DC1-DH2300-CRAH-EG-2302-02 FTE | 1d | 2026-05-13 | 2026-05-13 | DC1-MOD2-L3-Cx-2720 SS, DC1-CRAH-L2-3250 | 23d | 0d | ROS |
| DC1-CRAH-L3-Cx-5760 |  | DC1-DH2300-CRAH-EG-2302-02 L3 Startup | 2d | 2026-05-14 | 2026-05-15 | DC1-CRAH-L3-Cx-5750 | 23d | 0d | VER |
| DC1-CRAH-L3-Cx-5770 |  | DC1-DH2300-CRAH-EG-2302-02 BMS/EPMS | 1d | 2026-05-18 | 2026-05-18 | DC1-CRAH-L3-Cx-5760 | 23d | 10d | PRM |
|  | 31 | **DH2300 CRAH-EG-03 L3** |  | 2026-05-08 | 2026-05-13 |  |  |  |  |
| DC1-CRAH-L3-Cx-5780 |  | DC1-DH2300-CRAH-EG-2302-03 FTE | 1d | 2026-05-08 | 2026-05-08 | DC1-MOD2-L3-Cx-2690 SS, DC1-CRAH-L2-3260 | 26d | 0d | ROS |
| DC1-CRAH-L3-Cx-5790 |  | DC1-DH2300-CRAH-EG-2302-03 L3 Startup | 2d | 2026-05-11 | 2026-05-12 | DC1-CRAH-L3-Cx-5780 | 26d | 0d | VER |
| DC1-CRAH-L3-Cx-5800 |  | DC1-DH2300-CRAH-EG-2302-03 BMS/EPMS | 1d | 2026-05-13 | 2026-05-13 | DC1-CRAH-L3-Cx-5790 | 26d | 13d | PRM |

Notes:
- DC1-CRAH-L3-Cx-5640: Steps: EC Startup Checklist; MC Startup Checklist; Vendor Startup
- DC1-CRAH-L3-Cx-5670: Steps: EC Startup Checklist; MC Startup Checklist; Vendor Startup
- DC1-CRAH-L3-Cx-5700: Steps: EC Startup Checklist; MC Startup Checklist; Vendor Startup
- DC1-CRAH-L3-Cx-5730: Steps: EC Startup Checklist; MC Startup Checklist; Vendor Startup
- DC1-CRAH-L3-Cx-5760: Steps: EC Startup Checklist; MC Startup Checklist; Vendor Startup
- DC1-CRAH-L3-Cx-5790: Steps: EC Startup Checklist; MC Startup Checklist; Vendor Startup

| ID | WBS | Activity | Duration | Start | Finish | Predecessors | Total float | Free float | Calendar | Vendor Responsible Party | Layton Responsible Party |
| --- | --- | --- | --- | --- | --- | --- | --- | --- | --- | --- | --- |
|  | 32 | **DH2300 CRAH-EG-04 L3** |  | 2026-04-30 | 2026-05-05 |  |  |  |  |  |  |
| DC1-CRAH-L3-Cx-5810 |  | DC1-DH2300-CRAH-EG-2302-04 FTE | 1d | 2026-04-30 | 2026-04-30 | DC1-CRAH-L2-3270, DC1-MOD2-L3-Cx-2630 SS | 32d | 0d |  | ROS |  |
| DC1-CRAH-L3-Cx-5820 |  | DC1-DH2300-CRAH-EG-2302-04 L3 Startup | 2d | 2026-05-01 | 2026-05-04 | DC1-CRAH-L3-Cx-5810 | 32d | 0d |  | VER |  |
| DC1-CRAH-L3-Cx-5830 |  | DC1-DH2300-CRAH-EG-2302-04 BMS/EPMS | 1d | 2026-05-05 | 2026-05-05 | DC1-CRAH-L3-Cx-5820 | 32d | 19d |  | PRM |  |
|  | 33 | **DC1-DH2300-DOAS-RT-01 L3** |  | 2026-04-30 | 2026-05-05 |  |  |  |  |  |  |
| DC1-DOAS-L3-Cx-2180 |  | DC1-DH2300-DOAS-RT-01 FTE | 1d | 2026-04-30 | 2026-04-30 | DC1-MOD2-L3-Cx-2630 SS, DC1-DOAS-L2-2060 | 32d | 0d |  | ROS |  |
| DC1-DOAS-L3-Cx-2190 |  | DC1-DH2300-DOAS-RT-01 L3 Startup | 2d | 2026-05-01 | 2026-05-04 | DC1-DOAS-L3-Cx-2180 | 32d | 0d |  | TAS |  |
| DC1-DOAS-L3-Cx-2200 |  | DC1-DH2300-DOAS-RT-01 BMS/EPMS | 1d | 2026-05-05 | 2026-05-05 | DC1-DOAS-L3-Cx-2190 | 32d | 19d |  | PRM |  |
|  | 34 | **DC1-DH2300-DOAS-RT-02 L3** |  | 2026-05-27 | 2026-06-01 |  |  |  |  |  |  |
| DC1-DOAS-L3-Cx-2210 |  | DC1-DH2300-DOAS-RT-02 FTE | 1d | 2026-05-27 | 2026-05-27 | DC1-MOD2-L3-Cx-2810 SS, DC1-DOAS-L2-2070 | 14d | 0d |  | ROS |  |
| DC1-DOAS-L3-Cx-2220 |  | DC1-DH2300-DOAS-RT-02 L3 Startup | 2d | 2026-05-28 | 2026-05-29 | DC1-DOAS-L3-Cx-2210 | 14d | 0d |  | TAS |  |
| DC1-DOAS-L3-Cx-2230 |  | DC1-DH2300-DOAS-RT-02 BMS/EPMS | 1d | 2026-06-01 | 2026-06-01 | DC1-DOAS-L3-Cx-2220 | 14d | 1d |  | PRM |  |
|  | 14 | **DC1-DH2300 LOADBANK** |  | 2026-04-24 | 2026-08-19 |  |  |  |  |  |  |
| DC1-DH2300-LB-1000 |  | DC1-DH2300 Connect Loadbanks (Connect to RPP, Maybe CODs Extra Breaker) | 5d | 2026-04-24 | 2026-04-30 | QTS - 6340, QTS - 6800, QTS - 7030, DC1-CHLR-L3-Cx-2980, DC1-CHLR-L3-Cx-2990, DC1-CHLR-L3-Cx-3000, DC1-CHLR-L3-Cx-3010, DC1-CHLR-L3-Cx-3020, DC1-CHLR-L3-Cx-3030, DC1-CHLR-L3-Cx-3040 | 5d |  |  | PHE | Riley Warring |
| DC1-DH2300-LB-1010 |  | DC1-DH2300 Burn in Chillers | 5d | 2026-05-08 | 2026-05-14 | DC1-DH2300-LB-1000, DC1-COD-L3-CX-4705, DC1-COD-L3-CX-4735, DC1-COD-L3-CX-4765, DC1-COD-L3-CX-4795, DC1-COD-L3-CX-4825, DC1-COD-L3-CX-4855, DC1-COD-L3-CX-4885, DC1-COD-L3-CX-4915, DC1-COD-L3-CX-4945, DC1-COD-L3-CX-4975, DC1-COD-L3-CX-5005, DC1-COD-L3-CX-5035, DC1-COD-L3-CX-5065, DC1-COD-L3-CX-5095, DC1-COD-L3-CX-5125, DC1-COD-L3-CX-5155, DC1-COD-L3-CX-5185, DC1-COD-L3-CX-5215, DC1-COD-L3-CX-5245, DC1-COD-L3-CX-5275, DC1-COD-L3-CX-5305, DC1-COD-L3-CX-5335, DC1-COD-L3-CX-5365, DC1-COD-L3-CX-5395, DC1-COD-L3-CX-5425, DC1-COD-L3-CX-5455, DC1-COD-L3-CX-5485, DC1-COD-L3-CX-5515, DC1-COD-L3-CX-5545, DC1-COD-L3-CX-5575, DC1-COD-L3-CX-5605, DC1-COD-L3-CX-5635, DC1-COD-L3-CX-5665, DC1-COD-L3-CX-5695, DC1-COD-L3-CX-5725, DC1-COD-L3-CX-5755 | 0d |  |  | LAY | Riley Warring |
| DC1-DH2300-LB-1040 |  | DC1-DH2300 Water Load Bank (Secondary Side) | 12d | 2026-07-30 | 2026-08-14 | DC1-IST-2030, DC1-CDU-L3-CX-5605, DC1-CDU-L3-CX-5635, DC1-CDU-L3-CX-5665, DC1-CDU-L3-CX-5695, DC1-CDU-L3-CX-5725, DC1-CDU-L3-CX-5755, DC1-CDU-L3-CX-5785, DC1-CDU-L3-CX-5815, DC1-CDU-L3-CX-5845, DC1-CDU-L3-CX-5875, DC1-CDU-L3-CX-5905, DC1-CDU-L3-CX-5935, DC1-CDU-L3-CX-5965, DC1-CDU-L3-CX-5995, DC1-CDU-L3-CX-6025, DC1-CDU-L3-CX-6055, DC1-CDU-L3-CX-6085, DC1-CDU-L3-CX-6115 | 0d |  |  | LAY | Riley Warring |
| DC1-DH2300-LB-1030 |  | DC1-DH2300 10% Continuity Testing RPP Whips | 2d | 2026-08-17 | 2026-08-18 | DC1-DH2300-LB-1040, QTS - 7350, QTS - 7460, QTS - 7470 | 5d | 0d |  | PHE | Riley Warring |
| DC1-DH2300-LB-1050 |  | DC1-DH2300 Install DanFoss Connectors | 2d | 2026-08-18 | 2026-08-19 | DC1-DH2300-LB-1030 SS+1d | 5d |  |  | PHE | Riley Warring |
|  | 15 | **DC1-DH2300 TAB** |  | 2026-05-22 | 2026-06-09 |  |  |  |  |  |  |
| DC1-DH2300-TAB-1000 |  | DC1-DH2300 Water Tab (Industrial Loop) | 10d | 2026-05-22 | 2026-06-05 | DC1-CHLR-L3-Cx-2790, DC1-CHLR-L3-Cx-2820, DC1-CHLR-L3-Cx-2850, DC1-CHLR-L3-Cx-2880, DC1-CHLR-L3-Cx-2910, DC1-CHLR-L3-Cx-2940, DC1-CHLR-L3-Cx-2970, QTS-101530, DC1-CHWP-L3-Cx-2650, DC1-CHWP-L3-Cx-2680, DC1-CHWP-L3-Cx-2710, DC1-CHWP-L3-Cx-2740, DC1-CHWP-L3-Cx-2770, DC1-CHWP-L3-Cx-2800, DC1-CHWP-L3-Cx-2830 | 0d |  |  | LAY | Riley Warring |
| DC1-DH2300-TAB-1010 |  | DC1-DH2300 Air Tab | 5d | 2026-06-03 | 2026-06-09 | DC1-CRAH-L3-Cx-4900, DC1-CRAH-L3-Cx-4930, DC1-CRAH-L3-Cx-4960, DC1-CRAH-L3-Cx-4990, DC1-CRAH-L3-Cx-5020, DC1-CRAH-L3-Cx-5050, DC1-CRAH-L3-Cx-5080, DC1-CRAH-L3-Cx-5110, DC1-CRAH-L3-Cx-5140, DC1-CRAH-L3-Cx-5170, DC1-CRAH-L3-Cx-5200, DC1-CRAH-L3-Cx-5230, DC1-CRAH-L3-Cx-5260, DC1-CRAH-L3-Cx-5290, DC1-CRAH-L3-Cx-5320, DC1-CRAH-L3-Cx-5350, DC1-CRAH-L3-Cx-5380, DC1-CRAH-L3-Cx-5410, DC1-CRAH-L3-Cx-5440, DC1-CRAH-L3-Cx-5470, DC1-CRAH-L3-Cx-5500, DC1-CRAH-L3-Cx-5530, DC1-CRAH-L3-Cx-5560, DC1-CRAH-L3-Cx-5590, DC1-CRAH-L3-Cx-5620, DC1-CRAH-L3-Cx-5650, DC1-CRAH-L3-Cx-5680, DC1-CRAH-L3-Cx-5710, DC1-CRAH-L3-Cx-5740, DC1-CRAH-L3-Cx-5770, DC1-CRAH-L3-Cx-5800, DC1-CRAH-L3-Cx-5830, DC1-DOAS-L3-Cx-2200, DC1-DOAS-L3-Cx-2230 | 13d |  |  | LAY | Riley Warring |
|  | 04 | **Data Hall 2300 Cx L4** |  | 2026-06-02 | 2026-08-26 |  |  |  |  |  |  |
| DC1-ELEC-L4-Cx-1040 |  | DC1 Data Hall 2300 Electrical L4 | 20d | 2026-06-02 | 2026-06-29 | DC1-GEN-L3-CX-2650, DC1-GEN-L3-CX-2680, DC1-GEN-L3-CX-2710, DC1-GEN-L3-CX-2740, DC1-GEN-L3-CX-2770, DC1-GEN-L3-CX-2800, DC1-GEN-L3-CX-2830, DC1-XFM-L3-CX-1650, DC1-XFM-L3-CX-1680, DC1-XFM-L3-CX-1710, DC1-XFM-L3-CX-1740, DC1-XFM-L3-CX-1770, DC1-XFM-L3-CX-1800, DC1-XFM-L3-CX-1830, DC1-SWD-L3-CX-2650, DC1-SWD-L3-CX-2680, DC1-SWD-L3-CX-2710, DC1-SWD-L3-CX-2740, DC1-SWD-L3-CX-2770, DC1-SWD-L3-CX-2800, DC1-SWD-L3-CX-2830, DC1-MOD1-L3-CX-2650, DC1-MOD1-L3-CX-2680, DC1-MOD1-L3-CX-2710, DC1-MOD1-L3-CX-2740, DC1-MOD1-L3-CX-2770, DC1-MOD1-L3-CX-2800, DC1-MOD1-L3-CX-2830, DC1-UPSM-L3-CX-2650, DC1-UPSM-L3-CX-2680, DC1-UPSM-L3-CX-2710, DC1-UPSM-L3-CX-2740, DC1-UPSM-L3-CX-2770, DC1-UPSM-L3-CX-2800, DC1-UPSM-L3-CX-2830, DC1-ATS-L3-CX-4725, DC1-ATS-L3-CX-4755, DC1-ATS-L3-CX-4785, DC1-ATS-L3-CX-4815, DC1-ATS-L3-CX-4845, DC1-ATS-L3-CX-4875, DC1-ATS-L3-CX-4905, DC1-ATS-L3-CX-4935, DC1-ATS-L3-CX-4965, DC1-ATS-L3-CX-4995, DC1-ATS-L3-CX-5025, DC1-ATS-L3-CX-5055, DC1-ATS-L3-CX-5085, DC1-ATS-L3-CX-5115, DC1-ATS-L3-CX-5145, DC1-ATS-L3-CX-5175, DC1-ATS-L3-CX-5205, DC1-ATS-L3-CX-5235, DC1-ATS-L3-CX-5265, DC1-ATS-L3-CX-5295, DC1-ATS-L3-CX-5325, DC1-ATS-L3-CX-5355, DC1-ATS-L3-CX-5385, DC1-ATS-L3-CX-5415, DC1-ATS-L3-CX-5445, DC1-ATS-L3-CX-5475, DC1-ATS-L3-CX-5505, DC1-ATS-L3-CX-5535, DC1-ATS-L3-CX-5565, DC1-ATS-L3-CX-5595, DC1-ATS-L3-CX-5625, DC1-ATS-L3-CX-5655, DC1-ATS-L3-CX-5685, DC1-ATS-L3-CX-5715, DC1-ATS-L3-CX-5745, DC1-ATS-L3-CX-5775, DC1-COD-L3-CX-4725, DC1-COD-L3-CX-4755, DC1-COD-L3-CX-4785, DC1-COD-L3-CX-4815, DC1-COD-L3-CX-4845, DC1-COD-L3-CX-4875, DC1-COD-L3-CX-4905, DC1-COD-L3-CX-4935, DC1-COD-L3-CX-4965, DC1-COD-L3-CX-4995, DC1-COD-L3-CX-5025, DC1-COD-L3-CX-5055, DC1-COD-L3-CX-5085, DC1-COD-L3-CX-5115, DC1-COD-L3-CX-5145, DC1-COD-L3-CX-5175, DC1-COD-L3-CX-5205, DC1-COD-L3-CX-5235, DC1-COD-L3-CX-5265, DC1-COD-L3-CX-5295, DC1-COD-L3-CX-5325, DC1-COD-L3-CX-5355, DC1-COD-L3-CX-5385, DC1-COD-L3-CX-5415, DC1-COD-L3-CX-5445, DC1-COD-L3-CX-5475, DC1-COD-L3-CX-5505, DC1-COD-L3-CX-5535, DC1-COD-L3-CX-5565, DC1-COD-L3-CX-5595, DC1-COD-L3-CX-5625, DC1-COD-L3-CX-5655, DC1-COD-L3-CX-5685, DC1-COD-L3-CX-5715, DC1-COD-L3-CX-5745, DC1-COD-L3-CX-5775, DC1-MOD2-L3-Cx-2650, DC1-MOD2-L3-Cx-2680, DC1-MOD2-L3-Cx-2710, DC1-MOD2-L3-Cx-2740, DC1-MOD2-L3-Cx-2770, DC1-MOD2-L3-Cx-2800, DC1-MOD2-L3-Cx-2830, DC1-MOD3-L3-Cx-2650, DC1-MOD3-L3-Cx-2680, DC1-MOD3-L3-Cx-2710, DC1-MOD3-L3-Cx-2740, DC1-MOD3-L3-Cx-2770, DC1-MOD3-L3-Cx-2800, DC1-MOD3-L3-Cx-2830, DC1-BUS-L3-CX-2200, DC1-BUS-L3-CX-2230, QTS-44541 | 19d |  |  | LAY | Riley Warring |
| DC1-MECH-L4-Cx-1140 |  | DC1 Data Hall 2300 BMS/EPMS Integration | 15d | 2026-06-08 | 2026-06-26 | DC1-DH2300-TAB-1000 | 0d |  | **GLOBAL - 5 Day Workweek w/ Basic Holidays |  |  |
| DC1-ELEC-L4-Cx-1070 |  | DC1 Data Hall 2300 Electrical L4 (TFO) | 20d | 2026-06-15 | 2026-07-13 | DC1-CDU-L3-CX-6135, DC1-CDU-L3-CX-6105, DC1-CDU-L3-CX-6075, DC1-CDU-L3-CX-6045, DC1-CDU-L3-CX-6015, DC1-CDU-L3-CX-5985, DC1-CDU-L3-CX-5955, DC1-CDU-L3-CX-5925, DC1-CDU-L3-CX-5895, DC1-CDU-L3-CX-5865, DC1-CDU-L3-CX-5835, DC1-CDU-L3-CX-5805, DC1-CDU-L3-CX-5775, DC1-CDU-L3-CX-5745, DC1-CDU-L3-CX-5715, DC1-CDU-L3-CX-5685, DC1-CDU-L3-CX-5655, DC1-CDU-L3-CX-5625, DC1-RPP-L3-CX-4725, DC1-RPP-L3-CX-4755, DC1-RPP-L3-CX-4785, DC1-RPP-L3-CX-4815, DC1-RPP-L3-CX-4845, DC1-RPP-L3-CX-4875, DC1-RPP-L3-CX-4905, DC1-RPP-L3-CX-4935, DC1-RPP-L3-CX-4965, DC1-RPP-L3-CX-4995, DC1-RPP-L3-CX-5025, DC1-RPP-L3-CX-5055, DC1-RPP-L3-CX-5085, DC1-RPP-L3-CX-5115, DC1-RPP-L3-CX-5145, DC1-RPP-L3-CX-5175, DC1-RPP-L3-CX-5205, DC1-RPP-L3-CX-5235, DC1-RPP-L3-CX-5265, DC1-RPP-L3-CX-5295, DC1-RPP-L3-CX-5325, DC1-RPP-L3-CX-5355, DC1-RPP-L3-CX-5415, DC1-RPP-L3-CX-5385, DC1-RPP-L3-CX-5445, DC1-RPP-L3-CX-5475, DC1-RPP-L3-CX-5505, DC1-RPP-L3-CX-5535, DC1-RPP-L3-CX-5565, DC1-RPP-L3-CX-5595, DC1-RPP-L3-CX-5625, DC1-RPP-L3-CX-5655, DC1-RPP-L3-CX-5685, DC1-RPP-L3-CX-5715, DC1-RPP-L3-CX-5745, DC1-RPP-L3-CX-5775, QTS - 6460, QTS - 7290, QTS - 7310, QTS - 6840, QTS - 7070, QTS - 6440, QTS - 6470, QTS - 6850, QTS - 7080, QTS - 7280, QTS - 7170, QTS - 7230, QTS - 7300, QTS - 2620, QTS-44541 | 32d |  |  | LAY | Riley Warring |
| DC1-MECH-L4-Cx-1040 |  | DC1 Data Hall 2300 Mechanical L4 | 20d | 2026-06-29 | 2026-07-27 | DC1-MECH-L4-Cx-1140, DC1-DOAS-L3-Cx-2230, DC1-CHLR-L3-Cx-2790, DC1-CHLR-L3-Cx-2820, DC1-CHLR-L3-Cx-2850, DC1-CHLR-L3-Cx-2880, DC1-CHLR-L3-Cx-2910, DC1-CHLR-L3-Cx-2940, DC1-CHLR-L3-Cx-2970, DC1-CHWP-L3-Cx-2650, DC1-CHWP-L3-Cx-2680, DC1-CHWP-L3-Cx-2710, DC1-CHWP-L3-Cx-2740, DC1-CHWP-L3-Cx-2770, DC1-CHWP-L3-Cx-2800, DC1-CHWP-L3-Cx-2830, DC1-CRAH-L3-Cx-4900, DC1-CRAH-L3-Cx-4930, DC1-CRAH-L3-Cx-4960, DC1-CRAH-L3-Cx-4990, DC1-CRAH-L3-Cx-5020, DC1-CRAH-L3-Cx-5050, DC1-CRAH-L3-Cx-5080, DC1-CRAH-L3-Cx-5110, DC1-CRAH-L3-Cx-5140, DC1-CRAH-L3-Cx-5170, DC1-CRAH-L3-Cx-5200, DC1-CRAH-L3-Cx-5230, DC1-CRAH-L3-Cx-5260, DC1-CRAH-L3-Cx-5290, DC1-CRAH-L3-Cx-5320, DC1-CRAH-L3-Cx-5350, DC1-CRAH-L3-Cx-5380, DC1-CRAH-L3-Cx-5410, DC1-CRAH-L3-Cx-5440, DC1-CRAH-L3-Cx-5470, DC1-CRAH-L3-Cx-5500, DC1-CRAH-L3-Cx-5530, DC1-CRAH-L3-Cx-5560, DC1-CRAH-L3-Cx-5590, DC1-CRAH-L3-Cx-5620, DC1-CRAH-L3-Cx-5650, DC1-CRAH-L3-Cx-5680, DC1-CRAH-L3-Cx-5710, DC1-CRAH-L3-Cx-5740, DC1-CRAH-L3-Cx-5770, DC1-CRAH-L3-Cx-5800, DC1-CRAH-L3-Cx-5830, DC1-DOAS-L3-Cx-2200, DC1-DOAS-L3-Cx-2230 FF, DC1-COMP-L3-CX-2650, DC1-FAN-L3-CX-2650, DC1-COMP-L3-CX-2680, DC1-FAN-L3-CX-2680, DC1-COMP-L3-CX-2710, DC1-FAN-L3-CX-2710, DC1-COMP-L3-CX-2740, DC1-FAN-L3-CX-2740, DC1-COMP-L3-CX-2770, DC1-FAN-L3-CX-2770, DC1-COMP-L3-CX-2800, DC1-FAN-L3-CX-2800, DC1-COMP-L3-CX-2830, DC1-FAN-L3-CX-2830, DC1-DH2300-TAB-1010 | 0d |  |  | LAY | Riley Warring |
| DC1-MECH-L4-Cx-1070 |  | DC1 Data Hall 2300 Mechanical L4 (TFO) | 20d | 2026-07-30 | 2026-08-26 | DC1-DH2300-LB-1040 SS, DC1-CDU-L3-CX-5625, DC1-CDU-L3-CX-5655, DC1-CDU-L3-CX-5685, DC1-CDU-L3-CX-5715, DC1-CDU-L3-CX-5745, DC1-CDU-L3-CX-5775, DC1-CDU-L3-CX-5805, DC1-CDU-L3-CX-5835, DC1-CDU-L3-CX-5865, DC1-CDU-L3-CX-5895, DC1-CDU-L3-CX-5925, DC1-CDU-L3-CX-5955, DC1-CDU-L3-CX-5985, DC1-CDU-L3-CX-6015, DC1-CDU-L3-CX-6045, DC1-CDU-L3-CX-6075, DC1-CDU-L3-CX-6105, DC1-CDU-L3-CX-6135, QTS - 6460, QTS - 7290, QTS - 7310, QTS - 6840, QTS - 7070, QTS - 6440, QTS - 6470, QTS - 6850, QTS - 7080, QTS - 7280, QTS - 7170, QTS - 7230, QTS - 7300, QTS - 2620 | 0d |  |  | LAY | Riley Warring |

Notes:
- DC1-CRAH-L3-Cx-5820: Steps: EC Startup Checklist; MC Startup Checklist; Vendor Startup
- DC1-DOAS-L3-Cx-2190: Steps: EC Startup Checklist; MC Startup Checklist; Vendor Startup
- DC1-DOAS-L3-Cx-2220: Steps: EC Startup Checklist; MC Startup Checklist; Vendor Startup

| ID | WBS | Activity | Duration | Start | Finish | Predecessors | Total float | Free float | Layton Responsible Party | Vendor Responsible Party |
| --- | --- | --- | --- | --- | --- | --- | --- | --- | --- | --- |
|  | 02 | **Data Hall 2300 Mechanical Cx L4** |  |  |  |  |  |  |  |  |
|  | 01 | **Data Hall 2300 Electrical Cx L4** |  |  |  |  |  |  |  |  |
|  | 05 | **Data Hall 2300 Cx L5** |  | 2026-07-28 | 2026-07-29 |  |  |  |  |  |
| DC1-IST-2030 |  | DC1 Data Hall 2300 IST (8/3/26) | 2d | 2026-07-28 | 2026-07-29 | DC1-ELEC-L4-Cx-1040, DC1-MECH-L4-Cx-1040, QTS-44361 | 0d |  | Riley Warring | LAY |
|  | 07 | **Data Hall 1300 Commissioning** |  | 2026-02-25 | 2026-08-26 |  |  |  |  |  |
|  | 02 | **Data Hall 1300 Cx L2** |  | 2026-02-25 | 2026-06-03 |  |  |  |  |  |
|  | 01 | **DC1-DH1300 Generators Cx L2** |  | 2026-04-02 | 2026-04-30 |  |  |  |  |  |
| DC1-GEN-L2-2280 |  | DH1300 GEN-A13 L2 Checklist | 3d | 2026-04-02 | 2026-04-06 | QTS-17471, QTS-1000320, QTS-1001230 | 36d | 0d |  | HLT |
| DC1-GEN-L2-2290 |  | DH1300 GEN-B13 L2 Checklist | 3d | 2026-04-07 | 2026-04-09 | DC1-GEN-L2-2280, QTS-1000320, QTS-1001230 | 36d | 0d |  | HLT |
| DC1-GEN-L2-2300 |  | DH1300 GEN-C13 L2 Checklist | 3d | 2026-04-10 | 2026-04-14 | DC1-GEN-L2-2290, QTS-1000320, QTS-1001230 | 36d | 0d |  | HLT |
| DC1-GEN-L2-2310 |  | DH1300 GEN-D13 L2 Checklist | 3d | 2026-04-15 | 2026-04-17 | DC1-GEN-L2-2300, QTS-1000320, QTS-1001230 | 36d | 0d |  | HLT |
| DC1-GEN-L2-2320 |  | DH1300 GEN-E13 L2 Checklist | 3d | 2026-04-20 | 2026-04-22 | DC1-GEN-L2-2310, QTS-1000320, QTS-1001230 | 36d | 0d |  | HLT |
| DC1-GEN-L2-2330 |  | DH1300 GEN-F13 L2 Checklist | 3d | 2026-04-23 | 2026-04-27 | DC1-GEN-L2-2320, QTS-1000320, QTS-1001230 | 36d | 0d |  | HLT |
| DC1-GEN-L2-2340 |  | DH1300 GEN-R13 L2 Checklist | 3d | 2026-04-28 | 2026-04-30 | DC1-GEN-L2-2330, QTS-1000320, QTS-1001230 | 36d | 2d |  | HLT |
|  | 02 | **DC1-DH1300 MV XFMRs Cx L2** |  | 2026-04-06 | 2026-05-01 |  |  |  |  |  |
| DC1-XFMR-L2-2340 |  | DH1300 XFMR-R13 L2 Checklist | 3d | 2026-04-06 | 2026-04-08 | QTS-15961, QTS-42891 | 0d |  | Riley Warring | VTC |
| DC1-XFMR-L2-2280 |  | DH1300 XFMR-A13 L2 Checklist | 3d | 2026-04-08 | 2026-04-10 | DC1-XFMR-L2-2340 SS+2d, QTS-42891 | 0d |  | Riley Warring | VTC |
| DC1-XFMR-L2-2290 |  | DH1300 XFMR-B13 L2 Checklist | 3d | 2026-04-13 | 2026-04-15 | DC1-XFMR-L2-2280, QTS-42891 | 0d |  | Riley Warring | VTC |
| DC1-XFMR-L2-2300 |  | DH1300 XFMR-C13 L2 Checklist | 3d | 2026-04-16 | 2026-04-20 | DC1-XFMR-L2-2290, QTS-42891 | 0d |  | Riley Warring | VTC |
| DC1-XFMR-L2-2310 |  | DH1300 XFMR-D13 L2 Checklist | 3d | 2026-04-21 | 2026-04-23 | DC1-XFMR-L2-2300, QTS-42891 | 0d |  | Riley Warring | VTC |
| DC1-XFMR-L2-2320 |  | DH1300 XFMR-E13 L2 Checklist | 3d | 2026-04-24 | 2026-04-28 | DC1-XFMR-L2-2310, QTS-42891 | 0d |  | Riley Warring | VTC |
| DC1-XFMR-L2-2330 |  | DH1300 XFMR-F13 L2 Checklist | 3d | 2026-04-29 | 2026-05-01 | DC1-XFMR-L2-2320, QTS-42891 | 0d |  | Riley Warring | VTC |
|  | 03 | **DC1-DH1300 PODS** |  | 2026-02-25 | 2026-04-21 |  |  |  |  |  |
|  | 01 | **DC1-DH1300 SWDs Cx L2** |  | 2026-04-06 | 2026-04-21 |  |  |  |  |  |
| DC1-SWD-L2-2340 |  | DH1300 SWD-R13 L2 Checklist | 3d | 2026-04-06 | 2026-04-08 | QTS-15961, QTS-17471, QTS-43851 | 8d | 0d | Riley Warring | SIE |
| DC1-SWD-L2-2280 |  | DH1300 SWD-A13 L2 Checklist | 3d | 2026-04-08 | 2026-04-10 | DC1-SWD-L2-2340 SS+2d | 8d | 0d | Riley Warring | SIE |
| DC1-SWD-L2-2290 |  | DH1300 SWD-B13 L2 Checklist | 3d | 2026-04-10 | 2026-04-14 | DC1-SWD-L2-2280 SS+2d | 8d | 0d | Riley Warring | SIE |
| DC1-SWD-L2-2300 |  | DH1300 SWD-C13 L2 Checklist | 3d | 2026-04-14 | 2026-04-16 | DC1-SWD-L2-2290 SS+2d | 8d | 0d | Riley Warring | SIE |
| DC1-SWD-L2-2310 |  | DH1300 SWD-D13 L2 Checklist | 3d | 2026-04-15 | 2026-04-17 | DC1-SWD-L2-2300 SS+1d | 8d | 0d | Riley Warring | SIE |
| DC1-SWD-L2-2320 |  | DH1300 SWD-E13 L2 Checklist | 3d | 2026-04-16 | 2026-04-20 | DC1-SWD-L2-2310 SS+1d | 8d | 0d | Riley Warring | SIE |
| DC1-SWD-L2-2330 |  | DH1300 SWD-F13 L2 Checklist | 3d | 2026-04-17 | 2026-04-21 | DC1-SWD-L2-2320 SS+1d | 8d |  | Riley Warring | SIE |

Notes:
- DC1-GEN-L2-2280: Steps: EC Installation Checklist; MC Installation Checklist; CC Installation Checklist; Vendor Pre-Energization Checklist; CXA Pre-Energization Inspection; PEI/Clean-Walk
- DC1-GEN-L2-2290: Steps: EC Installation Checklist; MC Installation Checklist; CC Installation Checklist; Vendor Pre-Energization Checklist; CXA Pre-Energization Inspection; PEI/Clean-Walk
- DC1-GEN-L2-2300: Steps: EC Installation Checklist; MC Installation Checklist; CC Installation Checklist; Vendor Pre-Energization Checklist; CXA Pre-Energization Inspection; PEI/Clean-Walk
- DC1-GEN-L2-2310: Steps: EC Installation Checklist; MC Installation Checklist; CC Installation Checklist; Vendor Pre-Energization Checklist; CXA Pre-Energization Inspection; PEI/Clean-Walk
- DC1-GEN-L2-2320: Steps: EC Installation Checklist; MC Installation Checklist; CC Installation Checklist; Vendor Pre-Energization Checklist; CXA Pre-Energization Inspection; PEI/Clean-Walk
- DC1-GEN-L2-2330: Steps: EC Installation Checklist; MC Installation Checklist; CC Installation Checklist; Vendor Pre-Energization Checklist; CXA Pre-Energization Inspection; PEI/Clean-Walk
- DC1-GEN-L2-2340: Steps: EC Installation Checklist; MC Installation Checklist; CC Installation Checklist; Vendor Pre-Energization Checklist; CXA Pre-Energization Inspection; PEI/Clean-Walk
- DC1-XFMR-L2-2340: Steps: EC Installation Checklist; CC Installation Checklist; Vendor Pre-Energization Checklist; CXA Pre-Energization Inspection; PEI/Clean-Walk
- DC1-XFMR-L2-2280: Steps: EC Installation Checklist; CC Installation Checklist; Vendor Pre-Energization Checklist; CXA Pre-Energization Inspection; PEI/Clean-Walk
- DC1-XFMR-L2-2290: Steps: EC Installation Checklist; CC Installation Checklist; Vendor Pre-Energization Checklist; CXA Pre-Energization Inspection; PEI/Clean-Walk
- DC1-XFMR-L2-2300: Steps: EC Installation Checklist; CC Installation Checklist; Vendor Pre-Energization Checklist; CXA Pre-Energization Inspection; PEI/Clean-Walk
- DC1-XFMR-L2-2310: Steps: EC Installation Checklist; CC Installation Checklist; Vendor Pre-Energization Checklist; CXA Pre-Energization Inspection; PEI/Clean-Walk
- DC1-XFMR-L2-2320: Steps: EC Installation Checklist; CC Installation Checklist; Vendor Pre-Energization Checklist; CXA Pre-Energization Inspection; PEI/Clean-Walk
- DC1-XFMR-L2-2330: Steps: EC Installation Checklist; CC Installation Checklist; Vendor Pre-Energization Checklist; CXA Pre-Energization Inspection; PEI/Clean-Walk
- DC1-SWD-L2-2340: Steps: EC Pre-Energization Checklist; Vendor Pre-Energization Checklist; CXA Pre-Energization Inspection; PEI/Clean-Walk
- DC1-SWD-L2-2280: Steps: EC Pre-Energization Checklist; Vendor Pre-Energization Checklist; CXA Pre-Energization Inspection; PEI/Clean-Walk
- DC1-SWD-L2-2290: Steps: EC Pre-Energization Checklist; Vendor Pre-Energization Checklist; CXA Pre-Energization Inspection; PEI/Clean-Walk
- DC1-SWD-L2-2300: Steps: EC Pre-Energization Checklist; Vendor Pre-Energization Checklist; CXA Pre-Energization Inspection; PEI/Clean-Walk
- DC1-SWD-L2-2310: Steps: EC Pre-Energization Checklist; Vendor Pre-Energization Checklist; CXA Pre-Energization Inspection; PEI/Clean-Walk
- DC1-SWD-L2-2320: Steps: EC Pre-Energization Checklist; Vendor Pre-Energization Checklist; CXA Pre-Energization Inspection; PEI/Clean-Walk
- DC1-SWD-L2-2330: Steps: EC Pre-Energization Checklist; Vendor Pre-Energization Checklist; CXA Pre-Energization Inspection; PEI/Clean-Walk

| ID | WBS | Activity | Duration | Start | Finish | Predecessors | Total float | Free float | Notes | Vendor Responsible Party | Layton Responsible Party |
| --- | --- | --- | --- | --- | --- | --- | --- | --- | --- | --- | --- |
|  | 02 | **DC1-DH1300 MOD-01s Cx L2** |  | 2026-02-25 | 2026-03-25 |  |  |  |  |  |  |
| DC1-MOD01-L2-2280 |  | DH1300 MOD-A13-01 L2 Checklist | 3d | 2026-02-25 | 2026-02-27 | QTS-13581 | 33d | 0d | Do we need this? | PHE |  |
| DC1-MOD01-L2-2290 |  | DH1300 MOD-B13-01 L2 Checklist | 3d | 2026-03-02 | 2026-03-04 | DC1-MOD01-L2-2280 | 33d | 0d | Do we need this? | PHE |  |
| DC1-MOD01-L2-2300 |  | DH1300 MOD-C13-01 L2 Checklist | 3d | 2026-03-05 | 2026-03-09 | DC1-MOD01-L2-2290 | 33d | 0d | Do we need this? | PHE |  |
| DC1-MOD01-L2-2310 |  | DH1300 MOD-D13-01 L2 Checklist | 3d | 2026-03-10 | 2026-03-12 | DC1-MOD01-L2-2300 | 33d | 0d | Do we need this? | PHE |  |
| DC1-MOD01-L2-2320 |  | DH1300 MOD-E13-01 L2 Checklist | 3d | 2026-03-13 | 2026-03-17 | DC1-MOD01-L2-2310 | 33d | 0d | Do we need this? | PHE |  |
| DC1-MOD01-L2-2330 |  | DH1300 MOD-F13-01 L2 Checklist | 3d | 2026-03-18 | 2026-03-20 | DC1-MOD01-L2-2320 | 33d | 0d | Do we need this? | PHE |  |
| DC1-MOD01-L2-2340 |  | DH1300 MOD-R13-01 L2 Checklist | 3d | 2026-03-23 | 2026-03-25 | DC1-MOD01-L2-2330 | 33d | 27d | Do we need this? | PHE |  |
|  | 03 | **DC1-DH1300 UPS-M Cx L2** |  | 2026-02-25 | 2026-03-25 |  |  |  |  |  |  |
| DC1-UPS-M-L2-2280 |  | DH1300 UPS-M-A13 L2 Checklist | 3d | 2026-02-25 | 2026-02-27 | QTS-13581 | 37d | 0d |  | VER |  |
| DC1-UPS-M-L2-2290 |  | DH1300 UPS-M-B13 L2 Checklist | 3d | 2026-03-02 | 2026-03-04 | DC1-UPS-M-L2-2280 | 37d | 0d |  | VER |  |
| DC1-UPS-M-L2-2300 |  | DH1300 UPS-M-C13 L2 Checklist | 3d | 2026-03-05 | 2026-03-09 | DC1-UPS-M-L2-2290 | 37d | 0d |  | VER |  |
| DC1-UPS-M-L2-2310 |  | DH1300 UPS-M-D13 L2 Checklist | 3d | 2026-03-10 | 2026-03-12 | DC1-UPS-M-L2-2300 | 37d | 0d |  | VER |  |
| DC1-UPS-M-L2-2320 |  | DH1300 UPS-M-E13 L2 Checklist | 3d | 2026-03-13 | 2026-03-17 | DC1-UPS-M-L2-2310 | 37d | 0d |  | VER |  |
| DC1-UPS-M-L2-2330 |  | DH1300 UPS-M-F13 L2 Checklist | 3d | 2026-03-18 | 2026-03-20 | DC1-UPS-M-L2-2320 | 37d | 0d |  | VER |  |
| DC1-UPS-M-L2-2340 |  | DH1300 UPS-M-R13 L2 Checklist | 3d | 2026-03-23 | 2026-03-25 | DC1-UPS-M-L2-2330 | 37d | 36d |  | VER |  |
|  | 04 | **DC1-DH1300 COMPRESSOR/FAN UNITS Cx L2** |  |  |  |  |  |  |  |  |  |
|  | 01 | **DC1-DH1300 POD-AC UNITS A13 Cx L2** |  |  |  |  |  |  |  |  |  |
|  | 02 | **DC1-DH1300 POD-AC UNITS B13 Cx L2** |  |  |  |  |  |  |  |  |  |
|  | 03 | **DC1-DH1300 POD-AC UNITS C13 Cx L2** |  |  |  |  |  |  |  |  |  |
|  | 04 | **DC1-DH1300 POD-AC UNITS D13 Cx L2** |  |  |  |  |  |  |  |  |  |
|  | 05 | **DC1-DH1300 POD-AC UNITS E13 Cx L2** |  |  |  |  |  |  |  |  |  |
|  | 06 | **DC1-DH1300 POD-AC UNITS F13 Cx L2** |  |  |  |  |  |  |  |  |  |
|  | 07 | **DC1-DH1300 POD-AC UNITS R13 Cx L2** |  |  |  |  |  |  |  |  |  |
|  | 04 | **DC1-DH1300 BUS-R1X/BUS-R2X Cx L2** |  | 2026-03-19 | 2026-04-29 |  |  |  |  |  |  |
| DC1-BUS-L2-1090 |  | DH1300 BUS-R2 (R13) MAINTENANCE BUS Duct L2 Checklist | 3d | 2026-03-19 | 2026-03-23 | QTS-7281, QTS-9531 | 30d |  | CFCI | LAY |  |
| DC1-BUS-L2-1080 |  | DH1300 BUS-R1 (R23) CATCHER BUS Duct L2 Checklist | 3d | 2026-04-27 | 2026-04-29 | QTS-7231 | 4d |  | CFCI - Bus duct complete (PRED) | LAY | Riley Warring |

Notes:
- DC1-MOD01-L2-2280: Steps: Vendor Pre-Energization Checklist; CXA Pre-Energization Inspection; PEI/Clean-Walk
- DC1-MOD01-L2-2290: Steps: Vendor Pre-Energization Checklist; CXA Pre-Energization Inspection; PEI/Clean-Walk
- DC1-MOD01-L2-2300: Steps: Vendor Pre-Energization Checklist; CXA Pre-Energization Inspection; PEI/Clean-Walk
- DC1-MOD01-L2-2310: Steps: Vendor Pre-Energization Checklist; CXA Pre-Energization Inspection; PEI/Clean-Walk
- DC1-MOD01-L2-2320: Steps: Vendor Pre-Energization Checklist; CXA Pre-Energization Inspection; PEI/Clean-Walk
- DC1-MOD01-L2-2330: Steps: Vendor Pre-Energization Checklist; CXA Pre-Energization Inspection; PEI/Clean-Walk
- DC1-MOD01-L2-2340: Steps: Vendor Pre-Energization Checklist; CXA Pre-Energization Inspection; PEI/Clean-Walk
- DC1-UPS-M-L2-2280: Steps: EC Pre-Energization Checklist; Vendor Pre-Energization Checklist; CXA Pre-Energization Inspection; PEI/Clean-Walk
- DC1-UPS-M-L2-2290: Steps: EC Pre-Energization Checklist; Vendor Pre-Energization Checklist; CXA Pre-Energization Inspection; PEI/Clean-Walk
- DC1-UPS-M-L2-2300: Steps: EC Pre-Energization Checklist; Vendor Pre-Energization Checklist; CXA Pre-Energization Inspection; PEI/Clean-Walk
- DC1-UPS-M-L2-2310: Steps: EC Pre-Energization Checklist; Vendor Pre-Energization Checklist; CXA Pre-Energization Inspection; PEI/Clean-Walk
- DC1-UPS-M-L2-2320: Steps: EC Pre-Energization Checklist; Vendor Pre-Energization Checklist; CXA Pre-Energization Inspection; PEI/Clean-Walk
- DC1-UPS-M-L2-2330: Steps: EC Pre-Energization Checklist; Vendor Pre-Energization Checklist; CXA Pre-Energization Inspection; PEI/Clean-Walk
- DC1-UPS-M-L2-2340: Steps: EC Pre-Energization Checklist; Vendor Pre-Energization Checklist; CXA Pre-Energization Inspection; PEI/Clean-Walk
- DC1-BUS-L2-1090: Steps: EC Pre-Energization Checklist; Vendor Pre-Energization Checklist; CXA Pre-Energization Inspection; PEI/Clean-Walk
- DC1-BUS-L2-1080: Steps: EC Pre-Energization Checklist; Vendor Pre-Energization Checklist; CXA Pre-Energization Inspection; PEI/Clean-Walk

| ID | WBS | Activity | Duration | Start | Finish | Predecessors | Total float | Free float | Vendor Responsible Party |
| --- | --- | --- | --- | --- | --- | --- | --- | --- | --- |
|  | 05 | **DC1-DH1300 ATS Cx L2** |  | 2026-03-20 | 2026-04-09 |  |  |  |  |
|  | 01 | **DC1-DH1300 ATS A13 Cx L2** |  | 2026-03-20 | 2026-03-24 |  |  |  |  |
| DC1-ATS-L2-3440 |  | DH1300 ATS-A13-01 L2 Checklist | 3d | 2026-03-20 | 2026-03-24 | QTS-18211 | 36d | 30d | MAV |
| DC1-ATS-L2-3450 |  | DH1300 ATS-A13-02 L2 Checklist | 3d | 2026-03-20 | 2026-03-24 | QTS-18211 | 36d | 30d | MAV |
| DC1-ATS-L2-3460 |  | DH1300 ATS-A13-03 L2 Checklist | 3d | 2026-03-20 | 2026-03-24 | QTS-18211 | 36d | 30d | MAV |
| DC1-ATS-L2-3470 |  | DH1300 ATS-A13-04 L2 Checklist | 3d | 2026-03-20 | 2026-03-24 | QTS-18211 | 36d | 30d | MAV |
| DC1-ATS-L2-3480 |  | DH1300 ATS-A13-05 L2 Checklist | 3d | 2026-03-20 | 2026-03-24 | QTS-18211 | 36d | 30d | MAV |
| DC1-ATS-L2-3490 |  | DH1300 ATS-A13-06 L2 Checklist | 3d | 2026-03-20 | 2026-03-24 | QTS-18211 | 36d | 30d | MAV |
|  | 02 | **DC1-DH1300 ATS B13 Cx L2** |  | 2026-03-20 | 2026-03-24 |  |  |  |  |
| DC1-ATS-L2-3500 |  | DH1300 ATS-B13-01 L2 Checklist | 3d | 2026-03-20 | 2026-03-24 | QTS-9551 | 36d | 30d | MAV |
| DC1-ATS-L2-3510 |  | DH1300 ATS-B13-02 L2 Checklist | 3d | 2026-03-20 | 2026-03-24 | QTS-9551 | 36d | 30d | MAV |
| DC1-ATS-L2-3520 |  | DH1300 ATS-B13-03 L2 Checklist | 3d | 2026-03-20 | 2026-03-24 | QTS-9551 | 36d | 30d | MAV |
| DC1-ATS-L2-3530 |  | DH1300 ATS-B13-04 L2 Checklist | 3d | 2026-03-20 | 2026-03-24 | QTS-9551 | 36d | 30d | MAV |
| DC1-ATS-L2-3540 |  | DH1300 ATS-B13-05 L2 Checklist | 3d | 2026-03-20 | 2026-03-24 | QTS-9551 | 36d | 30d | MAV |
| DC1-ATS-L2-3550 |  | DH1300 ATS-B13-06 L2 Checklist | 3d | 2026-03-20 | 2026-03-24 | QTS-9551 | 36d | 30d | MAV |
|  | 03 | **DC1-DH1300 ATS C13 Cx L2** |  | 2026-03-30 | 2026-04-01 |  |  |  |  |
| DC1-ATS-L2-3560 |  | DH1300 ATS-C13-01 L2 Checklist | 3d | 2026-03-30 | 2026-04-01 | QTS-9581 | 30d | 24d | MAV |
| DC1-ATS-L2-3570 |  | DH1300 ATS-C13-02 L2 Checklist | 3d | 2026-03-30 | 2026-04-01 | QTS-9581 | 30d | 24d | MAV |
| DC1-ATS-L2-3580 |  | DH1300 ATS-C13-03 L2 Checklist | 3d | 2026-03-30 | 2026-04-01 | QTS-9581 | 30d | 24d | MAV |
| DC1-ATS-L2-3590 |  | DH1300 ATS-C13-04 L2 Checklist | 3d | 2026-03-30 | 2026-04-01 | QTS-9581 | 30d | 24d | MAV |
| DC1-ATS-L2-3600 |  | DH1300 ATS-C13-05 L2 Checklist | 3d | 2026-03-30 | 2026-04-01 | QTS-9581 | 30d | 24d | MAV |
| DC1-ATS-L2-3610 |  | DH1300 ATS-C13-06 L2 Checklist | 3d | 2026-03-30 | 2026-04-01 | QTS-9581 | 30d | 24d | MAV |
|  | 04 | **DC1-DH1300 ATS D13 Cx L2** |  | 2026-03-30 | 2026-04-01 |  |  |  |  |
| DC1-ATS-L2-3620 |  | DH1300 ATS-D13-01 L2 Checklist | 3d | 2026-03-30 | 2026-04-01 | QTS-9611 | 30d | 24d | MAV |
| DC1-ATS-L2-3630 |  | DH1300 ATS-D13-02 L2 Checklist | 3d | 2026-03-30 | 2026-04-01 | QTS-9611 | 30d | 24d | MAV |
| DC1-ATS-L2-3640 |  | DH1300 ATS-D13-03 L2 Checklist | 3d | 2026-03-30 | 2026-04-01 | QTS-9611 | 30d | 24d | MAV |
| DC1-ATS-L2-3650 |  | DH1300 ATS-D13-04 L2 Checklist | 3d | 2026-03-30 | 2026-04-01 | QTS-9611 | 30d | 24d | MAV |
| DC1-ATS-L2-3660 |  | DH1300 ATS-D13-05 L2 Checklist | 3d | 2026-03-30 | 2026-04-01 | QTS-9611 | 30d | 24d | MAV |
| DC1-ATS-L2-3670 |  | DH1300 ATS-D13-06 L2 Checklist | 3d | 2026-03-30 | 2026-04-01 | QTS-9611 | 30d | 24d | MAV |

Notes:
- DC1-ATS-L2-3440: Steps: EC Installation Checklist; CC Installation Checklist; Vendor Pre-Energization Checklist; CXA Pre-Energization Inspection; PEI/Clean-Walk
- DC1-ATS-L2-3450: Steps: EC Installation Checklist; CC Installation Checklist; Vendor Pre-Energization Checklist; CXA Pre-Energization Inspection; PEI/Clean-Walk
- DC1-ATS-L2-3460: Steps: EC Installation Checklist; CC Installation Checklist; Vendor Pre-Energization Checklist; CXA Pre-Energization Inspection; PEI/Clean-Walk
- DC1-ATS-L2-3470: Steps: EC Installation Checklist; CC Installation Checklist; Vendor Pre-Energization Checklist; CXA Pre-Energization Inspection; PEI/Clean-Walk
- DC1-ATS-L2-3480: Steps: EC Installation Checklist; CC Installation Checklist; Vendor Pre-Energization Checklist; CXA Pre-Energization Inspection; PEI/Clean-Walk
- DC1-ATS-L2-3490: Steps: EC Installation Checklist; CC Installation Checklist; Vendor Pre-Energization Checklist; CXA Pre-Energization Inspection; PEI/Clean-Walk
- DC1-ATS-L2-3500: Steps: EC Installation Checklist; CC Installation Checklist; Vendor Pre-Energization Checklist; CXA Pre-Energization Inspection; PEI/Clean-Walk
- DC1-ATS-L2-3510: Steps: EC Installation Checklist; CC Installation Checklist; Vendor Pre-Energization Checklist; CXA Pre-Energization Inspection; PEI/Clean-Walk
- DC1-ATS-L2-3520: Steps: EC Installation Checklist; CC Installation Checklist; Vendor Pre-Energization Checklist; CXA Pre-Energization Inspection; PEI/Clean-Walk
- DC1-ATS-L2-3530: Steps: EC Installation Checklist; CC Installation Checklist; Vendor Pre-Energization Checklist; CXA Pre-Energization Inspection; PEI/Clean-Walk
- DC1-ATS-L2-3540: Steps: EC Installation Checklist; CC Installation Checklist; Vendor Pre-Energization Checklist; CXA Pre-Energization Inspection; PEI/Clean-Walk
- DC1-ATS-L2-3550: Steps: EC Installation Checklist; CC Installation Checklist; Vendor Pre-Energization Checklist; CXA Pre-Energization Inspection; PEI/Clean-Walk
- DC1-ATS-L2-3560: Steps: EC Installation Checklist; CC Installation Checklist; Vendor Pre-Energization Checklist; CXA Pre-Energization Inspection; PEI/Clean-Walk
- DC1-ATS-L2-3570: Steps: EC Installation Checklist; CC Installation Checklist; Vendor Pre-Energization Checklist; CXA Pre-Energization Inspection; PEI/Clean-Walk
- DC1-ATS-L2-3580: Steps: EC Installation Checklist; CC Installation Checklist; Vendor Pre-Energization Checklist; CXA Pre-Energization Inspection; PEI/Clean-Walk
- DC1-ATS-L2-3590: Steps: EC Installation Checklist; CC Installation Checklist; Vendor Pre-Energization Checklist; CXA Pre-Energization Inspection; PEI/Clean-Walk
- DC1-ATS-L2-3600: Steps: EC Installation Checklist; CC Installation Checklist; Vendor Pre-Energization Checklist; CXA Pre-Energization Inspection; PEI/Clean-Walk
- DC1-ATS-L2-3610: Steps: EC Installation Checklist; CC Installation Checklist; Vendor Pre-Energization Checklist; CXA Pre-Energization Inspection; PEI/Clean-Walk
- DC1-ATS-L2-3620: Steps: EC Installation Checklist; CC Installation Checklist; Vendor Pre-Energization Checklist; CXA Pre-Energization Inspection; PEI/Clean-Walk
- DC1-ATS-L2-3630: Steps: EC Installation Checklist; CC Installation Checklist; Vendor Pre-Energization Checklist; CXA Pre-Energization Inspection; PEI/Clean-Walk
- DC1-ATS-L2-3640: Steps: EC Installation Checklist; CC Installation Checklist; Vendor Pre-Energization Checklist; CXA Pre-Energization Inspection; PEI/Clean-Walk
- DC1-ATS-L2-3650: Steps: EC Installation Checklist; CC Installation Checklist; Vendor Pre-Energization Checklist; CXA Pre-Energization Inspection; PEI/Clean-Walk
- DC1-ATS-L2-3660: Steps: EC Installation Checklist; CC Installation Checklist; Vendor Pre-Energization Checklist; CXA Pre-Energization Inspection; PEI/Clean-Walk
- DC1-ATS-L2-3670: Steps: EC Installation Checklist; CC Installation Checklist; Vendor Pre-Energization Checklist; CXA Pre-Energization Inspection; PEI/Clean-Walk

| ID | WBS | Activity | Duration | Start | Finish | Predecessors | Total float | Free float | Layton Responsible Party | Vendor Responsible Party |
| --- | --- | --- | --- | --- | --- | --- | --- | --- | --- | --- |
|  | 05 | **DC1-DH1300 ATS E13 Cx L2** |  | 2026-04-06 | 2026-04-08 |  |  |  |  |  |
| DC1-ATS-L2-3680 |  | DH1300 ATS-E13-01 L2 Checklist | 3d | 2026-04-06 | 2026-04-08 | QTS-9641 | 25d | 19d | Riley Warring | MAV |
| DC1-ATS-L2-3690 |  | DH1300 ATS-E13-02 L2 Checklist | 3d | 2026-04-06 | 2026-04-08 | QTS-9641 | 25d | 19d | Riley Warring | MAV |
| DC1-ATS-L2-3700 |  | DH1300 ATS-E13-03 L2 Checklist | 3d | 2026-04-06 | 2026-04-08 | QTS-9641 | 25d | 19d | Riley Warring | MAV |
| DC1-ATS-L2-3710 |  | DH1300 ATS-E13-04 L2 Checklist | 3d | 2026-04-06 | 2026-04-08 | QTS-9641 | 25d | 19d | Riley Warring | MAV |
| DC1-ATS-L2-3720 |  | DH1300 ATS-E13-05 L2 Checklist | 3d | 2026-04-06 | 2026-04-08 | QTS-9641 | 25d | 19d | Riley Warring | MAV |
| DC1-ATS-L2-3730 |  | DH1300 ATS-E13-06 L2 Checklist | 3d | 2026-04-06 | 2026-04-08 | QTS-9641 | 25d | 19d | Riley Warring | MAV |
|  | 06 | **DC1-DH1300 ATS F13 Cx L2** |  | 2026-04-07 | 2026-04-09 |  |  |  |  |  |
| DC1-ATS-L2-3740 |  | DH1300 ATS-F13-01 L2 Checklist | 3d | 2026-04-07 | 2026-04-09 | QTS-9671 | 24d | 18d | Riley Warring | MAV |
| DC1-ATS-L2-3750 |  | DH1300 ATS-F13-02 L2 Checklist | 3d | 2026-04-07 | 2026-04-09 | QTS-9671 | 24d | 18d | Riley Warring | MAV |
| DC1-ATS-L2-3760 |  | DH1300 ATS-F13-03 L2 Checklist | 3d | 2026-04-07 | 2026-04-09 | QTS-9671 | 24d | 18d | Riley Warring | MAV |
| DC1-ATS-L2-3770 |  | DH1300 ATS-F13-04 L2 Checklist | 3d | 2026-04-07 | 2026-04-09 | QTS-9671 | 24d | 18d | Riley Warring | MAV |
| DC1-ATS-L2-3780 |  | DH1300 ATS-F13-05 L2 Checklist | 3d | 2026-04-07 | 2026-04-09 | QTS-9671 | 24d | 18d | Riley Warring | MAV |
| DC1-ATS-L2-3790 |  | DH1300 ATS-F13-06 L2 Checklist | 3d | 2026-04-07 | 2026-04-09 | QTS-9671 | 24d | 18d | Riley Warring | MAV |
|  | 06 | **DC1-DH1300 CODs Cx L2** |  | 2026-03-31 | 2026-04-16 |  |  |  |  |  |
|  | 01 | **DC1-DH1300 COD A13 Cx L2** |  | 2026-03-31 | 2026-04-02 |  |  |  |  |  |
| DC1-COD-L2-3440 |  | DH1300 COD-A13-01 L2 Checklist | 3d | 2026-03-31 | 2026-04-02 | QTS - 8960, QTS-18221 | 30d | 24d | Riley Warring | SIE |
| DC1-COD-L2-3450 |  | DH1300 COD-A13-02 L2 Checklist | 3d | 2026-03-31 | 2026-04-02 | QTS - 8960, QTS-18221 | 30d | 24d | Riley Warring | SIE |
| DC1-COD-L2-3460 |  | DH1300 COD-A13-03 L2 Checklist | 3d | 2026-03-31 | 2026-04-02 | QTS - 8960, QTS-18221 | 27d | 0d | Riley Warring | SIE |
| DC1-COD-L2-3470 |  | DH1300 COD-A13-04 L2 Checklist | 3d | 2026-03-31 | 2026-04-02 | QTS - 8960, QTS-18221 | 30d | 24d | Riley Warring | SIE |
| DC1-COD-L2-3480 |  | DH1300 COD-A13-05 L2 Checklist | 3d | 2026-03-31 | 2026-04-02 | QTS - 8960, QTS-18221 | 30d | 24d | Riley Warring | SIE |
| DC1-COD-L2-3490 |  | DH1300 COD-A13-06 L2 Checklist | 3d | 2026-03-31 | 2026-04-02 | QTS - 8960, QTS-18221 | 30d | 24d | Riley Warring | SIE |
|  | 02 | **DC1-DH1300 COD B13 Cx L2** |  | 2026-03-31 | 2026-04-07 |  |  |  |  |  |
| DC1-COD-L2-3500 |  | DH1300 COD-B13-01 L2 Checklist | 3d | 2026-03-31 | 2026-04-02 | QTS - 8960, QTS-9561 | 30d | 24d | Riley Warring | SIE |
| DC1-COD-L2-3510 |  | DH1300 COD-B13-02 L2 Checklist | 3d | 2026-03-31 | 2026-04-02 | QTS - 8960, QTS-9561 | 30d | 24d | Riley Warring | SIE |
| DC1-COD-L2-3530 |  | DH1300 COD-B13-04 L2 Checklist | 3d | 2026-03-31 | 2026-04-02 | QTS - 8960, QTS-9561 | 30d | 24d | Riley Warring | SIE |
| DC1-COD-L2-3540 |  | DH1300 COD-B13-05 L2 Checklist | 3d | 2026-03-31 | 2026-04-02 | QTS - 8960, QTS-9561 | 30d | 24d | Riley Warring | SIE |
| DC1-COD-L2-3550 |  | DH1300 COD-B13-06 L2 Checklist | 3d | 2026-03-31 | 2026-04-02 | QTS - 8960, QTS-9561 | 30d | 24d | Riley Warring | SIE |
| DC1-COD-L2-3520 |  | DH1300 COD-B13-03 L2 Checklist | 3d | 2026-04-03 | 2026-04-07 | DC1-COD-L2-3460, QTS - 8960, QTS-9561 | 27d | 21d | Riley Warring | SIE |

Notes:
- DC1-ATS-L2-3680: Steps: EC Installation Checklist; CC Installation Checklist; Vendor Pre-Energization Checklist; CXA Pre-Energization Inspection; PEI/Clean-Walk
- DC1-ATS-L2-3690: Steps: EC Installation Checklist; CC Installation Checklist; Vendor Pre-Energization Checklist; CXA Pre-Energization Inspection; PEI/Clean-Walk
- DC1-ATS-L2-3700: Steps: EC Installation Checklist; CC Installation Checklist; Vendor Pre-Energization Checklist; CXA Pre-Energization Inspection; PEI/Clean-Walk
- DC1-ATS-L2-3710: Steps: EC Installation Checklist; CC Installation Checklist; Vendor Pre-Energization Checklist; CXA Pre-Energization Inspection; PEI/Clean-Walk
- DC1-ATS-L2-3720: Steps: EC Installation Checklist; CC Installation Checklist; Vendor Pre-Energization Checklist; CXA Pre-Energization Inspection; PEI/Clean-Walk
- DC1-ATS-L2-3730: Steps: EC Installation Checklist; CC Installation Checklist; Vendor Pre-Energization Checklist; CXA Pre-Energization Inspection; PEI/Clean-Walk
- DC1-ATS-L2-3740: Steps: EC Installation Checklist; CC Installation Checklist; Vendor Pre-Energization Checklist; CXA Pre-Energization Inspection; PEI/Clean-Walk
- DC1-ATS-L2-3750: Steps: EC Installation Checklist; CC Installation Checklist; Vendor Pre-Energization Checklist; CXA Pre-Energization Inspection; PEI/Clean-Walk
- DC1-ATS-L2-3760: Steps: EC Installation Checklist; CC Installation Checklist; Vendor Pre-Energization Checklist; CXA Pre-Energization Inspection; PEI/Clean-Walk
- DC1-ATS-L2-3770: Steps: EC Installation Checklist; CC Installation Checklist; Vendor Pre-Energization Checklist; CXA Pre-Energization Inspection; PEI/Clean-Walk
- DC1-ATS-L2-3780: Steps: EC Installation Checklist; CC Installation Checklist; Vendor Pre-Energization Checklist; CXA Pre-Energization Inspection; PEI/Clean-Walk
- DC1-ATS-L2-3790: Steps: EC Installation Checklist; CC Installation Checklist; Vendor Pre-Energization Checklist; CXA Pre-Energization Inspection; PEI/Clean-Walk
- DC1-COD-L2-3440: Steps: EC Installation Checklist; CC Installation Checklist; Vendor Pre-Energization Checklist; CXA Pre-Energization Inspection; PEI/Clean-Walk
- DC1-COD-L2-3450: Steps: EC Installation Checklist; CC Installation Checklist; Vendor Pre-Energization Checklist; CXA Pre-Energization Inspection; PEI/Clean-Walk
- DC1-COD-L2-3460: Steps: EC Installation Checklist; CC Installation Checklist; Vendor Pre-Energization Checklist; CXA Pre-Energization Inspection; PEI/Clean-Walk
- DC1-COD-L2-3470: Steps: EC Installation Checklist; CC Installation Checklist; Vendor Pre-Energization Checklist; CXA Pre-Energization Inspection; PEI/Clean-Walk
- DC1-COD-L2-3480: Steps: EC Installation Checklist; CC Installation Checklist; Vendor Pre-Energization Checklist; CXA Pre-Energization Inspection; PEI/Clean-Walk
- DC1-COD-L2-3490: Steps: EC Installation Checklist; CC Installation Checklist; Vendor Pre-Energization Checklist; CXA Pre-Energization Inspection; PEI/Clean-Walk
- DC1-COD-L2-3500: Steps: EC Installation Checklist; CC Installation Checklist; Vendor Pre-Energization Checklist; CXA Pre-Energization Inspection; PEI/Clean-Walk
- DC1-COD-L2-3510: Steps: EC Installation Checklist; CC Installation Checklist; Vendor Pre-Energization Checklist; CXA Pre-Energization Inspection; PEI/Clean-Walk
- DC1-COD-L2-3530: Steps: EC Installation Checklist; CC Installation Checklist; Vendor Pre-Energization Checklist; CXA Pre-Energization Inspection; PEI/Clean-Walk
- DC1-COD-L2-3540: Steps: EC Installation Checklist; CC Installation Checklist; Vendor Pre-Energization Checklist; CXA Pre-Energization Inspection; PEI/Clean-Walk
- DC1-COD-L2-3550: Steps: EC Installation Checklist; CC Installation Checklist; Vendor Pre-Energization Checklist; CXA Pre-Energization Inspection; PEI/Clean-Walk
- DC1-COD-L2-3520: Steps: EC Installation Checklist; CC Installation Checklist; Vendor Pre-Energization Checklist; CXA Pre-Energization Inspection; PEI/Clean-Walk

| ID | WBS | Activity | Duration | Start | Finish | Predecessors | Total float | Free float | Layton Responsible Party | Vendor Responsible Party |
| --- | --- | --- | --- | --- | --- | --- | --- | --- | --- | --- |
|  | 03 | **DC1-DH1300 COD C13 Cx L2** |  | 2026-04-06 | 2026-04-08 |  |  |  |  |  |
| DC1-COD-L2-3560 |  | DH1300 COD-C13-01 L2 Checklist | 3d | 2026-04-06 | 2026-04-08 | QTS - 9420, QTS-9591 | 26d | 20d | Riley Warring | SIE |
| DC1-COD-L2-3570 |  | DH1300 COD-C13-02 L2 Checklist | 3d | 2026-04-06 | 2026-04-08 | QTS - 9420, QTS-9591 | 26d | 20d | Riley Warring | SIE |
| DC1-COD-L2-3580 |  | DH1300 COD-C13-03 L2 Checklist | 3d | 2026-04-06 | 2026-04-08 | QTS - 9420, QTS-9591 | 26d | 20d | Riley Warring | SIE |
| DC1-COD-L2-3590 |  | DH1300 COD-C13-04 L2 Checklist | 3d | 2026-04-06 | 2026-04-08 | QTS - 9420, QTS-9591 | 26d | 20d | Riley Warring | SIE |
| DC1-COD-L2-3600 |  | DH1300 COD-C13-05 L2 Checklist | 3d | 2026-04-06 | 2026-04-08 | QTS - 9420, QTS-9591 | 26d | 20d | Riley Warring | SIE |
| DC1-COD-L2-3610 |  | DH1300 COD-C13-06 L2 Checklist | 3d | 2026-04-06 | 2026-04-08 | QTS - 9420, QTS-9591 | 26d | 20d | Riley Warring | SIE |
|  | 04 | **DC1-DH1300 COD D13 Cx L2** |  | 2026-04-07 | 2026-04-09 |  |  |  |  |  |
| DC1-COD-L2-3620 |  | DH1300 COD-D13-01 L2 Checklist | 3d | 2026-04-07 | 2026-04-09 | QTS - 9420, QTS-9621 | 25d | 19d | Riley Warring | SIE |
| DC1-COD-L2-3630 |  | DH1300 COD-D13-02 L2 Checklist | 3d | 2026-04-07 | 2026-04-09 | QTS - 9420, QTS-9621 | 25d | 19d | Riley Warring | SIE |
| DC1-COD-L2-3640 |  | DH1300 COD-D13-03 L2 Checklist | 3d | 2026-04-07 | 2026-04-09 | QTS - 9420, QTS-9621 | 25d | 19d | Riley Warring | SIE |
| DC1-COD-L2-3650 |  | DH1300 COD-D13-04 L2 Checklist | 3d | 2026-04-07 | 2026-04-09 | QTS - 9420, QTS-9621 | 25d | 19d | Riley Warring | SIE |
| DC1-COD-L2-3660 |  | DH1300 COD-D13-05 L2 Checklist | 3d | 2026-04-07 | 2026-04-09 | QTS - 9420, QTS-9621 | 25d | 19d | Riley Warring | SIE |
| DC1-COD-L2-3670 |  | DH1300 COD-D13-06 L2 Checklist | 3d | 2026-04-07 | 2026-04-09 | QTS - 9420, QTS-9621 | 25d | 19d | Riley Warring | SIE |
|  | 05 | **DC1-DH1300 COD E13 Cx L2** |  | 2026-04-14 | 2026-04-16 |  |  |  |  |  |
| DC1-COD-L2-3680 |  | DH1300 COD-E13-01 L2 Checklist | 3d | 2026-04-14 | 2026-04-16 | QTS - 9650, QTS-9651 | 20d | 14d | Riley Warring | SIE |
| DC1-COD-L2-3690 |  | DH1300 COD-E13-02 L2 Checklist | 3d | 2026-04-14 | 2026-04-16 | QTS - 9650, QTS-9651 | 20d | 14d | Riley Warring | SIE |
| DC1-COD-L2-3700 |  | DH1300 COD-E13-03 L2 Checklist | 3d | 2026-04-14 | 2026-04-16 | QTS - 9650, QTS-9651 | 20d | 14d | Riley Warring | SIE |
| DC1-COD-L2-3710 |  | DH1300 COD-E13-04 L2 Checklist | 3d | 2026-04-14 | 2026-04-16 | QTS - 9650, QTS-9651 | 20d | 14d | Riley Warring | SIE |
| DC1-COD-L2-3720 |  | DH1300 COD-E13-05 L2 Checklist | 3d | 2026-04-14 | 2026-04-16 | QTS - 9650, QTS-9651 | 20d | 14d | Riley Warring | SIE |
| DC1-COD-L2-3730 |  | DH1300 COD-E13-06 L2 Checklist | 3d | 2026-04-14 | 2026-04-16 | QTS - 9650, QTS-9651 | 20d | 14d | Riley Warring | SIE |
|  | 06 | **DC1-DH1300 COD F13 Cx L2** |  | 2026-04-14 | 2026-04-16 |  |  |  |  |  |
| DC1-COD-L2-3740 |  | DH1300 COD-F13-01 L2 Checklist | 3d | 2026-04-14 | 2026-04-16 | QTS - 9650, QTS-9681 | 20d | 14d | Riley Warring | SIE |
| DC1-COD-L2-3750 |  | DH1300 COD-F13-02 L2 Checklist | 3d | 2026-04-14 | 2026-04-16 | QTS - 9650, QTS-9681 | 20d | 14d | Riley Warring | SIE |
| DC1-COD-L2-3760 |  | DH1300 COD-F13-03 L2 Checklist | 3d | 2026-04-14 | 2026-04-16 | QTS - 9650, QTS-9681 | 20d | 14d | Riley Warring | SIE |
| DC1-COD-L2-3770 |  | DH1300 COD-F13-04 L2 Checklist | 3d | 2026-04-14 | 2026-04-16 | QTS - 9650, QTS-9681 | 20d | 14d | Riley Warring | SIE |
| DC1-COD-L2-3780 |  | DH1300 COD-F13-05 L2 Checklist | 3d | 2026-04-14 | 2026-04-16 | QTS - 9650, QTS-9681 | 20d | 14d | Riley Warring | SIE |
| DC1-COD-L2-3790 |  | DH1300 COD-F13-06 L2 Checklist | 3d | 2026-04-14 | 2026-04-16 | QTS - 9650, QTS-9681 | 20d | 14d | Riley Warring | SIE |

Notes:
- DC1-COD-L2-3560: Steps: EC Installation Checklist; CC Installation Checklist; Vendor Pre-Energization Checklist; CXA Pre-Energization Inspection; PEI/Clean-Walk
- DC1-COD-L2-3570: Steps: EC Installation Checklist; CC Installation Checklist; Vendor Pre-Energization Checklist; CXA Pre-Energization Inspection; PEI/Clean-Walk
- DC1-COD-L2-3580: Steps: EC Installation Checklist; CC Installation Checklist; Vendor Pre-Energization Checklist; CXA Pre-Energization Inspection; PEI/Clean-Walk
- DC1-COD-L2-3590: Steps: EC Installation Checklist; CC Installation Checklist; Vendor Pre-Energization Checklist; CXA Pre-Energization Inspection; PEI/Clean-Walk
- DC1-COD-L2-3600: Steps: EC Installation Checklist; CC Installation Checklist; Vendor Pre-Energization Checklist; CXA Pre-Energization Inspection; PEI/Clean-Walk
- DC1-COD-L2-3610: Steps: EC Installation Checklist; CC Installation Checklist; Vendor Pre-Energization Checklist; CXA Pre-Energization Inspection; PEI/Clean-Walk
- DC1-COD-L2-3620: Steps: EC Installation Checklist; CC Installation Checklist; Vendor Pre-Energization Checklist; CXA Pre-Energization Inspection; PEI/Clean-Walk
- DC1-COD-L2-3630: Steps: EC Installation Checklist; CC Installation Checklist; Vendor Pre-Energization Checklist; CXA Pre-Energization Inspection; PEI/Clean-Walk
- DC1-COD-L2-3640: Steps: EC Installation Checklist; CC Installation Checklist; Vendor Pre-Energization Checklist; CXA Pre-Energization Inspection; PEI/Clean-Walk
- DC1-COD-L2-3650: Steps: EC Installation Checklist; CC Installation Checklist; Vendor Pre-Energization Checklist; CXA Pre-Energization Inspection; PEI/Clean-Walk
- DC1-COD-L2-3660: Steps: EC Installation Checklist; CC Installation Checklist; Vendor Pre-Energization Checklist; CXA Pre-Energization Inspection; PEI/Clean-Walk
- DC1-COD-L2-3670: Steps: EC Installation Checklist; CC Installation Checklist; Vendor Pre-Energization Checklist; CXA Pre-Energization Inspection; PEI/Clean-Walk
- DC1-COD-L2-3680: Steps: EC Installation Checklist; CC Installation Checklist; Vendor Pre-Energization Checklist; CXA Pre-Energization Inspection; PEI/Clean-Walk
- DC1-COD-L2-3690: Steps: EC Installation Checklist; CC Installation Checklist; Vendor Pre-Energization Checklist; CXA Pre-Energization Inspection; PEI/Clean-Walk
- DC1-COD-L2-3700: Steps: EC Installation Checklist; CC Installation Checklist; Vendor Pre-Energization Checklist; CXA Pre-Energization Inspection; PEI/Clean-Walk
- DC1-COD-L2-3710: Steps: EC Installation Checklist; CC Installation Checklist; Vendor Pre-Energization Checklist; CXA Pre-Energization Inspection; PEI/Clean-Walk
- DC1-COD-L2-3720: Steps: EC Installation Checklist; CC Installation Checklist; Vendor Pre-Energization Checklist; CXA Pre-Energization Inspection; PEI/Clean-Walk
- DC1-COD-L2-3730: Steps: EC Installation Checklist; CC Installation Checklist; Vendor Pre-Energization Checklist; CXA Pre-Energization Inspection; PEI/Clean-Walk
- DC1-COD-L2-3740: Steps: EC Installation Checklist; CC Installation Checklist; Vendor Pre-Energization Checklist; CXA Pre-Energization Inspection; PEI/Clean-Walk
- DC1-COD-L2-3750: Steps: EC Installation Checklist; CC Installation Checklist; Vendor Pre-Energization Checklist; CXA Pre-Energization Inspection; PEI/Clean-Walk
- DC1-COD-L2-3760: Steps: EC Installation Checklist; CC Installation Checklist; Vendor Pre-Energization Checklist; CXA Pre-Energization Inspection; PEI/Clean-Walk
- DC1-COD-L2-3770: Steps: EC Installation Checklist; CC Installation Checklist; Vendor Pre-Energization Checklist; CXA Pre-Energization Inspection; PEI/Clean-Walk
- DC1-COD-L2-3780: Steps: EC Installation Checklist; CC Installation Checklist; Vendor Pre-Energization Checklist; CXA Pre-Energization Inspection; PEI/Clean-Walk
- DC1-COD-L2-3790: Steps: EC Installation Checklist; CC Installation Checklist; Vendor Pre-Energization Checklist; CXA Pre-Energization Inspection; PEI/Clean-Walk

| ID | WBS | Activity | Duration | Start | Finish | Predecessors | Total float | Free float | Layton Responsible Party | Vendor Responsible Party |
| --- | --- | --- | --- | --- | --- | --- | --- | --- | --- | --- |
|  | 07 | **DC1-DH1300 RPPs Cx L2** |  | 2026-03-31 | 2026-04-09 |  |  |  |  |  |
|  | 01 | **DC1-DH1300 RPP A13 Cx L2** |  | 2026-03-31 | 2026-04-02 |  |  |  |  |  |
| DC1-RPP-L2-3440 |  | DH1300 RPP-A13-01 A/B L2 Checklist | 3d | 2026-03-31 | 2026-04-02 | QTS - 8960 | 31d | 5d | Riley Warring | SQD |
| DC1-RPP-L2-3450 |  | DH1300 RPP-A13-02 A/B L2 Checklist | 3d | 2026-03-31 | 2026-04-02 | QTS - 8960 | 31d | 5d | Riley Warring | SQD |
| DC1-RPP-L2-3460 |  | DH1300 RPP-A13-03 A/B L2 Checklist | 3d | 2026-03-31 | 2026-04-02 | QTS - 8960 | 31d | 5d | Riley Warring | SQD |
| DC1-RPP-L2-3470 |  | DH1300 RPP-A13-04 A/B L2 Checklist | 3d | 2026-03-31 | 2026-04-02 | QTS - 8960 | 31d | 5d | Riley Warring | SQD |
| DC1-RPP-L2-3480 |  | DH1300 RPP-A13-05 A/B L2 Checklist | 3d | 2026-03-31 | 2026-04-02 | QTS - 8960 | 31d | 5d | Riley Warring | SQD |
| DC1-RPP-L2-3490 |  | DH1300 RPP-A13-06 A/B L2 Checklist | 3d | 2026-03-31 | 2026-04-02 | QTS - 8960 | 31d | 5d | Riley Warring | SQD |
|  | 02 | **DC1-DH1300 RPP B13 Cx L2** |  | 2026-03-31 | 2026-04-02 |  |  |  |  |  |
| DC1-RPP-L2-3500 |  | DH1300 RPP-B13-01 A/B L2 Checklist | 3d | 2026-03-31 | 2026-04-02 | QTS - 8960 | 31d | 5d | Riley Warring | SQD |
| DC1-RPP-L2-3510 |  | DH1300 RPP-B13-02 A/B L2 Checklist | 3d | 2026-03-31 | 2026-04-02 | QTS - 8960 | 31d | 5d | Riley Warring | SQD |
| DC1-RPP-L2-3520 |  | DH1300 RPP-B13-03 A/B L2 Checklist | 3d | 2026-03-31 | 2026-04-02 | QTS - 8960 | 31d | 5d | Riley Warring | SQD |
| DC1-RPP-L2-3530 |  | DH1300 RPP-B13-04 A/B L2 Checklist | 3d | 2026-03-31 | 2026-04-02 | QTS - 8960 | 31d | 5d | Riley Warring | SQD |
| DC1-RPP-L2-3540 |  | DH1300 RPP-B13-05 A/B L2 Checklist | 3d | 2026-03-31 | 2026-04-02 | QTS - 8960 | 31d | 5d | Riley Warring | SQD |
| DC1-RPP-L2-3550 |  | DH1300 RPP-B13-06 A/B L2 Checklist | 3d | 2026-03-31 | 2026-04-02 | QTS - 8960 | 31d | 5d | Riley Warring | SQD |
|  | 03 | **DC1-DH1300 RPP C13 Cx L2** |  | 2026-04-03 | 2026-04-07 |  |  |  |  |  |
| DC1-RPP-L2-3560 |  | DH1300 RPP-C13-01 A/B L2 Checklist | 3d | 2026-04-03 | 2026-04-07 | QTS - 9420 | 28d | 2d | Riley Warring | SQD |
| DC1-RPP-L2-3570 |  | DH1300 RPP-C13-02 A/B L2 Checklist | 3d | 2026-04-03 | 2026-04-07 | QTS - 9420 | 28d | 2d | Riley Warring | SQD |
| DC1-RPP-L2-3580 |  | DH1300 RPP-C13-03 A/B L2 Checklist | 3d | 2026-04-03 | 2026-04-07 | QTS - 9420 | 28d | 2d | Riley Warring | SQD |
| DC1-RPP-L2-3590 |  | DH1300 RPP-C13-04 A/B L2 Checklist | 3d | 2026-04-03 | 2026-04-07 | QTS - 9420 | 28d | 2d | Riley Warring | SQD |
| DC1-RPP-L2-3600 |  | DH1300 RPP-C13-05 A/B L2 Checklist | 3d | 2026-04-03 | 2026-04-07 | QTS - 9420 | 28d | 2d | Riley Warring | SQD |
| DC1-RPP-L2-3610 |  | DH1300 RPP-C13-06 A/B L2 Checklist | 3d | 2026-04-03 | 2026-04-07 | QTS - 9420 | 28d | 2d | Riley Warring | SQD |
|  | 04 | **DC1-DH1300 RPP D13 Cx L2** |  | 2026-04-03 | 2026-04-07 |  |  |  |  |  |
| DC1-RPP-L2-3620 |  | DH1300 RPP-D13-01 A/B L2 Checklist | 3d | 2026-04-03 | 2026-04-07 | QTS - 9420 | 28d | 2d | Riley Warring | SQD |
| DC1-RPP-L2-3630 |  | DH1300 RPP-D13-02 A/B L2 Checklist | 3d | 2026-04-03 | 2026-04-07 | QTS - 9420 | 28d | 2d | Riley Warring | SQD |
| DC1-RPP-L2-3640 |  | DH1300 RPP-D13-03 A/B L2 Checklist | 3d | 2026-04-03 | 2026-04-07 | QTS - 9420 | 28d | 2d | Riley Warring | SQD |
| DC1-RPP-L2-3650 |  | DH1300 RPP-D13-04 A/B L2 Checklist | 3d | 2026-04-03 | 2026-04-07 | QTS - 9420 | 28d | 2d | Riley Warring | SQD |
| DC1-RPP-L2-3660 |  | DH1300 RPP-D13-05 A/B L2 Checklist | 3d | 2026-04-03 | 2026-04-07 | QTS - 9420 | 28d | 2d | Riley Warring | SQD |
| DC1-RPP-L2-3670 |  | DH1300 RPP-D13-06 A/B L2 Checklist | 3d | 2026-04-03 | 2026-04-07 | QTS - 9420 | 28d | 2d | Riley Warring | SQD |

Notes:
- DC1-RPP-L2-3440: Steps: EC Installation Checklist; CC Installation Checklist; Vendor Pre-Energization Checklist; CXA Pre-Energization Inspection; PEI/Clean-Walk
- DC1-RPP-L2-3450: Steps: EC Installation Checklist; CC Installation Checklist; Vendor Pre-Energization Checklist; CXA Pre-Energization Inspection; PEI/Clean-Walk
- DC1-RPP-L2-3460: Steps: EC Installation Checklist; CC Installation Checklist; Vendor Pre-Energization Checklist; CXA Pre-Energization Inspection; PEI/Clean-Walk
- DC1-RPP-L2-3470: Steps: EC Installation Checklist; CC Installation Checklist; Vendor Pre-Energization Checklist; CXA Pre-Energization Inspection; PEI/Clean-Walk
- DC1-RPP-L2-3480: Steps: EC Installation Checklist; CC Installation Checklist; Vendor Pre-Energization Checklist; CXA Pre-Energization Inspection; PEI/Clean-Walk
- DC1-RPP-L2-3490: Steps: EC Installation Checklist; CC Installation Checklist; Vendor Pre-Energization Checklist; CXA Pre-Energization Inspection; PEI/Clean-Walk
- DC1-RPP-L2-3500: Steps: EC Installation Checklist; CC Installation Checklist; Vendor Pre-Energization Checklist; CXA Pre-Energization Inspection; PEI/Clean-Walk
- DC1-RPP-L2-3510: Steps: EC Installation Checklist; CC Installation Checklist; Vendor Pre-Energization Checklist; CXA Pre-Energization Inspection; PEI/Clean-Walk
- DC1-RPP-L2-3520: Steps: EC Installation Checklist; CC Installation Checklist; Vendor Pre-Energization Checklist; CXA Pre-Energization Inspection; PEI/Clean-Walk
- DC1-RPP-L2-3530: Steps: EC Installation Checklist; CC Installation Checklist; Vendor Pre-Energization Checklist; CXA Pre-Energization Inspection; PEI/Clean-Walk
- DC1-RPP-L2-3540: Steps: EC Installation Checklist; CC Installation Checklist; Vendor Pre-Energization Checklist; CXA Pre-Energization Inspection; PEI/Clean-Walk
- DC1-RPP-L2-3550: Steps: EC Installation Checklist; CC Installation Checklist; Vendor Pre-Energization Checklist; CXA Pre-Energization Inspection; PEI/Clean-Walk
- DC1-RPP-L2-3560: Steps: EC Installation Checklist; CC Installation Checklist; Vendor Pre-Energization Checklist; CXA Pre-Energization Inspection; PEI/Clean-Walk
- DC1-RPP-L2-3570: Steps: EC Installation Checklist; CC Installation Checklist; Vendor Pre-Energization Checklist; CXA Pre-Energization Inspection; PEI/Clean-Walk
- DC1-RPP-L2-3580: Steps: EC Installation Checklist; CC Installation Checklist; Vendor Pre-Energization Checklist; CXA Pre-Energization Inspection; PEI/Clean-Walk
- DC1-RPP-L2-3590: Steps: EC Installation Checklist; CC Installation Checklist; Vendor Pre-Energization Checklist; CXA Pre-Energization Inspection; PEI/Clean-Walk
- DC1-RPP-L2-3600: Steps: EC Installation Checklist; CC Installation Checklist; Vendor Pre-Energization Checklist; CXA Pre-Energization Inspection; PEI/Clean-Walk
- DC1-RPP-L2-3610: Steps: EC Installation Checklist; CC Installation Checklist; Vendor Pre-Energization Checklist; CXA Pre-Energization Inspection; PEI/Clean-Walk
- DC1-RPP-L2-3620: Steps: EC Installation Checklist; CC Installation Checklist; Vendor Pre-Energization Checklist; CXA Pre-Energization Inspection; PEI/Clean-Walk
- DC1-RPP-L2-3630: Steps: EC Installation Checklist; CC Installation Checklist; Vendor Pre-Energization Checklist; CXA Pre-Energization Inspection; PEI/Clean-Walk
- DC1-RPP-L2-3640: Steps: EC Installation Checklist; CC Installation Checklist; Vendor Pre-Energization Checklist; CXA Pre-Energization Inspection; PEI/Clean-Walk
- DC1-RPP-L2-3650: Steps: EC Installation Checklist; CC Installation Checklist; Vendor Pre-Energization Checklist; CXA Pre-Energization Inspection; PEI/Clean-Walk
- DC1-RPP-L2-3660: Steps: EC Installation Checklist; CC Installation Checklist; Vendor Pre-Energization Checklist; CXA Pre-Energization Inspection; PEI/Clean-Walk
- DC1-RPP-L2-3670: Steps: EC Installation Checklist; CC Installation Checklist; Vendor Pre-Energization Checklist; CXA Pre-Energization Inspection; PEI/Clean-Walk

| ID | WBS | Activity | Duration | Start | Finish | Predecessors | Total float | Free float | Layton Responsible Party | Vendor Responsible Party |
| --- | --- | --- | --- | --- | --- | --- | --- | --- | --- | --- |
|  | 05 | **DC1-DH1300 RPP E13 Cx L2** |  | 2026-04-07 | 2026-04-09 |  |  |  |  |  |
| DC1-RPP-L2-3680 |  | DH1300 RPP-E13-01 A/B L2 Checklist | 3d | 2026-04-07 | 2026-04-09 | QTS - 9650 | 26d | 0d | Riley Warring | SQD |
| DC1-RPP-L2-3690 |  | DH1300 RPP-E13-02 A/B L2 Checklist | 3d | 2026-04-07 | 2026-04-09 | QTS - 9650 | 26d | 0d | Riley Warring | SQD |
| DC1-RPP-L2-3700 |  | DH1300 RPP-E13-03 A/B L2 Checklist | 3d | 2026-04-07 | 2026-04-09 | QTS - 9650 | 26d | 0d | Riley Warring | SQD |
| DC1-RPP-L2-3710 |  | DH1300 RPP-E13-04 A/B L2 Checklist | 3d | 2026-04-07 | 2026-04-09 | QTS - 9650 | 26d | 0d | Riley Warring | SQD |
| DC1-RPP-L2-3720 |  | DH1300 RPP-E13-05 A/B L2 Checklist | 3d | 2026-04-07 | 2026-04-09 | QTS - 9650 | 26d | 0d | Riley Warring | SQD |
| DC1-RPP-L2-3730 |  | DH1300 RPP-E13-06 A/B L2 Checklist | 3d | 2026-04-07 | 2026-04-09 | QTS - 9650 | 26d | 0d | Riley Warring | SQD |
|  | 06 | **DC1-DH1300 RPP F13 Cx L2** |  | 2026-04-07 | 2026-04-09 |  |  |  |  |  |
| DC1-RPP-L2-3740 |  | DH1300 RPP-F13-01 A/B L2 Checklist | 3d | 2026-04-07 | 2026-04-09 | QTS - 9650 | 26d | 0d | Riley Warring | SQD |
| DC1-RPP-L2-3750 |  | DH1300 RPP-F13-02 A/B L2 Checklist | 3d | 2026-04-07 | 2026-04-09 | QTS - 9650 | 26d | 0d | Riley Warring | SQD |
| DC1-RPP-L2-3760 |  | DH1300 RPP-F13-03 A/B L2 Checklist | 3d | 2026-04-07 | 2026-04-09 | QTS - 9650 | 26d | 0d | Riley Warring | SQD |
| DC1-RPP-L2-3770 |  | DH1300 RPP-F13-04 A/B L2 Checklist | 3d | 2026-04-07 | 2026-04-09 | QTS - 9650 | 26d | 0d | Riley Warring | SQD |
| DC1-RPP-L2-3780 |  | DH1300 RPP-F13-05 A/B L2 Checklist | 3d | 2026-04-07 | 2026-04-09 | QTS - 9650 | 26d | 0d | Riley Warring | SQD |
| DC1-RPP-L2-3790 |  | DH1300 RPP-F13-06 A/B L2 Checklist | 3d | 2026-04-07 | 2026-04-09 | QTS - 9650 | 26d | 0d | Riley Warring | SQD |
|  | 08 | **DC1-DH1300 MOD-02 Cx L2** |  | 2026-04-02 | 2026-04-30 |  |  |  |  |  |
| DC1-MOD02-L2-2280 |  | DH1300 MOD-A13-02 L2 Checklist | 3d | 2026-04-02 | 2026-04-06 | QTS-43831, QTS-44561, QTS-18021, QTS-18551, QTS-16131 | 31d | 0d |  | PHE |
| DC1-MOD02-L2-2290 |  | DH1300 MOD-B13-02 L2 Checklist | 3d | 2026-04-07 | 2026-04-09 | DC1-MOD02-L2-2280, QTS-44561, QTS-18021, QTS-18551, QTS-16131 | 31d | 0d |  | PHE |
| DC1-MOD02-L2-2300 |  | DH1300 MOD-C13-02 L2 Checklist | 3d | 2026-04-10 | 2026-04-14 | DC1-MOD02-L2-2290, QTS-44561, QTS-18021, QTS-18551, QTS-16131 | 31d | 0d |  | PHE |
| DC1-MOD02-L2-2310 |  | DH1300 MOD-D13-02 L2 Checklist | 3d | 2026-04-15 | 2026-04-17 | DC1-MOD02-L2-2300, QTS-44561, QTS-18021, QTS-18551, QTS-16131 | 31d | 0d |  | PHE |
| DC1-MOD02-L2-2320 |  | DH1300 MOD-E13-02 L2 Checklist | 3d | 2026-04-20 | 2026-04-22 | DC1-MOD02-L2-2310, QTS-44561, QTS-18021, QTS-18551, QTS-16131 | 31d | 0d |  | PHE |
| DC1-MOD02-L2-2330 |  | DH1300 MOD-F13-02 L2 Checklist | 3d | 2026-04-23 | 2026-04-27 | DC1-MOD02-L2-2320, QTS-44561, QTS-18021, QTS-18551, QTS-16131 | 31d | 0d |  | PHE |
| DC1-MOD02-L2-2340 |  | DH1300 MOD-R13-02 L2 Checklist | 3d | 2026-04-28 | 2026-04-30 | DC1-MOD02-L2-2330, QTS-44561, QTS-18021, QTS-18551, QTS-16131 | 31d | 2d |  | PHE |
|  | 09 | **DC1-DH1300 MOD-03 Cx L2** |  | 2026-04-02 | 2026-04-30 |  |  |  |  |  |
| DC1-MOD03-L2-2280 |  | DH1300 MOD-A13-03 L2 Checklist | 3d | 2026-04-02 | 2026-04-06 | QTS-43831, QTS-44561, QTS-18021, QTS-18551, QTS-16131 | 36d | 0d |  | PHE |
| DC1-MOD03-L2-2290 |  | DH1300 MOD-B13-03 L2 Checklist | 3d | 2026-04-07 | 2026-04-09 | DC1-MOD03-L2-2280, QTS-44561, QTS-18021, QTS-18551, QTS-16131 | 36d | 0d |  | PHE |
| DC1-MOD03-L2-2300 |  | DH1300 MOD-C13-03 L2 Checklist | 3d | 2026-04-10 | 2026-04-14 | DC1-MOD03-L2-2290, QTS-44561, QTS-18021, QTS-18551, QTS-16131 | 36d | 0d |  | PHE |
| DC1-MOD03-L2-2310 |  | DH1300 MOD-D13-03 L2 Checklist | 3d | 2026-04-15 | 2026-04-17 | DC1-MOD03-L2-2300, QTS-44561, QTS-18021, QTS-18551, QTS-16131 | 36d | 0d |  | PHE |
| DC1-MOD03-L2-2320 |  | DH1300 MOD-E13-03 L2 Checklist | 3d | 2026-04-20 | 2026-04-22 | DC1-MOD03-L2-2310, QTS-44561, QTS-18021, QTS-18551, QTS-16131 | 36d | 0d |  | PHE |
| DC1-MOD03-L2-2330 |  | DH1300 MOD-F13-03 L2 Checklist | 3d | 2026-04-23 | 2026-04-27 | DC1-MOD03-L2-2320, QTS-44561, QTS-18021, QTS-18551, QTS-16131 | 36d | 0d |  | PHE |
| DC1-MOD03-L2-2340 |  | DH1300 MOD-R13-03 L2 Checklist | 3d | 2026-04-28 | 2026-04-30 | DC1-MOD03-L2-2330, QTS-44561, QTS-18021, QTS-18551, QTS-16131 | 36d | 11d |  | PHE |

Notes:
- DC1-RPP-L2-3680: Steps: EC Installation Checklist; CC Installation Checklist; Vendor Pre-Energization Checklist; CXA Pre-Energization Inspection; PEI/Clean-Walk
- DC1-RPP-L2-3690: Steps: EC Installation Checklist; CC Installation Checklist; Vendor Pre-Energization Checklist; CXA Pre-Energization Inspection; PEI/Clean-Walk
- DC1-RPP-L2-3700: Steps: EC Installation Checklist; CC Installation Checklist; Vendor Pre-Energization Checklist; CXA Pre-Energization Inspection; PEI/Clean-Walk
- DC1-RPP-L2-3710: Steps: EC Installation Checklist; CC Installation Checklist; Vendor Pre-Energization Checklist; CXA Pre-Energization Inspection; PEI/Clean-Walk
- DC1-RPP-L2-3720: Steps: EC Installation Checklist; CC Installation Checklist; Vendor Pre-Energization Checklist; CXA Pre-Energization Inspection; PEI/Clean-Walk
- DC1-RPP-L2-3730: Steps: EC Installation Checklist; CC Installation Checklist; Vendor Pre-Energization Checklist; CXA Pre-Energization Inspection; PEI/Clean-Walk
- DC1-RPP-L2-3740: Steps: EC Installation Checklist; CC Installation Checklist; Vendor Pre-Energization Checklist; CXA Pre-Energization Inspection; PEI/Clean-Walk
- DC1-RPP-L2-3750: Steps: EC Installation Checklist; CC Installation Checklist; Vendor Pre-Energization Checklist; CXA Pre-Energization Inspection; PEI/Clean-Walk
- DC1-RPP-L2-3760: Steps: EC Installation Checklist; CC Installation Checklist; Vendor Pre-Energization Checklist; CXA Pre-Energization Inspection; PEI/Clean-Walk
- DC1-RPP-L2-3770: Steps: EC Installation Checklist; CC Installation Checklist; Vendor Pre-Energization Checklist; CXA Pre-Energization Inspection; PEI/Clean-Walk
- DC1-RPP-L2-3780: Steps: EC Installation Checklist; CC Installation Checklist; Vendor Pre-Energization Checklist; CXA Pre-Energization Inspection; PEI/Clean-Walk
- DC1-RPP-L2-3790: Steps: EC Installation Checklist; CC Installation Checklist; Vendor Pre-Energization Checklist; CXA Pre-Energization Inspection; PEI/Clean-Walk
- DC1-MOD02-L2-2280: Steps: EC Installation Checklist; CC Installation Checklist; Vendor Pre-Energization Checklist; CXA Pre-Energization Inspection; PEI/Clean-Walk
- DC1-MOD02-L2-2290: Steps: EC Installation Checklist; CC Installation Checklist; Vendor Pre-Energization Checklist; CXA Pre-Energization Inspection; PEI/Clean-Walk
- DC1-MOD02-L2-2300: Steps: EC Installation Checklist; CC Installation Checklist; Vendor Pre-Energization Checklist; CXA Pre-Energization Inspection; PEI/Clean-Walk
- DC1-MOD02-L2-2310: Steps: EC Installation Checklist; CC Installation Checklist; Vendor Pre-Energization Checklist; CXA Pre-Energization Inspection; PEI/Clean-Walk
- DC1-MOD02-L2-2320: Steps: EC Installation Checklist; CC Installation Checklist; Vendor Pre-Energization Checklist; CXA Pre-Energization Inspection; PEI/Clean-Walk
- DC1-MOD02-L2-2330: Steps: EC Installation Checklist; CC Installation Checklist; Vendor Pre-Energization Checklist; CXA Pre-Energization Inspection; PEI/Clean-Walk
- DC1-MOD02-L2-2340: Steps: EC Installation Checklist; CC Installation Checklist; Vendor Pre-Energization Checklist; CXA Pre-Energization Inspection; PEI/Clean-Walk
- DC1-MOD03-L2-2280: Steps: EC Installation Checklist; CC Installation Checklist; Vendor Pre-Energization Checklist; CXA Pre-Energization Inspection; PEI/Clean-Walk
- DC1-MOD03-L2-2290: Steps: EC Installation Checklist; CC Installation Checklist; Vendor Pre-Energization Checklist; CXA Pre-Energization Inspection; PEI/Clean-Walk
- DC1-MOD03-L2-2300: Steps: EC Installation Checklist; CC Installation Checklist; Vendor Pre-Energization Checklist; CXA Pre-Energization Inspection; PEI/Clean-Walk
- DC1-MOD03-L2-2310: Steps: EC Installation Checklist; CC Installation Checklist; Vendor Pre-Energization Checklist; CXA Pre-Energization Inspection; PEI/Clean-Walk
- DC1-MOD03-L2-2320: Steps: EC Installation Checklist; CC Installation Checklist; Vendor Pre-Energization Checklist; CXA Pre-Energization Inspection; PEI/Clean-Walk
- DC1-MOD03-L2-2330: Steps: EC Installation Checklist; CC Installation Checklist; Vendor Pre-Energization Checklist; CXA Pre-Energization Inspection; PEI/Clean-Walk
- DC1-MOD03-L2-2340: Steps: EC Installation Checklist; CC Installation Checklist; Vendor Pre-Energization Checklist; CXA Pre-Energization Inspection; PEI/Clean-Walk

| ID | WBS | Activity | Duration | Start | Finish | Predecessors | Total float | Free float | Layton Responsible Party | Vendor Responsible Party |
| --- | --- | --- | --- | --- | --- | --- | --- | --- | --- | --- |
|  | 10 | **DC1-DH1300 CDUs Cx L2** |  | 2026-05-07 | 2026-06-03 |  |  |  |  |  |
| DC1-CDU-L2-3990 |  | CDU-DH1300-01 L2 Checklist | 3d | 2026-05-07 | 2026-05-11 | QTS - 9010, QTS - 10110 | 51d | 0d | Riley Warring | VER |
| DC1-CDU-L2-4000 |  | CDU-DH1300-02 L2 Checklist | 3d | 2026-05-07 | 2026-05-11 | QTS - 9010, QTS - 10110 | 51d | 0d | Riley Warring | VER |
| DC1-CDU-L2-4010 |  | CDU-DH1300-03 L2 Checklist | 3d | 2026-05-07 | 2026-05-11 | QTS - 9010, QTS - 10110 | 51d | 0d | Riley Warring | VER |
| DC1-CDU-L2-4080 |  | CDU-DH1300-10 L2 Checklist | 3d | 2026-05-13 | 2026-05-15 | QTS - 9800, QTS - 9980 | 47d | 0d |  | VER |
| DC1-CDU-L2-4090 |  | CDU-DH1300-11 L2 Checklist | 3d | 2026-05-13 | 2026-05-15 | QTS - 9800, QTS - 9980 | 47d | 0d |  | VER |
| DC1-CDU-L2-4100 |  | CDU-DH1300-12 L2 Checklist | 3d | 2026-05-13 | 2026-05-15 | QTS - 9800, QTS - 9980 | 47d | 0d |  | VER |
| DC1-CDU-L2-4020 |  | CDU-DH1300-04 L2 Checklist | 3d | 2026-05-15 | 2026-05-19 | QTS - 10130, QTS - 9010 | 45d | 0d | Riley Warring | VER |
| DC1-CDU-L2-4030 |  | CDU-DH1300-05 L2 Checklist | 3d | 2026-05-15 | 2026-05-19 | QTS - 10130, QTS - 9010 | 45d | 0d | Riley Warring | VER |
| DC1-CDU-L2-4040 |  | CDU-DH1300-06 L2 Checklist | 3d | 2026-05-15 | 2026-05-19 | QTS - 10130, QTS - 9010 | 45d | 0d | Riley Warring | VER |
| DC1-CDU-L2-4110 |  | CDU-DH1300-13 L2 Checklist | 3d | 2026-05-21 | 2026-05-26 | QTS - 10000, QTS - 9800 | 41d | 0d |  | VER |
| DC1-CDU-L2-4120 |  | CDU-DH1300-14 L2 Checklist | 3d | 2026-05-21 | 2026-05-26 | QTS - 10000, QTS - 9800 | 41d | 0d |  | VER |
| DC1-CDU-L2-4130 |  | CDU-DH1300-15 L2 Checklist | 3d | 2026-05-21 | 2026-05-26 | QTS - 10000, QTS - 9800 | 41d | 0d |  | VER |
| DC1-CDU-L2-4050 |  | CDU-DH1300-07 L2 Checklist | 3d | 2026-05-26 | 2026-05-28 | QTS - 9010, QTS - 10150 | 39d | 0d | Riley Warring | VER |
| DC1-CDU-L2-4060 |  | CDU-DH1300-08 L2 Checklist | 3d | 2026-05-26 | 2026-05-28 | QTS - 9010, QTS - 10150 | 39d | 0d | Riley Warring | VER |
| DC1-CDU-L2-4070 |  | CDU-DH1300-09 L2 Checklist | 3d | 2026-05-26 | 2026-05-28 | QTS - 9010, QTS - 10150 | 39d | 0d | Riley Warring | VER |
| DC1-CDU-L2-4140 |  | CDU-DH1300-16 L2 Checklist | 3d | 2026-06-01 | 2026-06-03 | QTS - 9800, QTS - 10010 | 35d | 0d |  | VER |
| DC1-CDU-L2-4150 |  | CDU-DH1300-17 L2 Checklist | 3d | 2026-06-01 | 2026-06-03 | QTS - 9800, QTS - 10010 | 35d | 0d |  | VER |
| DC1-CDU-L2-4160 |  | CDU-DH1300-18 L2 Checklist | 3d | 2026-06-01 | 2026-06-03 | QTS - 9800, QTS - 10010 | 35d | 0d |  | VER |
|  | 11 | **DC1-DH1300 CHLR Cx L2** |  | 2026-03-09 | 2026-04-01 |  |  |  |  |  |
| DC1-CHLR-L2-1280 |  | DH1300 CHLR-1RT40-A13 L2 Checklist | 3d | 2026-03-09 | 2026-03-11 | QTS-18701 | 34d | 0d |  | TAS |
| DC1-CHLR-L2-1290 |  | DH1300 CHLR-1RT40-B13 L2 Checklist | 3d | 2026-03-12 | 2026-03-16 | DC1-CHLR-L2-1280 | 34d | 0d |  | TAS |
| DC1-CHLR-L2-1300 |  | DH1300 CHLR-1RT40-C13 L2 Checklist | 3d | 2026-03-17 | 2026-03-19 | DC1-CHLR-L2-1290 | 34d | 31d |  | TAS |
| DC1-CHLR-L2-1310 |  | DH1300 CHLR-1RT40-D13 L2 Checklist | 3d | 2026-03-17 | 2026-03-19 | QTS-43871 | 25d | 0d | Riley Warring | TAS |
| DC1-CHLR-L2-1320 |  | DH1300 CHLR-1RT40-E13 L2 Checklist | 3d | 2026-03-20 | 2026-03-24 | DC1-CHLR-L2-1310 | 25d | 0d | Riley Warring | TAS |
| DC1-CHLR-L2-1330 |  | DH1300 CHLR-1RT40-F13 L2 Checklist | 3d | 2026-03-25 | 2026-03-27 | DC1-CHLR-L2-1320 | 25d | 0d | Riley Warring | TAS |
| DC1-CHLR-L2-1340 |  | DH1300 CHLR-1RT40-R13 L2 Checklist | 3d | 2026-03-30 | 2026-04-01 | DC1-CHLR-L2-1330 | 25d | 22d | Riley Warring | TAS |

Notes:
- DC1-CDU-L2-3990: Steps: EC Installation Checklist; MC Installation Checklist; CC Installation Checklist; Vendor Pre-Energization Checklist; CXA Pre-Energization Inspection; PEI/Clean-Walk
- DC1-CDU-L2-4000: Steps: EC Installation Checklist; MC Installation Checklist; CC Installation Checklist; Vendor Pre-Energization Checklist; CXA Pre-Energization Inspection; PEI/Clean-Walk
- DC1-CDU-L2-4010: Steps: EC Installation Checklist; CC Installation Checklist; MC Installation Checklist; Vendor Pre-Energization Checklist; CXA Pre-Energization Inspection; PEI/Clean-Walk
- DC1-CDU-L2-4080: Steps: EC Installation Checklist; MC Installation Checklist; CC Installation Checklist; Vendor Pre-Energization Checklist; CXA Pre-Energization Inspection; PEI/Clean-Walk
- DC1-CDU-L2-4090: Steps: EC Installation Checklist; MC Installation Checklist; CC Installation Checklist; Vendor Pre-Energization Checklist; CXA Pre-Energization Inspection; PEI/Clean-Walk
- DC1-CDU-L2-4100: Steps: EC Installation Checklist; MC Installation Checklist; CC Installation Checklist; Vendor Pre-Energization Checklist; CXA Pre-Energization Inspection; PEI/Clean-Walk
- DC1-CDU-L2-4020: Steps: EC Installation Checklist; MC Installation Checklist; CC Installation Checklist; Vendor Pre-Energization Checklist; CXA Pre-Energization Inspection; PEI/Clean-Walk
- DC1-CDU-L2-4030: Steps: EC Installation Checklist; MC Installation Checklist; CC Installation Checklist; Vendor Pre-Energization Checklist; CXA Pre-Energization Inspection; PEI/Clean-Walk
- DC1-CDU-L2-4040: Steps: EC Installation Checklist; MC Installation Checklist; CC Installation Checklist; Vendor Pre-Energization Checklist; CXA Pre-Energization Inspection; PEI/Clean-Walk
- DC1-CDU-L2-4110: Steps: EC Installation Checklist; MC Installation Checklist; CC Installation Checklist; Vendor Pre-Energization Checklist; CXA Pre-Energization Inspection; PEI/Clean-Walk
- DC1-CDU-L2-4120: Steps: EC Installation Checklist; MC Installation Checklist; CC Installation Checklist; Vendor Pre-Energization Checklist; CXA Pre-Energization Inspection; PEI/Clean-Walk
- DC1-CDU-L2-4130: Steps: EC Installation Checklist; MC Installation Checklist; CC Installation Checklist; Vendor Pre-Energization Checklist; CXA Pre-Energization Inspection; PEI/Clean-Walk
- DC1-CDU-L2-4050: Steps: EC Installation Checklist; MC Installation Checklist; CC Installation Checklist; Vendor Pre-Energization Checklist; CXA Pre-Energization Inspection; PEI/Clean-Walk
- DC1-CDU-L2-4060: Steps: EC Installation Checklist; MC Installation Checklist; CC Installation Checklist; Vendor Pre-Energization Checklist; CXA Pre-Energization Inspection; PEI/Clean-Walk
- DC1-CDU-L2-4070: Steps: EC Installation Checklist; MC Installation Checklist; CC Installation Checklist; Vendor Pre-Energization Checklist; CXA Pre-Energization Inspection; PEI/Clean-Walk
- DC1-CDU-L2-4140: Steps: EC Installation Checklist; MC Installation Checklist; CC Installation Checklist; Vendor Pre-Energization Checklist; CXA Pre-Energization Inspection; PEI/Clean-Walk
- DC1-CDU-L2-4150: Steps: EC Installation Checklist; MC Installation Checklist; CC Installation Checklist; Vendor Pre-Energization Checklist; CXA Pre-Energization Inspection; PEI/Clean-Walk
- DC1-CDU-L2-4160: Steps: EC Installation Checklist; MC Installation Checklist; CC Installation Checklist; Vendor Pre-Energization Checklist; CXA Pre-Energization Inspection; PEI/Clean-Walk
- DC1-CHLR-L2-1280: Steps: EC Installation Checklist; MC Installation Checklist; CC Installation Checklist; Vendor Pre-Energization Checklist; CXA Pre-Energization Inspection; PEI/Clean-Walk
- DC1-CHLR-L2-1290: Steps: EC Installation Checklist; MC Installation Checklist; CC Installation Checklist; Vendor Pre-Energization Checklist; CXA Pre-Energization Inspection; PEI/Clean-Walk
- DC1-CHLR-L2-1300: Steps: EC Installation Checklist; MC Installation Checklist; CC Installation Checklist; Vendor Pre-Energization Checklist; CXA Pre-Energization Inspection; PEI/Clean-Walk
- DC1-CHLR-L2-1310: Steps: EC Installation Checklist; MC Installation Checklist; CC Installation Checklist; Vendor Pre-Energization Checklist; CXA Pre-Energization Inspection; PEI/Clean-Walk
- DC1-CHLR-L2-1320: Steps: EC Installation Checklist; MC Installation Checklist; CC Installation Checklist; Vendor Pre-Energization Checklist; CXA Pre-Energization Inspection; PEI/Clean-Walk
- DC1-CHLR-L2-1330: Steps: EC Installation Checklist; MC Installation Checklist; CC Installation Checklist; Vendor Pre-Energization Checklist; CXA Pre-Energization Inspection; PEI/Clean-Walk
- DC1-CHLR-L2-1340: Steps: EC Installation Checklist; MC Installation Checklist; CC Installation Checklist; Vendor Pre-Energization Checklist; CXA Pre-Energization Inspection; PEI/Clean-Walk

| ID | WBS | Activity | Duration | Start | Finish | Predecessors | Total float | Free float | Notes | Vendor Responsible Party |
| --- | --- | --- | --- | --- | --- | --- | --- | --- | --- | --- |
|  | 12 | **DC1-DH1300 CHWP Cx L2** |  | 2026-03-10 | 2026-04-07 |  |  |  |  |  |
| DC1-CHWP-L2-Cx-2280 |  | DH1300 CHWP-1RT40-A13 L2 Checklist | 3d | 2026-03-10 | 2026-03-12 | QTS-18991 | 28d | 0d | CFCI | LAY |
| DC1-CHWP-L2-Cx-2290 |  | DH1300 CHWP-1RT40-B13 L2 Checklist | 3d | 2026-03-13 | 2026-03-17 | DC1-CHWP-L2-Cx-2280 | 28d | 0d | CFCI | LAY |
| DC1-CHWP-L2-Cx-2300 |  | DH1300 CHWP-1RT40-C13 L2 Checklist | 3d | 2026-03-18 | 2026-03-20 | DC1-CHWP-L2-Cx-2290 | 28d | 0d | CFCI | LAY |
| DC1-CHWP-L2-Cx-2310 |  | DH1300 CHWP-1RT40-D13 L2 Checklist | 3d | 2026-03-23 | 2026-03-25 | DC1-CHWP-L2-Cx-2300 | 28d | 0d | CFCI | LAY |
| DC1-CHWP-L2-Cx-2320 |  | DH1300 CHWP-1RT40-E13 L2 Checklist | 3d | 2026-03-26 | 2026-03-30 | DC1-CHWP-L2-Cx-2310 | 28d | 0d | CFCI | LAY |
| DC1-CHWP-L2-Cx-2330 |  | DH1300 CHWP-1RT40-F13 L2 Checklist | 3d | 2026-03-31 | 2026-04-02 | DC1-CHWP-L2-Cx-2320 | 28d | 0d | CFCI | LAY |
| DC1-CHWP-L2-Cx-2340 |  | DH1300 CHWP-1RT40-R13 L2 Checklist | 3d | 2026-04-03 | 2026-04-07 | DC1-CHWP-L2-Cx-2330 | 28d | 27d | CFCI | LAY |
|  | 13 | **DC1-DH1300 CRAH/DOAS Cx L2** |  | 2026-04-06 | 2026-04-13 |  |  |  |  |  |
| DC1-CRAH-L2-3280 |  | DH1300 CRAH-DH-01 L2 Checklist | 3d | 2026-04-06 | 2026-04-08 | QTS-46761, QTS-46771 | 47d | 18d |  | UMAS |
| DC1-CRAH-L2-3290 |  | DH1300 CRAH-DH-02 L2 Checklist | 3d | 2026-04-06 | 2026-04-08 | QTS-46771 | 47d | 18d |  | UMAS |
| DC1-CRAH-L2-3300 |  | DH1300 CRAH-DH-03 L2 Checklist | 3d | 2026-04-06 | 2026-04-08 | QTS-46771 | 47d | 18d |  | UMAS |
| DC1-CRAH-L2-3310 |  | DH1300 CRAH-DH-04 L2 Checklist | 3d | 2026-04-06 | 2026-04-08 | QTS-46771 | 47d | 18d |  | UMAS |
| DC1-CRAH-L2-3320 |  | DH1300 CRAH-DH-05 L2 Checklist | 3d | 2026-04-06 | 2026-04-08 | QTS-46771 | 47d | 18d |  | UMAS |
| DC1-CRAH-L2-3330 |  | DH1300 CRAH-DH-06 L2 Checklist | 3d | 2026-04-06 | 2026-04-08 | QTS-46771 | 47d | 18d |  | UMAS |
| DC1-CRAH-L2-3340 |  | DH1300 CRAH-DH-07 L2 Checklist | 3d | 2026-04-06 | 2026-04-08 | QTS-46771 | 47d | 18d |  | UMAS |
| DC1-CRAH-L2-3350 |  | DH1300 CRAH-DH-08 L2 Checklist | 3d | 2026-04-06 | 2026-04-08 | QTS-46771 | 47d | 18d |  | UMAS |
| DC1-CRAH-L2-3360 |  | DH1300 CRAH-DH-09 L2 Checklist | 3d | 2026-04-06 | 2026-04-08 | QTS-46771 | 47d | 18d |  | UMAS |
| DC1-CRAH-L2-3370 |  | DH1300 CRAH-DH-10 L2 Checklist | 3d | 2026-04-06 | 2026-04-08 | QTS-46771 | 47d | 18d |  | UMAS |
| DC1-CRAH-L2-3380 |  | DH1300 CRAH-DH-11 L2 Checklist | 3d | 2026-04-06 | 2026-04-08 | QTS-46771 | 47d | 18d |  | UMAS |
| DC1-CRAH-L2-3390 |  | DH1300 CRAH-DH-12 L2 Checklist | 3d | 2026-04-06 | 2026-04-08 | QTS-46771 | 47d | 18d |  | UMAS |
| DC1-CRAH-L2-3400 |  | DH1300 CRAH-DH-13 L2 Checklist | 3d | 2026-04-06 | 2026-04-08 | QTS-46771 | 47d | 18d |  | UMAS |
| DC1-CRAH-L2-3410 |  | DH1300 CRAH-DH-14 L2 Checklist | 3d | 2026-04-06 | 2026-04-08 | QTS-46771 | 47d | 18d |  | UMAS |
| DC1-CRAH-L2-3420 |  | DH1300 CRAH-DH-15 L2 Checklist | 3d | 2026-04-06 | 2026-04-08 | QTS-46771, QTS-16431, QTS-16441 | 47d | 18d |  | UMAS |
| DC1-CRAH-L2-3430 |  | DH1300 CRAH-DH-16 L2 Checklist | 3d | 2026-04-06 | 2026-04-08 | QTS-46771, QTS-16431, QTS-16441 | 47d | 18d |  | UMAS |
| DC1-CRAH-L2-3440 |  | DH1300 CRAH-DH-17 L2 Checklist | 3d | 2026-04-06 | 2026-04-08 | QTS-46771, QTS-16431, QTS-16441 | 47d | 18d |  | UMAS |
| DC1-CRAH-L2-3450 |  | DH1300 CRAH-DH-18 L2 Checklist | 3d | 2026-04-06 | 2026-04-08 | QTS-46771, QTS-16431, QTS-16441 | 47d | 18d |  | UMAS |
| DC1-CRAH-L2-3460 |  | DH1300 CRAH-DH-19 L2 Checklist | 3d | 2026-04-06 | 2026-04-08 | QTS-46771, QTS-16431, QTS-16441 | 47d | 18d |  | UMAS |
| DC1-CRAH-L2-3470 |  | DH1300 CRAH-DH-20 L2 Checklist | 3d | 2026-04-06 | 2026-04-08 | QTS-46771, QTS-16431, QTS-16441 | 47d | 18d |  | UMAS |
| DC1-CRAH-L2-3480 |  | DH1300 CRAH-DH-21 L2 Checklist | 3d | 2026-04-06 | 2026-04-08 | QTS-46771, QTS-16431, QTS-16441 | 47d | 18d |  | UMAS |
| DC1-CRAH-L2-3490 |  | DH1300 CRAH-DH-22 L2 Checklist | 3d | 2026-04-06 | 2026-04-08 | QTS-46771, QTS-16431, QTS-16441 | 47d | 18d |  | UMAS |
| DC1-CRAH-L2-3500 |  | DH1300 CRAH-DH-23 L2 Checklist | 3d | 2026-04-06 | 2026-04-08 | QTS-46771, QTS-16431, QTS-16441 | 47d | 18d |  | UMAS |
| DC1-CRAH-L2-3510 |  | DH1300 CRAH-DH-24 L2 Checklist | 3d | 2026-04-06 | 2026-04-08 | QTS-46771, QTS-16431, QTS-16441 | 47d | 18d |  | UMAS |
| DC1-CRAH-L2-3520 |  | DH1300 CRAH-DH-25 L2 Checklist | 3d | 2026-04-06 | 2026-04-08 | QTS-46771, QTS-16431, QTS-16441 | 47d | 18d |  | UMAS |
| DC1-CRAH-L2-3530 |  | DH1300 CRAH-DH-26 L2 Checklist | 3d | 2026-04-06 | 2026-04-08 | QTS-46771, QTS-16431, QTS-16441 | 47d | 18d |  | UMAS |
| DC1-CRAH-L2-3540 |  | DH1300 CRAH-DH-27 L2 Checklist | 3d | 2026-04-06 | 2026-04-08 | QTS-46771, QTS-16431, QTS-16441 | 47d | 18d |  | UMAS |
| DC1-CRAH-L2-3550 |  | DH1300 CRAH-DH-28 L2 Checklist | 3d | 2026-04-06 | 2026-04-08 | QTS-46771, QTS-16431, QTS-16441 | 47d | 18d |  | UMAS |
| DC1-CRAH-L2-3560 |  | DH1300 CRAH-EG1302-01 L2 Checklist | 3d | 2026-04-06 | 2026-04-08 | QTS-46771, QTS-15521 | 47d | 18d |  | VER |
| DC1-CRAH-L2-3570 |  | DH1300 CRAH-EG1302-02 L2 Checklist | 3d | 2026-04-06 | 2026-04-08 | QTS-46771, QTS-15521 | 47d | 18d |  | VER |
| DC1-CRAH-L2-3580 |  | DH1300 CRAH-EG1302-03 L2 Checklist | 3d | 2026-04-06 | 2026-04-08 | QTS-46771, QTS-15521 | 47d | 18d |  | VER |
| DC1-CRAH-L2-3590 |  | DH1300 CRAH-EG1302-04 L2 Checklist | 3d | 2026-04-06 | 2026-04-08 | QTS-46771, QTS-15521 | 47d | 18d |  | VER |
| DC1-DOAS-L2-2080 |  | DH1300 DOAS-01 L2 Checklist | 3d | 2026-04-09 | 2026-04-13 | QTS-46761, QTS-46781, QTS-50321 | 44d | 15d |  | TAS |
| DC1-DOAS-L2-2090 |  | DH1300 DOAS-02 L2 Checklist | 3d | 2026-04-09 | 2026-04-13 | QTS-46761, QTS-46781, QTS-50321 | 44d | 15d |  | TAS |

Notes:
- DC1-CHWP-L2-Cx-2280: Steps: EC Installation Checklist; MC Installation Checklist; CC Installation Checklist; Vendor Pre-Energization Checklist; CXA Pre-Energization Inspection; PEI/Clean-Walk
- DC1-CHWP-L2-Cx-2290: Steps: EC Installation Checklist; MC Installation Checklist; CC Installation Checklist; Vendor Pre-Energization Checklist; CXA Pre-Energization Inspection; PEI/Clean-Walk
- DC1-CHWP-L2-Cx-2300: Steps: EC Installation Checklist; MC Installation Checklist; CC Installation Checklist; Vendor Pre-Energization Checklist; CXA Pre-Energization Inspection; PEI/Clean-Walk
- DC1-CHWP-L2-Cx-2310: Steps: EC Installation Checklist; MC Installation Checklist; CC Installation Checklist; Vendor Pre-Energization Checklist; CXA Pre-Energization Inspection; PEI/Clean-Walk
- DC1-CHWP-L2-Cx-2320: Steps: EC Installation Checklist; MC Installation Checklist; CC Installation Checklist; Vendor Pre-Energization Checklist; CXA Pre-Energization Inspection; PEI/Clean-Walk
- DC1-CHWP-L2-Cx-2330: Steps: EC Installation Checklist; MC Installation Checklist; CC Installation Checklist; Vendor Pre-Energization Checklist; CXA Pre-Energization Inspection; PEI/Clean-Walk
- DC1-CHWP-L2-Cx-2340: Steps: EC Installation Checklist; MC Installation Checklist; CC Installation Checklist; Vendor Pre-Energization Checklist; CXA Pre-Energization Inspection; PEI/Clean-Walk
- DC1-CRAH-L2-3280: Steps: EC Installation Checklist; MC Installation Checklist; CC Installation Checklist; Vendor Pre-Energization Checklist; CXA Pre-Energization Inspection; PEI/Clean-Walk
- DC1-CRAH-L2-3290: Steps: EC Installation Checklist; MC Installation Checklist; CC Installation Checklist; Vendor Pre-Energization Checklist; CXA Pre-Energization Inspection; PEI/Clean-Walk
- DC1-CRAH-L2-3300: Steps: EC Installation Checklist; MC Installation Checklist; CC Installation Checklist; Vendor Pre-Energization Checklist; CXA Pre-Energization Inspection; PEI/Clean-Walk
- DC1-CRAH-L2-3310: Steps: EC Installation Checklist; MC Installation Checklist; CC Installation Checklist; Vendor Pre-Energization Checklist; CXA Pre-Energization Inspection; PEI/Clean-Walk
- DC1-CRAH-L2-3320: Steps: EC Installation Checklist; MC Installation Checklist; CC Installation Checklist; Vendor Pre-Energization Checklist; CXA Pre-Energization Inspection; PEI/Clean-Walk
- DC1-CRAH-L2-3330: Steps: EC Installation Checklist; MC Installation Checklist; CC Installation Checklist; Vendor Pre-Energization Checklist; CXA Pre-Energization Inspection; PEI/Clean-Walk
- DC1-CRAH-L2-3340: Steps: EC Installation Checklist; MC Installation Checklist; CC Installation Checklist; Vendor Pre-Energization Checklist; CXA Pre-Energization Inspection; PEI/Clean-Walk
- DC1-CRAH-L2-3350: Steps: EC Installation Checklist; MC Installation Checklist; CC Installation Checklist; Vendor Pre-Energization Checklist; CXA Pre-Energization Inspection; PEI/Clean-Walk
- DC1-CRAH-L2-3360: Steps: EC Installation Checklist; MC Installation Checklist; CC Installation Checklist; Vendor Pre-Energization Checklist; CXA Pre-Energization Inspection; PEI/Clean-Walk
- DC1-CRAH-L2-3370: Steps: EC Installation Checklist; MC Installation Checklist; CC Installation Checklist; Vendor Pre-Energization Checklist; CXA Pre-Energization Inspection; PEI/Clean-Walk
- DC1-CRAH-L2-3380: Steps: EC Installation Checklist; MC Installation Checklist; CC Installation Checklist; Vendor Pre-Energization Checklist; CXA Pre-Energization Inspection; PEI/Clean-Walk
- DC1-CRAH-L2-3390: Steps: EC Installation Checklist; MC Installation Checklist; CC Installation Checklist; Vendor Pre-Energization Checklist; CXA Pre-Energization Inspection; PEI/Clean-Walk
- DC1-CRAH-L2-3400: Steps: EC Installation Checklist; MC Installation Checklist; CC Installation Checklist; Vendor Pre-Energization Checklist; CXA Pre-Energization Inspection; PEI/Clean-Walk
- DC1-CRAH-L2-3410: Steps: EC Installation Checklist; MC Installation Checklist; CC Installation Checklist; Vendor Pre-Energization Checklist; CXA Pre-Energization Inspection; PEI/Clean-Walk
- DC1-CRAH-L2-3420: Steps: EC Installation Checklist; MC Installation Checklist; CC Installation Checklist; Vendor Pre-Energization Checklist; CXA Pre-Energization Inspection; PEI/Clean-Walk
- DC1-CRAH-L2-3430: Steps: EC Installation Checklist; MC Installation Checklist; CC Installation Checklist; Vendor Pre-Energization Checklist; CXA Pre-Energization Inspection; PEI/Clean-Walk
- DC1-CRAH-L2-3440: Steps: EC Installation Checklist; MC Installation Checklist; CC Installation Checklist; Vendor Pre-Energization Checklist; CXA Pre-Energization Inspection; PEI/Clean-Walk
- DC1-CRAH-L2-3450: Steps: EC Installation Checklist; MC Installation Checklist; CC Installation Checklist; Vendor Pre-Energization Checklist; CXA Pre-Energization Inspection; PEI/Clean-Walk
- DC1-CRAH-L2-3460: Steps: EC Installation Checklist; MC Installation Checklist; CC Installation Checklist; Vendor Pre-Energization Checklist; CXA Pre-Energization Inspection; PEI/Clean-Walk
- DC1-CRAH-L2-3470: Steps: EC Installation Checklist; MC Installation Checklist; CC Installation Checklist; Vendor Pre-Energization Checklist; CXA Pre-Energization Inspection; PEI/Clean-Walk
- DC1-CRAH-L2-3480: Steps: EC Installation Checklist; MC Installation Checklist; CC Installation Checklist; Vendor Pre-Energization Checklist; CXA Pre-Energization Inspection; PEI/Clean-Walk
- DC1-CRAH-L2-3490: Steps: EC Installation Checklist; MC Installation Checklist; CC Installation Checklist; Vendor Pre-Energization Checklist; CXA Pre-Energization Inspection; PEI/Clean-Walk
- DC1-CRAH-L2-3500: Steps: EC Installation Checklist; MC Installation Checklist; CC Installation Checklist; Vendor Pre-Energization Checklist; CXA Pre-Energization Inspection; PEI/Clean-Walk
- DC1-CRAH-L2-3510: Steps: EC Installation Checklist; MC Installation Checklist; CC Installation Checklist; Vendor Pre-Energization Checklist; CXA Pre-Energization Inspection; PEI/Clean-Walk
- DC1-CRAH-L2-3520: Steps: EC Installation Checklist; MC Installation Checklist; CC Installation Checklist; Vendor Pre-Energization Checklist; CXA Pre-Energization Inspection; PEI/Clean-Walk
- DC1-CRAH-L2-3530: Steps: EC Installation Checklist; MC Installation Checklist; CC Installation Checklist; Vendor Pre-Energization Checklist; CXA Pre-Energization Inspection; PEI/Clean-Walk
- DC1-CRAH-L2-3540: Steps: EC Installation Checklist; MC Installation Checklist; CC Installation Checklist; Vendor Pre-Energization Checklist; CXA Pre-Energization Inspection; PEI/Clean-Walk
- DC1-CRAH-L2-3550: Steps: EC Installation Checklist; MC Installation Checklist; CC Installation Checklist; Vendor Pre-Energization Checklist; CXA Pre-Energization Inspection; PEI/Clean-Walk
- DC1-CRAH-L2-3560: Steps: EC Installation Checklist; MC Installation Checklist; CC Installation Checklist; Vendor Pre-Energization Checklist; CXA Pre-Energization Inspection; PEI/Clean-Walk
- DC1-CRAH-L2-3570: Steps: EC Installation Checklist; MC Installation Checklist; CC Installation Checklist; Vendor Pre-Energization Checklist; CXA Pre-Energization Inspection; PEI/Clean-Walk
- DC1-CRAH-L2-3580: Steps: EC Installation Checklist; MC Installation Checklist; CC Installation Checklist; Vendor Pre-Energization Checklist; CXA Pre-Energization Inspection; PEI/Clean-Walk
- DC1-CRAH-L2-3590: Steps: EC Installation Checklist; MC Installation Checklist; CC Installation Checklist; Vendor Pre-Energization Checklist; CXA Pre-Energization Inspection; PEI/Clean-Walk
- DC1-DOAS-L2-2080: Steps: EC Installation Checklist; MC Installation Checklist; CC Installation Checklist; Vendor Pre-Energization Checklist; CXA Pre-Energization Inspection; PEI/Clean-Walk
- DC1-DOAS-L2-2090: Steps: EC Installation Checklist; MC Installation Checklist; CC Installation Checklist; Vendor Pre-Energization Checklist; CXA Pre-Energization Inspection; PEI/Clean-Walk

| ID | WBS | Activity | Duration | Start | Finish | Predecessors | Total float | Free float | Vendor Responsible Party |
| --- | --- | --- | --- | --- | --- | --- | --- | --- | --- |
|  | 03 | **Data Hall 1300 Cx L3** |  | 2026-05-04 | 2026-08-20 |  |  |  |  |
|  | 01 | **DC1-DH1300 Generators Cx L3** |  | 2026-05-05 | 2026-05-08 |  |  |  |  |
|  | 01 | **DC1-DH1300-GEN-A13 Cx L3** |  | 2026-05-05 | 2026-05-08 |  |  |  |  |
| DC1-GEN-L3-CX-2840 |  | DC1-GEN-A13 FTE | 1d | 2026-05-05 | 2026-05-05 | DC1-GEN-L2-2280, DC1-SWD-L3-CX-2840 | 34d | 0d | ROS |
| DC1-GEN-L3-CX-2850 |  | DC1-GEN-A13 L3 Startup | 2d | 2026-05-06 | 2026-05-07 | DC1-GEN-L3-CX-2840 | 34d | 0d | HLT |
| DC1-GEN-L3-CX-2860 |  | DC1-GEN-A13 BMS/EPMS | 1d | 2026-05-08 | 2026-05-08 | DC1-GEN-L3-CX-2850 | 34d | 9d | PRM |
|  | 02 | **DC1-DH1300-GEN-B13 Cx L3** |  | 2026-05-05 | 2026-05-08 |  |  |  |  |
| DC1-GEN-L3-CX-2870 |  | DC1-GEN-B13 FTE | 1d | 2026-05-05 | 2026-05-05 | DC1-GEN-L2-2290, DC1-SWD-L3-CX-2870 | 34d | 0d | ROS |
| DC1-GEN-L3-CX-2880 |  | DC1-GEN-B13 L3 Startup | 2d | 2026-05-06 | 2026-05-07 | DC1-GEN-L3-CX-2870 | 34d | 0d | HLT |
| DC1-GEN-L3-CX-2890 |  | DC1-GEN-B13 BMS/EPMS | 1d | 2026-05-08 | 2026-05-08 | DC1-GEN-L3-CX-2880 | 34d | 9d | PRM |
|  | 03 | **DC1-DH1300-GEN-C13 Cx L3** |  | 2026-05-05 | 2026-05-08 |  |  |  |  |
| DC1-GEN-L3-CX-2900 |  | DC1-GEN-C13 FTE | 1d | 2026-05-05 | 2026-05-05 | DC1-GEN-L2-2300, DC1-SWD-L3-CX-2900 | 34d | 0d | ROS |
| DC1-GEN-L3-CX-2910 |  | DC1-GEN-C13 L3 Startup | 2d | 2026-05-06 | 2026-05-07 | DC1-GEN-L3-CX-2900 | 34d | 0d | HLT |
| DC1-GEN-L3-CX-2920 |  | DC1-GEN-C13 BMS/EPMS | 1d | 2026-05-08 | 2026-05-08 | DC1-GEN-L3-CX-2910 | 34d | 9d | PRM |
|  | 04 | **DC1-DH1300-GEN-D13 Cx L3** |  | 2026-05-05 | 2026-05-08 |  |  |  |  |
| DC1-GEN-L3-CX-2930 |  | DC1-GEN-D13 FTE | 1d | 2026-05-05 | 2026-05-05 | DC1-GEN-L2-2310, DC1-SWD-L3-CX-2930 | 34d | 0d | ROS |
| DC1-GEN-L3-CX-2940 |  | DC1-GEN-D13 L3 Startup | 2d | 2026-05-06 | 2026-05-07 | DC1-GEN-L3-CX-2930 | 34d | 0d | HLT |
| DC1-GEN-L3-CX-2950 |  | DC1-GEN-D13 BMS/EPMS | 1d | 2026-05-08 | 2026-05-08 | DC1-GEN-L3-CX-2940 | 34d | 9d | PRM |
|  | 05 | **DC1-DH1300-GEN-E13 Cx L3** |  | 2026-05-05 | 2026-05-08 |  |  |  |  |
| DC1-GEN-L3-CX-2960 |  | DC1-GEN-E13 FTE | 1d | 2026-05-05 | 2026-05-05 | DC1-GEN-L2-2320, DC1-SWD-L3-CX-2960 | 34d | 0d | ROS |
| DC1-GEN-L3-CX-2970 |  | DC1-GEN-E13 L3 Startup | 2d | 2026-05-06 | 2026-05-07 | DC1-GEN-L3-CX-2960 | 34d | 0d | HLT |
| DC1-GEN-L3-CX-2980 |  | DC1-GEN-E13 BMS/EPMS | 1d | 2026-05-08 | 2026-05-08 | DC1-GEN-L3-CX-2970 | 34d | 9d | PRM |
|  | 06 | **DC1-DH1300-GEN-F13 Cx L3** |  | 2026-05-05 | 2026-05-08 |  |  |  |  |
| DC1-GEN-L3-CX-2990 |  | DC1-GEN-F13 FTE | 1d | 2026-05-05 | 2026-05-05 | DC1-GEN-L2-2330, DC1-SWD-L3-CX-2990 | 34d | 0d | ROS |
| DC1-GEN-L3-CX-3000 |  | DC1-GEN-F13 L3 Startup | 2d | 2026-05-06 | 2026-05-07 | DC1-GEN-L3-CX-2990 | 34d | 0d | HLT |
| DC1-GEN-L3-CX-3010 |  | DC1-GEN-F13 BMS/EPMS | 1d | 2026-05-08 | 2026-05-08 | DC1-GEN-L3-CX-3000 | 34d | 9d | PRM |

Notes:
- DC1-GEN-L3-CX-2850: Steps: EC Startup Report; Vendor Startup
- DC1-GEN-L3-CX-2880: Steps: EC Startup Report; Vendor Startup
- DC1-GEN-L3-CX-2910: Steps: EC Startup Report; Vendor Startup
- DC1-GEN-L3-CX-2940: Steps: EC Startup Report; Vendor Startup
- DC1-GEN-L3-CX-2970: Steps: EC Startup Report; Vendor Startup
- DC1-GEN-L3-CX-3000: Steps: EC Startup Report; Vendor Startup

| ID | WBS | Activity | Duration | Start | Finish | Predecessors | Total float | Free float | Vendor Responsible Party | Notes | Layton Responsible Party |
| --- | --- | --- | --- | --- | --- | --- | --- | --- | --- | --- | --- |
|  | 07 | **DC1-DH1300-GEN-R13 Cx L3** |  | 2026-05-05 | 2026-05-08 |  |  |  |  |  |  |
| DC1-GEN-L3-CX-3020 |  | DC1-GEN-R13 FTE | 1d | 2026-05-05 | 2026-05-05 | DC1-GEN-L2-2340, DC1-SWD-L3-CX-3020 | 34d | 0d | ROS |  |  |
| DC1-GEN-L3-CX-3030 |  | DC1-GEN-R13 L3 Startup | 2d | 2026-05-06 | 2026-05-07 | DC1-GEN-L3-CX-3020 | 34d | 0d | HLT |  |  |
| DC1-GEN-L3-CX-3040 |  | DC1-GEN-R13 BMS/EPMS | 1d | 2026-05-08 | 2026-05-08 | DC1-GEN-L3-CX-3030 | 34d | 9d | PRM |  |  |
|  | 02 | **DC1-DH1300 MV XFMRs Cx L3** |  | 2026-05-04 | 2026-05-07 |  |  |  |  |  |  |
|  | 01 | **DC1-DH1300 MV-XFMR-A13 Cx L3** |  | 2026-05-04 | 2026-05-07 |  |  |  |  |  |  |
| DC1-XFM-L3-CX-1840 |  | DC1-XFMR-A13 FTE | 1d | 2026-05-04 | 2026-05-04 | DC1-XFMR-L2-2280, DC1-SWD-L2-2280, DC1-XFMR-L2-2330 | 1d | 0d | ROS | MVG FTE Pred | Riley Warring |
| DC1-XFM-L3-CX-1850 |  | DC1-XFMR-A13 L3 Startup | 2d | 2026-05-05 | 2026-05-06 | DC1-XFM-L3-CX-1840 | 35d | 0d | VTC |  |  |
| DC1-XFM-L3-CX-1860 |  | DC1-XFMR-A13 BMS/EPMS | 1d | 2026-05-07 | 2026-05-07 | DC1-XFM-L3-CX-1850 | 35d | 10d | PRM |  |  |
|  | 02 | **DC1-DH1300 MV-XFMR-B13 Cx L3** |  | 2026-05-04 | 2026-05-07 |  |  |  |  |  |  |
| DC1-XFM-L3-CX-1870 |  | DC1-XFMR-B13 FTE | 1d | 2026-05-04 | 2026-05-04 | DC1-XFMR-L2-2290, DC1-SWD-L2-2290, DC1-XFMR-L2-2330 | 2d | 0d | ROS | MVG FTE Pred | Riley Warring |
| DC1-XFM-L3-CX-1880 |  | DC1-XFMR-B13 L3 Startup | 2d | 2026-05-05 | 2026-05-06 | DC1-XFM-L3-CX-1870 | 35d | 0d | VTC |  |  |
| DC1-XFM-L3-CX-1890 |  | DC1-XFMR-B13 BMS/EPMS | 1d | 2026-05-07 | 2026-05-07 | DC1-XFM-L3-CX-1880 | 35d | 10d | PRM |  |  |
|  | 03 | **DC1-DH1300 MV-XFMR-C13 Cx L3** |  | 2026-05-04 | 2026-05-07 |  |  |  |  |  |  |
| DC1-XFM-L3-CX-1900 |  | DC1-XFMR-C13 FTE | 1d | 2026-05-04 | 2026-05-04 | DC1-XFMR-L2-2300, DC1-SWD-L2-2300, DC1-XFMR-L2-2330 | 3d | 0d | ROS | MVG FTE Pred | Riley Warring |
| DC1-XFM-L3-CX-1910 |  | DC1-XFMR-C13 L3 Startup | 2d | 2026-05-05 | 2026-05-06 | DC1-XFM-L3-CX-1900 | 35d | 0d | VTC |  |  |
| DC1-XFM-L3-CX-1920 |  | DC1-XFMR-C13 BMS/EPMS | 1d | 2026-05-07 | 2026-05-07 | DC1-XFM-L3-CX-1910 | 35d | 10d | PRM |  |  |
|  | 04 | **DC1-DH1300 MV-XFMR-D13 Cx L3** |  | 2026-05-04 | 2026-05-07 |  |  |  |  |  |  |
| DC1-XFM-L3-CX-1930 |  | DC1-XFMR-D13 FTE | 1d | 2026-05-04 | 2026-05-04 | DC1-XFMR-L2-2310, DC1-SWD-L2-2310, DC1-XFMR-L2-2330 | 3d | 0d | ROS | MVG FTE Pred | Riley Warring |
| DC1-XFM-L3-CX-1940 |  | DC1-XFMR-D13 L3 Startup | 2d | 2026-05-05 | 2026-05-06 | DC1-XFM-L3-CX-1930 | 35d | 0d | VTC |  |  |
| DC1-XFM-L3-CX-1950 |  | DC1-XFMR-D13 BMS/EPMS | 1d | 2026-05-07 | 2026-05-07 | DC1-XFM-L3-CX-1940 | 35d | 10d | PRM |  |  |
|  | 05 | **DC1-DH1300 MV-XFMR-E13 Cx L3** |  | 2026-05-04 | 2026-05-07 |  |  |  |  |  |  |
| DC1-XFM-L3-CX-1960 |  | DC1-XFMR-E13 FTE | 1d | 2026-05-04 | 2026-05-04 | DC1-XFMR-L2-2320, DC1-SWD-L2-2320, DC1-XFMR-L2-2330 | 3d | 0d | ROS | MVG FTE Pred | Riley Warring |
| DC1-XFM-L3-CX-1970 |  | DC1-XFMR-E13 L3 Startup | 2d | 2026-05-05 | 2026-05-06 | DC1-XFM-L3-CX-1960 | 35d | 0d | VTC |  |  |
| DC1-XFM-L3-CX-1980 |  | DC1-XFMR-E13 BMS/EPMS | 1d | 2026-05-07 | 2026-05-07 | DC1-XFM-L3-CX-1970 | 35d | 10d | PRM |  |  |

Notes:
- DC1-GEN-L3-CX-3030: Steps: EC Startup Report; Vendor Startup
- DC1-XFM-L3-CX-1850: Steps: EC Startup Report; Vendor Startup
- DC1-XFM-L3-CX-1880: Steps: EC Startup Report; Vendor Startup
- DC1-XFM-L3-CX-1910: Steps: EC Startup Report; Vendor Startup
- DC1-XFM-L3-CX-1940: Steps: EC Startup Report; Vendor Startup
- DC1-XFM-L3-CX-1970: Steps: EC Startup Report; Vendor Startup

| ID | WBS | Activity | Duration | Start | Finish | Predecessors | Total float | Free float | Notes | Layton Responsible Party | Vendor Responsible Party |
| --- | --- | --- | --- | --- | --- | --- | --- | --- | --- | --- | --- |
|  | 06 | **DC1-DH1300 MV-XFMR-F13 Cx L3** |  | 2026-05-04 | 2026-05-07 |  |  |  |  |  |  |
| DC1-XFM-L3-CX-1990 |  | DC1-XFMR-F13 FTE | 1d | 2026-05-04 | 2026-05-04 | DC1-XFMR-L2-2330, DC1-SWD-L2-2330 | 3d | 0d | MVG FTE Pred | Riley Warring | ROS |
| DC1-XFM-L3-CX-2000 |  | DC1-XFMR-F13 L3 Startup | 2d | 2026-05-05 | 2026-05-06 | DC1-XFM-L3-CX-1990 | 35d | 0d |  |  | VTC |
| DC1-XFM-L3-CX-2010 |  | DC1-XFMR-F13 BMS/EPMS | 1d | 2026-05-07 | 2026-05-07 | DC1-XFM-L3-CX-2000 | 35d | 10d |  |  | PRM |
|  | 07 | **DC1-DH1300 MV-XFMR-R13 Cx L3** |  | 2026-05-04 | 2026-05-07 |  |  |  |  |  |  |
| DC1-XFM-L3-CX-2020 |  | DC1-XFMR-R13 FTE | 1d | 2026-05-04 | 2026-05-04 | DC1-XFMR-L2-2340, DC1-SWD-L2-2340, DC1-XFMR-L2-2330 | 0d |  | MVG FTE Pred | Riley Warring | ROS |
| DC1-XFM-L3-CX-2030 |  | DC1-XFMR-R13 L3 Startup | 2d | 2026-05-05 | 2026-05-06 | DC1-XFM-L3-CX-2020 | 35d | 0d |  |  | VTC |
| DC1-XFM-L3-CX-2040 |  | DC1-XFMR-R13 BMS/EPMS | 1d | 2026-05-07 | 2026-05-07 | DC1-XFM-L3-CX-2030 | 35d | 10d |  |  | PRM |
|  | 03 | **DC1-DH1300 PODS Cx L3** |  | 2026-05-04 | 2026-05-20 |  |  |  |  |  |  |
|  | 01 | **DC1-DH1300 SWDs Cx L3** |  | 2026-05-04 | 2026-05-07 |  |  |  |  |  |  |
|  | 01 | **DC1-DH1300-SWD-A13 Cx L3** |  | 2026-05-04 | 2026-05-07 |  |  |  |  |  |  |
| DC1-SWD-L3-CX-2840 |  | DC1-SWD-A13 FTE | 1d | 2026-05-04 | 2026-05-04 | DC1-SWD-L2-2280, DC1-XFM-L3-CX-1840 SS, DC1-SWD-L2-2330 | 1d | 0d |  | Riley Warring | ROS |
| DC1-SWD-L3-CX-2850 |  | DC1-SWD-A13 L3 Startup | 2d | 2026-05-05 | 2026-05-06 | DC1-SWD-L3-CX-2840, QTS-2191 | 35d | 0d |  |  | SIE |
| DC1-SWD-L3-CX-2860 |  | DC1-SWD-A13 BMS/EPMS | 1d | 2026-05-07 | 2026-05-07 | DC1-SWD-L3-CX-2850 | 35d | 10d |  |  | PRM |
|  | 02 | **DC1-DH1300-SWD-B13 Cx L3** |  | 2026-05-04 | 2026-05-07 |  |  |  |  |  |  |
| DC1-SWD-L3-CX-2870 |  | DC1-SWD-B13 FTE | 1d | 2026-05-04 | 2026-05-04 | DC1-SWD-L2-2290, DC1-XFM-L3-CX-1870 SS, DC1-SWD-L2-2330 | 2d | 0d |  | Riley Warring | ROS |
| DC1-SWD-L3-CX-2880 |  | DC1-SWD-B13 L3 Startup | 2d | 2026-05-05 | 2026-05-06 | DC1-SWD-L3-CX-2870, QTS-2191 | 35d | 0d |  |  | SIE |
| DC1-SWD-L3-CX-2890 |  | DC1-SWD-B13 BMS/EPMS | 1d | 2026-05-07 | 2026-05-07 | DC1-SWD-L3-CX-2880 | 35d | 10d |  |  | PRM |
|  | 03 | **DC1-DH1300-SWD-C13 Cx L3** |  | 2026-05-04 | 2026-05-07 |  |  |  |  |  |  |
| DC1-SWD-L3-CX-2900 |  | DC1-SWD-C13 FTE | 1d | 2026-05-04 | 2026-05-04 | DC1-SWD-L2-2300, DC1-XFM-L3-CX-1900 SS, DC1-SWD-L2-2330 | 3d | 0d |  | Riley Warring | ROS |
| DC1-SWD-L3-CX-2910 |  | DC1-SWD-C13 L3 Startup | 2d | 2026-05-05 | 2026-05-06 | DC1-SWD-L3-CX-2900, QTS-2191 | 35d | 0d |  |  | SIE |
| DC1-SWD-L3-CX-2920 |  | DC1-SWD-C13 BMS/EPMS | 1d | 2026-05-07 | 2026-05-07 | DC1-SWD-L3-CX-2910 | 35d | 10d |  |  | PRM |
|  | 04 | **DC1-DH1300-SWD-D13 Cx L3** |  | 2026-05-04 | 2026-05-07 |  |  |  |  |  |  |
| DC1-SWD-L3-CX-2930 |  | DC1-SWD-D13 FTE | 1d | 2026-05-04 | 2026-05-04 | DC1-SWD-L2-2310, DC1-XFM-L3-CX-1930 SS, DC1-SWD-L2-2330 | 3d | 0d |  | Riley Warring | ROS |
| DC1-SWD-L3-CX-2940 |  | DC1-SWD-D13 L3 Startup | 2d | 2026-05-05 | 2026-05-06 | DC1-SWD-L3-CX-2930, QTS-2191 | 35d | 0d |  |  | SIE |
| DC1-SWD-L3-CX-2950 |  | DC1-SWD-D13 BMS/EPMS | 1d | 2026-05-07 | 2026-05-07 | DC1-SWD-L3-CX-2940 | 35d | 10d |  |  | PRM |

Notes:
- DC1-XFM-L3-CX-2000: Steps: EC Startup Report; Vendor Startup
- DC1-XFM-L3-CX-2030: Steps: EC Startup Report; Vendor Startup
- DC1-SWD-L3-CX-2850: Steps: EC Startup Report; Vendor Startup
- DC1-SWD-L3-CX-2880: Steps: EC Startup Report; Vendor Startup
- DC1-SWD-L3-CX-2910: Steps: EC Startup Report; Vendor Startup
- DC1-SWD-L3-CX-2940: Steps: EC Startup Report; Vendor Startup

| ID | WBS | Activity | Duration | Start | Finish | Predecessors | Total float | Free float | Layton Responsible Party | Vendor Responsible Party | Notes |
| --- | --- | --- | --- | --- | --- | --- | --- | --- | --- | --- | --- |
|  | 05 | **DC1-DH1300-SWD-E13 Cx L3** |  | 2026-05-04 | 2026-05-07 |  |  |  |  |  |  |
| DC1-SWD-L3-CX-2960 |  | DC1-SWD-E13 FTE | 1d | 2026-05-04 | 2026-05-04 | DC1-SWD-L2-2320, DC1-XFM-L3-CX-1960 SS, DC1-SWD-L2-2330 | 3d | 0d | Riley Warring | ROS |  |
| DC1-SWD-L3-CX-2970 |  | DC1-SWD-E13 L3 Startup | 2d | 2026-05-05 | 2026-05-06 | DC1-SWD-L3-CX-2960, QTS-2191 | 35d | 0d |  | SIE |  |
| DC1-SWD-L3-CX-2980 |  | DC1-SWD-E13 BMS/EPMS | 1d | 2026-05-07 | 2026-05-07 | DC1-SWD-L3-CX-2970 | 35d | 10d |  | PRM |  |
|  | 06 | **DC1-DH1300-SWD-F13 Cx L3** |  | 2026-05-04 | 2026-05-07 |  |  |  |  |  |  |
| DC1-SWD-L3-CX-2990 |  | DC1-SWD-F13 FTE | 1d | 2026-05-04 | 2026-05-04 | DC1-SWD-L2-2330, DC1-XFM-L3-CX-1990 SS | 3d | 0d | Riley Warring | ROS |  |
| DC1-SWD-L3-CX-3000 |  | DC1-SWD-F13 L3 Startup | 2d | 2026-05-05 | 2026-05-06 | DC1-SWD-L3-CX-2990, QTS-2191 | 35d | 0d |  | SIE |  |
| DC1-SWD-L3-CX-3010 |  | DC1-SWD-F13 BMS/EPMS | 1d | 2026-05-07 | 2026-05-07 | DC1-SWD-L3-CX-3000 | 35d | 10d |  | PRM |  |
|  | 07 | **DC1-DH1300-SWD-R13 Cx L3** |  | 2026-05-04 | 2026-05-07 |  |  |  |  |  |  |
| DC1-SWD-L3-CX-3020 |  | DC1-SWD-R13 FTE | 1d | 2026-05-04 | 2026-05-04 | DC1-SWD-L2-2340, DC1-XFM-L3-CX-2020 SS, DC1-SWD-L2-2330 | 0d |  | Riley Warring | ROS |  |
| DC1-SWD-L3-CX-3030 |  | DC1-SWD-R13 L3 Startup | 2d | 2026-05-05 | 2026-05-06 | DC1-SWD-L3-CX-3020, QTS-2191 | 35d | 0d |  | SIE |  |
| DC1-SWD-L3-CX-3040 |  | DC1-SWD-R13 BMS/EPMS | 1d | 2026-05-07 | 2026-05-07 | DC1-SWD-L3-CX-3030 | 35d | 10d |  | PRM |  |
|  | 02 | **DC1-DH1300 MOD-01s Cx L3** |  | 2026-05-04 | 2026-05-07 |  |  |  |  |  |  |
|  | 01 | **DC1-DH1300-MOD-A13-01 Cx L3** |  | 2026-05-04 | 2026-05-07 |  |  |  |  |  |  |
| DC1-MOD1-L3-CX-2840 |  | DC1-MOD-01-A13 FTE | 1d | 2026-05-04 | 2026-05-04 | DC1-MOD01-L2-2280, DC1-SWD-L3-CX-2840 SS | 1d | 0d |  | ROS |  |
| DC1-MOD1-L3-CX-2850 |  | DC1-MOD-01-A13 L3 Startup | 2d | 2026-05-05 | 2026-05-06 | DC1-MOD1-L3-CX-2840 | 35d | 0d |  | PHE | Vendor Only |
| DC1-MOD1-L3-CX-2860 |  | DC1-MOD-01-A13 BMS/EPMS | 1d | 2026-05-07 | 2026-05-07 | DC1-MOD1-L3-CX-2850 | 35d | 10d |  | PRM |  |
|  | 02 | **DC1-DH1300-MOD-B13-01 Cx L3** |  | 2026-05-04 | 2026-05-07 |  |  |  |  |  |  |
| DC1-MOD1-L3-CX-2870 |  | DC1-MOD-01-B13 FTE | 1d | 2026-05-04 | 2026-05-04 | DC1-MOD01-L2-2290, DC1-SWD-L3-CX-2870 SS | 2d | 0d |  | ROS |  |
| DC1-MOD1-L3-CX-2880 |  | DC1-MOD-01-B13 L3 Startup | 2d | 2026-05-05 | 2026-05-06 | DC1-MOD1-L3-CX-2870 | 35d | 0d |  | PHE | Vendor Only |
| DC1-MOD1-L3-CX-2890 |  | DC1-MOD-01-B13 BMS/EPMS | 1d | 2026-05-07 | 2026-05-07 | DC1-MOD1-L3-CX-2880 | 35d | 10d |  | PRM |  |
|  | 03 | **DC1-DH1300-MOD-C13-01 Cx L3** |  | 2026-05-04 | 2026-05-07 |  |  |  |  |  |  |
| DC1-MOD1-L3-CX-2900 |  | DC1-MOD-01-C13 FTE | 1d | 2026-05-04 | 2026-05-04 | DC1-MOD01-L2-2300, DC1-SWD-L3-CX-2900 SS | 3d | 0d |  | ROS |  |
| DC1-MOD1-L3-CX-2910 |  | DC1-MOD-01-C13 L3 Startup | 2d | 2026-05-05 | 2026-05-06 | DC1-MOD1-L3-CX-2900 | 35d | 0d |  | PHE | Vendor Only |
| DC1-MOD1-L3-CX-2920 |  | DC1-MOD-01-C13 BMS/EPMS | 1d | 2026-05-07 | 2026-05-07 | DC1-MOD1-L3-CX-2910 | 35d | 10d |  | PRM |  |

Notes:
- DC1-SWD-L3-CX-2970: Steps: EC Startup Report; Vendor Startup
- DC1-SWD-L3-CX-3000: Steps: EC Startup Report; Vendor Startup
- DC1-SWD-L3-CX-3030: Steps: EC Startup Report; Vendor Startup

| ID | WBS | Activity | Duration | Start | Finish | Predecessors | Total float | Free float | Vendor Responsible Party | Notes |
| --- | --- | --- | --- | --- | --- | --- | --- | --- | --- | --- |
|  | 04 | **DC1-DH1300-MOD-D13-01 Cx L3** |  | 2026-05-04 | 2026-05-07 |  |  |  |  |  |
| DC1-MOD1-L3-CX-2930 |  | DC1-MOD-01-D13 FTE | 1d | 2026-05-04 | 2026-05-04 | DC1-MOD01-L2-2310, DC1-SWD-L3-CX-2930 SS | 4d | 0d | ROS |  |
| DC1-MOD1-L3-CX-2940 |  | DC1-MOD-01-D13 L3 Startup | 2d | 2026-05-05 | 2026-05-06 | DC1-MOD1-L3-CX-2930 | 35d | 0d | PHE | Vendor Only |
| DC1-MOD1-L3-CX-2950 |  | DC1-MOD-01-D13 BMS/EPMS | 1d | 2026-05-07 | 2026-05-07 | DC1-MOD1-L3-CX-2940 | 35d | 10d | PRM |  |
|  | 05 | **DC1-DH1300-MOD-E13-01 Cx L3** |  | 2026-05-04 | 2026-05-07 |  |  |  |  |  |
| DC1-MOD1-L3-CX-2960 |  | DC1-MOD-01-E13 FTE | 1d | 2026-05-04 | 2026-05-04 | DC1-MOD01-L2-2320, DC1-SWD-L3-CX-2960 SS | 5d | 0d | ROS |  |
| DC1-MOD1-L3-CX-2970 |  | DC1-MOD-01-E13 L3 Startup | 2d | 2026-05-05 | 2026-05-06 | DC1-MOD1-L3-CX-2960 | 35d | 0d | PHE | Vendor Only |
| DC1-MOD1-L3-CX-2980 |  | DC1-MOD-01-E13 BMS/EPMS | 1d | 2026-05-07 | 2026-05-07 | DC1-MOD1-L3-CX-2970 | 35d | 10d | PRM |  |
|  | 06 | **DC1-DH1300-MOD-F13-01 Cx L3** |  | 2026-05-04 | 2026-05-07 |  |  |  |  |  |
| DC1-MOD1-L3-CX-2990 |  | DC1-MOD-01-F13 FTE | 1d | 2026-05-04 | 2026-05-04 | DC1-MOD01-L2-2330, DC1-SWD-L3-CX-2990 SS | 6d | 0d | ROS |  |
| DC1-MOD1-L3-CX-3000 |  | DC1-MOD-01-F13 L3 Startup | 2d | 2026-05-05 | 2026-05-06 | DC1-MOD1-L3-CX-2990 | 35d | 0d | PHE | Vendor Only |
| DC1-MOD1-L3-CX-3010 |  | DC1-MOD-01-F13 BMS/EPMS | 1d | 2026-05-07 | 2026-05-07 | DC1-MOD1-L3-CX-3000 | 35d | 10d | PRM |  |
|  | 07 | **DC1-DH1300-MOD-R13-01 Cx L3** |  | 2026-05-04 | 2026-05-07 |  |  |  |  |  |
| DC1-MOD1-L3-CX-3020 |  | DC1-MOD-01-R13 FTE | 1d | 2026-05-04 | 2026-05-04 | DC1-MOD01-L2-2340, DC1-SWD-L3-CX-3020 SS | 6d | 0d | ROS |  |
| DC1-MOD1-L3-CX-3030 |  | DC1-MOD-01-R13 L3 Startup | 2d | 2026-05-05 | 2026-05-06 | DC1-MOD1-L3-CX-3020 | 35d | 0d | PHE | Vendor Only |
| DC1-MOD1-L3-CX-3040 |  | DC1-MOD-01-R13 BMS/EPMS | 1d | 2026-05-07 | 2026-05-07 | DC1-MOD1-L3-CX-3030 | 35d | 10d | PRM |  |
|  | 03 | **DC1-DH1300 UPS-M Cx L3** |  | 2026-05-08 | 2026-05-20 |  |  |  |  |  |
|  | 01 | **DC1-DH1300-UPS-M-A13-01 Cx L3** |  | 2026-05-08 | 2026-05-13 |  |  |  |  |  |
| DC1-UPSM-L3-CX-2840 |  | DC1-UPS-M-A13 FTE | 1d | 2026-05-08 | 2026-05-08 | DC1-UPS-M-L2-2280, DC1-COMP-L3-CX-2850, DC1-FAN-L3-CX-2850, DC1-MOD1-L3-CX-2840 | 1d | 0d | ROS |  |
| DC1-UPSM-L3-CX-2850 |  | DC1-UPS-M-A13 L3 Startup | 2d | 2026-05-11 | 2026-05-12 | DC1-UPSM-L3-CX-2840 | 31d | 0d | VER |  |
| DC1-UPSM-L3-CX-2860 |  | DC1-UPS-M-A13 BMS/EPMS | 1d | 2026-05-13 | 2026-05-13 | DC1-UPSM-L3-CX-2850 | 31d | 6d | PRM |  |
|  | 02 | **DC1-DH1300-UPS-M-B13-01 Cx L3** |  | 2026-05-11 | 2026-05-14 |  |  |  |  |  |
| DC1-UPSM-L3-CX-2870 |  | DC1-UPS-M-B13 FTE | 1d | 2026-05-11 | 2026-05-11 | DC1-UPS-M-L2-2290, DC1-COMP-L3-CX-2880, DC1-FAN-L3-CX-2880, DC1-MOD1-L3-CX-2870, DC1-UPSM-L3-CX-2840 | 1d | 0d | ROS |  |
| DC1-UPSM-L3-CX-2880 |  | DC1-UPS-M-B13 L3 Startup | 2d | 2026-05-12 | 2026-05-13 | DC1-UPSM-L3-CX-2870 | 30d | 0d | VER |  |
| DC1-UPSM-L3-CX-2890 |  | DC1-UPS-M-B13 BMS/EPMS | 1d | 2026-05-14 | 2026-05-14 | DC1-UPSM-L3-CX-2880 | 30d | 5d | PRM |  |

Notes:
- DC1-UPSM-L3-CX-2850: Steps: EC Startup Report; Vendor Startup
- DC1-UPSM-L3-CX-2880: Steps: EC Startup Report; Vendor Startup

| ID | WBS | Activity | Duration | Start | Finish | Predecessors | Total float | Free float | Vendor Responsible Party | Notes |
| --- | --- | --- | --- | --- | --- | --- | --- | --- | --- | --- |
|  | 03 | **DC1-DH1300-UPS-M-C13-01 Cx L3** |  | 2026-05-12 | 2026-05-15 |  |  |  |  |  |
| DC1-UPSM-L3-CX-2900 |  | DC1-UPS-M-C13 FTE | 1d | 2026-05-12 | 2026-05-12 | DC1-UPS-M-L2-2300, DC1-COMP-L3-CX-2910, DC1-FAN-L3-CX-2910, DC1-MOD1-L3-CX-2900, DC1-UPSM-L3-CX-2870 | 1d | 0d | ROS |  |
| DC1-UPSM-L3-CX-2910 |  | DC1-UPS-M-C13 L3 Startup | 2d | 2026-05-13 | 2026-05-14 | DC1-UPSM-L3-CX-2900 | 29d | 0d | VER |  |
| DC1-UPSM-L3-CX-2920 |  | DC1-UPS-M-C13 BMS/EPMS | 1d | 2026-05-15 | 2026-05-15 | DC1-UPSM-L3-CX-2910 | 29d | 4d | PRM |  |
|  | 04 | **DC1-DH1300-UPS-M-D13-01 Cx L3** |  | 2026-05-13 | 2026-05-18 |  |  |  |  |  |
| DC1-UPSM-L3-CX-2930 |  | DC1-UPS-M-D13 FTE | 1d | 2026-05-13 | 2026-05-13 | DC1-UPS-M-L2-2310, DC1-COMP-L3-CX-2940, DC1-FAN-L3-CX-2940, DC1-MOD1-L3-CX-2930, DC1-UPSM-L3-CX-2900 | 1d | 0d | ROS |  |
| DC1-UPSM-L3-CX-2940 |  | DC1-UPS-M-D13 L3 Startup | 2d | 2026-05-14 | 2026-05-15 | DC1-UPSM-L3-CX-2930 | 28d | 0d | VER |  |
| DC1-UPSM-L3-CX-2950 |  | DC1-UPS-M-D13 BMS/EPMS | 1d | 2026-05-18 | 2026-05-18 | DC1-UPSM-L3-CX-2940 | 28d | 3d | PRM |  |
|  | 05 | **DC1-DH1300-UPS-M-E13-01 Cx L3** |  | 2026-05-14 | 2026-05-19 |  |  |  |  |  |
| DC1-UPSM-L3-CX-2960 |  | DC1-UPS-M-E13 FTE | 1d | 2026-05-14 | 2026-05-14 | DC1-UPS-M-L2-2320, DC1-COMP-L3-CX-2970, DC1-FAN-L3-CX-2970, DC1-MOD1-L3-CX-2960, DC1-UPSM-L3-CX-2930 | 1d | 0d | ROS |  |
| DC1-UPSM-L3-CX-2970 |  | DC1-UPS-M-E13 L3 Startup | 2d | 2026-05-15 | 2026-05-18 | DC1-UPSM-L3-CX-2960 | 27d | 0d | VER |  |
| DC1-UPSM-L3-CX-2980 |  | DC1-UPS-M-E13 BMS/EPMS | 1d | 2026-05-19 | 2026-05-19 | DC1-UPSM-L3-CX-2970 | 27d | 2d | PRM |  |
|  | 06 | **DC1-DH1300-UPS-M-F13-01 Cx L3** |  | 2026-05-15 | 2026-05-20 |  |  |  |  |  |
| DC1-UPSM-L3-CX-2990 |  | DC1-UPS-M-F13 FTE | 1d | 2026-05-15 | 2026-05-15 | DC1-UPS-M-L2-2330, DC1-COMP-L3-CX-3000, DC1-FAN-L3-CX-3000, DC1-MOD1-L3-CX-2990, DC1-UPSM-L3-CX-2960 | 1d | 0d | ROS |  |
| DC1-UPSM-L3-CX-3000 |  | DC1-UPS-M-F13 L3 Startup | 2d | 2026-05-18 | 2026-05-19 | DC1-UPSM-L3-CX-2990 | 26d | 0d | VER |  |
| DC1-UPSM-L3-CX-3010 |  | DC1-UPS-M-F13 BMS/EPMS | 1d | 2026-05-20 | 2026-05-20 | DC1-UPSM-L3-CX-3000 | 26d | 1d | PRM |  |
|  | 07 | **DC1-DH1300-UPS-M-R13-01 Cx L3** |  | 2026-05-15 | 2026-05-20 |  |  |  |  |  |
| DC1-UPSM-L3-CX-3020 |  | DC1-UPS-M-R13 FTE | 1d | 2026-05-15 | 2026-05-15 | DC1-UPS-M-L2-2340, DC1-COMP-L3-CX-3030, DC1-FAN-L3-CX-3030, DC1-MOD1-L3-CX-3020, DC1-UPSM-L3-CX-2990 SS | 1d | 0d | ROS |  |
| DC1-UPSM-L3-CX-3030 |  | DC1-UPS-M-R23 L3 Startup | 2d | 2026-05-18 | 2026-05-19 | DC1-UPSM-L3-CX-3020 | 26d | 0d | VER |  |
| DC1-UPSM-L3-CX-3040 |  | DC1-UPS-M-R13 BMS/EPMS | 1d | 2026-05-20 | 2026-05-20 | DC1-UPSM-L3-CX-3030 | 26d | 1d | PRM |  |
|  | 04 | **DC1-DH1300 COMPRESSOR/FAN UNITS Cx L3** |  | 2026-05-05 | 2026-05-08 |  |  |  |  |  |
|  | 01 | **DC1-DH1300 POD-AC UNITS A13 Cx L3** |  | 2026-05-05 | 2026-05-08 |  |  |  |  |  |
| DC1-COMP-L3-CX-2840 |  | DC1-COMP-A13-01 FTE (2) | 1d | 2026-05-05 | 2026-05-05 | DC1-MOD1-L3-CX-2840 | 1d | 0d | ROS |  |
| DC1-FAN-L3-CX-2840 |  | DC1-FAN-A13-01 FTE (2) | 1d | 2026-05-05 | 2026-05-05 | DC1-MOD1-L3-CX-2840 | 1d | 0d | ROS |  |
| DC1-COMP-L3-CX-2850 |  | DC1-COMP-A13-01 L3 Startup (2) | 2d | 2026-05-06 | 2026-05-07 | DC1-COMP-L3-CX-2840 | 1d | 0d | CAP | Vendor Only |
| DC1-FAN-L3-CX-2850 |  | DC1-FAN-A13-01 L3 Startup (2) | 2d | 2026-05-06 | 2026-05-07 | DC1-FAN-L3-CX-2840 | 1d | 0d | FBB | Vendor Only |
| DC1-COMP-L3-CX-2860 |  | DC1-COMP-A13-01 BMS/EPMS (2) | 1d | 2026-05-08 | 2026-05-08 | DC1-COMP-L3-CX-2850 | 34d | 33d | PRM |  |
| DC1-FAN-L3-CX-2860 |  | DC1-FAN-A13-01 BMS/EPMS (2) | 1d | 2026-05-08 | 2026-05-08 | DC1-FAN-L3-CX-2850 | 34d | 33d | PRM |  |

Notes:
- DC1-UPSM-L3-CX-2910: Steps: EC Startup Report; Vendor Startup
- DC1-UPSM-L3-CX-2940: Steps: EC Startup Report; Vendor Startup
- DC1-UPSM-L3-CX-2970: Steps: EC Startup Report; Vendor Startup
- DC1-UPSM-L3-CX-3000: Steps: EC Startup Report; Vendor Startup
- DC1-UPSM-L3-CX-3030: Steps: EC Startup Report; Vendor Startup

| ID | WBS | Activity | Duration | Start | Finish | Predecessors | Total float | Free float | Vendor Responsible Party | Notes |
| --- | --- | --- | --- | --- | --- | --- | --- | --- | --- | --- |
|  | 02 | **DC1-DH1300 POD-AC UNITS B13 Cx L3** |  | 2026-05-05 | 2026-05-08 |  |  |  |  |  |
| DC1-COMP-L3-CX-2870 |  | DC1-COMP-B13-01 FTE (2) | 1d | 2026-05-05 | 2026-05-05 | DC1-MOD1-L3-CX-2870 | 2d | 0d | ROS |  |
| DC1-FAN-L3-CX-2870 |  | DC1-FAN-B13-01 FTE (2) | 1d | 2026-05-05 | 2026-05-05 | DC1-MOD1-L3-CX-2870 | 2d | 0d | ROS |  |
| DC1-COMP-L3-CX-2880 |  | DC1-COMP-B13-01 L3 Startup (2) | 2d | 2026-05-06 | 2026-05-07 | DC1-COMP-L3-CX-2870 | 2d | 0d | CAP | Vendor Only |
| DC1-FAN-L3-CX-2880 |  | DC1-FAN-B13-01 L3 Startup (2) | 2d | 2026-05-06 | 2026-05-07 | DC1-FAN-L3-CX-2870 | 2d | 0d | FBB | Vendor Only |
| DC1-COMP-L3-CX-2890 |  | DC1-COMP-B13-01 BMS/EPMS (2) | 1d | 2026-05-08 | 2026-05-08 | DC1-COMP-L3-CX-2880 | 34d | 33d | PRM |  |
| DC1-FAN-L3-CX-2890 |  | DC1-FAN-B13-01 BMS/EPMS (2) | 1d | 2026-05-08 | 2026-05-08 | DC1-FAN-L3-CX-2880 | 34d | 33d | PRM |  |
|  | 03 | **DC1-DH1300 POD-AC UNITS C13 Cx L3** |  | 2026-05-05 | 2026-05-08 |  |  |  |  |  |
| DC1-COMP-L3-CX-2900 |  | DC1-COMP-C13-01 FTE (2) | 1d | 2026-05-05 | 2026-05-05 | DC1-MOD1-L3-CX-2900 | 3d | 0d | ROS |  |
| DC1-FAN-L3-CX-2900 |  | DC1-FAN-C13-01 FTE (2) | 1d | 2026-05-05 | 2026-05-05 | DC1-MOD1-L3-CX-2900 | 3d | 0d | ROS |  |
| DC1-COMP-L3-CX-2910 |  | DC1-COMP-C13-01 L3 Startup (2) | 2d | 2026-05-06 | 2026-05-07 | DC1-COMP-L3-CX-2900 | 3d | 0d | CAP | Vendor Only |
| DC1-FAN-L3-CX-2910 |  | DC1-FAN-C13-01 L3 Startup (2) | 2d | 2026-05-06 | 2026-05-07 | DC1-FAN-L3-CX-2900 | 3d | 0d | FBB | Vendor Only |
| DC1-COMP-L3-CX-2920 |  | DC1-COMP-C13-01 BMS/EPMS (2) | 1d | 2026-05-08 | 2026-05-08 | DC1-COMP-L3-CX-2910 | 34d | 33d | PRM |  |
| DC1-FAN-L3-CX-2920 |  | DC1-FAN-C13-01 BMS/EPMS (2) | 1d | 2026-05-08 | 2026-05-08 | DC1-FAN-L3-CX-2910 | 34d | 33d | PRM |  |
|  | 04 | **DC1-DH1300 POD-AC UNITS D13 Cx L3** |  | 2026-05-05 | 2026-05-08 |  |  |  |  |  |
| DC1-COMP-L3-CX-2930 |  | DC1-COMP-D13-01 FTE (2) | 1d | 2026-05-05 | 2026-05-05 | DC1-MOD1-L3-CX-2930 | 4d | 0d | ROS |  |
| DC1-FAN-L3-CX-2930 |  | DC1-FAN-D13-01 FTE (2) | 1d | 2026-05-05 | 2026-05-05 | DC1-MOD1-L3-CX-2930 | 4d | 0d | ROS |  |
| DC1-COMP-L3-CX-2940 |  | DC1-COMP-D13-01 L3 Startup (2) | 2d | 2026-05-06 | 2026-05-07 | DC1-COMP-L3-CX-2930 | 4d | 0d | CAP | Vendor Only |
| DC1-FAN-L3-CX-2940 |  | DC1-FAN-D13-01 L3 Startup (2) | 2d | 2026-05-06 | 2026-05-07 | DC1-FAN-L3-CX-2930 | 4d | 0d | FBB | Vendor Only |
| DC1-COMP-L3-CX-2950 |  | DC1-COMP-D13-01 BMS/EPMS (2) | 1d | 2026-05-08 | 2026-05-08 | DC1-COMP-L3-CX-2940 | 34d | 33d | PRM |  |
| DC1-FAN-L3-CX-2950 |  | DC1-FAN-D13-01 BMS/EPMS (2) | 1d | 2026-05-08 | 2026-05-08 | DC1-FAN-L3-CX-2940 | 34d | 33d | PRM |  |
|  | 05 | **DC1-DH1300 POD-AC UNITS E13 Cx L3** |  | 2026-05-05 | 2026-05-08 |  |  |  |  |  |
| DC1-COMP-L3-CX-2960 |  | DC1-COMP-E13-01 FTE (2) | 1d | 2026-05-05 | 2026-05-05 | DC1-MOD1-L3-CX-2960 | 5d | 0d | ROS |  |
| DC1-FAN-L3-CX-2960 |  | DC1-FAN-E13-01 FTE (2) | 1d | 2026-05-05 | 2026-05-05 | DC1-MOD1-L3-CX-2960 | 5d | 0d | ROS |  |
| DC1-COMP-L3-CX-2970 |  | DC1-COMP-E13-01 L3 Startup (2) | 2d | 2026-05-06 | 2026-05-07 | DC1-COMP-L3-CX-2960 | 5d | 0d | CAP | Vendor Only |
| DC1-FAN-L3-CX-2970 |  | DC1-FAN-E13-01 L3 Startup (2) | 2d | 2026-05-06 | 2026-05-07 | DC1-FAN-L3-CX-2960 | 5d | 0d | FBB | Vendor Only |
| DC1-COMP-L3-CX-2980 |  | DC1-COMP-E13-01 BMS/EPMS (2) | 1d | 2026-05-08 | 2026-05-08 | DC1-COMP-L3-CX-2970 | 34d | 33d | PRM |  |
| DC1-FAN-L3-CX-2980 |  | DC1-FAN-E13-01 BMS/EPMS (2) | 1d | 2026-05-08 | 2026-05-08 | DC1-FAN-L3-CX-2970 | 34d | 33d | PRM |  |

| ID | WBS | Activity | Duration | Start | Finish | Predecessors | Total float | Free float | Vendor Responsible Party | Notes | Layton Responsible Party |
| --- | --- | --- | --- | --- | --- | --- | --- | --- | --- | --- | --- |
|  | 06 | **DC1-DH1300 POD-AC UNITS F13 Cx L3** |  | 2026-05-05 | 2026-05-08 |  |  |  |  |  |  |
| DC1-COMP-L3-CX-2990 |  | DC1-COMP-F13-01 FTE (2) | 1d | 2026-05-05 | 2026-05-05 | DC1-MOD1-L3-CX-2990 | 6d | 0d | ROS |  |  |
| DC1-FAN-L3-CX-2990 |  | DC1-FAN-F13-01 FTE (2) | 1d | 2026-05-05 | 2026-05-05 | DC1-MOD1-L3-CX-2990 | 6d | 0d | ROS |  |  |
| DC1-COMP-L3-CX-3000 |  | DC1-COMP-F13-01 L3 Startup (2) | 2d | 2026-05-06 | 2026-05-07 | DC1-COMP-L3-CX-2990 | 6d | 0d | CAP | Vendor Only |  |
| DC1-FAN-L3-CX-3000 |  | DC1-FAN-F13-01 L3 Startup (2) | 2d | 2026-05-06 | 2026-05-07 | DC1-FAN-L3-CX-2990 | 6d | 0d | FBB | Vendor Only |  |
| DC1-COMP-L3-CX-3010 |  | DC1-COMP-F13-01 BMS/EPMS (2) | 1d | 2026-05-08 | 2026-05-08 | DC1-COMP-L3-CX-3000 | 34d | 33d | PRM |  |  |
| DC1-FAN-L3-CX-3010 |  | DC1-FAN-F13-01 BMS/EPMS (2) | 1d | 2026-05-08 | 2026-05-08 | DC1-FAN-L3-CX-3000 | 34d | 33d | PRM |  |  |
|  | 07 | **DC1-DH1300 POD-AC UNITS R13 Cx L3** |  | 2026-05-05 | 2026-05-08 |  |  |  |  |  |  |
| DC1-COMP-L3-CX-3020 |  | DC1-COMP-R13-01 FTE (2) | 1d | 2026-05-05 | 2026-05-05 | DC1-MOD1-L3-CX-3020 | 6d | 0d | ROS |  |  |
| DC1-FAN-L3-CX-3020 |  | DC1-FAN-R13-01 FTE (2) | 1d | 2026-05-05 | 2026-05-05 | DC1-MOD1-L3-CX-3020 | 6d | 0d | ROS |  |  |
| DC1-COMP-L3-CX-3030 |  | DC1-COMP-R13-01 L3 Startup (2) | 2d | 2026-05-06 | 2026-05-07 | DC1-COMP-L3-CX-3020 | 6d | 0d | CAP | Vendor Only |  |
| DC1-FAN-L3-CX-3030 |  | DC1-FAN-R13-01 L3 Startup (2) | 2d | 2026-05-06 | 2026-05-07 | DC1-FAN-L3-CX-3020 | 6d | 0d | FBB | Vendor Only |  |
| DC1-COMP-L3-CX-3040 |  | DC1-COMP-R13-01 BMS/EPMS (2) | 1d | 2026-05-08 | 2026-05-08 | DC1-COMP-L3-CX-3030 | 34d | 33d | PRM |  |  |
| DC1-FAN-L3-CX-3040 |  | DC1-FAN-R13-01 BMS/EPMS (2) | 1d | 2026-05-08 | 2026-05-08 | DC1-FAN-L3-CX-3030 | 34d | 33d | PRM |  |  |
|  | 04 | **DC1-DH1300 BUS-R1X/BUS-R2X Cx L3** |  | 2026-05-05 | 2026-05-11 |  |  |  |  |  |  |
|  | 01 | **DC1-DH1300 BUS-R1 CATCHER BUS DUCT Cx L3** |  | 2026-05-06 | 2026-05-11 |  |  |  |  |  |  |
| DC1-BUS-L3-CX-2240 |  | DC1-DH1300-BUS-R1 (R23) CATCHER BUS FTE | 1d | 2026-05-06 | 2026-05-06 | DC1-BUS-L2-1060, DC1-BUS-L2-1080, DC1-SWD-L3-CX-3020 SS | 6d | 0d | ROS | CFCI | Riley Warring |
| DC1-BUS-L3-CX-2250 |  | DC1-DH1300-BUS-R1 (R23) CATCHER BUS L3 Startup | 2d | 2026-05-07 | 2026-05-08 | DC1-BUS-L3-CX-2240 | 33d | 0d | LAY | CFCI |  |
| DC1-BUS-L3-CX-2260 |  | DC1-DH1300-BUS-R1 (R23) CATCHER BUS BMS/EPMS | 1d | 2026-05-11 | 2026-05-11 | DC1-BUS-L3-CX-2250 | 33d | 8d | PRM | CFCI |  |
|  | 02 | **DC1-DH1300 BUS-R2 MAINTENANCE BUS DUCT Cx L3** |  | 2026-05-05 | 2026-05-08 |  |  |  |  |  |  |
| DC1-BUS-L3-CX-2270 |  | DC1-DH1300-BUS-R2 (R13) MAINTENANCE BUS FTE | 1d | 2026-05-05 | 2026-05-05 | DC1-BUS-L2-1070, DC1-BUS-L2-1090, DC1-SWD-L3-CX-3020 | 6d | 0d | ROS | CFCI | Riley Warring |
| DC1-BUS-L3-CX-2280 |  | DC1-DH1300-BUS-R2 (R13) MAINTENANCE BUS L3 Startup | 2d | 2026-05-06 | 2026-05-07 | DC1-BUS-L3-CX-2270 | 34d | 0d | LAY | CFCI |  |
| DC1-BUS-L3-CX-2290 |  | DC1-DH1300-BUS-R2 (R13) MAINTENANCE BUS BMS/EPMS | 1d | 2026-05-08 | 2026-05-08 | DC1-BUS-L3-CX-2280 | 34d | 9d | PRM | CFCI |  |
|  | 05 | **DC1-DH1300 ATS Cx L3** |  | 2026-05-06 | 2026-05-11 |  |  |  |  |  |  |
|  | 01 | **DC1-DH1300 ATS-A13 Cx L3** |  | 2026-05-06 | 2026-05-11 |  |  |  |  |  |  |
|  | 01 | **DC1-DH1300-ATS-A13-01 Cx L3** |  | 2026-05-06 | 2026-05-11 |  |  |  |  |  |  |
| DC1-ATS-L3-CX-5785 |  | DC1-ATS-A13-01 FTE | 1d | 2026-05-06 | 2026-05-06 | DC1-ATS-L2-3440, DC1-BUS-L3-CX-2240 SS, DC1-SWD-L3-CX-2840 SS | 6d | 0d | ROS | SWD - FS | Riley Warring |
| DC1-ATS-L3-CX-5795 |  | DC1-ATS-A13-01 L3 Startup | 2d | 2026-05-07 | 2026-05-08 | DC1-ATS-L3-CX-5785 | 33d | 0d | MAV |  |  |
| DC1-ATS-L3-CX-5805 |  | DC1-ATS-A13-01 BMS/EPMS | 1d | 2026-05-11 | 2026-05-11 | DC1-ATS-L3-CX-5795 | 33d | 8d | PRM |  |  |

Notes:
- DC1-BUS-L3-CX-2250: Steps: EC Startup Report; Vendor Startup
- DC1-BUS-L3-CX-2280: Steps: EC Startup Report; Vendor Startup
- DC1-ATS-L3-CX-5795: Steps: EC Startup Report; Vendor Startup

| ID | WBS | Activity | Duration | Start | Finish | Predecessors | Total float | Free float | Notes | Layton Responsible Party | Vendor Responsible Party |
| --- | --- | --- | --- | --- | --- | --- | --- | --- | --- | --- | --- |
|  | 02 | **DC1-DH1300-ATS-A13-02 Cx L3** |  | 2026-05-06 | 2026-05-11 |  |  |  |  |  |  |
| DC1-ATS-L3-CX-5815 |  | DC1-ATS-A13-02 FTE | 1d | 2026-05-06 | 2026-05-06 | DC1-ATS-L2-3450, DC1-BUS-L3-CX-2240 SS, DC1-BUS-L3-CX-2270 SS | 6d | 0d | SWD - FS | Riley Warring | ROS |
| DC1-ATS-L3-CX-5825 |  | DC1-ATS-A13-02 L3 Startup | 2d | 2026-05-07 | 2026-05-08 | DC1-ATS-L3-CX-5815 | 33d | 0d |  |  | MAV |
| DC1-ATS-L3-CX-5835 |  | DC1-ATS-A13-02 BMS/EPMS | 1d | 2026-05-11 | 2026-05-11 | DC1-ATS-L3-CX-5825 | 33d | 8d |  |  | PRM |
|  | 03 | **DC1-DH1300-ATS-A13-03 Cx L3** |  | 2026-05-06 | 2026-05-11 |  |  |  |  |  |  |
| DC1-ATS-L3-CX-5845 |  | DC1-ATS-A13-03 FTE | 1d | 2026-05-06 | 2026-05-06 | DC1-ATS-L2-3460, DC1-BUS-L3-CX-2240 SS, DC1-SWD-L3-CX-2840 SS | 6d | 0d | SWD - FS | Riley Warring | ROS |
| DC1-ATS-L3-CX-5855 |  | DC1-ATS-A13-03 L3 Startup | 2d | 2026-05-07 | 2026-05-08 | DC1-ATS-L3-CX-5845 | 33d | 0d |  |  | MAV |
| DC1-ATS-L3-CX-5865 |  | DC1-ATS-A13-03 BMS/EPMS | 1d | 2026-05-11 | 2026-05-11 | DC1-ATS-L3-CX-5855 | 33d | 8d |  |  | PRM |
|  | 04 | **DC1-DH1300-ATS-A13-04 Cx L3** |  | 2026-05-06 | 2026-05-11 |  |  |  |  |  |  |
| DC1-ATS-L3-CX-5875 |  | DC1-ATS-A13-04 FTE | 1d | 2026-05-06 | 2026-05-06 | DC1-ATS-L2-3470, DC1-BUS-L3-CX-2240 SS, DC1-BUS-L3-CX-2270 SS | 6d | 0d | SWD - FS | Riley Warring | ROS |
| DC1-ATS-L3-CX-5885 |  | DC1-ATS-A13-04 L3 Startup | 2d | 2026-05-07 | 2026-05-08 | DC1-ATS-L3-CX-5875 | 33d | 0d |  |  | MAV |
| DC1-ATS-L3-CX-5895 |  | DC1-ATS-A13-04 BMS/EPMS | 1d | 2026-05-11 | 2026-05-11 | DC1-ATS-L3-CX-5885 | 33d | 8d |  |  | PRM |
|  | 05 | **DC1-DH1300-ATS-A13-05 Cx L3** |  | 2026-05-06 | 2026-05-11 |  |  |  |  |  |  |
| DC1-ATS-L3-CX-5905 |  | DC1-ATS-A13-05 FTE | 1d | 2026-05-06 | 2026-05-06 | DC1-ATS-L2-3480, DC1-BUS-L3-CX-2240 SS, DC1-SWD-L3-CX-2840 SS | 6d | 0d | SWD - FS | Riley Warring | ROS |
| DC1-ATS-L3-CX-5915 |  | DC1-ATS-A13-05 L3 Startup | 2d | 2026-05-07 | 2026-05-08 | DC1-ATS-L3-CX-5905 | 33d | 0d |  |  | MAV |
| DC1-ATS-L3-CX-5925 |  | DC1-ATS-A13-05 BMS/EPMS | 1d | 2026-05-11 | 2026-05-11 | DC1-ATS-L3-CX-5915 | 33d | 8d |  |  | PRM |
|  | 06 | **DC1-DH1300-ATS-A13-06 Cx L3** |  | 2026-05-06 | 2026-05-11 |  |  |  |  |  |  |
| DC1-ATS-L3-CX-5935 |  | DC1-ATS-A13-06 FTE | 1d | 2026-05-06 | 2026-05-06 | DC1-BUS-L3-CX-2240 SS, DC1-BUS-L3-CX-2270 SS, DC1-ATS-L2-3490 | 6d | 0d | SWD - FS | Riley Warring | ROS |
| DC1-ATS-L3-CX-5945 |  | DC1-ATS-A13-06 L3 Startup | 2d | 2026-05-07 | 2026-05-08 | DC1-ATS-L3-CX-5935 | 33d | 0d |  |  | MAV |
| DC1-ATS-L3-CX-5955 |  | DC1-ATS-A13-06 BMS/EPMS | 1d | 2026-05-11 | 2026-05-11 | DC1-ATS-L3-CX-5945 | 33d | 8d |  |  | PRM |
|  | 02 | **DC1-DH1300 ATS-B13 Cx L3** |  | 2026-05-06 | 2026-05-11 |  |  |  |  |  |  |
|  | 01 | **DC1-DH1300-ATS-B13-01 Cx L3** |  | 2026-05-06 | 2026-05-11 |  |  |  |  |  |  |
| DC1-ATS-L3-CX-5965 |  | DC1-ATS-B13-01 FTE | 1d | 2026-05-06 | 2026-05-06 | DC1-ATS-L2-3500, DC1-BUS-L3-CX-2240 SS, DC1-SWD-L3-CX-2870 SS | 6d | 0d |  | Riley Warring | ROS |
| DC1-ATS-L3-CX-5975 |  | DC1-ATS-B13-01 L3 Startup | 2d | 2026-05-07 | 2026-05-08 | DC1-ATS-L3-CX-5965 | 33d | 0d |  |  | MAV |
| DC1-ATS-L3-CX-5985 |  | DC1-ATS-B13-01 BMS/EPMS | 1d | 2026-05-11 | 2026-05-11 | DC1-ATS-L3-CX-5975 | 33d | 8d |  |  | PRM |

Notes:
- DC1-ATS-L3-CX-5825: Steps: EC Startup Report; Vendor Startup
- DC1-ATS-L3-CX-5855: Steps: EC Startup Report; Vendor Startup
- DC1-ATS-L3-CX-5885: Steps: EC Startup Report; Vendor Startup
- DC1-ATS-L3-CX-5915: Steps: EC Startup Report; Vendor Startup
- DC1-ATS-L3-CX-5945: Steps: EC Startup Report; Vendor Startup
- DC1-ATS-L3-CX-5975: Steps: EC Startup Report; Vendor Startup

| ID | WBS | Activity | Duration | Start | Finish | Predecessors | Total float | Free float | Layton Responsible Party | Vendor Responsible Party |
| --- | --- | --- | --- | --- | --- | --- | --- | --- | --- | --- |
|  | 02 | **DC1-DH1300-ATS-B13-02 Cx L3** |  | 2026-05-06 | 2026-05-11 |  |  |  |  |  |
| DC1-ATS-L3-CX-5995 |  | DC1-ATS-B13-02 FTE | 1d | 2026-05-06 | 2026-05-06 | DC1-ATS-L2-3510, DC1-BUS-L3-CX-2240 SS, DC1-BUS-L3-CX-2270 | 6d | 0d | Riley Warring | ROS |
| DC1-ATS-L3-CX-6005 |  | DC1-ATS-B13-02 L3 Startup | 2d | 2026-05-07 | 2026-05-08 | DC1-ATS-L3-CX-5995 | 33d | 0d |  | MAV |
| DC1-ATS-L3-CX-6015 |  | DC1-ATS-B13-02 BMS/EPMS | 1d | 2026-05-11 | 2026-05-11 | DC1-ATS-L3-CX-6005 | 33d | 8d |  | PRM |
|  | 03 | **DC1-DH1300-ATS-B13-03 Cx L3** |  | 2026-05-06 | 2026-05-11 |  |  |  |  |  |
| DC1-ATS-L3-CX-6025 |  | DC1-ATS-B13-03 FTE | 1d | 2026-05-06 | 2026-05-06 | DC1-ATS-L2-3520, DC1-BUS-L3-CX-2240 SS, DC1-SWD-L3-CX-2870 SS | 6d | 0d | Riley Warring | ROS |
| DC1-ATS-L3-CX-6035 |  | DC1-ATS-B13-03 L3 Startup | 2d | 2026-05-07 | 2026-05-08 | DC1-ATS-L3-CX-6025 | 33d | 0d |  | MAV |
| DC1-ATS-L3-CX-6045 |  | DC1-ATS-B13-03 BMS/EPMS | 1d | 2026-05-11 | 2026-05-11 | DC1-ATS-L3-CX-6035 | 33d | 8d |  | PRM |
|  | 04 | **DC1-DH1300-ATS-B13-04 Cx L3** |  | 2026-05-06 | 2026-05-11 |  |  |  |  |  |
| DC1-ATS-L3-CX-6055 |  | DC1-ATS-B13-04 FTE | 1d | 2026-05-06 | 2026-05-06 | DC1-ATS-L2-3530, DC1-BUS-L3-CX-2240 SS, DC1-BUS-L3-CX-2270 | 6d | 0d | Riley Warring | ROS |
| DC1-ATS-L3-CX-6065 |  | DC1-ATS-B13-04 L3 Startup | 2d | 2026-05-07 | 2026-05-08 | DC1-ATS-L3-CX-6055 | 33d | 0d |  | MAV |
| DC1-ATS-L3-CX-6075 |  | DC1-ATS-B13-04 BMS/EPMS | 1d | 2026-05-11 | 2026-05-11 | DC1-ATS-L3-CX-6065 | 33d | 8d |  | PRM |
|  | 05 | **DC1-DH1300-ATS-B13-05 Cx L3** |  | 2026-05-06 | 2026-05-11 |  |  |  |  |  |
| DC1-ATS-L3-CX-6085 |  | DC1-ATS-B13-05 FTE | 1d | 2026-05-06 | 2026-05-06 | DC1-ATS-L2-3540, DC1-BUS-L3-CX-2240 SS, DC1-SWD-L3-CX-2870 SS | 6d | 0d | Riley Warring | ROS |
| DC1-ATS-L3-CX-6095 |  | DC1-ATS-B13-05 L3 Startup | 2d | 2026-05-07 | 2026-05-08 | DC1-ATS-L3-CX-6085 | 33d | 0d |  | MAV |
| DC1-ATS-L3-CX-6105 |  | DC1-ATS-B13-05 BMS/EPMS | 1d | 2026-05-11 | 2026-05-11 | DC1-ATS-L3-CX-6095 | 33d | 8d |  | PRM |
|  | 06 | **DC1-DH1300-ATS-B13-06 Cx L3** |  | 2026-05-06 | 2026-05-11 |  |  |  |  |  |
| DC1-ATS-L3-CX-6115 |  | DC1-ATS-B13-06 FTE | 1d | 2026-05-06 | 2026-05-06 | DC1-ATS-L2-3550, DC1-BUS-L3-CX-2240 SS, DC1-BUS-L3-CX-2270 | 6d | 0d | Riley Warring | ROS |
| DC1-ATS-L3-CX-6125 |  | DC1-ATS-B13-06 L3 Startup | 2d | 2026-05-07 | 2026-05-08 | DC1-ATS-L3-CX-6115 | 33d | 0d |  | MAV |
| DC1-ATS-L3-CX-6135 |  | DC1-ATS-B13-06 BMS/EPMS | 1d | 2026-05-11 | 2026-05-11 | DC1-ATS-L3-CX-6125 | 33d | 8d |  | PRM |
|  | 03 | **DC1-DH1300 ATS-C13 Cx L3** |  | 2026-05-06 | 2026-05-11 |  |  |  |  |  |
|  | 01 | **DC1-DH1300-ATS-C13-01 Cx L3** |  | 2026-05-06 | 2026-05-11 |  |  |  |  |  |
| DC1-ATS-L3-CX-6145 |  | DC1-ATS-C13-01 FTE | 1d | 2026-05-06 | 2026-05-06 | DC1-ATS-L2-3560, DC1-BUS-L3-CX-2240 SS, DC1-SWD-L3-CX-2900 SS | 6d | 0d | Riley Warring | ROS |
| DC1-ATS-L3-CX-6155 |  | DC1-ATS-C13-01 L3 Startup | 2d | 2026-05-07 | 2026-05-08 | DC1-ATS-L3-CX-6145 | 33d | 0d |  | MAV |
| DC1-ATS-L3-CX-6165 |  | DC1-ATS-C13-01 BMS/EPMS | 1d | 2026-05-11 | 2026-05-11 | DC1-ATS-L3-CX-6155 | 33d | 8d |  | PRM |

Notes:
- DC1-ATS-L3-CX-6005: Steps: EC Startup Report; Vendor Startup
- DC1-ATS-L3-CX-6035: Steps: EC Startup Report; Vendor Startup
- DC1-ATS-L3-CX-6065: Steps: EC Startup Report; Vendor Startup
- DC1-ATS-L3-CX-6095: Steps: EC Startup Report; Vendor Startup
- DC1-ATS-L3-CX-6125: Steps: EC Startup Report; Vendor Startup
- DC1-ATS-L3-CX-6155: Steps: EC Startup Report; Vendor Startup

| ID | WBS | Activity | Duration | Start | Finish | Predecessors | Total float | Free float | Layton Responsible Party | Vendor Responsible Party |
| --- | --- | --- | --- | --- | --- | --- | --- | --- | --- | --- |
|  | 02 | **DC1-DH1300-ATS-C13-02 Cx L3** |  | 2026-05-06 | 2026-05-11 |  |  |  |  |  |
| DC1-ATS-L3-CX-6175 |  | DC1-ATS-C13-02 FTE | 1d | 2026-05-06 | 2026-05-06 | DC1-ATS-L2-3570, DC1-BUS-L3-CX-2240 SS, DC1-BUS-L3-CX-2270 | 6d | 0d | Riley Warring | ROS |
| DC1-ATS-L3-CX-6185 |  | DC1-ATS-C13-02 L3 Startup | 2d | 2026-05-07 | 2026-05-08 | DC1-ATS-L3-CX-6175 | 33d | 0d |  | MAV |
| DC1-ATS-L3-CX-6195 |  | DC1-ATS-C13-02 BMS/EPMS | 1d | 2026-05-11 | 2026-05-11 | DC1-ATS-L3-CX-6185 | 33d | 8d |  | PRM |
|  | 03 | **DC1-DH1300-ATS-C13-03 Cx L3** |  | 2026-05-06 | 2026-05-11 |  |  |  |  |  |
| DC1-ATS-L3-CX-6205 |  | DC1-ATS-C13-03 FTE | 1d | 2026-05-06 | 2026-05-06 | DC1-ATS-L2-3580, DC1-BUS-L3-CX-2240 SS, DC1-SWD-L3-CX-2900 SS | 6d | 0d | Riley Warring | ROS |
| DC1-ATS-L3-CX-6215 |  | DC1-ATS-C13-03 L3 Startup | 2d | 2026-05-07 | 2026-05-08 | DC1-ATS-L3-CX-6205 | 33d | 0d |  | MAV |
| DC1-ATS-L3-CX-6225 |  | DC1-ATS-C13-03 BMS/EPMS | 1d | 2026-05-11 | 2026-05-11 | DC1-ATS-L3-CX-6215 | 33d | 8d |  | PRM |
|  | 04 | **DC1-DH1300-ATS-C13-04 Cx L3** |  | 2026-05-06 | 2026-05-11 |  |  |  |  |  |
| DC1-ATS-L3-CX-6235 |  | DC1-ATS-C13-04 FTE | 1d | 2026-05-06 | 2026-05-06 | DC1-ATS-L2-3590, DC1-BUS-L3-CX-2240 SS, DC1-BUS-L3-CX-2270 | 6d | 0d | Riley Warring | ROS |
| DC1-ATS-L3-CX-6245 |  | DC1-ATS-C13-04 L3 Startup | 2d | 2026-05-07 | 2026-05-08 | DC1-ATS-L3-CX-6235 | 33d | 0d |  | MAV |
| DC1-ATS-L3-CX-6255 |  | DC1-ATS-C13-04 BMS/EPMS | 1d | 2026-05-11 | 2026-05-11 | DC1-ATS-L3-CX-6245 | 33d | 8d |  | PRM |
|  | 05 | **DC1-DH1300-ATS-C13-05 Cx L3** |  | 2026-05-06 | 2026-05-11 |  |  |  |  |  |
| DC1-ATS-L3-CX-6265 |  | DC1-ATS-C13-05 FTE | 1d | 2026-05-06 | 2026-05-06 | DC1-ATS-L2-3600, DC1-BUS-L3-CX-2240 SS, DC1-SWD-L3-CX-2900 SS | 6d | 0d | Riley Warring | ROS |
| DC1-ATS-L3-CX-6275 |  | DC1-ATS-C13-05 L3 Startup | 2d | 2026-05-07 | 2026-05-08 | DC1-ATS-L3-CX-6265 | 33d | 0d |  | MAV |
| DC1-ATS-L3-CX-6285 |  | DC1-ATS-C13-05 BMS/EPMS | 1d | 2026-05-11 | 2026-05-11 | DC1-ATS-L3-CX-6275 | 33d | 8d |  | PRM |
|  | 06 | **DC1-DH1300-ATS-C13-06 Cx L3** |  | 2026-05-06 | 2026-05-11 |  |  |  |  |  |
| DC1-ATS-L3-CX-6295 |  | DC1-ATS-C13-06 FTE | 1d | 2026-05-06 | 2026-05-06 | DC1-ATS-L2-3610, DC1-BUS-L3-CX-2240 SS, DC1-BUS-L3-CX-2270 | 6d | 0d | Riley Warring | ROS |
| DC1-ATS-L3-CX-6305 |  | DC1-ATS-C13-06 L3 Startup | 2d | 2026-05-07 | 2026-05-08 | DC1-ATS-L3-CX-6295 | 33d | 0d |  | MAV |
| DC1-ATS-L3-CX-6315 |  | DC1-ATS-C13-06 BMS/EPMS | 1d | 2026-05-11 | 2026-05-11 | DC1-ATS-L3-CX-6305 | 33d | 8d |  | PRM |
|  | 04 | **DC1-DH1300 ATS-D13 Cx L3** |  | 2026-05-06 | 2026-05-11 |  |  |  |  |  |
|  | 01 | **DC1-DH1300-ATS-D13-01 Cx L3** |  | 2026-05-06 | 2026-05-11 |  |  |  |  |  |
| DC1-ATS-L3-CX-6325 |  | DC1-ATS-D13-01 FTE | 1d | 2026-05-06 | 2026-05-06 | DC1-ATS-L2-3620, DC1-BUS-L3-CX-2240 SS, DC1-SWD-L3-CX-2930 SS | 6d | 0d | Riley Warring | ROS |
| DC1-ATS-L3-CX-6335 |  | DC1-ATS-D13-01 L3 Startup | 2d | 2026-05-07 | 2026-05-08 | DC1-ATS-L3-CX-6325 | 33d | 0d |  | MAV |
| DC1-ATS-L3-CX-6345 |  | DC1-ATS-D13-01 BMS/EPMS | 1d | 2026-05-11 | 2026-05-11 | DC1-ATS-L3-CX-6335 | 33d | 8d |  | PRM |

Notes:
- DC1-ATS-L3-CX-6185: Steps: EC Startup Report; Vendor Startup
- DC1-ATS-L3-CX-6215: Steps: EC Startup Report; Vendor Startup
- DC1-ATS-L3-CX-6245: Steps: EC Startup Report; Vendor Startup
- DC1-ATS-L3-CX-6275: Steps: EC Startup Report; Vendor Startup
- DC1-ATS-L3-CX-6305: Steps: EC Startup Report; Vendor Startup
- DC1-ATS-L3-CX-6335: Steps: EC Startup Report; Vendor Startup

| ID | WBS | Activity | Duration | Start | Finish | Predecessors | Total float | Free float | Layton Responsible Party | Vendor Responsible Party |
| --- | --- | --- | --- | --- | --- | --- | --- | --- | --- | --- |
|  | 02 | **DC1-DH1300-ATS-D13-02 Cx L3** |  | 2026-05-06 | 2026-05-11 |  |  |  |  |  |
| DC1-ATS-L3-CX-6355 |  | DC1-ATS-D13-02 FTE | 1d | 2026-05-06 | 2026-05-06 | DC1-ATS-L2-3630, DC1-BUS-L3-CX-2240 SS, DC1-BUS-L3-CX-2270 | 6d | 0d | Riley Warring | ROS |
| DC1-ATS-L3-CX-6365 |  | DC1-ATS-D13-02 L3 Startup | 2d | 2026-05-07 | 2026-05-08 | DC1-ATS-L3-CX-6355 | 33d | 0d |  | MAV |
| DC1-ATS-L3-CX-6375 |  | DC1-ATS-D13-02 BMS/EPMS | 1d | 2026-05-11 | 2026-05-11 | DC1-ATS-L3-CX-6365 | 33d | 8d |  | PRM |
|  | 03 | **DC1-DH1300-ATS-D13-03 Cx L3** |  | 2026-05-06 | 2026-05-11 |  |  |  |  |  |
| DC1-ATS-L3-CX-6385 |  | DC1-ATS-D13-03 FTE | 1d | 2026-05-06 | 2026-05-06 | DC1-ATS-L2-3640, DC1-BUS-L3-CX-2240 SS, DC1-SWD-L3-CX-2930 SS | 6d | 0d | Riley Warring | ROS |
| DC1-ATS-L3-CX-6395 |  | DC1-ATS-D13-03 L3 Startup | 2d | 2026-05-07 | 2026-05-08 | DC1-ATS-L3-CX-6385 | 33d | 0d |  | MAV |
| DC1-ATS-L3-CX-6405 |  | DC1-ATS-D13-03 BMS/EPMS | 1d | 2026-05-11 | 2026-05-11 | DC1-ATS-L3-CX-6395 | 33d | 8d |  | PRM |
|  | 04 | **DC1-DH1300-ATS-D13-04 Cx L3** |  | 2026-05-06 | 2026-05-11 |  |  |  |  |  |
| DC1-ATS-L3-CX-6415 |  | DC1-ATS-D13-04 FTE | 1d | 2026-05-06 | 2026-05-06 | DC1-ATS-L2-3650, DC1-BUS-L3-CX-2240 SS, DC1-BUS-L3-CX-2270 | 6d | 0d | Riley Warring | ROS |
| DC1-ATS-L3-CX-6425 |  | DC1-ATS-D13-04 L3 Startup | 2d | 2026-05-07 | 2026-05-08 | DC1-ATS-L3-CX-6415 | 33d | 0d |  | MAV |
| DC1-ATS-L3-CX-6435 |  | DC1-ATS-D13-04 BMS/EPMS | 1d | 2026-05-11 | 2026-05-11 | DC1-ATS-L3-CX-6425 | 33d | 8d |  | PRM |
|  | 05 | **DC1-DH1300-ATS-D13-05 Cx L3** |  | 2026-05-06 | 2026-05-11 |  |  |  |  |  |
| DC1-ATS-L3-CX-6445 |  | DC1-ATS-D13-05 FTE | 1d | 2026-05-06 | 2026-05-06 | DC1-ATS-L2-3660, DC1-BUS-L3-CX-2240 SS, DC1-SWD-L3-CX-2930 SS | 6d | 0d | Riley Warring | ROS |
| DC1-ATS-L3-CX-6455 |  | DC1-ATS-D13-05 L3 Startup | 2d | 2026-05-07 | 2026-05-08 | DC1-ATS-L3-CX-6445 | 33d | 0d |  | MAV |
| DC1-ATS-L3-CX-6465 |  | DC1-ATS-D13-05 BMS/EPMS | 1d | 2026-05-11 | 2026-05-11 | DC1-ATS-L3-CX-6455 | 33d | 8d |  | PRM |
|  | 06 | **DC1-DH1300-ATS-D13-06 Cx L3** |  | 2026-05-06 | 2026-05-11 |  |  |  |  |  |
| DC1-ATS-L3-CX-6475 |  | DC1-ATS-D13-06 FTE | 1d | 2026-05-06 | 2026-05-06 | DC1-ATS-L2-3670, DC1-BUS-L3-CX-2240 SS, DC1-BUS-L3-CX-2270 | 6d | 0d | Riley Warring | ROS |
| DC1-ATS-L3-CX-6485 |  | DC1-ATS-D13-06 L3 Startup | 2d | 2026-05-07 | 2026-05-08 | DC1-ATS-L3-CX-6475 | 33d | 0d |  | MAV |
| DC1-ATS-L3-CX-6495 |  | DC1-ATS-D13-06 BMS/EPMS | 1d | 2026-05-11 | 2026-05-11 | DC1-ATS-L3-CX-6485 | 33d | 8d |  | PRM |
|  | 05 | **DC1-DH1300 ATS-E13 Cx L3** |  | 2026-05-06 | 2026-05-11 |  |  |  |  |  |
|  | 01 | **DC1-DH1300-ATS-E13-01 Cx L3** |  | 2026-05-06 | 2026-05-11 |  |  |  |  |  |
| DC1-ATS-L3-CX-6505 |  | DC1-ATS-E13-01 FTE | 1d | 2026-05-06 | 2026-05-06 | DC1-ATS-L2-3680, DC1-BUS-L3-CX-2240 SS, DC1-SWD-L3-CX-2960 SS | 6d | 0d | Riley Warring | ROS |
| DC1-ATS-L3-CX-6515 |  | DC1-ATS-E13-01 L3 Startup | 2d | 2026-05-07 | 2026-05-08 | DC1-ATS-L3-CX-6505 | 33d | 0d |  | MAV |
| DC1-ATS-L3-CX-6525 |  | DC1-ATS-E13-01 BMS/EPMS | 1d | 2026-05-11 | 2026-05-11 | DC1-ATS-L3-CX-6515 | 33d | 8d |  | PRM |

Notes:
- DC1-ATS-L3-CX-6365: Steps: EC Startup Report; Vendor Startup
- DC1-ATS-L3-CX-6395: Steps: EC Startup Report; Vendor Startup
- DC1-ATS-L3-CX-6425: Steps: EC Startup Report; Vendor Startup
- DC1-ATS-L3-CX-6455: Steps: EC Startup Report; Vendor Startup
- DC1-ATS-L3-CX-6485: Steps: EC Startup Report; Vendor Startup
- DC1-ATS-L3-CX-6515: Steps: EC Startup Report; Vendor Startup

| ID | WBS | Activity | Duration | Start | Finish | Predecessors | Total float | Free float | Layton Responsible Party | Vendor Responsible Party |
| --- | --- | --- | --- | --- | --- | --- | --- | --- | --- | --- |
|  | 02 | **DC1-DH1300-ATS-E13-02 Cx L3** |  | 2026-05-06 | 2026-05-11 |  |  |  |  |  |
| DC1-ATS-L3-CX-6535 |  | DC1-ATS-E13-02 FTE | 1d | 2026-05-06 | 2026-05-06 | DC1-ATS-L2-3690, DC1-BUS-L3-CX-2240 SS, DC1-BUS-L3-CX-2270 | 6d | 0d | Riley Warring | ROS |
| DC1-ATS-L3-CX-6545 |  | DC1-ATS-E13-02 L3 Startup | 2d | 2026-05-07 | 2026-05-08 | DC1-ATS-L3-CX-6535 | 33d | 0d |  | MAV |
| DC1-ATS-L3-CX-6555 |  | DC1-ATS-E13-02 BMS/EPMS | 1d | 2026-05-11 | 2026-05-11 | DC1-ATS-L3-CX-6545 | 33d | 8d |  | PRM |
|  | 03 | **DC1-DH1300-ATS-E13-03 Cx L3** |  | 2026-05-06 | 2026-05-11 |  |  |  |  |  |
| DC1-ATS-L3-CX-6565 |  | DC1-ATS-E13-03 FTE | 1d | 2026-05-06 | 2026-05-06 | DC1-ATS-L2-3700, DC1-BUS-L3-CX-2240 SS, DC1-SWD-L3-CX-2960 SS | 6d | 0d | Riley Warring | ROS |
| DC1-ATS-L3-CX-6575 |  | DC1-ATS-E13-03 L3 Startup | 2d | 2026-05-07 | 2026-05-08 | DC1-ATS-L3-CX-6565 | 33d | 0d |  | MAV |
| DC1-ATS-L3-CX-6585 |  | DC1-ATS-E13-03 BMS/EPMS | 1d | 2026-05-11 | 2026-05-11 | DC1-ATS-L3-CX-6575 | 33d | 8d |  | PRM |
|  | 04 | **DC1-DH1300-ATS-E13-04 Cx L3** |  | 2026-05-06 | 2026-05-11 |  |  |  |  |  |
| DC1-ATS-L3-CX-6595 |  | DC1-ATS-E13-04 FTE | 1d | 2026-05-06 | 2026-05-06 | DC1-ATS-L2-3710, DC1-BUS-L3-CX-2240 SS, DC1-BUS-L3-CX-2270 | 6d | 0d | Riley Warring | ROS |
| DC1-ATS-L3-CX-6605 |  | DC1-ATS-E13-04 L3 Startup | 2d | 2026-05-07 | 2026-05-08 | DC1-ATS-L3-CX-6595 | 33d | 0d |  | MAV |
| DC1-ATS-L3-CX-6615 |  | DC1-ATS-E13-04 BMS/EPMS | 1d | 2026-05-11 | 2026-05-11 | DC1-ATS-L3-CX-6605 | 33d | 8d |  | PRM |
|  | 05 | **DC1-DH1300-ATS-E13-05 Cx L3** |  | 2026-05-06 | 2026-05-11 |  |  |  |  |  |
| DC1-ATS-L3-CX-6625 |  | DC1-ATS-E13-05 FTE | 1d | 2026-05-06 | 2026-05-06 | DC1-ATS-L2-3720, DC1-BUS-L3-CX-2240 SS, DC1-SWD-L3-CX-2960 SS | 6d | 0d | Riley Warring | ROS |
| DC1-ATS-L3-CX-6635 |  | DC1-ATS-E13-05 L3 Startup | 2d | 2026-05-07 | 2026-05-08 | DC1-ATS-L3-CX-6625 | 33d | 0d |  | MAV |
| DC1-ATS-L3-CX-6645 |  | DC1-ATS-E13-05 BMS/EPMS | 1d | 2026-05-11 | 2026-05-11 | DC1-ATS-L3-CX-6635 | 33d | 8d |  | PRM |
|  | 06 | **DC1-DH1300-ATS-E13-06 Cx L3** |  | 2026-05-06 | 2026-05-11 |  |  |  |  |  |
| DC1-ATS-L3-CX-6655 |  | DC1-ATS-E13-06 FTE | 1d | 2026-05-06 | 2026-05-06 | DC1-ATS-L2-3730, DC1-BUS-L3-CX-2240 SS, DC1-BUS-L3-CX-2270 | 6d | 0d | Riley Warring | ROS |
| DC1-ATS-L3-CX-6665 |  | DC1-ATS-E13-06 L3 Startup | 2d | 2026-05-07 | 2026-05-08 | DC1-ATS-L3-CX-6655 | 33d | 0d |  | MAV |
| DC1-ATS-L3-CX-6675 |  | DC1-ATS-E13-06 BMS/EPMS | 1d | 2026-05-11 | 2026-05-11 | DC1-ATS-L3-CX-6665 | 33d | 8d |  | PRM |
|  | 06 | **DC1-DH1300 ATS-F13 Cx L3** |  | 2026-05-06 | 2026-05-11 |  |  |  |  |  |
|  | 01 | **DC1-DH1300-ATS-F13-01 Cx L3** |  | 2026-05-06 | 2026-05-11 |  |  |  |  |  |
| DC1-ATS-L3-CX-6685 |  | DC1-ATS-F13-01 FTE | 1d | 2026-05-06 | 2026-05-06 | DC1-ATS-L2-3740, DC1-BUS-L3-CX-2240 SS, DC1-SWD-L3-CX-2990 SS | 6d | 0d | Riley Warring | ROS |
| DC1-ATS-L3-CX-6695 |  | DC1-ATS-F13-01 L3 Startup | 2d | 2026-05-07 | 2026-05-08 | DC1-ATS-L3-CX-6685 | 33d | 0d |  | MAV |
| DC1-ATS-L3-CX-6705 |  | DC1-ATS-F13-01 BMS/EPMS | 1d | 2026-05-11 | 2026-05-11 | DC1-ATS-L3-CX-6695 | 33d | 8d |  | PRM |

Notes:
- DC1-ATS-L3-CX-6545: Steps: EC Startup Report; Vendor Startup
- DC1-ATS-L3-CX-6575: Steps: EC Startup Report; Vendor Startup
- DC1-ATS-L3-CX-6605: Steps: EC Startup Report; Vendor Startup
- DC1-ATS-L3-CX-6635: Steps: EC Startup Report; Vendor Startup
- DC1-ATS-L3-CX-6665: Steps: EC Startup Report; Vendor Startup
- DC1-ATS-L3-CX-6695: Steps: EC Startup Report; Vendor Startup

| ID | WBS | Activity | Duration | Start | Finish | Predecessors | Total float | Free float | Layton Responsible Party | Vendor Responsible Party |
| --- | --- | --- | --- | --- | --- | --- | --- | --- | --- | --- |
|  | 02 | **DC1-DH1300-ATS-F13-02 Cx L3** |  | 2026-05-06 | 2026-05-11 |  |  |  |  |  |
| DC1-ATS-L3-CX-6715 |  | DC1-ATS-F13-02 FTE | 1d | 2026-05-06 | 2026-05-06 | DC1-ATS-L2-3750, DC1-BUS-L3-CX-2240 SS, DC1-BUS-L3-CX-2270 | 6d | 0d | Riley Warring | ROS |
| DC1-ATS-L3-CX-6725 |  | DC1-ATS-F13-02 L3 Startup | 2d | 2026-05-07 | 2026-05-08 | DC1-ATS-L3-CX-6715 | 33d | 0d |  | MAV |
| DC1-ATS-L3-CX-6735 |  | DC1-ATS-F13-02 BMS/EPMS | 1d | 2026-05-11 | 2026-05-11 | DC1-ATS-L3-CX-6725 | 33d | 8d |  | PRM |
|  | 03 | **DC1-DH1300-ATS-F13-03 Cx L3** |  | 2026-05-06 | 2026-05-11 |  |  |  |  |  |
| DC1-ATS-L3-CX-6745 |  | DC1-ATS-F13-03 FTE | 1d | 2026-05-06 | 2026-05-06 | DC1-ATS-L2-3760, DC1-BUS-L3-CX-2240 SS, DC1-SWD-L3-CX-2990 SS | 6d | 0d | Riley Warring | ROS |
| DC1-ATS-L3-CX-6755 |  | DC1-ATS-F13-03 L3 Startup | 2d | 2026-05-07 | 2026-05-08 | DC1-ATS-L3-CX-6745 | 33d | 0d |  | MAV |
| DC1-ATS-L3-CX-6765 |  | DC1-ATS-F13-03 BMS/EPMS | 1d | 2026-05-11 | 2026-05-11 | DC1-ATS-L3-CX-6755 | 33d | 8d |  | PRM |
|  | 04 | **DC1-DH1300-ATS-F13-04 Cx L3** |  | 2026-05-06 | 2026-05-11 |  |  |  |  |  |
| DC1-ATS-L3-CX-6775 |  | DC1-ATS-F13-04 FTE | 1d | 2026-05-06 | 2026-05-06 | DC1-ATS-L2-3770, DC1-BUS-L3-CX-2240 SS, DC1-BUS-L3-CX-2270 | 6d | 0d | Riley Warring | ROS |
| DC1-ATS-L3-CX-6785 |  | DC1-ATS-F13-04 L3 Startup | 2d | 2026-05-07 | 2026-05-08 | DC1-ATS-L3-CX-6775 | 33d | 0d |  | MAV |
| DC1-ATS-L3-CX-6795 |  | DC1-ATS-F13-04 BMS/EPMS | 1d | 2026-05-11 | 2026-05-11 | DC1-ATS-L3-CX-6785 | 33d | 8d |  | PRM |
|  | 05 | **DC1-DH1300-ATS-F13-05 Cx L3** |  | 2026-05-06 | 2026-05-11 |  |  |  |  |  |
| DC1-ATS-L3-CX-6805 |  | DC1-ATS-F13-05 FTE | 1d | 2026-05-06 | 2026-05-06 | DC1-ATS-L2-3780, DC1-BUS-L3-CX-2240 SS, DC1-SWD-L3-CX-2990 SS | 6d | 0d | Riley Warring | ROS |
| DC1-ATS-L3-CX-6815 |  | DC1-ATS-F13-05 L3 Startup | 2d | 2026-05-07 | 2026-05-08 | DC1-ATS-L3-CX-6805 | 33d | 0d |  | MAV |
| DC1-ATS-L3-CX-6825 |  | DC1-ATS-F13-05 BMS/EPMS | 1d | 2026-05-11 | 2026-05-11 | DC1-ATS-L3-CX-6815 | 33d | 8d |  | PRM |
|  | 06 | **DC1-DH1300-ATS-F13-06 Cx L3** |  | 2026-05-06 | 2026-05-11 |  |  |  |  |  |
| DC1-ATS-L3-CX-6835 |  | DC1-ATS-F13-06 FTE | 1d | 2026-05-06 | 2026-05-06 | DC1-ATS-L2-3790, DC1-BUS-L3-CX-2240 SS, DC1-BUS-L3-CX-2270 | 6d | 0d | Riley Warring | ROS |
| DC1-ATS-L3-CX-6845 |  | DC1-ATS-F13-06 L3 Startup | 2d | 2026-05-07 | 2026-05-08 | DC1-ATS-L3-CX-6835 | 33d | 0d |  | MAV |
| DC1-ATS-L3-CX-6855 |  | DC1-ATS-F13-06 BMS/EPMS | 1d | 2026-05-11 | 2026-05-11 | DC1-ATS-L3-CX-6845 | 33d | 8d |  | PRM |
|  | 06 | **DC1-DH1300 CODs Cx L3** |  | 2026-05-07 | 2026-05-12 |  |  |  |  |  |
|  | 01 | **DC1-DH1300-COD-A13 Cx L3** |  | 2026-05-07 | 2026-05-12 |  |  |  |  |  |
|  | 01 | **DC1-DH1300-COD-A13-01 Cx L3** |  | 2026-05-07 | 2026-05-12 |  |  |  |  |  |
| DC1-COD-L3-CX-5785 |  | DC1-COD-A13-01 FTE | 1d | 2026-05-07 | 2026-05-07 | DC1-COD-L2-3440, DC1-ATS-L3-CX-5785, QTS-1080.6 FS+1d | 6d | 0d | Riley Warring | ROS |
| DC1-COD-L3-CX-5795 |  | DC1-COD-A13-01 L3 Startup | 2d | 2026-05-08 | 2026-05-11 | DC1-COD-L3-CX-5785 | 32d | 0d | Riley Warring | SIE |
| DC1-COD-L3-CX-5805 |  | DC1-COD-A13-01 BMS/EPMS | 1d | 2026-05-12 | 2026-05-12 | DC1-COD-L3-CX-5795 | 32d | 7d | Riley Warring | PRM |

Notes:
- DC1-ATS-L3-CX-6725: Steps: EC Startup Report; Vendor Startup
- DC1-ATS-L3-CX-6755: Steps: EC Startup Report; Vendor Startup
- DC1-ATS-L3-CX-6785: Steps: EC Startup Report; Vendor Startup
- DC1-ATS-L3-CX-6815: Steps: EC Startup Report; Vendor Startup
- DC1-ATS-L3-CX-6845: Steps: EC Startup Report; Vendor Startup
- DC1-COD-L3-CX-5795: Steps: EC Startup Report; Vendor Startup

| ID | WBS | Activity | Duration | Start | Finish | Predecessors | Total float | Free float | Layton Responsible Party | Vendor Responsible Party |
| --- | --- | --- | --- | --- | --- | --- | --- | --- | --- | --- |
|  | 02 | **DC1-DH1300-COD-A13-02 Cx L3** |  | 2026-05-07 | 2026-05-12 |  |  |  |  |  |
| DC1-COD-L3-CX-5815 |  | DC1-COD-A13-02 FTE | 1d | 2026-05-07 | 2026-05-07 | DC1-COD-L2-3450, DC1-ATS-L3-CX-5815 | 6d | 0d | Riley Warring | ROS |
| DC1-COD-L3-CX-5825 |  | DC1-COD-A13-02 L3 Startup | 2d | 2026-05-08 | 2026-05-11 | DC1-COD-L3-CX-5815 | 32d | 0d | Riley Warring | SIE |
| DC1-COD-L3-CX-5835 |  | DC1-COD-A13-02 BMS/EPMS | 1d | 2026-05-12 | 2026-05-12 | DC1-COD-L3-CX-5825 | 32d | 7d | Riley Warring | PRM |
|  | 03 | **DC1-DH1300-COD-A13-03 Cx L3** |  | 2026-05-07 | 2026-05-12 |  |  |  |  |  |
| DC1-COD-L3-CX-5845 |  | DC1-COD-A13-03 FTE | 1d | 2026-05-07 | 2026-05-07 | DC1-COD-L2-3460, DC1-ATS-L3-CX-5845 | 6d | 0d | Riley Warring | ROS |
| DC1-COD-L3-CX-5855 |  | DC1-COD-A13-03 L3 Startup | 2d | 2026-05-08 | 2026-05-11 | DC1-COD-L3-CX-5845 | 32d | 0d | Riley Warring | SIE |
| DC1-COD-L3-CX-5865 |  | DC1-COD-A13-03 BMS/EPMS | 1d | 2026-05-12 | 2026-05-12 | DC1-COD-L3-CX-5855 | 32d | 7d | Riley Warring | PRM |
|  | 04 | **DC1-DH1300-COD-A13-04 Cx L3** |  | 2026-05-07 | 2026-05-12 |  |  |  |  |  |
| DC1-COD-L3-CX-5875 |  | DC1-COD-A13-04 FTE | 1d | 2026-05-07 | 2026-05-07 | DC1-COD-L2-3470, DC1-ATS-L3-CX-5875 | 6d | 0d | Riley Warring | ROS |
| DC1-COD-L3-CX-5885 |  | DC1-COD-A13-04 L3 Startup | 2d | 2026-05-08 | 2026-05-11 | DC1-COD-L3-CX-5875 | 32d | 0d | Riley Warring | SIE |
| DC1-COD-L3-CX-5895 |  | DC1-COD-A13-04 BMS/EPMS | 1d | 2026-05-12 | 2026-05-12 | DC1-COD-L3-CX-5885 | 32d | 7d | Riley Warring | PRM |
|  | 05 | **DC1-DH1300-COD-A13-05 Cx L3** |  | 2026-05-07 | 2026-05-12 |  |  |  |  |  |
| DC1-COD-L3-CX-5905 |  | DC1-COD-A13-05 FTE | 1d | 2026-05-07 | 2026-05-07 | DC1-COD-L2-3480, DC1-ATS-L3-CX-5905 | 6d | 0d | Riley Warring | ROS |
| DC1-COD-L3-CX-5915 |  | DC1-COD-A13-05 L3 Startup | 2d | 2026-05-08 | 2026-05-11 | DC1-COD-L3-CX-5905 | 32d | 0d | Riley Warring | SIE |
| DC1-COD-L3-CX-5925 |  | DC1-COD-A13-05 BMS/EPMS | 1d | 2026-05-12 | 2026-05-12 | DC1-COD-L3-CX-5915 | 32d | 7d | Riley Warring | PRM |
|  | 06 | **DC1-DH1300-COD-A13-06 Cx L3** |  | 2026-05-07 | 2026-05-12 |  |  |  |  |  |
| DC1-COD-L3-CX-5935 |  | DC1-COD-A13-06 FTE | 1d | 2026-05-07 | 2026-05-07 | DC1-COD-L2-3490, DC1-ATS-L3-CX-5935 | 6d | 0d | Riley Warring | ROS |
| DC1-COD-L3-CX-5945 |  | DC1-COD-A13-06 L3 Startup | 2d | 2026-05-08 | 2026-05-11 | DC1-COD-L3-CX-5935 | 32d | 0d | Riley Warring | SIE |
| DC1-COD-L3-CX-5955 |  | DC1-COD-A13-06 BMS/EPMS | 1d | 2026-05-12 | 2026-05-12 | DC1-COD-L3-CX-5945 | 32d | 7d | Riley Warring | PRM |
|  | 02 | **DC1-DH1300-COD-B13 Cx L3** |  | 2026-05-07 | 2026-05-12 |  |  |  |  |  |
|  | 01 | **DC1-DH1300-COD-B13-01 Cx L3** |  | 2026-05-07 | 2026-05-12 |  |  |  |  |  |
| DC1-COD-L3-CX-5965 |  | DC1-COD-B13-01 FTE | 1d | 2026-05-07 | 2026-05-07 | DC1-COD-L2-3500, DC1-ATS-L3-CX-5965, QTS-1080.6 | 6d | 0d | Riley Warring | ROS |
| DC1-COD-L3-CX-5975 |  | DC1-COD-B13-01 L3 Startup | 2d | 2026-05-08 | 2026-05-11 | DC1-COD-L3-CX-5965 | 32d | 0d | Riley Warring | SIE |
| DC1-COD-L3-CX-5985 |  | DC1-COD-B13-01 BMS/EPMS | 1d | 2026-05-12 | 2026-05-12 | DC1-COD-L3-CX-5975 | 32d | 7d | Riley Warring | PRM |

Notes:
- DC1-COD-L3-CX-5825: Steps: EC Startup Report; Vendor Startup
- DC1-COD-L3-CX-5855: Steps: EC Startup Report; Vendor Startup
- DC1-COD-L3-CX-5885: Steps: EC Startup Report; Vendor Startup
- DC1-COD-L3-CX-5915: Steps: EC Startup Report; Vendor Startup
- DC1-COD-L3-CX-5945: Steps: EC Startup Report; Vendor Startup
- DC1-COD-L3-CX-5975: Steps: EC Startup Report; Vendor Startup

| ID | WBS | Activity | Duration | Start | Finish | Predecessors | Total float | Free float | Layton Responsible Party | Vendor Responsible Party |
| --- | --- | --- | --- | --- | --- | --- | --- | --- | --- | --- |
|  | 02 | **DC1-DH1300-COD-B13-02 Cx L3** |  | 2026-05-07 | 2026-05-12 |  |  |  |  |  |
| DC1-COD-L3-CX-5995 |  | DC1-COD-B13-02 FTE | 1d | 2026-05-07 | 2026-05-07 | DC1-COD-L2-3510, DC1-ATS-L3-CX-5995 | 6d | 0d | Riley Warring | ROS |
| DC1-COD-L3-CX-6005 |  | DC1-COD-B13-02 L3 Startup | 2d | 2026-05-08 | 2026-05-11 | DC1-COD-L3-CX-5995 | 32d | 0d | Riley Warring | SIE |
| DC1-COD-L3-CX-6015 |  | DC1-COD-B13-02 BMS/EPMS | 1d | 2026-05-12 | 2026-05-12 | DC1-COD-L3-CX-6005 | 32d | 7d | Riley Warring | PRM |
|  | 03 | **DC1-DH1300-COD-B13-03 Cx L3** |  | 2026-05-07 | 2026-05-12 |  |  |  |  |  |
| DC1-COD-L3-CX-6025 |  | DC1-COD-B13-03 FTE | 1d | 2026-05-07 | 2026-05-07 | DC1-COD-L2-3520, DC1-ATS-L3-CX-6025 | 6d | 0d | Riley Warring | ROS |
| DC1-COD-L3-CX-6035 |  | DC1-COD-B13-03 L3 Startup | 2d | 2026-05-08 | 2026-05-11 | DC1-COD-L3-CX-6025 | 32d | 0d | Riley Warring | SIE |
| DC1-COD-L3-CX-6045 |  | DC1-COD-B13-03 BMS/EPMS | 1d | 2026-05-12 | 2026-05-12 | DC1-COD-L3-CX-6035 | 32d | 7d | Riley Warring | PRM |
|  | 04 | **DC1-DH1300-COD-B13-04 Cx L3** |  | 2026-05-07 | 2026-05-12 |  |  |  |  |  |
| DC1-COD-L3-CX-6055 |  | DC1-COD-B13-04 FTE | 1d | 2026-05-07 | 2026-05-07 | DC1-COD-L2-3530, DC1-ATS-L3-CX-6055 | 6d | 0d | Riley Warring | ROS |
| DC1-COD-L3-CX-6065 |  | DC1-COD-B13-04 L3 Startup | 2d | 2026-05-08 | 2026-05-11 | DC1-COD-L3-CX-6055 | 32d | 0d | Riley Warring | SIE |
| DC1-COD-L3-CX-6075 |  | DC1-COD-B13-04 BMS/EPMS | 1d | 2026-05-12 | 2026-05-12 | DC1-COD-L3-CX-6065 | 32d | 7d | Riley Warring | PRM |
|  | 05 | **DC1-DH1300-COD-B13-05 Cx L3** |  | 2026-05-07 | 2026-05-12 |  |  |  |  |  |
| DC1-COD-L3-CX-6085 |  | DC1-COD-B13-05 FTE | 1d | 2026-05-07 | 2026-05-07 | DC1-COD-L2-3540, DC1-ATS-L3-CX-6085 | 6d | 0d | Riley Warring | ROS |
| DC1-COD-L3-CX-6095 |  | DC1-COD-B13-05 L3 Startup | 2d | 2026-05-08 | 2026-05-11 | DC1-COD-L3-CX-6085 | 32d | 0d | Riley Warring | SIE |
| DC1-COD-L3-CX-6105 |  | DC1-COD-B13-05 BMS/EPMS | 1d | 2026-05-12 | 2026-05-12 | DC1-COD-L3-CX-6095 | 32d | 7d | Riley Warring | PRM |
|  | 06 | **DC1-DH1300-COD-B13-06 Cx L3** |  | 2026-05-07 | 2026-05-12 |  |  |  |  |  |
| DC1-COD-L3-CX-6115 |  | DC1-COD-B13-06 FTE | 1d | 2026-05-07 | 2026-05-07 | DC1-COD-L2-3550, DC1-ATS-L3-CX-6115 | 6d | 0d | Riley Warring | ROS |
| DC1-COD-L3-CX-6125 |  | DC1-COD-B13-06 L3 Startup | 2d | 2026-05-08 | 2026-05-11 | DC1-COD-L3-CX-6115 | 32d | 0d | Riley Warring | SIE |
| DC1-COD-L3-CX-6135 |  | DC1-COD-B13-06 BMS/EPMS | 1d | 2026-05-12 | 2026-05-12 | DC1-COD-L3-CX-6125 | 32d | 7d | Riley Warring | PRM |
|  | 03 | **DC1-DH1300-COD-C13 Cx L3** |  | 2026-05-07 | 2026-05-12 |  |  |  |  |  |
|  | 01 | **DC1-DH1300-COD-C13-01 Cx L3** |  | 2026-05-07 | 2026-05-12 |  |  |  |  |  |
| DC1-COD-L3-CX-6145 |  | DC1-COD-C13-01 FTE | 1d | 2026-05-07 | 2026-05-07 | DC1-COD-L2-3560, DC1-ATS-L3-CX-6145, QTS-1080.6 | 6d | 0d | Riley Warring | ROS |
| DC1-COD-L3-CX-6155 |  | DC1-COD-C13-01 L3 Startup | 2d | 2026-05-08 | 2026-05-11 | DC1-COD-L3-CX-6145 | 32d | 0d | Riley Warring | SIE |
| DC1-COD-L3-CX-6165 |  | DC1-COD-C13-01 BMS/EPMS | 1d | 2026-05-12 | 2026-05-12 | DC1-COD-L3-CX-6155 | 32d | 7d | Riley Warring | PRM |

Notes:
- DC1-COD-L3-CX-6005: Steps: EC Startup Report; Vendor Startup
- DC1-COD-L3-CX-6035: Steps: EC Startup Report; Vendor Startup
- DC1-COD-L3-CX-6065: Steps: EC Startup Report; Vendor Startup
- DC1-COD-L3-CX-6095: Steps: EC Startup Report; Vendor Startup
- DC1-COD-L3-CX-6125: Steps: EC Startup Report; Vendor Startup
- DC1-COD-L3-CX-6155: Steps: EC Startup Report; Vendor Startup

| ID | WBS | Activity | Duration | Start | Finish | Predecessors | Total float | Free float | Layton Responsible Party | Vendor Responsible Party |
| --- | --- | --- | --- | --- | --- | --- | --- | --- | --- | --- |
|  | 02 | **DC1-DH1300-COD-C13-02 Cx L3** |  | 2026-05-07 | 2026-05-12 |  |  |  |  |  |
| DC1-COD-L3-CX-6175 |  | DC1-COD-C13-02 FTE | 1d | 2026-05-07 | 2026-05-07 | DC1-COD-L2-3570, DC1-ATS-L3-CX-6175 | 6d | 0d | Riley Warring | ROS |
| DC1-COD-L3-CX-6185 |  | DC1-COD-C13-02 L3 Startup | 2d | 2026-05-08 | 2026-05-11 | DC1-COD-L3-CX-6175 | 32d | 0d | Riley Warring | SIE |
| DC1-COD-L3-CX-6195 |  | DC1-COD-C13-02 BMS/EPMS | 1d | 2026-05-12 | 2026-05-12 | DC1-COD-L3-CX-6185 | 32d | 7d | Riley Warring | PRM |
|  | 03 | **DC1-DH1300-COD-C13-03 Cx L3** |  | 2026-05-07 | 2026-05-12 |  |  |  |  |  |
| DC1-COD-L3-CX-6205 |  | DC1-COD-C13-03 FTE | 1d | 2026-05-07 | 2026-05-07 | DC1-COD-L2-3580, DC1-ATS-L3-CX-6205 | 6d | 0d | Riley Warring | ROS |
| DC1-COD-L3-CX-6215 |  | DC1-COD-C13-03 L3 Startup | 2d | 2026-05-08 | 2026-05-11 | DC1-COD-L3-CX-6205 | 32d | 0d | Riley Warring | SIE |
| DC1-COD-L3-CX-6225 |  | DC1-COD-C13-03 BMS/EPMS | 1d | 2026-05-12 | 2026-05-12 | DC1-COD-L3-CX-6215 | 32d | 7d | Riley Warring | PRM |
|  | 04 | **DC1-DH1300-COD-C13-04 Cx L3** |  | 2026-05-07 | 2026-05-12 |  |  |  |  |  |
| DC1-COD-L3-CX-6235 |  | DC1-COD-C13-04 FTE | 1d | 2026-05-07 | 2026-05-07 | DC1-COD-L2-3590, DC1-ATS-L3-CX-6235 | 6d | 0d | Riley Warring | ROS |
| DC1-COD-L3-CX-6245 |  | DC1-COD-C13-04 L3 Startup | 2d | 2026-05-08 | 2026-05-11 | DC1-COD-L3-CX-6235 | 32d | 0d | Riley Warring | SIE |
| DC1-COD-L3-CX-6255 |  | DC1-COD-C13-04 BMS/EPMS | 1d | 2026-05-12 | 2026-05-12 | DC1-COD-L3-CX-6245 | 32d | 7d | Riley Warring | PRM |
|  | 05 | **DC1-DH1300-COD-C13-05 Cx L3** |  | 2026-05-07 | 2026-05-12 |  |  |  |  |  |
| DC1-COD-L3-CX-6265 |  | DC1-COD-C13-05 FTE | 1d | 2026-05-07 | 2026-05-07 | DC1-COD-L2-3600, DC1-ATS-L3-CX-6265 | 6d | 0d | Riley Warring | ROS |
| DC1-COD-L3-CX-6275 |  | DC1-COD-C13-05 L3 Startup | 2d | 2026-05-08 | 2026-05-11 | DC1-COD-L3-CX-6265 | 32d | 0d | Riley Warring | SIE |
| DC1-COD-L3-CX-6285 |  | DC1-COD-C13-05 BMS/EPMS | 1d | 2026-05-12 | 2026-05-12 | DC1-COD-L3-CX-6275 | 32d | 7d | Riley Warring | PRM |
|  | 06 | **DC1-DH1300-COD-C13-06 Cx L3** |  | 2026-05-07 | 2026-05-12 |  |  |  |  |  |
| DC1-COD-L3-CX-6295 |  | DC1-COD-C13-06 FTE | 1d | 2026-05-07 | 2026-05-07 | DC1-COD-L2-3610, DC1-ATS-L3-CX-6295 | 6d | 0d | Riley Warring | ROS |
| DC1-COD-L3-CX-6305 |  | DC1-COD-C13-06 L3 Startup | 2d | 2026-05-08 | 2026-05-11 | DC1-COD-L3-CX-6295 | 32d | 0d | Riley Warring | SIE |
| DC1-COD-L3-CX-6315 |  | DC1-COD-C13-06 BMS/EPMS | 1d | 2026-05-12 | 2026-05-12 | DC1-COD-L3-CX-6305 | 32d | 7d | Riley Warring | PRM |
|  | 04 | **DC1-DH1300-COD-D13 Cx L3** |  | 2026-05-07 | 2026-05-12 |  |  |  |  |  |
|  | 01 | **DC1-DH1300-COD-D13-01 Cx L3** |  | 2026-05-07 | 2026-05-12 |  |  |  |  |  |
| DC1-COD-L3-CX-6325 |  | DC1-COD-D13-01 FTE | 1d | 2026-05-07 | 2026-05-07 | DC1-COD-L2-3620, DC1-ATS-L3-CX-6325, QTS-1080.6 | 6d | 0d | Riley Warring | ROS |
| DC1-COD-L3-CX-6335 |  | DC1-COD-D13-01 L3 Startup | 2d | 2026-05-08 | 2026-05-11 | DC1-COD-L3-CX-6325 | 32d | 0d | Riley Warring | SIE |
| DC1-COD-L3-CX-6345 |  | DC1-COD-D13-01 BMS/EPMS | 1d | 2026-05-12 | 2026-05-12 | DC1-COD-L3-CX-6335 | 32d | 7d | Riley Warring | PRM |

Notes:
- DC1-COD-L3-CX-6185: Steps: EC Startup Report; Vendor Startup
- DC1-COD-L3-CX-6215: Steps: EC Startup Report; Vendor Startup
- DC1-COD-L3-CX-6245: Steps: EC Startup Report; Vendor Startup
- DC1-COD-L3-CX-6275: Steps: EC Startup Report; Vendor Startup
- DC1-COD-L3-CX-6305: Steps: EC Startup Report; Vendor Startup
- DC1-COD-L3-CX-6335: Steps: EC Startup Report; Vendor Startup

| ID | WBS | Activity | Duration | Start | Finish | Predecessors | Total float | Free float | Layton Responsible Party | Vendor Responsible Party |
| --- | --- | --- | --- | --- | --- | --- | --- | --- | --- | --- |
|  | 02 | **DC1-DH1300-COD-D13-02 Cx L3** |  | 2026-05-07 | 2026-05-12 |  |  |  |  |  |
| DC1-COD-L3-CX-6355 |  | DC1-COD-D13-02 FTE | 1d | 2026-05-07 | 2026-05-07 | DC1-COD-L2-3630, DC1-ATS-L3-CX-6355 | 6d | 0d | Riley Warring | ROS |
| DC1-COD-L3-CX-6365 |  | DC1-COD-D13-02 L3 Startup | 2d | 2026-05-08 | 2026-05-11 | DC1-COD-L3-CX-6355 | 32d | 0d | Riley Warring | SIE |
| DC1-COD-L3-CX-6375 |  | DC1-COD-D13-02 BMS/EPMS | 1d | 2026-05-12 | 2026-05-12 | DC1-COD-L3-CX-6365 | 32d | 7d | Riley Warring | PRM |
|  | 03 | **DC1-DH1300-COD-D13-03 Cx L3** |  | 2026-05-07 | 2026-05-12 |  |  |  |  |  |
| DC1-COD-L3-CX-6385 |  | DC1-COD-D13-03 FTE | 1d | 2026-05-07 | 2026-05-07 | DC1-COD-L2-3640, DC1-ATS-L3-CX-6385 | 6d | 0d | Riley Warring | ROS |
| DC1-COD-L3-CX-6395 |  | DC1-COD-D13-03 L3 Startup | 2d | 2026-05-08 | 2026-05-11 | DC1-COD-L3-CX-6385 | 32d | 0d | Riley Warring | SIE |
| DC1-COD-L3-CX-6405 |  | DC1-COD-D13-03 BMS/EPMS | 1d | 2026-05-12 | 2026-05-12 | DC1-COD-L3-CX-6395 | 32d | 7d | Riley Warring | PRM |
|  | 04 | **DC1-DH1300-COD-D13-04 Cx L3** |  | 2026-05-07 | 2026-05-12 |  |  |  |  |  |
| DC1-COD-L3-CX-6415 |  | DC1-COD-D13-04 FTE | 1d | 2026-05-07 | 2026-05-07 | DC1-COD-L2-3650, DC1-ATS-L3-CX-6415 | 6d | 0d | Riley Warring | ROS |
| DC1-COD-L3-CX-6425 |  | DC1-COD-D13-04 L3 Startup | 2d | 2026-05-08 | 2026-05-11 | DC1-COD-L3-CX-6415 | 32d | 0d | Riley Warring | SIE |
| DC1-COD-L3-CX-6435 |  | DC1-COD-D13-04 BMS/EPMS | 1d | 2026-05-12 | 2026-05-12 | DC1-COD-L3-CX-6425 | 32d | 7d | Riley Warring | PRM |
|  | 05 | **DC1-DH1300-COD-D13-05 Cx L3** |  | 2026-05-07 | 2026-05-12 |  |  |  |  |  |
| DC1-COD-L3-CX-6445 |  | DC1-COD-D13-05 FTE | 1d | 2026-05-07 | 2026-05-07 | DC1-COD-L2-3660, DC1-ATS-L3-CX-6445 | 6d | 0d | Riley Warring | ROS |
| DC1-COD-L3-CX-6455 |  | DC1-COD-D13-05 L3 Startup | 2d | 2026-05-08 | 2026-05-11 | DC1-COD-L3-CX-6445 | 32d | 0d | Riley Warring | SIE |
| DC1-COD-L3-CX-6465 |  | DC1-COD-D13-05 BMS/EPMS | 1d | 2026-05-12 | 2026-05-12 | DC1-COD-L3-CX-6455 | 32d | 7d | Riley Warring | PRM |
|  | 06 | **DC1-DH1300-COD-D13-06 Cx L3** |  | 2026-05-07 | 2026-05-12 |  |  |  |  |  |
| DC1-COD-L3-CX-6475 |  | DC1-COD-D13-06 FTE | 1d | 2026-05-07 | 2026-05-07 | DC1-COD-L2-3670, DC1-ATS-L3-CX-6475 | 6d | 0d | Riley Warring | ROS |
| DC1-COD-L3-CX-6485 |  | DC1-COD-D13-06 L3 Startup | 2d | 2026-05-08 | 2026-05-11 | DC1-COD-L3-CX-6475 | 32d | 0d | Riley Warring | SIE |
| DC1-COD-L3-CX-6495 |  | DC1-COD-D13-06 BMS/EPMS | 1d | 2026-05-12 | 2026-05-12 | DC1-COD-L3-CX-6485 | 32d | 7d | Riley Warring | PRM |
|  | 05 | **DC1-DH1300-COD-E13 Cx L3** |  | 2026-05-07 | 2026-05-12 |  |  |  |  |  |
|  | 01 | **DC1-DH1300-ATS-E13-01 Cx L3** |  | 2026-05-07 | 2026-05-12 |  |  |  |  |  |
| DC1-COD-L3-CX-6505 |  | DC1-COD-E13-01 FTE | 1d | 2026-05-07 | 2026-05-07 | DC1-COD-L2-3680, DC1-ATS-L3-CX-6505, QTS-1080.6 | 6d | 0d | Riley Warring | ROS |
| DC1-COD-L3-CX-6515 |  | DC1-COD-E13-01 L3 Startup | 2d | 2026-05-08 | 2026-05-11 | DC1-COD-L3-CX-6505 | 32d | 0d | Riley Warring | SIE |
| DC1-COD-L3-CX-6525 |  | DC1-COD-E13-01 BMS/EPMS | 1d | 2026-05-12 | 2026-05-12 | DC1-COD-L3-CX-6515 | 32d | 7d | Riley Warring | PRM |

Notes:
- DC1-COD-L3-CX-6365: Steps: EC Startup Report; Vendor Startup
- DC1-COD-L3-CX-6395: Steps: EC Startup Report; Vendor Startup
- DC1-COD-L3-CX-6425: Steps: EC Startup Report; Vendor Startup
- DC1-COD-L3-CX-6455: Steps: EC Startup Report; Vendor Startup
- DC1-COD-L3-CX-6485: Steps: EC Startup Report; Vendor Startup
- DC1-COD-L3-CX-6515: Steps: EC Startup Report; Vendor Startup

| ID | WBS | Activity | Duration | Start | Finish | Predecessors | Total float | Free float | Layton Responsible Party | Vendor Responsible Party |
| --- | --- | --- | --- | --- | --- | --- | --- | --- | --- | --- |
|  | 02 | **DC1-DH1300-ATS-E13-02 Cx L3** |  | 2026-05-07 | 2026-05-12 |  |  |  |  |  |
| DC1-COD-L3-CX-6535 |  | DC1-COD-E13-02 FTE | 1d | 2026-05-07 | 2026-05-07 | DC1-COD-L2-3690, DC1-ATS-L3-CX-6535 | 6d | 0d | Riley Warring | ROS |
| DC1-COD-L3-CX-6545 |  | DC1-COD-E13-02 L3 Startup | 2d | 2026-05-08 | 2026-05-11 | DC1-COD-L3-CX-6535 | 32d | 0d | Riley Warring | SIE |
| DC1-COD-L3-CX-6555 |  | DC1-COD-E13-02 BMS/EPMS | 1d | 2026-05-12 | 2026-05-12 | DC1-COD-L3-CX-6545 | 32d | 7d | Riley Warring | PRM |
|  | 03 | **DC1-DH1300-ATS-E13-03 Cx L3** |  | 2026-05-07 | 2026-05-12 |  |  |  |  |  |
| DC1-COD-L3-CX-6565 |  | DC1-COD-E13-03 FTE | 1d | 2026-05-07 | 2026-05-07 | DC1-COD-L2-3700, DC1-ATS-L3-CX-6565 | 6d | 0d | Riley Warring | ROS |
| DC1-COD-L3-CX-6575 |  | DC1-COD-E13-03 L3 Startup | 2d | 2026-05-08 | 2026-05-11 | DC1-COD-L3-CX-6565 | 32d | 0d | Riley Warring | SIE |
| DC1-COD-L3-CX-6585 |  | DC1-COD-E13-03 BMS/EPMS | 1d | 2026-05-12 | 2026-05-12 | DC1-COD-L3-CX-6575 | 32d | 7d | Riley Warring | PRM |
|  | 04 | **DC1-DH1300-ATS-E13-04 Cx L3** |  | 2026-05-07 | 2026-05-12 |  |  |  |  |  |
| DC1-COD-L3-CX-6595 |  | DC1-COD-E13-04 FTE | 1d | 2026-05-07 | 2026-05-07 | DC1-COD-L2-3710, DC1-ATS-L3-CX-6595 | 6d | 0d | Riley Warring | ROS |
| DC1-COD-L3-CX-6605 |  | DC1-COD-E13-04 L3 Startup | 2d | 2026-05-08 | 2026-05-11 | DC1-COD-L3-CX-6595 | 32d | 0d | Riley Warring | SIE |
| DC1-COD-L3-CX-6615 |  | DC1-COD-E13-04 BMS/EPMS | 1d | 2026-05-12 | 2026-05-12 | DC1-COD-L3-CX-6605 | 32d | 7d | Riley Warring | PRM |
|  | 05 | **DC1-DH1300-ATS-E13-05 Cx L3** |  | 2026-05-07 | 2026-05-12 |  |  |  |  |  |
| DC1-COD-L3-CX-6625 |  | DC1-COD-E13-05 FTE | 1d | 2026-05-07 | 2026-05-07 | DC1-COD-L2-3720, DC1-ATS-L3-CX-6625 | 6d | 0d | Riley Warring | ROS |
| DC1-COD-L3-CX-6635 |  | DC1-COD-E13-05 L3 Startup | 2d | 2026-05-08 | 2026-05-11 | DC1-COD-L3-CX-6625 | 32d | 0d | Riley Warring | SIE |
| DC1-COD-L3-CX-6645 |  | DC1-COD-E13-05 BMS/EPMS | 1d | 2026-05-12 | 2026-05-12 | DC1-COD-L3-CX-6635 | 32d | 7d | Riley Warring | PRM |
|  | 06 | **DC1-DH1300-ATS-E13-06 Cx L3** |  | 2026-05-07 | 2026-05-12 |  |  |  |  |  |
| DC1-COD-L3-CX-6655 |  | DC1-COD-E13-06 FTE | 1d | 2026-05-07 | 2026-05-07 | DC1-COD-L2-3730, DC1-ATS-L3-CX-6655 | 6d | 0d | Riley Warring | ROS |
| DC1-COD-L3-CX-6665 |  | DC1-COD-E13-06 L3 Startup | 2d | 2026-05-08 | 2026-05-11 | DC1-COD-L3-CX-6655 | 32d | 0d | Riley Warring | SIE |
| DC1-COD-L3-CX-6675 |  | DC1-COD-E13-06 BMS/EPMS | 1d | 2026-05-12 | 2026-05-12 | DC1-COD-L3-CX-6665 | 32d | 7d | Riley Warring | PRM |
|  | 06 | **DC1-DH1300-COD-F13 Cx L3** |  | 2026-05-07 | 2026-05-12 |  |  |  |  |  |
|  | 01 | **DC1-DH1300-COD-F13-01 Cx L3** |  | 2026-05-07 | 2026-05-12 |  |  |  |  |  |
| DC1-COD-L3-CX-6685 |  | DC1-COD-F13-01 FTE | 1d | 2026-05-07 | 2026-05-07 | DC1-COD-L2-3740, DC1-ATS-L3-CX-6685, QTS-1080.6 | 6d | 0d | Riley Warring | ROS |
| DC1-COD-L3-CX-6695 |  | DC1-COD-F13-01 L3 Startup | 2d | 2026-05-08 | 2026-05-11 | DC1-COD-L3-CX-6685 | 32d | 0d | Riley Warring | SIE |
| DC1-COD-L3-CX-6705 |  | DC1-COD-F13-01 BMS/EPMS | 1d | 2026-05-12 | 2026-05-12 | DC1-COD-L3-CX-6695 | 32d | 7d | Riley Warring | PRM |

Notes:
- DC1-COD-L3-CX-6545: Steps: EC Startup Report; Vendor Startup
- DC1-COD-L3-CX-6575: Steps: EC Startup Report; Vendor Startup
- DC1-COD-L3-CX-6605: Steps: EC Startup Report; Vendor Startup
- DC1-COD-L3-CX-6635: Steps: EC Startup Report; Vendor Startup
- DC1-COD-L3-CX-6665: Steps: EC Startup Report; Vendor Startup
- DC1-COD-L3-CX-6695: Steps: EC Startup Report; Vendor Startup

| ID | WBS | Activity | Duration | Start | Finish | Predecessors | Total float | Free float | Layton Responsible Party | Vendor Responsible Party |
| --- | --- | --- | --- | --- | --- | --- | --- | --- | --- | --- |
|  | 02 | **DC1-DH1300-COD-F13-02 Cx L3** |  | 2026-05-07 | 2026-05-12 |  |  |  |  |  |
| DC1-COD-L3-CX-6715 |  | DC1-COD-F13-02 FTE | 1d | 2026-05-07 | 2026-05-07 | DC1-COD-L2-3750, DC1-ATS-L3-CX-6715 | 6d | 0d | Riley Warring | ROS |
| DC1-COD-L3-CX-6725 |  | DC1-COD-F13-02 L3 Startup | 2d | 2026-05-08 | 2026-05-11 | DC1-COD-L3-CX-6715 | 32d | 0d | Riley Warring | SIE |
| DC1-COD-L3-CX-6735 |  | DC1-COD-F13-02 BMS/EPMS | 1d | 2026-05-12 | 2026-05-12 | DC1-COD-L3-CX-6725 | 32d | 7d | Riley Warring | PRM |
|  | 03 | **DC1-DH1300-COD-F13-03 Cx L3** |  | 2026-05-07 | 2026-05-12 |  |  |  |  |  |
| DC1-COD-L3-CX-6745 |  | DC1-COD-F13-03 FTE | 1d | 2026-05-07 | 2026-05-07 | DC1-COD-L2-3760, DC1-ATS-L3-CX-6745 | 6d | 0d | Riley Warring | ROS |
| DC1-COD-L3-CX-6755 |  | DC1-COD-F13-03 L3 Startup | 2d | 2026-05-08 | 2026-05-11 | DC1-COD-L3-CX-6745 | 32d | 0d | Riley Warring | SIE |
| DC1-COD-L3-CX-6765 |  | DC1-COD-F13-03 BMS/EPMS | 1d | 2026-05-12 | 2026-05-12 | DC1-COD-L3-CX-6755 | 32d | 7d | Riley Warring | PRM |
|  | 04 | **DC1-DH1300-COD-F13-04 Cx L3** |  | 2026-05-07 | 2026-05-12 |  |  |  |  |  |
| DC1-COD-L3-CX-6775 |  | DC1-COD-F13-04 FTE | 1d | 2026-05-07 | 2026-05-07 | DC1-COD-L2-3770, DC1-ATS-L3-CX-6775 | 6d | 0d | Riley Warring | ROS |
| DC1-COD-L3-CX-6785 |  | DC1-COD-F13-04 L3 Startup | 2d | 2026-05-08 | 2026-05-11 | DC1-COD-L3-CX-6775 | 32d | 0d | Riley Warring | SIE |
| DC1-COD-L3-CX-6795 |  | DC1-COD-F13-04 BMS/EPMS | 1d | 2026-05-12 | 2026-05-12 | DC1-COD-L3-CX-6785 | 32d | 7d | Riley Warring | PRM |
|  | 05 | **DC1-DH1300-COD-F13-05 Cx L3** |  | 2026-05-07 | 2026-05-12 |  |  |  |  |  |
| DC1-COD-L3-CX-6805 |  | DC1-COD-F13-05 FTE | 1d | 2026-05-07 | 2026-05-07 | DC1-COD-L2-3780, DC1-ATS-L3-CX-6805 | 6d | 0d | Riley Warring | ROS |
| DC1-COD-L3-CX-6815 |  | DC1-COD-F13-05 L3 Startup | 2d | 2026-05-08 | 2026-05-11 | DC1-COD-L3-CX-6805 | 32d | 0d | Riley Warring | SIE |
| DC1-COD-L3-CX-6825 |  | DC1-COD-F13-05 BMS/EPMS | 1d | 2026-05-12 | 2026-05-12 | DC1-COD-L3-CX-6815 | 32d | 7d | Riley Warring | PRM |
|  | 06 | **DC1-DH1300-COD-F13-06 Cx L3** |  | 2026-05-07 | 2026-05-12 |  |  |  |  |  |
| DC1-COD-L3-CX-6835 |  | DC1-COD-F13-06 FTE | 1d | 2026-05-07 | 2026-05-07 | DC1-COD-L2-3790, DC1-ATS-L3-CX-6835 | 6d | 0d | Riley Warring | ROS |
| DC1-COD-L3-CX-6845 |  | DC1-COD-F13-06 L3 Startup | 2d | 2026-05-08 | 2026-05-11 | DC1-COD-L3-CX-6835 | 32d | 0d | Riley Warring | SIE |
| DC1-COD-L3-CX-6855 |  | DC1-COD-F13-06 BMS/EPMS | 1d | 2026-05-12 | 2026-05-12 | DC1-COD-L3-CX-6845 | 32d | 7d | Riley Warring | PRM |
|  | 07 | **DC1-DH1300 RPPs Cx L3** |  | 2026-05-08 | 2026-05-13 |  |  |  |  |  |
|  | 01 | **DC1-DH1300-RPP-A13 Cx L3** |  | 2026-05-08 | 2026-05-13 |  |  |  |  |  |
|  | 01 | **DC1-DH1300-RPP-A13-01 Cx L3** |  | 2026-05-08 | 2026-05-13 |  |  |  |  |  |
| DC1-RPP-L3-CX-5785 |  | DC1-RPP-A13-01 A/B FTE | 1d | 2026-05-08 | 2026-05-08 | DC1-RPP-L2-3440, DC1-COD-L3-CX-5785 | 6d | 0d | Riley Warring | ROS |
| DC1-RPP-L3-CX-5795 |  | DC1-RPP-A13-01 A/B L3 Startup | 2d | 2026-05-11 | 2026-05-12 | DC1-RPP-L3-CX-5785 | 53d | 0d | Riley Warring | SQD |
| DC1-RPP-L3-CX-5805 |  | DC1-RPP-A13-01 A/B BMS/EPMS | 1d | 2026-05-13 | 2026-05-13 | DC1-RPP-L3-CX-5795 | 53d | 18d | Riley Warring | PRM |

Notes:
- DC1-COD-L3-CX-6725: Steps: EC Startup Report; Vendor Startup
- DC1-COD-L3-CX-6755: Steps: EC Startup Report; Vendor Startup
- DC1-COD-L3-CX-6785: Steps: EC Startup Report; Vendor Startup
- DC1-COD-L3-CX-6815: Steps: EC Startup Report; Vendor Startup
- DC1-COD-L3-CX-6845: Steps: EC Startup Report; Vendor Startup
- DC1-RPP-L3-CX-5795: Steps: EC Startup Report; Vendor Startup

| ID | WBS | Activity | Duration | Start | Finish | Predecessors | Total float | Free float | Layton Responsible Party | Vendor Responsible Party |
| --- | --- | --- | --- | --- | --- | --- | --- | --- | --- | --- |
|  | 02 | **DC1-DH1300-RPP-A13-02 Cx L3** |  | 2026-05-08 | 2026-05-13 |  |  |  |  |  |
| DC1-RPP-L3-CX-5815 |  | DC1-RPP-A13-02 A/B FTE | 1d | 2026-05-08 | 2026-05-08 | DC1-RPP-L2-3450, DC1-COD-L3-CX-5815 | 6d | 0d | Riley Warring | ROS |
| DC1-RPP-L3-CX-5825 |  | DC1-RPP-A13-02 A/B L3 Startup | 2d | 2026-05-11 | 2026-05-12 | DC1-RPP-L3-CX-5815 | 53d | 0d | Riley Warring | SQD |
| DC1-RPP-L3-CX-5835 |  | DC1-RPP-A13-02 A/B BMS/EPMS | 1d | 2026-05-13 | 2026-05-13 | DC1-RPP-L3-CX-5825 | 53d | 18d | Riley Warring | PRM |
|  | 03 | **DC1-DH1300-RPP-A13-03 Cx L3** |  | 2026-05-08 | 2026-05-13 |  |  |  |  |  |
| DC1-RPP-L3-CX-5845 |  | DC1-RPP-A13-03 A/B FTE | 1d | 2026-05-08 | 2026-05-08 | DC1-RPP-L2-3460, DC1-COD-L3-CX-5845 | 6d | 0d | Riley Warring | ROS |
| DC1-RPP-L3-CX-5855 |  | DC1-RPP-A13-03 A/B L3 Startup | 2d | 2026-05-11 | 2026-05-12 | DC1-RPP-L3-CX-5845 | 53d | 0d | Riley Warring | SQD |
| DC1-RPP-L3-CX-5865 |  | DC1-RPP-A13-03 A/B BMS/EPMS | 1d | 2026-05-13 | 2026-05-13 | DC1-RPP-L3-CX-5855 | 53d | 18d | Riley Warring | PRM |
|  | 04 | **DC1-DH1300-RPP-A13-04 Cx L3** |  | 2026-05-08 | 2026-05-13 |  |  |  |  |  |
| DC1-RPP-L3-CX-5875 |  | DC1-RPP-A13-04 A/B FTE | 1d | 2026-05-08 | 2026-05-08 | DC1-RPP-L2-3470, DC1-COD-L3-CX-5875 | 6d | 0d | Riley Warring | ROS |
| DC1-RPP-L3-CX-5885 |  | DC1-RPP-A13-04 A/B L3 Startup | 2d | 2026-05-11 | 2026-05-12 | DC1-RPP-L3-CX-5875 | 53d | 0d | Riley Warring | SQD |
| DC1-RPP-L3-CX-5895 |  | DC1-RPP-A13-04 A/B BMS/EPMS | 1d | 2026-05-13 | 2026-05-13 | DC1-RPP-L3-CX-5885 | 53d | 18d | Riley Warring | PRM |
|  | 05 | **DC1-DH1300-RPP-A13-05 Cx L3** |  | 2026-05-08 | 2026-05-13 |  |  |  |  |  |
| DC1-RPP-L3-CX-5905 |  | DC1-RPP-A13-05 A/B FTE | 1d | 2026-05-08 | 2026-05-08 | DC1-RPP-L2-3480, DC1-COD-L3-CX-5905 | 6d | 0d | Riley Warring | ROS |
| DC1-RPP-L3-CX-5915 |  | DC1-RPP-A13-05 A/B L3 Startup | 2d | 2026-05-11 | 2026-05-12 | DC1-RPP-L3-CX-5905 | 53d | 0d | Riley Warring | SQD |
| DC1-RPP-L3-CX-5925 |  | DC1-RPP-A13-05 A/B BMS/EPMS | 1d | 2026-05-13 | 2026-05-13 | DC1-RPP-L3-CX-5915 | 53d | 18d | Riley Warring | PRM |
|  | 06 | **DC1-DH1300-RPP-A13-06 Cx L3** |  | 2026-05-08 | 2026-05-13 |  |  |  |  |  |
| DC1-RPP-L3-CX-5935 |  | DC1-RPP-A13-06 A/B FTE | 1d | 2026-05-08 | 2026-05-08 | DC1-RPP-L2-3490, DC1-COD-L3-CX-5935 | 6d | 0d | Riley Warring | ROS |
| DC1-RPP-L3-CX-5945 |  | DC1-RPP-A13-06 A/B L3 Startup | 2d | 2026-05-11 | 2026-05-12 | DC1-RPP-L3-CX-5935 | 53d | 0d | Riley Warring | SQD |
| DC1-RPP-L3-CX-5955 |  | DC1-RPP-A13-06 A/B BMS/EPMS | 1d | 2026-05-13 | 2026-05-13 | DC1-RPP-L3-CX-5945 | 53d | 18d | Riley Warring | PRM |
|  | 02 | **DC1-DH1300-RPP-B13 Cx L3** |  | 2026-05-08 | 2026-05-13 |  |  |  |  |  |
|  | 01 | **DC1-DH1300-RPP-B13-01 Cx L3** |  | 2026-05-08 | 2026-05-13 |  |  |  |  |  |
| DC1-RPP-L3-CX-5965 |  | DC1-RPP-B13-01 A/B FTE | 1d | 2026-05-08 | 2026-05-08 | DC1-RPP-L2-3500, DC1-COD-L3-CX-5965 | 6d | 0d | Riley Warring | ROS |
| DC1-RPP-L3-CX-5975 |  | DC1-RPP-B13-01 A/B L3 Startup | 2d | 2026-05-11 | 2026-05-12 | DC1-RPP-L3-CX-5965 | 53d | 0d | Riley Warring | SQD |
| DC1-RPP-L3-CX-5985 |  | DC1-RPP-B13-01 A/B BMS/EPMS | 1d | 2026-05-13 | 2026-05-13 | DC1-RPP-L3-CX-5975 | 53d | 18d | Riley Warring | PRM |

Notes:
- DC1-RPP-L3-CX-5825: Steps: EC Startup Report; Vendor Startup
- DC1-RPP-L3-CX-5855: Steps: EC Startup Report; Vendor Startup
- DC1-RPP-L3-CX-5885: Steps: EC Startup Report; Vendor Startup
- DC1-RPP-L3-CX-5915: Steps: EC Startup Report; Vendor Startup
- DC1-RPP-L3-CX-5945: Steps: EC Startup Report; Vendor Startup
- DC1-RPP-L3-CX-5975: Steps: EC Startup Report; Vendor Startup

| ID | WBS | Activity | Duration | Start | Finish | Predecessors | Total float | Free float | Layton Responsible Party | Vendor Responsible Party |
| --- | --- | --- | --- | --- | --- | --- | --- | --- | --- | --- |
|  | 02 | **DC1-DH1300-RPP-B13-02 Cx L3** |  | 2026-05-08 | 2026-05-13 |  |  |  |  |  |
| DC1-RPP-L3-CX-5995 |  | DC1-RPP-B13-02 A/B FTE | 1d | 2026-05-08 | 2026-05-08 | DC1-RPP-L2-3510, DC1-COD-L3-CX-5995 | 6d | 0d | Riley Warring | ROS |
| DC1-RPP-L3-CX-6005 |  | DC1-RPP-B13-02 A/B L3 Startup | 2d | 2026-05-11 | 2026-05-12 | DC1-RPP-L3-CX-5995 | 53d | 0d | Riley Warring | SQD |
| DC1-RPP-L3-CX-6015 |  | DC1-RPP-B13-02 A/B BMS/EPMS | 1d | 2026-05-13 | 2026-05-13 | DC1-RPP-L3-CX-6005 | 53d | 18d | Riley Warring | PRM |
|  | 03 | **DC1-DH1300-RPP-B13-03 Cx L3** |  | 2026-05-08 | 2026-05-13 |  |  |  |  |  |
| DC1-RPP-L3-CX-6025 |  | DC1-RPP-B13-03 A/B FTE | 1d | 2026-05-08 | 2026-05-08 | DC1-RPP-L2-3520, DC1-COD-L3-CX-6025 | 6d | 0d | Riley Warring | ROS |
| DC1-RPP-L3-CX-6035 |  | DC1-RPP-B13-03 A/B L3 Startup | 2d | 2026-05-11 | 2026-05-12 | DC1-RPP-L3-CX-6025 | 53d | 0d | Riley Warring | SQD |
| DC1-RPP-L3-CX-6045 |  | DC1-RPP-B13-03 A/B BMS/EPMS | 1d | 2026-05-13 | 2026-05-13 | DC1-RPP-L3-CX-6035 | 53d | 18d | Riley Warring | PRM |
|  | 04 | **DC1-DH1300-RPP-B13-04 Cx L3** |  | 2026-05-08 | 2026-05-13 |  |  |  |  |  |
| DC1-RPP-L3-CX-6055 |  | DC1-RPP-B13-04 A/B FTE | 1d | 2026-05-08 | 2026-05-08 | DC1-RPP-L2-3530, DC1-COD-L3-CX-6055 | 6d | 0d | Riley Warring | ROS |
| DC1-RPP-L3-CX-6065 |  | DC1-RPP-B13-04 A/B L3 Startup | 2d | 2026-05-11 | 2026-05-12 | DC1-RPP-L3-CX-6055 | 53d | 0d | Riley Warring | SQD |
| DC1-RPP-L3-CX-6075 |  | DC1-RPP-B13-04 A/B BMS/EPMS | 1d | 2026-05-13 | 2026-05-13 | DC1-RPP-L3-CX-6065 | 53d | 18d | Riley Warring | PRM |
|  | 05 | **DC1-DH1300-RPP-B13-05 Cx L3** |  | 2026-05-08 | 2026-05-13 |  |  |  |  |  |
| DC1-RPP-L3-CX-6085 |  | DC1-RPP-B13-05 A/B FTE | 1d | 2026-05-08 | 2026-05-08 | DC1-RPP-L2-3540, DC1-COD-L3-CX-6085 | 6d | 0d | Riley Warring | ROS |
| DC1-RPP-L3-CX-6095 |  | DC1-RPP-B13-05 A/B L3 Startup | 2d | 2026-05-11 | 2026-05-12 | DC1-RPP-L3-CX-6085 | 53d | 0d | Riley Warring | SQD |
| DC1-RPP-L3-CX-6105 |  | DC1-RPP-B13-05 A/B BMS/EPMS | 1d | 2026-05-13 | 2026-05-13 | DC1-RPP-L3-CX-6095 | 53d | 18d | Riley Warring | PRM |
|  | 06 | **DC1-DH1300-RPP-B13-06 Cx L3** |  | 2026-05-08 | 2026-05-13 |  |  |  |  |  |
| DC1-RPP-L3-CX-6115 |  | DC1-RPP-B13-06 A/B FTE | 1d | 2026-05-08 | 2026-05-08 | DC1-RPP-L2-3550, DC1-COD-L3-CX-6115 | 6d | 0d | Riley Warring | ROS |
| DC1-RPP-L3-CX-6125 |  | DC1-RPP-B13-06 A/B L3 Startup | 2d | 2026-05-11 | 2026-05-12 | DC1-RPP-L3-CX-6115 | 53d | 0d | Riley Warring | SQD |
| DC1-RPP-L3-CX-6135 |  | DC1-RPP-B13-06 A/B BMS/EPMS | 1d | 2026-05-13 | 2026-05-13 | DC1-RPP-L3-CX-6125 | 53d | 18d | Riley Warring | PRM |
|  | 03 | **DC1-DH1300-RPP-C13 Cx L3** |  | 2026-05-08 | 2026-05-13 |  |  |  |  |  |
|  | 01 | **DC1-DH1300-RPP-C13-01 Cx L3** |  | 2026-05-08 | 2026-05-13 |  |  |  |  |  |
| DC1-RPP-L3-CX-6145 |  | DC1-RPP-C13-01 A/B FTE | 1d | 2026-05-08 | 2026-05-08 | DC1-RPP-L2-3560, DC1-COD-L3-CX-6145 | 6d | 0d | Riley Warring | ROS |
| DC1-RPP-L3-CX-6155 |  | DC1-RPP-C13-01 A/B L3 Startup | 2d | 2026-05-11 | 2026-05-12 | DC1-RPP-L3-CX-6145 | 53d | 0d | Riley Warring | SQD |
| DC1-RPP-L3-CX-6165 |  | DC1-RPP-C13-01 A/B BMS/EPMS | 1d | 2026-05-13 | 2026-05-13 | DC1-RPP-L3-CX-6155 | 53d | 18d | Riley Warring | PRM |

Notes:
- DC1-RPP-L3-CX-6005: Steps: EC Startup Report; Vendor Startup
- DC1-RPP-L3-CX-6035: Steps: EC Startup Report; Vendor Startup
- DC1-RPP-L3-CX-6065: Steps: EC Startup Report; Vendor Startup
- DC1-RPP-L3-CX-6095: Steps: EC Startup Report; Vendor Startup
- DC1-RPP-L3-CX-6125: Steps: EC Startup Report; Vendor Startup
- DC1-RPP-L3-CX-6155: Steps: EC Startup Report; Vendor Startup

| ID | WBS | Activity | Duration | Start | Finish | Predecessors | Total float | Free float | Layton Responsible Party | Vendor Responsible Party |
| --- | --- | --- | --- | --- | --- | --- | --- | --- | --- | --- |
|  | 02 | **DC1-DH1300-RPP-C13-02 Cx L3** |  | 2026-05-08 | 2026-05-13 |  |  |  |  |  |
| DC1-RPP-L3-CX-6175 |  | DC1-RPP-C13-02 A/B FTE | 1d | 2026-05-08 | 2026-05-08 | DC1-RPP-L2-3570, DC1-COD-L3-CX-6175 | 6d | 0d | Riley Warring | ROS |
| DC1-RPP-L3-CX-6185 |  | DC1-RPP-C13-02 A/B L3 Startup | 2d | 2026-05-11 | 2026-05-12 | DC1-RPP-L3-CX-6175 | 53d | 0d | Riley Warring | SQD |
| DC1-RPP-L3-CX-6195 |  | DC1-RPP-C13-02 A/B BMS/EPMS | 1d | 2026-05-13 | 2026-05-13 | DC1-RPP-L3-CX-6185 | 53d | 18d | Riley Warring | PRM |
|  | 03 | **DC1-DH1300-RPP-C13-03 Cx L3** |  | 2026-05-08 | 2026-05-13 |  |  |  |  |  |
| DC1-RPP-L3-CX-6205 |  | DC1-RPP-C13-03 A/B FTE | 1d | 2026-05-08 | 2026-05-08 | DC1-RPP-L2-3580, DC1-COD-L3-CX-6205 | 6d | 0d | Riley Warring | ROS |
| DC1-RPP-L3-CX-6215 |  | DC1-RPP-C13-03 A/B L3 Startup | 2d | 2026-05-11 | 2026-05-12 | DC1-RPP-L3-CX-6205 | 53d | 0d | Riley Warring | SQD |
| DC1-RPP-L3-CX-6225 |  | DC1-RPP-C13-03 A/B BMS/EPMS | 1d | 2026-05-13 | 2026-05-13 | DC1-RPP-L3-CX-6215 | 53d | 18d | Riley Warring | PRM |
|  | 04 | **DC1-DH1300-RPP-C13-04 Cx L3** |  | 2026-05-08 | 2026-05-13 |  |  |  |  |  |
| DC1-RPP-L3-CX-6235 |  | DC1-RPP-C13-04 A/B FTE | 1d | 2026-05-08 | 2026-05-08 | DC1-RPP-L2-3590, DC1-COD-L3-CX-6235 | 6d | 0d | Riley Warring | ROS |
| DC1-RPP-L3-CX-6245 |  | DC1-RPP-C13-04 A/B L3 Startup | 2d | 2026-05-11 | 2026-05-12 | DC1-RPP-L3-CX-6235 | 53d | 0d | Riley Warring | SQD |
| DC1-RPP-L3-CX-6255 |  | DC1-RPP-C13-04 A/B BMS/EPMS | 1d | 2026-05-13 | 2026-05-13 | DC1-RPP-L3-CX-6245 | 53d | 18d | Riley Warring | PRM |
|  | 05 | **DC1-DH1300-RPP-C13-05 Cx L3** |  | 2026-05-08 | 2026-05-13 |  |  |  |  |  |
| DC1-RPP-L3-CX-6265 |  | DC1-RPP-C13-05 A/B FTE | 1d | 2026-05-08 | 2026-05-08 | DC1-RPP-L2-3600, DC1-COD-L3-CX-6265 | 6d | 0d | Riley Warring | ROS |
| DC1-RPP-L3-CX-6275 |  | DC1-RPP-C13-05 A/B L3 Startup | 2d | 2026-05-11 | 2026-05-12 | DC1-RPP-L3-CX-6265 | 53d | 0d | Riley Warring | SQD |
| DC1-RPP-L3-CX-6285 |  | DC1-RPP-C13-05 A/B BMS/EPMS | 1d | 2026-05-13 | 2026-05-13 | DC1-RPP-L3-CX-6275 | 53d | 18d | Riley Warring | PRM |
|  | 06 | **DC1-DH1300-RPP-C13-06 Cx L3** |  | 2026-05-08 | 2026-05-13 |  |  |  |  |  |
| DC1-RPP-L3-CX-6295 |  | DC1-RPP-C13-06 A/B FTE | 1d | 2026-05-08 | 2026-05-08 | DC1-RPP-L2-3610, DC1-COD-L3-CX-6295 | 6d | 0d | Riley Warring | ROS |
| DC1-RPP-L3-CX-6305 |  | DC1-RPP-C13-06 A/B L3 Startup | 2d | 2026-05-11 | 2026-05-12 | DC1-RPP-L3-CX-6295 | 53d | 0d | Riley Warring | SQD |
| DC1-RPP-L3-CX-6315 |  | DC1-RPP-C13-06 A/B BMS/EPMS | 1d | 2026-05-13 | 2026-05-13 | DC1-RPP-L3-CX-6305 | 53d | 18d | Riley Warring | PRM |
|  | 04 | **DC1-DH1300-RPP-D13 Cx L3** |  | 2026-05-08 | 2026-05-13 |  |  |  |  |  |
|  | 01 | **DC1-DH1300-RPP-D13-01 Cx L3** |  | 2026-05-08 | 2026-05-13 |  |  |  |  |  |
| DC1-RPP-L3-CX-6325 |  | DC1-RPP-D13-01 A/B FTE | 1d | 2026-05-08 | 2026-05-08 | DC1-RPP-L2-3620, DC1-COD-L3-CX-6325 | 6d | 0d | Riley Warring | ROS |
| DC1-RPP-L3-CX-6335 |  | DC1-RPP-D13-01 A/B L3 Startup | 2d | 2026-05-11 | 2026-05-12 | DC1-RPP-L3-CX-6325 | 53d | 0d | Riley Warring | SQD |
| DC1-RPP-L3-CX-6345 |  | DC1-RPP-D13-01 A/B BMS/EPMS | 1d | 2026-05-13 | 2026-05-13 | DC1-RPP-L3-CX-6335 | 53d | 18d | Riley Warring | PRM |

Notes:
- DC1-RPP-L3-CX-6185: Steps: EC Startup Report; Vendor Startup
- DC1-RPP-L3-CX-6215: Steps: EC Startup Report; Vendor Startup
- DC1-RPP-L3-CX-6245: Steps: EC Startup Report; Vendor Startup
- DC1-RPP-L3-CX-6275: Steps: EC Startup Report; Vendor Startup
- DC1-RPP-L3-CX-6305: Steps: EC Startup Report; Vendor Startup
- DC1-RPP-L3-CX-6335: Steps: EC Startup Report; Vendor Startup

| ID | WBS | Activity | Duration | Start | Finish | Predecessors | Total float | Free float | Layton Responsible Party | Vendor Responsible Party |
| --- | --- | --- | --- | --- | --- | --- | --- | --- | --- | --- |
|  | 02 | **DC1-DH1300-RPP-D13-02 Cx L3** |  | 2026-05-08 | 2026-05-13 |  |  |  |  |  |
| DC1-RPP-L3-CX-6355 |  | DC1-RPP-D13-02 A/B FTE | 1d | 2026-05-08 | 2026-05-08 | DC1-RPP-L2-3630, DC1-COD-L3-CX-6355 | 6d | 0d | Riley Warring | ROS |
| DC1-RPP-L3-CX-6365 |  | DC1-RPP-D13-02 A/B L3 Startup | 2d | 2026-05-11 | 2026-05-12 | DC1-RPP-L3-CX-6355 | 53d | 0d | Riley Warring | SQD |
| DC1-RPP-L3-CX-6375 |  | DC1-RPP-D13-02 A/B BMS/EPMS | 1d | 2026-05-13 | 2026-05-13 | DC1-RPP-L3-CX-6365 | 53d | 18d | Riley Warring | PRM |
|  | 03 | **DC1-DH1300-RPP-D13-03 Cx L3** |  | 2026-05-08 | 2026-05-13 |  |  |  |  |  |
| DC1-RPP-L3-CX-6385 |  | DC1-RPP-D13-03 A/B FTE | 1d | 2026-05-08 | 2026-05-08 | DC1-RPP-L2-3640, DC1-COD-L3-CX-6385 | 6d | 0d | Riley Warring | ROS |
| DC1-RPP-L3-CX-6395 |  | DC1-RPP-D13-03 A/B L3 Startup | 2d | 2026-05-11 | 2026-05-12 | DC1-RPP-L3-CX-6385 | 53d | 0d | Riley Warring | SQD |
| DC1-RPP-L3-CX-6405 |  | DC1-RPP-D13-03 A/B BMS/EPMS | 1d | 2026-05-13 | 2026-05-13 | DC1-RPP-L3-CX-6395 | 53d | 18d | Riley Warring | PRM |
|  | 04 | **DC1-DH1300-RPP-D13-04 Cx L3** |  | 2026-05-08 | 2026-05-13 |  |  |  |  |  |
| DC1-RPP-L3-CX-6415 |  | DC1-RPP-D13-04 A/B FTE | 1d | 2026-05-08 | 2026-05-08 | DC1-RPP-L2-3650, DC1-COD-L3-CX-6415 | 6d | 0d | Riley Warring | ROS |
| DC1-RPP-L3-CX-6425 |  | DC1-RPP-D13-04 A/B L3 Startup | 2d | 2026-05-11 | 2026-05-12 | DC1-RPP-L3-CX-6415 | 53d | 0d | Riley Warring | SQD |
| DC1-RPP-L3-CX-6435 |  | DC1-RPP-D13-04 A/B BMS/EPMS | 1d | 2026-05-13 | 2026-05-13 | DC1-RPP-L3-CX-6425 | 53d | 18d | Riley Warring | PRM |
|  | 05 | **DC1-DH1300-RPP-D13-05 Cx L3** |  | 2026-05-08 | 2026-05-13 |  |  |  |  |  |
| DC1-RPP-L3-CX-6445 |  | DC1-RPP-D13-05 A/B FTE | 1d | 2026-05-08 | 2026-05-08 | DC1-RPP-L2-3660, DC1-COD-L3-CX-6445 | 6d | 0d | Riley Warring | ROS |
| DC1-RPP-L3-CX-6455 |  | DC1-RPP-D13-05 A/B L3 Startup | 2d | 2026-05-11 | 2026-05-12 | DC1-RPP-L3-CX-6445 | 53d | 0d | Riley Warring | SQD |
| DC1-RPP-L3-CX-6465 |  | DC1-RPP-D13-05 A/B BMS/EPMS | 1d | 2026-05-13 | 2026-05-13 | DC1-RPP-L3-CX-6455 | 53d | 18d | Riley Warring | PRM |
|  | 06 | **DC1-DH1300-RPP-D13-06 Cx L3** |  | 2026-05-08 | 2026-05-13 |  |  |  |  |  |
| DC1-RPP-L3-CX-6475 |  | DC1-RPP-D13-06 A/B FTE | 1d | 2026-05-08 | 2026-05-08 | DC1-RPP-L2-3670, DC1-COD-L3-CX-6475 | 6d | 0d | Riley Warring | ROS |
| DC1-RPP-L3-CX-6485 |  | DC1-RPP-D13-06 A/B L3 Startup | 2d | 2026-05-11 | 2026-05-12 | DC1-RPP-L3-CX-6475 | 53d | 0d | Riley Warring | SQD |
| DC1-RPP-L3-CX-6495 |  | DC1-RPP-D13-06 A/B BMS/EPMS | 1d | 2026-05-13 | 2026-05-13 | DC1-RPP-L3-CX-6485 | 53d | 18d | Riley Warring | PRM |
|  | 05 | **DC1-DH1300-RPP-E13 Cx L3** |  | 2026-05-08 | 2026-05-13 |  |  |  |  |  |
|  | 01 | **DC1-DH1300-RPP-E13-01 Cx L3** |  | 2026-05-08 | 2026-05-13 |  |  |  |  |  |
| DC1-RPP-L3-CX-6505 |  | DC1-RPP-E13-01 A/B FTE | 1d | 2026-05-08 | 2026-05-08 | DC1-RPP-L2-3680, DC1-COD-L3-CX-6505 | 6d | 0d | Riley Warring | ROS |
| DC1-RPP-L3-CX-6515 |  | DC1-RPP-E13-01 A/B L3 Startup | 2d | 2026-05-11 | 2026-05-12 | DC1-RPP-L3-CX-6505 | 53d | 0d | Riley Warring | SQD |
| DC1-RPP-L3-CX-6525 |  | DC1-RPP-E13-01 A/B BMS/EPMS | 1d | 2026-05-13 | 2026-05-13 | DC1-RPP-L3-CX-6515 | 53d | 18d | Riley Warring | PRM |

Notes:
- DC1-RPP-L3-CX-6365: Steps: EC Startup Report; Vendor Startup
- DC1-RPP-L3-CX-6395: Steps: EC Startup Report; Vendor Startup
- DC1-RPP-L3-CX-6425: Steps: EC Startup Report; Vendor Startup
- DC1-RPP-L3-CX-6455: Steps: EC Startup Report; Vendor Startup
- DC1-RPP-L3-CX-6485: Steps: EC Startup Report; Vendor Startup
- DC1-RPP-L3-CX-6515: Steps: EC Startup Report; Vendor Startup

| ID | WBS | Activity | Duration | Start | Finish | Predecessors | Total float | Free float | Layton Responsible Party | Vendor Responsible Party |
| --- | --- | --- | --- | --- | --- | --- | --- | --- | --- | --- |
|  | 02 | **DC1-DH1300-RPP-E13-02 Cx L3** |  | 2026-05-08 | 2026-05-13 |  |  |  |  |  |
| DC1-RPP-L3-CX-6535 |  | DC1-RPP-E13-02 A/B FTE | 1d | 2026-05-08 | 2026-05-08 | DC1-RPP-L2-3690, DC1-COD-L3-CX-6535 | 6d | 0d | Riley Warring | ROS |
| DC1-RPP-L3-CX-6545 |  | DC1-RPP-E13-02 A/B L3 Startup | 2d | 2026-05-11 | 2026-05-12 | DC1-RPP-L3-CX-6535 | 53d | 0d | Riley Warring | SQD |
| DC1-RPP-L3-CX-6555 |  | DC1-RPP-E13-02 A/B BMS/EPMS | 1d | 2026-05-13 | 2026-05-13 | DC1-RPP-L3-CX-6545 | 53d | 18d | Riley Warring | PRM |
|  | 03 | **DC1-DH1300-RPP-E13-03 Cx L3** |  | 2026-05-08 | 2026-05-13 |  |  |  |  |  |
| DC1-RPP-L3-CX-6565 |  | DC1-RPP-E13-03 A/B FTE | 1d | 2026-05-08 | 2026-05-08 | DC1-RPP-L2-3700, DC1-COD-L3-CX-6565 | 6d | 0d | Riley Warring | ROS |
| DC1-RPP-L3-CX-6575 |  | DC1-RPP-E13-03 A/B L3 Startup | 2d | 2026-05-11 | 2026-05-12 | DC1-RPP-L3-CX-6565 | 53d | 0d | Riley Warring | SQD |
| DC1-RPP-L3-CX-6585 |  | DC1-RPP-E13-03 A/B BMS/EPMS | 1d | 2026-05-13 | 2026-05-13 | DC1-RPP-L3-CX-6575 | 53d | 18d | Riley Warring | PRM |
|  | 04 | **DC1-DH1300-RPP-E13-04 Cx L3** |  | 2026-05-08 | 2026-05-13 |  |  |  |  |  |
| DC1-RPP-L3-CX-6595 |  | DC1-RPP-E13-04 A/B FTE | 1d | 2026-05-08 | 2026-05-08 | DC1-RPP-L2-3710, DC1-COD-L3-CX-6595 | 6d | 0d | Riley Warring | ROS |
| DC1-RPP-L3-CX-6605 |  | DC1-RPP-E13-04 A/B L3 Startup | 2d | 2026-05-11 | 2026-05-12 | DC1-RPP-L3-CX-6595 | 53d | 0d | Riley Warring | SQD |
| DC1-RPP-L3-CX-6615 |  | DC1-RPP-E13-04 A/B BMS/EPMS | 1d | 2026-05-13 | 2026-05-13 | DC1-RPP-L3-CX-6605 | 53d | 18d | Riley Warring | PRM |
|  | 05 | **DC1-DH1300-RPP-E13-05 Cx L3** |  | 2026-05-08 | 2026-05-13 |  |  |  |  |  |
| DC1-RPP-L3-CX-6625 |  | DC1-RPP-E13-05 A/B FTE | 1d | 2026-05-08 | 2026-05-08 | DC1-RPP-L2-3720, DC1-COD-L3-CX-6625 | 6d | 0d | Riley Warring | ROS |
| DC1-RPP-L3-CX-6635 |  | DC1-RPP-E13-05 A/B L3 Startup | 2d | 2026-05-11 | 2026-05-12 | DC1-RPP-L3-CX-6625 | 53d | 0d | Riley Warring | SQD |
| DC1-RPP-L3-CX-6645 |  | DC1-RPP-E13-05 A/B BMS/EPMS | 1d | 2026-05-13 | 2026-05-13 | DC1-RPP-L3-CX-6635 | 53d | 18d | Riley Warring | PRM |
|  | 06 | **DC1-DH1300-RPP-E13-06 Cx L3** |  | 2026-05-08 | 2026-05-13 |  |  |  |  |  |
| DC1-RPP-L3-CX-6655 |  | DC1-RPP-E13-06 A/B FTE | 1d | 2026-05-08 | 2026-05-08 | DC1-RPP-L2-3730, DC1-COD-L3-CX-6655 | 6d | 0d | Riley Warring | ROS |
| DC1-RPP-L3-CX-6665 |  | DC1-RPP-E13-06 A/B L3 Startup | 2d | 2026-05-11 | 2026-05-12 | DC1-RPP-L3-CX-6655 | 53d | 0d | Riley Warring | SQD |
| DC1-RPP-L3-CX-6675 |  | DC1-RPP-E13-06 A/B BMS/EPMS | 1d | 2026-05-13 | 2026-05-13 | DC1-RPP-L3-CX-6665 | 53d | 18d | Riley Warring | PRM |
|  | 06 | **DC1-DH1300-RPP-F13 Cx L3** |  | 2026-05-08 | 2026-05-13 |  |  |  |  |  |
|  | 01 | **DC1-DH1300-RPP-F13-01 Cx L3** |  | 2026-05-08 | 2026-05-13 |  |  |  |  |  |
| DC1-RPP-L3-CX-6685 |  | DC1-RPP-F13-01 A/B FTE | 1d | 2026-05-08 | 2026-05-08 | DC1-RPP-L2-3740, DC1-COD-L3-CX-6685 | 6d | 0d | Riley Warring | ROS |
| DC1-RPP-L3-CX-6695 |  | DC1-RPP-F13-01 A/B L3 Startup | 2d | 2026-05-11 | 2026-05-12 | DC1-RPP-L3-CX-6685 | 53d | 0d | Riley Warring | SQD |
| DC1-RPP-L3-CX-6705 |  | DC1-RPP-F13-01 A/B BMS/EPMS | 1d | 2026-05-13 | 2026-05-13 | DC1-RPP-L3-CX-6695 | 53d | 18d | Riley Warring | PRM |

Notes:
- DC1-RPP-L3-CX-6545: Steps: EC Startup Report; Vendor Startup
- DC1-RPP-L3-CX-6575: Steps: EC Startup Report; Vendor Startup
- DC1-RPP-L3-CX-6605: Steps: EC Startup Report; Vendor Startup
- DC1-RPP-L3-CX-6635: Steps: EC Startup Report; Vendor Startup
- DC1-RPP-L3-CX-6665: Steps: EC Startup Report; Vendor Startup
- DC1-RPP-L3-CX-6695: Steps: EC Startup Report; Vendor Startup

| ID | WBS | Activity | Duration | Start | Finish | Predecessors | Total float | Free float | Layton Responsible Party | Vendor Responsible Party |
| --- | --- | --- | --- | --- | --- | --- | --- | --- | --- | --- |
|  | 02 | **DC1-DH1300-RPP-F13-02 Cx L3** |  | 2026-05-08 | 2026-05-13 |  |  |  |  |  |
| DC1-RPP-L3-CX-6715 |  | DC1-RPP-F13-02 A/B FTE | 1d | 2026-05-08 | 2026-05-08 | DC1-RPP-L2-3750, DC1-COD-L3-CX-6715 | 6d | 0d | Riley Warring | ROS |
| DC1-RPP-L3-CX-6725 |  | DC1-RPP-F13-02 A/B L3 Startup | 2d | 2026-05-11 | 2026-05-12 | DC1-RPP-L3-CX-6715 | 53d | 0d | Riley Warring | SQD |
| DC1-RPP-L3-CX-6735 |  | DC1-RPP-F13-02 A/B BMS/EPMS | 1d | 2026-05-13 | 2026-05-13 | DC1-RPP-L3-CX-6725 | 53d | 18d | Riley Warring | PRM |
|  | 03 | **DC1-DH1300-RPP-F13-03 Cx L3** |  | 2026-05-08 | 2026-05-13 |  |  |  |  |  |
| DC1-RPP-L3-CX-6745 |  | DC1-RPP-F13-03 A/B FTE | 1d | 2026-05-08 | 2026-05-08 | DC1-RPP-L2-3760, DC1-COD-L3-CX-6745 | 6d | 0d | Riley Warring | ROS |
| DC1-RPP-L3-CX-6755 |  | DC1-RPP-F13-03 A/B L3 Startup | 2d | 2026-05-11 | 2026-05-12 | DC1-RPP-L3-CX-6745 | 53d | 0d | Riley Warring | SQD |
| DC1-RPP-L3-CX-6765 |  | DC1-RPP-F13-03 A/B BMS/EPMS | 1d | 2026-05-13 | 2026-05-13 | DC1-RPP-L3-CX-6755 | 53d | 18d | Riley Warring | PRM |
|  | 04 | **DC1-DH1300-RPP-F13-04 Cx L3** |  | 2026-05-08 | 2026-05-13 |  |  |  |  |  |
| DC1-RPP-L3-CX-6775 |  | DC1-RPP-F13-04 A/B FTE | 1d | 2026-05-08 | 2026-05-08 | DC1-RPP-L2-3770, DC1-COD-L3-CX-6775 | 6d | 0d | Riley Warring | ROS |
| DC1-RPP-L3-CX-6785 |  | DC1-RPP-F13-04 A/B L3 Startup | 2d | 2026-05-11 | 2026-05-12 | DC1-RPP-L3-CX-6775 | 53d | 0d | Riley Warring | SQD |
| DC1-RPP-L3-CX-6795 |  | DC1-RPP-F13-04 A/B BMS/EPMS | 1d | 2026-05-13 | 2026-05-13 | DC1-RPP-L3-CX-6785 | 53d | 18d | Riley Warring | PRM |
|  | 05 | **DC1-DH1300-RPP-F13-05 Cx L3** |  | 2026-05-08 | 2026-05-13 |  |  |  |  |  |
| DC1-RPP-L3-CX-6805 |  | DC1-RPP-F13-05 A/B FTE | 1d | 2026-05-08 | 2026-05-08 | DC1-RPP-L2-3780, DC1-COD-L3-CX-6805 | 6d | 0d | Riley Warring | ROS |
| DC1-RPP-L3-CX-6815 |  | DC1-RPP-F13-05 A/B L3 Startup | 2d | 2026-05-11 | 2026-05-12 | DC1-RPP-L3-CX-6805 | 53d | 0d | Riley Warring | SQD |
| DC1-RPP-L3-CX-6825 |  | DC1-RPP-F13-05 A/B BMS/EPMS | 1d | 2026-05-13 | 2026-05-13 | DC1-RPP-L3-CX-6815 | 53d | 18d | Riley Warring | PRM |
|  | 06 | **DC1-DH1300-RPP-F13-06 Cx L3** |  | 2026-05-08 | 2026-05-13 |  |  |  |  |  |
| DC1-RPP-L3-CX-6835 |  | DC1-RPP-F13-06 A/B FTE | 1d | 2026-05-08 | 2026-05-08 | DC1-RPP-L2-3790, DC1-COD-L3-CX-6835 | 6d | 0d | Riley Warring | ROS |
| DC1-RPP-L3-CX-6845 |  | DC1-RPP-F13-06 A/B L3 Startup | 2d | 2026-05-11 | 2026-05-12 | DC1-RPP-L3-CX-6835 | 53d | 0d | Riley Warring | SQD |
| DC1-RPP-L3-CX-6855 |  | DC1-RPP-F13-06 A/B BMS/EPMS | 1d | 2026-05-13 | 2026-05-13 | DC1-RPP-L3-CX-6845 | 53d | 18d | Riley Warring | PRM |
|  | 08 | **DC1-DH1300 MOD-02 Cx L3** |  | 2026-05-05 | 2026-05-08 |  |  |  |  |  |
|  | 01 | **DC1-DH1300 MOD-A13-02 Cx L3** |  | 2026-05-05 | 2026-05-08 |  |  |  |  |  |
| DC1-MOD2-L3-Cx-2840 |  | DC1-MOD-A13-02 FTE | 1d | 2026-05-05 | 2026-05-05 | DC1-MOD02-L2-2280, DC1-SWD-L3-CX-2840 | 29d | 0d |  | ROS |
| DC1-MOD2-L3-Cx-2850 |  | DC1-MOD-A13-02 L3 Startup | 2d | 2026-05-06 | 2026-05-07 | DC1-MOD2-L3-Cx-2840 | 34d | 0d |  | PHE |
| DC1-MOD2-L3-Cx-2860 |  | DC1-MOD-A13-02 BMS/EPMS | 1d | 2026-05-08 | 2026-05-08 | DC1-MOD2-L3-Cx-2850 | 34d | 9d |  | PRM |

Notes:
- DC1-RPP-L3-CX-6725: Steps: EC Startup Report; Vendor Startup
- DC1-RPP-L3-CX-6755: Steps: EC Startup Report; Vendor Startup
- DC1-RPP-L3-CX-6785: Steps: EC Startup Report; Vendor Startup
- DC1-RPP-L3-CX-6815: Steps: EC Startup Report; Vendor Startup
- DC1-RPP-L3-CX-6845: Steps: EC Startup Report; Vendor Startup
- DC1-MOD2-L3-Cx-2850: Steps: EC Startup Report; Vendor Startup

| ID | WBS | Activity | Duration | Start | Finish | Predecessors | Total float | Free float | Vendor Responsible Party |
| --- | --- | --- | --- | --- | --- | --- | --- | --- | --- |
|  | 02 | **DC1-DH1300 MOD-B13-02 Cx L3** |  | 2026-05-05 | 2026-05-08 |  |  |  |  |
| DC1-MOD2-L3-Cx-2870 |  | DC1-MOD-B13-02 FTE | 1d | 2026-05-05 | 2026-05-05 | DC1-MOD02-L2-2290, DC1-SWD-L3-CX-2870 | 29d | 0d | ROS |
| DC1-MOD2-L3-Cx-2880 |  | DC1-MOD-B13-02 L3 Startup | 2d | 2026-05-06 | 2026-05-07 | DC1-MOD2-L3-Cx-2870 | 34d | 0d | PHE |
| DC1-MOD2-L3-Cx-2890 |  | DC1-MOD-B13-02 BMS/EPMS | 1d | 2026-05-08 | 2026-05-08 | DC1-MOD2-L3-Cx-2880 | 34d | 9d | PRM |
|  | 03 | **DC1-DH1300 MOD-C13-02 Cx L3** |  | 2026-05-05 | 2026-05-08 |  |  |  |  |
| DC1-MOD2-L3-Cx-2900 |  | DC1-MOD-C13-02 FTE | 1d | 2026-05-05 | 2026-05-05 | DC1-MOD02-L2-2300, DC1-SWD-L3-CX-2900 | 29d | 0d | ROS |
| DC1-MOD2-L3-Cx-2910 |  | DC1-MOD-C13-02 L3 Startup | 2d | 2026-05-06 | 2026-05-07 | DC1-MOD2-L3-Cx-2900 | 34d | 0d | PHE |
| DC1-MOD2-L3-Cx-2920 |  | DC1-MOD-C13-02 BMS/EPMS | 1d | 2026-05-08 | 2026-05-08 | DC1-MOD2-L3-Cx-2910 | 34d | 9d | PRM |
|  | 04 | **DC1-DH1300 MOD-D13-02 Cx L3** |  | 2026-05-05 | 2026-05-08 |  |  |  |  |
| DC1-MOD2-L3-Cx-2930 |  | DC1-MOD-D13-02 FTE | 1d | 2026-05-05 | 2026-05-05 | DC1-MOD02-L2-2310, DC1-SWD-L3-CX-2930 | 29d | 0d | ROS |
| DC1-MOD2-L3-Cx-2940 |  | DC1-MOD-D13-02 L3 Startup | 2d | 2026-05-06 | 2026-05-07 | DC1-MOD2-L3-Cx-2930 | 34d | 0d | PHE |
| DC1-MOD2-L3-Cx-2950 |  | DC1-MOD-D13-02 BMS/EPMS | 1d | 2026-05-08 | 2026-05-08 | DC1-MOD2-L3-Cx-2940 | 34d | 9d | PRM |
|  | 05 | **DC1-DH1300 MOD-E13-02 Cx L3** |  | 2026-05-05 | 2026-05-08 |  |  |  |  |
| DC1-MOD2-L3-Cx-2960 |  | DC1-MOD-E13-02 FTE | 1d | 2026-05-05 | 2026-05-05 | DC1-MOD02-L2-2320, DC1-SWD-L3-CX-2960 | 29d | 0d | ROS |
| DC1-MOD2-L3-Cx-2970 |  | DC1-MOD-E13-02 L3 Startup | 2d | 2026-05-06 | 2026-05-07 | DC1-MOD2-L3-Cx-2960 | 34d | 0d | PHE |
| DC1-MOD2-L3-Cx-2980 |  | DC1-MOD-E13-02 BMS/EPMS | 1d | 2026-05-08 | 2026-05-08 | DC1-MOD2-L3-Cx-2970 | 34d | 9d | PRM |
|  | 06 | **DC1-DH1300 MOD-F13-02 Cx L3** |  | 2026-05-05 | 2026-05-08 |  |  |  |  |
| DC1-MOD2-L3-Cx-2990 |  | DC1-MOD-F13-02 FTE | 1d | 2026-05-05 | 2026-05-05 | DC1-MOD02-L2-2330, DC1-SWD-L3-CX-2990 | 29d | 0d | ROS |
| DC1-MOD2-L3-Cx-3000 |  | DC1-MOD-F13-02 L3 Startup | 2d | 2026-05-06 | 2026-05-07 | DC1-MOD2-L3-Cx-2990 | 34d | 0d | PHE |
| DC1-MOD2-L3-Cx-3010 |  | DC1-MOD-F13-02 BMS/EPMS | 1d | 2026-05-08 | 2026-05-08 | DC1-MOD2-L3-Cx-3000 | 34d | 9d | PRM |
|  | 07 | **DC1-DH1300 MOD-R13-02 Cx L3** |  | 2026-05-05 | 2026-05-08 |  |  |  |  |
| DC1-MOD2-L3-Cx-3020 |  | DC1-MOD-R13-02 FTE | 1d | 2026-05-05 | 2026-05-05 | DC1-MOD02-L2-2340, DC1-SWD-L3-CX-3020 | 29d | 0d | ROS |
| DC1-MOD2-L3-Cx-3030 |  | DC1-MOD-R13-02 L3 Startup | 2d | 2026-05-06 | 2026-05-07 | DC1-MOD2-L3-Cx-3020 | 34d | 0d | PHE |
| DC1-MOD2-L3-Cx-3040 |  | DC1-MOD-R13-02 BMS/EPMS | 1d | 2026-05-08 | 2026-05-08 | DC1-MOD2-L3-Cx-3030 | 34d | 9d | PRM |

Notes:
- DC1-MOD2-L3-Cx-2880: Steps: EC Startup Report; Vendor Startup
- DC1-MOD2-L3-Cx-2910: Steps: EC Startup Report; Vendor Startup
- DC1-MOD2-L3-Cx-2940: Steps: EC Startup Report; Vendor Startup
- DC1-MOD2-L3-Cx-2970: Steps: EC Startup Report; Vendor Startup
- DC1-MOD2-L3-Cx-3000: Steps: EC Startup Report; Vendor Startup
- DC1-MOD2-L3-Cx-3030: Steps: EC Startup Report; Vendor Startup

| ID | WBS | Activity | Duration | Start | Finish | Predecessors | Total float | Free float | Vendor Responsible Party |
| --- | --- | --- | --- | --- | --- | --- | --- | --- | --- |
|  | 09 | **DC1-DH1300 MOD-03 Cx L3** |  | 2026-05-11 | 2026-05-21 |  |  |  |  |
|  | 01 | **DC1-DH1300 MOD-A13-03 Cx L3** |  | 2026-05-11 | 2026-05-14 |  |  |  |  |
| DC1-MOD3-L3-Cx-2840 |  | DC1-MOD-A13-03 FTE | 1d | 2026-05-11 | 2026-05-11 | DC1-MOD03-L2-2280, DC1-UPSM-L3-CX-2840 | 30d | 0d | ROS |
| DC1-MOD3-L3-Cx-2850 |  | DC1-MOD-A13-03 L3 Startup | 2d | 2026-05-12 | 2026-05-13 | DC1-MOD3-L3-Cx-2840 | 30d | 0d | PHE |
| DC1-MOD3-L3-Cx-2860 |  | DC1-MOD-A13-03 BMS/EPMS | 1d | 2026-05-14 | 2026-05-14 | DC1-MOD3-L3-Cx-2850 | 30d | 5d | PRM |
|  | 02 | **DC1-DH1300 MOD-B13-03 Cx L3** |  | 2026-05-12 | 2026-05-15 |  |  |  |  |
| DC1-MOD3-L3-Cx-2870 |  | DC1-MOD-B13-03 FTE | 1d | 2026-05-12 | 2026-05-12 | DC1-MOD03-L2-2290, DC1-UPSM-L3-CX-2870 | 29d | 0d | ROS |
| DC1-MOD3-L3-Cx-2880 |  | DC1-MOD-B13-03 L3 Startup | 2d | 2026-05-13 | 2026-05-14 | DC1-MOD3-L3-Cx-2870 | 29d | 0d | PHE |
| DC1-MOD3-L3-Cx-2890 |  | DC1-MOD-B13-03 BMS/EPMS | 1d | 2026-05-15 | 2026-05-15 | DC1-MOD3-L3-Cx-2880 | 29d | 4d | PRM |
|  | 03 | **DC1-DH1300 MOD-C13-03 Cx L3** |  | 2026-05-13 | 2026-05-18 |  |  |  |  |
| DC1-MOD3-L3-Cx-2900 |  | DC1-MOD-C13-03 FTE | 1d | 2026-05-13 | 2026-05-13 | DC1-MOD03-L2-2300, DC1-UPSM-L3-CX-2900 | 28d | 0d | ROS |
| DC1-MOD3-L3-Cx-2910 |  | DC1-MOD-C13-03 L3 Startup | 2d | 2026-05-14 | 2026-05-15 | DC1-MOD3-L3-Cx-2900 | 28d | 0d | PHE |
| DC1-MOD3-L3-Cx-2920 |  | DC1-MOD-C13-03 BMS/EPMS | 1d | 2026-05-18 | 2026-05-18 | DC1-MOD3-L3-Cx-2910 | 28d | 3d | PRM |
|  | 04 | **DC1-DH1300 MOD-D13-03 Cx L3** |  | 2026-05-14 | 2026-05-19 |  |  |  |  |
| DC1-MOD3-L3-Cx-2930 |  | DC1-MOD-D13-03 FTE | 1d | 2026-05-14 | 2026-05-14 | DC1-MOD03-L2-2310, DC1-UPSM-L3-CX-2930 | 27d | 0d | ROS |
| DC1-MOD3-L3-Cx-2940 |  | DC1-MOD-D13-03 L3 Startup | 2d | 2026-05-15 | 2026-05-18 | DC1-MOD3-L3-Cx-2930 | 27d | 0d | PHE |
| DC1-MOD3-L3-Cx-2950 |  | DC1-MOD-D13-03 BMS/EPMS | 1d | 2026-05-19 | 2026-05-19 | DC1-MOD3-L3-Cx-2940 | 27d | 2d | PRM |
|  | 05 | **DC1-DH1300 MOD-E13-03 Cx L3** |  | 2026-05-15 | 2026-05-20 |  |  |  |  |
| DC1-MOD3-L3-Cx-2960 |  | DC1-MOD-E13-03 FTE | 1d | 2026-05-15 | 2026-05-15 | DC1-MOD03-L2-2320, DC1-UPSM-L3-CX-2960 | 26d | 0d | ROS |
| DC1-MOD3-L3-Cx-2970 |  | DC1-MOD-E13-03 L3 Startup | 2d | 2026-05-18 | 2026-05-19 | DC1-MOD3-L3-Cx-2960 | 26d | 0d | PHE |
| DC1-MOD3-L3-Cx-2980 |  | DC1-MOD-E13-03 BMS/EPMS | 1d | 2026-05-20 | 2026-05-20 | DC1-MOD3-L3-Cx-2970 | 26d | 1d | PRM |
|  | 06 | **DC1-DH1300 MOD-F13-03 Cx L3** |  | 2026-05-18 | 2026-05-21 |  |  |  |  |
| DC1-MOD3-L3-Cx-2990 |  | DC1-MOD-F13-03 FTE | 1d | 2026-05-18 | 2026-05-18 | DC1-MOD03-L2-2330, DC1-UPSM-L3-CX-2990 | 25d | 0d | ROS |
| DC1-MOD3-L3-Cx-3000 |  | DC1-MOD-F13-03 L3 Startup | 2d | 2026-05-19 | 2026-05-20 | DC1-MOD3-L3-Cx-2990 | 25d | 0d | PHE |
| DC1-MOD3-L3-Cx-3010 |  | DC1-MOD-F13-03 BMS/EPMS | 1d | 2026-05-21 | 2026-05-21 | DC1-MOD3-L3-Cx-3000 | 25d | 0d | PRM |

Notes:
- DC1-MOD3-L3-Cx-2850: Steps: EC Startup Report; Vendor Startup
- DC1-MOD3-L3-Cx-2880: Steps: EC Startup Report; Vendor Startup
- DC1-MOD3-L3-Cx-2910: Steps: EC Startup Report; Vendor Startup
- DC1-MOD3-L3-Cx-2940: Steps: EC Startup Report; Vendor Startup
- DC1-MOD3-L3-Cx-2970: Steps: EC Startup Report; Vendor Startup
- DC1-MOD3-L3-Cx-3000: Steps: EC Startup Report; Vendor Startup

| ID | WBS | Activity | Duration | Start | Finish | Predecessors | Total float | Free float | Vendor Responsible Party | Layton Responsible Party |
| --- | --- | --- | --- | --- | --- | --- | --- | --- | --- | --- |
|  | 07 | **DC1-DH1300 MOD-R13-03 Cx L3** |  | 2026-05-18 | 2026-05-21 |  |  |  |  |  |
| DC1-MOD3-L3-Cx-3020 |  | DC1-MOD-R13-03 FTE | 1d | 2026-05-18 | 2026-05-18 | DC1-MOD03-L2-2340, DC1-UPSM-L3-CX-3020 | 25d | 0d | ROS |  |
| DC1-MOD3-L3-Cx-3030 |  | DC1-MOD-R13-03 L3 Startup | 2d | 2026-05-19 | 2026-05-20 | DC1-MOD3-L3-Cx-3020 | 25d | 0d | PHE |  |
| DC1-MOD3-L3-Cx-3040 |  | DC1-MOD-R13-03 BMS/EPMS | 1d | 2026-05-21 | 2026-05-21 | DC1-MOD3-L3-Cx-3030 | 25d | 0d | PRM |  |
|  | 10 | **DC1-DH1300 CDUs Cx L3** |  | 2026-05-12 | 2026-06-09 |  |  |  |  |  |
|  | 1 | **DC1-CDU-DH1300-01 Cx L3** |  | 2026-05-12 | 2026-05-15 |  |  |  |  |  |
| DC1-CDU-L3-CX-7045 |  | CDU-DH1300-01 FTE | 1d | 2026-05-12 | 2026-05-12 | DC1-CDU-L2-3990, DC1-MOD3-L3-Cx-2840 | 51d | 0d | ROS | Riley Warring |
| DC1-CDU-L3-CX-7055 |  | CDU-DH1300-01 L3 Startup | 2d | 2026-05-13 | 2026-05-14 | DC1-CDU-L3-CX-7045 | 51d | 0d | VER | Riley Warring |
| DC1-CDU-L3-CX-7065 |  | CDU-DH1300-01 BMS/EPMS | 1d | 2026-05-15 | 2026-05-15 | DC1-CDU-L3-CX-7055 | 51d | 16d | PRM | Riley Warring |
|  | 04 | **DC1-CDU-DH1300-04 Cx L3** |  | 2026-05-20 | 2026-05-26 |  |  |  |  |  |
| DC1-CDU-L3-CX-7135 |  | CDU-DH1300-04 FTE | 1d | 2026-05-20 | 2026-05-20 | DC1-CDU-L2-4020, DC1-MOD3-L3-Cx-2840 | 45d | 0d | ROS | Riley Warring |
| DC1-CDU-L3-CX-7145 |  | CDU-DH1300-04 L3 Startup | 2d | 2026-05-21 | 2026-05-22 | DC1-CDU-L3-CX-7135 | 45d | 0d | VER | Riley Warring |
| DC1-CDU-L3-CX-7155 |  | CDU-DH1300-04 BMS/EPMS | 1d | 2026-05-26 | 2026-05-26 | DC1-CDU-L3-CX-7145 | 45d | 10d | PRM | Riley Warring |
|  | 2 | **DC1-CDU-DH1300-02 Cx L3** |  | 2026-05-12 | 2026-05-15 |  |  |  |  |  |
| DC1-CDU-L3-CX-7075 |  | CDU-DH1300-02 FTE | 1d | 2026-05-12 | 2026-05-12 | DC1-CDU-L2-4000, DC1-MOD3-L3-Cx-2840 | 51d | 0d | ROS | Riley Warring |
| DC1-CDU-L3-CX-7085 |  | CDU-DH1300-02 L3 Startup | 2d | 2026-05-13 | 2026-05-14 | DC1-CDU-L3-CX-7075 | 51d | 0d | VER | Riley Warring |
| DC1-CDU-L3-CX-7095 |  | CDU-DH1300-02 BMS/EPMS | 1d | 2026-05-15 | 2026-05-15 | DC1-CDU-L3-CX-7085 | 51d | 16d | PRM | Riley Warring |
|  | 3 | **DC1-CDU-DH1300-03 Cx L3** |  | 2026-05-12 | 2026-05-15 |  |  |  |  |  |
| DC1-CDU-L3-CX-7105 |  | CDU-DH1300-03 FTE | 1d | 2026-05-12 | 2026-05-12 | DC1-CDU-L2-4010, DC1-MOD3-L3-Cx-2840 | 51d | 0d | ROS | Riley Warring |
| DC1-CDU-L3-CX-7115 |  | CDU-DH1300-03 L3 Startup | 2d | 2026-05-13 | 2026-05-14 | DC1-CDU-L3-CX-7105 | 51d | 0d | VER | Riley Warring |
| DC1-CDU-L3-CX-7125 |  | CDU-DH1300-03 BMS/EPMS | 1d | 2026-05-15 | 2026-05-15 | DC1-CDU-L3-CX-7115 | 51d | 16d | PRM | Riley Warring |
|  | 05 | **DC1-CDU-DH1300-05 Cx L3** |  | 2026-05-20 | 2026-05-26 |  |  |  |  |  |
| DC1-CDU-L3-CX-7165 |  | CDU-DH1300-05 FTE | 1d | 2026-05-20 | 2026-05-20 | DC1-CDU-L2-4030, DC1-MOD3-L3-Cx-2840 | 45d | 0d | ROS | Riley Warring |
| DC1-CDU-L3-CX-7175 |  | CDU-DH1300-05 L3 Startup | 2d | 2026-05-21 | 2026-05-22 | DC1-CDU-L3-CX-7165 | 45d | 0d | VER | Riley Warring |
| DC1-CDU-L3-CX-7185 |  | CDU-DH1300-05 BMS/EPMS | 1d | 2026-05-26 | 2026-05-26 | DC1-CDU-L3-CX-7175 | 45d | 10d | PRM | Riley Warring |

Notes:
- DC1-MOD3-L3-Cx-3030: Steps: EC Startup Report; Vendor Startup
- DC1-CDU-L3-CX-7055: Steps: EC Startup Report; MC Installation Checklist; Vendor Startup
- DC1-CDU-L3-CX-7145: Steps: EC Startup Report; MC Installation Checklist; Vendor Startup
- DC1-CDU-L3-CX-7085: Steps: EC Startup Report; MC Installation Checklist; Vendor Startup
- DC1-CDU-L3-CX-7115: Steps: EC Startup Report; MC Installation Checklist; Vendor Startup
- DC1-CDU-L3-CX-7175: Steps: EC Startup Report; MC Installation Checklist; Vendor Startup

| ID | WBS | Activity | Duration | Start | Finish | Predecessors | Total float | Free float | Layton Responsible Party | Vendor Responsible Party |
| --- | --- | --- | --- | --- | --- | --- | --- | --- | --- | --- |
|  | 06 | **DC1-CDU-DH1300-06 Cx L3** |  | 2026-05-20 | 2026-05-26 |  |  |  |  |  |
| DC1-CDU-L3-CX-7195 |  | CDU-DH1300-06 FTE | 1d | 2026-05-20 | 2026-05-20 | DC1-CDU-L2-4040, DC1-MOD3-L3-Cx-2840 | 45d | 0d | Riley Warring | ROS |
| DC1-CDU-L3-CX-7205 |  | CDU-DH1300-06 L3 Startup | 2d | 2026-05-21 | 2026-05-22 | DC1-CDU-L3-CX-7195 | 45d | 0d | Riley Warring | VER |
| DC1-CDU-L3-CX-7215 |  | CDU-DH1300-06 BMS/EPMS | 1d | 2026-05-26 | 2026-05-26 | DC1-CDU-L3-CX-7205 | 45d | 10d | Riley Warring | PRM |
|  | 4 | **DC1-CDU-DH1300-07 Cx L3** |  | 2026-05-29 | 2026-06-03 |  |  |  |  |  |
| DC1-CDU-L3-CX-7225 |  | CDU-DH1300-07 FTE | 1d | 2026-05-29 | 2026-05-29 | DC1-CDU-L2-4050, DC1-MOD3-L3-Cx-2870 | 39d | 0d | Riley Warring | ROS |
| DC1-CDU-L3-CX-7235 |  | CDU-DH1300-07 L3 Startup | 2d | 2026-06-01 | 2026-06-02 | DC1-CDU-L3-CX-7225 | 39d | 0d | Riley Warring | VER |
| DC1-CDU-L3-CX-7245 |  | CDU-DH1300-07 BMS/EPMS | 1d | 2026-06-03 | 2026-06-03 | DC1-CDU-L3-CX-7235 | 39d | 4d | Riley Warring | PRM |
|  | 5 | **DC1-CDU-DH1300-08 Cx L3** |  | 2026-05-29 | 2026-06-03 |  |  |  |  |  |
| DC1-CDU-L3-CX-7255 |  | CDU-DH1300-08 FTE | 1d | 2026-05-29 | 2026-05-29 | DC1-CDU-L2-4060, DC1-MOD3-L3-Cx-2870 | 39d | 0d | Riley Warring | ROS |
| DC1-CDU-L3-CX-7265 |  | CDU-DH1300-08 L3 Startup | 2d | 2026-06-01 | 2026-06-02 | DC1-CDU-L3-CX-7255 | 39d | 0d | Riley Warring | VER |
| DC1-CDU-L3-CX-7275 |  | CDU-DH1300-08 BMS/EPMS | 1d | 2026-06-03 | 2026-06-03 | DC1-CDU-L3-CX-7265 | 39d | 4d | Riley Warring | PRM |
|  | 6 | **DC1-CDU-DH1300-09 Cx L3** |  | 2026-05-29 | 2026-06-03 |  |  |  |  |  |
| DC1-CDU-L3-CX-7285 |  | CDU-DH1300-09 FTE | 1d | 2026-05-29 | 2026-05-29 | DC1-CDU-L2-4070, DC1-MOD3-L3-Cx-2870 | 39d | 0d | Riley Warring | ROS |
| DC1-CDU-L3-CX-7295 |  | CDU-DH1300-09 L3 Startup | 2d | 2026-06-01 | 2026-06-02 | DC1-CDU-L3-CX-7285 | 39d | 0d | Riley Warring | VER |
| DC1-CDU-L3-CX-7305 |  | CDU-DH1300-09 BMS/EPMS | 1d | 2026-06-03 | 2026-06-03 | DC1-CDU-L3-CX-7295 | 39d | 4d | Riley Warring | PRM |
|  | 7 | **DC1-CDU-DH1300-10 Cx L3** |  | 2026-05-18 | 2026-05-21 |  |  |  |  |  |
| DC1-CDU-L3-CX-7315 |  | CDU-DH1300-10 FTE | 1d | 2026-05-18 | 2026-05-18 | DC1-CDU-L2-4080, DC1-MOD3-L3-Cx-2870 | 47d | 0d |  | ROS |
| DC1-CDU-L3-CX-7325 |  | CDU-DH1300-10 L3 Startup | 2d | 2026-05-19 | 2026-05-20 | DC1-CDU-L3-CX-7315 | 47d | 0d | Riley Warring | VER |
| DC1-CDU-L3-CX-7335 |  | CDU-DH1300-10 BMS/EPMS | 1d | 2026-05-21 | 2026-05-21 | DC1-CDU-L3-CX-7325 | 47d | 12d | Riley Warring | PRM |
|  | 8 | **DC1-CDU-DH1300-11 Cx L3** |  | 2026-05-18 | 2026-05-21 |  |  |  |  |  |
| DC1-CDU-L3-CX-7345 |  | CDU-DH1300-11 FTE | 1d | 2026-05-18 | 2026-05-18 | DC1-CDU-L2-4090, DC1-MOD3-L3-Cx-2870 | 47d | 0d |  | ROS |
| DC1-CDU-L3-CX-7355 |  | CDU-DH1300-11 L3 Startup | 2d | 2026-05-19 | 2026-05-20 | DC1-CDU-L3-CX-7345 | 47d | 0d | Riley Warring | VER |
| DC1-CDU-L3-CX-7365 |  | CDU-DH1300-11 BMS/EPMS | 1d | 2026-05-21 | 2026-05-21 | DC1-CDU-L3-CX-7355 | 47d | 12d | Riley Warring | PRM |

Notes:
- DC1-CDU-L3-CX-7205: Steps: EC Startup Report; MC Installation Checklist; Vendor Startup
- DC1-CDU-L3-CX-7235: Steps: EC Startup Report; MC Installation Checklist; Vendor Startup
- DC1-CDU-L3-CX-7265: Steps: EC Startup Report; MC Installation Checklist; Vendor Startup
- DC1-CDU-L3-CX-7295: Steps: EC Startup Report; MC Installation Checklist; Vendor Startup
- DC1-CDU-L3-CX-7325: Steps: EC Startup Report; MC Installation Checklist; Vendor Startup
- DC1-CDU-L3-CX-7355: Steps: EC Startup Report; MC Installation Checklist; Vendor Startup

| ID | WBS | Activity | Duration | Start | Finish | Predecessors | Total float | Free float | Vendor Responsible Party | Layton Responsible Party |
| --- | --- | --- | --- | --- | --- | --- | --- | --- | --- | --- |
|  | 9 | **DC1-CDU-DH1300-12 Cx L3** |  | 2026-05-18 | 2026-05-21 |  |  |  |  |  |
| DC1-CDU-L3-CX-7375 |  | CDU-DH1300-12 FTE | 1d | 2026-05-18 | 2026-05-18 | DC1-CDU-L2-4100, DC1-MOD3-L3-Cx-2870 | 47d | 0d | ROS |  |
| DC1-CDU-L3-CX-7385 |  | CDU-DH1300-12 L3 Startup | 2d | 2026-05-19 | 2026-05-20 | DC1-CDU-L3-CX-7375 | 47d | 0d | VER | Riley Warring |
| DC1-CDU-L3-CX-7395 |  | CDU-DH1300-12 BMS/EPMS | 1d | 2026-05-21 | 2026-05-21 | DC1-CDU-L3-CX-7385 | 47d | 12d | PRM | Riley Warring |
|  | 10 | **DC1-CDU-DH1300-13 Cx L3** |  | 2026-05-27 | 2026-06-01 |  |  |  |  |  |
| DC1-CDU-L3-CX-7405 |  | CDU-DH1300-13 FTE | 1d | 2026-05-27 | 2026-05-27 | DC1-CDU-L2-4110, DC1-MOD3-L3-Cx-2900 | 41d | 0d | ROS |  |
| DC1-CDU-L3-CX-7415 |  | CDU-DH1300-13 L3 Startup | 2d | 2026-05-28 | 2026-05-29 | DC1-CDU-L3-CX-7405 | 41d | 0d | VER | Riley Warring |
| DC1-CDU-L3-CX-7425 |  | CDU-DH1300-13 BMS/EPMS | 1d | 2026-06-01 | 2026-06-01 | DC1-CDU-L3-CX-7415 | 41d | 6d | PRM | Riley Warring |
|  | 11 | **DC1-CDU-DH1300-14 Cx L3** |  | 2026-05-27 | 2026-06-01 |  |  |  |  |  |
| DC1-CDU-L3-CX-7435 |  | CDU-DH1300-14 FTE | 1d | 2026-05-27 | 2026-05-27 | DC1-CDU-L2-4120, DC1-MOD3-L3-Cx-2900 | 41d | 0d | ROS |  |
| DC1-CDU-L3-CX-7445 |  | CDU-DH1300-14 L3 Startup | 2d | 2026-05-28 | 2026-05-29 | DC1-CDU-L3-CX-7435 | 41d | 0d | VER | Riley Warring |
| DC1-CDU-L3-CX-7455 |  | CDU-DH1300-14 BMS/EPMS | 1d | 2026-06-01 | 2026-06-01 | DC1-CDU-L3-CX-7445 | 41d | 6d | PRM | Riley Warring |
|  | 12 | **DC1-CDU-DH1300-15 Cx L3** |  | 2026-05-27 | 2026-06-01 |  |  |  |  |  |
| DC1-CDU-L3-CX-7465 |  | CDU-DH1300-15 FTE | 1d | 2026-05-27 | 2026-05-27 | DC1-CDU-L2-4130, DC1-MOD3-L3-Cx-2900 | 41d | 0d | ROS |  |
| DC1-CDU-L3-CX-7475 |  | CDU-DH1300-15 L3 Startup | 2d | 2026-05-28 | 2026-05-29 | DC1-CDU-L3-CX-7465 | 41d | 0d | VER | Riley Warring |
| DC1-CDU-L3-CX-7485 |  | CDU-DH1300-15 BMS/EPMS | 1d | 2026-06-01 | 2026-06-01 | DC1-CDU-L3-CX-7475 | 41d | 6d | PRM | Riley Warring |
|  | 13 | **DC1-CDU-DH1300-16 Cx L3** |  | 2026-06-04 | 2026-06-09 |  |  |  |  |  |
| DC1-CDU-L3-CX-7495 |  | CDU-DH1300-16 FTE | 1d | 2026-06-04 | 2026-06-04 | DC1-CDU-L2-4140, DC1-MOD3-L3-Cx-2900 | 35d | 0d | ROS |  |
| DC1-CDU-L3-CX-7505 |  | CDU-DH1300-16 L3 Startup | 2d | 2026-06-05 | 2026-06-08 | DC1-CDU-L3-CX-7495 | 35d | 0d | VER | Riley Warring |
| DC1-CDU-L3-CX-7515 |  | CDU-DH1300-16 BMS/EPMS | 1d | 2026-06-09 | 2026-06-09 | DC1-CDU-L3-CX-7505 | 35d | 0d | PRM | Riley Warring |
|  | 14 | **DC1-CDU-DH1300-17 Cx L3** |  | 2026-06-04 | 2026-06-09 |  |  |  |  |  |
| DC1-CDU-L3-CX-7525 |  | CDU-DH1300-17 FTE | 1d | 2026-06-04 | 2026-06-04 | DC1-CDU-L2-4150, DC1-MOD3-L3-Cx-2900 | 35d | 0d | ROS |  |
| DC1-CDU-L3-CX-7535 |  | CDU-DH1300-17 L3 Startup | 2d | 2026-06-05 | 2026-06-08 | DC1-CDU-L3-CX-7525 | 35d | 0d | VER | Riley Warring |
| DC1-CDU-L3-CX-7545 |  | CDU-DH1300-17 BMS/EPMS | 1d | 2026-06-09 | 2026-06-09 | DC1-CDU-L3-CX-7535 | 35d | 0d | PRM | Riley Warring |

Notes:
- DC1-CDU-L3-CX-7385: Steps: EC Startup Report; MC Installation Checklist; Vendor Startup
- DC1-CDU-L3-CX-7415: Steps: EC Startup Report; MC Installation Checklist; Vendor Startup
- DC1-CDU-L3-CX-7445: Steps: EC Startup Report; MC Installation Checklist; Vendor Startup
- DC1-CDU-L3-CX-7475: Steps: EC Startup Report; MC Installation Checklist; Vendor Startup
- DC1-CDU-L3-CX-7505: Steps: EC Startup Report; MC Installation Checklist; Vendor Startup
- DC1-CDU-L3-CX-7535: Steps: EC Startup Report; MC Installation Checklist; Vendor Startup

| ID | WBS | Activity | Duration | Start | Finish | Predecessors | Total float | Free float | Vendor Responsible Party | Layton Responsible Party |
| --- | --- | --- | --- | --- | --- | --- | --- | --- | --- | --- |
|  | 15 | **DC1-CDU-DH1300-18 Cx L3** |  | 2026-06-04 | 2026-06-09 |  |  |  |  |  |
| DC1-CDU-L3-CX-7555 |  | CDU-DH1300-18 FTE | 1d | 2026-06-04 | 2026-06-04 | DC1-CDU-L2-4160, DC1-MOD3-L3-Cx-2900 | 35d | 0d | ROS |  |
| DC1-CDU-L3-CX-7565 |  | CDU-DH1300-18 L3 Startup | 2d | 2026-06-05 | 2026-06-08 | DC1-CDU-L3-CX-7555 | 35d | 0d | VER | Riley Warring |
| DC1-CDU-L3-CX-7575 |  | CDU-DH1300-18 BMS/EPMS | 1d | 2026-06-09 | 2026-06-09 | DC1-CDU-L3-CX-7565 | 35d | 0d | PRM | Riley Warring |
|  | 11 | **DC1-DH1300 CHLR-1RT40 Cx L3** |  | 2026-05-04 | 2026-05-18 |  |  |  |  |  |
|  | 01 | **DC1-DH1300 CHLR-1RT40-A13 Cx L3** |  | 2026-05-04 | 2026-05-18 |  |  |  |  |  |
| DC1-CHLR-L3-Cx-3050 |  | DC1-CHLR-1RT40-A13 FTE | 1d | 2026-05-04 | 2026-05-04 | DC1-SWD-L3-CX-2840 SS, DC1-CHLR-L2-1280 | 3d | 0d | ROS | Riley Warring |
| DC1-CHLR-L3-Cx-3260 |  | DC1-CHLR-1RT40-A13 Heat Up | 2d | 2026-05-05 | 2026-05-06 | DC1-CHLR-L3-Cx-3050 | 3d | 0d | LAY | Riley Warring |
| DC1-CHLR-L3-Cx-3060 |  | DC1-CHLR-1RT40-A13 L3 Startup | 2d | 2026-05-14 | 2026-05-15 | DC1-CHLR-L3-Cx-3260, DC1-DH1300-LB-1010 SS | 3d | 0d | TAS | Riley Warring |
| DC1-CHLR-L3-Cx-3070 |  | DC1-CHLR-1RT40-A13 BMS/EPMS | 1d | 2026-05-18 | 2026-05-18 | DC1-CHLR-L3-Cx-3060 | 3d | 2d | PRM | Riley Warring |
|  | 02 | **DC1-DH1300 CHLR-1RT40-B13 Cx L3** |  | 2026-05-04 | 2026-05-18 |  |  |  |  |  |
| DC1-CHLR-L3-Cx-3080 |  | DC1-CHLR-1RT40-B13 FTE | 1d | 2026-05-04 | 2026-05-04 | DC1-SWD-L3-CX-2870 SS, DC1-CHLR-L2-1290 | 3d | 0d | ROS | Riley Warring |
| DC1-CHLR-L3-Cx-3270 |  | DC1-CHLR-1RT40-B13 Heat Up | 2d | 2026-05-05 | 2026-05-06 | DC1-CHLR-L3-Cx-3080 | 3d | 0d | LAY | Riley Warring |
| DC1-CHLR-L3-Cx-3090 |  | DC1-CHLR-1RT40-B13 L3 Startup | 2d | 2026-05-14 | 2026-05-15 | DC1-CHLR-L3-Cx-3270, DC1-DH1300-LB-1010 SS | 3d | 0d | TAS | Riley Warring |
| DC1-CHLR-L3-Cx-3100 |  | DC1-CHLR-1RT40-B13 BMS/EPMS | 1d | 2026-05-18 | 2026-05-18 | DC1-CHLR-L3-Cx-3090 | 3d | 2d | PRM | Riley Warring |
|  | 03 | **DC1-DH1300 CHLR-1RT40-C13 Cx L3** |  | 2026-05-04 | 2026-05-18 |  |  |  |  |  |
| DC1-CHLR-L3-Cx-3110 |  | DC1-CHLR-1RT40-C13 FTE | 1d | 2026-05-04 | 2026-05-04 | DC1-SWD-L3-CX-2900 SS, DC1-CHLR-L2-1300 | 3d | 0d | ROS | Riley Warring |
| DC1-CHLR-L3-Cx-3280 |  | DC1-CHLR-1RT40-C13 Heat Up | 2d | 2026-05-05 | 2026-05-06 | DC1-CHLR-L3-Cx-3110 | 3d | 0d | LAY | Riley Warring |
| DC1-CHLR-L3-Cx-3120 |  | DC1-CHLR-1RT40-C13 L3 Startup | 2d | 2026-05-14 | 2026-05-15 | DC1-CHLR-L3-Cx-3280, DC1-DH1300-LB-1010 SS | 3d | 0d | TAS | Riley Warring |
| DC1-CHLR-L3-Cx-3130 |  | DC1-CHLR-1RT40-C13 BMS/EPMS | 1d | 2026-05-18 | 2026-05-18 | DC1-CHLR-L3-Cx-3120 | 3d | 2d | PRM | Riley Warring |
|  | 04 | **DC1-DH1300 CHLR-1RT40-D13 Cx L3** |  | 2026-05-04 | 2026-05-18 |  |  |  |  |  |
| DC1-CHLR-L3-Cx-3140 |  | DC1-CHLR-1RT40-D13 FTE | 1d | 2026-05-04 | 2026-05-04 | DC1-SWD-L3-CX-2930 SS, DC1-CHLR-L2-1310 | 3d | 0d | ROS | Riley Warring |
| DC1-CHLR-L3-Cx-3290 |  | DC1-CHLR-1RT40-D13 Heat Up | 2d | 2026-05-05 | 2026-05-06 | DC1-CHLR-L3-Cx-3140 | 3d | 0d | LAY | Riley Warring |
| DC1-CHLR-L3-Cx-3150 |  | DC1-CHLR-1RT40-D13 L3 Startup | 2d | 2026-05-14 | 2026-05-15 | DC1-CHLR-L3-Cx-3290, DC1-DH1300-LB-1010 SS | 3d | 0d | TAS | Riley Warring |
| DC1-CHLR-L3-Cx-3160 |  | DC1-CHLR-1RT40-D13 BMS/EPMS | 1d | 2026-05-18 | 2026-05-18 | DC1-CHLR-L3-Cx-3150 | 3d | 2d | PRM | Riley Warring |

Notes:
- DC1-CDU-L3-CX-7565: Steps: EC Startup Report; MC Installation Checklist; Vendor Startup
- DC1-CHLR-L3-Cx-3060: Steps: EC Startup Report; MC Startup Report; Vendor Startup
- DC1-CHLR-L3-Cx-3090: Steps: EC Startup Report; MC Startup Report; Vendor Startup
- DC1-CHLR-L3-Cx-3120: Steps: EC Startup Report; MC Startup Report; Vendor Startup
- DC1-CHLR-L3-Cx-3150: Steps: EC Startup Report; MC Startup Report; Vendor Startup

| ID | WBS | Activity | Duration | Start | Finish | Predecessors | Total float | Free float | Layton Responsible Party | Vendor Responsible Party | Notes |
| --- | --- | --- | --- | --- | --- | --- | --- | --- | --- | --- | --- |
|  | 05 | **DC1-DH1300 CHLR-1RT40-E13 Cx L3** |  | 2026-05-04 | 2026-05-18 |  |  |  |  |  |  |
| DC1-CHLR-L3-Cx-3170 |  | DC1-CHLR-1RT40-E13 FTE | 1d | 2026-05-04 | 2026-05-04 | DC1-SWD-L3-CX-2960 SS, DC1-CHLR-L2-1320 | 3d | 0d | Riley Warring | ROS |  |
| DC1-CHLR-L3-Cx-3300 |  | DC1-CHLR-1RT40-E13 Heat Up | 2d | 2026-05-05 | 2026-05-06 | DC1-CHLR-L3-Cx-3170 | 3d | 0d | Riley Warring | LAY |  |
| DC1-CHLR-L3-Cx-3180 |  | DC1-CHLR-1RT40-E13 L3 Startup | 2d | 2026-05-14 | 2026-05-15 | DC1-CHLR-L3-Cx-3300, DC1-DH1300-LB-1010 SS | 3d | 0d | Riley Warring | TAS |  |
| DC1-CHLR-L3-Cx-3190 |  | DC1-CHLR-1RT40-E13 BMS/EPMS | 1d | 2026-05-18 | 2026-05-18 | DC1-CHLR-L3-Cx-3180 | 3d | 2d | Riley Warring | PRM |  |
|  | 06 | **DC1-DH1300 CHLR-1RT40-F13 Cx L3** |  | 2026-05-04 | 2026-05-18 |  |  |  |  |  |  |
| DC1-CHLR-L3-Cx-3200 |  | DC1-CHLR-1RT40-F13 FTE | 1d | 2026-05-04 | 2026-05-04 | DC1-SWD-L3-CX-2990 SS, DC1-CHLR-L2-1330 | 3d | 0d | Riley Warring | ROS |  |
| DC1-CHLR-L3-Cx-3310 |  | DC1-CHLR-1RT40-F13 Heat Up | 2d | 2026-05-05 | 2026-05-06 | DC1-CHLR-L3-Cx-3200 | 3d | 0d | Riley Warring | LAY |  |
| DC1-CHLR-L3-Cx-3210 |  | DC1-CHLR-1RT40-F13 L3 Startup | 2d | 2026-05-14 | 2026-05-15 | DC1-CHLR-L3-Cx-3310, DC1-DH1300-LB-1010 SS | 3d | 0d | Riley Warring | TAS |  |
| DC1-CHLR-L3-Cx-3220 |  | DC1-CHLR-1RT40-F13 BMS/EPMS | 1d | 2026-05-18 | 2026-05-18 | DC1-CHLR-L3-Cx-3210 | 3d | 2d | Riley Warring | PRM |  |
|  | 07 | **DC1-DH1300 CHLR-1RT40-R13 Cx L3** |  | 2026-05-04 | 2026-05-18 |  |  |  |  |  |  |
| DC1-CHLR-L3-Cx-3230 |  | DC1-CHLR-1RT40-R13 FTE | 1d | 2026-05-04 | 2026-05-04 | DC1-SWD-L3-CX-3020 SS, DC1-CHLR-L2-1340 | 3d | 0d | Riley Warring | ROS |  |
| DC1-CHLR-L3-Cx-3320 |  | DC1-CHLR-1RT40-R13 Heat Up | 2d | 2026-05-05 | 2026-05-06 | DC1-CHLR-L3-Cx-3230 | 3d | 0d | Riley Warring | LAY |  |
| DC1-CHLR-L3-Cx-3240 |  | DC1-CHLR-1RT40-R13 L3 Startup | 2d | 2026-05-14 | 2026-05-15 | DC1-CHLR-L3-Cx-3320, DC1-DH1300-LB-1010 SS | 3d | 0d | Riley Warring | TAS |  |
| DC1-CHLR-L3-Cx-3250 |  | DC1-CHLR-1RT40-R13 BMS/EPMS | 1d | 2026-05-18 | 2026-05-18 | DC1-CHLR-L3-Cx-3240 | 3d | 2d | Riley Warring | PRM |  |
|  | 12 | **DC1-DH1300 CHWP-1RT40 Cx L3** |  | 2026-05-08 | 2026-05-20 |  |  |  |  |  |  |
|  | 01 | **DC1-DH1300 CHWP-1RT40-A13 Cx L3** |  | 2026-05-08 | 2026-05-13 |  |  |  |  |  |  |
| DC1-CHWP-L3-Cx-2840 |  | DC1-CHWP-1RT40-A13 FTE | 1d | 2026-05-08 | 2026-05-08 | DC1-UPSM-L3-CX-2840 SS, DC1-CHWP-L2-Cx-2280 | 6d | 0d |  | ROS | CFCI |
| DC1-CHWP-L3-Cx-2850 |  | DC1-CHWP1RT40-A13 L3 Startup | 2d | 2026-05-11 | 2026-05-12 | DC1-CHWP-L3-Cx-2840, QTS-101330 | 6d | 0d |  | LAY | CFCI |
| DC1-CHWP-L3-Cx-2860 |  | DC1-CHWP-1RT40-A13 BMS/EPMS | 1d | 2026-05-13 | 2026-05-13 | DC1-CHWP-L3-Cx-2850 | 6d | 5d |  | PRM | CFCI |
|  | 02 | **DC1-DH1300 CHWP-1RT40-B13 Cx L3** |  | 2026-05-11 | 2026-05-14 |  |  |  |  |  |  |
| DC1-CHWP-L3-Cx-2870 |  | DC1-CHWP-1RT40-B13 FTE | 1d | 2026-05-11 | 2026-05-11 | DC1-UPSM-L3-CX-2870 SS, DC1-CHWP-L2-Cx-2290 | 5d | 0d |  | ROS | CFCI |
| DC1-CHWP-L3-Cx-2880 |  | DC1-CHWP-1RT40-B13 L3 Startup | 2d | 2026-05-12 | 2026-05-13 | DC1-CHWP-L3-Cx-2870, QTS-101330 | 5d | 0d |  | LAY | CFCI |
| DC1-CHWP-L3-Cx-2890 |  | DC1-CHWP-1RT40-B13 BMS/EPMS | 1d | 2026-05-14 | 2026-05-14 | DC1-CHWP-L3-Cx-2880 | 5d | 4d |  | PRM | CFCI |

Notes:
- DC1-CHLR-L3-Cx-3180: Steps: EC Startup Report; MC Startup Report; Vendor Startup
- DC1-CHLR-L3-Cx-3210: Steps: EC Startup Report; MC Startup Report; Vendor Startup
- DC1-CHLR-L3-Cx-3240: Steps: EC Startup Report; MC Startup Report; Vendor Startup
- DC1-CHWP-L3-Cx-2850: Steps: EC Startup Report; MC Startup Report; Vendor Startup
- DC1-CHWP-L3-Cx-2880: Steps: EC Startup Report; MC Startup Report; Vendor Startup

| ID | WBS | Activity | Duration | Start | Finish | Predecessors | Total float | Free float | Notes | Vendor Responsible Party |
| --- | --- | --- | --- | --- | --- | --- | --- | --- | --- | --- |
|  | 03 | **DC1-DH1300 CHWP-1RT40-C13 Cx L3** |  | 2026-05-12 | 2026-05-15 |  |  |  |  |  |
| DC1-CHWP-L3-Cx-2900 |  | DC1-CHWP-1RT40-C13 FTE | 1d | 2026-05-12 | 2026-05-12 | DC1-UPSM-L3-CX-2900 SS, DC1-CHWP-L2-Cx-2300 | 4d | 0d | CFCI | ROS |
| DC1-CHWP-L3-Cx-2910 |  | DC1-CHWP-1RT40-C13 L3 Startup | 2d | 2026-05-13 | 2026-05-14 | DC1-CHWP-L3-Cx-2900, QTS-101330 | 4d | 0d | CFCI | LAY |
| DC1-CHWP-L3-Cx-2920 |  | DC1-CHWP-1RT40-C13 BMS/EPMS | 1d | 2026-05-15 | 2026-05-15 | DC1-CHWP-L3-Cx-2910 | 4d | 3d | CFCI | PRM |
|  | 04 | **DC1-DH1300 CHWP-1RT40-D13 Cx L3** |  | 2026-05-13 | 2026-05-18 |  |  |  |  |  |
| DC1-CHWP-L3-Cx-2930 |  | DC1-CHWP-1RT40-D13 FTE | 1d | 2026-05-13 | 2026-05-13 | DC1-UPSM-L3-CX-2930 SS, DC1-CHWP-L2-Cx-2310 | 3d | 0d | CFCI | ROS |
| DC1-CHWP-L3-Cx-2940 |  | DC1-CHWP-1RT40-D13 L3 Startup | 2d | 2026-05-14 | 2026-05-15 | DC1-CHWP-L3-Cx-2930, QTS-101330 | 3d | 0d | CFCI | LAY |
| DC1-CHWP-L3-Cx-2950 |  | DC1-CHWP-1RT40-D13 BMS/EPMS | 1d | 2026-05-18 | 2026-05-18 | DC1-CHWP-L3-Cx-2940 | 3d | 2d | CFCI | PRM |
|  | 05 | **DC1-DH1300 CHWP-1RT40-E13 Cx L3** |  | 2026-05-14 | 2026-05-19 |  |  |  |  |  |
| DC1-CHWP-L3-Cx-2960 |  | DC1-CHWP-1RT40-E13 FTE | 1d | 2026-05-14 | 2026-05-14 | DC1-UPSM-L3-CX-2960 SS, DC1-CHWP-L2-Cx-2320 | 2d | 0d | CFCI | ROS |
| DC1-CHWP-L3-Cx-2970 |  | DC1-CHWP-1RT40-E13 L3 Startup | 2d | 2026-05-15 | 2026-05-18 | DC1-CHWP-L3-Cx-2960, QTS-101330 | 2d | 0d | CFCI | LAY |
| DC1-CHWP-L3-Cx-2980 |  | DC1-CHWP-1RT40-E13 BMS/EPMS | 1d | 2026-05-19 | 2026-05-19 | DC1-CHWP-L3-Cx-2970 | 2d | 1d | CFCI | PRM |
|  | 06 | **DC1-DH1300 CHWP-1RT40-F13 Cx L3** |  | 2026-05-15 | 2026-05-20 |  |  |  |  |  |
| DC1-CHWP-L3-Cx-2990 |  | DC1-CHWP-1RT40-F13 FTE | 1d | 2026-05-15 | 2026-05-15 | DC1-UPSM-L3-CX-2990 SS, DC1-CHWP-L2-Cx-2330 | 1d | 0d | CFCI | ROS |
| DC1-CHWP-L3-Cx-3000 |  | DC1-CHWP-1RT40-F13 L3 Startup | 2d | 2026-05-18 | 2026-05-19 | DC1-CHWP-L3-Cx-2990, QTS-101330 | 1d | 0d | CFCI | LAY |
| DC1-CHWP-L3-Cx-3010 |  | DC1-CHWP-1RT40-F13 BMS/EPMS | 1d | 2026-05-20 | 2026-05-20 | DC1-CHWP-L3-Cx-3000 | 1d | 0d | CFCI | PRM |
|  | 07 | **DC1-DH1300 CHWP-1RT40-R13 Cx L3** |  | 2026-05-15 | 2026-05-20 |  |  |  |  |  |
| DC1-CHWP-L3-Cx-3020 |  | DC1-CHWP-1RT40-R13 FTE | 1d | 2026-05-15 | 2026-05-15 | DC1-UPSM-L3-CX-3020 SS, DC1-CHWP-L2-Cx-2340 | 1d | 0d | CFCI | ROS |
| DC1-CHWP-L3-Cx-3030 |  | DC1-CHWP-1RT40-R13 L3 Startup | 2d | 2026-05-18 | 2026-05-19 | DC1-CHWP-L3-Cx-3020, QTS-101330 | 1d | 0d | CFCI | LAY |
| DC1-CHWP-L3-Cx-3040 |  | DC1-CHWP-1RT40-R13 BMS/EPMS | 1d | 2026-05-20 | 2026-05-20 | DC1-CHWP-L3-Cx-3030 | 1d | 0d | CFCI | PRM |
|  | 13 | **DC1-DH1300 CRAH/DOAS Cx L3** |  | 2026-05-05 | 2026-05-08 |  |  |  |  |  |
|  | 01 | **DH1300 CRAH-DH-01 L3** |  | 2026-05-05 | 2026-05-08 |  |  |  |  |  |
| DC1-CRAH-L3-Cx-5840 |  | DC1-DH1300-CRAH-DH-01 FTE | 1d | 2026-05-05 | 2026-05-05 | DC1-MOD2-L3-Cx-3020 SS, DC1-MOD2-L3-Cx-2930 SS, DC1-CRAH-L2-3280 | 29d | 0d |  | ROS |
| DC1-CRAH-L3-Cx-5850 |  | DC1-DH1300-CRAH-DH-01 L3 Startup | 2d | 2026-05-06 | 2026-05-07 | DC1-CRAH-L3-Cx-5840 | 29d | 0d |  | UMAS |
| DC1-CRAH-L3-Cx-5860 |  | DC1-DH1300-CRAH-DH-01 BMS/EPMS | 1d | 2026-05-08 | 2026-05-08 | DC1-CRAH-L3-Cx-5850 | 29d | 0d |  | PRM |

Notes:
- DC1-CHWP-L3-Cx-2910: Steps: EC Startup Report; MC Startup Report; Vendor Startup
- DC1-CHWP-L3-Cx-2940: Steps: EC Startup Report; MC Startup Report; Vendor Startup
- DC1-CHWP-L3-Cx-2970: Steps: EC Startup Report; MC Startup Report; Vendor Startup
- DC1-CHWP-L3-Cx-3000: Steps: EC Startup Report; MC Startup Report; Vendor Startup
- DC1-CHWP-L3-Cx-3030: Steps: EC Startup Report; MC Startup Report; Vendor Startup
- DC1-CRAH-L3-Cx-5850: Steps: EC Startup Checklist; MC Startup Checklist; Vendor Startup

| ID | WBS | Activity | Duration | Start | Finish | Predecessors | Total float | Free float | Vendor Responsible Party |
| --- | --- | --- | --- | --- | --- | --- | --- | --- | --- |
|  | 02 | **DH1300 CRAH-DH-02 L3** |  | 2026-05-05 | 2026-05-08 |  |  |  |  |
| DC1-CRAH-L3-Cx-5870 |  | DC1-DH1300-CRAH-DH-02 FTE | 1d | 2026-05-05 | 2026-05-05 | DC1-MOD2-L3-Cx-2900 SS, DC1-MOD2-L3-Cx-2990 SS, DC1-CRAH-L2-3290 | 29d | 0d | ROS |
| DC1-CRAH-L3-Cx-5880 |  | DC1-DH1300-CRAH-DH-02 L3 Startup | 2d | 2026-05-06 | 2026-05-07 | DC1-CRAH-L3-Cx-5870 | 29d | 0d | UMAS |
| DC1-CRAH-L3-Cx-5890 |  | DC1-DH1300-CRAH-DH-02 BMS/EPMS | 1d | 2026-05-08 | 2026-05-08 | DC1-CRAH-L3-Cx-5880 | 29d | 0d | PRM |
|  | 03 | **DH1300 CRAH-DH-03 L3** |  | 2026-05-05 | 2026-05-08 |  |  |  |  |
| DC1-CRAH-L3-Cx-5900 |  | DC1-DH1300-CRAH-DH-03 FTE | 1d | 2026-05-05 | 2026-05-05 | DC1-MOD2-L3-Cx-2870 SS, DC1-MOD2-L3-Cx-2960 SS, DC1-CRAH-L2-3300 | 29d | 0d | ROS |
| DC1-CRAH-L3-Cx-5910 |  | DC1-DH1300-CRAH-DH-03 L3 Startup | 2d | 2026-05-06 | 2026-05-07 | DC1-CRAH-L3-Cx-5900 | 29d | 0d | UMAS |
| DC1-CRAH-L3-Cx-5920 |  | DC1-DH1300-CRAH-DH-03 BMS/EPMS | 1d | 2026-05-08 | 2026-05-08 | DC1-CRAH-L3-Cx-5910 | 29d | 0d | PRM |
|  | 04 | **DH1300 CRAH-DH-04 L3** |  | 2026-05-05 | 2026-05-08 |  |  |  |  |
| DC1-CRAH-L3-Cx-5930 |  | DC1-DH1300-CRAH-DH-04 FTE | 1d | 2026-05-05 | 2026-05-05 | DC1-MOD2-L3-Cx-2840 SS, DC1-MOD2-L3-Cx-2930 SS, DC1-CRAH-L2-3310 | 29d | 0d | ROS |
| DC1-CRAH-L3-Cx-5940 |  | DC1-DH1300-CRAH-DH-04 L3 Startup | 2d | 2026-05-06 | 2026-05-07 | DC1-CRAH-L3-Cx-5930 | 29d | 0d | UMAS |
| DC1-CRAH-L3-Cx-5950 |  | DC1-DH1300-CRAH-DH-04 BMS/EPMS | 1d | 2026-05-08 | 2026-05-08 | DC1-CRAH-L3-Cx-5940 | 29d | 0d | PRM |
|  | 05 | **DH1300 CRAH-DH-05 L3** |  | 2026-05-05 | 2026-05-08 |  |  |  |  |
| DC1-CRAH-L3-Cx-5960 |  | DC1-DH1300-CRAH-DH-05 FTE | 1d | 2026-05-05 | 2026-05-05 | DC1-MOD2-L3-Cx-3020 SS, DC1-MOD2-L3-Cx-2900 SS, DC1-CRAH-L2-3320 | 29d | 0d | ROS |
| DC1-CRAH-L3-Cx-5970 |  | DC1-DH1300-CRAH-DH-05 L3 Startup | 2d | 2026-05-06 | 2026-05-07 | DC1-CRAH-L3-Cx-5960 | 29d | 0d | UMAS |
| DC1-CRAH-L3-Cx-5980 |  | DC1-DH1300-CRAH-DH-05 BMS/EPMS | 1d | 2026-05-08 | 2026-05-08 | DC1-CRAH-L3-Cx-5970 | 29d | 0d | PRM |
|  | 06 | **DH1300 CRAH-DH-06 L3** |  | 2026-05-05 | 2026-05-08 |  |  |  |  |
| DC1-CRAH-L3-Cx-5990 |  | DC1-DH1300-CRAH-DH-06 FTE | 1d | 2026-05-05 | 2026-05-05 | DC1-MOD2-L3-Cx-2870 SS, DC1-MOD2-L3-Cx-2990 SS, DC1-CRAH-L2-3330 | 29d | 0d | ROS |
| DC1-CRAH-L3-Cx-6000 |  | DC1-DH1300-CRAH-DH-06 L3 Startup | 2d | 2026-05-06 | 2026-05-07 | DC1-CRAH-L3-Cx-5990 | 29d | 0d | UMAS |
| DC1-CRAH-L3-Cx-6010 |  | DC1-DH1300-CRAH-DH-06 BMS/EPMS | 1d | 2026-05-08 | 2026-05-08 | DC1-CRAH-L3-Cx-6000 | 29d | 0d | PRM |
|  | 07 | **DH1300 CRAH-DH-07 L3** |  | 2026-05-05 | 2026-05-08 |  |  |  |  |
| DC1-CRAH-L3-Cx-6020 |  | DC1-DH1300-CRAH-DH-07 FTE | 1d | 2026-05-05 | 2026-05-05 | DC1-MOD2-L3-Cx-2840 SS, DC1-MOD2-L3-Cx-2960 SS, DC1-CRAH-L2-3340 | 29d | 0d | ROS |
| DC1-CRAH-L3-Cx-6030 |  | DC1-DH1300-CRAH-DH-07 L3 Startup | 2d | 2026-05-06 | 2026-05-07 | DC1-CRAH-L3-Cx-6020 | 29d | 0d | UMAS |
| DC1-CRAH-L3-Cx-6040 |  | DC1-DH1300-CRAH-DH-07 BMS/EPMS | 1d | 2026-05-08 | 2026-05-08 | DC1-CRAH-L3-Cx-6030 | 29d | 0d | PRM |

Notes:
- DC1-CRAH-L3-Cx-5880: Steps: EC Startup Checklist; MC Startup Checklist; Vendor Startup
- DC1-CRAH-L3-Cx-5910: Steps: EC Startup Checklist; MC Startup Checklist; Vendor Startup
- DC1-CRAH-L3-Cx-5940: Steps: EC Startup Checklist; MC Startup Checklist; Vendor Startup
- DC1-CRAH-L3-Cx-5970: Steps: EC Startup Checklist; MC Startup Checklist; Vendor Startup
- DC1-CRAH-L3-Cx-6000: Steps: EC Startup Checklist; MC Startup Checklist; Vendor Startup
- DC1-CRAH-L3-Cx-6030: Steps: EC Startup Checklist; MC Startup Checklist; Vendor Startup

| ID | WBS | Activity | Duration | Start | Finish | Predecessors | Total float | Free float | Vendor Responsible Party |
| --- | --- | --- | --- | --- | --- | --- | --- | --- | --- |
|  | 08 | **DH1300 CRAH-DH-08 L3** |  | 2026-05-05 | 2026-05-08 |  |  |  |  |
| DC1-CRAH-L3-Cx-6050 |  | DC1-DH1300-CRAH-DH-08 FTE | 1d | 2026-05-05 | 2026-05-05 | DC1-MOD2-L3-Cx-3020 SS, DC1-MOD2-L3-Cx-2900 SS, DC1-CRAH-L2-3350 | 29d | 0d | ROS |
| DC1-CRAH-L3-Cx-6060 |  | DC1-DH1300-CRAH-DH-08 L3 Startup | 2d | 2026-05-06 | 2026-05-07 | DC1-CRAH-L3-Cx-6050 | 29d | 0d | UMAS |
| DC1-CRAH-L3-Cx-6070 |  | DC1-DH1300-CRAH-DH-08 BMS/EPMS | 1d | 2026-05-08 | 2026-05-08 | DC1-CRAH-L3-Cx-6060 | 29d | 0d | PRM |
|  | 09 | **DH1300 CRAH-DH-09 L3** |  | 2026-05-05 | 2026-05-08 |  |  |  |  |
| DC1-CRAH-L3-Cx-6080 |  | DC1-DH1300-CRAH-DH-09 FTE | 1d | 2026-05-05 | 2026-05-05 | DC1-MOD2-L3-Cx-2870 SS, DC1-MOD2-L3-Cx-2990 SS, DC1-CRAH-L2-3360 | 29d | 0d | ROS |
| DC1-CRAH-L3-Cx-6090 |  | DC1-DH1300-CRAH-DH-09 L3 Startup | 2d | 2026-05-06 | 2026-05-07 | DC1-CRAH-L3-Cx-6080 | 29d | 0d | UMAS |
| DC1-CRAH-L3-Cx-6100 |  | DC1-DH1300-CRAH-DH-09 BMS/EPMS | 1d | 2026-05-08 | 2026-05-08 | DC1-CRAH-L3-Cx-6090 | 29d | 0d | PRM |
|  | 10 | **DH1300 CRAH-DH-10 L3** |  | 2026-05-05 | 2026-05-08 |  |  |  |  |
| DC1-CRAH-L3-Cx-6110 |  | DC1-DH1300-CRAH-DH-10 FTE | 1d | 2026-05-05 | 2026-05-05 | DC1-MOD2-L3-Cx-2840 SS, DC1-MOD2-L3-Cx-2960 SS, DC1-CRAH-L2-3370 | 29d | 0d | ROS |
| DC1-CRAH-L3-Cx-6120 |  | DC1-DH1300-CRAH-DH-10 L3 Startup | 2d | 2026-05-06 | 2026-05-07 | DC1-CRAH-L3-Cx-6110 | 29d | 0d | UMAS |
| DC1-CRAH-L3-Cx-6130 |  | DC1-DH1300-CRAH-DH-10 BMS/EPMS | 1d | 2026-05-08 | 2026-05-08 | DC1-CRAH-L3-Cx-6120 | 29d | 0d | PRM |
|  | 11 | **DH1300 CRAH-DH-11 L3** |  | 2026-05-05 | 2026-05-08 |  |  |  |  |
| DC1-CRAH-L3-Cx-6140 |  | DC1-DH1300-CRAH-DH-11 FTE | 1d | 2026-05-05 | 2026-05-05 | DC1-MOD2-L3-Cx-3020 SS, DC1-MOD2-L3-Cx-2930 SS, DC1-CRAH-L2-3380 | 29d | 0d | ROS |
| DC1-CRAH-L3-Cx-6150 |  | DC1-DH1300-CRAH-DH-11 L3 Startup | 2d | 2026-05-06 | 2026-05-07 | DC1-CRAH-L3-Cx-6140 | 29d | 0d | UMAS |
| DC1-CRAH-L3-Cx-6160 |  | DC1-DH1300-CRAH-DH-11 BMS/EPMS | 1d | 2026-05-08 | 2026-05-08 | DC1-CRAH-L3-Cx-6150 | 29d | 0d | PRM |
|  | 12 | **DH1300 CRAH-DH-12 L3** |  | 2026-05-05 | 2026-05-08 |  |  |  |  |
| DC1-CRAH-L3-Cx-6170 |  | DC1-DH1300-CRAH-DH-12 FTE | 1d | 2026-05-05 | 2026-05-05 | DC1-MOD2-L3-Cx-2900 SS, DC1-MOD2-L3-Cx-2990 SS, DC1-CRAH-L2-3390 | 29d | 0d | ROS |
| DC1-CRAH-L3-Cx-6180 |  | DC1-DH1300-CRAH-DH-12 L3 Startup | 2d | 2026-05-06 | 2026-05-07 | DC1-CRAH-L3-Cx-6170 | 29d | 0d | UMAS |
| DC1-CRAH-L3-Cx-6190 |  | DC1-DH1300-CRAH-DH-12 BMS/EPMS | 1d | 2026-05-08 | 2026-05-08 | DC1-CRAH-L3-Cx-6180 | 29d | 0d | PRM |
|  | 13 | **DH1300 CRAH-DH-13 L3** |  | 2026-05-05 | 2026-05-08 |  |  |  |  |
| DC1-CRAH-L3-Cx-6200 |  | DC1-DH1300-CRAH-DH-13 FTE | 1d | 2026-05-05 | 2026-05-05 | DC1-MOD2-L3-Cx-2870 SS, DC1-MOD2-L3-Cx-2960 SS, DC1-CRAH-L2-3400 | 29d | 0d | ROS |
| DC1-CRAH-L3-Cx-6210 |  | DC1-DH1300-CRAH-DH-13 L3 Startup | 2d | 2026-05-06 | 2026-05-07 | DC1-CRAH-L3-Cx-6200 | 29d | 0d | UMAS |
| DC1-CRAH-L3-Cx-6220 |  | DC1-DH1300-CRAH-DH-13 BMS/EPMS | 1d | 2026-05-08 | 2026-05-08 | DC1-CRAH-L3-Cx-6210 | 29d | 0d | PRM |

Notes:
- DC1-CRAH-L3-Cx-6060: Steps: EC Startup Checklist; MC Startup Checklist; Vendor Startup
- DC1-CRAH-L3-Cx-6090: Steps: EC Startup Checklist; MC Startup Checklist; Vendor Startup
- DC1-CRAH-L3-Cx-6120: Steps: EC Startup Checklist; MC Startup Checklist; Vendor Startup
- DC1-CRAH-L3-Cx-6150: Steps: EC Startup Checklist; MC Startup Checklist; Vendor Startup
- DC1-CRAH-L3-Cx-6180: Steps: EC Startup Checklist; MC Startup Checklist; Vendor Startup
- DC1-CRAH-L3-Cx-6210: Steps: EC Startup Checklist; MC Startup Checklist; Vendor Startup

| ID | WBS | Activity | Duration | Start | Finish | Predecessors | Total float | Free float | Vendor Responsible Party |
| --- | --- | --- | --- | --- | --- | --- | --- | --- | --- |
|  | 14 | **DH1300 CRAH-DH-14 L3** |  | 2026-05-05 | 2026-05-08 |  |  |  |  |
| DC1-CRAH-L3-Cx-6230 |  | DC1-DH1300-CRAH-DH-14 FTE | 1d | 2026-05-05 | 2026-05-05 | DC1-MOD2-L3-Cx-2840 SS, DC1-MOD2-L3-Cx-2930 SS, DC1-CRAH-L2-3410 | 29d | 0d | ROS |
| DC1-CRAH-L3-Cx-6240 |  | DC1-DH1300-CRAH-DH-14 L3 Startup | 2d | 2026-05-06 | 2026-05-07 | DC1-CRAH-L3-Cx-6230 | 29d | 0d | UMAS |
| DC1-CRAH-L3-Cx-6250 |  | DC1-DH1300-CRAH-DH-14 BMS/EPMS | 1d | 2026-05-08 | 2026-05-08 | DC1-CRAH-L3-Cx-6240 | 29d | 0d | PRM |
|  | 15 | **DH1300 CRAH-DH-15 L3** |  | 2026-05-05 | 2026-05-08 |  |  |  |  |
| DC1-CRAH-L3-Cx-6260 |  | DC1-DH1300-CRAH-DH-15 FTE | 1d | 2026-05-05 | 2026-05-05 | DC1-MOD2-L3-Cx-2840 SS, DC1-MOD2-L3-Cx-2870 SS, DC1-CRAH-L2-3420 | 29d | 0d | ROS |
| DC1-CRAH-L3-Cx-6270 |  | DC1-DH1300-CRAH-DH-15 L3 Startup | 2d | 2026-05-06 | 2026-05-07 | DC1-CRAH-L3-Cx-6260 | 29d | 0d | UMAS |
| DC1-CRAH-L3-Cx-6280 |  | DC1-DH1300-CRAH-DH-15 BMS/EPMS | 1d | 2026-05-08 | 2026-05-08 | DC1-CRAH-L3-Cx-6270 | 29d | 0d | PRM |
|  | 16 | **DH1300 CRAH-DH-16 L3** |  | 2026-05-05 | 2026-05-08 |  |  |  |  |
| DC1-CRAH-L3-Cx-6290 |  | DC1-DH1300-CRAH-DH-16 FTE | 1d | 2026-05-05 | 2026-05-05 | DC1-MOD2-L3-Cx-2870 SS, DC1-MOD2-L3-Cx-2900 SS, DC1-CRAH-L2-3430 | 29d | 0d | ROS |
| DC1-CRAH-L3-Cx-6300 |  | DC1-DH1300-CRAH-DH-16 L3 Startup | 2d | 2026-05-06 | 2026-05-07 | DC1-CRAH-L3-Cx-6290 | 29d | 0d | UMAS |
| DC1-CRAH-L3-Cx-6310 |  | DC1-DH1300-CRAH-DH-16 BMS/EPMS | 1d | 2026-05-08 | 2026-05-08 | DC1-CRAH-L3-Cx-6300 | 29d | 0d | PRM |
|  | 17 | **DH1300 CRAH-DH-17 L3** |  | 2026-05-05 | 2026-05-08 |  |  |  |  |
| DC1-CRAH-L3-Cx-6320 |  | DC1-DH1300-CRAH-DH-17 FTE | 1d | 2026-05-05 | 2026-05-05 | DC1-MOD2-L3-Cx-2900 SS, DC1-MOD2-L3-Cx-2930 SS, DC1-CRAH-L2-3440 | 29d | 0d | ROS |
| DC1-CRAH-L3-Cx-6330 |  | DC1-DH1300-CRAH-DH-17 L3 Startup | 2d | 2026-05-06 | 2026-05-07 | DC1-CRAH-L3-Cx-6320 | 29d | 0d | UMAS |
| DC1-CRAH-L3-Cx-6340 |  | DC1-DH1300-CRAH-DH-17 BMS/EPMS | 1d | 2026-05-08 | 2026-05-08 | DC1-CRAH-L3-Cx-6330 | 29d | 0d | PRM |
|  | 18 | **DH1300 CRAH-DH-18 L3** |  | 2026-05-05 | 2026-05-08 |  |  |  |  |
| DC1-CRAH-L3-Cx-6350 |  | DC1-DH1300-CRAH-DH-18 FTE | 1d | 2026-05-05 | 2026-05-05 | DC1-MOD2-L3-Cx-2930 SS, DC1-MOD2-L3-Cx-2960 SS, DC1-CRAH-L2-3450 | 29d | 0d | ROS |
| DC1-CRAH-L3-Cx-6360 |  | DC1-DH1300-CRAH-DH-18 L3 Startup | 2d | 2026-05-06 | 2026-05-07 | DC1-CRAH-L3-Cx-6350 | 29d | 0d | UMAS |
| DC1-CRAH-L3-Cx-6370 |  | DC1-DH1300-CRAH-DH-18 BMS/EPMS | 1d | 2026-05-08 | 2026-05-08 | DC1-CRAH-L3-Cx-6360 | 29d | 0d | PRM |
|  | 19 | **DH1300 CRAH-DH-19 L3** |  | 2026-05-05 | 2026-05-08 |  |  |  |  |
| DC1-CRAH-L3-Cx-6380 |  | DC1-DH1300-CRAH-DH-19 FTE | 1d | 2026-05-05 | 2026-05-05 | DC1-MOD2-L3-Cx-2960 SS, DC1-MOD2-L3-Cx-2990 SS, DC1-CRAH-L2-3460 | 29d | 0d | ROS |
| DC1-CRAH-L3-Cx-6390 |  | DC1-DH1300-CRAH-DH-19 L3 Startup | 2d | 2026-05-06 | 2026-05-07 | DC1-CRAH-L3-Cx-6380 | 29d | 0d | UMAS |
| DC1-CRAH-L3-Cx-6400 |  | DC1-DH1300-CRAH-DH-19 BMS/EPMS | 1d | 2026-05-08 | 2026-05-08 | DC1-CRAH-L3-Cx-6390 | 29d | 0d | PRM |

Notes:
- DC1-CRAH-L3-Cx-6240: Steps: EC Startup Checklist; MC Startup Checklist; Vendor Startup
- DC1-CRAH-L3-Cx-6270: Steps: EC Startup Checklist; MC Startup Checklist; Vendor Startup
- DC1-CRAH-L3-Cx-6300: Steps: EC Startup Checklist; MC Startup Checklist; Vendor Startup
- DC1-CRAH-L3-Cx-6330: Steps: EC Startup Checklist; MC Startup Checklist; Vendor Startup
- DC1-CRAH-L3-Cx-6360: Steps: EC Startup Checklist; MC Startup Checklist; Vendor Startup
- DC1-CRAH-L3-Cx-6390: Steps: EC Startup Checklist; MC Startup Checklist; Vendor Startup

| ID | WBS | Activity | Duration | Start | Finish | Predecessors | Total float | Free float | Vendor Responsible Party |
| --- | --- | --- | --- | --- | --- | --- | --- | --- | --- |
|  | 20 | **DH1300 CRAH-DH-20 L3** |  | 2026-05-05 | 2026-05-08 |  |  |  |  |
| DC1-CRAH-L3-Cx-6410 |  | DC1-DH1300-CRAH-DH-20 FTE | 1d | 2026-05-05 | 2026-05-05 | DC1-MOD2-L3-Cx-3020 SS, DC1-MOD2-L3-Cx-2990 SS, DC1-CRAH-L2-3470 | 29d | 0d | ROS |
| DC1-CRAH-L3-Cx-6420 |  | DC1-DH1300-CRAH-DH-20 L3 Startup | 2d | 2026-05-06 | 2026-05-07 | DC1-CRAH-L3-Cx-6410 | 29d | 0d | UMAS |
| DC1-CRAH-L3-Cx-6430 |  | DC1-DH1300-CRAH-DH-20 BMS/EPMS | 1d | 2026-05-08 | 2026-05-08 | DC1-CRAH-L3-Cx-6420 | 29d | 0d | PRM |
|  | 21 | **DH1300 CRAH-DH-21 L3** |  | 2026-05-05 | 2026-05-08 |  |  |  |  |
| DC1-CRAH-L3-Cx-6440 |  | DC1-DH1300-CRAH-DH-21 FTE | 1d | 2026-05-05 | 2026-05-05 | DC1-MOD2-L3-Cx-2840 SS, DC1-CRAH-L2-3480, DC1-MOD2-L3-Cx-3020 SS | 29d | 0d | ROS |
| DC1-CRAH-L3-Cx-6450 |  | DC1-DH1300-CRAH-DH-21 L3 Startup | 2d | 2026-05-06 | 2026-05-07 | DC1-CRAH-L3-Cx-6440 | 29d | 0d | UMAS |
| DC1-CRAH-L3-Cx-6460 |  | DC1-DH1300-CRAH-DH-21 BMS/EPMS | 1d | 2026-05-08 | 2026-05-08 | DC1-CRAH-L3-Cx-6450 | 29d | 0d | PRM |
|  | 22 | **DH1300 CRAH-DH-22 L3** |  | 2026-05-05 | 2026-05-08 |  |  |  |  |
| DC1-CRAH-L3-Cx-6470 |  | DC1-DH1300-CRAH-DH-22 FTE | 1d | 2026-05-05 | 2026-05-05 | DC1-MOD2-L3-Cx-2840 SS, DC1-MOD2-L3-Cx-2900 SS, DC1-CRAH-L2-3490 | 29d | 0d | ROS |
| DC1-CRAH-L3-Cx-6480 |  | DC1-DH1300-CRAH-DH-22 L3 Startup | 2d | 2026-05-06 | 2026-05-07 | DC1-CRAH-L3-Cx-6470 | 29d | 0d | UMAS |
| DC1-CRAH-L3-Cx-6490 |  | DC1-DH1300-CRAH-DH-22 BMS/EPMS | 1d | 2026-05-08 | 2026-05-08 | DC1-CRAH-L3-Cx-6480 | 29d | 0d | PRM |
|  | 23 | **DH1300 CRAH-DH-23 L3** |  | 2026-05-05 | 2026-05-08 |  |  |  |  |
| DC1-CRAH-L3-Cx-6500 |  | DC1-DH1300-CRAH-DH-23 FTE | 1d | 2026-05-05 | 2026-05-05 | DC1-MOD2-L3-Cx-2870 SS, DC1-MOD2-L3-Cx-2930 SS, DC1-CRAH-L2-3500 | 29d | 0d | ROS |
| DC1-CRAH-L3-Cx-6510 |  | DC1-DH1300-CRAH-DH-23 L3 Startup | 2d | 2026-05-06 | 2026-05-07 | DC1-CRAH-L3-Cx-6500 | 29d | 0d | UMAS |
| DC1-CRAH-L3-Cx-6520 |  | DC1-DH1300-CRAH-DH-23 BMS/EPMS | 1d | 2026-05-08 | 2026-05-08 | DC1-CRAH-L3-Cx-6510 | 29d | 0d | PRM |
|  | 24 | **DH1300 CRAH-DH-24 L3** |  | 2026-05-05 | 2026-05-08 |  |  |  |  |
| DC1-CRAH-L3-Cx-6530 |  | DC1-DH1300-CRAH-DH-24 FTE | 1d | 2026-05-05 | 2026-05-05 | DC1-MOD2-L3-Cx-2900 SS, DC1-MOD2-L3-Cx-2960 SS, DC1-CRAH-L2-3510 | 29d | 0d | ROS |
| DC1-CRAH-L3-Cx-6540 |  | DC1-DH1300-CRAH-DH-24 L3 Startup | 2d | 2026-05-06 | 2026-05-07 | DC1-CRAH-L3-Cx-6530 | 29d | 0d | UMAS |
| DC1-CRAH-L3-Cx-6550 |  | DC1-DH1300-CRAH-DH-24 BMS/EPMS | 1d | 2026-05-08 | 2026-05-08 | DC1-CRAH-L3-Cx-6540 | 29d | 0d | PRM |
|  | 25 | **DH1300 CRAH-DH-25 L3** |  | 2026-05-05 | 2026-05-08 |  |  |  |  |
| DC1-CRAH-L3-Cx-6560 |  | DC1-DH1300-CRAH-DH-25 FTE | 1d | 2026-05-05 | 2026-05-05 | DC1-MOD2-L3-Cx-2930 SS, DC1-MOD2-L3-Cx-2990 SS, DC1-CRAH-L2-3520 | 29d | 0d | ROS |
| DC1-CRAH-L3-Cx-6570 |  | DC1-DH1300-CRAH-DH-25 L3 Startup | 2d | 2026-05-06 | 2026-05-07 | DC1-CRAH-L3-Cx-6560 | 29d | 0d | UMAS |
| DC1-CRAH-L3-Cx-6580 |  | DC1-DH1300-CRAH-DH-25 BMS/EPMS | 1d | 2026-05-08 | 2026-05-08 | DC1-CRAH-L3-Cx-6570 | 29d | 0d | PRM |

Notes:
- DC1-CRAH-L3-Cx-6420: Steps: EC Startup Checklist; MC Startup Checklist; Vendor Startup
- DC1-CRAH-L3-Cx-6450: Steps: EC Startup Checklist; MC Startup Checklist; Vendor Startup
- DC1-CRAH-L3-Cx-6480: Steps: EC Startup Checklist; MC Startup Checklist; Vendor Startup
- DC1-CRAH-L3-Cx-6510: Steps: EC Startup Checklist; MC Startup Checklist; Vendor Startup
- DC1-CRAH-L3-Cx-6540: Steps: EC Startup Checklist; MC Startup Checklist; Vendor Startup
- DC1-CRAH-L3-Cx-6570: Steps: EC Startup Checklist; MC Startup Checklist; Vendor Startup

| ID | WBS | Activity | Duration | Start | Finish | Predecessors | Total float | Free float | Vendor Responsible Party |
| --- | --- | --- | --- | --- | --- | --- | --- | --- | --- |
|  | 26 | **DH1300 CRAH-DH-26 L3** |  | 2026-05-05 | 2026-05-08 |  |  |  |  |
| DC1-CRAH-L3-Cx-6590 |  | DC1-DH1300-CRAH-DH-26 FTE | 1d | 2026-05-05 | 2026-05-05 | DC1-MOD2-L3-Cx-3020 SS, DC1-MOD2-L3-Cx-2960 SS, DC1-CRAH-L2-3530 | 29d | 0d | ROS |
| DC1-CRAH-L3-Cx-6600 |  | DC1-DH1300-CRAH-DH-26 L3 Startup | 2d | 2026-05-06 | 2026-05-07 | DC1-CRAH-L3-Cx-6590 | 29d | 0d | UMAS |
| DC1-CRAH-L3-Cx-6610 |  | DC1-DH1300-CRAH-DH-26 BMS/EPMS | 1d | 2026-05-08 | 2026-05-08 | DC1-CRAH-L3-Cx-6600 | 29d | 0d | PRM |
|  | 27 | **DH1300 CRAH-DH-27 L3** |  | 2026-05-05 | 2026-05-08 |  |  |  |  |
| DC1-CRAH-L3-Cx-6620 |  | DC1-DH1300-CRAH-DH-27 FTE | 1d | 2026-05-05 | 2026-05-05 | DC1-MOD2-L3-Cx-2840 SS, DC1-MOD2-L3-Cx-2990 SS, DC1-CRAH-L2-3540 | 29d | 0d | ROS |
| DC1-CRAH-L3-Cx-6630 |  | DC1-DH1300-CRAH-DH-27 L3 Startup | 2d | 2026-05-06 | 2026-05-07 | DC1-CRAH-L3-Cx-6620 | 29d | 0d | UMAS |
| DC1-CRAH-L3-Cx-6640 |  | DC1-DH1300-CRAH-DH-27 BMS/EPMS | 1d | 2026-05-08 | 2026-05-08 | DC1-CRAH-L3-Cx-6630 | 29d | 0d | PRM |
|  | 28 | **DH1300 CRAH-DH-28 L3** |  | 2026-05-05 | 2026-05-08 |  |  |  |  |
| DC1-CRAH-L3-Cx-6650 |  | DC1-DH1300-CRAH-DH-28 FTE | 1d | 2026-05-05 | 2026-05-05 | DC1-MOD2-L3-Cx-2870 SS, DC1-CRAH-L2-3550, DC1-MOD2-L3-Cx-3020 SS | 29d | 0d | ROS |
| DC1-CRAH-L3-Cx-6660 |  | DC1-DH1300-CRAH-DH-28 L3 Startup | 2d | 2026-05-06 | 2026-05-07 | DC1-CRAH-L3-Cx-6650 | 29d | 0d | UMAS |
| DC1-CRAH-L3-Cx-6670 |  | DC1-DH1300-CRAH-DH-28 BMS/EPMS | 1d | 2026-05-08 | 2026-05-08 | DC1-CRAH-L3-Cx-6660 | 29d | 0d | PRM |
|  | 29 | **DH1300 CRAH-EG-01 L3** |  | 2026-05-05 | 2026-05-08 |  |  |  |  |
| DC1-CRAH-L3-Cx-6680 |  | DC1-DH1300-CRAH-EG-1302-01 FTE | 1d | 2026-05-05 | 2026-05-05 | DC1-CRAH-L2-3560, DC1-MOD2-L3-Cx-2990 SS | 29d | 0d | ROS |
| DC1-CRAH-L3-Cx-6690 |  | DC1-DH1300-CRAH-EG-1302-01 L3 Startup | 2d | 2026-05-06 | 2026-05-07 | DC1-CRAH-L3-Cx-6680 | 29d | 0d | VER |
| DC1-CRAH-L3-Cx-6700 |  | DC1-DH1300-CRAH-EG-1302-01 BMS/EPMS | 1d | 2026-05-08 | 2026-05-08 | DC1-CRAH-L3-Cx-6690 | 29d | 0d | PRM |
|  | 30 | **DH1300 CRAH-EG-02 L3** |  | 2026-05-05 | 2026-05-08 |  |  |  |  |
| DC1-CRAH-L3-Cx-6710 |  | DC1-DH1300-CRAH-EG-1302-02 FTE | 1d | 2026-05-05 | 2026-05-05 | DC1-MOD2-L3-Cx-2930 SS, DC1-CRAH-L2-3570 | 29d | 0d | ROS |
| DC1-CRAH-L3-Cx-6720 |  | DC1-DH1300-CRAH-EG-1302-02 L3 Startup | 2d | 2026-05-06 | 2026-05-07 | DC1-CRAH-L3-Cx-6710 | 29d | 0d | VER |
| DC1-CRAH-L3-Cx-6730 |  | DC1-DH1300-CRAH-EG-1302-02 BMS/EPMS | 1d | 2026-05-08 | 2026-05-08 | DC1-CRAH-L3-Cx-6720 | 29d | 0d | PRM |
|  | 31 | **DH1300 CRAH-EG-03 L3** |  | 2026-05-05 | 2026-05-08 |  |  |  |  |
| DC1-CRAH-L3-Cx-6740 |  | DC1-DH1300-CRAH-EG-1302-03 FTE | 1d | 2026-05-05 | 2026-05-05 | DC1-MOD2-L3-Cx-2900 SS, DC1-CRAH-L2-3580 | 29d | 0d | ROS |
| DC1-CRAH-L3-Cx-6750 |  | DC1-DH1300-CRAH-EG-1302-03 L3 Startup | 2d | 2026-05-06 | 2026-05-07 | DC1-CRAH-L3-Cx-6740 | 29d | 0d | VER |
| DC1-CRAH-L3-Cx-6760 |  | DC1-DH1300-CRAH-EG-1302-03 BMS/EPMS | 1d | 2026-05-08 | 2026-05-08 | DC1-CRAH-L3-Cx-6750 | 29d | 0d | PRM |

Notes:
- DC1-CRAH-L3-Cx-6600: Steps: EC Startup Checklist; MC Startup Checklist; Vendor Startup
- DC1-CRAH-L3-Cx-6630: Steps: EC Startup Checklist; MC Startup Checklist; Vendor Startup
- DC1-CRAH-L3-Cx-6660: Steps: EC Startup Checklist; MC Startup Checklist; Vendor Startup
- DC1-CRAH-L3-Cx-6690: Steps: EC Startup Checklist; MC Startup Checklist; Vendor Startup
- DC1-CRAH-L3-Cx-6720: Steps: EC Startup Checklist; MC Startup Checklist; Vendor Startup
- DC1-CRAH-L3-Cx-6750: Steps: EC Startup Checklist; MC Startup Checklist; Vendor Startup

| ID | WBS | Activity | Duration | Start | Finish | Predecessors | Total float | Free float | Calendar | Vendor Responsible Party | Layton Responsible Party | Notes |
| --- | --- | --- | --- | --- | --- | --- | --- | --- | --- | --- | --- | --- |
|  | 32 | **DH1300 CRAH-EG-04 L3** |  | 2026-05-05 | 2026-05-08 |  |  |  |  |  |  |  |
| DC1-CRAH-L3-Cx-6770 |  | DC1-DH1300-CRAH-EG-1302-04 FTE | 1d | 2026-05-05 | 2026-05-05 | DC1-CRAH-L2-3590, DC1-MOD2-L3-Cx-2840 SS | 29d | 0d |  | ROS |  |  |
| DC1-CRAH-L3-Cx-6780 |  | DC1-DH1300-CRAH-EG-1302-04 L3 Startup | 2d | 2026-05-06 | 2026-05-07 | DC1-CRAH-L3-Cx-6770 | 29d | 0d |  | VER |  |  |
| DC1-CRAH-L3-Cx-6790 |  | DC1-DH1300-CRAH-EG-1302-04 BMS/EPMS | 1d | 2026-05-08 | 2026-05-08 | DC1-CRAH-L3-Cx-6780 | 29d | 0d |  | PRM |  |  |
|  | 33 | **DC1-DH1300-DOAS-RT-01 L3** |  | 2026-05-05 | 2026-05-08 |  |  |  |  |  |  |  |
| DC1-DOAS-L3-Cx-2240 |  | DC1-DH1300-DOAS-RT-01 FTE | 1d | 2026-05-05 | 2026-05-05 | DC1-DOAS-L2-2080, DC1-MOD2-L3-Cx-3020 SS | 29d | 0d |  | ROS |  |  |
| DC1-DOAS-L3-Cx-2250 |  | DC1-DH1300-DOAS-RT-01 L3 Startup | 2d | 2026-05-06 | 2026-05-07 | DC1-DOAS-L3-Cx-2240 | 29d | 0d |  | TAS |  |  |
| DC1-DOAS-L3-Cx-2260 |  | DC1-DH1300-DOAS-RT-01 BMS/EPMS | 1d | 2026-05-08 | 2026-05-08 | DC1-DOAS-L3-Cx-2250 | 29d | 0d |  | PRM |  |  |
|  | 34 | **DC1-DH1300-DOAS-RT-02 L3** |  | 2026-05-05 | 2026-05-08 |  |  |  |  |  |  |  |
| DC1-DOAS-L3-Cx-2270 |  | DC1-DH1300-DOAS-RT-02 FTE | 1d | 2026-05-05 | 2026-05-05 | DC1-DOAS-L2-2090, DC1-MOD2-L3-Cx-2990 SS | 29d | 0d |  | ROS |  |  |
| DC1-DOAS-L3-Cx-2280 |  | DC1-DH1300-DOAS-RT-02 L3 Startup | 2d | 2026-05-06 | 2026-05-07 | DC1-DOAS-L3-Cx-2270 | 29d | 0d |  | TAS |  |  |
| DC1-DOAS-L3-Cx-2290 |  | DC1-DH1300-DOAS-RT-02 BMS/EPMS | 1d | 2026-05-08 | 2026-05-08 | DC1-DOAS-L3-Cx-2280 | 29d | 0d |  | PRM |  |  |
|  | 14 | **DC1-DH1300 LOADBANK** |  | 2026-05-07 | 2026-08-20 |  |  |  |  |  |  |  |
| DC1-DH1300-LB-1000 |  | DC1-DH1300 Connect Loadbanks (Connect to RPP, Maybe CODs Extra Breaker) | 5d | 2026-05-07 | 2026-05-13 | QTS - 8960 FF, QTS - 9420 FF, QTS - 9650 FF, DC1-CHLR-L3-Cx-3260, DC1-CHLR-L3-Cx-3270, DC1-CHLR-L3-Cx-3280, DC1-CHLR-L3-Cx-3290, DC1-CHLR-L3-Cx-3300, DC1-CHLR-L3-Cx-3310, DC1-CHLR-L3-Cx-3320 | 3d | 0d |  | PHE | Riley Warring |  |
| DC1-DH1300-LB-1010 |  | DC1-DH1300 Burn in Chillers | 5d | 2026-05-14 | 2026-05-20 | DC1-RPP-L3-CX-6835, DC1-RPP-L3-CX-6805, DC1-RPP-L3-CX-6775, DC1-RPP-L3-CX-6745, DC1-RPP-L3-CX-6715, DC1-RPP-L3-CX-6685, DC1-RPP-L3-CX-6655, DC1-RPP-L3-CX-6625, DC1-RPP-L3-CX-6595, DC1-RPP-L3-CX-6565, DC1-RPP-L3-CX-6535, DC1-RPP-L3-CX-6505, DC1-RPP-L3-CX-6475, DC1-RPP-L3-CX-6445, DC1-RPP-L3-CX-6415, DC1-RPP-L3-CX-6385, DC1-RPP-L3-CX-6355, DC1-RPP-L3-CX-6325, DC1-RPP-L3-CX-6295, DC1-RPP-L3-CX-6265, DC1-RPP-L3-CX-6235, DC1-RPP-L3-CX-6205, DC1-RPP-L3-CX-6175, DC1-RPP-L3-CX-6145, DC1-RPP-L3-CX-6115, DC1-RPP-L3-CX-6085, DC1-RPP-L3-CX-6055, DC1-RPP-L3-CX-6025, DC1-RPP-L3-CX-5995, DC1-RPP-L3-CX-5965, DC1-RPP-L3-CX-5935, DC1-RPP-L3-CX-5905, DC1-RPP-L3-CX-5875, DC1-RPP-L3-CX-5845, DC1-RPP-L3-CX-5815, DC1-RPP-L3-CX-5785, DC1-DH1300-LB-1000 | 3d | 0d |  | LAY | Riley Warring | Changed Pred from COD to RPP FTE |
| DC1-DH1300-LB-1040 |  | DC1-DH1300 Water Load Bank (Secondary Side) | 12d | 2026-07-30 | 2026-08-14 | DC1-IST-2040, DC1-CDU-L3-CX-7045, DC1-CDU-L3-CX-7075, DC1-CDU-L3-CX-7105, DC1-CDU-L3-CX-7135, DC1-CDU-L3-CX-7165, DC1-CDU-L3-CX-7195, DC1-CDU-L3-CX-7225, DC1-CDU-L3-CX-7255, DC1-CDU-L3-CX-7285, DC1-CDU-L3-CX-7315, DC1-CDU-L3-CX-7345, DC1-CDU-L3-CX-7375, DC1-CDU-L3-CX-7405, DC1-CDU-L3-CX-7435, DC1-CDU-L3-CX-7465, DC1-CDU-L3-CX-7495, DC1-CDU-L3-CX-7525, DC1-CDU-L3-CX-7555 | 0d |  |  | LAY | Riley Warring |  |
| DC1-DH1300-LB-1030 |  | DC1-DH1300 10% Continuity Testing RPP Whips | 2d | 2026-08-17 | 2026-08-18 | DC1-DH1300-LB-1040, QTS - 9970, QTS - 10080, QTS - 10090 | 4d | 0d |  | PHE | Riley Warring |  |
| DC1-DH1300-LB-1050 |  | DC1-DH1300 Install DanFoss Connectors | 2d | 2026-08-19 | 2026-08-20 | DC1-DH1300-LB-1030 | 4d |  |  | PHE | Riley Warring |  |
|  | 15 | **DC1-DH1300 TAB** |  | 2026-05-11 | 2026-06-04 |  |  |  |  |  |  |  |
| DC1-DH1300-TAB-1010 |  | DC1-DH1300 Air Tab | 5d | 2026-05-11 | 2026-05-15 | DC1-CRAH-L3-Cx-5860, DC1-CRAH-L3-Cx-5890, DC1-CRAH-L3-Cx-5920, DC1-CRAH-L3-Cx-5950, DC1-CRAH-L3-Cx-5980, DC1-CRAH-L3-Cx-6010, DC1-CRAH-L3-Cx-6040, DC1-CRAH-L3-Cx-6070, DC1-CRAH-L3-Cx-6100, DC1-CRAH-L3-Cx-6130, DC1-CRAH-L3-Cx-6160, DC1-CRAH-L3-Cx-6190, DC1-CRAH-L3-Cx-6220, DC1-CRAH-L3-Cx-6250, DC1-CRAH-L3-Cx-6280, DC1-CRAH-L3-Cx-6310, DC1-CRAH-L3-Cx-6340, DC1-CRAH-L3-Cx-6370, DC1-CRAH-L3-Cx-6400, DC1-CRAH-L3-Cx-6430, DC1-CRAH-L3-Cx-6460, DC1-CRAH-L3-Cx-6490, DC1-CRAH-L3-Cx-6520, DC1-CRAH-L3-Cx-6550, DC1-CRAH-L3-Cx-6580, DC1-CRAH-L3-Cx-6610, DC1-CRAH-L3-Cx-6640, DC1-CRAH-L3-Cx-6670, DC1-CRAH-L3-Cx-6700, DC1-CRAH-L3-Cx-6730, DC1-CRAH-L3-Cx-6760, DC1-CRAH-L3-Cx-6790, DC1-DOAS-L3-Cx-2260, DC1-DOAS-L3-Cx-2290 | 29d | 28d |  | LAY | Riley Warring |  |
| DC1-DH1300-TAB-1000 |  | DC1-DH1300 Water Tab (Industrial Loop) | 10d | 2026-05-21 | 2026-06-04 | DC1-CHLR-L3-Cx-3070, DC1-CHLR-L3-Cx-3100, DC1-CHLR-L3-Cx-3130, DC1-CHLR-L3-Cx-3160, DC1-CHLR-L3-Cx-3190, DC1-CHLR-L3-Cx-3220, DC1-CHLR-L3-Cx-3250, QTS-101290, DC1-CHWP-L3-Cx-2860, DC1-CHWP-L3-Cx-2890, DC1-CHWP-L3-Cx-2920, DC1-CHWP-L3-Cx-2950, DC1-CHWP-L3-Cx-2980, DC1-CHWP-L3-Cx-3010, DC1-CHWP-L3-Cx-3040 | 1d | 0d |  | LAY | Riley Warring | Removed Chillers from TAB |
|  | 04 | **Data Hall 1300 Cx L4** |  | 2026-05-22 | 2026-08-26 |  |  |  |  |  |  |  |
| DC1-ELEC-L4-Cx-1050 |  | DC1 Data Hall 1300 Electrical L4 | 20d | 2026-05-22 | 2026-06-19 | DC1-GEN-L3-CX-2860, DC1-GEN-L3-CX-2890, DC1-GEN-L3-CX-2920, DC1-GEN-L3-CX-2950, DC1-GEN-L3-CX-2980, DC1-GEN-L3-CX-3010, DC1-GEN-L3-CX-3040, DC1-XFM-L3-CX-1860, DC1-XFM-L3-CX-1890, DC1-XFM-L3-CX-1920, DC1-XFM-L3-CX-1950, DC1-XFM-L3-CX-1980, DC1-XFM-L3-CX-2010, DC1-XFM-L3-CX-2040, DC1-SWD-L3-CX-2860, DC1-SWD-L3-CX-2890, DC1-SWD-L3-CX-2920, DC1-SWD-L3-CX-2950, DC1-SWD-L3-CX-2980, DC1-SWD-L3-CX-3010, DC1-SWD-L3-CX-3040, DC1-MOD1-L3-CX-2860, DC1-MOD1-L3-CX-2890, DC1-MOD1-L3-CX-2920, DC1-MOD1-L3-CX-2950, DC1-MOD1-L3-CX-2980, DC1-MOD1-L3-CX-3010, DC1-MOD1-L3-CX-3040, DC1-UPSM-L3-CX-2860, DC1-UPSM-L3-CX-2890, DC1-UPSM-L3-CX-2920, DC1-UPSM-L3-CX-2950, DC1-UPSM-L3-CX-2980, DC1-UPSM-L3-CX-3010, DC1-UPSM-L3-CX-3040, DC1-ATS-L3-CX-5805, DC1-ATS-L3-CX-5835, DC1-ATS-L3-CX-5865, DC1-ATS-L3-CX-5895, DC1-ATS-L3-CX-5925, DC1-ATS-L3-CX-5955, DC1-ATS-L3-CX-5985, DC1-ATS-L3-CX-6015, DC1-ATS-L3-CX-6045, DC1-ATS-L3-CX-6075, DC1-ATS-L3-CX-6105, DC1-ATS-L3-CX-6135, DC1-ATS-L3-CX-6165, DC1-ATS-L3-CX-6195, DC1-ATS-L3-CX-6225, DC1-ATS-L3-CX-6255, DC1-ATS-L3-CX-6285, DC1-ATS-L3-CX-6315, DC1-ATS-L3-CX-6345, DC1-ATS-L3-CX-6375, DC1-ATS-L3-CX-6405, DC1-ATS-L3-CX-6435, DC1-ATS-L3-CX-6465, DC1-ATS-L3-CX-6495, DC1-ATS-L3-CX-6525, DC1-ATS-L3-CX-6555, DC1-ATS-L3-CX-6585, DC1-ATS-L3-CX-6615, DC1-ATS-L3-CX-6645, DC1-ATS-L3-CX-6675, DC1-ATS-L3-CX-6705, DC1-ATS-L3-CX-6735, DC1-ATS-L3-CX-6765, DC1-ATS-L3-CX-6795, DC1-ATS-L3-CX-6825, DC1-ATS-L3-CX-6855, DC1-COD-L3-CX-5805, DC1-COD-L3-CX-5835, DC1-COD-L3-CX-5865, DC1-COD-L3-CX-5895, DC1-COD-L3-CX-5925, DC1-COD-L3-CX-5955, DC1-COD-L3-CX-5985, DC1-COD-L3-CX-6015, DC1-COD-L3-CX-6045, DC1-COD-L3-CX-6075, DC1-COD-L3-CX-6105, DC1-COD-L3-CX-6135, DC1-COD-L3-CX-6165, DC1-COD-L3-CX-6195, DC1-COD-L3-CX-6225, DC1-COD-L3-CX-6255, DC1-COD-L3-CX-6285, DC1-COD-L3-CX-6315, DC1-COD-L3-CX-6345, DC1-COD-L3-CX-6375, DC1-COD-L3-CX-6405, DC1-COD-L3-CX-6435, DC1-COD-L3-CX-6465, DC1-COD-L3-CX-6495, DC1-COD-L3-CX-6525, DC1-COD-L3-CX-6555, DC1-COD-L3-CX-6585, DC1-COD-L3-CX-6615, DC1-COD-L3-CX-6645, DC1-COD-L3-CX-6675, DC1-COD-L3-CX-6705, DC1-COD-L3-CX-6735, DC1-COD-L3-CX-6765, DC1-COD-L3-CX-6795, DC1-COD-L3-CX-6825, DC1-COD-L3-CX-6855, DC1-MOD2-L3-Cx-2860, DC1-MOD2-L3-Cx-2890, DC1-MOD2-L3-Cx-2920, DC1-MOD2-L3-Cx-2950, DC1-MOD2-L3-Cx-2980, DC1-MOD2-L3-Cx-3010, DC1-MOD2-L3-Cx-3040, DC1-MOD3-L3-Cx-2860, DC1-MOD3-L3-Cx-2890, DC1-MOD3-L3-Cx-2920, DC1-MOD3-L3-Cx-2950, DC1-MOD3-L3-Cx-2980, DC1-MOD3-L3-Cx-3010, DC1-MOD3-L3-Cx-3040, DC1-BUS-L3-CX-2260, DC1-BUS-L3-CX-2290, QTS-44571 | 25d |  |  | LAY | Riley Warring |  |
| DC1-ELEC-L4-Cx-1110 |  | DC1 Data Hall 1300 BMS/EPMS Integration | 15d | 2026-06-05 | 2026-06-25 | DC1-DH1300-TAB-1000 | 1d | 0d | **GLOBAL - 5 Day Workweek w/ Basic Holidays |  |  |  |
| DC1-ELEC-L4-Cx-1060 |  | DC1 Data Hall 1300 Electrical L4 (TFO) | 20d | 2026-06-10 | 2026-07-08 | DC1-CDU-L3-CX-7575, DC1-CDU-L3-CX-7545, DC1-CDU-L3-CX-7515, DC1-CDU-L3-CX-7485, DC1-CDU-L3-CX-7455, DC1-CDU-L3-CX-7425, DC1-CDU-L3-CX-7395, DC1-CDU-L3-CX-7365, DC1-CDU-L3-CX-7335, DC1-CDU-L3-CX-7305, DC1-CDU-L3-CX-7275, DC1-CDU-L3-CX-7245, DC1-CDU-L3-CX-7215, DC1-CDU-L3-CX-7185, DC1-CDU-L3-CX-7155, DC1-CDU-L3-CX-7125, DC1-CDU-L3-CX-7095, DC1-CDU-L3-CX-7065, DC1-RPP-L3-CX-5805, DC1-RPP-L3-CX-5835, DC1-RPP-L3-CX-5865, DC1-RPP-L3-CX-5895, DC1-RPP-L3-CX-5925, DC1-RPP-L3-CX-5955, DC1-RPP-L3-CX-5985, DC1-RPP-L3-CX-6015, DC1-RPP-L3-CX-6045, DC1-RPP-L3-CX-6075, DC1-RPP-L3-CX-6105, DC1-RPP-L3-CX-6135, DC1-RPP-L3-CX-6165, DC1-RPP-L3-CX-6195, DC1-RPP-L3-CX-6225, DC1-RPP-L3-CX-6255, DC1-RPP-L3-CX-6285, DC1-RPP-L3-CX-6315, DC1-RPP-L3-CX-6345, DC1-RPP-L3-CX-6375, DC1-RPP-L3-CX-6405, DC1-RPP-L3-CX-6435, DC1-RPP-L3-CX-6495, DC1-RPP-L3-CX-6465, DC1-RPP-L3-CX-6525, DC1-RPP-L3-CX-6555, DC1-RPP-L3-CX-6585, DC1-RPP-L3-CX-6615, DC1-RPP-L3-CX-6645, DC1-RPP-L3-CX-6675, DC1-RPP-L3-CX-6705, DC1-RPP-L3-CX-6735, DC1-RPP-L3-CX-6765, DC1-RPP-L3-CX-6795, DC1-RPP-L3-CX-6825, DC1-RPP-L3-CX-6855, QTS - 9080, QTS - 9910, QTS - 9930, QTS - 9460, QTS - 9690, QTS - 9060, QTS - 9090, QTS - 9470, QTS - 9700, QTS - 9900, QTS - 9790, QTS - 9850, QTS - 9920, QTS - 2620, QTS-44571 | 35d |  |  | LAY | Riley Warring |  |
| DC1-MECH-L4-Cx-1050 |  | DC1 Data Hall 1300 Mechanical L4 | 20d | 2026-06-26 | 2026-07-24 | DC1-ELEC-L4-Cx-1110, DC1-DOAS-L3-Cx-2290, DC1-CHLR-L3-Cx-3070, DC1-CHLR-L3-Cx-3100, DC1-CHLR-L3-Cx-3130, DC1-CHLR-L3-Cx-3160, DC1-CHLR-L3-Cx-3190, DC1-CHLR-L3-Cx-3220, DC1-CHLR-L3-Cx-3250, DC1-CHWP-L3-Cx-2860, DC1-CHWP-L3-Cx-2890, DC1-CHWP-L3-Cx-2920, DC1-CHWP-L3-Cx-2950, DC1-CHWP-L3-Cx-2980, DC1-CHWP-L3-Cx-3010, DC1-CHWP-L3-Cx-3040, DC1-CRAH-L3-Cx-5860, DC1-CRAH-L3-Cx-5890, DC1-CRAH-L3-Cx-5920, DC1-CRAH-L3-Cx-5950, DC1-CRAH-L3-Cx-5980, DC1-CRAH-L3-Cx-6010, DC1-CRAH-L3-Cx-6040, DC1-CRAH-L3-Cx-6070, DC1-CRAH-L3-Cx-6100, DC1-CRAH-L3-Cx-6130, DC1-CRAH-L3-Cx-6160, DC1-CRAH-L3-Cx-6190, DC1-CRAH-L3-Cx-6220, DC1-CRAH-L3-Cx-6250, DC1-CRAH-L3-Cx-6280, DC1-CRAH-L3-Cx-6310, DC1-CRAH-L3-Cx-6340, DC1-CRAH-L3-Cx-6370, DC1-CRAH-L3-Cx-6400, DC1-CRAH-L3-Cx-6430, DC1-CRAH-L3-Cx-6460, DC1-CRAH-L3-Cx-6490, DC1-CRAH-L3-Cx-6520, DC1-CRAH-L3-Cx-6550, DC1-CRAH-L3-Cx-6580, DC1-CRAH-L3-Cx-6610, DC1-CRAH-L3-Cx-6640, DC1-CRAH-L3-Cx-6670, DC1-CRAH-L3-Cx-6700, DC1-CRAH-L3-Cx-6730, DC1-CRAH-L3-Cx-6760, DC1-CRAH-L3-Cx-6790, DC1-DOAS-L3-Cx-2260, DC1-COMP-L3-CX-2860, DC1-FAN-L3-CX-2860, DC1-COMP-L3-CX-2890, DC1-FAN-L3-CX-2890, DC1-COMP-L3-CX-2920, DC1-FAN-L3-CX-2920, DC1-COMP-L3-CX-2950, DC1-FAN-L3-CX-2950, DC1-COMP-L3-CX-2980, DC1-FAN-L3-CX-2980, DC1-COMP-L3-CX-3010, DC1-FAN-L3-CX-3010, DC1-COMP-L3-CX-3040, DC1-FAN-L3-CX-3040, DC1-DH1300-TAB-1010, QTS-17241 | 1d |  |  | LAY | Riley Warring |  |
| DC1-MECH-L4-Cx-1060 |  | DC1 Data Hall 1300 Mechanical L4 (TFO) | 20d | 2026-07-30 | 2026-08-26 | DC1-DH1300-LB-1040 SS, DC1-CDU-L3-CX-7065, DC1-CDU-L3-CX-7095, DC1-CDU-L3-CX-7125, DC1-CDU-L3-CX-7155, DC1-CDU-L3-CX-7185, DC1-CDU-L3-CX-7215, DC1-CDU-L3-CX-7245, DC1-CDU-L3-CX-7275, DC1-CDU-L3-CX-7305, DC1-CDU-L3-CX-7335, DC1-CDU-L3-CX-7365, DC1-CDU-L3-CX-7395, DC1-CDU-L3-CX-7425, DC1-CDU-L3-CX-7455, DC1-CDU-L3-CX-7485, DC1-CDU-L3-CX-7515, DC1-CDU-L3-CX-7545, DC1-CDU-L3-CX-7575, QTS - 9080, QTS - 9910, QTS - 9930, QTS - 9460, QTS - 9690, QTS - 9060, QTS - 9090, QTS - 9470, QTS - 9700, QTS - 9900, QTS - 9790, QTS - 9850, QTS - 9920, QTS - 2620, QTS-17241 | 0d |  |  | LAY | Riley Warring |  |

Notes:
- DC1-CRAH-L3-Cx-6780: Steps: EC Startup Checklist; MC Startup Checklist; Vendor Startup
- DC1-DOAS-L3-Cx-2250: Steps: EC Startup Checklist; MC Startup Checklist; Vendor Startup
- DC1-DOAS-L3-Cx-2280: Steps: EC Startup Checklist; MC Startup Checklist; Vendor Startup

| ID | WBS | Activity | Duration | Start | Finish | Predecessors | Total float | Free float | Layton Responsible Party | Vendor Responsible Party | Location | Project Section-1 | Phase-1-1 | Baseline | Project Section | Level | Phase-1 |
| --- | --- | --- | --- | --- | --- | --- | --- | --- | --- | --- | --- | --- | --- | --- | --- | --- | --- |
|  | 02 | **Data Hall 1300 Mechanical Cx L4** |  |  |  |  |  |  |  |  |  |  |  |  |  |  |  |
|  | 01 | **Data Hall 1300 Electrical Cx L4** |  |  |  |  |  |  |  |  |  |  |  |  |  |  |  |
|  | 05 | **Data Hall 1300 Cx L5** |  | 2026-07-28 | 2026-07-29 |  |  |  |  |  |  |  |  |  |  |  |  |
| DC1-IST-2040 |  | DC1 Data Hall 1300 IST (8/3/26) | 2d | 2026-07-28 | 2026-07-29 | DC1-ELEC-L4-Cx-1050, DC1-MECH-L4-Cx-1050, DC1-IST-2030 FF | 0d |  | Riley Warring | LAY |  |  |  |  |  |  |  |
|  | 4 | **Closeout** |  | 2026-03-11 | 2026-06-12 |  |  |  |  |  |  |  |  |  |  |  |  |
|  | 1 | **FOH / BOH / Corridors / Common Areas** |  | 2026-04-03 | 2026-04-23 |  |  |  |  |  |  |  |  |  |  |  |  |
| QTS-30791 |  | FOH / BOH / Corridors / Common Areas // LCC Worklist | 5d | 2026-04-03 | 2026-04-09 | QTS-1002660, QTS-1002670, QTS-1000860, QTS-1004030, QTS-1004050, QTS-1004000, QTS-1003990, QTS-30101, QTS-46461, QTS-29821, QTS-30351, QTS-30421, QTS-30671, QTS-15691, QTS-16751, QTS-30191, QTS-30611, QTS-30621, QTS-30311, QTS-30391, QTS-30701, QTS-30201, QTS-30631, QTS-30661, QTS-30281, QTS-29751, QTS-30001, QTS-30011, QTS-30521, QTS-21731, QTS-27691, QTS-30761, QTS-28041, QTS-28851, QTS-28371, QTS-28891, QTS-30441, QTS-28821, QTS-29041, QTS-29081, QTS-13311, QTS-15731, QTS-12951, QTS-30811, QTS-13301, QTS-6731, QTS-21501, QTS-38561, QTS-38571, QTS-11431, QTS-12501, QTS-12511, QTS-42251, QTS-21951, QTS-10181, QTS-10171, QTS-29321, QTS-29001, QTS-26141, QTS-24681, QTS-24691, QTS-24721, QTS-26121, QTS-26131, QTS-24111, QTS-24121, QTS-26151, QTS-26161, QTS-26181, QTS-24741, QTS-24751, QTS-24761, QTS-24141, QTS-24661, QTS-24671, QTS-24711, QTS-24641, QTS-24651, QTS-24731, QTS-2501, QTS-45531, QTS-45551, QTS-45561, QTS-45571, QTS-45611, QTS-45621, QTS-45631, QTS-45641, QTS-45291, QTS-45481, QTS-49351, QTS-50811, QTS-28231, QTS-28241, QTS-25801, QTS-25781, QTS-25791, QTS-25771, QTS-26791, QTS-27061, QTS-26311, QTS-26271, QTS-45491, QTS-45501, QTS-6311, QTS-45541, QTS-2521 | 6d | 0d |  |  | FOH | Close Out | Phase 1 | IGMP | Close Out |  |  |
| QTS-30801 |  | FOH / BOH / Corridors / Common Areas // Final Clean | 5d | 2026-04-03 | 2026-04-09 | QTS-30791 SS, QTS-30791 FF | 87d | 0d |  |  | FOH | Close Out | Phase 1 | IGMP | Close Out |  |  |
| QTS-30821 |  | FOH / BOH / Corridors / Common Areas // A/E Punch List | 5d | 2026-04-10 | 2026-04-16 | QTS-44141, QTS-30801 | 87d | 0d |  |  | FOH | Close Out | Phase 1 | IGMP | Close Out |  |  |
| QTS-99130 |  | FOH / BOH / Corridors / Common Areas // Turnover Float | 5d | 2026-04-17 | 2026-04-23 | QTS-30821 | 87d | 9d | Jason Johnston |  |  | Close Out | Phase 1 | IGMP | Close Out | Level 2 |  |
|  | 3 | **DH 2100** |  | 2026-03-18 | 2026-04-29 |  |  |  |  |  |  |  |  |  |  |  |  |
| QTS-29811 |  | DH 2100 / Closeout // LCC Worklist | 15d | 2026-03-18 | 2026-04-07 | QTS-1002260, QTS-27361, QTS-25591, QTS-25191, QTS-25521, QTS-101890 | 2d | 0d |  |  |  |  |  | IGMP | Close Out | Level 2 | Phase 1 |
| QTS-30041 |  | DH 2100 / Closeout // Final Clean | 5d | 2026-04-01 | 2026-04-07 | QTS-29811 SS, QTS-29811 FF | 2d | 0d |  |  |  |  |  | IGMP | Close Out | Level 2 | Phase 1 |
| QTS-30271 |  | DH 2100 / Closeout // A/E Punch List | 10d | 2026-04-08 | 2026-04-21 | QTS-29811 FF, QTS-30041, QTS-101880 | 2d | 0d |  |  |  |  |  | IGMP | Close Out | Level 2 | Phase 1 |
| QTS-30831 |  | DH 2100 / Closeout // Remove & Repair Temporary Hot Aisle Containment | 10d | 2026-04-08 | 2026-04-21 | QTS-30271 SS | 2d | 0d |  |  |  |  |  | IGMP | Close Out | Level 2 | Phase 1 |
| QTS-30881 |  | DH 2100 / Closeout // Turnover Float | 6d | 2026-04-22 | 2026-04-29 | QTS-30831 | 2d | 4d | Jason Johnston |  |  | Close Out | Phase 1 | IGMP | Close Out | Level 2 |  |
|  | 6 | **DH 1100** |  | 2026-03-11 | 2026-04-22 |  |  |  |  |  |  |  |  |  |  |  |  |
| QTS-1231 |  | DH 1100 / Closeout // LCC Worklist | 15d | 2026-03-11 | 2026-03-31 | QTS-1002360, QTS-1641, QTS-18381, QTS-13331 | 7d | 0d |  |  |  |  |  | IGMP | Close Out | Level 1 | Phase 1 |
| QTS-3211 |  | DH 1100 / Closeout // Final Clean | 5d | 2026-03-25 | 2026-03-31 | QTS-1231 SS, QTS-1231 FF | 7d | 0d |  |  |  |  |  | IGMP | Close Out | Level 1 | Phase 1 |
| QTS-28811 |  | DH 1100 / Closeout // Remove & Repair Temporary Hot Aisle Containment | 10d | 2026-04-01 | 2026-04-14 | QTS-4431 SS | 7d | 0d |  |  |  |  |  | IGMP | Close Out | Level 1 | Phase 1 |
| QTS-4431 |  | DH 1100 / Closeout // A/E Punch List | 10d | 2026-04-01 | 2026-04-14 | QTS-3211, QTS-102100 | 7d | 0d |  |  |  |  |  | IGMP | Close Out | Level 1 | Phase 1 |
| QTS-29401 |  | DH 1100 / Closeout // Turnover Float | 6d | 2026-04-15 | 2026-04-22 | QTS-28811 | 7d |  | Jason Johnston |  |  | Close Out | Phase 1 | IGMP | Close Out | Level 1 |  |
|  | 4 | **DH 2200** |  | 2026-03-30 | 2026-05-14 |  |  |  |  |  |  |  |  |  |  |  |  |
| QTS-1241 |  | DH 2200 / Closeout // LCC Worklist | 15d | 2026-03-30 | 2026-04-17 | QTS-1771, QTS-18401, QTS-102160 | 11d | 0d | Jason Johnston |  |  |  |  | IGMP | Close Out | Level 2 | Phase 2 |
| QTS-3221 |  | DH 2200 / Closeout // Final Clean | 5d | 2026-04-13 | 2026-04-17 | QTS-1241 SS, QTS-1241 FF | 11d | 0d | Jason Johnston |  |  |  |  | IGMP | Close Out | Level 2 | Phase 2 |
| QTS-30981 |  | DH 2200 / Closeout // Remove & Repair Temporary Hot Aisle Containment | 10d | 2026-04-20 | 2026-05-01 | QTS-4441 SS, QTS-30811 | 11d | 0d | Jason Johnston |  |  |  |  | IGMP | Close Out | Level 2 | Phase 2 |
| QTS-4441 |  | DH 2200 / Closeout // A/E Punch List | 10d | 2026-04-20 | 2026-05-01 | QTS-3221, QTS-102210 | 11d | 0d | Jason Johnston |  |  |  |  | IGMP | Close Out | Level 2 | Phase 2 |
| QTS-31001 |  | DH 2200 / Closeout // Turnover Float | 9d | 2026-05-04 | 2026-05-14 | QTS-30981 | 11d | 10d | Jason Johnston |  |  | Close Out | Phase 2 | IGMP | Close Out | Level 2 |  |

| ID | WBS | Activity | Duration | Start | Finish | Predecessors | Complete | Planned start | Planned finish | Total float | Free float | Level | Baseline | Phase-1 | Project Section | Project Section-1 | Phase-1-1 | Layton Responsible Party | Precon Phase | Location |
| --- | --- | --- | --- | --- | --- | --- | --- | --- | --- | --- | --- | --- | --- | --- | --- | --- | --- | --- | --- | --- |
|  | 2 | **DH 1200** |  | 2026-03-19 | 2026-05-15 |  |  |  |  |  |  |  |  |  |  |  |  |  |  |  |
| QTS-29531 |  | DH 1200 / Closeout // LCC Worklist | 15d | 2026-03-19 | 2026-04-08 | QTS-28991, QTS-1901, QTS-18421, QTS-13391 |  |  |  | 10d | 0d | Level 1 | IGMP | Phase 2 | Close Out |  |  |  |  |  |
| QTS-29671 |  | DH 1200 / Closeout // Final Clean | 5d | 2026-04-02 | 2026-04-08 | QTS-29531 SS, QTS-29531 FF |  |  |  | 10d | 0d | Level 1 | IGMP | Phase 2 | Close Out |  |  |  |  |  |
| QTS-29911 |  | DH 1200 / Closeout // A/E Punch List | 10d | 2026-04-09 | 2026-04-22 | QTS-29671, QTS-102430 |  |  |  | 10d | 0d | Level 1 | IGMP | Phase 2 | Close Out |  |  |  |  |  |
| QTS-30851 |  | DH 1200 / Closeout // Remove & Repair Temporary Hot Aisle Containment | 10d | 2026-04-23 | 2026-05-06 | QTS-29911 |  |  |  | 10d | 0d | Level 1 | IGMP | Phase 2 | Close Out |  |  |  |  |  |
| QTS-30891 |  | DH 1200 / Closeout // Turnover Float | 7d | 2026-05-07 | 2026-05-15 | QTS-30851 |  |  |  | 10d |  | Level 1 | IGMP |  | Close Out | Close Out | Phase 2 | Jason Johnston |  |  |
|  | 7 | **DH 2300** |  | 2026-04-14 | 2026-06-12 |  |  |  |  |  |  |  |  |  |  |  |  |  |  |  |
| QTS-1471 |  | DH 2300 / Closeout // LCC Worklist | 15d | 2026-04-14 | 2026-05-04 | QTS-2031, QTS-18441, QTS-13421 |  |  |  | 35d | 0d | Level 2 | IGMP |  | Close Out | Close Out | Phase 3 |  |  |  |
| QTS-3331 |  | DH 2300 / Closeout // Final Clean | 5d | 2026-04-28 | 2026-05-04 | QTS-1471 SS, QTS-1471 FF |  |  |  | 35d | 0d | Level 2 | IGMP |  | Close Out | Close Out | Phase 3 |  |  |  |
| QTS-4481 |  | DH 2300 / Closeout // A/E Punch List | 10d | 2026-05-05 | 2026-05-18 | QTS-3331, QTS-102520 |  |  |  | 35d | 0d | Level 2 | IGMP |  | Close Out | Close Out | Phase 3 |  |  |  |
| QTS-7781 |  | DH 2300 / Closeout // Remove & Repair Temporary Hot Aisle Containment | 10d | 2026-05-19 | 2026-06-02 | QTS-4481 |  |  |  | 35d | 0d | Level 2 | IGMP |  | Close Out | Close Out | Phase 3 |  |  |  |
| QTS-11001 |  | DH 2300 / Closeout // Turnover Float | 8d | 2026-06-03 | 2026-06-12 | QTS-7781 |  |  |  | 35d | 32d | Level 2 | IGMP |  | Close Out | Close Out | Phase 3 | Jason Johnston |  |  |
|  | 8 | **DH 1300** |  | 2026-03-16 | 2026-05-12 |  |  |  |  |  |  |  |  |  |  |  |  |  |  |  |
| QTS-1481 |  | DH 1300 / Closeout // LCC Worklist | 15d | 2026-03-16 | 2026-04-03 | QTS-2161, QTS-18461, QTS-13451 |  |  |  | 57d | 0d | Level 1 | IGMP |  | Close Out | Close Out | Phase 3 |  |  |  |
| QTS-3341 |  | DH 1300 / Closeout // Final Clean | 5d | 2026-03-30 | 2026-04-03 | QTS-1481 SS, QTS-1481 FF |  |  |  | 57d | 0d | Level 1 | IGMP |  | Close Out | Close Out | Phase 3 |  |  |  |
| QTS-4491 |  | DH 1300 / Closeout // A/E Punch List | 10d | 2026-04-06 | 2026-04-17 | QTS-3341, QTS-102610 |  |  |  | 57d | 0d | Level 1 | IGMP |  | Close Out | Close Out | Phase 3 |  |  |  |
| QTS-7791 |  | DH 1300 / Closeout // Remove & Repair Temporary Hot Aisle Containment | 10d | 2026-04-20 | 2026-05-01 | QTS-4491 |  |  |  | 57d | 0d | Level 1 | IGMP |  | Close Out | Close Out | Phase 3 |  |  |  |
| QTS-11011 |  | DH 1300 / Closeout // Turnover Float | 7d | 2026-05-04 | 2026-05-12 | QTS-7791 |  |  |  | 57d | 54d | Level 1 | IGMP |  | Close Out | Close Out | Phase 3 | Jason Johnston |  |  |
|  | 5 | **DELETED** |  | 2025-04-21 | 2026-01-27 |  |  |  |  |  |  |  |  |  |  |  |  |  |  |  |
| QTS-24521 |  | Zone 3 Corridor 2307 // Raised Floor Pedestal Layout *Deleted* | 2d | 2025-04-21 A | 2025-04-22 A | QTS-1371 SS | 100% |  |  |  |  | Level 2 | IGMP |  | Construction |  |  |  |  |  |
| QTS-24531 |  | Zone 1 Corridor 2010 // Raised Floor Pedestal Layout *Deleted* | 2d | 2025-04-21 A | 2025-04-22 A | QTS-1371 SS | 100% |  |  |  |  | Level 2 | IGMP |  | Construction |  |  |  |  |  |
| QTS-24541 |  | Zone 2 Corridor 2010 // Raised Floor Pedestal Layout *Deleted* | 2d | 2025-04-21 A | 2025-04-22 A | QTS-1371 SS | 100% |  |  |  |  | Level 2 | IGMP |  | Construction |  |  |  |  |  |
| QTS-24551 |  | Zone 3 Corridor 1012 // Raised Floor Pedestal Layout *Deleted* | 2d | 2025-04-21 A | 2025-04-22 A | QTS-1371 SS | 100% |  |  |  |  | Level 1 | IGMP |  | Construction |  |  |  |  |  |
| QTS-25271 |  | Zone 3 Corridor 2307 // Install Raised Flooring *Deleted* | 2d | 2025-04-21 A | 2025-04-22 A | QTS-1371 SS | 100% |  |  |  |  | Level 2 | IGMP |  | Construction |  |  |  |  |  |
| QTS-25281 |  | Zone 1 Corridor 2010 // Install Raised Flooring *Deleted* | 2d | 2025-04-21 A | 2025-04-22 A | QTS-1371 SS | 100% |  |  |  |  | Level 2 | IGMP |  | Construction |  |  |  |  |  |
| QTS-25291 |  | Zone 2 Corridor 2010 // Install Raised Flooring *Deleted* | 2d | 2025-04-21 A | 2025-04-22 A | QTS-1371 SS | 100% |  |  |  |  | Level 2 | IGMP |  | Construction |  |  |  |  |  |
| QTS-25301 |  | Zone 3 Corridor 1012 // Install Raised Flooring *Deleted* | 2d | 2025-04-21 A | 2025-04-22 A | QTS-1371 SS | 100% |  |  |  |  | Level 1 | IGMP |  | Construction |  |  |  |  |  |
| QTS-25901 |  | Zone 1 Corridor 1011 // Raised Floor Pedestal Layout *Deleted* | 2d | 2025-04-21 A | 2025-04-22 A | QTS-1371 SS | 100% |  |  |  |  | Level 1 | IGMP |  | Construction |  |  |  |  |  |
| QTS-25911 |  | Zone 2 Corridor 1013 // Raised Floor Pedestal Layout *Deleted* | 2d | 2025-04-21 A | 2025-04-22 A | QTS-1371 SS | 100% |  |  |  |  | Level 1 | IGMP |  | Construction |  |  |  |  |  |
| QTS-26871 |  | Zone 1 Corridor 1011 // Install Raised Flooring *Deleted* | 2d | 2025-04-21 A | 2025-04-22 A | QTS-1371 SS | 100% |  |  |  |  | Level 1 | IGMP |  | Construction |  |  |  |  |  |
| QTS-26881 |  | Zone 2 Corridor 1013 // Install Raised Flooring *Deleted* | 2d | 2025-04-21 A | 2025-04-22 A | QTS-1371 SS | 100% |  |  |  |  | Level 1 | IGMP |  | Construction |  |  |  |  |  |
| QTS-14431 |  | Layton Review Freight Elevator Layout Shop Drawings *Deleted* | 1d | 2025-04-22 A | 2025-04-22 A | QTS-1371 | 100% |  |  |  |  |  | GMP |  |  | Preconstruction |  |  | CFCI Procurement |  |
| QTS-14601 |  | Freight Elevator Layout Shop Drawings Approval *Deleted* | 1d | 2025-04-22 A | 2025-04-22 A | QTS-1371 SS | 100% |  |  |  |  |  | GMP |  |  | Preconstruction |  |  | CFCI Procurement |  |
| QTS-15551 |  | Layton Distribute Freight Elevator Drawings Back to Subcontractor *Deleted* | 1d | 2025-04-22 A | 2025-04-22 A | QTS-1371 SS | 100% |  |  |  |  |  | GMP |  |  | Preconstruction |  |  | CFCI Procurement |  |
| QTS-7011 |  | Bid / Level / Buyout // Wet Utilities - *Deleted* | 1d | 2025-04-22 A | 2025-04-22 A | QTS-1371 SS | 100% |  |  |  |  |  | IGMP |  |  | Preconstruction |  |  | Bid & Buyout |  |
| QTS-11511 |  | DH 1100 / Electrical Gallery 1102 // In Wall Electrical Rough for South 1102 Wall *Deleted* | 1d | 2025-05-14 A | 2025-05-15 A | QTS-1371 SS | 100% | 2025-05-22 | 2025-05-22 |  |  | Level 1 | IGMP |  |  | Construction | Phase 1 | Scott Masterson |  | DH1100 |
| QTS-11551 |  | DH 2200 / Electrical Gallery 2202 // In Wall Electrical Rough *Deleted* | 1d | 2025-05-14 A | 2025-05-15 A | QTS-1371 SS | 100% | 2025-06-04 | 2025-06-04 |  |  |  | IGMP |  |  | Construction | Phase 2 | Scott Masterson |  | DH2200 |
| QTS-11591 |  | DH 1200 / Electrical Gallery 1202 // In Wall Electrical Rough for 1202 South Wall *Deleted* | 1d | 2025-05-14 A | 2025-05-15 A | QTS-1371 SS | 100% | 2025-06-10 | 2025-06-10 |  |  |  | IGMP |  |  | Construction | Phase 2 | Scott Masterson |  | DH1200 |
| QTS-11631 |  | DH 2300 / Electrical Gallery 2302 // In Wall Electrical Rough for 2302 South Wall *Deleted* | 1d | 2025-05-14 A | 2025-05-15 A | QTS-1371 SS | 100% | 2025-06-18 | 2025-06-18 |  |  |  | IGMP |  |  | Construction | Phase 3 | Scott Masterson |  | DH2300 |
| QTS-11671 |  | DH 1300 / Electrical Gallery 1302 // In Wall Electrical Rough for 1302 South Wall *Deleted* | 1d | 2025-05-14 A | 2025-05-15 A | QTS-1371 SS | 100% | 2025-06-30 | 2025-06-30 |  |  |  | IGMP |  |  | Construction | Phase 3 | Scott Masterson |  | DH1300 |
| QTS-11921 |  | DH 1100 / Electrical Gallery 1102 // In Wall Inspection for South 1102 Wall *Deleted* | 1d | 2025-05-14 A | 2025-05-15 A | QTS-1371 SS | 100% | 2025-05-27 | 2025-05-27 |  |  | Level 1 | IGMP |  |  | Construction | Phase 1 | Dave Wiltberger |  | DH1100 |
| QTS-11951 |  | DH 2200 / Electrical Gallery 2202 // In Wall Inspection *Deleted* | 1d | 2025-05-14 A | 2025-05-15 A | QTS-1371 SS | 100% | 2025-06-06 | 2025-06-06 |  |  |  | IGMP |  |  | Construction | Phase 2 | Dave Wiltberger |  | DH2200 |
| QTS-11981 |  | DH 1200 / Electrical Gallery 1202 // In Wall Inspection for 1202 South Wall *Deleted* | 1d | 2025-05-14 A | 2025-05-15 A | QTS-1371 SS | 100% | 2025-06-12 | 2025-06-12 |  |  |  | IGMP |  |  | Construction | Phase 2 | Dave Wiltberger |  | DH1200 |
| QTS-12011 |  | DH 2300 / Electrical Gallery 2302 // In Wall Inspection for 2302 South Wall *Deleted* | 1d | 2025-05-14 A | 2025-05-15 A | QTS-1371 SS | 100% | 2025-06-20 | 2025-06-20 |  |  |  | IGMP |  |  | Construction | Phase 3 | Dave Wiltberger |  | DH2300 |
| QTS-12041 |  | DH 1300 / Electrical Gallery 1302 // In Wall Inspection for 1302 South Wall *Deleted* | 1d | 2025-05-14 A | 2025-05-15 A | QTS-1371 SS | 100% | 2025-07-02 | 2025-07-02 |  |  |  | IGMP |  |  | Construction | Phase 3 | Dave Wiltberger |  | DH1300 |
| QTS-12151 |  | DH 1100 / Electrical Gallery 1102 // Hang, Tape, & Finish Drywall for South 1102 Wall *Deleted* | 1d | 2025-05-14 A | 2025-05-15 A | QTS-1371 SS | 100% | 2025-05-28 | 2025-05-28 |  |  | Level 1 | IGMP |  |  | Construction | Phase 1 | Doug Hayes |  | DH1100 |
| QTS-12191 |  | DH 2200 / Electrical Gallery 2202 // Hang, Tape, & Finish Drywall *Deleted* | 1d | 2025-05-14 A | 2025-05-15 A | QTS-1371 SS | 100% | 2025-06-09 | 2025-06-09 |  |  |  | IGMP |  |  | Construction | Phase 2 | Doug Hayes |  | DH2200 |
| QTS-12231 |  | DH 1200 / Electrical Gallery 1202 // Hang, Tape, & Finish Drywall for 1202 South Wall *Deleted* | 1d | 2025-05-14 A | 2025-05-15 A | QTS-1371 SS | 100% | 2025-06-13 | 2025-06-13 |  |  |  | IGMP |  |  | Construction | Phase 2 | Doug Hayes |  | DH1200 |
| QTS-12271 |  | DH 2300 / Electrical Gallery 2302 // Hang, Tape, & Finish Drywall for 2302 South Wall *Deleted* | 1d | 2025-05-14 A | 2025-05-15 A | QTS-1371 SS | 100% | 2025-06-23 | 2025-06-23 |  |  |  | IGMP |  |  | Construction | Phase 3 | Doug Hayes |  | DH2300 |
| QTS-12311 |  | DH 1300 / Electrical Gallery 1302 // Hang, Tape, & Finish Drywall for 1302 South Wall *Deleted* | 1d | 2025-05-14 A | 2025-05-15 A | QTS-1371 SS | 100% | 2025-07-03 | 2025-07-03 |  |  |  | IGMP |  |  | Construction | Phase 3 | Doug Hayes |  | DH1300 |
| QTS-13631 |  | DH 1100 / Electrical Gallery 1102 // Paint Walls for South 1102 Wall *Deleted* | 1d | 2025-05-14 A | 2025-05-15 A | QTS-1371 SS | 100% | 2025-06-09 | 2025-06-09 |  |  | Level 1 | IGMP |  |  | Construction | Phase 1 | Doug Hayes |  | DH1100 |
| QTS-13701 |  | DH 2200 / Electrical Gallery 2202 // Paint Walls for 2202 South Wall *Deleted* | 1d | 2025-05-14 A | 2025-05-15 A | QTS-1371 SS | 100% | 2025-06-23 | 2025-06-23 |  |  |  | IGMP |  |  | Construction | Phase 2 | Doug Hayes |  | DH2200 |
| QTS-13771 |  | DH 1200 / Electrical Gallery 1202 // Paint Walls for 1202 South Wall *Deleted* | 1d | 2025-05-14 A | 2025-05-15 A | QTS-1371 SS | 100% | 2025-06-27 | 2025-06-27 |  |  |  | IGMP |  |  | Construction | Phase 2 | Doug Hayes |  | DH1200 |
| QTS-13841 |  | DH 2300 / Electrical Gallery 2302 // Paint Walls for 2302 South Wall *Deleted* | 1d | 2025-05-14 A | 2025-05-15 A | QTS-1371 SS | 100% | 2025-07-08 | 2025-07-08 |  |  |  | IGMP |  |  | Construction | Phase 3 | Doug Hayes |  | DH2300 |
| QTS-13911 |  | DH 1300 / Electrical Gallery 1302 // Paint Walls for 1302 South Wall *Deleted* | 1d | 2025-05-14 A | 2025-05-15 A | QTS-1371 SS | 100% | 2025-07-18 | 2025-07-18 |  |  |  | IGMP |  |  | Construction | Phase 3 | Doug Hayes |  | DH1300 |
| QTS-17061 |  | DH 1100 / Electrical Gallery 1102 // Set Non Critical Load XFMRs *Deleted* | 1d | 2025-05-14 A | 2025-05-15 A | QTS-1371 SS | 100% | 2025-05-20 | 2025-05-20 |  |  | Level 1 | IGMP |  |  | Construction | Phase 1 | Scott Masterson |  | DH1100 |
| QTS-17101 |  | DH 2200 / Electrical Gallery 2202 // Set Non Critical Load XFMRs *Deleted* | 1d | 2025-05-14 A | 2025-05-15 A | QTS-1371 SS | 100% | 2025-06-02 | 2025-06-02 |  |  |  | IGMP |  |  | Construction | Phase 2 | Scott Masterson |  | DH2200 |
| QTS-17141 |  | DH 1200 / Electrical Gallery 1202 // Set Non Critical Load XFMRs *Deleted* | 1d | 2025-05-14 A | 2025-05-15 A | QTS-1371 SS | 100% | 2025-08-20 | 2025-08-20 |  |  |  | IGMP |  |  | Construction | Phase 2 | Scott Masterson |  | DH1200 |
| QTS-17181 |  | DH 2300 / Electrical Gallery 2302 // Set Non Critical Load XFMRs *Deleted* | 1d | 2025-05-14 A | 2025-05-15 A | QTS-1371 SS | 100% | 2025-06-16 | 2025-06-16 |  |  |  | IGMP |  |  | Construction | Phase 3 | Scott Masterson |  | DH2300 |
| QTS-17221 |  | DH 1300 / Electrical Gallery 1302 // Set Non Critical Load XFMRs *Deleted* | 1d | 2025-05-14 A | 2025-05-15 A | QTS-1371 SS | 100% | 2025-06-26 | 2025-06-26 |  |  |  | IGMP |  |  | Construction | Phase 3 | Scott Masterson |  | DH1300 |
| QTS-17371 |  | DH 1100 / Electrical Gallery 1102 // Pull LV Cables from XFMRs to Panels *Deleted* | 1d | 2025-05-14 A | 2025-05-15 A | QTS-1371 SS | 100% | 2025-05-22 | 2025-05-22 |  |  | Level 1 | IGMP |  |  | Construction | Phase 1 | Scott Masterson |  | DH1100 |
| QTS-17401 |  | DH 2200 / Electrical Gallery 2202 // Pull LV Cables from XFMRs to Panels *Deleted* | 1d | 2025-05-14 A | 2025-05-15 A | QTS-1371 SS | 100% | 2025-06-04 | 2025-06-04 |  |  |  | IGMP |  |  | Construction | Phase 2 | Scott Masterson |  | DH2200 |
| QTS-17431 |  | DH 1200 / Electrical Gallery 1202 // Pull LV Cables from XFMRs to Panels *Deleted* | 1d | 2025-05-14 A | 2025-05-15 A | QTS-1371 SS | 100% | 2025-12-08 | 2025-12-08 |  |  |  | IGMP |  |  | Construction | Phase 2 | Scott Masterson |  | DH1200 |
| QTS-17461 |  | DH 2300 / Electrical Gallery 2302 // Pull LV Cables from XFMRs to Panels *Deleted* | 1d | 2025-05-14 A | 2025-05-15 A | QTS-1371 SS | 100% | 2025-06-18 | 2025-06-18 |  |  |  | IGMP |  |  | Construction | Phase 3 | Scott Masterson |  | DH2300 |
| QTS-17491 |  | DH 1300 / Electrical Gallery 1302 // Pull LV Cables from XFMRs to Panels *Deleted* | 1d | 2025-05-14 A | 2025-05-15 A | QTS-1371 SS | 100% | 2025-06-30 | 2025-06-30 |  |  |  | IGMP |  |  | Construction | Phase 3 | Scott Masterson |  | DH1300 |
| QTS-18771 |  | *Deleted* C South Phase 3 // Excavate, Install, & Backfill Sewer Line East | 7d | 2025-05-14 A | 2025-05-22 A | QTS-1371 SS | 100% |  |  |  |  |  | IGMP |  |  | Construction |  |  |  | Site Work |
| QTS-18921 |  | *Deleted* C South Phase 3 // Excavate, Install, & Backfill Sewer Line West | 7d | 2025-05-14 A | 2025-05-22 A | QTS-1371 SS | 100% |  |  |  |  |  | IGMP |  |  | Construction |  |  |  | Site Work |
| QTS-19201 |  | *Deleted* D East Phase 4 // Excavate, Install, & Backfill Sewer Line | 7d | 2025-05-14 A | 2025-05-22 A | QTS-1371 SS | 100% |  |  |  |  |  | IGMP |  |  | Construction |  |  |  | Site Work |
| QTS-19281 |  | *Deleted* A West Phase 1 // Excavate, Install, & Backfill Storm Line | 3d | 2025-05-14 A | 2025-05-16 A | QTS-1371 SS | 100% |  |  |  |  | Level 1 | IGMP |  |  | Construction |  |  |  | Site Work |
| QTS-19541 |  | *Deleted* B North Phase 2 // Excavate, Install, & Backfill Storm Line East | 6d | 2025-05-14 A | 2025-05-21 A | QTS-1371 SS | 100% |  |  |  |  |  | IGMP |  |  | Construction |  |  |  | Site Work |

| ID | Activity | Duration | Start | Finish | Predecessors | Complete | Planned start | Planned finish | Level | Location | Project Section-1 | Baseline | Phase-1-1 | Layton Responsible Party |
| --- | --- | --- | --- | --- | --- | --- | --- | --- | --- | --- | --- | --- | --- | --- |
| QTS-19551 | *Deleted* A West Phase 1 // Rough Grade | 3d | 2025-05-14 A | 2025-05-16 A | QTS-1371 SS | 100% |  |  | Level 1 | Site Work | Construction | IGMP |  |  |
| QTS-19641 | *Deleted* B North Phase 2 // Rough Grade | 3d | 2025-05-14 A | 2025-05-16 A | QTS-1371 SS | 100% |  |  |  | Site Work | Construction | IGMP |  |  |
| QTS-19651 | *Deleted* A West Phase 1 // Stake Curbs | 1d | 2025-05-14 A | 2025-05-14 A | QTS-1371 SS | 100% |  |  | Level 1 | Site Work | Construction | IGMP |  |  |
| QTS-19661 | *Deleted* A West Phase 1 // Excavate, Install, & Backfill Electrical for Site Lighting | 3d | 2025-05-14 A | 2025-05-16 A | QTS-1371 SS | 100% |  |  | Level 1 | Site Work | Construction | IGMP |  |  |
| QTS-19671 | *Deleted* A West Phase 1 // Install Underground Grounding Ring | 3d | 2025-05-14 A | 2025-05-16 A | QTS-1371 SS | 100% |  |  | Underground | Site Work | Construction | IGMP | Phase 1 |  |
| QTS-19731 | *Deleted* A West Phase 1 // Grade for Curb | 2d | 2025-05-14 A | 2025-05-15 A | QTS-1371 SS | 100% |  |  | Level 1 | Site Work | Construction | IGMP |  |  |
| QTS-19741 | *Deleted* A West Phase 1 // Install Irrigation Sleeves | 2d | 2025-05-14 A | 2025-05-15 A | QTS-1371 SS | 100% |  |  | Level 1 | Site Work | Construction | IGMP |  |  |
| QTS-19851 | *Deleted* B North Phase 2 // Stake Curbs | 1d | 2025-05-14 A | 2025-05-14 A | QTS-1371 SS | 100% |  |  |  | Site Work | Construction | IGMP |  |  |
| QTS-19861 | *Deleted* B North Phase 2 // Excavate, Install, & Backfill Electrical for Site Lighting | 6d | 2025-05-14 A | 2025-05-21 A | QTS-1371 SS | 100% |  |  |  | Site Work | Construction | IGMP |  |  |
| QTS-19871 | *Deleted* B North Phase 2 // Install Underground Grounding Ring | 5d | 2025-05-14 A | 2025-05-20 A | QTS-1371 SS | 100% |  |  | Underground | Site Work | Construction | IGMP | Phase 2 |  |
| QTS-19881 | *Deleted* C South Phase 3 // Rough Grade | 6d | 2025-05-14 A | 2025-05-21 A | QTS-1371 SS | 100% |  |  |  | Site Work | Construction | IGMP |  |  |
| QTS-19891 | *Deleted* A West Phase 1 // Stringline for Curb | 2d | 2025-05-14 A | 2025-05-15 A | QTS-1371 SS | 100% |  |  | Level 1 | Site Work | Construction | IGMP |  |  |
| QTS-19901 | *Deleted* A West Phase 1 // Drill & Reinforce Light Pole Bases | 8d | 2025-05-14 A | 2025-05-23 A | QTS-1371 SS | 100% |  |  | Level 1 | Site Work | Construction | IGMP |  |  |
| QTS-19921 | *Deleted* B North Phase 2 // Excavate, Install, & Backfill Storm Line West | 6d | 2025-05-14 A | 2025-05-21 A | QTS-1371 SS | 100% |  |  |  | Site Work | Construction | IGMP |  |  |
| QTS-20021 | *Deleted* B North Phase 2 // Grade for Curb | 3d | 2025-05-14 A | 2025-05-16 A | QTS-1371 SS | 100% |  |  |  | Site Work | Construction | IGMP |  |  |
| QTS-20031 | *Deleted* B North Phase 2 // Install Irrigation Sleeves | 2d | 2025-05-14 A | 2025-05-15 A | QTS-1371 SS | 100% |  |  |  | Site Work | Construction | IGMP |  |  |
| QTS-20051 | *Deleted* A West Phase 1 // Machine Curb | 1d | 2025-05-14 A | 2025-05-14 A | QTS-1371 SS | 100% |  |  | Level 1 | Site Work | Construction | IGMP |  |  |
| QTS-20161 | *Deleted* C South Phase 3 // Install Irrigation Sleeves | 4d | 2025-05-14 A | 2025-05-19 A | QTS-1371 SS | 100% |  |  |  | Site Work | Construction | IGMP |  |  |
| QTS-20171 | *Deleted* A West Phase 1 // Form & Place Curb Tie Ins | 1d | 2025-05-14 A | 2025-05-14 A | QTS-1371 SS | 100% |  |  | Level 1 | Site Work | Construction | IGMP |  |  |
| QTS-20391 | *Deleted* B North Phase 2 // Stringline for Curb | 1d | 2025-05-14 A | 2025-05-14 A | QTS-1371 SS | 100% |  |  |  | Site Work | Construction | IGMP |  |  |
| QTS-20401 | *Deleted* A West Phase 1 // Install Irrigation Main Lines | 4d | 2025-05-14 A | 2025-05-19 A | QTS-1371 SS | 100% |  |  | Level 1 | Site Work | Construction | IGMP |  |  |
| QTS-20411 | *Deleted* A West Phase 1 // Prep & Place Sidewalks | 5d | 2025-05-14 A | 2025-05-20 A | QTS-1371 SS | 100% |  |  | Level 1 | Site Work | Construction | IGMP |  |  |
| QTS-20421 | *Deleted* A West Phase 1 // Prep & Place Heavy Duty Concrete | 5d | 2025-05-14 A | 2025-05-20 A | QTS-1371 SS | 100% |  |  | Level 1 | Site Work | Construction | IGMP |  |  |
| QTS-20431 | *Deleted* B North Phase 2 // Machine Curb | 1d | 2025-05-14 A | 2025-05-14 A | QTS-1371 SS | 100% |  |  |  | Site Work | Construction | IGMP |  |  |
| QTS-20471 | *Deleted* B North Phase 2 // Form & Place Curb Tie Ins | 3d | 2025-05-14 A | 2025-05-16 A | QTS-1371 SS | 100% |  |  |  | Site Work | Construction | IGMP |  |  |
| QTS-20481 | *Deleted* C South Phase 3 // Excavate, Install, & Backfill Electrical for Site Lighting | 6d | 2025-05-14 A | 2025-05-21 A | QTS-1371 SS | 100% |  |  |  | Site Work | Construction | IGMP |  |  |
| QTS-20491 | *Deleted* C South Phase 3 // Excavate, Install, & Backfill Storm Line East | 6d | 2025-05-14 A | 2025-05-21 A | QTS-1371 SS | 100% |  |  |  | Site Work | Construction | IGMP |  |  |
| QTS-20501 | *Deleted* C South Phase 3 // Install Underground Grounding Ring | 5d | 2025-05-14 A | 2025-05-20 A | QTS-1371 SS | 100% |  |  | Underground | Site Work | Construction | IGMP | Phase 3 |  |
| QTS-20641 | *Deleted* B North Phase 2 // Drill & Reinforce Light Pole Bases | 8d | 2025-05-14 A | 2025-05-23 A | QTS-1371 SS | 100% |  |  |  | Site Work | Construction | IGMP |  |  |
| QTS-20651 | *Deleted* A West Phase 1 // Stub Up Electrical to Light Poles | 4d | 2025-05-14 A | 2025-05-19 A | QTS-1371 SS | 100% |  |  | Level 1 | Site Work | Construction | IGMP |  |  |
| QTS-20661 | *Deleted* A West Phase 1 // Install Irrigation Laterals | 4d | 2025-05-14 A | 2025-05-19 A | QTS-1371 SS | 100% |  |  | Level 1 | Site Work | Construction | IGMP |  |  |
| QTS-20861 | *Deleted* B North Phase 2 // Prep & Place Medium Duty Concrete Pavement | 6d | 2025-05-14 A | 2025-05-21 A | QTS-1371 SS | 100% |  |  |  | Site Work | Construction | IGMP |  |  |
| QTS-20871 | *Deleted* B North Phase 2 // Install Irrigation Main Lines | 6d | 2025-05-14 A | 2025-05-21 A | QTS-1371 SS | 100% |  |  |  | Site Work | Construction | IGMP |  |  |
| QTS-20891 | *Deleted* A West Phase 1 // Prep & Place Medium Duty Asphalt Pavement | 3d | 2025-05-14 A | 2025-05-16 A | QTS-1371 SS | 100% |  |  | Level 1 | Site Work | Construction | IGMP |  |  |
| QTS-21021 | *Deleted* C South Phase 3 // Excavate, Install, & Backfill Storm Line West | 6d | 2025-05-14 A | 2025-05-21 A | QTS-1371 SS | 100% |  |  |  | Site Work | Construction | IGMP |  |  |
| QTS-21031 | *Deleted* A West Phase 1 // Pour Light Pole Bases | 1d | 2025-05-14 A | 2025-05-14 A | QTS-1371 SS | 100% |  |  | Level 1 | Site Work | Construction | IGMP |  |  |
| QTS-21041 | *Deleted* A West Phase 1 // Install Landscaping & Planting | 4d | 2025-05-14 A | 2025-05-19 A | QTS-1371 SS | 100% |  |  | Level 1 | Site Work | Construction | IGMP |  |  |
| QTS-21051 | *Deleted* A West Phase 1 // Utility Adjustments (Raise Cans & Collars) | 2d | 2025-05-14 A | 2025-05-15 A | QTS-1371 SS | 100% |  |  | Level 1 | Site Work | Construction | IGMP |  |  |
| QTS-21161 | *Deleted* A West Phase 1 // Set Light Poles | 2d | 2025-05-14 A | 2025-05-15 A | QTS-1371 SS | 100% |  |  | Level 1 | Site Work | Construction | IGMP |  |  |
| QTS-21321 | *Deleted* B North Phase 2 // Prep & Place Heavy Duty Concrete Pavement | 5d | 2025-05-14 A | 2025-05-20 A | QTS-1371 SS | 100% |  |  |  | Site Work | Construction | IGMP |  |  |
| QTS-21331 | *Deleted* B North Phase 2 // Install Irrigation Laterals | 8d | 2025-05-14 A | 2025-05-23 A | QTS-1371 SS | 100% |  |  |  | Site Work | Construction | IGMP |  |  |
| QTS-21341 | *Deleted* B North Phase 2 // Field Measure for Entrance Gates | 1d | 2025-05-14 A | 2025-05-14 A | QTS-1371 SS | 100% |  |  |  | Site Work | Construction | IGMP |  |  |
| QTS-21351 | *Deleted* C South Phase 3 // Install Irrigation Main Lines | 8d | 2025-05-14 A | 2025-05-23 A | QTS-1371 SS | 100% |  |  |  | Site Work | Construction | IGMP |  |  |
| QTS-21361 | *Deleted* A West Phase 1 // Pull Electrical Wire & Make Up to Light Poles | 3d | 2025-05-14 A | 2025-05-16 A | QTS-1371 SS | 100% |  |  | Level 1 | Site Work | Construction | IGMP |  |  |
| QTS-21431 | *Deleted* B North Phase 2 // Stub Up Electrical to Light Poles | 8d | 2025-05-14 A | 2025-05-23 A | QTS-1371 SS | 100% |  |  |  | Site Work | Construction | IGMP |  |  |
| QTS-21441 | *Deleted* B North Phase 2 // Fabricate & Deliver Entrance Gates | 6d | 2025-05-14 A | 2025-05-21 A | QTS-1371 SS | 100% |  |  |  | Site Work | Construction | IGMP |  |  |
| QTS-21451 | *Deleted* C South Phase 3 // Drill & Reinforce Light Pole Bases | 8d | 2025-05-14 A | 2025-05-23 A | QTS-1371 SS | 100% |  |  |  | Site Work | Construction | IGMP |  |  |
| QTS-21621 | *Deleted* A West Phase 1 // Sack & Patch Light Pole Bases | 2d | 2025-05-14 A | 2025-05-15 A | QTS-1371 SS | 100% |  |  | Level 1 | Site Work | Construction | IGMP |  |  |
| QTS-21631 | *Deleted* D East Phase 4 // Excavate, Install, & Backfill Storm Line | 6d | 2025-05-14 A | 2025-05-21 A | QTS-1371 SS | 100% |  |  |  | Site Work | Construction | IGMP |  |  |
| QTS-21741 | *Deleted* B North Phase 2 // Prep & Place Medium Duty Asphalt Pavement | 5d | 2025-05-14 A | 2025-05-20 A | QTS-1371 SS | 100% |  |  |  | Site Work | Construction | IGMP |  |  |
| QTS-21841 | *Deleted* B North Phase 2 // Install Entrance Gates | 5d | 2025-05-14 A | 2025-05-20 A | QTS-1371 SS | 100% |  |  |  | Site Work | Construction | IGMP |  |  |
| QTS-21871 | *Deleted* B North Phase 2 // Install Landscaping & Planting | 5d | 2025-05-14 A | 2025-05-20 A | QTS-1371 SS | 100% |  |  |  | Site Work | Construction | IGMP |  |  |
| QTS-21881 | *Deleted* C South Phase 3 // Install Irrigation Laterals | 8d | 2025-05-14 A | 2025-05-23 A | QTS-1371 SS | 100% |  |  |  | Site Work | Construction | IGMP |  |  |
| QTS-21971 | *Deleted* B North Phase 2 // Pour Light Pole Bases | 2d | 2025-05-14 A | 2025-05-15 A | QTS-1371 SS | 100% |  |  |  | Site Work | Construction | IGMP |  |  |
| QTS-21981 | *Deleted* C South Phase 3 // Stub Up Electrical to Light Poles | 8d | 2025-05-14 A | 2025-05-23 A | QTS-1371 SS | 100% |  |  |  | Site Work | Construction | IGMP |  |  |
| QTS-21991 | *Deleted* D East Phase 4 // Excavate, Install, & Backfill Domestic Water Line | 5d | 2025-05-14 A | 2025-05-20 A | QTS-1371 SS | 100% |  |  |  | Site Work | Construction | IGMP |  |  |
| QTS-22001 | *Deleted* D East Phase 4 // Excavate, Install, & Backfill Water Line for Hydrants | 5d | 2025-05-14 A | 2025-05-20 A | QTS-1371 SS | 100% |  |  |  | Site Work | Construction | IGMP |  |  |
| QTS-22041 | *Deleted* B North Phase 2 // Utility Adjustments (Raise Cans & Collars) | 5d | 2025-05-14 A | 2025-05-20 A | QTS-1371 SS | 100% |  |  |  | Site Work | Construction | IGMP |  |  |
| QTS-22081 | *Deleted* B North Phase 2 // Set Light Poles | 2d | 2025-05-14 A | 2025-05-15 A | QTS-1371 SS | 100% |  |  |  | Site Work | Construction | IGMP |  |  |
| QTS-22111 | DH 2100 / Electrical Gallery 2102 // In Wall Electrical Rough for South 2102 Wall *Deleted* | 1d | 2025-05-14 A | 2025-05-15 A | QTS-1371 SS | 100% | 2025-05-16 | 2025-05-16 | Level 2 | DH2100 | Construction | IGMP |  | Scott Masterson |
| QTS-22171 | *Deleted* B North Phase 2 // Install Entrance Gate Operator | 5d | 2025-05-14 A | 2025-05-20 A | QTS-1371 SS | 100% |  |  |  | Site Work | Construction | IGMP |  |  |
| QTS-22221 | *Deleted* B North Phase 2 // Pull Electrical Wire & Make Up to Light Poles | 8d | 2025-05-14 A | 2025-05-23 A | QTS-1371 SS | 100% |  |  |  | Site Work | Construction | IGMP |  |  |
| QTS-22301 | *Deleted* D East Phase 4 // Rough Grade | 3d | 2025-05-14 A | 2025-05-16 A | QTS-1371 SS | 100% |  |  |  | Site Work | Construction | IGMP |  |  |
| QTS-22341 | *Deleted* D East Phase 4 // Install Water Meter Vault | 1d | 2025-05-14 A | 2025-05-14 A | QTS-1371 SS | 100% |  |  |  | Site Work | Construction | IGMP |  |  |
| QTS-22451 | *Deleted* D East Phase 4 // Set Water Meter | 2d | 2025-05-14 A | 2025-05-15 A | QTS-1371 SS | 100% |  |  |  | Site Work | Construction | IGMP |  |  |
| QTS-22531 | *Deleted* D East Phase 4 // Excavate, Reinforce & Pour Trash Enclosure Footings | 3d | 2025-05-14 A | 2025-05-16 A | QTS-1371 SS | 100% |  |  |  | Site Work | Construction | IGMP |  |  |
| QTS-22541 | *Deleted* C South Phase 3 // Pour Light Pole Bases | 2d | 2025-05-14 A | 2025-05-15 A | QTS-1371 SS | 100% |  |  |  | Site Work | Construction | IGMP |  |  |
| QTS-22551 | *Deleted* D East Phase 4 // Stake Curbs | 1d | 2025-05-14 A | 2025-05-14 A | QTS-1371 SS | 100% |  |  |  | Site Work | Construction | IGMP |  |  |
| QTS-22561 | *Deleted* D East Phase 4 // Excavate, Install, & Backfill Electrical for Site Lighting | 6d | 2025-05-14 A | 2025-05-21 A | QTS-1371 SS | 100% |  |  |  | Site Work | Construction | IGMP |  |  |
| QTS-22601 | *Deleted* D East Phase 4 // Install Irrigation Sleeves | 2d | 2025-05-14 A | 2025-05-15 A | QTS-1371 SS | 100% |  |  |  | Site Work | Construction | IGMP |  |  |

| ID | Activity | Duration | Start | Finish | Predecessors | Complete | Planned start | Planned finish | Level | Location | Project Section-1 | Baseline | Layton Responsible Party | Phase-1 | Project Section | Precon Phase | Phase-1-1 |
| --- | --- | --- | --- | --- | --- | --- | --- | --- | --- | --- | --- | --- | --- | --- | --- | --- | --- |
| QTS-22631 | DH 2100 / Electrical Gallery 2102 // In Wall Inspection for South 2102 Wall *Deleted* | 1d | 2025-05-14 A | 2025-05-15 A | QTS-1371 SS | 100% | 2025-05-20 | 2025-05-20 | Level 2 | DH2100 | Construction | IGMP | Dave Wiltberger |  |  |  |  |
| QTS-22671 | *Deleted* C South Phase 3 // Set Light Poles | 4d | 2025-05-14 A | 2025-05-19 A | QTS-1371 SS | 100% |  |  |  | Site Work | Construction | IGMP |  |  |  |  |  |
| QTS-22711 | DH 2100 / Electrical Gallery 2102 // Hang, Tape, & Finish Drywall for South 2102 Wall *Deleted* | 1d | 2025-05-14 A | 2025-05-15 A | QTS-1371 SS | 100% | 2025-05-21 | 2025-05-21 | Level 2 | DH2100 | Construction | IGMP | Doug Hayes |  |  |  |  |
| QTS-22761 | *Deleted* B North Phase 2 // Excavate, Form, & Pour Screen Wall Footings East | 8d | 2025-05-14 A | 2025-05-23 A | QTS-1371 SS | 100% |  |  |  | Site Work | Construction | IGMP |  |  |  |  |  |
| QTS-22771 | *Deleted* D East Phase 4 // Pour Trash Enclosure Tilt Panels | 1d | 2025-05-14 A | 2025-05-14 A | QTS-1371 SS | 100% |  |  |  | Site Work | Construction | IGMP |  |  |  |  |  |
| QTS-22781 | *Deleted* D East Phase 4 // Grade for Curb | 2d | 2025-05-14 A | 2025-05-15 A | QTS-1371 SS | 100% |  |  |  | Site Work | Construction | IGMP |  |  |  |  |  |
| QTS-22831 | *Deleted* B North Phase 2 // Sack & Patch Light Pole Bases | 3d | 2025-05-14 A | 2025-05-16 A | QTS-1371 SS | 100% |  |  |  | Site Work | Construction | IGMP |  |  |  |  |  |
| QTS-22841 | *Deleted* D East Phase 4 // Erect Trash Enclosure Tilt Panels | 1d | 2025-05-14 A | 2025-05-14 A | QTS-1371 SS | 100% |  |  |  | Site Work | Construction | IGMP |  |  |  |  |  |
| QTS-22871 | *Deleted* D East Phase 4 // Field Measure Trash Enclosure Gates | 1d | 2025-05-14 A | 2025-05-14 A | QTS-1371 SS | 100% |  |  |  | Site Work | Construction | IGMP |  |  |  |  |  |
| QTS-22881 | *Deleted* D East Phase 4 // Stringline for Curb | 1d | 2025-05-14 A | 2025-05-14 A | QTS-1371 SS | 100% |  |  |  | Site Work | Construction | IGMP |  |  |  |  |  |
| QTS-22941 | *Deleted* D East Phase 4 // Fabricate & Deliver Trash Enclosure Gates | 5d | 2025-05-14 A | 2025-05-20 A | QTS-1371 SS | 100% |  |  |  | Site Work | Construction | IGMP |  |  |  |  |  |
| QTS-22951 | *Deleted* C South Phase 3 // Pull Electrical Wire & Make Up to Light Poles | 8d | 2025-05-14 A | 2025-05-23 A | QTS-1371 SS | 100% |  |  |  | Site Work | Construction | IGMP |  |  |  |  |  |
| QTS-22961 | *Deleted* D East Phase 4 // Machine Curb | 2d | 2025-05-14 A | 2025-05-15 A | QTS-1371 SS | 100% |  |  |  | Site Work | Construction | IGMP |  |  |  |  |  |
| QTS-22971 | *Deleted* D East Phase 4 // Drill & Reinforce Light Pole Bases | 3d | 2025-05-14 A | 2025-05-16 A | QTS-1371 SS | 100% |  |  |  | Site Work | Construction | IGMP |  |  |  |  |  |
| QTS-23081 | *Deleted* D East Phase 4 // Form & Place Curb Tie Ins | 2d | 2025-05-14 A | 2025-05-15 A | QTS-1371 SS | 100% |  |  |  | Site Work | Construction | IGMP |  |  |  |  |  |
| QTS-23101 | *Deleted* D East Phase 4 // Stub Up Electrical to Light Poles | 4d | 2025-05-14 A | 2025-05-19 A | QTS-1371 SS | 100% |  |  |  | Site Work | Construction | IGMP |  |  |  |  |  |
| QTS-23131 | *Deleted* D East Phase 4 // Install Irrigation Main Lines | 2d | 2025-05-14 A | 2025-05-15 A | QTS-1371 SS | 100% |  |  |  | Site Work | Construction | IGMP |  |  |  |  |  |
| QTS-23151 | *Deleted* D East Phase 4 // Prep & Place Heavy Duty Concrete Paving | 5d | 2025-05-14 A | 2025-05-20 A | QTS-1371 SS | 100% |  |  |  | Site Work | Construction | IGMP |  |  |  |  |  |
| QTS-23161 | *Deleted* D East Phase 4 // Prep & Place Sidewalks | 6d | 2025-05-14 A | 2025-05-21 A | QTS-1371 SS | 100% |  |  |  | Site Work | Construction | IGMP |  |  |  |  |  |
| QTS-23221 | *Deleted* B North Phase 2 // Set Precast Screen Wall Concrete Columns East | 8d | 2025-05-14 A | 2025-05-23 A | QTS-1371 SS | 100% |  |  |  | Site Work | Construction | IGMP |  |  |  |  |  |
| QTS-23231 | *Deleted* B North Phase 2 // Excavate, Form, & Pour Screen Wall Footings West | 8d | 2025-05-14 A | 2025-05-23 A | QTS-1371 SS | 100% |  |  |  | Site Work | Construction | IGMP |  |  |  |  |  |
| QTS-23241 | *Deleted* D East Phase 4 // Install Trash Enclosure Gates | 1d | 2025-05-14 A | 2025-05-14 A | QTS-1371 SS | 100% |  |  |  | Site Work | Construction | IGMP |  |  |  |  |  |
| QTS-23271 | *Deleted* D East Phase 4 // Install Irrigation Laterals | 4d | 2025-05-14 A | 2025-05-19 A | QTS-1371 SS | 100% |  |  |  | Site Work | Construction | IGMP |  |  |  |  |  |
| QTS-23291 | DH 2100 / Electrical Gallery 2102 // Paint Walls for South 2102 Wall *Deleted* | 1d | 2025-05-14 A | 2025-05-15 A | QTS-1371 SS | 100% | 2025-06-05 | 2025-06-05 | Level 2 | DH2100 | Construction | IGMP | Doug Hayes |  |  |  |  |
| QTS-23371 | *Deleted* D East Phase 4 // Pour Light Pole Bases | 2d | 2025-05-14 A | 2025-05-15 A | QTS-1371 SS | 100% |  |  |  | Site Work | Construction | IGMP |  |  |  |  |  |
| QTS-23411 | *Deleted* C South Phase 3 // Sack & Patch Light Pole Bases | 3d | 2025-05-14 A | 2025-05-16 A | QTS-1371 SS | 100% |  |  |  | Site Work | Construction | IGMP |  |  |  |  |  |
| QTS-23481 | *Deleted* D East Phase 4 // Set Light Poles | 2d | 2025-05-14 A | 2025-05-15 A | QTS-1371 SS | 100% |  |  |  | Site Work | Construction | IGMP |  |  |  |  |  |
| QTS-23491 | *Deleted* D East Phase 4 // Prep & Place Medium Duty Asphalt Pavement | 3d | 2025-05-14 A | 2025-05-16 A | QTS-1371 SS | 100% |  |  |  | Site Work | Construction | IGMP |  |  |  |  |  |
| QTS-23661 | *Deleted* D East Phase 4 // Pull Electrical Wire & Make Up to Light Poles | 4d | 2025-05-14 A | 2025-05-19 A | QTS-1371 SS | 100% |  |  |  | Site Work | Construction | IGMP |  |  |  |  |  |
| QTS-23721 | *Deleted* D East Phase 4 // Utility Adjustments (Raise Cans & Collars) | 2d | 2025-05-14 A | 2025-05-15 A | QTS-1371 SS | 100% |  |  |  | Site Work | Construction | IGMP |  |  |  |  |  |
| QTS-23771 | *Deleted* B North Phase 2 // Install Ameristar Security Fence & Controller East | 5d | 2025-05-14 A | 2025-05-20 A | QTS-1371 SS | 100% |  |  |  | Site Work | Construction | IGMP |  |  |  |  |  |
| QTS-23781 | *Deleted* B North Phase 2 // Set Precast Screen Wall Concrete Columns West | 8d | 2025-05-14 A | 2025-05-23 A | QTS-1371 SS | 100% |  |  |  | Site Work | Construction | IGMP |  |  |  |  |  |
| QTS-23811 | *Deleted* D East Phase 4 // Site Striping | 1d | 2025-05-14 A | 2025-05-14 A | QTS-1371 SS | 100% |  |  |  | Site Work | Construction | IGMP |  |  |  |  |  |
| QTS-23941 | *Deleted* A West Phase 1 // Site Striping | 1d | 2025-05-14 A | 2025-05-14 A | QTS-1371 SS | 100% |  |  | Level 1 | Site Work | Construction | IGMP |  |  |  |  |  |
| QTS-23951 | *Deleted* D East Phase 4 // Sack & Patch Light Pole Bases | 3d | 2025-05-14 A | 2025-05-16 A | QTS-1371 SS | 100% |  |  |  | Site Work | Construction | IGMP |  |  |  |  |  |
| QTS-23961 | *Deleted* D East Phase 4 // Install Signage | 1d | 2025-05-14 A | 2025-05-14 A | QTS-1371 SS | 100% |  |  |  | Site Work | Construction | IGMP |  |  |  |  |  |
| QTS-24051 | *Deleted* B North Phase 2 // Site Striping | 1d | 2025-05-14 A | 2025-05-14 A | QTS-1371 SS | 100% |  |  |  | Site Work | Construction | IGMP |  |  |  |  |  |
| QTS-24061 | *Deleted* A West Phase 1 // Install Signage | 1d | 2025-05-14 A | 2025-05-14 A | QTS-1371 SS | 100% |  |  | Level 1 | Site Work | Construction | IGMP |  |  |  |  |  |
| QTS-24341 | *Deleted* B North Phase 2 // Install Ameristar Security Fence West | 5d | 2025-05-14 A | 2025-05-20 A | QTS-1371 SS | 100% |  |  |  | Site Work | Construction | IGMP |  |  |  |  |  |
| QTS-24381 | Zone 1 Gridlines 1-21 / Frame For Metal Panels *Deleted* | 5d | 2025-05-14 A | 2025-05-20 A | QTS-1371 SS | 100% |  |  |  |  |  | IGMP | Ron Carroll | Phase 1 | Construction |  |  |
| QTS-24781 | *Deleted* B North Phase 2 // Paint Screen Wall | 6d | 2025-05-14 A | 2025-05-21 A | QTS-1371 SS | 100% |  |  |  | Site Work | Construction | IGMP |  |  |  |  |  |
| QTS-24791 | DH 2100 / Electrical Gallery 2102 // Set Non Critical Load XFMRs *Deleted* | 1d | 2025-05-14 A | 2025-05-15 A | QTS-1371 SS | 100% | 2025-05-14 | 2025-05-14 | Level 2 | DH2100 | Construction | IGMP | Scott Masterson |  |  |  |  |
| QTS-24871 | *Deleted* C South Phase 3 // Prep & Place Sidewalks | 6d | 2025-05-14 A | 2025-05-21 A | QTS-1371 SS | 100% |  |  |  | Site Work | Construction | IGMP |  |  |  |  |  |
| QTS-24951 | DH 2100 / Electrical Gallery 2102 // Pull LV Cables from XFMRs to Panels *Deleted* | 1d | 2025-05-14 A | 2025-05-15 A | QTS-1371 SS | 100% | 2025-05-16 | 2025-05-16 | Level 2 | DH2100 | Construction | IGMP | Scott Masterson |  |  |  |  |
| QTS-25201 | *Deleted* B North Phase 2 // Install Signage | 1d | 2025-05-14 A | 2025-05-14 A | QTS-1371 SS | 100% |  |  |  | Site Work | Construction | IGMP |  |  |  |  |  |
| QTS-25211 | *Deleted* B North Phase 2 // Install Screen Wall Louvers & Doors | 4d | 2025-05-14 A | 2025-05-19 A | QTS-1371 SS | 100% |  |  |  | Site Work | Construction | IGMP |  |  |  |  |  |
| QTS-25311 | *Deleted* C South Phase 3 // Install Landscaping & Planting | 10d | 2025-05-14 A | 2025-05-28 A | QTS-1371 SS | 100% |  |  |  | Site Work | Construction | IGMP |  |  |  |  |  |
| QTS-25321 | *Deleted* C South Phase 3 // Site Striping | 2d | 2025-05-14 A | 2025-05-15 A | QTS-1371 SS | 100% |  |  |  | Site Work | Construction | IGMP |  |  |  |  |  |
| QTS-25471 | *Deleted* C South Phase 3 // Install Signage | 1d | 2025-05-14 A | 2025-05-14 A | QTS-1371 SS | 100% |  |  |  | Site Work | Construction | IGMP |  |  |  |  |  |
| QTS-25681 | Zone 1 Gridlines 1-21 / Field Scan for Metal Panels *Deleted* | 1d | 2025-05-14 A | 2025-05-14 A | QTS-1371 SS | 100% |  |  |  |  |  | IGMP | Ron Carroll | Phase 1 | Construction |  |  |
| QTS-25811 | *Deleted* D East Phase 4 // Install Landscaping & Planting | 10d | 2025-05-14 A | 2025-05-28 A | QTS-1371 SS | 100% |  |  |  | Site Work | Construction | IGMP |  |  |  |  |  |
| QTS-25831 | Zone 2 / Gridline 21-30 // Frame for Metal Panels *Deleted* | 8d | 2025-05-14 A | 2025-05-23 A | QTS-1371 SS | 100% |  |  |  |  |  | IGMP | Ron Carroll | Phase 2 | Construction |  |  |
| QTS-26451 | *Deleted* D East Phase 4 // Place DG | 5d | 2025-05-14 A | 2025-05-20 A | QTS-1371 SS | 100% |  |  |  | Site Work | Construction | IGMP |  |  |  |  |  |
| QTS-27141 | *Deleted* A West Phase 1 // Place DG | 3d | 2025-05-14 A | 2025-05-16 A | QTS-1371 SS | 100% |  |  | Level 1 | Site Work | Construction | IGMP |  |  |  |  |  |
| QTS-27561 | *Deleted* B North Phase 2 // Place DG | 5d | 2025-05-14 A | 2025-05-20 A | QTS-1371 SS | 100% |  |  |  | Site Work | Construction | IGMP |  |  |  |  |  |
| QTS-28211 | *Deleted* C South Phase 3 // Place DG | 5d | 2025-05-14 A | 2025-05-20 A | QTS-1371 SS | 100% |  |  |  | Site Work | Construction | IGMP |  |  |  |  |  |
| QTS-34211 | DH 2100 / CRAH #33 (Electrical Gallery) *Deleted* | 20d | 2025-05-14 A | 2025-06-11 A | QTS-1371 | 100% |  |  |  |  | Preconstruction | GMP |  |  |  | OFCI Procurement |  |
| QTS-34221 | DH 2100 / CRAH #34 (Electrical Gallery) *Deleted* | 20d | 2025-05-14 A | 2025-06-11 A | QTS-1371 | 100% |  |  |  |  | Preconstruction | GMP |  |  |  | OFCI Procurement |  |
| QTS-34571 | DH 1100 / CRAH #33 (Electrical Gallery) *Deleted* | 20d | 2025-05-14 A | 2025-06-11 A | QTS-1371 | 100% |  |  |  |  | Preconstruction | GMP |  |  |  | OFCI Procurement |  |
| QTS-34581 | DH 1100 / CRAH #34 (Electrical Gallery) *Deleted* | 20d | 2025-05-14 A | 2025-06-11 A | QTS-1371 | 100% |  |  |  |  | Preconstruction | GMP |  |  |  | OFCI Procurement |  |
| QTS-34931 | DH 2200 / CRAH #33 (Electrical Gallery) *Deleted* | 20d | 2025-05-14 A | 2025-06-11 A | QTS-1371 | 100% |  |  |  |  | Preconstruction | GMP |  |  |  | OFCI Procurement |  |
| QTS-34941 | DH 2200 / CRAH #34 (Electrical Gallery) *Deleted* | 20d | 2025-05-14 A | 2025-06-11 A | QTS-1371 | 100% |  |  |  |  | Preconstruction | GMP |  |  |  | OFCI Procurement |  |
| QTS-35291 | DH 1200 / CRAH #33 (Electrical Gallery) *Deleted* | 20d | 2025-05-14 A | 2025-06-11 A | QTS-1371 | 100% |  |  |  |  | Preconstruction | GMP |  |  |  | OFCI Procurement |  |
| QTS-35301 | DH 1200 / CRAH #34 (Electrical Gallery) *Deleted* | 20d | 2025-05-14 A | 2025-06-11 A | QTS-1371 | 100% |  |  |  |  | Preconstruction | GMP |  |  |  | OFCI Procurement |  |
| QTS-37101 | DH 2300 / CRAH #33 (Electrical Gallery) *Deleted* | 20d | 2025-05-14 A | 2025-06-11 A | QTS-1371 | 100% |  |  |  |  | Preconstruction | GMP |  |  |  | OFCI Procurement |  |
| QTS-37111 | DH 2300 / CRAH #34 (Electrical Gallery) *Deleted* | 20d | 2025-05-14 A | 2025-06-11 A | QTS-1371 | 100% |  |  |  |  | Preconstruction | GMP |  |  |  | OFCI Procurement |  |
| QTS-37941 | DH 1300 / CRAH #33 (Electrical Gallery) *Deleted* | 20d | 2025-05-14 A | 2025-06-11 A | QTS-1371 | 100% |  |  |  |  | Preconstruction | GMP |  |  |  | OFCI Procurement |  |
| QTS-37951 | DH 1300 / CRAH #34 (Electrical Gallery) *Deleted* | 20d | 2025-05-14 A | 2025-06-11 A | QTS-1371 | 100% |  |  |  |  | Preconstruction | GMP |  |  |  | OFCI Procurement |  |
| QTS-3891 | Gallery 1102 / Lineup R1100 // OFCI - L2 SET IN PLACE - Eq Type # - MOD-02 CRAH - 1 unit *Deleted* | 1d | 2025-05-14 A | 2025-05-15 A | QTS-1371 SS | 100% | 2025-05-27 | 2025-05-27 | Level 1 | DH1100 | Construction | IGMP | Scott Masterson |  |  |  | Phase 1 |
| QTS-3981 | Gallery 2202 / Lineup R2200 // OFCI - L2 SET IN PLACE - Eq Type # - MOD-02 CRAH - 1 unit *Deleted* | 1d | 2025-05-14 A | 2025-05-15 A | QTS-1371 SS | 100% | 2025-06-06 | 2025-06-06 |  | DH2200 | Construction | IGMP | Scott Masterson |  |  |  | Phase 2 |

| ID | Activity | Duration | Start | Finish | Predecessors | Complete | Planned start | Planned finish | Location | Project Section-1 | Phase-1-1 | Baseline | Layton Responsible Party | Level | Subcontractor | Phase-1 | Project Section |
| --- | --- | --- | --- | --- | --- | --- | --- | --- | --- | --- | --- | --- | --- | --- | --- | --- | --- |
| QTS-4071 | Gallery 1202 / Lineup R1200 // OFCI - L2 SET IN PLACE - Eq Type # - MOD-02 CRAH - 1 unit *Deleted* | 1d | 2025-05-14 A | 2025-05-15 A | QTS-1371 SS | 100% | 2025-06-12 | 2025-06-12 | DH1200 | Construction | Phase 2 | IGMP | Scott Masterson |  |  |  |  |
| QTS-4161 | Gallery 2302 / Lineup R2300 // OFCI - L2 SET IN PLACE - Eq Type # - MOD-02 CRAH - 1 unit *Deleted* | 1d | 2025-05-14 A | 2025-05-15 A | QTS-1371 SS | 100% | 2025-06-20 | 2025-06-20 | DH2300 | Construction | Phase 3 | IGMP | Scott Masterson |  |  |  |  |
| QTS-42101 | Gallery 2202 / Lineup R2200 // OFCI - L2 SET IN PLACE - Eq Type # - MOD-03 CDU - 1 unit *Deleted* | 1d | 2025-05-14 A | 2025-05-15 A | QTS-1371 SS | 100% | 2025-06-10 | 2025-06-10 | DH2200 | Construction | Phase 2 | IGMP | Scott Masterson |  |  |  |  |
| QTS-42121 | Gallery 1202 / Lineup R1200 // OFCI - L2 SET IN PLACE - Eq Type # - MOD-03 CDU - 1 unit *Deleted* | 1d | 2025-05-14 A | 2025-05-15 A | QTS-1371 SS | 100% | 2025-06-16 | 2025-06-16 | DH1200 | Construction | Phase 2 | IGMP | Scott Masterson |  |  |  |  |
| QTS-42131 | Gallery 2302 / Lineup R2300 // OFCI - L2 SET IN PLACE - Eq Type # - MOD-03 CDU - 1 unit *Deleted* | 1d | 2025-05-14 A | 2025-05-15 A | QTS-1371 SS | 100% | 2025-06-24 | 2025-06-24 | DH2300 | Construction | Phase 3 | IGMP | Scott Masterson |  |  |  |  |
| QTS-42141 | Gallery 1302 / Lineup R1300 // OFCI - L2 SET IN PLACE - Eq Type # - MOD-03 CDU - 1 unit *Deleted* | 1d | 2025-05-14 A | 2025-05-15 A | QTS-1371 SS | 100% | 2025-07-07 | 2025-07-07 | DH1300 | Construction | Phase 3 | IGMP | Scott Masterson |  |  |  |  |
| QTS-4251 | Gallery 1302 / Lineup R1300 // OFCI - L2 SET IN PLACE - Eq Type # - MOD-02 CRAH - 1 unit *Deleted* | 1d | 2025-05-14 A | 2025-05-15 A | QTS-1371 SS | 100% | 2025-07-02 | 2025-07-02 | DH1300 | Construction | Phase 3 | IGMP | Scott Masterson |  |  |  |  |
| QTS-42761 | DH 1100 / Mechanical Yard // Form, Reinforce, & Pour Thickened Slab On Grade for Transformer #2 *Deleted* | 5d | 2025-05-14 A | 2025-05-20 A | QTS-1371 SS | 100% |  |  | Gen Yard | Construction | Phase 1 | IGMP | Ron Carroll | Level 1 |  |  |  |
| QTS-42811 | DH 2100 / Mechanical Yard // Form, Reinforce, & Pour Thickened Slab On Grade for Transformers #2 *Deleted* | 5d | 2025-05-14 A | 2025-05-20 A | QTS-1371 SS | 100% |  |  | Gen Yard | Construction | Phase 1 | IGMP | Ron Carroll | Level 2 |  |  |  |
| QTS-42831 | DH 2200 / Mechanical Yard // Form, Reinforce, & Pour Thickened Slab On Grade for Transformers #2 *Deleted* | 5d | 2025-05-14 A | 2025-05-20 A | QTS-42811, QTS-1371 SS | 100% |  |  | Gen Yard | Construction | Phase 2 | IGMP | Ron Carroll | Level 1 |  |  |  |
| QTS-42841 | DH 1200 / Mechanical Yard // Form, Reinforce, & Pour Thickened Slab On Grade for Transformers #2 *Deleted* | 5d | 2025-05-14 A | 2025-05-20 A | QTS-42831, QTS-1371 SS | 100% |  |  | Gen Yard | Construction | Phase 2 | IGMP | Ron Carroll | Level 1 |  |  |  |
| QTS-42861 | DH 2300 / Mechanical Yard // Form, Reinforce, & Pour Thickened Slab On Grade for Transformers #2 *Deleted* | 5d | 2025-05-14 A | 2025-05-20 A | QTS-42841, QTS-1371 SS | 100% |  |  | Gen Yard | Construction | Phase 3 | IGMP | Ron Carroll | Level 1 |  |  |  |
| QTS-42901 | DH 1300 / Mechanical Yard // Form, Reinforce, & Pour Thickened Slab On Grade for Transformers #2 *Deleted* | 5d | 2025-05-14 A | 2025-05-20 A | QTS-42861, QTS-1371 SS | 100% |  |  | Gen Yard | Construction | Phase 3 | IGMP | Ron Carroll | Level 1 |  |  |  |
| QTS-44731 | Zone 1 Gridlines 10-21 / Corridor 1011 // Layout for Framing Corridor Exterior Walls *Deleted* | 1d | 2025-05-14 A | 2025-05-15 A | QTS-1371 SS | 100% | 2025-07-07 | 2025-07-07 |  | Construction |  | IGMP | Doug Hayes | Level 1 |  |  |  |
| QTS-44741 | Zone 1 Gridlines 10-21 / Corridor 1011 // Layout for Electrical *Deleted* | 1d | 2025-05-14 A | 2025-05-15 A | QTS-1371 SS | 100% | 2025-07-09 | 2025-07-09 |  | Construction |  | IGMP | Scott Masterson | Level 1 |  |  |  |
| QTS-44751 | Zone 1 Gridlines 10-21 / Corridor 1011 // Layout for MEP *Deleted* | 1d | 2025-05-14 A | 2025-05-15 A | QTS-1371 SS | 100% | 2025-07-14 | 2025-07-14 |  | Construction |  | IGMP | Dave Wiltberger | Level 1 |  |  |  |
| QTS-4551 | Gallery 1102 / Lineup R1100 // Pull LV Cables from POD to MOD-02/03 *Deleted* | 1d | 2025-05-14 A | 2025-05-15 A | QTS-1371 SS | 100% | 2025-05-29 | 2025-05-29 | DH1100 | Construction | Phase 1 | IGMP | Scott Masterson | Level 1 |  |  |  |
| QTS-4591 | Gallery 2202 / Lineup R2200 // Pull LV Cables from POD to MOD-02/03 *Deleted* | 1d | 2025-05-14 A | 2025-05-15 A | QTS-1371 SS | 100% | 2025-06-12 | 2025-06-12 | DH2200 | Construction | Phase 2 | IGMP | Scott Masterson |  |  |  |  |
| QTS-4631 | Gallery 1202 / Lineup R1200 // Pull LV Cables from POD to MOD-02/03 *Deleted* | 1d | 2025-05-14 A | 2025-05-15 A | QTS-1371 SS | 100% | 2025-06-18 | 2025-06-18 | DH1200 | Construction | Phase 2 | IGMP | Scott Masterson |  |  |  |  |
| QTS-4671 | Gallery 2302 / Lineup R2300 // Pull LV Cables from POD to MOD-02/03 *Deleted* | 1d | 2025-05-14 A | 2025-05-15 A | QTS-1371 SS | 100% | 2025-06-26 | 2025-06-26 | DH2300 | Construction | Phase 3 | IGMP | Scott Masterson |  |  |  |  |
| QTS-47041 | *Deleted* A West Phase 1 // Excavate, Install, & Backfill Domestic Water Line | 3d | 2025-05-14 A | 2025-05-16 A | QTS-1371 SS | 100% |  |  | Site Work | Construction |  | IGMP |  | Level 1 |  |  |  |
| QTS-47051 | *Deleted* A West Phase 1 // Excavate, Install, & Backfill Fire Water Line | 3d | 2025-05-14 A | 2025-05-16 A | QTS-1371 SS | 100% |  |  | Site Work | Construction |  | IGMP |  | Level 1 |  |  |  |
| QTS-4711 | Gallery 1302 / Lineup R1300 // Pull LV Cables from POD to MOD-02/03 *Deleted* | 1d | 2025-05-14 A | 2025-05-15 A | QTS-1371 SS | 100% | 2025-07-09 | 2025-07-09 | DH1300 | Construction | Phase 3 | IGMP | Scott Masterson |  |  |  |  |
| QTS-5571 | Gallery 1102 / Lineup R1100 // Pull LV Cables from MOD-02 to CRAHs *Deleted* | 1d | 2025-05-14 A | 2025-05-15 A | QTS-1371 SS | 100% | 2025-06-02 | 2025-06-02 | DH1100 | Construction | Phase 1 | IGMP | Scott Masterson | Level 1 |  |  |  |
| QTS-5591 | Gallery 2202 / Lineup R2200 // Pull LV Cables from MOD-02 to CRAHs *Deleted* | 1d | 2025-05-14 A | 2025-05-15 A | QTS-1371 SS | 100% | 2025-06-16 | 2025-06-16 | DH2200 | Construction | Phase 2 | IGMP | Scott Masterson |  |  |  |  |
| QTS-5611 | Gallery 1202 / Lineup R1200 // Pull LV Cables from MOD-02 to CRAHs *Deleted* | 1d | 2025-05-14 A | 2025-05-15 A | QTS-1371 SS | 100% | 2025-06-20 | 2025-06-20 | DH1200 | Construction | Phase 2 | IGMP | Scott Masterson |  |  |  |  |
| QTS-5621 | Gallery 2302 / Lineup R2300 // Pull LV Cables from TIE SWD to Reserve Busway *Deleted* | 1d | 2025-05-14 A | 2025-05-15 A | QTS-1371 SS | 100% | 2025-06-24 | 2025-06-24 | DH2300 | Construction | Phase 3 | IGMP | Scott Masterson |  |  |  |  |
| QTS-5631 | Gallery 2302 / Lineup R2300 // Pull LV Cables from MOD-02 to CRAHs *Deleted* | 1d | 2025-05-14 A | 2025-05-15 A | QTS-1371 SS | 100% | 2025-06-30 | 2025-06-30 | DH2300 | Construction | Phase 3 | IGMP | Scott Masterson |  |  |  |  |
| QTS-5651 | Gallery 1302 / Lineup R1300 // Pull LV Cables from MOD-02 to CRAHs *Deleted* | 1d | 2025-05-14 A | 2025-05-15 A | QTS-1371 SS | 100% | 2025-07-11 | 2025-07-11 | DH1300 | Construction | Phase 3 | IGMP | Scott Masterson |  |  |  |  |
| QTS-7041 | Gallery 2102 / Lineup R2100 // Terminate POD Equipment Load Side *Deleted* | 1d | 2025-05-14 A | 2025-05-15 A | QTS-1371 SS | 100% | 2025-07-23 | 2025-07-23 | DH2100 | Construction | Phase 1 | IGMP | Scott Masterson | Level 2 |  |  |  |
| QTS-7091 | Gallery 1102 / Lineup R1100 // Pull LV Cables from POD to Reserve Busway *Deleted* | 1d | 2025-05-14 A | 2025-05-15 A | QTS-1371 SS | 100% | 2025-07-17 | 2025-07-17 | DH1100 | Construction | Phase 1 | IGMP | Scott Masterson | Level 1 |  |  |  |
| QTS-7141 | Gallery 2202 / Lineup R2200 // Terminate & Torque COD *Deleted* | 1d | 2025-05-14 A | 2025-05-15 A | QTS-1371 SS | 100% | 2025-07-30 | 2025-07-30 | DH2200 | Construction | Phase 2 | IGMP | Scott Masterson |  |  |  |  |
| QTS-7191 | Gallery 1202 / Lineup R1200 // Terminate & Torque COD *Deleted* | 1d | 2025-05-14 A | 2025-05-15 A | QTS-1371 SS | 100% | 2025-08-06 | 2025-08-06 | DH1200 | Construction | Phase 2 | IGMP | Scott Masterson |  |  |  |  |
| QTS-7291 | Gallery 1302 / Lineup R1300 // Terminate & Torque COD *Deleted* | 1d | 2025-05-14 A | 2025-05-15 A | QTS-1371 SS | 100% | 2025-08-13 | 2025-08-13 | DH1300 | Construction | Phase 3 | IGMP | Scott Masterson |  |  |  |  |
| QTS-25331 | DH 2100 / Electrical Gallery 2102 // Terminate XFMRs *Deleted* | 1d | 2025-05-23 A | 2025-05-23 A | QTS-1371 SS | 100% |  |  | DH2100 | Construction |  | IGMP | Scott Masterson | Level 2 |  |  |  |
| QTS-42091 | Gallery 1102 / Lineup R1100 // OFCI - L2 SET IN PLACE - Eq Type # - MOD-03 CDU - 1 unit *Deleted* | 2d | 2025-05-29 A | 2025-05-30 A | QTS-1371 SS | 100% |  |  | DH1100 | Construction | Phase 1 | IGMP | Scott Masterson | Level 1 |  |  |  |
| QTS-18251 | DH 1100 / Electrical Gallery 1102 // Terminate XFMRs *Deleted* | 1d | 2025-05-30 A | 2025-05-30 A | QTS-1371 SS | 100% |  |  | DH1100 | Construction | Phase 1 | IGMP | Scott Masterson | Level 1 |  |  |  |
| QTS-6801 | Gallery 1102 / Lineup R1100 // Terminate CRAH MOD-02 *Deleted* | 2d | 2025-06-06 A | 2025-06-09 A | QTS-1371 SS | 100% |  |  | DH1100 | Construction | Phase 1 | IGMP | Scott Masterson | Level 1 |  |  |  |
| QTS-23581 | DH 2100 / Electrical Gallery 2102 // Top of Wall Fire Stop for South 2102 Wall *Deleted* | 2d | 2025-06-10 A | 2025-06-11 A | QTS-1371 SS | 100% |  |  | DH2100 | Construction |  | IGMP | Doug Hayes | Level 2 |  |  |  |
| QTS-18271 | DH 2200 / Electrical Gallery 2202 // Terminate XFMRs *Deleted* | 1d | 2025-06-11 A | 2025-06-11 A | QTS-1371 SS | 100% |  |  | DH2200 | Construction | Phase 2 | IGMP | Scott Masterson |  |  |  |  |
| QTS-14101 | DH 1100 / Electrical Gallery 1102 // Top of Wall Fire Stop for South 1102 Wall *Deleted* | 2d | 2025-06-12 A | 2025-06-12 A | QTS-1371 SS | 100% | 2025-06-12 | 2025-06-13 | DH1100 | Construction | Phase 1 | IGMP | Doug Hayes | Level 1 |  |  |  |
| QTS-14161 | DH 2200 / Electrical Gallery 2202 // Top of Wall Fire Stop for 2202 South Wall *Deleted* | 2d | 2025-06-12 A | 2025-06-12 A | QTS-1371 SS | 100% | 2025-06-26 | 2025-06-27 | DH2200 | Construction | Phase 2 | IGMP | Doug Hayes |  |  |  |  |
| QTS-14221 | DH 1200 / Electrical Gallery 1202 // Top of Wall Fire Stop for 1202 South Wall *Deleted* | 2d | 2025-06-12 A | 2025-06-12 A | QTS-1371 SS | 100% | 2025-07-02 | 2025-07-03 | DH1200 | Construction | Phase 2 | IGMP | Doug Hayes |  |  |  |  |
| QTS-14281 | DH 2300 / Electrical Gallery 2302 // Top of Wall Fire Stop for 2302 South Wall *Deleted* | 2d | 2025-06-12 A | 2025-06-12 A | QTS-1371 SS | 100% | 2025-07-11 | 2025-07-14 | DH2300 | Construction | Phase 3 | IGMP | Doug Hayes |  |  |  |  |
| QTS-14341 | DH 1300 / Electrical Gallery 1302 // Top of Wall Fire Stop for 1302 South Wall *Deleted* | 2d | 2025-06-12 A | 2025-06-12 A | QTS-1371 SS | 100% | 2025-07-23 | 2025-07-24 | DH1300 | Construction | Phase 3 | IGMP | Doug Hayes |  |  |  |  |
| QTS-18291 | DH 1200 / Electrical Gallery 1202 // Terminate XFMRs *Deleted* | 1d | 2025-06-12 A | 2025-06-12 A | QTS-1371 SS | 100% | 2025-12-15 | 2025-12-15 | DH1200 | Construction | Phase 2 | IGMP | Scott Masterson |  |  |  |  |
| QTS-18311 | DH 2300 / Electrical Gallery 2302 // Terminate XFMRs *Deleted* | 1d | 2025-06-12 A | 2025-06-12 A | QTS-1371 SS | 100% | 2025-06-25 | 2025-06-25 | DH2300 | Construction | Phase 3 | IGMP | Scott Masterson |  |  |  |  |
| QTS-18331 | DH 1300 / Electrical Gallery 1302 // Terminate XFMRs *Deleted* | 1d | 2025-06-12 A | 2025-06-12 A | QTS-1371 SS | 100% | 2025-07-08 | 2025-07-08 | DH1300 | Construction | Phase 3 | IGMP | Scott Masterson |  |  |  |  |
| QTS-6811 | Gallery 2202 / Lineup R2200 // Terminate CRAH MOD-02 *Deleted* | 2d | 2025-06-12 A | 2025-06-12 A | QTS-1371 SS | 100% | 2025-06-20 | 2025-06-23 | DH2200 | Construction | Phase 2 | IGMP | Scott Masterson |  |  |  |  |
| QTS-6821 | Gallery 1202 / Lineup R1200 // Terminate CRAH MOD-02 *Deleted* | 2d | 2025-06-12 A | 2025-06-12 A | QTS-1371 SS | 100% | 2025-06-26 | 2025-06-27 | DH1200 | Construction | Phase 2 | IGMP | Scott Masterson |  |  |  |  |
| QTS-6831 | Gallery 2302 / Lineup R2300 // Terminate CRAH MOD-02 *Deleted* | 2d | 2025-06-12 A | 2025-06-12 A | QTS-1371 SS | 100% | 2025-07-07 | 2025-07-08 | DH2300 | Construction | Phase 3 | IGMP | Scott Masterson |  |  |  |  |
| QTS-6841 | Gallery 1302 / Lineup R1300 // Terminate CRAH MOD-02 *Deleted* | 2d | 2025-06-12 A | 2025-06-12 A | QTS-1371 SS | 100% | 2025-07-17 | 2025-07-18 | DH1300 | Construction | Phase 3 | IGMP | Scott Masterson |  |  |  |  |
| QTS-13251 | Zone 3 Gridlines 30-41 / South // Install Spandrel Window Framing *Delete* | 10d | 2025-07-14 A | 2025-07-16 A | QTS-1371 SS | 100% | 2025-07-23 | 2025-08-05 |  |  |  | IGMP | Ron Carroll |  | Giroux Glass, Inc | Phase 3 | Construction |
| QTS-15051 | Zone 3 Gridlines 30-41 / South // Measure for Spandrel Window Glass *Delete* | 1d | 2025-07-14 A | 2025-07-16 A | QTS-13251 SS | 100% | 2025-07-23 | 2025-07-23 |  |  |  | IGMP | Ron Carroll |  | Giroux Glass, Inc | Phase 3 | Construction |
| QTS-15991 | Zone 3 Gridlines 30-41 / South // Install Spandrel Window Glass *Delete* | 5d | 2025-07-14 A | 2025-07-16 A | QTS-13251 SS, QTS-15051 SS | 100% | 2025-07-23 | 2025-07-29 |  |  |  | IGMP | Ron Carroll |  | Giroux Glass, Inc | Phase 3 | Construction |
| QTS-16791 | Zone 3 Gridlines 30-41 / South // Spandrel Window Caulking *Delete* | 7d | 2025-07-14 A | 2025-07-16 A | QTS-15991 SS, QTS-15051 SS | 100% | 2025-07-23 | 2025-07-31 |  |  |  | IGMP | Ron Carroll |  | Giroux Glass, Inc | Phase 3 | Construction |
| QTS-24601 | East Elevation // Install Curtain Wall Framing *Delete* | 10d | 2025-07-14 A | 2025-07-16 A | QTS-1371 SS | 100% | 2025-07-23 | 2025-08-05 |  |  |  | IGMP | Ron Carroll |  | Giroux Glass, Inc | Phase 3 | Construction |
| QTS-24631 | Zone 3 Gridlines 30-41 / North // Set Window Frames *Delete* | 3d | 2025-07-14 A | 2025-07-16 A | QTS-1371 SS | 100% | 2025-07-23 | 2025-07-25 |  |  |  | IGMP | Ron Carroll |  | Giroux Glass, Inc | Phase 3 | Construction |
| QTS-24841 | Zone 2 Gridlines 21-30 / South // Set Spandrel Window Frames *Delete* | 4d | 2025-07-14 A | 2025-07-16 A | QTS-1371 SS | 100% | 2025-07-23 | 2025-07-28 |  |  |  | IGMP | Ron Carroll |  | Giroux Glass, Inc | Phase 2 | Construction |
| QTS-24901 | Zone 3 Gridlines 30-41 / North // Set Window Glass *Delete* | 3d | 2025-07-14 A | 2025-07-16 A | QTS-24631 SS | 100% | 2025-07-23 | 2025-07-25 |  |  |  | IGMP | Ron Carroll |  | Giroux Glass, Inc | Phase 3 | Construction |
| QTS-24961 | West Elevation // Set Window Glass *Delete* | 10d | 2025-07-14 A | 2025-07-16 A | QTS-1371 SS | 100% | 2025-07-23 | 2025-08-05 |  |  |  | IGMP | Ron Carroll |  | Giroux Glass, Inc | Phase 1 | Construction |
| QTS-25131 | Zone 2 Gridlines 21-30 / South // Set Spandrel Window Glass *Delete* | 3d | 2025-07-14 A | 2025-07-16 A | QTS-24841 SS | 100% | 2025-07-23 | 2025-07-25 |  |  |  | IGMP | Ron Carroll |  | Giroux Glass, Inc | Phase 2 | Construction |
| QTS-25261 | Zone 3 Gridlines 30-41 / North // Caulk Windows *Delete* | 2d | 2025-07-14 A | 2025-07-16 A | QTS-24901 SS | 100% | 2025-07-23 | 2025-07-24 |  |  |  | IGMP | Ron Carroll |  | Giroux Glass, Inc | Phase 3 | Construction |
| QTS-25361 | Zone 2 Gridlines 21-30 / South // Caulk Windows *Delete* | 2d | 2025-07-14 A | 2025-07-16 A | QTS-25131 SS | 100% | 2025-07-23 | 2025-07-24 |  |  |  | IGMP | Ron Carroll |  | Giroux Glass, Inc | Phase 2 | Construction |
| QTS-25401 | Zone 1 Gridlines 10-21 / North // Set Louvered Metal Screen Wall *Deleted* | 5d | 2025-07-14 A | 2025-07-14 A | QTS-1030 SS | 100% | 2025-07-16 | 2025-07-22 |  |  |  | IGMP | Ron Carroll |  | True Metal Solutions, LLC | Phase 1 | Construction |
| QTS-25581 | East Elevation // Measure for Curtain Wall Glass *Delete* | 1d | 2025-07-14 A | 2025-07-16 A | QTS-24601 SS | 100% | 2025-07-23 | 2025-07-23 |  |  |  | IGMP | Ron Carroll |  | Giroux Glass, Inc | Phase 3 | Construction |
| QTS-25691 | East Elevation // Install Curtain Wall Glass *Delete* | 3d | 2025-07-14 A | 2025-07-16 A | QTS-25581 SS, QTS-24601 SS | 100% | 2025-07-23 | 2025-07-25 |  |  |  | IGMP | Ron Carroll |  | Giroux Glass, Inc | Phase 3 | Construction |
| QTS-25701 | East Elevation // Curtain Wall Caulking *Delete* | 5d | 2025-07-14 A | 2025-07-16 A | QTS-24601 SS, QTS-25691 SS | 100% | 2025-07-23 | 2025-07-29 |  |  |  | IGMP | Ron Carroll |  | Giroux Glass, Inc | Phase 3 | Construction |
| QTS-26671 | West Elevation // Install Metal Panels *Delete* | 10d | 2025-07-14 A | 2025-07-16 A | QTS-1371 SS | 100% | 2025-07-23 | 2025-08-05 |  |  |  | IGMP | Ron Carroll |  | True Metal Solutions, LLC | Phase 1 | Construction |
| QTS-27941 | Zone 2 Gridlines 21-30 / South // Install Metal Panels North *Delete* | 10d | 2025-07-14 A | 2025-07-16 A | QTS-1371 SS | 100% | 2025-07-23 | 2025-08-05 |  |  |  | IGMP | Ron Carroll |  | True Metal Solutions, LLC | Phase 2 | Construction |

| ID | Activity | Duration | Start | Finish | Predecessors | Complete | Planned start | Planned finish | Subcontractor | Project Section-1 | Phase-1-1 | Baseline | Layton Responsible Party | Project Section | Phase-1 | Precon Phase | Allucent CSI Group | Level | Location |
| --- | --- | --- | --- | --- | --- | --- | --- | --- | --- | --- | --- | --- | --- | --- | --- | --- | --- | --- | --- |
| QTS-42711 | Zone 1 Gridlines 1-21 / East // Sack & Patch Panels *Deleted* | 2d | 2025-07-14 A | 2025-07-14 A | QTS-1030 SS | 100% | 2025-08-12 | 2025-08-13 | Suntec Concrete Inc | Construction | Phase 1 | IGMP | Ron Carroll | Construction |  |  |  |  |  |
| QTS-42721 | Zone 1 Gridlines 1-21 / East // Power Wash Tilt Panels *Deleted* | 1d | 2025-07-14 A | 2025-07-14 A | QTS-42711 SS | 100% | 2025-08-14 | 2025-08-14 | Suntec Concrete Inc | Construction | Phase 1 | IGMP | Ron Carroll | Construction |  |  |  |  |  |
| QTS-42731 | Zone 1 Gridlines 1-21 / East // Prime & Paint Tilt Panels *Deleted* | 3d | 2025-07-14 A | 2025-07-14 A | QTS-42721 SS | 100% | 2025-08-26 | 2025-08-28 | Pennington Painting Company, LLC | Construction | Phase 1 | IGMP | Ron Carroll | Construction |  |  |  |  |  |
| QTS-42741 | Zone 1 Gridlines 1-21 / East // Caulk Panel Joints *Deleted* | 3d | 2025-07-14 A | 2025-07-14 A | QTS-42731 SS | 100% | 2025-09-02 | 2025-09-04 | Alpha Insulation & Waterproofing, Inc. | Construction | Phase 1 | IGMP | Ron Carroll | Construction |  |  |  |  |  |
| QTS-42751 | Zone 1 Gridlines 1-21 / East // Set Louvered Metal Screen Wall *Deleted* | 5d | 2025-07-14 A | 2025-07-14 A | QTS-1030 SS | 100% | 2025-11-19 | 2025-11-25 | True Metal Solutions, LLC | Construction | Phase 1 | IGMP | Ron Carroll | Construction |  |  |  |  |  |
| QTS-49521 | Zone 2 Gridlines 21-30 / South // Install Weather Barrier & Insulation *Delete* | 5d | 2025-07-14 A | 2025-07-16 A | QTS-1371 SS | 100% | 2025-07-23 | 2025-07-29 | True Metal Solutions, LLC | Construction |  | IGMP | Ron Carroll | Construction | Phase 1 |  |  |  |  |
| QTS-49531 | Zone 2 Gridlines 21-30 / South // Inspect Weather Barrier *Delete* | 1d | 2025-07-14 A | 2025-07-16 A | QTS-49521 | 100% | 2025-07-30 | 2025-07-30 | True Metal Solutions, LLC | Construction |  | IGMP | Ron Carroll | Construction | Phase 1 |  |  |  |  |
| QTS-6721 | Zone 2 Gridlines 21-30 / North // Install Scuppers & Downspouts *Delete* | 4d | 2025-07-14 A | 2025-07-16 A | QTS-1371 SS | 100% | 2025-07-23 | 2025-07-28 | Progressive Roofing | Construction | Phase 2 | IGMP | Ron Carroll | Construction |  |  |  |  |  |
| QTS-13601 | Design Team Review & Approve Water Meter Vault Submittals *Deleted* | 10d | 2025-07-21 A | 2025-09-03 A | QTS-13481 | 100% | 2025-07-21 | 2025-08-01 |  | Preconstruction |  | GMP | Chris Perales | Preconstruction |  | CFCI Procurement | 01ADMIN |  |  |
| QTS-17921 | Zone 3 / Gridlines 30-41 // Panel Embeds, Jamb Steel & Ledgers Shake Out *Delete* | 5d | 2025-08-04 A | 2025-08-08 A | QTS-1371 SS | 100% |  |  | Suntec Concrete Inc | Construction | Phase 3 | IGMP | Ron Carroll | Construction |  |  | 01ADMIN |  |  |
| QTS-18371 | Zone 3 / Gridlines 30-41 // Panel Embeds, Jamb Steel & Ledgers *Delete* | 1d | 2025-08-04 A | 2025-08-04 A | QTS-1371 SS | 100% |  |  | Suntec Concrete Inc | Construction | Phase 3 | IGMP | Ron Carroll | Construction |  |  | 01ADMIN |  |  |
| QTS-20911 | DH 2100 // Polish Floors *Delete* | 7d | 2025-08-04 A | 2025-08-08 A | QTS-1371 SS | 100% | 2025-08-13 | 2025-08-21 |  | Construction |  | IGMP | Doug Hayes | Construction |  |  | 01ADMIN | Level 2 | DH2100 |
| QTS-25611 | TI Area B // Install Floor Protection *Delete* | 4d | 2025-08-04 A | 2025-08-08 A | QTS-1371 SS | 100% | 2025-08-13 | 2025-08-18 |  |  |  | IGMP | Doug Hayes | Construction | Phase 1 |  |  | Level 1 | FOH |
| QTS-25621 | TI Area A // Install Floor Protection *Delete* | 4d | 2025-08-04 A | 2025-08-08 A | QTS-1371 SS | 100% | 2025-08-13 | 2025-08-18 |  |  |  | IGMP | Doug Hayes | Construction | Phase 1 |  |  | Level 2 | FOH |
| QTS-25631 | TI Area B // Install Floor Protection *Delete* | 4d | 2025-08-04 A | 2025-08-08 A | QTS-1371 SS | 100% | 2025-08-13 | 2025-08-18 |  |  |  | IGMP | Doug Hayes | Construction | Phase 1 |  | 01ADMIN | Level 2 | FOH |
| QTS-30241 | TI Area B // Remove Floor Protection *Delete* | 2d | 2025-08-04 A | 2025-08-08 A | QTS-1371 SS | 100% | 2025-08-13 | 2025-08-14 |  |  |  | IGMP | Doug Hayes | Construction | Phase 1 |  |  | Level 2 | FOH |
| QTS-30321 | TI Area B // Remove Floor Protection *Delete* | 2d | 2025-08-04 A | 2025-08-08 A | QTS-1371 SS | 100% | 2025-08-13 | 2025-08-14 |  |  |  | IGMP | Doug Hayes | Construction | Phase 1 |  |  | Level 1 | FOH |
| QTS-30331 | TI Area A // Remove Floor Protection *Delete* | 2d | 2025-08-04 A | 2025-08-08 A | QTS-1371 SS | 100% | 2025-08-13 | 2025-08-14 |  |  |  | IGMP | Doug Hayes | Construction | Phase 1 |  |  | Level 2 | FOH |
| QTS-4531 | DH 1100 // Polish Floors *Delete* | 7d | 2025-08-04 A | 2025-08-08 A | QTS-1371 SS | 100% | 2025-08-13 | 2025-08-21 |  | Construction | Phase 1 | IGMP | Doug Hayes | Construction |  |  |  | Level 1 | DH1100 |
| QTS-4571 | DH 2200 // Polish Floors *Delete* | 4d | 2025-08-04 A | 2025-08-08 A | QTS-1371 SS | 100% | 2025-08-13 | 2025-08-18 |  | Construction | Phase 2 | IGMP | Doug Hayes | Construction |  |  |  |  | DH2200 |
| QTS-4611 | DH 1200 // Polish Floors *Delete* | 4d | 2025-08-04 A | 2025-08-08 A | QTS-1371 SS | 100% | 2025-08-13 | 2025-08-18 |  | Construction | Phase 2 | IGMP | Doug Hayes | Construction |  |  |  |  | DH1200 |
| QTS-4651 | DH 2300 // Polish Floors *Delete* | 4d | 2025-08-04 A | 2025-08-08 A | QTS-1371 SS | 100% | 2025-08-13 | 2025-08-18 |  | Construction | Phase 3 | IGMP | Doug Hayes | Construction |  |  |  |  | DH2300 |
| QTS-4691 | DH 1300 // Polish Floors *Delete* | 4d | 2025-08-04 A | 2025-08-08 A | QTS-1371 SS | 100% | 2025-08-13 | 2025-08-18 |  | Construction | Phase 3 | IGMP | Doug Hayes | Construction |  |  |  |  | DH1300 |
| QTS-23711 | TI Area J & K // Install Floor Protection *Deleted* | 4d | 2025-08-11 A | 2025-08-14 A | QTS-1371 SS | 100% |  |  |  | Construction | Phase 1 | IGMP | Doug Hayes | Construction |  |  |  | Level 2 | BOH |
| QTS-25601 | TI Area A // Install Floor Protection *Deleted* | 4d | 2025-08-11 A | 2025-08-14 A | QTS-1371 SS | 100% |  |  |  |  |  | IGMP | Doug Hayes | Construction | Phase 1 |  |  | Level 1 | FOH |
| QTS-25641 | TI Area J & K // Install Floor Protection *Deleted* | 4d | 2025-08-11 A | 2025-08-14 A | QTS-1371 SS | 100% |  |  |  | Construction | Phase 1 | IGMP | Doug Hayes | Construction |  |  |  | Level 1 | BOH |
| QTS-25851 | Zone 3 Gridlines 30-41 Corridor 2307 // Install Floor Protection *Deleted* | 2d | 2025-08-11 A | 2025-08-12 A | QTS-1371 SS | 100% |  |  |  |  |  | IGMP | Doug Hayes | Construction |  |  |  | Level 2 |  |
| QTS-25861 | Zone 1 Gridlines 10-21 / Corridor 2010 // Install Floor Protection *Deleted* | 2d | 2025-08-11 A | 2025-08-12 A | QTS-1371 SS | 100% |  |  |  |  |  | IGMP | Doug Hayes | Construction |  |  | 01ADMIN | Level 2 |  |
| QTS-25871 | Zone 2 Gridline 21-30 / Corridor 2010 // Install Floor Protection *Deleted* | 2d | 2025-08-11 A | 2025-08-12 A | QTS-1371 SS | 100% |  |  |  |  |  | IGMP | Doug Hayes | Construction |  |  |  | Level 2 |  |
| QTS-25881 | Zone 3 Gridlines 30-41 Corridor 1012 // Install Floor Protection *Deleted* | 2d | 2025-08-11 A | 2025-08-12 A | QTS-1371 SS | 100% |  |  |  |  |  | IGMP | Doug Hayes | Construction |  |  |  | Level 1 |  |
| QTS-28491 | Zone 1 Gridlines 10-21 / Corridor 1011 // Install Floor Protection *Deleted* | 2d | 2025-08-11 A | 2025-08-12 A | QTS-1371 SS | 100% |  |  |  |  |  | IGMP | Doug Hayes | Construction |  |  |  | Level 1 |  |
| QTS-28501 | Zone 2 Gridline 21-30 / Corridor 1013 // Install Floor Protection *Deleted* | 2d | 2025-08-11 A | 2025-08-12 A | QTS-1371 SS | 100% |  |  |  |  |  | IGMP | Doug Hayes | Construction |  |  |  | Level 1 |  |
| QTS-29991 | TI Area A // Remove Floor Protection *Deleted* | 2d | 2025-08-11 A | 2025-08-12 A | QTS-1371 SS | 100% |  |  |  |  |  | IGMP | Doug Hayes | Construction | Phase 1 |  |  | Level 1 | FOH |
| QTS-30021 | TI Area J & K // Remove Floor Protection *Deleted* | 2d | 2025-08-11 A | 2025-08-12 A | QTS-1371 SS | 100% |  |  |  | Construction | Phase 1 | IGMP | Doug Hayes | Construction |  |  |  | Level 2 | BOH |
| QTS-30411 | TI Area J & K // Remove Floor Protection *Deleted* | 2d | 2025-08-11 A | 2025-08-12 A | QTS-1371 SS | 100% |  |  |  | Construction | Phase 1 | IGMP | Doug Hayes | Construction |  |  |  | Level 1 | BOH |
| QTS-41551 | FOH / Mechanical Yard // Form, Reinforce, & Pour Thickened Slab On Grade for Generators *Delete* | 7d | 2025-09-02 A | 2025-09-10 A | QTS-1371 SS | 100% |  |  | Suntec Concrete Inc | Construction | Phase 1 | IGMP | Ron Carroll | Construction |  |  |  | Level 1 | Gen Yard |
| QTS-41611 | FOH / Mechanical Yard // Prep for Equipment Pads *Delete* | 3d | 2025-09-02 A | 2025-09-04 A | QTS-41671 | 100% |  |  | Suntec Concrete Inc | Construction | Phase 1 | IGMP | Ron Carroll | Construction |  |  |  | Level 1 | Gen Yard |
| QTS-41661 | FOH / Mechanical Yard // Prep & Place Base for Slab On Grade *Delete* | 3d | 2025-09-02 A | 2025-09-04 A | QTS-1371 SS | 100% |  |  | Suntec Concrete Inc | Construction | Phase 1 | IGMP | Ron Carroll | Construction |  |  |  | Level 1 | Gen Yard |
| QTS-41671 | FOH / Mechanical Yard // Pour Slab On Grade *Delete* | 2d | 2025-09-02 A | 2025-09-03 A | QTS-41661 | 100% |  |  | Suntec Concrete Inc | Construction | Phase 1 | IGMP | Ron Carroll | Construction |  |  |  | Level 1 | Gen Yard |
| QTS-41741 | BOH / Mechanical Yard // Form, Reinforce, & Pour Thickened Slab On Grade for Generators *Delete* | 6d | 2025-09-02 A | 2025-09-09 A | QTS-1371 SS | 100% |  |  | Suntec Concrete Inc | Construction | Phase 1 | IGMP | Ron Carroll | Construction |  |  |  | Level 1 | Gen Yard |
| QTS-41791 | BOH / Mechanical Yard // Prep for Equipment Pads *Delete* | 3d | 2025-09-02 A | 2025-09-04 A | QTS-1371 SS | 100% |  |  | Suntec Concrete Inc | Construction | Phase 1 | IGMP | Ron Carroll | Construction |  |  |  | Level 1 | Gen Yard |
| QTS-41841 | BOH / Mechanical Yard // Prep & Place Base for Slab On Grade *Delete* | 3d | 2025-09-02 A | 2025-09-04 A | QTS-1371 SS | 100% |  |  | Suntec Concrete Inc | Construction | Phase 1 | IGMP | Ron Carroll | Construction |  |  |  | Level 1 | Gen Yard |
| QTS-41851 | BOH / Mechanical Yard // Pour Slab On Grade *Delete* | 2d | 2025-09-02 A | 2025-09-03 A | QTS-1371 SS | 100% |  |  | Suntec Concrete Inc | Construction | Phase 1 | IGMP | Ron Carroll | Construction |  |  |  | Level 1 | Gen Yard |
| QTS-6931 | DH 1200 // Install Fire Caulking *Delete* | 3d | 2025-09-03 A | 2025-09-05 A | QTS-1371 SS | 100% |  |  |  | Construction | Phase 2 | IGMP | Doug Hayes | Construction |  |  |  |  | DH1200 |
| QTS-15541 | Water Meter Vault Procurement *Deleted* | 1d | 2025-09-04 A | 2025-09-04 A | QTS-13601 SS | 100% |  |  |  | Preconstruction |  | GMP | Chris Perales | Preconstruction |  | CFCI Procurement | 01ADMIN |  |  |
| QTS-10021 | DH 1300 / Rooftop Mechanical // Install Mainline Piping from Pumps to Doghouses *Deleted* | 8d | 2025-09-15 A | 2025-09-16 A | QTS-1030 SS | 100% | 2026-02-11 | 2026-02-20 | Bel-Aire Mechanical, LLC | Construction | Phase 3 | IGMP | Dave Wiltberger | Construction |  |  |  |  | DH1300 |
| QTS-11761 | DH 1100 / Rooftop Mechanical // Install Branch Line Piping (Supply) *Deleted* | 8d | 2025-09-15 A | 2025-09-16 A | QTS-1030 SS | 100% | 2025-12-05 | 2025-12-16 | Bel-Aire Mechanical, LLC | Construction | Phase 1 | IGMP | Dave Wiltberger | Construction |  |  |  | Level 1 | DH1100 |
| QTS-11771 | DH 1100 / Rooftop Mechanical // Install Mainline Piping from Doghouses to Galleries *Deleted* | 7d | 2025-09-15 A | 2025-09-16 A | QTS-1030 SS | 100% | 2025-11-24 | 2025-12-04 | Bel-Aire Mechanical, LLC | Construction | Phase 1 | IGMP | Dave Wiltberger | Construction |  |  |  | Level 1 | DH1100 |
| QTS-11781 | DH 2200 / Rooftop Mechanical // Install Branch Line Piping (Supply) *Deleted* | 8d | 2025-09-15 A | 2025-09-16 A | QTS-1030 SS | 100% | 2025-12-29 | 2026-01-08 | Bel-Aire Mechanical, LLC | Construction | Phase 2 | IGMP | Dave Wiltberger | Construction |  |  |  |  | DH2200 |
| QTS-11791 | DH 2200 / Rooftop Mechanical // Install Mainline Piping from Doghouses to Galleries *Deleted* | 7d | 2025-09-15 A | 2025-09-16 A | QTS-1030 SS | 100% | 2025-12-17 | 2025-12-26 | Bel-Aire Mechanical, LLC | Construction | Phase 2 | IGMP | Dave Wiltberger | Construction |  |  |  |  | DH2200 |
| QTS-11801 | DH 1200 / Rooftop Mechanical // Install Branch Line Piping (Supply) *Deleted* | 8d | 2025-09-15 A | 2025-09-16 A | QTS-1030 SS | 100% | 2026-01-21 | 2026-01-30 | Bel-Aire Mechanical, LLC | Construction | Phase 2 | IGMP | Dave Wiltberger | Construction |  |  |  |  | DH1200 |
| QTS-11811 | DH 1200 / Rooftop Mechanical // Install Mainline Piping from Doghouses to Galleries *Deleted* | 7d | 2025-09-15 A | 2025-09-16 A | QTS-1030 SS | 100% | 2026-01-09 | 2026-01-20 | Bel-Aire Mechanical, LLC | Construction | Phase 2 | IGMP | Dave Wiltberger | Construction |  |  |  |  | DH1200 |
| QTS-11821 | DH 2300 / Rooftop Mechanical // Install Branch Line Piping (Supply) *Deleted* | 8d | 2025-09-15 A | 2025-09-16 A | QTS-1030 SS | 100% | 2026-02-11 | 2026-02-20 | Bel-Aire Mechanical, LLC | Construction | Phase 3 | IGMP | Dave Wiltberger | Construction |  |  |  |  | DH2300 |
| QTS-11831 | DH 2300 / Rooftop Mechanical // Install Mainline Piping from Doghouses to Galleries *Deleted* | 7d | 2025-09-15 A | 2025-09-16 A | QTS-1030 SS | 100% | 2026-02-02 | 2026-02-10 | Bel-Aire Mechanical, LLC | Construction | Phase 3 | IGMP | Dave Wiltberger | Construction |  |  |  |  | DH2300 |
| QTS-11841 | DH 1300 / Rooftop Mechanical // Install Branch Line Piping (Supply) *Deleted* | 8d | 2025-09-15 A | 2025-09-16 A | QTS-1030 SS | 100% | 2026-03-04 | 2026-03-13 | Bel-Aire Mechanical, LLC | Construction | Phase 3 | IGMP | Dave Wiltberger | Construction |  |  |  |  | DH1300 |
| QTS-11851 | DH 1300 / Rooftop Mechanical // Install Mainline Piping from Doghouses to Galleries *Deleted* | 7d | 2025-09-15 A | 2025-09-16 A | QTS-1030 SS | 100% | 2026-02-23 | 2026-03-03 | Bel-Aire Mechanical, LLC | Construction | Phase 3 | IGMP | Dave Wiltberger | Construction |  |  |  |  | DH1300 |
| QTS-13191 | DH 1100 / Rooftop Mechanical // Install Branch Line Piping (Return) *Deleted* | 7d | 2025-09-15 A | 2025-09-16 A | QTS-1030 SS | 100% | 2025-12-17 | 2025-12-26 | Bel-Aire Mechanical, LLC | Construction | Phase 1 | IGMP | Dave Wiltberger | Construction |  |  |  | Level 1 | DH1100 |
| QTS-13201 | DH 2200 / Rooftop Mechanical // Install Branch Line Piping (Return) *Deleted* | 7d | 2025-09-15 A | 2025-09-16 A | QTS-1030 SS | 100% | 2026-01-09 | 2026-01-20 | Bel-Aire Mechanical, LLC | Construction | Phase 2 | IGMP | Dave Wiltberger | Construction |  |  |  |  | DH2200 |
| QTS-13211 | DH 1200 / Rooftop Mechanical // Install Branch Line Piping (Return) *Deleted* | 7d | 2025-09-15 A | 2025-09-16 A | QTS-1030 SS | 100% | 2026-02-02 | 2026-02-10 | Bel-Aire Mechanical, LLC | Construction | Phase 2 | IGMP | Dave Wiltberger | Construction |  |  |  |  | DH1200 |
| QTS-13221 | DH 2300 / Rooftop Mechanical // Install Branch Line Piping (Return) *Deleted* | 7d | 2025-09-15 A | 2025-09-16 A | QTS-10021 | 100% | 2026-02-23 | 2026-03-03 | Bel-Aire Mechanical, LLC | Construction | Phase 3 | IGMP | Dave Wiltberger | Construction |  |  |  |  | DH2300 |
| QTS-13231 | DH 1300 / Rooftop Mechanical // Install Branch Line Piping (Return) *Deleted* | 7d | 2025-09-15 A | 2025-09-16 A | QTS-1030 SS | 100% | 2026-03-16 | 2026-03-24 | Bel-Aire Mechanical, LLC | Construction | Phase 3 | IGMP | Dave Wiltberger | Construction |  |  |  |  | DH1300 |
| QTS-21661 | DH 2100 / Rooftop Mechanical // Install Mainline Piping from Pumps to Chillers (Supply) *Deleted* | 8d | 2025-09-15 A | 2025-09-16 A | QTS-1030 SS | 100% | 2025-09-15 | 2025-09-24 |  |  |  |  |  |  |  |  | 01ADMIN |  |  |
| QTS-22181 | DH 2100 / Rooftop Mechanical // Install Mainline Piping from Pumps to Chillers (Return) *Deleted* | 7d | 2025-09-15 A | 2025-09-16 A | QTS-1030 SS | 100% | 2025-10-22 | 2025-10-30 |  |  |  |  |  |  |  |  | 01ADMIN |  |  |
| QTS-22661 | DH 2100 / Rooftop Mechanical // Install Mainline Piping from Pumps to Doghouses *Deleted* | 8d | 2025-09-15 A | 2025-09-16 A | QTS-1030 SS | 100% | 2025-10-22 | 2025-10-31 |  |  |  |  |  |  |  |  | 01ADMIN |  |  |
| QTS-44631 | DH 1100 / Rooftop Mechanical // Detail Chiller to Pump Branch Piping Connections *Deleted* | 5d | 2025-09-15 A | 2025-09-16 A | QTS-1030 SS | 100% | 2025-12-17 | 2025-12-23 | Bel-Aire Mechanical, LLC | Construction | Phase 1 | IGMP | Dave Wiltberger | Construction |  |  |  | Level 2 | DH2100 |
| QTS-44641 | DH 1100 / Rooftop Mechanical // Fabrication & Installation Chiller to Pump Branch Piping Connections *Deleted* | 10d | 2025-09-15 A | 2025-09-16 A | QTS-1030 SS | 100% | 2025-12-29 | 2026-01-12 | Bel-Aire Mechanical, LLC | Construction | Phase 1 | IGMP | Dave Wiltberger | Construction |  |  |  | Level 2 | DH2100 |
| QTS-44651 | DH 2200 / Rooftop Mechanical // Detail Chiller to Pump Branch Piping Connections *Deleted* | 5d | 2025-09-15 A | 2025-09-16 A | QTS-1030 SS | 100% | 2026-01-09 | 2026-01-15 | Bel-Aire Mechanical, LLC | Construction | Phase 1 | IGMP | Dave Wiltberger | Construction |  |  |  | Level 2 | DH2100 |
| QTS-44661 | DH 2200 / Rooftop Mechanical // Fabrication & Installation Chiller to Pump Branch Piping Connections *Deleted* | 10d | 2025-09-15 A | 2025-09-16 A | QTS-1030 SS | 100% | 2026-01-16 | 2026-01-30 | Bel-Aire Mechanical, LLC | Construction | Phase 1 | IGMP | Dave Wiltberger | Construction |  |  |  | Level 2 | DH2100 |
| QTS-44671 | DH 1200 / Rooftop Mechanical // Detail Chiller to Pump Branch Piping Connections *Deleted* | 5d | 2025-09-15 A | 2025-09-16 A | QTS-1030 SS | 100% | 2026-02-02 | 2026-02-06 | Bel-Aire Mechanical, LLC | Construction | Phase 1 | IGMP | Dave Wiltberger | Construction |  |  |  | Level 2 | DH2100 |
| QTS-44681 | DH 1200 / Rooftop Mechanical // Fabrication & Installation Chiller to Pump Branch Piping Connections *Deleted* | 10d | 2025-09-15 A | 2025-09-16 A | QTS-1030 SS | 100% | 2026-02-09 | 2026-02-20 | Bel-Aire Mechanical, LLC | Construction | Phase 1 | IGMP | Dave Wiltberger | Construction |  |  |  | Level 2 | DH2100 |

Notes:
- QTS-13601: allucent_notes: 2025-08-12 18:08 - User: Jason Johnston - Date Added: 2025-08-12 18:08 - Note: Need response from team / 2025-08-19 16:08 - User: Jason Johnston - Date Added: 2025-08-19 16:08 - Note: Need to evaluate the need and responsibility for this item. / 2025-08
- QTS-20911: allucent_notes: Zack Goertz on 2025-08-05T18:31:15.220Z: We are changing the seqence of this task. We will be polishing floors towards the end of the job.
- QTS-25631: allucent_notes: Zack Goertz on 2025-08-05T18:31:53.122Z: We are changing the sequence of this task. We will be polishing floors towards the end of the job.
- QTS-21661: allucent_notes: 2025-09-02 10:09 - User: David Wiltberger - Date Added: 2025-09-02 10:09 - Note: Moving to accommodate roofing in Zone 1 / 2025-09-30 12:09 - User: David Wiltberger - Date Added: 2025-09-30 12:09 - Note: BAM did not complete / 2025-10-08 08:10 - User: J
- QTS-44631: allucent_notes: Brandon Feather on 2025-01-07 08:01: Date moved from 1/3/25 as the roof decking isnt released yet. rough date it is expected is mid to end of feb for Phase 1. BSF-1.7.25
- QTS-44651: allucent_notes: Brandon Feather on 2025-01-07 08:01: Date moved from 1/3/25 as the roof decking isnt released yet. rough date it is expected is mid to end of feb for Phase 1. BSF-1.7.25
- QTS-44671: allucent_notes: Brandon Feather on 2025-01-07 08:01: Date moved from 1/3/25 as the roof decking isnt released yet. rough date it is expected is mid to end of feb for Phase 1. BSF-1.7.25

| ID | Activity | Duration | Start | Finish | Predecessors | Complete | Planned start | Planned finish | Subcontractor | Level | Location | Project Section-1 | Phase-1-1 | Baseline | Layton Responsible Party | Project Section | Allucent CSI Group | Phase-1 |
| --- | --- | --- | --- | --- | --- | --- | --- | --- | --- | --- | --- | --- | --- | --- | --- | --- | --- | --- |
| QTS-44691 | DH 2300 / Rooftop Mechanical // Detail Chiller to Pump Branch Piping Connections *Deleted* | 5d | 2025-09-15 A | 2025-09-16 A | QTS-1030 SS | 100% | 2026-02-23 | 2026-02-27 | Bel-Aire Mechanical, LLC | Level 2 | DH2100 | Construction | Phase 1 | IGMP | Dave Wiltberger | Construction |  |  |
| QTS-44701 | DH 2300 / Rooftop Mechanical // Fabrication & Installation Chiller to Pump Branch Piping Connections *Deleted* | 10d | 2025-09-15 A | 2025-09-16 A | QTS-1030 SS | 100% | 2026-03-02 | 2026-03-13 | Bel-Aire Mechanical, LLC | Level 2 | DH2100 | Construction | Phase 1 | IGMP | Dave Wiltberger | Construction |  |  |
| QTS-44711 | DH 1300 / Rooftop Mechanical // Detail Chiller to Pump Branch Piping Connections *Deleted* | 5d | 2025-09-15 A | 2025-09-16 A | QTS-1030 SS | 100% | 2026-03-16 | 2026-03-20 | Bel-Aire Mechanical, LLC | Level 2 | DH2100 | Construction | Phase 1 | IGMP | Dave Wiltberger | Construction |  |  |
| QTS-44721 | DH 1300 / Rooftop Mechanical // Fabrication & Installation Chiller to Pump Branch Piping Connections *Deleted* | 10d | 2025-09-15 A | 2025-09-16 A | QTS-1030 SS | 100% | 2026-03-23 | 2026-04-03 | Bel-Aire Mechanical, LLC | Level 2 | DH2100 | Construction | Phase 1 | IGMP | Dave Wiltberger | Construction |  |  |
| QTS-4521 | DH 1100 / Rooftop Mechanical // Install Mainline Piping from Pumps to Chillers (Supply) *Deleted* | 8d | 2025-09-15 A | 2025-09-16 A | QTS-1030 SS | 100% | 2025-10-22 | 2025-10-31 | Bel-Aire Mechanical, LLC | Level 1 | DH1100 | Construction | Phase 1 | IGMP | Dave Wiltberger | Construction | 01ADMIN |  |
| QTS-4561 | DH 2200 / Rooftop Mechanical // Install Mainline Piping from Pumps to Chillers (Supply) *Deleted* | 8d | 2025-09-15 A | 2025-09-16 A | QTS-1030 SS | 100% | 2025-11-12 | 2025-11-21 | Bel-Aire Mechanical, LLC |  | DH2200 | Construction | Phase 2 | IGMP | Dave Wiltberger | Construction |  |  |
| QTS-4601 | DH 1200 / Rooftop Mechanical // Install Mainline Piping from Pumps to Chillers (Supply) *Deleted* | 8d | 2025-09-15 A | 2025-09-16 A | QTS-1030 SS | 100% | 2025-12-05 | 2025-12-16 | Bel-Aire Mechanical, LLC |  | DH1200 | Construction | Phase 2 | IGMP | Dave Wiltberger | Construction |  |  |
| QTS-4641 | DH 2300 / Rooftop Mechanical // Install Mainline Piping from Pumps to Chillers (Supply) *Deleted* | 8d | 2025-09-15 A | 2025-09-16 A | QTS-1030 SS | 100% | 2025-12-29 | 2026-01-08 | Bel-Aire Mechanical, LLC |  | DH2300 | Construction | Phase 3 | IGMP | Dave Wiltberger | Construction |  |  |
| QTS-4681 | DH 1300 / Rooftop Mechanical // Install Mainline Piping from Pumps to Chillers (Supply) *Deleted* | 8d | 2025-09-15 A | 2025-09-16 A | QTS-1030 SS | 100% | 2026-01-21 | 2026-01-30 | Bel-Aire Mechanical, LLC |  | DH1300 | Construction | Phase 3 | IGMP | Dave Wiltberger | Construction |  |  |
| QTS-50151 | DH 1100 / Rooftop Mechanical // Rough In Controls from to DOAS *Deleted* | 1d | 2025-09-15 A | 2025-09-16 A | QTS-1030 SS | 100% | 2025-10-22 | 2025-10-22 | Bel-Aire Mechanical, LLC | Roof | FOH | Construction | Phase 1 | DC | Dave Wiltberger | Construction |  |  |
| QTS-50161 | DH 1100 / Rooftop Mechanical // Pre Energization Inspection DOAS *Deleted* | 1d | 2025-09-15 A | 2025-09-16 A | QTS-1030 SS | 100% | 2025-10-23 | 2025-10-23 | Bel-Aire Mechanical, LLC | Roof | FOH | Construction | Phase 1 | DC | Dave Wiltberger | Construction |  |  |
| QTS-7051 | DH 1100 / Rooftop Mechanical // Install Mainline Piping from Pumps to Chillers (Return) *Deleted* | 7d | 2025-09-15 A | 2025-09-16 A | QTS-1030 SS | 100% | 2025-11-03 | 2025-11-11 | Bel-Aire Mechanical, LLC | Level 1 | DH1100 | Construction | Phase 1 | IGMP | Dave Wiltberger | Construction | 01ADMIN |  |
| QTS-7101 | DH 2200 / Rooftop Mechanical // Install Mainline Piping from Pumps to Chillers (Return) *Deleted* | 7d | 2025-09-15 A | 2025-09-16 A | QTS-1030 SS | 100% | 2025-11-24 | 2025-12-04 | Bel-Aire Mechanical, LLC |  | DH2200 | Construction | Phase 2 | IGMP | Dave Wiltberger | Construction |  |  |
| QTS-7151 | DH 1200 / Rooftop Mechanical // Install Mainline Piping from Pumps to Chillers (Return) *Deleted* | 7d | 2025-09-15 A | 2025-09-16 A | QTS-1030 SS | 100% | 2025-12-17 | 2025-12-26 | Bel-Aire Mechanical, LLC |  | DH1200 | Construction | Phase 2 | IGMP | Dave Wiltberger | Construction |  |  |
| QTS-7201 | DH 2300 / Rooftop Mechanical // Install Mainline Piping from Pumps to Chillers (Return) *Deleted* | 7d | 2025-09-15 A | 2025-09-16 A | QTS-1030 SS | 100% | 2026-01-09 | 2026-01-20 | Bel-Aire Mechanical, LLC |  | DH2300 | Construction | Phase 3 | IGMP | Dave Wiltberger | Construction |  |  |
| QTS-7251 | DH 1300 / Rooftop Mechanical // Install Mainline Piping from Pumps to Chillers (Return) *Deleted* | 7d | 2025-09-15 A | 2025-09-16 A | QTS-1030 SS | 100% | 2026-02-02 | 2026-02-10 | Bel-Aire Mechanical, LLC |  | DH1300 | Construction | Phase 3 | IGMP | Dave Wiltberger | Construction |  |  |
| QTS-9901 | DH 1100 / Rooftop Mechanical // Install Mainline Piping from Pumps to Doghouses *Deleted* | 8d | 2025-09-15 A | 2025-09-16 A | QTS-1030 SS | 100% | 2025-11-12 | 2025-11-21 | Bel-Aire Mechanical, LLC | Level 1 | DH1100 | Construction | Phase 1 | IGMP | Dave Wiltberger | Construction |  |  |
| QTS-9931 | DH 2200 / Rooftop Mechanical // Install Mainline Piping from Pumps to Doghouses *Deleted* | 8d | 2025-09-15 A | 2025-09-16 A | QTS-1030 SS | 100% | 2025-12-05 | 2025-12-16 | Bel-Aire Mechanical, LLC |  | DH2200 | Construction | Phase 2 | IGMP | Dave Wiltberger | Construction |  |  |
| QTS-9961 | DH 1200 / Rooftop Mechanical // Install Mainline Piping from Pumps to Doghouses *Deleted* | 8d | 2025-09-15 A | 2025-09-16 A | QTS-1030 SS | 100% | 2025-12-29 | 2026-01-08 | Bel-Aire Mechanical, LLC |  | DH1200 | Construction | Phase 2 | IGMP | Dave Wiltberger | Construction |  |  |
| QTS-9991 | DH 2300 / Rooftop Mechanical // Install Mainline Piping from Pumps to Doghouses *Deleted* | 8d | 2025-09-15 A | 2025-09-16 A | QTS-1030 SS | 100% | 2026-01-21 | 2026-01-30 | Bel-Aire Mechanical, LLC |  | DH2300 | Construction | Phase 3 | IGMP | Dave Wiltberger | Construction |  |  |
| QTS-49511 | Zone 2 Gridlines 21-30 / South // Hang Sheathing for Metal Panels *Delete* | 4d | 2025-10-06 A | 2025-10-09 A | QTS-1030 SS | 100% |  |  | True Metal Solutions, LLC |  |  | Construction |  | IGMP | Doug Hayes | Construction |  | Phase 1 |
| QTS-23601 | DH 2100 / Mechanical Gallery 2103 // Top of Wall Fire Stop *Delete* | 2d | 2025-10-20 A | 2025-10-23 A | QTS-1030 SS | 100% | 2025-10-28 | 2025-10-29 |  | Level 2 | DH2100 | Construction |  | IGMP | Doug Hayes | Construction | 01ADMIN |  |
| QTS-29191 | TI Area B // Install Structural Support for Bifold Door *Delete* | 4d | 2025-10-21 A | 2025-10-23 A | QTS-1030 SS | 100% | 2025-10-28 | 2025-10-31 |  | Level 1 | FOH |  |  | IGMP | Doug Hayes | Construction | 01ADMIN | Phase 1 |
| QTS-24701 | Zone 2 Gridline 21-30 / Corridor 2010 // Install Electrical Equipment & Stand *Delete* | 1d | 2025-11-03 A | 2025-11-03 A | QTS-1030 SS | 100% |  |  | Rosendin Electric, Inc | Level 2 |  |  |  | IGMP | Scott Masterson | Construction |  |  |
| QTS-25091 | Zone 2 Gridline 21-30 / Corridor 2010 // Pull & Terminate to Electrical Equipment *Delete* | 1d | 2025-11-03 A | 2025-11-03 A | QTS-1030 SS | 100% |  |  | Rosendin Electric, Inc | Level 2 |  |  |  | IGMP | Scott Masterson | Construction |  |  |
| QTS-26171 | Zone 2 Gridline 21-30 / Corridor 1013 // Install Electrical Equipment & Stand *Delete* | 1d | 2025-11-03 A | 2025-11-03 A | QTS-1030 SS | 100% |  |  | Rosendin Electric, Inc | Level 1 |  |  |  | IGMP | Scott Masterson | Construction |  |  |
| QTS-26471 | Zone 2 Gridline 21-30 / Corridor 1013 // Pull & Terminate to Electrical Equipment *Delete* | 1d | 2025-11-03 A | 2025-11-03 A | QTS-1030 SS | 100% |  |  | Rosendin Electric, Inc | Level 1 |  |  |  | IGMP | Scott Masterson | Construction |  |  |
| QTS-3121 | Fire Riser #0171 // In Wall Rough Plumbing *Delete* | 5d | 2025-11-12 A | 2025-11-12 A | QTS-1030 SS | 100% | 2025-11-05 | 2025-11-11 | Bel-Aire Mechanical, LLC | Level 1 | FOH |  |  | IGMP | Dave Wiltberger | Construction | 01ADMIN | Phase 1 |
| QTS-27301 | Electrical Room #0222 // Set Static Transfer Switch *Delete* | 2d | 2025-11-17 A | 2025-11-18 A | QTS-1030 SS | 100% |  |  | Rosendin Electric, Inc | Level 2 | FOH | Construction | Phase 1 | IGMP | Scott Masterson | Construction | 01ADMIN |  |
| QTS-27321 | Electrical Room #0222 // Set UPS *Delete* | 2d | 2025-11-17 A | 2025-11-18 A | QTS-1030 SS | 100% |  |  | Rosendin Electric, Inc | Level 2 | FOH | Construction | Phase 1 | IGMP | Scott Masterson | Construction | 01ADMIN |  |
| QTS-27231 | Electrical Room #0172 // Plywood Install *Delete* | 1d | 2025-11-20 A | 2025-11-20 A | QTS-1030 SS | 100% |  |  |  | Level 1 | FOH |  |  | IGMP | Sean Waisner | Construction | 01ADMIN | Phase 1 |
| QTS-27861 | Electrical Room #1066/1081 // Plywood Install *Delete* | 1d | 2025-12-01 A | 2025-12-01 A | QTS-1030 SS | 100% |  |  |  | Level 1 | BOH |  |  | IGMP | Sean Waisner | Construction |  | Phase 1 |
| QTS-28521 | Electrical Room #2085 // Plywood Install *Delete* | 1d | 2025-12-01 A | 2025-12-01 A | QTS-1030 SS | 100% |  |  |  | Level 2 | BOH |  |  | IGMP | Sean Waisner | Construction | 01ADMIN | Phase 1 |
| QTS-43491 | FOH // Commission RTU's *Delete* | 1d | 2025-12-01 A | 2025-12-01 A | QTS-1030 SS | 100% |  |  |  |  |  |  |  |  |  |  |  |  |
| QTS-43511 | BOH // Final Commissioning *Delete* | 1d | 2025-12-01 A | 2025-12-01 A | QTS-1030 SS | 100% |  |  |  |  |  |  |  |  |  |  |  |  |
| QTS-43521 | BOH / Electrical // Prefunctional Testing Transformers *Delete* | 1d | 2025-12-01 A | 2025-12-01 A | QTS-1030 SS | 100% |  |  |  |  |  |  |  |  |  |  |  |  |
| QTS-43531 | BOH / Electrical // Prefunctional Testing Static Transfer Switches *Delete* | 1d | 2025-12-01 A | 2025-12-01 A | QTS-1030 SS | 100% |  |  |  |  |  |  |  |  |  |  |  |  |
| QTS-43541 | BOH / Electrical // Prefunctional Testing UPS *Delete* | 1d | 2025-12-01 A | 2025-12-01 A | QTS-1030 SS | 100% |  |  |  |  |  |  |  |  |  |  |  |  |
| QTS-43551 | BOH / Electrical // Prefunctional Testing Generators *Delete* | 1d | 2025-12-01 A | 2025-12-01 A | QTS-1030 SS | 100% |  |  |  |  |  |  |  |  |  |  |  |  |
| QTS-43561 | BOH // Commission Generators *Delete* | 1d | 2025-12-01 A | 2025-12-01 A | QTS-1030 SS | 100% |  |  |  |  |  |  |  |  |  |  |  |  |
| QTS-43571 | BOH // L3 - Energization *Delete* | 1d | 2025-12-01 A | 2025-12-01 A | QTS-1030 SS | 100% |  |  |  |  |  |  |  |  |  |  |  |  |
| QTS-43581 | BOH / Mechanical // Test & Balance RTU's *Delete* | 1d | 2025-12-01 A | 2025-12-01 A | QTS-1030 SS | 100% |  |  |  |  |  |  |  |  |  |  |  |  |
| QTS-99040 | FOH // Final Commissioning *Delete* | 1d | 2025-12-01 A | 2025-12-01 A | QTS-1030 SS | 100% |  |  |  |  |  |  |  |  |  |  |  |  |
| QTS-99050 | FOH / Electrical // Prefunctional Testing Transformers *Delete* | 1d | 2025-12-01 A | 2025-12-01 A | QTS-1030 SS | 100% |  |  |  |  |  |  |  |  |  |  |  |  |
| QTS-99060 | FOH / Electrical // Prefunctional Testing Static Transfer Switches *Delete* | 1d | 2025-12-01 A | 2025-12-01 A | QTS-1030 SS | 100% |  |  |  |  |  |  |  |  |  |  |  |  |
| QTS-99070 | FOH / Electrical // Prefunctional Testing UPS *Delete* | 1d | 2025-12-01 A | 2025-12-01 A | QTS-1030 SS | 100% |  |  |  |  |  |  |  |  |  |  |  |  |
| QTS-99080 | FOH / Electrical // Prefunctional Testing Generators *Delete* | 1d | 2025-12-01 A | 2025-12-01 A | QTS-1030 SS | 100% |  |  |  |  |  |  |  |  |  |  |  |  |
| QTS-99090 | FOH // Commission Generators *Delete* | 1d | 2025-12-01 A | 2025-12-01 A | QTS-1030 SS | 100% |  |  |  |  |  |  |  |  |  |  |  |  |
| QTS-99100 | FOH // L3 - Energization *Delete* | 1d | 2025-12-01 A | 2025-12-01 A | QTS-1030 SS | 100% |  |  |  |  |  |  |  |  |  |  |  |  |
| QTS-99110 | FOH / Mechanical // Test & Balance RTU's *Delete* | 1d | 2025-12-01 A | 2025-12-01 A | QTS-1030 SS | 100% |  |  |  |  |  |  |  |  |  |  |  |  |
| QTS-99120 | BOH // Commission RTU's *Delete* | 1d | 2025-12-01 A | 2025-12-01 A | QTS-1030 SS | 100% |  |  |  |  |  |  |  |  |  |  |  |  |
| QTS-100310 | DH 2100 / Rooftop Mechanical // Pre Energization Inspection CHW Pumps (Roof) *Delete* | 5d | 2025-12-02 A | 2025-12-02 A | QTS-1030 SS | 100% | 2026-02-09 | 2026-02-13 | Bel-Aire Mechanical, LLC | Level 2 | DH2100 |  |  | IGMP | Dave Wiltberger | Construction | 01ADMIN | Phase 1 |
| QTS-100320 | DH 2100 / Rooftop Mechanical // Start Up CHW Pumps (Roof) *Delete* | 1d | 2025-12-02 A | 2025-12-02 A | QTS-1030 SS | 100% | 2026-02-16 | 2026-02-16 | Bel-Aire Mechanical, LLC | Level 2 | DH2100 |  |  | IGMP | Dave Wiltberger | Construction | 01ADMIN | Phase 1 |
| QTS-100560 | DH 1100 / Rooftop Mechanical // Pre Energization Inspection CHW Pumps (Roof) *Delete* | 5d | 2025-12-02 A | 2025-12-02 A | QTS-1030 SS | 100% | 2026-02-09 | 2026-02-13 | Bel-Aire Mechanical, LLC | Level 2 | DH2100 |  |  | IGMP | Dave Wiltberger | Construction | 01ADMIN | Phase 1 |
| QTS-100570 | DH 1100 / Rooftop Mechanical // Start Up CHW Pumps (Roof) *Delete* | 1d | 2025-12-02 A | 2025-12-02 A | QTS-1030 SS | 100% | 2026-02-16 | 2026-02-16 | Bel-Aire Mechanical, LLC | Level 2 | DH2100 |  |  | IGMP | Dave Wiltberger | Construction | 01ADMIN | Phase 1 |
| QTS-100860 | DH 2200 / Rooftop Mechanical // Pre Energization Inspection CHW Pumps (Roof) *Delete* | 5d | 2025-12-02 A | 2025-12-02 A | QTS-1030 SS | 100% | 2026-03-02 | 2026-03-06 | Bel-Aire Mechanical, LLC | Level 2 | DH2100 |  |  | IGMP | Dave Wiltberger | Construction | 01ADMIN | Phase 1 |
| QTS-100870 | DH 2200 / Rooftop Mechanical // Start Up CHW Pumps (Roof) *Delete* | 1d | 2025-12-02 A | 2025-12-02 A | QTS-1030 SS | 100% | 2026-03-09 | 2026-03-09 | Bel-Aire Mechanical, LLC | Level 2 | DH2100 |  |  | IGMP | Dave Wiltberger | Construction | 01ADMIN | Phase 1 |
| QTS-101100 | DH 1200 / Rooftop Mechanical // Pre Energization Inspection CHW Pumps (Roof) *Delete* | 5d | 2025-12-02 A | 2025-12-02 A | QTS-1030 SS | 100% | 2026-03-02 | 2026-03-06 | Bel-Aire Mechanical, LLC | Level 2 | DH2100 |  |  | IGMP | Dave Wiltberger | Construction | 01ADMIN | Phase 1 |
| QTS-101110 | DH 1200 / Rooftop Mechanical // Start Up CHW Pumps (Roof) *Delete* | 1d | 2025-12-02 A | 2025-12-02 A | QTS-1030 SS | 100% | 2026-03-09 | 2026-03-09 | Bel-Aire Mechanical, LLC | Level 2 | DH2100 |  |  | IGMP | Dave Wiltberger | Construction | 01ADMIN | Phase 1 |
| QTS-101340 | DH 1300 / Rooftop Mechanical // Pre Energization Inspection CHW Pumps (Roof) *Delete* | 5d | 2025-12-02 A | 2025-12-02 A | QTS-1030 SS | 100% | 2026-04-27 | 2026-05-01 | Bel-Aire Mechanical, LLC | Level 2 | DH2100 |  |  | IGMP | Dave Wiltberger | Construction | 01ADMIN | Phase 1 |
| QTS-101350 | DH 1300 / Rooftop Mechanical // Start Up CHW Pumps (Roof) *Delete* | 1d | 2025-12-02 A | 2025-12-02 A | QTS-1030 SS | 100% | 2026-05-04 | 2026-05-04 | Bel-Aire Mechanical, LLC | Level 2 | DH2100 |  |  | IGMP | Dave Wiltberger | Construction | 01ADMIN | Phase 1 |
| QTS-101580 | DH 2300 / Rooftop Mechanical // Pre Energization Inspection CHW Pumps (Roof) *Delete* | 5d | 2025-12-02 A | 2025-12-02 A | QTS-1030 SS | 100% | 2026-04-27 | 2026-05-01 | Bel-Aire Mechanical, LLC | Level 2 | DH2100 |  |  | IGMP | Dave Wiltberger | Construction | 01ADMIN | Phase 1 |
| QTS-101590 | DH 2300 / Rooftop Mechanical // Start Up CHW Pumps (Roof) *Delete* | 1d | 2025-12-02 A | 2025-12-02 A | QTS-1030 SS | 100% | 2026-05-04 | 2026-05-04 | Bel-Aire Mechanical, LLC | Level 2 | DH2100 |  |  | IGMP | Dave Wiltberger | Construction | 01ADMIN | Phase 1 |
| QTS-19151 | DH 1100 / Electrical // Energization *Delete* | 10d | 2025-12-02 A | 2025-12-02 A | QTS-1030 SS | 100% | 2026-02-05 | 2026-02-18 |  | Level 1 | DH1100 | Construction | Phase 1 | IGMP | Scott Masterson | Construction |  |  |
| QTS-19161 | DH 2200 / Electrical // Energization *Delete* | 10d | 2025-12-02 A | 2025-12-02 A | QTS-1030 SS | 100% | 2026-04-14 | 2026-04-27 |  |  | DH2200 | Construction | Phase 2 | IGMP | Scott Masterson | Construction |  |  |
| QTS-19171 | DH 1200 / Electrical // Energization *Delete* | 10d | 2025-12-02 A | 2025-12-02 A | QTS-1030 SS | 100% | 2026-03-09 | 2026-03-20 |  |  | DH1200 | Construction | Phase 2 | IGMP | Scott Masterson | Construction |  |  |
| QTS-19181 | DH 2300 / Electrical // Energization *Delete* | 10d | 2025-12-02 A | 2025-12-02 A | QTS-1030 SS | 100% | 2026-03-30 | 2026-04-10 |  |  | DH2300 | Construction | Phase 3 | IGMP | Scott Masterson | Construction |  |  |
| QTS-19191 | DH 1300 / Electrical // Energization *Delete* | 10d | 2025-12-02 A | 2025-12-02 A | QTS-1030 SS | 100% | 2026-03-27 | 2026-04-09 |  |  | DH1300 | Construction | Phase 3 | IGMP | Scott Masterson | Construction |  |  |
| QTS-19211 | DH 1100, FOH, BOH / Mechanical // Test & Balance RTU's *Delete* | 10d | 2025-12-02 A | 2025-12-02 A | QTS-1030 SS | 100% | 2026-02-12 | 2026-02-25 |  | Level 1 | DH1100 | Construction | Phase 1 | IGMP | Dave Wiltberger | Construction |  |  |
| QTS-19221 | DH 2200 / Mechanical // Test & Balance RTU's *Delete* | 10d | 2025-12-02 A | 2025-12-02 A | QTS-1030 SS | 100% | 2026-04-16 | 2026-04-29 |  |  | DH2200 | Construction | Phase 2 | IGMP | Dave Wiltberger | Construction |  |  |

Notes:
- QTS-44691: allucent_notes: Brandon Feather on 2025-01-07 08:01: Date moved from 1/3/25 as the roof decking isnt released yet. rough date it is expected is mid to end of feb for Phase 1. BSF-1.7.25
- QTS-23601: allucent_notes_20251028_163138: Jason Johnston on 2025-10-28T22:44:14.102Z: Doesn't exist in drawings - delete / allucent_notes: 2025-10-28T22:44:14.102Z - User: Jason Johnston - Date Added: 2025-10-28T22:44:14.102Z - Note: Doesn't exist in drawings - delete
- QTS-29191: allucent_notes_20251027_224008: Jason Johnston on 2025-10-27 16:10: Need to reconfirm with the team what this line item is / allucent_notes_20251028_163138: Jason Johnston on 2025-10-27 16:10: Need to reconfirm with the team what this line item is / Jason Johnston on 2025-10-28T22:02:51.968Z: Delete - not in plans. / allucent_notes: 2025-10-27 16:10 - User: Jason Johnston - Date Added: 2025-10-27 16:10 - Note: Need to reconfirm with the team what this line item is / 2025-10-28T22:02:51.968Z - User: Jason Johnston - Date Added: 2025-10-28T22:02:51.968Z - Note: Delete - not in plans.
- QTS-3121: allucent_notes_20251104_160200: Jason Johnston on 2025-11-03 14:11: Need to fix a design clash. / allucent_notes_20251111_182405: Jason Johnston on 2025-11-03 14:11: Need to fix a design clash. / Luis Vea on 2025-11-10 11:11: plumbing is outside of the walls / Jason Johnston on 2025-11-11 17:11: SWO / allucent_notes_20251118_192630: Jason Johnston on 2025-11-03 14:11: Need to fix a design clash. / Luis Vea on 2025-11-10 11:11: plumbing is outside of the walls / Jason Johnston on 2025-11-11 17:11: SWO / allucent_notes_20251202_153722: Jason Johnston on 2025-11-03 14:11: Need to fix a design clash. / Luis Vea on 2025-11-10 11:11: plumbing is outside of the walls / Jason Johnston on 2025-11-11 17:11: SWO / David Wiltberger on 2025-12-02 06:19: Walls were delayed his impacted setting the eads / allucent_notes_20251209_203830: Jason Johnston on 2025-11-03 14:11: Need to fix a design clash. / Luis Vea on 2025-11-10 11:11: plumbing is outside of the walls / Jason Johnston on 2025-11-11 17:11: SWO / David Wiltberger on 2025-12-02 06:19: Walls were delayed his impacted setting the eads / allucent_notes: 2025-11-03 14:11 - User: Jason Johnston - Date Added: 2025-11-03 14:11 - Note: Need to fix a design clash. / 2025-11-10 11:11 - User: Luis Vea - Date Added: 2025-11-10 11:11 - Note: plumbing is outside of the walls / 2025-11-11 17:11 - User: Jason Johns
- QTS-27301: allucent_notes_20251104_160200: Jason Johnston on 2025-11-04 12:11: Need better predecessor for this equipment set. / allucent_notes_20251111_182405: Jason Johnston on 2025-11-04 12:11: Need better predecessor for this equipment set. / Jason Johnston on 2025-11-11 15:11: Looking for predecessor. / allucent_notes_20251118_192630: Jason Johnston on 2025-11-04 12:11: Need better predecessor for this equipment set. / Jason Johnston on 2025-11-11 15:11: Looking for predecessor. / JD Kitchens on 2025-11-18T20:44:12.712Z: No equipment / JD Kitchens on 2025-11-18T20:44:35.508Z: Please remove / JD Kitchens on 2025-11-18T20:44:39.054Z: null / allucent_notes: 2025-11-04 12:11 - User: Jason Johnston - Date Added: 2025-11-04 12:11 - Note: Need better predecessor for this equipment set. / 2025-11-11 15:11 - User: Jason Johnston - Date Added: 2025-11-11 15:11 - Note: Looking for predecessor. / 2025-11-18T20:44:1
- QTS-27321: allucent_notes_20251104_160200: Jason Johnston on 2025-11-04 12:11: Need better predecessor for this equipment set. / allucent_notes_20251111_182405: Jason Johnston on 2025-11-04 12:11: Need better predecessor for this equipment set. / Jason Johnston on 2025-11-11 15:11: need by 12/10. / allucent_notes_20251118_192630: Jason Johnston on 2025-11-04 12:11: Need better predecessor for this equipment set. / Jason Johnston on 2025-11-11 15:11: need by 12/10. / JD Kitchens on 2025-11-18T20:45:14.589Z: No equipment in this room please remove / allucent_notes: 2025-11-04 12:11 - User: Jason Johnston - Date Added: 2025-11-04 12:11 - Note: Need better predecessor for this equipment set. / 2025-11-11 15:11 - User: Jason Johnston - Date Added: 2025-11-11 15:11 - Note: need by 12/10. / 2025-11-18T20:45:14.589Z - U
- QTS-27231: allucent_notes_20251202_153722: Sean Waisner on 2025-12-02 15:23: Had a scissor lift broke down in the room for a week / allucent_notes: 2025-12-02 15:23 - User: Sean Waisner - Date Added: 2025-12-02 15:23 - Note: Had a scissor lift broke down in the room for a week
- QTS-100310: allucent_notes: David Wiltberger on 2025-08-19 09:08: changed pick order / allucent_notes_20251014_152335: David Wiltberger on 2025-08-19 09:08: changed pick order / David Wiltberger on 2025-09-02 10:09: Moving to accommodate roofing in Zone 1 / David Wiltberger on 2025-09-24 04:09: BAM not completed Potential Delay / David Wiltberger on 2025-09-30 12:09: BAM did not complete / David Wiltberger on 2025-10-14 10:10: set on recovery schedule / allucent_notes: 2025-08-19 09:08 - User: David Wiltberger - Date Added: 2025-08-19 09:08 - Note: changed pick order / 2025-09-02 10:09 - User: David Wiltberger - Date Added: 2025-09-02 10:09 - Note: Moving to accommodate roofing in Zone 1 / 2025-09-24 04:09 - User: Dav
- QTS-100320: allucent_notes: David Wiltberger on 2025-08-19 09:08: changed pick order / allucent_notes_20251014_152335: David Wiltberger on 2025-08-19 09:08: changed pick order / David Wiltberger on 2025-09-02 10:09: Moving to accommodate roofing in Zone 1 / David Wiltberger on 2025-09-24 04:09: BAM not completed Potential Delay / David Wiltberger on 2025-09-30 12:09: BAM did not complete / David Wiltberger on 2025-10-14 10:10: set on recovery schedule / allucent_notes: 2025-08-19 09:08 - User: David Wiltberger - Date Added: 2025-08-19 09:08 - Note: changed pick order / 2025-09-02 10:09 - User: David Wiltberger - Date Added: 2025-09-02 10:09 - Note: Moving to accommodate roofing in Zone 1 / 2025-09-24 04:09 - User: Dav
- QTS-100560: allucent_notes: David Wiltberger on 2025-08-19 09:08: changed pick order / allucent_notes_20251014_152335: David Wiltberger on 2025-08-19 09:08: changed pick order / David Wiltberger on 2025-09-02 10:09: Moving to accommodate roofing in Zone 1 / David Wiltberger on 2025-09-24 04:09: BAM not completed Potential Delay / David Wiltberger on 2025-09-30 12:09: BAM did not complete / David Wiltberger on 2025-10-14 10:10: set on recovery schedule / allucent_notes: 2025-08-19 09:08 - User: David Wiltberger - Date Added: 2025-08-19 09:08 - Note: changed pick order / 2025-09-02 10:09 - User: David Wiltberger - Date Added: 2025-09-02 10:09 - Note: Moving to accommodate roofing in Zone 1 / 2025-09-24 04:09 - User: Dav
- QTS-100570: allucent_notes: David Wiltberger on 2025-08-19 09:08: changed pick order / allucent_notes_20251014_152335: David Wiltberger on 2025-08-19 09:08: changed pick order / David Wiltberger on 2025-09-02 10:09: Moving to accommodate roofing in Zone 1 / David Wiltberger on 2025-09-24 04:09: BAM not completed Potential Delay / David Wiltberger on 2025-09-30 12:09: BAM did not complete / David Wiltberger on 2025-10-14 10:10: set on recovery schedule / allucent_notes: 2025-08-19 09:08 - User: David Wiltberger - Date Added: 2025-08-19 09:08 - Note: changed pick order / 2025-09-02 10:09 - User: David Wiltberger - Date Added: 2025-09-02 10:09 - Note: Moving to accommodate roofing in Zone 1 / 2025-09-24 04:09 - User: Dav
- QTS-100860: allucent_notes: David Wiltberger on 2025-08-19 09:08: changed pick order / allucent_notes_20251014_152335: David Wiltberger on 2025-08-19 09:08: changed pick order / David Wiltberger on 2025-09-02 10:09: Moving to accommodate roofing in Zone 1 / David Wiltberger on 2025-09-24 04:09: BAM not completed Potential Delay / David Wiltberger on 2025-09-30 12:09: BAM did not complete / David Wiltberger on 2025-10-14 10:10: set on recovery schedule / allucent_notes: 2025-08-19 09:08 - User: David Wiltberger - Date Added: 2025-08-19 09:08 - Note: changed pick order / 2025-09-02 10:09 - User: David Wiltberger - Date Added: 2025-09-02 10:09 - Note: Moving to accommodate roofing in Zone 1 / 2025-09-24 04:09 - User: Dav
- QTS-100870: allucent_notes: David Wiltberger on 2025-08-19 09:08: changed pick order / allucent_notes_20251014_152335: David Wiltberger on 2025-08-19 09:08: changed pick order / David Wiltberger on 2025-09-02 10:09: Moving to accommodate roofing in Zone 1 / David Wiltberger on 2025-09-24 04:09: BAM not completed Potential Delay / David Wiltberger on 2025-09-30 12:09: BAM did not complete / David Wiltberger on 2025-10-14 10:10: set on recovery schedule / allucent_notes: 2025-08-19 09:08 - User: David Wiltberger - Date Added: 2025-08-19 09:08 - Note: changed pick order / 2025-09-02 10:09 - User: David Wiltberger - Date Added: 2025-09-02 10:09 - Note: Moving to accommodate roofing in Zone 1 / 2025-09-24 04:09 - User: Dav
- QTS-101100: allucent_notes: David Wiltberger on 2025-08-19 09:08: changed pick order / allucent_notes_20251014_152335: David Wiltberger on 2025-08-19 09:08: changed pick order / David Wiltberger on 2025-09-02 10:09: Moving to accommodate roofing in Zone 1 / David Wiltberger on 2025-09-24 04:09: BAM not completed Potential Delay / David Wiltberger on 2025-09-30 12:09: BAM did not complete / David Wiltberger on 2025-10-14 10:10: set on recovery schedule
- QTS-101110: allucent_notes: David Wiltberger on 2025-08-19 09:08: changed pick order / allucent_notes_20251014_152335: David Wiltberger on 2025-08-19 09:08: changed pick order / David Wiltberger on 2025-09-02 10:09: Moving to accommodate roofing in Zone 1 / David Wiltberger on 2025-09-24 04:09: BAM not completed Potential Delay / David Wiltberger on 2025-09-30 12:09: BAM did not complete / David Wiltberger on 2025-10-14 10:10: set on recovery schedule
- QTS-101340: allucent_notes: David Wiltberger on 2025-08-19 09:08: changed pick order / allucent_notes_20251014_152335: David Wiltberger on 2025-08-19 09:08: changed pick order / David Wiltberger on 2025-09-02 10:09: Moving to accommodate roofing in Zone 1 / David Wiltberger on 2025-09-24 04:09: BAM not completed Potential Delay / David Wiltberger on 2025-09-30 12:09: BAM did not complete / David Wiltberger on 2025-10-14 10:10: set on recovery schedule / allucent_notes: 2025-08-19 09:08 - User: David Wiltberger - Date Added: 2025-08-19 09:08 - Note: changed pick order / 2025-09-02 10:09 - User: David Wiltberger - Date Added: 2025-09-02 10:09 - Note: Moving to accommodate roofing in Zone 1 / 2025-09-24 04:09 - User: Dav
- QTS-101350: allucent_notes: David Wiltberger on 2025-08-19 09:08: changed pick order / allucent_notes_20251014_152335: David Wiltberger on 2025-08-19 09:08: changed pick order / David Wiltberger on 2025-09-02 10:09: Moving to accommodate roofing in Zone 1 / David Wiltberger on 2025-09-24 04:09: BAM not completed Potential Delay / David Wiltberger on 2025-09-30 12:09: BAM did not complete / David Wiltberger on 2025-10-14 10:10: set on recovery schedule / allucent_notes: 2025-08-19 09:08 - User: David Wiltberger - Date Added: 2025-08-19 09:08 - Note: changed pick order / 2025-09-02 10:09 - User: David Wiltberger - Date Added: 2025-09-02 10:09 - Note: Moving to accommodate roofing in Zone 1 / 2025-09-24 04:09 - User: Dav
- QTS-101580: allucent_notes: David Wiltberger on 2025-08-19 09:08: changed pick order / allucent_notes_20251014_152335: David Wiltberger on 2025-08-19 09:08: changed pick order / David Wiltberger on 2025-09-02 10:09: Moving to accommodate roofing in Zone 1 / David Wiltberger on 2025-09-24 04:09: BAM not completed Potential Delay / David Wiltberger on 2025-09-30 12:09: BAM did not complete / David Wiltberger on 2025-10-14 10:10: set on recovery schedule / allucent_notes: 2025-08-19 09:08 - User: David Wiltberger - Date Added: 2025-08-19 09:08 - Note: changed pick order / 2025-09-02 10:09 - User: David Wiltberger - Date Added: 2025-09-02 10:09 - Note: Moving to accommodate roofing in Zone 1 / 2025-09-24 04:09 - User: Dav
- QTS-101590: allucent_notes: David Wiltberger on 2025-08-19 09:08: changed pick order / allucent_notes_20251014_152335: David Wiltberger on 2025-08-19 09:08: changed pick order / David Wiltberger on 2025-09-02 10:09: Moving to accommodate roofing in Zone 1 / David Wiltberger on 2025-09-24 04:09: BAM not completed Potential Delay / David Wiltberger on 2025-09-30 12:09: BAM did not complete / David Wiltberger on 2025-10-14 10:10: set on recovery schedule / allucent_notes: 2025-08-19 09:08 - User: David Wiltberger - Date Added: 2025-08-19 09:08 - Note: changed pick order / 2025-09-02 10:09 - User: David Wiltberger - Date Added: 2025-09-02 10:09 - Note: Moving to accommodate roofing in Zone 1 / 2025-09-24 04:09 - User: Dav

| ID | Activity | Duration | Start | Finish | Predecessors | Complete | Planned start | Planned finish | Location | Project Section-1 | Phase-1-1 | Baseline | Layton Responsible Party | Project Section | Level |
| --- | --- | --- | --- | --- | --- | --- | --- | --- | --- | --- | --- | --- | --- | --- | --- |
| QTS-19231 | DH 1200 / Mechanical // Test & Balance RTU's *Delete* | 10d | 2025-12-02 A | 2025-12-02 A | QTS-1030 SS | 100% | 2026-03-17 | 2026-03-30 | DH1200 | Construction | Phase 2 | IGMP | Dave Wiltberger | Construction |  |
| QTS-19241 | DH 2300, FOH, BOH / Mechanical // Test & Balance RTU's *Delete* | 10d | 2025-12-02 A | 2025-12-02 A | QTS-1030 SS | 100% | 2026-04-06 | 2026-04-17 | DH2300 | Construction | Phase 3 | IGMP | Dave Wiltberger | Construction |  |
| QTS-19251 | DH 1300, FOH, BOH / Mechanical // Test & Balance RTU's *Delete* | 10d | 2025-12-02 A | 2025-12-02 A | QTS-1030 SS | 100% | 2026-04-06 | 2026-04-17 | DH1300 | Construction | Phase 3 | IGMP | Dave Wiltberger | Construction |  |
| QTS-19321 | DH 1100 / Mechanical // Prefunctional Testing Chillers *Delete* | 10d | 2025-12-02 A | 2025-12-02 A | QTS-1030 SS | 100% | 2026-02-19 | 2026-03-04 | DH1100 | Construction | Phase 1 | IGMP | Dave Wiltberger | Construction | Level 1 |
| QTS-19331 | DH 1100 / Mechanical // Prefunctional Testing CRAH Units 1-17 *Delete* | 7d | 2025-12-02 A | 2025-12-02 A | QTS-1030 SS | 100% | 2026-02-18 | 2026-02-26 | DH1100 | Construction | Phase 1 | IGMP | Dave Wiltberger | Construction | Level 1 |
| QTS-19341 | DH 1100 / Electrical // Prefunctional Testing Transformers *Delete* | 10d | 2025-12-02 A | 2025-12-02 A | QTS-1030 SS | 100% | 2026-02-19 | 2026-03-04 | DH1100 | Construction | Phase 1 | IGMP | Scott Masterson | Construction | Level 1 |
| QTS-19351 | DH 2200 / Mechanical // Prefunctional Testing Chillers *Delete* | 10d | 2025-12-02 A | 2025-12-02 A | QTS-1030 SS | 100% | 2026-04-28 | 2026-05-11 | DH2200 | Construction | Phase 2 | IGMP | Dave Wiltberger | Construction |  |
| QTS-19361 | DH 2200 / Mechanical // Prefunctional Testing CRAH Units 1-17 *Delete* | 10d | 2025-12-02 A | 2025-12-02 A | QTS-1030 SS | 100% | 2026-04-17 | 2026-04-30 | DH2200 | Construction | Phase 2 | IGMP | Dave Wiltberger | Construction |  |
| QTS-19371 | DH 2200 / Electrical // Prefunctional Testing Transformers *Delete* | 10d | 2025-12-02 A | 2025-12-02 A | QTS-1030 SS | 100% | 2026-04-28 | 2026-05-11 | DH2200 | Construction | Phase 2 | IGMP | Scott Masterson | Construction |  |
| QTS-19381 | DH 1200 / Mechanical // Prefunctional Testing Chillers *Delete* | 10d | 2025-12-02 A | 2025-12-02 A | QTS-1030 SS | 100% | 2026-03-23 | 2026-04-03 | DH1200 | Construction | Phase 2 | IGMP | Dave Wiltberger | Construction |  |
| QTS-19391 | DH 1200 / Mechanical // Prefunctional Testing CRAH Units 1-17 *Delete* | 10d | 2025-12-02 A | 2025-12-02 A | QTS-1030 SS | 100% | 2026-03-12 | 2026-03-25 | DH1200 | Construction | Phase 2 | IGMP | Dave Wiltberger | Construction |  |
| QTS-19401 | DH 1200 / Electrical // Prefunctional Testing Transformers *Delete* | 10d | 2025-12-02 A | 2025-12-02 A | QTS-1030 SS | 100% | 2026-03-23 | 2026-04-03 | DH1200 | Construction | Phase 2 | IGMP | Scott Masterson | Construction |  |
| QTS-19411 | DH 2300 / Mechanical // Prefunctional Testing Chillers *Delete* | 10d | 2025-12-02 A | 2025-12-02 A | QTS-1030 SS | 100% | 2026-04-13 | 2026-04-24 | DH2300 | Construction | Phase 3 | IGMP | Dave Wiltberger | Construction |  |
| QTS-19421 | DH 2300 / Mechanical // Prefunctional Testing CRAH Units 1-17 *Delete* | 10d | 2025-12-02 A | 2025-12-02 A | QTS-1030 SS | 100% | 2026-04-02 | 2026-04-15 | DH2300 | Construction | Phase 3 | IGMP | Dave Wiltberger | Construction |  |
| QTS-19431 | DH 2300 / Electrical // Prefunctional Testing Transformers *Delete* | 10d | 2025-12-02 A | 2025-12-02 A | QTS-1030 SS | 100% | 2026-04-13 | 2026-04-24 | DH2300 | Construction | Phase 3 | IGMP | Scott Masterson | Construction |  |
| QTS-19441 | DH 1300 / Mechanical // Prefunctional Testing Chillers *Delete* | 10d | 2025-12-02 A | 2025-12-02 A | QTS-1030 SS | 100% | 2026-04-10 | 2026-04-23 | DH1300 | Construction | Phase 3 | IGMP | Scott Masterson | Construction |  |
| QTS-19451 | DH 1300 / Mechanical // Prefunctional Testing CRAH Units 1-17 *Delete* | 10d | 2025-12-02 A | 2025-12-02 A | QTS-1030 SS | 100% | 2026-04-09 | 2026-04-22 | DH1300 | Construction | Phase 3 | IGMP | Dave Wiltberger | Construction |  |
| QTS-19461 | DH 1300 / Electrical // Prefunctional Testing Transformers *Delete* | 10d | 2025-12-02 A | 2025-12-02 A | QTS-1030 SS | 100% | 2026-04-10 | 2026-04-23 | DH1300 | Construction | Phase 3 | IGMP | Scott Masterson | Construction |  |
| QTS-19681 | DH 1100 / Electrical // Prefunctional Testing UPS Pods *Delete* | 10d | 2025-12-02 A | 2025-12-02 A | QTS-1030 SS | 100% | 2026-02-26 | 2026-03-11 | DH1100 | Construction | Phase 1 | IGMP | Scott Masterson | Construction | Level 1 |
| QTS-19691 | DH 2200 / Electrical // Prefunctional Testing UPS Pods *Delete* | 10d | 2025-12-02 A | 2025-12-02 A | QTS-1030 SS | 100% | 2026-05-05 | 2026-05-18 | DH2200 | Construction | Phase 2 | IGMP | Scott Masterson | Construction |  |
| QTS-19701 | DH 1200 / Electrical // Prefunctional Testing UPS Pods *Delete* | 10d | 2025-12-02 A | 2025-12-02 A | QTS-1030 SS | 100% | 2026-03-30 | 2026-04-10 | DH1200 | Construction | Phase 2 | IGMP | Scott Masterson | Construction |  |
| QTS-19711 | DH 2300 / Electrical // Prefunctional Testing UPS Pods *Delete* | 10d | 2025-12-02 A | 2025-12-02 A | QTS-1030 SS | 100% | 2026-04-27 | 2026-05-08 | DH2300 | Construction | Phase 3 | IGMP | Scott Masterson | Construction |  |
| QTS-19721 | DH 1300 / Electrical // Prefunctional Testing UPS Pods *Delete* | 10d | 2025-12-02 A | 2025-12-02 A | QTS-1030 SS | 100% | 2026-04-24 | 2026-05-07 | DH1300 | Construction | Phase 3 | IGMP | Scott Masterson | Construction |  |
| QTS-19751 | DH 1100 / Electrical // Prefunctional Testing MOD, COD, Chillers, CRAH, & Humidifiers *Delete* | 10d | 2025-12-02 A | 2025-12-02 A | QTS-1030 SS | 100% | 2026-03-02 | 2026-03-13 | DH1100 | Construction | Phase 1 | IGMP | Scott Masterson | Construction | Level 1 |
| QTS-19761 | DH 2200 / Electrical // Prefunctional Testing MOD, COD, Chillers, CRAH, & Humidifiers *Delete* | 10d | 2025-12-02 A | 2025-12-02 A | QTS-1030 SS | 100% | 2026-05-07 | 2026-05-20 | DH2200 | Construction | Phase 2 | IGMP | Scott Masterson | Construction |  |
| QTS-19771 | DH 1200 / Electrical // Prefunctional Testing MOD, COD, Chillers, CRAH, & Humidifiers *Delete* | 10d | 2025-12-02 A | 2025-12-02 A | QTS-1030 SS | 100% | 2026-04-01 | 2026-04-14 | DH1200 | Construction | Phase 2 | IGMP | Scott Masterson | Construction |  |
| QTS-19781 | DH 2300 / Electrical // Prefunctional Testing MOD, COD, Chillers, CRAH, & Humidifiers *Delete* | 10d | 2025-12-02 A | 2025-12-02 A | QTS-1030 SS | 100% | 2026-05-11 | 2026-05-22 | DH2300 | Construction | Phase 3 | IGMP | Scott Masterson | Construction |  |
| QTS-19791 | DH 1300 / Electrical // Prefunctional Testing MOD, COD, Chillers, CRAH, & Humidifiers *Delete* | 10d | 2025-12-02 A | 2025-12-02 A | QTS-1030 SS | 100% | 2026-05-08 | 2026-05-21 | DH1300 | Construction | Phase 3 | IGMP | Scott Masterson | Construction |  |
| QTS-19931 | DH 1100 // Commission RTU's *Delete* | 5d | 2025-12-02 A | 2025-12-02 A | QTS-1030 SS | 100% | 2026-02-26 | 2026-03-04 | DH1100 | Construction | Phase 1 | IGMP | Dave Wiltberger | Construction | Level 1 |
| QTS-19941 | DH 2200 // Commission RTU's *Delete* | 5d | 2025-12-02 A | 2025-12-02 A | QTS-1030 SS | 100% | 2026-04-30 | 2026-05-06 | DH2200 | Construction | Phase 2 | IGMP | Dave Wiltberger | Construction |  |
| QTS-19951 | DH 1200 // Commission RTU's *Delete* | 5d | 2025-12-02 A | 2025-12-02 A | QTS-1030 SS | 100% | 2026-03-31 | 2026-04-06 | DH1200 | Construction | Phase 2 | IGMP | Dave Wiltberger | Construction |  |
| QTS-19961 | DH 2300 // Commission RTU's *Delete* | 5d | 2025-12-02 A | 2025-12-02 A | QTS-1030 SS | 100% | 2026-04-20 | 2026-04-24 | DH2300 | Construction | Phase 3 | IGMP | Dave Wiltberger | Construction |  |
| QTS-19971 | DH 1300 // Commission RTU's *Delete* | 5d | 2025-12-02 A | 2025-12-02 A | QTS-1030 SS | 100% | 2026-04-20 | 2026-04-24 | DH1300 | Construction | Phase 3 | IGMP | Dave Wiltberger | Construction |  |
| QTS-20061 | DH 1100 / Mechanical // Prefunctional Testing CRAH Units 18-34 *Delete* | 7d | 2025-12-02 A | 2025-12-02 A | QTS-1030 SS | 100% | 2026-02-27 | 2026-03-09 | DH1100 | Construction | Phase 1 | IGMP | Dave Wiltberger | Construction | Level 1 |
| QTS-20071 | DH 1100 / Electrical // Prefunctional Testing Generators *Delete* | 10d | 2025-12-02 A | 2025-12-02 A | QTS-1030 SS | 100% | 2026-03-05 | 2026-03-18 | DH1100 | Construction | Phase 1 | IGMP | Scott Masterson | Construction | Level 1 |
| QTS-20081 | DH 2200 / Mechanical // Prefunctional Testing CRAH Units 18-34 *Delete* | 10d | 2025-12-02 A | 2025-12-02 A | QTS-1030 SS | 100% | 2026-05-01 | 2026-05-14 | DH2200 | Construction | Phase 2 | IGMP | Dave Wiltberger | Construction |  |
| QTS-20091 | DH 2200 / Electrical // Prefunctional Testing Generators *Delete* | 10d | 2025-12-02 A | 2025-12-02 A | QTS-1030 SS | 100% | 2026-05-12 | 2026-05-26 | DH2200 | Construction | Phase 2 | IGMP | Scott Masterson | Construction |  |
| QTS-20101 | DH 1200 / Mechanical // Prefunctional Testing CRAH Units 18-34 *Delete* | 10d | 2025-12-02 A | 2025-12-02 A | QTS-1030 SS | 100% | 2026-03-26 | 2026-04-08 | DH1200 | Construction | Phase 2 | IGMP | Dave Wiltberger | Construction |  |
| QTS-20111 | DH 1200 / Electrical // Prefunctional Testing Generators *Delete* | 10d | 2025-12-02 A | 2025-12-02 A | QTS-1030 SS | 100% | 2026-04-06 | 2026-04-17 | DH1200 | Construction | Phase 2 | IGMP | Scott Masterson | Construction |  |
| QTS-20121 | DH 2300 / Mechanical // Prefunctional Testing CRAH Units 18-34 *Delete* | 10d | 2025-12-02 A | 2025-12-02 A | QTS-1030 SS | 100% | 2026-04-16 | 2026-04-29 | DH2300 | Construction | Phase 3 | IGMP | Dave Wiltberger | Construction |  |
| QTS-20131 | DH 2300 / Electrical // Prefunctional Testing Generators *Delete* | 10d | 2025-12-02 A | 2025-12-02 A | QTS-1030 SS | 100% | 2026-04-27 | 2026-05-08 | DH2300 | Construction | Phase 3 | IGMP | Scott Masterson | Construction |  |
| QTS-20141 | DH 1300 / Mechanical // Prefunctional Testing CRAH Units 18-34 *Delete* | 10d | 2025-12-02 A | 2025-12-02 A | QTS-1030 SS | 100% | 2026-04-23 | 2026-05-06 | DH1300 | Construction | Phase 3 | IGMP | Dave Wiltberger | Construction |  |
| QTS-20151 | DH 1300 / Electrical // Prefunctional Testing Generators *Delete* | 10d | 2025-12-02 A | 2025-12-02 A | QTS-1030 SS | 100% | 2026-04-24 | 2026-05-07 | DH1300 | Construction | Phase 3 | IGMP | Scott Masterson | Construction |  |
| QTS-20201 | DH 1100 // Commission Chillers *Delete* | 10d | 2025-12-02 A | 2025-12-02 A | QTS-1030 SS | 100% | 2026-03-09 | 2026-03-20 | DH1100 | Construction | Phase 1 | IGMP | Dave Wiltberger | Construction | Level 1 |
| QTS-20211 | DH 1100 // Commission CRAH Units 1-17 *Delete* | 10d | 2025-12-02 A | 2025-12-02 A | QTS-1030 SS | 100% | 2026-03-09 | 2026-03-20 | DH1100 | Construction | Phase 1 | IGMP | Dave Wiltberger | Construction | Level 1 |
| QTS-20221 | DH 1100 / Electrical // Prefunctional Testing Transfer Switches & PDU's *Delete* | 10d | 2025-12-02 A | 2025-12-02 A | QTS-1030 SS | 100% | 2026-03-09 | 2026-03-20 | DH1100 | Construction | Phase 1 | IGMP | Scott Masterson | Construction | Level 1 |
| QTS-20231 | DH 2200 // Commission Chillers *Delete* | 10d | 2025-12-02 A | 2025-12-02 A | QTS-1030 SS | 100% | 2026-05-21 | 2026-06-04 | DH2200 | Construction | Phase 2 | IGMP | Dave Wiltberger | Construction |  |
| QTS-20241 | DH 2200 // Commission CRAH Units 1-17 *Delete* | 10d | 2025-12-02 A | 2025-12-02 A | QTS-1030 SS | 100% | 2026-06-05 | 2026-06-18 | DH2200 | Construction | Phase 2 | IGMP | Dave Wiltberger | Construction |  |
| QTS-20251 | DH 2200 / Electrical // Prefunctional Testing Transfer Switches & PDU's *Delete* | 10d | 2025-12-02 A | 2025-12-02 A | QTS-1030 SS | 100% | 2026-05-14 | 2026-05-28 | DH2200 | Construction | Phase 2 | IGMP | Scott Masterson | Construction |  |
| QTS-20261 | DH 1200 // Commission Chillers *Delete* | 10d | 2025-12-02 A | 2025-12-02 A | QTS-1030 SS | 100% | 2026-04-15 | 2026-04-28 | DH1200 | Construction | Phase 2 | IGMP | Dave Wiltberger | Construction |  |
| QTS-20271 | DH 1200 // Commission CRAH Units 1-17 *Delete* | 10d | 2025-12-02 A | 2025-12-02 A | QTS-1030 SS | 100% | 2026-04-29 | 2026-05-12 | DH1200 | Construction | Phase 2 | IGMP | Dave Wiltberger | Construction |  |
| QTS-20281 | DH 1200 / Electrical // Prefunctional Testing Transfer Switches & PDU's *Delete* | 10d | 2025-12-02 A | 2025-12-02 A | QTS-1030 SS | 100% | 2026-04-08 | 2026-04-21 | DH1200 | Construction | Phase 2 | IGMP | Scott Masterson | Construction |  |
| QTS-20291 | DH 2300 // Commission Chillers *Delete* | 10d | 2025-12-02 A | 2025-12-02 A | QTS-1030 SS | 100% | 2026-05-26 | 2026-06-08 | DH2300 | Construction | Phase 3 | IGMP | Scott Masterson | Construction |  |
| QTS-20301 | DH 2300 // Commission CRAH Units 1-17 *Delete* | 10d | 2025-12-02 A | 2025-12-02 A | QTS-1030 SS | 100% | 2026-06-09 | 2026-06-22 | DH2300 | Construction | Phase 3 | IGMP | Dave Wiltberger | Construction |  |
| QTS-20311 | DH 2300 / Electrical // Prefunctional Testing Transfer Switches & PDU's *Delete* | 10d | 2025-12-02 A | 2025-12-02 A | QTS-1030 SS | 100% | 2026-05-18 | 2026-06-01 | DH2300 | Construction | Phase 3 | IGMP | Scott Masterson | Construction |  |
| QTS-20321 | DH 1300 // Commission Chillers *Delete* | 10d | 2025-12-02 A | 2025-12-02 A | QTS-1030 SS | 100% | 2026-05-22 | 2026-06-05 | DH1300 | Construction | Phase 3 | IGMP | Dave Wiltberger | Construction |  |
| QTS-20331 | DH 1300 // Commission CRAH Units 1-17 *Delete* | 10d | 2025-12-02 A | 2025-12-02 A | QTS-1030 SS | 100% | 2026-06-08 | 2026-06-19 | DH1300 | Construction | Phase 3 | IGMP | Dave Wiltberger | Construction |  |
| QTS-20341 | DH 1300 / Electrical // Prefunctional Testing Transfer Switches & PDU's *Delete* | 10d | 2025-12-02 A | 2025-12-02 A | QTS-1030 SS | 100% | 2026-05-15 | 2026-05-29 | DH1300 | Construction | Phase 3 | IGMP | Scott Masterson | Construction |  |
| QTS-20571 | DH 1100 // Commission Generators *Delete* | 10d | 2025-12-02 A | 2025-12-02 A | QTS-1030 SS | 100% | 2026-03-13 | 2026-03-26 | DH1100 | Construction | Phase 1 | IGMP | Scott Masterson | Construction | Level 1 |
| QTS-20581 | DH 2200 // Commission Generators *Delete* | 10d | 2025-12-02 A | 2025-12-02 A | QTS-1030 SS | 100% | 2026-05-27 | 2026-06-09 | DH2200 | Construction | Phase 2 | IGMP | Scott Masterson | Construction |  |
| QTS-20591 | DH 1200 // Commission Generators *Delete* | 10d | 2025-12-02 A | 2025-12-02 A | QTS-1030 SS | 100% | 2026-04-13 | 2026-04-24 | DH1200 | Construction | Phase 2 | IGMP | Scott Masterson | Construction |  |
| QTS-20601 | DH 2300 // Commission Generators *Delete* | 10d | 2025-12-02 A | 2025-12-02 A | QTS-1030 SS | 100% | 2026-05-04 | 2026-05-15 | DH2300 | Construction | Phase 3 | IGMP | Dave Wiltberger | Construction |  |
| QTS-20611 | DH 1300 // Commission Generators *Delete* | 10d | 2025-12-02 A | 2025-12-02 A | QTS-1030 SS | 100% | 2026-05-01 | 2026-05-14 | DH1300 | Construction | Phase 3 | IGMP | Scott Masterson | Construction |  |
| QTS-21101 | DH 1100 / Mechanical // Prefunctional Testing Humidifiers *Delete* | 5d | 2025-12-02 A | 2025-12-02 A | QTS-1030 SS | 100% | 2026-03-10 | 2026-03-16 | DH1100 | Construction | Phase 1 | IGMP | Dave Wiltberger | Construction | Level 1 |
| QTS-21111 | DH 2200 / Mechanical // Prefunctional Testing Humidifiers *Delete* | 5d | 2025-12-02 A | 2025-12-02 A | QTS-1030 SS | 100% | 2026-05-15 | 2026-05-21 | DH2200 | Construction | Phase 2 | IGMP | Dave Wiltberger | Construction |  |
| QTS-21121 | DH 1200 / Mechanical // Prefunctional Testing Humidifiers *Delete* | 5d | 2025-12-02 A | 2025-12-02 A | QTS-1030 SS | 100% | 2026-04-09 | 2026-04-15 | DH1200 | Construction | Phase 2 | IGMP | Dave Wiltberger | Construction |  |
| QTS-21131 | DH 2300 / Mechanical // Prefunctional Testing Humidifiers *Delete* | 5d | 2025-12-02 A | 2025-12-02 A | QTS-1030 SS | 100% | 2026-04-30 | 2026-05-06 | DH2300 | Construction | Phase 3 | IGMP | Dave Wiltberger | Construction |  |
| QTS-21141 | DH 1300 / Mechanical // Prefunctional Testing Humidifiers *Delete* | 5d | 2025-12-02 A | 2025-12-02 A | QTS-1030 SS | 100% | 2026-05-07 | 2026-05-13 | DH1300 | Construction | Phase 3 | IGMP | Dave Wiltberger | Construction |  |
| QTS-21191 | DH 1100 // Commission CRAH Units 18-34 *Delete* | 10d | 2025-12-02 A | 2025-12-02 A | QTS-1030 SS | 100% | 2026-03-23 | 2026-04-03 | DH1100 | Construction | Phase 1 | IGMP | Dave Wiltberger | Construction | Level 1 |
| QTS-21201 | DH 2200 // Commission CRAH Units 18-34 *Delete* | 10d | 2025-12-02 A | 2025-12-02 A | QTS-1030 SS | 100% | 2026-06-19 | 2026-07-02 | DH2200 | Construction | Phase 2 | IGMP | Dave Wiltberger | Construction |  |

| ID | Activity | Duration | Start | Finish | Predecessors | Complete | Planned start | Planned finish | Location | Project Section-1 | Phase-1-1 | Baseline | Layton Responsible Party | Project Section | Level | Subcontractor | Allucent CSI Group | Phase-1 |
| --- | --- | --- | --- | --- | --- | --- | --- | --- | --- | --- | --- | --- | --- | --- | --- | --- | --- | --- |
| QTS-21211 | DH 1200 // Commission CRAH Units 18-34 *Delete* | 10d | 2025-12-02 A | 2025-12-02 A | QTS-1030 SS | 100% | 2026-05-13 | 2026-05-27 | DH1200 | Construction | Phase 2 | IGMP | Dave Wiltberger | Construction |  |  |  |  |
| QTS-21221 | DH 2300 // Commission CRAH Units 18-34 *Delete* | 10d | 2025-12-02 A | 2025-12-02 A | QTS-1030 SS | 100% | 2026-06-23 | 2026-07-07 | DH2300 | Construction | Phase 3 | IGMP | Dave Wiltberger | Construction |  |  |  |  |
| QTS-21231 | DH 1300 // Commission CRAH Units 18-34 *Delete* | 10d | 2025-12-02 A | 2025-12-02 A | QTS-1030 SS | 100% | 2026-06-22 | 2026-07-06 | DH1300 | Construction | Phase 3 | IGMP | Dave Wiltberger | Construction |  |  |  |  |
| QTS-21551 | DH 1100 // Commission Humidifiers *Delete* | 5d | 2025-12-02 A | 2025-12-02 A | QTS-1030 SS | 100% | 2026-03-17 | 2026-03-23 | DH1100 | Construction | Phase 1 | IGMP | Dave Wiltberger | Construction | Level 1 |  |  |  |
| QTS-21561 | DH 2200 // Commission Humidifiers *Delete* | 5d | 2025-12-02 A | 2025-12-02 A | QTS-1030 SS | 100% | 2026-05-22 | 2026-05-29 | DH2200 | Construction | Phase 2 | IGMP | Dave Wiltberger | Construction |  |  |  |  |
| QTS-21571 | DH 1200 // Commission Humidifiers *Delete* | 5d | 2025-12-02 A | 2025-12-02 A | QTS-1030 SS | 100% | 2026-04-16 | 2026-04-22 | DH1200 | Construction | Phase 2 | IGMP | Dave Wiltberger | Construction |  |  |  |  |
| QTS-21581 | DH 2300 // Commission Humidifiers *Delete* | 5d | 2025-12-02 A | 2025-12-02 A | QTS-1030 SS | 100% | 2026-05-07 | 2026-05-13 | DH2300 | Construction | Phase 3 | IGMP | Dave Wiltberger | Construction |  |  |  |  |
| QTS-21591 | DH 1300 // Commission Humidifiers *Delete* | 5d | 2025-12-02 A | 2025-12-02 A | QTS-1030 SS | 100% | 2026-05-14 | 2026-05-20 | DH1300 | Construction | Phase 3 | IGMP | Dave Wiltberger | Construction |  |  |  |  |
| QTS-21891 | DH 1100 // Integrated Systems Testing *Delete* | 5d | 2025-12-02 A | 2025-12-02 A | QTS-1030 SS | 100% | 2026-04-08 | 2026-04-14 | DH1100 | Construction | Phase 1 | IGMP | Jason Johnston | Construction | Level 1 |  |  |  |
| QTS-21901 | DH 2200 // Integrated Systems Testing *Delete* | 5d | 2025-12-02 A | 2025-12-02 A | QTS-1030 SS | 100% | 2026-07-06 | 2026-07-10 | DH2200 | Construction | Phase 2 | IGMP | Jason Johnston | Construction |  |  |  |  |
| QTS-21911 | DH 1200 // Integrated Systems Testing *Delete* | 5d | 2025-12-02 A | 2025-12-02 A | QTS-1030 SS | 100% | 2026-05-28 | 2026-06-03 | DH1200 | Construction | Phase 2 | IGMP | Jason Johnston | Construction |  |  |  |  |
| QTS-21921 | DH 2300 // Integrated Systems Testing *Delete* | 5d | 2025-12-02 A | 2025-12-02 A | QTS-1030 SS | 100% | 2026-07-08 | 2026-07-14 | DH2300 | Construction | Phase 3 | IGMP | Jason Johnston | Construction |  |  |  |  |
| QTS-21931 | DH 1300 // Integrated Systems Testing *Delete* | 5d | 2025-12-02 A | 2025-12-02 A | QTS-1030 SS | 100% | 2026-07-07 | 2026-07-13 | DH1300 | Construction | Phase 3 | IGMP | Jason Johnston | Construction |  |  |  |  |
| QTS-28581 | DH 2100 / Electrical // Energization *Delete* | 10d | 2025-12-02 A | 2025-12-02 A | QTS-1030 SS | 100% | 2026-02-06 | 2026-02-19 | DH2100 | Construction | Phase 1 | IGMP | Scott Masterson | Construction | Level 2 |  |  |  |
| QTS-28721 | DH 2100, FOH, BOH / Mechanical // Test & Balance RTU's *Delete* | 10d | 2025-12-02 A | 2025-12-02 A | QTS-1030 SS | 100% | 2026-02-13 | 2026-02-26 | DH2100 | Construction | Phase 1 | IGMP | Dave Wiltberger | Construction | Level 2 |  |  |  |
| QTS-28861 | DH 2100 / Mechanical // Prefunctional Testing Chillers *Delete* | 10d | 2025-12-02 A | 2025-12-02 A | QTS-1030 SS | 100% | 2026-02-20 | 2026-03-05 | DH2100 | Construction | Phase 1 | IGMP | Dave Wiltberger | Construction | Level 2 |  |  |  |
| QTS-28871 | DH 2100 / Mechanical // Prefunctional Testing CRAH Units 1-17 *Delete* | 10d | 2025-12-02 A | 2025-12-02 A | QTS-1030 SS | 100% | 2026-02-25 | 2026-03-10 | DH2100 | Construction | Phase 1 | IGMP | Dave Wiltberger | Construction | Level 2 |  |  |  |
| QTS-28881 | DH 2100 / Electrical // Prefunctional Testing Transformers *Delete* | 10d | 2025-12-02 A | 2025-12-02 A | QTS-1030 SS | 100% | 2026-02-20 | 2026-03-05 | DH2100 | Construction | Phase 1 | IGMP | Scott Masterson | Construction | Level 2 |  |  |  |
| QTS-29131 | DH 2100 / Electrical // Prefunctional Testing UPS Pods *Delete* | 10d | 2025-12-02 A | 2025-12-02 A | QTS-1030 SS | 100% | 2026-02-27 | 2026-03-12 | DH2100 | Construction | Phase 1 | IGMP | Scott Masterson | Construction | Level 2 |  |  |  |
| QTS-29141 | DH 2100 / Electrical // Prefunctional Testing MOD, COD, Chillers, CRAH, & Humidifiers *Delete* | 10d | 2025-12-02 A | 2025-12-02 A | QTS-1030 SS | 100% | 2026-03-03 | 2026-03-16 | DH2100 | Construction | Phase 1 | IGMP | Scott Masterson | Construction | Level 2 |  |  |  |
| QTS-29311 | DH 2100 // Commission RTU's *Delete* | 5d | 2025-12-02 A | 2025-12-02 A | QTS-1030 SS | 100% | 2026-02-27 | 2026-03-05 | DH2100 | Construction | Phase 1 | IGMP | Dave Wiltberger | Construction | Level 2 |  |  |  |
| QTS-29381 | DH 2100 / Mechanical // Prefunctional Testing CRAH Units 18-34 *Delete* | 10d | 2025-12-02 A | 2025-12-02 A | QTS-1030 SS | 100% | 2026-03-11 | 2026-03-24 | DH2100 | Construction | Phase 1 | IGMP | Dave Wiltberger | Construction | Level 2 |  |  |  |
| QTS-29391 | DH 2100 / Electrical // Prefunctional Testing Generators *Delete* | 10d | 2025-12-02 A | 2025-12-02 A | QTS-1030 SS | 100% | 2026-03-06 | 2026-03-19 | DH2100 | Construction | Phase 1 | IGMP | Scott Masterson | Construction | Level 2 |  |  |  |
| QTS-29431 | DH 2100 // Commission Chillers *Delete* | 10d | 2025-12-02 A | 2025-12-02 A | QTS-1030 SS | 100% | 2026-03-10 | 2026-03-23 | DH2100 | Construction | Phase 1 | IGMP | Dave Wiltberger | Construction | Level 2 |  |  |  |
| QTS-29441 | DH 2100 // Commission CRAH Units 1-17 *Delete* | 10d | 2025-12-02 A | 2025-12-02 A | QTS-1030 SS | 100% | 2026-03-11 | 2026-03-24 | DH2100 | Construction | Phase 1 | IGMP | Dave Wiltberger | Construction | Level 2 |  |  |  |
| QTS-29451 | DH 2100 / Electrical // Prefunctional Testing Transfer Switches & PDU's *Delete* | 10d | 2025-12-02 A | 2025-12-02 A | QTS-1030 SS | 100% | 2026-03-10 | 2026-03-23 | DH2100 | Construction | Phase 1 | IGMP | Scott Masterson | Construction | Level 2 |  |  |  |
| QTS-29641 | DH 2100 // Commission Generators *Delete* | 10d | 2025-12-02 A | 2025-12-02 A | QTS-1030 SS | 100% | 2026-03-20 | 2026-04-02 | DH2100 | Construction | Phase 1 | IGMP | Scott Masterson | Construction | Level 2 |  |  |  |
| QTS-29791 | DH 2100 / Mechanical // Prefunctional Testing Humidifiers *Delete* | 5d | 2025-12-02 A | 2025-12-02 A | QTS-1030 SS | 100% | 2026-03-25 | 2026-03-31 | DH2100 | Construction | Phase 1 | IGMP | Dave Wiltberger | Construction | Level 2 |  |  |  |
| QTS-29801 | DH 2100 // Commission CRAH Units 18-34 *Delete* | 10d | 2025-12-02 A | 2025-12-02 A | QTS-1030 SS | 100% | 2026-03-25 | 2026-04-07 | DH2100 | Construction | Phase 1 | IGMP | Dave Wiltberger | Construction | Level 2 |  |  |  |
| QTS-30031 | DH 2100 // Commission Humidifiers *Delete* | 5d | 2025-12-02 A | 2025-12-02 A | QTS-1030 SS | 100% | 2026-04-01 | 2026-04-07 | DH2100 | Construction | Phase 1 | IGMP | Dave Wiltberger | Construction | Level 2 |  |  |  |
| QTS-30261 | DH 2100 // Integrated Systems Testing *Delete* | 5d | 2025-12-02 A | 2025-12-02 A | QTS-1030 SS | 100% | 2026-04-08 | 2026-04-14 | DH2100 | Construction | Phase 1 | IGMP | Jason Johnston | Construction | Level 2 |  |  |  |
| QTS-15891 | DH 2200 / Mechanical Yard // Measure for FRP Platforms *Delete* | 1d | 2025-12-03 A | 2025-12-03 A | QTS-1030 SS | 100% |  |  | Gen Yard | Construction | Phase 2 | IGMP | Ron Carroll | Construction | Level 1 | Advantic Building Group, LLC |  |  |
| QTS-15921 | DH 1200 / Mechanical Yard // Measure for FRP Platforms *Delete* | 1d | 2025-12-03 A | 2025-12-03 A | QTS-1030 SS | 100% |  |  | Gen Yard | Construction | Phase 2 | IGMP | Ron Carroll | Construction | Level 1 | Advantic Building Group, LLC |  |  |
| QTS-15951 | DH 2300 / Mechanical Yard // Measure for FRP Platforms *Delete* | 1d | 2025-12-03 A | 2025-12-03 A | QTS-1030 SS | 100% |  |  | Gen Yard | Construction | Phase 3 | IGMP | Ron Carroll | Construction | Level 1 | Advantic Building Group, LLC |  |  |
| QTS-15981 | DH 1300 / Mechanical Yard // Measure for FRP Platforms *Delete* | 1d | 2025-12-03 A | 2025-12-03 A | QTS-1030 SS | 100% |  |  | Gen Yard | Construction | Phase 3 | IGMP | Ron Carroll | Construction | Level 1 | Advantic Building Group, LLC |  |  |
| QTS-20451 | Zone 3 Gridlines 30-41 Corridor 2307 // In Wall Rough Plumbing *Delete* | 5d | 2025-12-03 A | 2025-12-03 A | QTS-1030 SS | 100% | 2025-12-10 | 2025-12-16 |  |  |  | IGMP | Dave Wiltberger | Construction | Level 2 | Bel-Aire Mechanical, LLC | 01ADMIN |  |
| QTS-21281 | Zone 3 Gridlines 30-41 Corridor 1012 // In Wall Rough Plumbing *Delete* | 10d | 2025-12-03 A | 2025-12-03 A | QTS-1030 SS | 100% | 2025-12-10 | 2025-12-23 |  |  |  | IGMP | Dave Wiltberger | Construction | Level 1 | Bel-Aire Mechanical, LLC | 01ADMIN |  |
| QTS-24011 | Zone 3 Gridlines 30-41 Corridor 1012 // Overhead Door Install *Delete* | 6d | 2025-12-03 A | 2025-12-03 A | QTS-1030 SS | 100% | 2025-12-10 | 2025-12-17 |  |  |  | IGMP | Sean Waisner | Construction | Level 1 |  |  |  |
| QTS-24031 | Zone 2 Gridline 21-30 / Corridor 2010 // Overhead Door Install *Delete* | 6d | 2025-12-03 A | 2025-12-03 A | QTS-1030 SS | 100% | 2026-01-29 | 2026-02-05 |  |  |  | IGMP | Sean Waisner | Construction | Level 2 |  |  |  |
| QTS-24041 | Zone 3 Gridlines 30-41 Corridor 2307 // Overhead Door Install *Delete* | 6d | 2025-12-03 A | 2025-12-03 A | QTS-1030 SS | 100% | 2025-12-10 | 2025-12-17 |  |  |  | IGMP | Sean Waisner | Construction | Level 2 |  |  |  |
| QTS-24131 | Zone 3 Gridlines 30-41 Corridor 1012 // Rough Electrical & Security to Overhead Door *Delete* | 4d | 2025-12-03 A | 2025-12-03 A | QTS-1030 SS | 100% | 2025-12-10 | 2025-12-15 |  |  |  | IGMP | Scott Masterson | Construction | Level 1 | Rosendin Electric, Inc |  |  |
| QTS-24151 | Zone 2 Gridline 21-30 / Corridor 2010 // Rough Electrical & Security to Overhead Door *Delete* | 4d | 2025-12-03 A | 2025-12-03 A | QTS-1030 SS | 100% | 2026-02-06 | 2026-02-11 |  |  |  | IGMP | Scott Masterson | Construction | Level 2 | Rosendin Electric, Inc |  |  |
| QTS-24161 | Zone 3 Gridlines 30-41 Corridor 2307 // Rough Electrical & Security to Overhead Door *Delete* | 4d | 2025-12-03 A | 2025-12-03 A | QTS-1030 SS | 100% | 2025-12-18 | 2025-12-23 |  |  |  | IGMP | Scott Masterson | Construction | Level 2 | Rosendin Electric, Inc |  |  |
| QTS-28031 | Electrical Room #0172 // Install Cable Racks *Delete* | 5d | 2025-12-03 A | 2025-12-03 A | QTS-1030 SS | 100% | 2025-12-10 | 2025-12-16 | FOH |  |  | IGMP | Scott Masterson | Construction | Level 1 | E2 Optics, LLC | 01ADMIN | Phase 1 |
| QTS-28961 | Electrical Room #2085 // Install Cable Racks *Delete* | 5d | 2025-12-03 A | 2025-12-03 A | QTS-1030 SS | 100% | 2025-12-03 | 2025-12-09 | BOH |  |  | IGMP | Scott Masterson | Construction | Level 2 | E2 Optics, LLC |  | Phase 1 |
| QTS-43641 | Zone 2 Gridline 21-30 / Corridor 2010 // Rough Overhead Ductwork Gridline 24-27 *Delete* | 3d | 2025-12-03 A | 2025-12-03 A | QTS-1030 SS | 100% | 2025-12-10 | 2025-12-12 |  | Construction |  | IGMP | Dave Wiltberger | Construction | Level 2 | Bel-Aire Mechanical, LLC |  |  |
| QTS-43651 | Zone 2 Gridline 21-30 / Corridor 2010 // Rough Overhead Ductwork Gridline 27-30 *Delete* | 3d | 2025-12-03 A | 2025-12-03 A | QTS-1030 SS | 100% | 2025-12-10 | 2025-12-12 |  | Construction |  | IGMP | Dave Wiltberger | Construction | Level 2 | Bel-Aire Mechanical, LLC |  |  |
| QTS-43661 | Zone 3 Gridlines 30-41 Corridor 2307 // Rough Overhead Ductwork Gridlines 34-37 *Delete* | 8d | 2025-12-03 A | 2025-12-03 A | QTS-1030 SS | 100% | 2025-12-10 | 2025-12-19 |  | Construction |  | IGMP | Dave Wiltberger | Construction | Level 2 | Bel-Aire Mechanical, LLC |  |  |
| QTS-43671 | Zone 3 Gridlines 30-41 Corridor 2307 // Rough Overhead Ductwork Gridlines 37-41 *Delete* | 8d | 2025-12-03 A | 2025-12-03 A | QTS-1030 SS | 100% | 2025-12-10 | 2025-12-19 |  | Construction |  | IGMP | Dave Wiltberger | Construction | Level 2 | Bel-Aire Mechanical, LLC |  |  |
| QTS-44231 | Electrical Room #0172 // Rough In Electrical - Cable Racks *Delete* | 10d | 2025-12-03 A | 2025-12-03 A | QTS-1030 SS | 100% | 2025-12-10 | 2025-12-23 | FOH | Construction | Phase 1 | IGMP | Scott Masterson | Construction | Level 1 | E2 Optics, LLC | 01ADMIN |  |
| QTS-45681 | Gallery 2102 / Lineup A2100 // OFCI - L2 SET IN PLACE - Eq Type # - MPZ Panel - 2 unit *Delete* | 2d | 2025-12-03 A | 2025-12-03 A | QTS-1030 SS | 100% | 2025-12-12 | 2025-12-15 | DH2100 | Construction | Phase 1 | IGMP | Scott Masterson | Construction | Level 2 | Rosendin Electric, Inc | 01ADMIN |  |
| QTS-45701 | Gallery 2102 / Lineup A2100 // Pull & Terminate LV Cables from POD to MPZ Panel *Delete* | 2d | 2025-12-03 A | 2025-12-03 A | QTS-1030 SS | 100% | 2025-12-16 | 2025-12-17 | DH2100 | Construction | Phase 1 | IGMP | Scott Masterson | Construction | Level 2 | Rosendin Electric, Inc | 01ADMIN |  |
| QTS-46081 | Gallery 2102 / Lineup B2100 // OFCI - L2 SET IN PLACE - Eq Type # - MPZ Panel - 2 unit *Delete* | 2d | 2025-12-03 A | 2025-12-03 A | QTS-1030 SS | 100% | 2025-12-11 | 2025-12-12 | DH2100 | Construction | Phase 1 | IGMP | Scott Masterson | Construction | Level 2 | Rosendin Electric, Inc | 01ADMIN |  |
| QTS-46091 | Gallery 2102 / Lineup B2100 // Pull & Terminate LV Cables from POD to MPZ Panel *Delete* | 2d | 2025-12-03 A | 2025-12-03 A | QTS-1030 SS | 100% | 2025-12-15 | 2025-12-16 | DH2100 | Construction | Phase 1 | IGMP | Scott Masterson | Construction | Level 2 | Rosendin Electric, Inc | 01ADMIN |  |
| QTS-46101 | Gallery 2102 / Lineup C2100 // OFCI - L2 SET IN PLACE - Eq Type # - MPZ Panel - 2 unit *Delete* | 2d | 2025-12-03 A | 2025-12-03 A | QTS-1030 SS | 100% | 2025-12-15 | 2025-12-16 | DH2100 | Construction | Phase 1 | IGMP | Scott Masterson | Construction | Level 2 | Rosendin Electric, Inc | 01ADMIN |  |
| QTS-46111 | Gallery 2102 / Lineup C2100 // Pull & Terminate LV Cables from POD to MPZ Panel *Delete* | 2d | 2025-12-03 A | 2025-12-03 A | QTS-1030 SS | 100% | 2025-12-17 | 2025-12-18 | DH2100 | Construction | Phase 1 | IGMP | Scott Masterson | Construction | Level 2 | Rosendin Electric, Inc | 01ADMIN |  |
| QTS-46121 | Gallery 2102 / Lineup D2100 // OFCI - L2 SET IN PLACE - Eq Type # - MPZ Panel - 2 unit *Delete* | 2d | 2025-12-03 A | 2025-12-03 A | QTS-1030 SS | 100% | 2025-12-17 | 2025-12-18 | DH2100 | Construction | Phase 1 | IGMP | Scott Masterson | Construction | Level 2 | Rosendin Electric, Inc | 01ADMIN |  |
| QTS-46131 | Gallery 2102 / Lineup D2100 // Pull & Terminate LV Cables from POD to MPZ Panel *Delete* | 2d | 2025-12-03 A | 2025-12-03 A | QTS-1030 SS | 100% | 2025-12-19 | 2025-12-22 | DH2100 | Construction | Phase 1 | IGMP | Scott Masterson | Construction | Level 2 | Rosendin Electric, Inc | 01ADMIN |  |
| QTS-46141 | Gallery 2102 / Lineup E2100 // OFCI - L2 SET IN PLACE - Eq Type # - MPZ Panel - 2 unit *Delete* | 2d | 2025-12-03 A | 2025-12-03 A | QTS-1030 SS | 100% | 2025-12-19 | 2025-12-22 | DH2100 | Construction | Phase 1 | IGMP | Scott Masterson | Construction | Level 2 | Rosendin Electric, Inc | 01ADMIN |  |
| QTS-46151 | Gallery 2102 / Lineup E2100 // Pull & Terminate LV Cables from POD to MPZ Panel *Delete* | 2d | 2025-12-03 A | 2025-12-03 A | QTS-1030 SS | 100% | 2025-12-23 | 2025-12-29 | DH2100 | Construction | Phase 1 | IGMP | Scott Masterson | Construction | Level 2 | Rosendin Electric, Inc | 01ADMIN |  |
| QTS-46161 | Gallery 2102 / Lineup F2100 // OFCI - L2 SET IN PLACE - Eq Type # - MPZ Panel - 2 unit *Delete* | 2d | 2025-12-03 A | 2025-12-03 A | QTS-1030 SS | 100% | 2025-12-23 | 2025-12-29 | DH2100 | Construction | Phase 1 | IGMP | Scott Masterson | Construction | Level 2 | Rosendin Electric, Inc | 01ADMIN |  |
| QTS-46171 | Gallery 2102 / Lineup F2100 // Pull & Terminate LV Cables from POD to MPZ Panel *Delete* | 2d | 2025-12-03 A | 2025-12-03 A | QTS-1030 SS | 100% | 2025-12-30 | 2025-12-31 | DH2100 | Construction | Phase 1 | IGMP | Scott Masterson | Construction | Level 2 | Rosendin Electric, Inc | 01ADMIN |  |
| QTS-46181 | Gallery 2202 / Lineup A2200 // OFCI - L2 SET IN PLACE - Eq Type # - MPZ Panel - 2 unit *Delete* | 2d | 2025-12-03 A | 2025-12-03 A | QTS-1030 SS | 100% | 2026-01-05 | 2026-01-06 | DH2100 | Construction | Phase 1 | IGMP | Scott Masterson | Construction | Level 2 | Rosendin Electric, Inc |  |  |
| QTS-46191 | Gallery 2202 / Lineup A2200 // Pull & Terminate LV Cables from POD to MPZ Panel *Delete* | 2d | 2025-12-03 A | 2025-12-03 A | QTS-1030 SS | 100% | 2026-01-07 | 2026-01-08 | DH2100 | Construction | Phase 1 | IGMP | Scott Masterson | Construction | Level 2 | Rosendin Electric, Inc |  |  |
| QTS-46201 | Gallery 2202 / Lineup B2200 // OFCI - L2 SET IN PLACE - Eq Type # - MPZ Panel - 2 unit *Delete* | 2d | 2025-12-03 A | 2025-12-03 A | QTS-1030 SS | 100% | 2026-01-09 | 2026-01-12 | DH2100 | Construction | Phase 1 | IGMP | Scott Masterson | Construction | Level 2 | Rosendin Electric, Inc |  |  |
| QTS-46211 | Gallery 2202 / Lineup B2200 // Pull & Terminate LV Cables from POD to MPZ Panel *Delete* | 2d | 2025-12-03 A | 2025-12-03 A | QTS-1030 SS | 100% | 2026-01-13 | 2026-01-14 | DH2100 | Construction | Phase 1 | IGMP | Scott Masterson | Construction | Level 2 | Rosendin Electric, Inc |  |  |
| QTS-46221 | Gallery 2202 / Lineup C2200 // OFCI - L2 SET IN PLACE - Eq Type # - MPZ Panel - 2 unit *Delete* | 2d | 2025-12-03 A | 2025-12-03 A | QTS-1030 SS | 100% | 2026-01-15 | 2026-01-16 | DH2100 | Construction | Phase 1 | IGMP | Scott Masterson | Construction | Level 2 | Rosendin Electric, Inc |  |  |
| QTS-46231 | Gallery 2202 / Lineup C2200 // Pull & Terminate LV Cables from POD to MPZ Panel *Delete* | 2d | 2025-12-03 A | 2025-12-03 A | QTS-1030 SS | 100% | 2026-01-20 | 2026-01-21 | DH2100 | Construction | Phase 1 | IGMP | Scott Masterson | Construction | Level 2 | Rosendin Electric, Inc |  |  |
| QTS-46241 | Gallery 2202 / Lineup D2200 // OFCI - L2 SET IN PLACE - Eq Type # - MPZ Panel - 2 unit *Delete* | 2d | 2025-12-03 A | 2025-12-03 A | QTS-1030 SS | 100% | 2026-01-22 | 2026-01-23 | DH2100 | Construction | Phase 1 | IGMP | Scott Masterson | Construction | Level 2 | Rosendin Electric, Inc |  |  |
| QTS-46251 | Gallery 2202 / Lineup D2200 // Pull & Terminate LV Cables from POD to MPZ Panel *Delete* | 2d | 2025-12-03 A | 2025-12-03 A | QTS-1030 SS | 100% | 2026-01-26 | 2026-01-27 | DH2100 | Construction | Phase 1 | IGMP | Scott Masterson | Construction | Level 2 | Rosendin Electric, Inc |  |  |

Notes:
- QTS-20451: allucent_notes_20251021_145627: David Wiltberger on 2025-10-21 13:10: Wall needs to be built, and wall insulated prior to install / allucent_notes_20251027_224008: David Wiltberger on 2025-10-21 13:10: Wall needs to be built, and wall insulated prior to install / allucent_notes_20251028_163138: David Wiltberger on 2025-10-21 13:10: Wall needs to be built, and wall insulated prior to install / allucent_notes_20251104_160200: David Wiltberger on 2025-10-21 13:10: Wall needs to be built, and wall insulated prior to install / allucent_notes_20251111_182405: David Wiltberger on 2025-10-21 13:10: Wall needs to be built, and wall insulated prior to install / allucent_notes_20251118_192630: David Wiltberger on 2025-10-21 13:10: Wall needs to be built, and wall insulated prior to install / Zack Goertz on 2025-11-17 13:11: Zone 3 is last priority. Framing has barely begun on level 2. Plus, a stop work has been issued. / allucent_notes_20251202_153722: David Wiltberger on 2025-10-21 13:10: Wall needs to be built, and wall insulated prior to install / Zack Goertz on 2025-11-17 13:11: Zone 3 is last priority. Framing has barely begun on level 2. Plus, a stop work has been issued. / Zack Goertz on 2025-12-01 10:37: Zone 3 is not a priority right now / allucent_notes_20251209_203830: David Wiltberger on 2025-10-21 13:10: Wall needs to be built, and wall insulated prior to install / Zack Goertz on 2025-11-17 13:11: Zone 3 is last priority. Framing has barely begun on level 2. Plus, a stop work has been issued. / Zack Goertz on 2025-12-01 10:37: Zone 3 is not a priority right now / Zack Goertz on 2025-12-09 10:54: Not a priority over zone 2. Zone 2 is behind / allucent_notes: 2025-10-21 13:10 - User: David Wiltberger - Date Added: 2025-10-21 13:10 - Note: Wall needs to be built, and wall insulated prior to install / 2025-11-17 13:11 - User: Zack Goertz - Date Added: 2025-11-17 13:11 - Note: Zone 3 is last priority. Framing ha
- QTS-45681: allucent_notes_20251118_192630: Jason Johnston on 2025-11-19T02:23:50.079Z: undo / allucent_notes_20251202_153722: Jason Johnston on 2025-11-19T02:23:50.079Z: undo / David Wiltberger on 2025-12-02 13:56: impacted by Stop work / allucent_notes_20251209_203830: Jason Johnston on 2025-11-19T02:23:50.079Z: undo / David Wiltberger on 2025-12-02 13:56: impacted by Stop work / allucent_notes: 2025-11-19T02:23:50.079Z - User: Jason Johnston - Date Added: 2025-11-19T02:23:50.079Z - Note: undo / 2025-12-02 13:56 - User: David Wiltberger - Date Added: 2025-12-02 13:56 - Note: impacted by Stop work
- QTS-45701: allucent_notes_20251118_192630: Jason Johnston on 2025-11-19T02:23:53.649Z: undo / allucent_notes_20251202_153722: Jason Johnston on 2025-11-19T02:23:53.649Z: undo / allucent_notes_20251209_203830: Jason Johnston on 2025-11-19T02:23:53.649Z: undo / allucent_notes: 2025-11-19T02:23:53.649Z - User: Jason Johnston - Date Added: 2025-11-19T02:23:53.649Z - Note: undo

| ID | Activity | Duration | Start | Finish | Predecessors | Complete | Planned start | Planned finish | Constraint | Calendar | Subcontractor | Level | Location | Project Section-1 | Phase-1-1 | Baseline | Layton Responsible Party | Project Section | Phase-1 | Allucent CSI Group |
| --- | --- | --- | --- | --- | --- | --- | --- | --- | --- | --- | --- | --- | --- | --- | --- | --- | --- | --- | --- | --- |
| QTS-46261 | Gallery 2202 / Lineup E2200 // OFCI - L2 SET IN PLACE - Eq Type # - MPZ Panel - 2 unit *Delete* | 2d | 2025-12-03 A | 2025-12-03 A | QTS-1030 SS | 100% | 2026-01-28 | 2026-01-29 |  |  | Rosendin Electric, Inc | Level 2 | DH2100 | Construction | Phase 1 | IGMP | Scott Masterson | Construction |  |  |
| QTS-46271 | Gallery 2202 / Lineup E2200 // Pull & Terminate LV Cables from POD to MPZ Panel *Delete* | 2d | 2025-12-03 A | 2025-12-03 A | QTS-1030 SS | 100% | 2026-01-30 | 2026-02-02 |  |  | Rosendin Electric, Inc | Level 2 | DH2100 | Construction | Phase 1 | IGMP | Scott Masterson | Construction |  |  |
| QTS-46281 | Gallery 2202 / Lineup F2200 // OFCI - L2 SET IN PLACE - Eq Type # - MPZ Panel - 2 unit *Delete* | 2d | 2025-12-03 A | 2025-12-03 A | QTS-1030 SS | 100% | 2025-12-10 | 2025-12-11 |  |  | Rosendin Electric, Inc | Level 2 | DH2100 | Construction | Phase 1 | IGMP | Scott Masterson | Construction |  |  |
| QTS-46291 | Gallery 2202 / Lineup F2200 // Pull & Terminate LV Cables from POD to MPZ Panel *Delete* | 2d | 2025-12-03 A | 2025-12-03 A | QTS-1030 SS | 100% | 2025-12-10 | 2025-12-11 |  |  | Rosendin Electric, Inc | Level 2 | DH2100 | Construction | Phase 1 | IGMP | Scott Masterson | Construction |  |  |
| QTS-46301 | Gallery 2302 / Lineup A2300 // OFCI - L2 SET IN PLACE - Eq Type # - MPZ Panel - 2 unit *Delete* | 2d | 2025-12-03 A | 2025-12-03 A | QTS-1030 SS | 100% | 2026-01-21 | 2026-01-22 |  |  | Rosendin Electric, Inc | Level 2 | DH2100 | Construction | Phase 1 | IGMP | Scott Masterson | Construction |  |  |
| QTS-46311 | Gallery 2302 / Lineup A2300 // Pull & Terminate LV Cables from POD to MPZ Panel *Delete* | 2d | 2025-12-03 A | 2025-12-03 A | QTS-1030 SS | 100% | 2026-02-18 | 2026-02-19 |  |  | Rosendin Electric, Inc | Level 2 | DH2100 | Construction | Phase 1 | IGMP | Scott Masterson | Construction |  |  |
| QTS-46321 | Gallery 2302 / Lineup B2300 // OFCI - L2 SET IN PLACE - Eq Type # - MPZ Panel - 2 unit *Delete* | 2d | 2025-12-03 A | 2025-12-03 A | QTS-1030 SS | 100% | 2026-01-27 | 2026-01-28 |  |  | Rosendin Electric, Inc | Level 2 | DH2100 | Construction | Phase 1 | IGMP | Scott Masterson | Construction |  |  |
| QTS-46331 | Gallery 2302 / Lineup B2300 // Pull & Terminate LV Cables from POD to MPZ Panel *Delete* | 2d | 2025-12-03 A | 2025-12-03 A | QTS-1030 SS | 100% | 2026-02-18 | 2026-02-19 |  |  | Rosendin Electric, Inc | Level 2 | DH2100 | Construction | Phase 1 | IGMP | Scott Masterson | Construction |  |  |
| QTS-46341 | Gallery 2302 / Lineup C2300 // OFCI - L2 SET IN PLACE - Eq Type # - MPZ Panel - 2 unit *Delete* | 2d | 2025-12-03 A | 2025-12-03 A | QTS-1030 SS | 100% | 2026-02-02 | 2026-02-03 |  |  | Rosendin Electric, Inc | Level 2 | DH2100 | Construction | Phase 1 | IGMP | Scott Masterson | Construction |  |  |
| QTS-46351 | Gallery 2302 / Lineup C2300 // Pull & Terminate LV Cables from POD to MPZ Panel *Delete* | 2d | 2025-12-03 A | 2025-12-03 A | QTS-1030 SS | 100% | 2026-02-18 | 2026-02-19 |  |  | Rosendin Electric, Inc | Level 2 | DH2100 | Construction | Phase 1 | IGMP | Scott Masterson | Construction |  |  |
| QTS-46361 | Gallery 2302 / Lineup D2300 // OFCI - L2 SET IN PLACE - Eq Type # - MPZ Panel - 2 unit *Delete* | 2d | 2025-12-03 A | 2025-12-03 A | QTS-1030 SS | 100% | 2026-02-06 | 2026-02-09 |  |  | Rosendin Electric, Inc | Level 2 | DH2100 | Construction | Phase 1 | IGMP | Scott Masterson | Construction |  |  |
| QTS-46371 | Gallery 2302 / Lineup D2300 // Pull & Terminate LV Cables from POD to MPZ Panel *Delete* | 2d | 2025-12-03 A | 2025-12-03 A | QTS-1030 SS | 100% | 2026-02-18 | 2026-02-19 |  |  | Rosendin Electric, Inc | Level 2 | DH2100 | Construction | Phase 1 | IGMP | Scott Masterson | Construction |  |  |
| QTS-46381 | Gallery 2302 / Lineup E2300 // OFCI - L2 SET IN PLACE - Eq Type # - MPZ Panel - 2 unit *Delete* | 2d | 2025-12-03 A | 2025-12-03 A | QTS-1030 SS | 100% | 2026-02-12 | 2026-02-13 |  |  | Rosendin Electric, Inc | Level 2 | DH2100 | Construction | Phase 1 | IGMP | Scott Masterson | Construction |  |  |
| QTS-46391 | Gallery 2302 / Lineup E2300 // Pull & Terminate LV Cables from POD to MPZ Panel *Delete* | 2d | 2025-12-03 A | 2025-12-03 A | QTS-1030 SS | 100% | 2026-02-18 | 2026-02-19 |  |  | Rosendin Electric, Inc | Level 2 | DH2100 | Construction | Phase 1 | IGMP | Scott Masterson | Construction |  |  |
| QTS-46401 | Gallery 2302 / Lineup F2300 // OFCI - L2 SET IN PLACE - Eq Type # - MPZ Panel - 2 unit *Delete* | 2d | 2025-12-03 A | 2025-12-03 A | QTS-1030 SS | 100% | 2026-02-18 | 2026-02-19 |  |  | Rosendin Electric, Inc | Level 2 | DH2100 | Construction | Phase 1 | IGMP | Scott Masterson | Construction |  |  |
| QTS-46411 | Gallery 2302 / Lineup F2300 // Pull & Terminate LV Cables from POD to MPZ Panel *Delete* | 2d | 2025-12-03 A | 2025-12-03 A | QTS-1030 SS | 100% | 2026-02-20 | 2026-02-23 |  |  | Rosendin Electric, Inc | Level 2 | DH2100 | Construction | Phase 1 | IGMP | Scott Masterson | Construction |  |  |
| QTS-50101 | Zone 1 Gridlines 1-21 / South // Set Spandrel Window Frames *Delete* | 4d | 2025-12-15 A | 2025-12-18 A | QTS-1371 SS | 100% |  |  |  |  | Giroux Glass, Inc |  |  |  |  | IGMP | Sean Waisner | Construction | Phase 2 |  |
| QTS-50511 | Zone 1 Gridlines 1-21 / South // Install Strip Glass Window Glass - Upper *Delete* | 3d | 2025-12-15 A | 2025-12-17 A | QTS-1371 SS | 100% |  |  |  |  | Performance Contracting, Inc. |  |  |  |  | IGMP | Sean Waisner | Construction | Phase 1 | 01ADMIN |
| QTS-50521 | Zone 1 Gridlines 1-21 / South // Install Strip Glass Window Exterior Caulking - Upper *Delete* | 2d | 2025-12-15 A | 2025-12-16 A | QTS-1371 SS | 100% |  |  |  |  | Performance Contracting, Inc. |  |  |  |  | IGMP | Sean Waisner | Construction | Phase 1 | 01ADMIN |
| QTS-50531 | Zone 1 Gridlines 1-21 / South // Install Strip Glass Window Interior Caulking - Upper *Delete* | 2d | 2025-12-15 A | 2025-12-16 A | QTS-1371 SS | 100% |  |  |  |  | Performance Contracting, Inc. |  |  |  |  | IGMP | Sean Waisner | Construction | Phase 1 |  |
| QTS-50541 | Zone 1 Gridlines 1-21 / South // Install Strip Glass Window Frames - Lower *Delete* | 3d | 2025-12-15 A | 2025-12-17 A | QTS-1371 SS | 100% |  |  |  |  | Performance Contracting, Inc. |  |  |  |  | IGMP | Sean Waisner | Construction | Phase 1 | 01ADMIN |
| QTS-50551 | Zone 1 Gridlines 1-21 / South // Install Strip Glass Window Glass - Lower *Delete* | 3d | 2025-12-15 A | 2025-12-17 A | QTS-1371 SS | 100% |  |  |  |  | Performance Contracting, Inc. |  |  |  |  | IGMP | Sean Waisner | Construction | Phase 1 | 01ADMIN |
| QTS-50561 | Zone 1 Gridlines 1-21 / South // Install Strip Glass Window Exterior Caulking - Lower *Delete* | 2d | 2025-12-15 A | 2025-12-16 A | QTS-1371 SS | 100% |  |  |  |  | Performance Contracting, Inc. |  |  |  |  | IGMP | Sean Waisner | Construction | Phase 1 |  |
| QTS-50571 | Zone 1 Gridlines 1-21 / South // Install Strip Glass Window Interior Caulking - Lower *Delete* | 2d | 2025-12-15 A | 2025-12-16 A | QTS-1371 SS | 100% |  |  |  |  | Performance Contracting, Inc. |  |  |  |  | IGMP | Sean Waisner | Construction | Phase 1 |  |
| QTS-50701 | Zone 1 Gridlines 11-21 / South // Frame for Metal Panels *Delete* | 8d | 2025-12-15 A | 2025-12-29 A | QTS-1371 SS | 100% |  |  |  |  | Performance Contracting, Inc. |  |  | Construction |  | IGMP | Sean Waisner | Construction | Phase 1 |  |
| QTS-50711 | Zone 1 Gridlines 11-21 / South // Install Metal Panels *Delete* | 10d | 2025-12-15 A | 2025-12-29 A | QTS-1371 SS | 100% | 2025-12-15 | 2025-12-31 |  |  | True Metal Solutions, LLC |  |  | Construction |  | IGMP | Sean Waisner | Construction | Phase 1 |  |
| QTS-14421 | Restrooms #0157 // Field Measure for Countertops *Delete* | 1d | 2026-01-05 A | 2026-01-05 A | QTS-1030 SS | 100% | 2026-01-07 | 2026-01-07 |  | QTS-PHX3 DC1 - 6 day w/ Holidays |  | Level 1 | FOH |  |  | IGMP | Sean Waisner | Construction | Phase 1 |  |
| QTS-14591 | Restrooms #0157 // Fabricate & Delivery Countertops *Delete* | 10d | 2026-01-05 A | 2026-01-05 A | QTS-1030 SS | 100% | 2026-01-07 | 2026-01-17 |  | QTS-PHX3 DC1 - 6 day w/ Holidays |  | Level 1 | FOH |  |  | IGMP | Sean Waisner | Construction | Phase 1 |  |
| QTS-17681 | Gallery 1102 / Lineup A1100 // Pull LV Cables from ATS to COD *Delete* | 2d | 2026-01-05 A | 2026-01-05 A | QTS-1030 SS | 100% | 2026-01-07 | 2026-01-08 |  | QTS-PHX3 DC1 - 6 day w/ Holidays | Rosendin Electric, Inc | Level 1 | DH1100 | Construction | Phase 1 | IGMP | Scott Masterson | Construction |  | 01ADMIN |
| QTS-17721 | Gallery 2202 / Lineup A2200 // Pull LV Cables from ATS to COD *Delete* | 2d | 2026-01-05 A | 2026-01-05 A | QTS-1030 SS | 100% | 2026-01-30 | 2026-01-31 |  | QTS-PHX3 DC1 - 6 day w/ Holidays | Rosendin Electric, Inc |  | DH2200 | Construction | Phase 2 | IGMP | Scott Masterson | Construction |  |  |
| QTS-17761 | Gallery 1202 / Lineup A1200 // Pull LV Cables from ATS to COD *Delete* | 2d | 2026-01-05 A | 2026-01-05 A | QTS-1030 SS | 100% | 2026-01-30 | 2026-01-31 |  | QTS-PHX3 DC1 - 6 day w/ Holidays | Rosendin Electric, Inc |  | DH1200 | Construction | Phase 2 | IGMP | Scott Masterson | Construction |  |  |
| QTS-17801 | Gallery 2302 / Lineup A2300 // Pull LV Cables from ATS to COD *Delete* | 2d | 2026-01-05 A | 2026-01-05 A | QTS-1030 SS | 100% | 2026-04-24 | 2026-04-25 |  | QTS-PHX3 DC1 - 6 day w/ Holidays | Rosendin Electric, Inc |  | DH2300 | Construction | Phase 3 | IGMP | Scott Masterson | Construction |  |  |
| QTS-17841 | Gallery 1302 / Lineup A1300 // Pull LV Cables from ATS to COD *Delete* | 2d | 2026-01-05 A | 2026-01-05 A | QTS-1030 SS | 100% | 2026-02-28 | 2026-03-02 |  | QTS-PHX3 DC1 - 6 day w/ Holidays | Rosendin Electric, Inc |  | DH1300 | Construction | Phase 3 | IGMP | Scott Masterson | Construction |  |  |
| QTS-21961 | Fire Riser #0171 // Install VESDA *Delete* | 2d | 2026-01-05 A | 2026-01-05 A | QTS-1030 SS | 100% | 2026-01-07 | 2026-01-08 |  | QTS-PHX3 DC1 - 6 day w/ Holidays |  | Level 1 | FOH |  |  | IGMP | Dave Wiltberger | Construction | Phase 1 | 01ADMIN |
| QTS-22161 | Zone 2 Gridline 21-30 / Corridor 2010 // Install VESDA *Delete* | 5d | 2026-01-05 A | 2026-01-05 A | QTS-1030 SS | 100% | 2026-01-07 | 2026-01-12 |  | QTS-PHX3 DC1 - 6 day w/ Holidays |  | Level 2 |  |  |  | IGMP | Dave Wiltberger | Construction |  |  |
| QTS-24941 | Gallery 2102 / Lineup A2100 // Pull LV Cables from ATS to COD *Delete* | 2d | 2026-01-05 A | 2026-01-05 A | QTS-1030 SS | 100% | 2026-01-10 | 2026-01-12 |  | QTS-PHX3 DC1 - 6 day w/ Holidays | Rosendin Electric, Inc | Level 2 | DH2100 | Construction | Phase 1 | IGMP | Scott Masterson | Construction |  | 01ADMIN |
| QTS-28931 | Telecom Riser #2069 // Install AC Unit (Early Access) *Delete* | 2d | 2026-01-05 A | 2026-01-05 A | QTS-1030 SS | 100% | 2026-01-07 | 2026-01-08 |  |  | Bel-Aire Mechanical, LLC | Level 2 | BOH | Construction | Phase 1 | IGMP | Dave Wiltberger | Construction |  | 01ADMIN |
| QTS-29011 | Fire Pump Room #1063 // Install VESDA *Delete* | 2d | 2026-01-05 A | 2026-01-05 A | QTS-1030 SS | 100% | 2026-01-07 | 2026-01-08 |  | QTS-PHX3 DC1 - 6 day w/ Holidays |  | Level 1 | BOH |  |  | IGMP | Dave Wiltberger | Construction | Phase 1 |  |
| QTS-29331 | Fire Pump Room #2063 // Install VESDA *Delete* | 2d | 2026-01-05 A | 2026-01-05 A | QTS-1030 SS | 100% | 2026-01-07 | 2026-01-08 |  | QTS-PHX3 DC1 - 6 day w/ Holidays |  | Level 2 | BOH |  |  | IGMP | Dave Wiltberger | Construction | Phase 1 | 01ADMIN |
| QTS-30161 | Fire Pump Room #1063 // Install Fire Pump *Delete* | 2d | 2026-01-05 A | 2026-01-06 A | QTS-1371 SS | 100% |  |  |  |  | Olympic West Fire Protection | Level 1 | BOH |  |  | IGMP | Dave Wiltberger | Construction | Phase 1 |  |
| QTS-30381 | Fire Pump Room #2063 // Install Fire Pump *Delete* | 2d | 2026-01-05 A | 2026-01-05 A | QTS-1030 SS | 100% | 2026-01-07 | 2026-01-08 |  | QTS-PHX3 DC1 - 6 day w/ Holidays | Olympic West Fire Protection | Level 2 | BOH |  |  | IGMP | Dave Wiltberger | Construction | Phase 1 | 01ADMIN |
| QTS-42261 | Telecom Riser #1069 // Install AC Unit (Early Access) *Delete* | 2d | 2026-01-05 A | 2026-01-05 A | QTS-1030 SS | 100% | 2026-01-12 | 2026-01-13 | start on or after 2026-01-12 | QTS-PHX3 DC1 - 6 day w/ Holidays | Bel-Aire Mechanical, LLC | Level 1 | BOH | Construction | Phase 1 | IGMP | Dave Wiltberger | Construction |  | 01ADMIN |
| QTS-6341 | Gallery 2102 / Lineup B2100 // Pull LV Cables from ATS to COD *Delete* | 4d | 2026-01-05 A | 2026-01-05 A | QTS-1030 SS | 100% | 2026-01-15 | 2026-01-20 |  | QTS-PHX3 DC1 - 6 day w/ Holidays | Rosendin Electric, Inc | Level 2 | DH2100 | Construction | Phase 1 | IGMP | Scott Masterson | Construction |  | 01ADMIN |
| QTS-7941 | Gallery 2102 / Lineup C2100 // Pull LV Cables from ATS to COD *Delete* | 2d | 2026-01-05 A | 2026-01-05 A | QTS-1030 SS | 100% | 2026-01-24 | 2026-01-26 |  | QTS-PHX3 DC1 - 6 day w/ Holidays | Rosendin Electric, Inc | Level 2 | DH2100 | Construction | Phase 1 | IGMP | Scott Masterson | Construction |  | 01ADMIN |
| QTS-7961 | Gallery 2102 / Lineup D2100 // Pull LV Cables from ATS to COD *Delete* | 2d | 2026-01-05 A | 2026-01-05 A | QTS-1030 SS | 100% | 2026-01-24 | 2026-01-26 |  | QTS-PHX3 DC1 - 6 day w/ Holidays | Rosendin Electric, Inc | Level 2 | DH2100 | Construction | Phase 1 | IGMP | Scott Masterson | Construction |  | 01ADMIN |
| QTS-7981 | Gallery 2102 / Lineup E2100 // Pull LV Cables from ATS to COD *Delete* | 2d | 2026-01-05 A | 2026-01-05 A | QTS-1030 SS | 100% | 2026-02-02 | 2026-02-03 |  | QTS-PHX3 DC1 - 6 day w/ Holidays | Rosendin Electric, Inc | Level 2 | DH2100 | Construction | Phase 1 | IGMP | Scott Masterson | Construction |  |  |
| QTS-8001 | Gallery 2102 / Lineup F2100 // Pull LV Cables from ATS to COD *Delete* | 2d | 2026-01-05 A | 2026-01-05 A | QTS-1030 SS | 100% | 2026-02-02 | 2026-02-03 |  | QTS-PHX3 DC1 - 6 day w/ Holidays | Rosendin Electric, Inc | Level 2 | DH2100 | Construction | Phase 1 | IGMP | Scott Masterson | Construction |  |  |
| QTS-8021 | Gallery 1102 / Lineup B1100 // Pull LV Cables from ATS to COD *Delete* | 2d | 2026-01-05 A | 2026-01-05 A | QTS-1030 SS | 100% | 2026-01-23 | 2026-01-24 |  | QTS-PHX3 DC1 - 6 day w/ Holidays | Rosendin Electric, Inc | Level 1 | DH1100 | Construction | Phase 1 | IGMP | Scott Masterson | Construction |  | 01ADMIN |
| QTS-8041 | Gallery 1102 / Lineup C1100 // Pull LV Cables from ATS to COD *Delete* | 2d | 2026-01-05 A | 2026-01-05 A | QTS-1030 SS | 100% | 2026-01-24 | 2026-01-26 |  | QTS-PHX3 DC1 - 6 day w/ Holidays | Rosendin Electric, Inc | Level 1 | DH1100 | Construction | Phase 1 | IGMP | Scott Masterson | Construction |  |  |
| QTS-8061 | Gallery 1102 / Lineup D1100 // Pull LV Cables from ATS to COD *Delete* | 2d | 2026-01-05 A | 2026-01-05 A | QTS-1030 SS | 100% | 2026-01-27 | 2026-01-28 |  | QTS-PHX3 DC1 - 6 day w/ Holidays | Rosendin Electric, Inc | Level 1 | DH1100 | Construction | Phase 1 | IGMP | Scott Masterson | Construction |  |  |
| QTS-8081 | Gallery 1102 / Lineup E1100 // Pull LV Cables from ATS to COD *Delete* | 2d | 2026-01-05 A | 2026-01-05 A | QTS-1030 SS | 100% | 2026-01-31 | 2026-02-02 |  | QTS-PHX3 DC1 - 6 day w/ Holidays | Rosendin Electric, Inc | Level 1 | DH1100 | Construction | Phase 1 | IGMP | Scott Masterson | Construction |  |  |
| QTS-8101 | Gallery 1102 / Lineup F1100 // Pull LV Cables from ATS to COD *Delete* | 2d | 2026-01-05 A | 2026-01-05 A | QTS-1030 SS | 100% | 2026-02-02 | 2026-02-03 |  | QTS-PHX3 DC1 - 6 day w/ Holidays | Rosendin Electric, Inc | Level 1 | DH1100 | Construction | Phase 1 | IGMP | Scott Masterson | Construction |  |  |
| QTS-8121 | Gallery 2202 / Lineup B2200 // Pull LV Cables from ATS to COD *Delete* | 2d | 2026-01-05 A | 2026-01-05 A | QTS-1030 SS | 100% | 2026-02-04 | 2026-02-05 |  | QTS-PHX3 DC1 - 6 day w/ Holidays | Rosendin Electric, Inc |  | DH2200 | Construction | Phase 2 | IGMP | Scott Masterson | Construction |  |  |
| QTS-8141 | Gallery 2202 / Lineup C2200 // Pull LV Cables from ATS to COD *Delete* | 2d | 2026-01-05 A | 2026-01-05 A | QTS-1030 SS | 100% | 2026-02-09 | 2026-02-10 |  | QTS-PHX3 DC1 - 6 day w/ Holidays | Rosendin Electric, Inc |  | DH2200 | Construction | Phase 2 | IGMP | Scott Masterson | Construction |  |  |
| QTS-8161 | Gallery 2202 / Lineup D2200 // Pull LV Cables from ATS to COD *Delete* | 2d | 2026-01-05 A | 2026-01-05 A | QTS-1030 SS | 100% | 2026-02-13 | 2026-02-14 |  | QTS-PHX3 DC1 - 6 day w/ Holidays | Rosendin Electric, Inc |  | DH2200 | Construction | Phase 2 | IGMP | Scott Masterson | Construction |  |  |
| QTS-8181 | Gallery 2202 / Lineup E2200 // Pull LV Cables from ATS to COD *Delete* | 2d | 2026-01-05 A | 2026-01-05 A | QTS-1030 SS | 100% | 2026-02-18 | 2026-02-19 |  | QTS-PHX3 DC1 - 6 day w/ Holidays | Rosendin Electric, Inc |  | DH2200 | Construction | Phase 2 | IGMP | Scott Masterson | Construction |  |  |
| QTS-8201 | Gallery 2202 / Lineup F2200 // Pull LV Cables from ATS to COD *Delete* | 2d | 2026-01-05 A | 2026-01-05 A | QTS-1030 SS | 100% | 2026-02-23 | 2026-02-24 |  | QTS-PHX3 DC1 - 6 day w/ Holidays | Rosendin Electric, Inc |  | DH2200 | Construction | Phase 2 | IGMP | Scott Masterson | Construction |  |  |
| QTS-8221 | Gallery 1202 / Lineup B1200 // Pull LV Cables from ATS to COD *Delete* | 2d | 2026-01-05 A | 2026-01-05 A | QTS-1030 SS | 100% | 2026-01-30 | 2026-01-31 |  | QTS-PHX3 DC1 - 6 day w/ Holidays | Rosendin Electric, Inc |  | DH1200 | Construction | Phase 2 | IGMP | Scott Masterson | Construction |  |  |
| QTS-8241 | Gallery 1202 / Lineup C1200 // Pull LV Cables from ATS to COD *Delete* | 2d | 2026-01-05 A | 2026-01-05 A | QTS-1030 SS | 100% | 2026-02-07 | 2026-02-09 |  | QTS-PHX3 DC1 - 6 day w/ Holidays | Rosendin Electric, Inc |  | DH1200 | Construction | Phase 2 | IGMP | Scott Masterson | Construction |  |  |
| QTS-8261 | Gallery 1202 / Lineup D1200 // Pull LV Cables from ATS to COD *Delete* | 2d | 2026-01-05 A | 2026-01-05 A | QTS-1030 SS | 100% | 2026-02-07 | 2026-02-09 |  | QTS-PHX3 DC1 - 6 day w/ Holidays | Rosendin Electric, Inc |  | DH1200 | Construction | Phase 2 | IGMP | Scott Masterson | Construction |  |  |
| QTS-8281 | Gallery 1202 / Lineup E1200 // Pull LV Cables from ATS to COD *Delete* | 2d | 2026-01-05 A | 2026-01-05 A | QTS-1030 SS | 100% | 2026-02-16 | 2026-02-17 |  | QTS-PHX3 DC1 - 6 day w/ Holidays | Rosendin Electric, Inc |  | DH1200 | Construction | Phase 2 | IGMP | Scott Masterson | Construction |  |  |
| QTS-8301 | Gallery 1202 / Lineup F1200 // Pull LV Cables from ATS to COD *Delete* | 2d | 2026-01-05 A | 2026-01-05 A | QTS-1030 SS | 100% | 2026-02-16 | 2026-02-17 |  | QTS-PHX3 DC1 - 6 day w/ Holidays | Rosendin Electric, Inc |  | DH1200 | Construction | Phase 2 | IGMP | Scott Masterson | Construction |  |  |
| QTS-8321 | Gallery 2302 / Lineup B2300 // Pull LV Cables from ATS to COD *Delete* | 2d | 2026-01-05 A | 2026-01-05 A | QTS-1030 SS | 100% | 2026-04-24 | 2026-04-25 |  | QTS-PHX3 DC1 - 6 day w/ Holidays | Rosendin Electric, Inc |  | DH2300 | Construction | Phase 3 | IGMP | Scott Masterson | Construction |  |  |
| QTS-8341 | Gallery 2302 / Lineup C2300 // Pull LV Cables from ATS to COD *Delete* | 2d | 2026-01-05 A | 2026-01-05 A | QTS-1030 SS | 100% | 2026-05-02 | 2026-05-04 |  | QTS-PHX3 DC1 - 6 day w/ Holidays | Rosendin Electric, Inc |  | DH2300 | Construction | Phase 3 | IGMP | Scott Masterson | Construction |  |  |
| QTS-8361 | Gallery 2302 / Lineup D2300 // Pull LV Cables from ATS to COD *Delete* | 2d | 2026-01-05 A | 2026-01-05 A | QTS-1030 SS | 100% | 2026-05-02 | 2026-05-04 |  | QTS-PHX3 DC1 - 6 day w/ Holidays | Rosendin Electric, Inc |  | DH2300 | Construction | Phase 3 | IGMP | Scott Masterson | Construction |  |  |
| QTS-8381 | Gallery 2302 / Lineup E2300 // Pull LV Cables from ATS to COD *Delete* | 2d | 2026-01-05 A | 2026-01-05 A | QTS-1030 SS | 100% | 2026-05-11 | 2026-05-12 |  | QTS-PHX3 DC1 - 6 day w/ Holidays | Rosendin Electric, Inc |  | DH2300 | Construction | Phase 3 | IGMP | Scott Masterson | Construction |  |  |
| QTS-8401 | Gallery 2302 / Lineup F2300 // Pull LV Cables from ATS to COD *Delete* | 2d | 2026-01-05 A | 2026-01-05 A | QTS-1030 SS | 100% | 2026-05-11 | 2026-05-12 |  | QTS-PHX3 DC1 - 6 day w/ Holidays | Rosendin Electric, Inc |  | DH2300 | Construction | Phase 3 | IGMP | Scott Masterson | Construction |  |  |
| QTS-8421 | Gallery 1302 / Lineup B1300 // Pull LV Cables from ATS to COD *Delete* | 2d | 2026-01-05 A | 2026-01-05 A | QTS-1030 SS | 100% | 2026-02-28 | 2026-03-02 |  | QTS-PHX3 DC1 - 6 day w/ Holidays | Rosendin Electric, Inc |  | DH1300 | Construction | Phase 3 | IGMP | Scott Masterson | Construction |  |  |
| QTS-8441 | Gallery 1302 / Lineup C1300 // Pull LV Cables from ATS to COD *Delete* | 2d | 2026-01-05 A | 2026-01-05 A | QTS-1030 SS | 100% | 2026-03-09 | 2026-03-10 |  | QTS-PHX3 DC1 - 6 day w/ Holidays | Rosendin Electric, Inc |  | DH1300 | Construction | Phase 3 | IGMP | Scott Masterson | Construction |  |  |
| QTS-8461 | Gallery 1302 / Lineup D1300 // Pull LV Cables from ATS to COD *Delete* | 2d | 2026-01-05 A | 2026-01-05 A | QTS-1030 SS | 100% | 2026-03-09 | 2026-03-10 |  | QTS-PHX3 DC1 - 6 day w/ Holidays | Rosendin Electric, Inc |  | DH1300 | Construction | Phase 3 | IGMP | Scott Masterson | Construction |  |  |

Notes:
- QTS-21961: allucent_notes_20251230_164549: Scott Masterson on 2025-12-16 16:03: There are still other over head activitives that need completed. Mech, Elct. / Jason Johnston on 2025-12-30 10:34: Delete Activity - There is only smoke detectors in fire riser room / allucent_notes_20251216_165335: Scott Masterson on 2025-12-16 16:03: There are still other over head activitives that need completed. Mech, Elct. / allucent_notes: 2025-12-16 16:03 - User: Scott Masterson - Date Added: 2025-12-16 16:03 - Note: There are still other over head activitives that need completed. Mech, Elct. / 2025-12-30 10:34 - User: Jason Johnston - Date Added: 2025-12-30 10:34 - Note: Delete Activity

| ID | Activity | Duration | Start | Finish | Predecessors | Complete | Planned start | Planned finish | Calendar | Subcontractor | Location | Project Section-1 | Phase-1-1 | Baseline | Layton Responsible Party | Project Section | Notes | Allucent CSI Group | Vendor Responsible Party |
| --- | --- | --- | --- | --- | --- | --- | --- | --- | --- | --- | --- | --- | --- | --- | --- | --- | --- | --- | --- |
| QTS-8481 | Gallery 1302 / Lineup E1300 // Pull LV Cables from ATS to COD *Delete* | 2d | 2026-01-05 A | 2026-01-05 A | QTS-1030 SS | 100% | 2026-03-17 | 2026-03-18 | QTS-PHX3 DC1 - 6 day w/ Holidays | Rosendin Electric, Inc | DH1300 | Construction | Phase 3 | IGMP | Scott Masterson | Construction |  |  |  |
| QTS-8501 | Gallery 1302 / Lineup F1300 // Pull LV Cables from ATS to COD *Delete* | 2d | 2026-01-05 A | 2026-01-05 A | QTS-1030 SS | 100% | 2026-03-17 | 2026-03-18 | QTS-PHX3 DC1 - 6 day w/ Holidays | Rosendin Electric, Inc | DH1300 | Construction | Phase 3 | IGMP | Scott Masterson | Construction |  |  |  |
| DC1-POD-AC-L2-1000 | DH2100 COMP-A21-01 L2 Checklist *Delete* | 3d | 2026-01-06 A | 2026-01-06 A | QTS-1030 SS | 100% | 2025-12-18 | 2025-12-22 |  |  |  |  |  |  |  |  | Do these need a L2 as they are Factory | 01ADMIN | CAP |
| DC1-POD-AC-L2-1010 | DH2100 FAN-A21-01 L2 Checklist *Delete* | 3d | 2026-01-06 A | 2026-01-06 A | QTS-1030 SS | 100% | 2025-12-18 | 2025-12-22 |  |  |  |  |  |  |  |  |  | 01ADMIN | CAP |
| DC1-POD-AC-L2-1020 | DH2100 COMP-A21-02 L2 Checklist *Delete* | 3d | 2026-01-06 A | 2026-01-06 A | QTS-1030 SS | 100% | 2025-12-18 | 2025-12-22 |  |  |  |  |  |  |  |  |  | 01ADMIN | CAP |
| DC1-POD-AC-L2-1030 | DH2100 FAN-A21-02 L2 Checklist *Delete* | 3d | 2026-01-06 A | 2026-01-06 A | QTS-1030 SS | 100% | 2025-12-18 | 2025-12-22 |  |  |  |  |  |  |  |  |  | 01ADMIN | CAP |
| DC1-POD-AC-L2-1040 | DH2100 COMP-B21-01 L2 Checklist *Delete* | 3d | 2026-01-06 A | 2026-01-06 A | QTS-1030 SS | 100% | 2025-12-23 | 2025-12-30 |  |  |  |  |  |  |  |  |  | 01ADMIN | CAP |
| DC1-POD-AC-L2-1050 | DH2100 FAN-B21-01 L2 Checklist *Delete* | 3d | 2026-01-06 A | 2026-01-06 A | QTS-1030 SS | 100% | 2025-12-23 | 2025-12-30 |  |  |  |  |  |  |  |  |  | 01ADMIN | CAP |
| DC1-POD-AC-L2-1060 | DH2100 COMP-B21-02 L2 Checklist *Delete* | 3d | 2026-01-06 A | 2026-01-06 A | QTS-1030 SS | 100% | 2025-12-23 | 2025-12-30 |  |  |  |  |  |  |  |  |  | 01ADMIN | CAP |
| DC1-POD-AC-L2-1070 | DH2100 FAN-B21-02 L2 Checklist *Delete* | 3d | 2026-01-06 A | 2026-01-06 A | QTS-1030 SS | 100% | 2025-12-23 | 2025-12-30 |  |  |  |  |  |  |  |  |  | 01ADMIN | CAP |
| DC1-POD-AC-L2-1080 | DH2100 COMP-C21-01 L2 Checklist *Delete* | 3d | 2026-01-06 A | 2026-01-06 A | QTS-1030 SS | 100% | 2026-01-08 | 2026-01-12 |  |  |  |  |  |  |  |  |  | 01ADMIN | CAP |
| DC1-POD-AC-L2-1090 | DH2100 FAN-C21-01 L2 Checklist *Delete* | 3d | 2026-01-06 A | 2026-01-06 A | QTS-1030 SS | 100% | 2026-01-08 | 2026-01-12 |  |  |  |  |  |  |  |  |  | 01ADMIN | CAP |
| DC1-POD-AC-L2-1100 | DH2100 COMP-C21-02 L2 Checklist *Delete* | 3d | 2026-01-06 A | 2026-01-06 A | QTS-1030 SS | 100% | 2026-01-08 | 2026-01-12 |  |  |  |  |  |  |  |  |  | 01ADMIN | CAP |
| DC1-POD-AC-L2-1110 | DH2100 FAN-C21-02 L2 Checklist *Delete* | 3d | 2026-01-06 A | 2026-01-06 A | QTS-1030 SS | 100% | 2026-01-08 | 2026-01-12 |  |  |  |  |  |  |  |  |  | 01ADMIN | CAP |
| DC1-POD-AC-L2-1120 | DH2100 COMP-D21-01 L2 Checklist *Delete* | 3d | 2026-01-06 A | 2026-01-06 A | QTS-1030 SS | 100% | 2026-01-13 | 2026-01-15 |  |  |  |  |  |  |  |  |  | 01ADMIN | CAP |
| DC1-POD-AC-L2-1130 | DH2100 FAN-D21-01 L2 Checklist *Delete* | 3d | 2026-01-06 A | 2026-01-06 A | QTS-1030 SS | 100% | 2026-01-13 | 2026-01-15 |  |  |  |  |  |  |  |  |  | 01ADMIN | CAP |
| DC1-POD-AC-L2-1140 | DH2100 COMP-D21-02 L2 Checklist *Delete* | 3d | 2026-01-06 A | 2026-01-06 A | QTS-1030 SS | 100% | 2026-01-13 | 2026-01-15 |  |  |  |  |  |  |  |  |  | 01ADMIN | CAP |
| DC1-POD-AC-L2-1150 | DH2100 FAN-D21-02 L2 Checklist *Delete* | 3d | 2026-01-06 A | 2026-01-06 A | QTS-1030 SS | 100% | 2026-01-13 | 2026-01-15 |  |  |  |  |  |  |  |  |  | 01ADMIN | CAP |
| DC1-POD-AC-L2-1160 | DH2100 COMP-E21-01 L2 Checklist *Delete* | 3d | 2026-01-06 A | 2026-01-06 A | QTS-1030 SS | 100% | 2026-01-16 | 2026-01-21 |  |  |  |  |  |  |  |  |  | 01ADMIN | CAP |
| DC1-POD-AC-L2-1170 | DH2100 FAN-E21-01 L2 Checklist *Delete* | 3d | 2026-01-06 A | 2026-01-06 A | QTS-1030 SS | 100% | 2026-01-16 | 2026-01-21 |  |  |  |  |  |  |  |  |  | 01ADMIN | CAP |
| DC1-POD-AC-L2-1180 | DH2100 COMP-E21-02 L2 Checklist *Delete* | 3d | 2026-01-06 A | 2026-01-06 A | QTS-1030 SS | 100% | 2026-01-16 | 2026-01-21 |  |  |  |  |  |  |  |  |  | 01ADMIN | CAP |
| DC1-POD-AC-L2-1190 | DH2100 FAN-E21-02 L2 Checklist *Delete* | 3d | 2026-01-06 A | 2026-01-06 A | QTS-1030 SS | 100% | 2026-01-16 | 2026-01-21 |  |  |  |  |  |  |  |  |  | 01ADMIN | CAP |
| DC1-POD-AC-L2-1200 | DH2100 COMP-F21-01 L2 Checklist *Delete* | 3d | 2026-01-06 A | 2026-01-06 A | QTS-1030 SS | 100% | 2026-01-22 | 2026-01-26 |  |  |  |  |  |  |  |  |  | 01ADMIN | CAP |
| DC1-POD-AC-L2-1210 | DH2100 FAN-F21-01 L2 Checklist *Delete* | 3d | 2026-01-06 A | 2026-01-06 A | QTS-1030 SS | 100% | 2026-01-22 | 2026-01-26 |  |  |  |  |  |  |  |  |  | 01ADMIN | CAP |
| DC1-POD-AC-L2-1220 | DH2100 COMP-F21-02 L2 Checklist *Delete* | 3d | 2026-01-06 A | 2026-01-06 A | QTS-1030 SS | 100% | 2026-01-22 | 2026-01-26 |  |  |  |  |  |  |  |  |  | 01ADMIN | CAP |
| DC1-POD-AC-L2-1230 | DH2100 FAN-F21-02 L2 Checklist *Delete* | 3d | 2026-01-06 A | 2026-01-06 A | QTS-1030 SS | 100% | 2026-01-22 | 2026-01-26 |  |  |  |  |  |  |  |  |  | 01ADMIN | CAP |
| DC1-POD-AC-L2-1240 | DH2100 COMP-R21-01 L2 Checklist *Delete* | 3d | 2026-01-06 A | 2026-01-06 A | QTS-1030 SS | 100% | 2026-01-27 | 2026-01-29 |  |  |  |  |  |  |  |  |  |  | CAP |
| DC1-POD-AC-L2-1250 | DH2100 FAN-R21-01 L2 Checklist *Delete* | 3d | 2026-01-06 A | 2026-01-06 A | QTS-1030 SS | 100% | 2026-01-27 | 2026-01-29 |  |  |  |  |  |  |  |  |  |  | CAP |
| DC1-POD-AC-L2-1260 | DH2100 COMP-R21-02 L2 Checklist *Delete* | 3d | 2026-01-06 A | 2026-01-06 A | QTS-1030 SS | 100% | 2026-01-27 | 2026-01-29 |  |  |  |  |  |  |  |  |  |  | CAP |
| DC1-POD-AC-L2-1270 | DH2100 FAN-R21-02 L2 Checklist *Delete* | 3d | 2026-01-06 A | 2026-01-06 A | QTS-1030 SS | 100% | 2026-01-27 | 2026-01-29 |  |  |  |  |  |  |  |  |  |  | CAP |
| DC1-POD-AC-L2-2000 | DH1100 COMP-A11-01 L2 Checklist *Delete* | 3d | 2026-01-06 A | 2026-01-06 A | QTS-1030 SS | 100% | 2025-12-22 | 2025-12-29 |  |  |  |  |  |  |  |  |  | 01ADMIN | CAP |
| DC1-POD-AC-L2-2010 | DH1100 FAN-A11-01 L2 Checklist *Delete* | 3d | 2026-01-06 A | 2026-01-06 A | QTS-1030 SS | 100% | 2025-12-22 | 2025-12-29 |  |  |  |  |  |  |  |  |  | 01ADMIN | CAP |
| DC1-POD-AC-L2-2020 | DH1100 COMP-A11-02 L2 Checklist *Delete* | 3d | 2026-01-06 A | 2026-01-06 A | QTS-1030 SS | 100% | 2025-12-22 | 2025-12-29 |  |  |  |  |  |  |  |  |  | 01ADMIN | CAP |
| DC1-POD-AC-L2-2030 | DH1100 FAN-A11-02 L2 Checklist *Delete* | 3d | 2026-01-06 A | 2026-01-06 A | QTS-1030 SS | 100% | 2025-12-22 | 2025-12-29 |  |  |  |  |  |  |  |  |  | 01ADMIN | CAP |
| DC1-POD-AC-L2-2040 | DH1100 COMP-B11-01 L2 Checklist *Delete* | 3d | 2026-01-06 A | 2026-01-06 A | QTS-1030 SS | 100% | 2026-01-09 | 2026-01-13 |  |  |  |  |  |  |  |  |  | 01ADMIN | CAP |
| DC1-POD-AC-L2-2050 | DH1100 FAN-B11-01 L2 Checklist *Delete* | 3d | 2026-01-06 A | 2026-01-06 A | QTS-1030 SS | 100% | 2026-01-09 | 2026-01-13 |  |  |  |  |  |  |  |  |  | 01ADMIN | CAP |
| DC1-POD-AC-L2-2060 | DH1100 COMP-B11-02 L2 Checklist *Delete* | 3d | 2026-01-06 A | 2026-01-06 A | QTS-1030 SS | 100% | 2026-01-09 | 2026-01-13 |  |  |  |  |  |  |  |  |  | 01ADMIN | CAP |
| DC1-POD-AC-L2-2070 | DH1100 FAN-B11-02 L2 Checklist *Delete* | 3d | 2026-01-06 A | 2026-01-06 A | QTS-1030 SS | 100% | 2026-01-09 | 2026-01-13 |  |  |  |  |  |  |  |  |  | 01ADMIN | CAP |
| DC1-POD-AC-L2-2080 | DH1100 COMP-C11-01 L2 Checklist *Delete* | 3d | 2026-01-06 A | 2026-01-06 A | QTS-1030 SS | 100% | 2026-01-14 | 2026-01-16 |  |  |  |  |  |  |  |  |  | 01ADMIN | CAP |
| DC1-POD-AC-L2-2090 | DH1100 FAN-C11-01 L2 Checklist *Delete* | 3d | 2026-01-06 A | 2026-01-06 A | QTS-1030 SS | 100% | 2026-01-14 | 2026-01-16 |  |  |  |  |  |  |  |  |  | 01ADMIN | CAP |
| DC1-POD-AC-L2-2100 | DH1100 COMP-C11-02 L2 Checklist *Delete* | 3d | 2026-01-06 A | 2026-01-06 A | QTS-1030 SS | 100% | 2026-01-14 | 2026-01-16 |  |  |  |  |  |  |  |  |  | 01ADMIN | CAP |
| DC1-POD-AC-L2-2110 | DH1100 FAN-C11-02 L2 Checklist *Delete* | 3d | 2026-01-06 A | 2026-01-06 A | QTS-1030 SS | 100% | 2026-01-14 | 2026-01-16 |  |  |  |  |  |  |  |  |  | 01ADMIN | CAP |
| DC1-POD-AC-L2-2120 | DH1100 COMP-D11-01 L2 Checklist *Delete* | 3d | 2026-01-06 A | 2026-01-06 A | QTS-1030 SS | 100% | 2026-01-20 | 2026-01-22 |  |  |  |  |  |  |  |  |  | 01ADMIN | CAP |
| DC1-POD-AC-L2-2130 | DH1100 FAN-D11-01 L2 Checklist *Delete* | 3d | 2026-01-06 A | 2026-01-06 A | QTS-1030 SS | 100% | 2026-01-20 | 2026-01-22 |  |  |  |  |  |  |  |  |  | 01ADMIN | CAP |
| DC1-POD-AC-L2-2140 | DH1100 COMP-D11-02 L2 Checklist *Delete* | 3d | 2026-01-06 A | 2026-01-06 A | QTS-1030 SS | 100% | 2026-01-20 | 2026-01-22 |  |  |  |  |  |  |  |  |  | 01ADMIN | CAP |
| DC1-POD-AC-L2-2150 | DH1100 FAN-D11-02 L2 Checklist *Delete* | 3d | 2026-01-06 A | 2026-01-06 A | QTS-1030 SS | 100% | 2026-01-20 | 2026-01-22 |  |  |  |  |  |  |  |  |  | 01ADMIN | CAP |
| DC1-POD-AC-L2-2160 | DH1100 COMP-E11-01 L2 Checklist *Delete* | 3d | 2026-01-06 A | 2026-01-06 A | QTS-1030 SS | 100% | 2026-01-23 | 2026-01-27 |  |  |  |  |  |  |  |  |  | 01ADMIN | CAP |
| DC1-POD-AC-L2-2170 | DH1100 FAN-E11-01 L2 Checklist *Delete* | 3d | 2026-01-06 A | 2026-01-06 A | QTS-1030 SS | 100% | 2026-01-23 | 2026-01-27 |  |  |  |  |  |  |  |  |  | 01ADMIN | CAP |
| DC1-POD-AC-L2-2180 | DH1100 COMP-E11-02 L2 Checklist *Delete* | 3d | 2026-01-06 A | 2026-01-06 A | QTS-1030 SS | 100% | 2026-01-23 | 2026-01-27 |  |  |  |  |  |  |  |  |  | 01ADMIN | CAP |
| DC1-POD-AC-L2-2190 | DH1100 FAN-E11-02 L2 Checklist *Delete* | 3d | 2026-01-06 A | 2026-01-06 A | QTS-1030 SS | 100% | 2026-01-23 | 2026-01-27 |  |  |  |  |  |  |  |  |  | 01ADMIN | CAP |
| DC1-POD-AC-L2-2200 | DH1100 COMP-F11-01 L2 Checklist *Delete* | 3d | 2026-01-06 A | 2026-01-06 A | QTS-1030 SS | 100% | 2026-01-28 | 2026-01-30 |  |  |  |  |  |  |  |  |  | 01ADMIN | CAP |
| DC1-POD-AC-L2-2210 | DH1100 FAN-F11-01 L2 Checklist *Delete* | 3d | 2026-01-06 A | 2026-01-06 A | QTS-1030 SS | 100% | 2026-01-28 | 2026-01-30 |  |  |  |  |  |  |  |  |  | 01ADMIN | CAP |
| DC1-POD-AC-L2-2220 | DH1100 COMP-F11-02 L2 Checklist *Delete* | 3d | 2026-01-06 A | 2026-01-06 A | QTS-1030 SS | 100% | 2026-01-28 | 2026-01-30 |  |  |  |  |  |  |  |  |  | 01ADMIN | CAP |
| DC1-POD-AC-L2-2230 | DH1100 FAN-F11-02 L2 Checklist *Delete* | 3d | 2026-01-06 A | 2026-01-06 A | QTS-1030 SS | 100% | 2026-01-28 | 2026-01-30 |  |  |  |  |  |  |  |  |  | 01ADMIN | CAP |
| DC1-POD-AC-L2-2240 | DH1100 COMP-R11-01 L2 Checklist *Delete* | 3d | 2026-01-06 A | 2026-01-06 A | QTS-1030 SS | 100% | 2026-02-02 | 2026-02-04 |  |  |  |  |  |  |  |  | Do we need L2s? |  | CAP |
| DC1-POD-AC-L2-2250 | DH1100 FAN-R11-01 L2 Checklist *Delete* | 3d | 2026-01-06 A | 2026-01-06 A | QTS-1030 SS | 100% | 2026-02-02 | 2026-02-04 |  |  |  |  |  |  |  |  | Do we need L2s? |  | CAP |
| DC1-POD-AC-L2-2260 | DH1100 COMP-R11-02 L2 Checklist *Delete* | 3d | 2026-01-06 A | 2026-01-06 A | QTS-1030 SS | 100% | 2026-02-02 | 2026-02-04 |  |  |  |  |  |  |  |  | Do we need L2s? |  | CAP |
| DC1-POD-AC-L2-2270 | DH1100 FAN-R11-02 L2 Checklist *Delete* | 3d | 2026-01-06 A | 2026-01-06 A | QTS-1030 SS | 100% | 2026-02-02 | 2026-02-04 |  |  |  |  |  |  |  |  | Do we need L2s? |  | CAP |
| DC1-POD-AC-L2-2280 | DH2200 COMP-A22-01 L2 Checklist *Delete* | 3d | 2026-01-06 A | 2026-01-06 A | QTS-1030 SS | 100% | 2026-01-29 | 2026-02-02 |  |  |  |  |  |  |  |  | Do we need? | 01ADMIN | CAP |
| DC1-POD-AC-L2-2290 | DH2200 FAN-A22-01 L2 Checklist *Delete* | 3d | 2026-01-06 A | 2026-01-06 A | QTS-1030 SS | 100% | 2026-01-29 | 2026-02-02 |  |  |  |  |  |  |  |  | Do we need? | 01ADMIN | CAP |
| DC1-POD-AC-L2-2300 | DH2200 COMP-A22-02 L2 Checklist *Delete* | 3d | 2026-01-06 A | 2026-01-06 A | QTS-1030 SS | 100% | 2026-01-29 | 2026-02-02 |  |  |  |  |  |  |  |  | Do we need? | 01ADMIN | CAP |
| DC1-POD-AC-L2-2310 | DH2200 FAN-A22-02 L2 Checklist *Delete* | 3d | 2026-01-06 A | 2026-01-06 A | QTS-1030 SS | 100% | 2026-01-29 | 2026-02-02 |  |  |  |  |  |  |  |  | Do we need? | 01ADMIN | CAP |
| DC1-POD-AC-L2-2320 | DH2200 COMP-B22-01 L2 Checklist *Delete* | 3d | 2026-01-06 A | 2026-01-06 A | QTS-1030 SS | 100% | 2026-02-03 | 2026-02-05 |  |  |  |  |  |  |  |  | Do we need? | 01ADMIN | CAP |
| DC1-POD-AC-L2-2330 | DH2200 FAN-B22-01 L2 Checklist *Delete* | 3d | 2026-01-06 A | 2026-01-06 A | QTS-1030 SS | 100% | 2026-02-03 | 2026-02-05 |  |  |  |  |  |  |  |  | Do we need? | 01ADMIN | CAP |
| DC1-POD-AC-L2-2340 | DH2200 COMP-B22-02 L2 Checklist *Delete* | 3d | 2026-01-06 A | 2026-01-06 A | QTS-1030 SS | 100% | 2026-02-03 | 2026-02-05 |  |  |  |  |  |  |  |  | Do we need? | 01ADMIN | CAP |
| DC1-POD-AC-L2-2350 | DH2200 FAN-B22-02 L2 Checklist *Delete* | 3d | 2026-01-06 A | 2026-01-06 A | QTS-1030 SS | 100% | 2026-02-03 | 2026-02-05 |  |  |  |  |  |  |  |  | Do we need? | 01ADMIN | CAP |
| DC1-POD-AC-L2-2360 | DH2200 COMP-C22-01 L2 Checklist *Delete* | 3d | 2026-01-06 A | 2026-01-06 A | QTS-1030 SS | 100% | 2026-02-06 | 2026-02-10 |  |  |  |  |  |  |  |  | Do we need? |  | CAP |
| DC1-POD-AC-L2-2370 | DH2200 FAN-C22-01 L2 Checklist *Delete* | 3d | 2026-01-06 A | 2026-01-06 A | QTS-1030 SS | 100% | 2026-02-06 | 2026-02-10 |  |  |  |  |  |  |  |  | Do we need? |  | CAP |
| DC1-POD-AC-L2-2380 | DH2200 COMP-C22-02 L2 Checklist *Delete* | 3d | 2026-01-06 A | 2026-01-06 A | QTS-1030 SS | 100% | 2026-02-06 | 2026-02-10 |  |  |  |  |  |  |  |  | Do we need? |  | CAP |
| DC1-POD-AC-L2-2390 | DH2200 FAN-C22-02 L2 Checklist *Delete* | 3d | 2026-01-06 A | 2026-01-06 A | QTS-1030 SS | 100% | 2026-02-06 | 2026-02-10 |  |  |  |  |  |  |  |  | Do we need? |  | CAP |

Notes:
- DC1-POD-AC-L2-1000: allucent_notes_20251230_164549: Jason Johnston on 2025-12-09 15:17: Need to confirm who is responsible for updating this / Riley Warring on 2025-12-16 14:34: Not started as of 12/16 / allucent_notes_20251209_203830: Jason Johnston on 2025-12-09 15:17: Need to confirm who is responsible for updating this / allucent_notes_20251216_165335: Jason Johnston on 2025-12-09 15:17: Need to confirm who is responsible for updating this / Riley Warring on 2025-12-16 14:34: Not started as of 12/16 / Steps: Vendor Pre-Energization Checklist; CXA Pre-Energization Inspection; PEI/Clean-Walk / allucent_notes: 2025-12-09 15:17 - User: Jason Johnston - Date Added: 2025-12-09 15:17 - Note: Need to confirm who is responsible for updating this / 2025-12-16 14:34 - User: Riley Warring - Date Added: 2025-12-16 14:34 - Note: Not started as of 12/16
- DC1-POD-AC-L2-1010: allucent_notes_20251230_164549: Jason Johnston on 2025-12-09 15:17: Need to confirm who is responsible for updating this / Riley Warring on 2025-12-16 14:34: Not started as of 12/16 / Jason Johnston on 2025-12-30 16:44: No update / allucent_notes_20251209_203830: Jason Johnston on 2025-12-09 15:17: Need to confirm who is responsible for updating this / allucent_notes_20251216_165335: Jason Johnston on 2025-12-09 15:17: Need to confirm who is responsible for updating this / Riley Warring on 2025-12-16 14:34: Not started as of 12/16 / Steps: Vendor Pre-Energization Checklist; CXA Pre-Energization Inspection; PEI/Clean-Walk / allucent_notes: 2025-12-09 15:17 - User: Jason Johnston - Date Added: 2025-12-09 15:17 - Note: Need to confirm who is responsible for updating this / 2025-12-16 14:34 - User: Riley Warring - Date Added: 2025-12-16 14:34 - Note: Not started as of 12/16 / 2025-12-30 16:4
- DC1-POD-AC-L2-1020: allucent_notes_20251230_164549: Jason Johnston on 2025-12-09 15:17: Need to confirm who is responsible for updating this / Riley Warring on 2025-12-16 14:34: Not started as of 12/16 / Jason Johnston on 2025-12-30 16:44: No update / allucent_notes_20251209_203830: Jason Johnston on 2025-12-09 15:17: Need to confirm who is responsible for updating this / allucent_notes_20251216_165335: Jason Johnston on 2025-12-09 15:17: Need to confirm who is responsible for updating this / Riley Warring on 2025-12-16 14:34: Not started as of 12/16 / Steps: Vendor Pre-Energization Checklist; CXA Pre-Energization Inspection; PEI/Clean-Walk / allucent_notes: 2025-12-09 15:17 - User: Jason Johnston - Date Added: 2025-12-09 15:17 - Note: Need to confirm who is responsible for updating this / 2025-12-16 14:34 - User: Riley Warring - Date Added: 2025-12-16 14:34 - Note: Not started as of 12/16 / 2025-12-30 16:4
- DC1-POD-AC-L2-1030: allucent_notes_20251230_164549: Jason Johnston on 2025-12-09 15:17: Need to confirm who is responsible for updating this / Riley Warring on 2025-12-16 14:34: Not started as of 12/16 / Jason Johnston on 2025-12-30 16:44: No update / allucent_notes_20251209_203830: Jason Johnston on 2025-12-09 15:17: Need to confirm who is responsible for updating this / allucent_notes_20251216_165335: Jason Johnston on 2025-12-09 15:17: Need to confirm who is responsible for updating this / Riley Warring on 2025-12-16 14:34: Not started as of 12/16 / Steps: Vendor Pre-Energization Checklist; CXA Pre-Energization Inspection; PEI/Clean-Walk / allucent_notes: 2025-12-09 15:17 - User: Jason Johnston - Date Added: 2025-12-09 15:17 - Note: Need to confirm who is responsible for updating this / 2025-12-16 14:34 - User: Riley Warring - Date Added: 2025-12-16 14:34 - Note: Not started as of 12/16 / 2025-12-30 16:4
- DC1-POD-AC-L2-1040: allucent_notes_20251230_164549: Jason Johnston on 2025-12-30 16:44: No update / Steps: Vendor Pre-Energization Checklist; CXA Pre-Energization Inspection; PEI/Clean-Walk / allucent_notes: 2025-12-30 16:44 - User: Jason Johnston - Date Added: 2025-12-30 16:44 - Note: No update
- DC1-POD-AC-L2-1050: allucent_notes_20251230_164549: Jason Johnston on 2025-12-30 16:44: No update / Steps: Vendor Pre-Energization Checklist; CXA Pre-Energization Inspection; PEI/Clean-Walk / allucent_notes: 2025-12-30 16:44 - User: Jason Johnston - Date Added: 2025-12-30 16:44 - Note: No update
- DC1-POD-AC-L2-1060: allucent_notes_20251230_164549: Jason Johnston on 2025-12-30 16:44: No update / Steps: Vendor Pre-Energization Checklist; CXA Pre-Energization Inspection; PEI/Clean-Walk / allucent_notes: 2025-12-30 16:44 - User: Jason Johnston - Date Added: 2025-12-30 16:44 - Note: No update
- DC1-POD-AC-L2-1070: allucent_notes_20251230_164549: Jason Johnston on 2025-12-30 16:44: No update / Steps: Vendor Pre-Energization Checklist; CXA Pre-Energization Inspection; PEI/Clean-Walk / allucent_notes: 2025-12-30 16:44 - User: Jason Johnston - Date Added: 2025-12-30 16:44 - Note: No update
- DC1-POD-AC-L2-1080: Steps: Vendor Pre-Energization Checklist; CXA Pre-Energization Inspection; PEI/Clean-Walk
- DC1-POD-AC-L2-1090: Steps: Vendor Pre-Energization Checklist; CXA Pre-Energization Inspection; PEI/Clean-Walk
- DC1-POD-AC-L2-1100: Steps: Vendor Pre-Energization Checklist; CXA Pre-Energization Inspection; PEI/Clean-Walk
- DC1-POD-AC-L2-1110: Steps: Vendor Pre-Energization Checklist; CXA Pre-Energization Inspection; PEI/Clean-Walk
- DC1-POD-AC-L2-1120: Steps: Vendor Pre-Energization Checklist; CXA Pre-Energization Inspection; PEI/Clean-Walk
- DC1-POD-AC-L2-1130: Steps: Vendor Pre-Energization Checklist; CXA Pre-Energization Inspection; PEI/Clean-Walk
- DC1-POD-AC-L2-1140: Steps: Vendor Pre-Energization Checklist; CXA Pre-Energization Inspection; PEI/Clean-Walk
- DC1-POD-AC-L2-1150: Steps: Vendor Pre-Energization Checklist; CXA Pre-Energization Inspection; PEI/Clean-Walk
- DC1-POD-AC-L2-1160: Steps: Vendor Pre-Energization Checklist; CXA Pre-Energization Inspection; PEI/Clean-Walk
- DC1-POD-AC-L2-1170: Steps: Vendor Pre-Energization Checklist; CXA Pre-Energization Inspection; PEI/Clean-Walk
- DC1-POD-AC-L2-1180: Steps: Vendor Pre-Energization Checklist; CXA Pre-Energization Inspection; PEI/Clean-Walk
- DC1-POD-AC-L2-1190: Steps: Vendor Pre-Energization Checklist; CXA Pre-Energization Inspection; PEI/Clean-Walk
- DC1-POD-AC-L2-1200: Steps: Vendor Pre-Energization Checklist; CXA Pre-Energization Inspection; PEI/Clean-Walk
- DC1-POD-AC-L2-1210: Steps: Vendor Pre-Energization Checklist; CXA Pre-Energization Inspection; PEI/Clean-Walk
- DC1-POD-AC-L2-1220: Steps: Vendor Pre-Energization Checklist; CXA Pre-Energization Inspection; PEI/Clean-Walk
- DC1-POD-AC-L2-1230: Steps: Vendor Pre-Energization Checklist; CXA Pre-Energization Inspection; PEI/Clean-Walk
- DC1-POD-AC-L2-1240: Steps: Vendor Pre-Energization Checklist; CXA Pre-Energization Inspection; PEI/Clean-Walk
- DC1-POD-AC-L2-1250: Steps: Vendor Pre-Energization Checklist; CXA Pre-Energization Inspection; PEI/Clean-Walk
- DC1-POD-AC-L2-1260: Steps: Vendor Pre-Energization Checklist; CXA Pre-Energization Inspection; PEI/Clean-Walk
- DC1-POD-AC-L2-1270: Steps: Vendor Pre-Energization Checklist; CXA Pre-Energization Inspection; PEI/Clean-Walk
- DC1-POD-AC-L2-2000: allucent_notes_20251230_164549: Jason Johnston on 2025-12-09 15:17: Need to confirm who is responsible for updating this / Riley Warring on 2025-12-16 14:36: Not started as of 12/16 / Riley Warring on 2025-12-29 12:12: Checklist not complete in Cx Alloy / allucent_notes_20251209_203830: Jason Johnston on 2025-12-09 15:17: Need to confirm who is responsible for updating this / allucent_notes_20251216_165335: Jason Johnston on 2025-12-09 15:17: Need to confirm who is responsible for updating this / Riley Warring on 2025-12-16 14:36: Not started as of 12/16 / Steps: Vendor Pre-Energization Checklist; CXA Pre-Energization Inspection; PEI/Clean-Walk / allucent_notes: 2025-12-09 15:17 - User: Jason Johnston - Date Added: 2025-12-09 15:17 - Note: Need to confirm who is responsible for updating this / 2025-12-16 14:36 - User: Riley Warring - Date Added: 2025-12-16 14:36 - Note: Not started as of 12/16 / 2025-12-29 12:1
- DC1-POD-AC-L2-2010: allucent_notes_20251230_164549: Jason Johnston on 2025-12-09 15:17: Need to confirm who is responsible for updating this / Riley Warring on 2025-12-16 14:36: Not started as of 12/16 / Riley Warring on 2025-12-29 12:12: Checklist not complete in Cx Alloy / allucent_notes_20251209_203830: Jason Johnston on 2025-12-09 15:17: Need to confirm who is responsible for updating this / allucent_notes_20251216_165335: Jason Johnston on 2025-12-09 15:17: Need to confirm who is responsible for updating this / Riley Warring on 2025-12-16 14:36: Not started as of 12/16 / Steps: Vendor Pre-Energization Checklist; CXA Pre-Energization Inspection; PEI/Clean-Walk / allucent_notes: 2025-12-09 15:17 - User: Jason Johnston - Date Added: 2025-12-09 15:17 - Note: Need to confirm who is responsible for updating this / 2025-12-16 14:36 - User: Riley Warring - Date Added: 2025-12-16 14:36 - Note: Not started as of 12/16 / 2025-12-29 12:1
- DC1-POD-AC-L2-2020: allucent_notes_20251230_164549: Jason Johnston on 2025-12-09 15:17: Need to confirm who is responsible for updating this / Riley Warring on 2025-12-16 14:36: Not started as of 12/16 / Riley Warring on 2025-12-29 12:13: Checklist not complete in Cx Alloy / allucent_notes_20251209_203830: Jason Johnston on 2025-12-09 15:17: Need to confirm who is responsible for updating this / allucent_notes_20251216_165335: Jason Johnston on 2025-12-09 15:17: Need to confirm who is responsible for updating this / Riley Warring on 2025-12-16 14:36: Not started as of 12/16 / Steps: Vendor Pre-Energization Checklist; CXA Pre-Energization Inspection; PEI/Clean-Walk / allucent_notes: 2025-12-09 15:17 - User: Jason Johnston - Date Added: 2025-12-09 15:17 - Note: Need to confirm who is responsible for updating this / 2025-12-16 14:36 - User: Riley Warring - Date Added: 2025-12-16 14:36 - Note: Not started as of 12/16 / 2025-12-29 12:1
- DC1-POD-AC-L2-2030: allucent_notes_20251230_164549: Jason Johnston on 2025-12-09 15:17: Need to confirm who is responsible for updating this / Riley Warring on 2025-12-16 14:36: Not started as of 12/16 / Riley Warring on 2025-12-29 12:13: Checklist not complete in Cx Alloy / allucent_notes_20251209_203830: Jason Johnston on 2025-12-09 15:17: Need to confirm who is responsible for updating this / allucent_notes_20251216_165335: Jason Johnston on 2025-12-09 15:17: Need to confirm who is responsible for updating this / Riley Warring on 2025-12-16 14:36: Not started as of 12/16 / Steps: Vendor Pre-Energization Checklist; CXA Pre-Energization Inspection; PEI/Clean-Walk / allucent_notes: 2025-12-09 15:17 - User: Jason Johnston - Date Added: 2025-12-09 15:17 - Note: Need to confirm who is responsible for updating this / 2025-12-16 14:36 - User: Riley Warring - Date Added: 2025-12-16 14:36 - Note: Not started as of 12/16 / 2025-12-29 12:1
- DC1-POD-AC-L2-2040: Steps: Vendor Pre-Energization Checklist; CXA Pre-Energization Inspection; PEI/Clean-Walk
- DC1-POD-AC-L2-2050: Steps: Vendor Pre-Energization Checklist; CXA Pre-Energization Inspection; PEI/Clean-Walk
- DC1-POD-AC-L2-2060: Steps: Vendor Pre-Energization Checklist; CXA Pre-Energization Inspection; PEI/Clean-Walk
- DC1-POD-AC-L2-2070: Steps: Vendor Pre-Energization Checklist; CXA Pre-Energization Inspection; PEI/Clean-Walk
- DC1-POD-AC-L2-2080: Steps: Vendor Pre-Energization Checklist; CXA Pre-Energization Inspection; PEI/Clean-Walk
- DC1-POD-AC-L2-2090: Steps: Vendor Pre-Energization Checklist; CXA Pre-Energization Inspection; PEI/Clean-Walk
- DC1-POD-AC-L2-2100: Steps: Vendor Pre-Energization Checklist; CXA Pre-Energization Inspection; PEI/Clean-Walk
- DC1-POD-AC-L2-2110: Steps: Vendor Pre-Energization Checklist; CXA Pre-Energization Inspection; PEI/Clean-Walk
- DC1-POD-AC-L2-2120: Steps: Vendor Pre-Energization Checklist; CXA Pre-Energization Inspection; PEI/Clean-Walk
- DC1-POD-AC-L2-2130: Steps: Vendor Pre-Energization Checklist; CXA Pre-Energization Inspection; PEI/Clean-Walk
- DC1-POD-AC-L2-2140: Steps: Vendor Pre-Energization Checklist; CXA Pre-Energization Inspection; PEI/Clean-Walk
- DC1-POD-AC-L2-2150: Steps: Vendor Pre-Energization Checklist; CXA Pre-Energization Inspection; PEI/Clean-Walk
- DC1-POD-AC-L2-2160: Steps: Vendor Pre-Energization Checklist; CXA Pre-Energization Inspection; PEI/Clean-Walk
- DC1-POD-AC-L2-2170: Steps: Vendor Pre-Energization Checklist; CXA Pre-Energization Inspection; PEI/Clean-Walk
- DC1-POD-AC-L2-2180: Steps: Vendor Pre-Energization Checklist; CXA Pre-Energization Inspection; PEI/Clean-Walk
- DC1-POD-AC-L2-2190: Steps: Vendor Pre-Energization Checklist; CXA Pre-Energization Inspection; PEI/Clean-Walk
- DC1-POD-AC-L2-2200: Steps: Vendor Pre-Energization Checklist; CXA Pre-Energization Inspection; PEI/Clean-Walk
- DC1-POD-AC-L2-2210: Steps: Vendor Pre-Energization Checklist; CXA Pre-Energization Inspection; PEI/Clean-Walk
- DC1-POD-AC-L2-2220: Steps: Vendor Pre-Energization Checklist; CXA Pre-Energization Inspection; PEI/Clean-Walk
- DC1-POD-AC-L2-2230: Steps: Vendor Pre-Energization Checklist; CXA Pre-Energization Inspection; PEI/Clean-Walk
- DC1-POD-AC-L2-2240: Steps: Vendor Pre-Energization Checklist; CXA Pre-Energization Inspection; PEI/Clean-Walk
- DC1-POD-AC-L2-2250: Steps: Vendor Pre-Energization Checklist; CXA Pre-Energization Inspection; PEI/Clean-Walk
- DC1-POD-AC-L2-2260: Steps: Vendor Pre-Energization Checklist; CXA Pre-Energization Inspection; PEI/Clean-Walk
- DC1-POD-AC-L2-2270: Steps: Vendor Pre-Energization Checklist; CXA Pre-Energization Inspection; PEI/Clean-Walk
- DC1-POD-AC-L2-2280: Steps: Vendor Pre-Energization Checklist; CXA Pre-Energization Inspection; PEI/Clean-Walk
- DC1-POD-AC-L2-2290: Steps: Vendor Pre-Energization Checklist; CXA Pre-Energization Inspection; PEI/Clean-Walk
- DC1-POD-AC-L2-2300: Steps: Vendor Pre-Energization Checklist; CXA Pre-Energization Inspection; PEI/Clean-Walk
- DC1-POD-AC-L2-2310: Steps: Vendor Pre-Energization Checklist; CXA Pre-Energization Inspection; PEI/Clean-Walk
- DC1-POD-AC-L2-2320: Steps: Vendor Pre-Energization Checklist; CXA Pre-Energization Inspection; PEI/Clean-Walk
- DC1-POD-AC-L2-2330: Steps: Vendor Pre-Energization Checklist; CXA Pre-Energization Inspection; PEI/Clean-Walk
- DC1-POD-AC-L2-2340: Steps: Vendor Pre-Energization Checklist; CXA Pre-Energization Inspection; PEI/Clean-Walk
- DC1-POD-AC-L2-2350: Steps: Vendor Pre-Energization Checklist; CXA Pre-Energization Inspection; PEI/Clean-Walk
- DC1-POD-AC-L2-2360: Steps: Vendor Pre-Energization Checklist; CXA Pre-Energization Inspection; PEI/Clean-Walk
- DC1-POD-AC-L2-2370: Steps: Vendor Pre-Energization Checklist; CXA Pre-Energization Inspection; PEI/Clean-Walk
- DC1-POD-AC-L2-2380: Steps: Vendor Pre-Energization Checklist; CXA Pre-Energization Inspection; PEI/Clean-Walk
- DC1-POD-AC-L2-2390: Steps: Vendor Pre-Energization Checklist; CXA Pre-Energization Inspection; PEI/Clean-Walk

| ID | Activity | Duration | Start | Finish | Predecessors | Complete | Planned start | Planned finish | Notes | Vendor Responsible Party | Allucent CSI Group |
| --- | --- | --- | --- | --- | --- | --- | --- | --- | --- | --- | --- |
| DC1-POD-AC-L2-2400 | DH2200 COMP-D22-01 L2 Checklist *Delete* | 3d | 2026-01-06 A | 2026-01-06 A | QTS-1030 SS | 100% | 2026-02-11 | 2026-02-13 | Do we need? | CAP |  |
| DC1-POD-AC-L2-2410 | DH2200 FAN-D22-01 L2 Checklist *Delete* | 3d | 2026-01-06 A | 2026-01-06 A | QTS-1030 SS | 100% | 2026-02-11 | 2026-02-13 | Do we need? | CAP |  |
| DC1-POD-AC-L2-2420 | DH2200 COMP-D22-02 L2 Checklist *Delete* | 3d | 2026-01-06 A | 2026-01-06 A | QTS-1030 SS | 100% | 2026-02-11 | 2026-02-13 | Do we need? | CAP |  |
| DC1-POD-AC-L2-2430 | DH2200 FAN-D22-02 L2 Checklist *Delete* | 3d | 2026-01-06 A | 2026-01-06 A | QTS-1030 SS | 100% | 2026-02-11 | 2026-02-13 | Do we need? | CAP |  |
| DC1-POD-AC-L2-2440 | DH2200 COMP-E22-01 L2 Checklist *Delete* | 3d | 2026-01-06 A | 2026-01-06 A | QTS-1030 SS | 100% | 2026-02-16 | 2026-02-18 | Do we need? | CAP |  |
| DC1-POD-AC-L2-2450 | DH2200 FAN-E22-01 L2 Checklist *Delete* | 3d | 2026-01-06 A | 2026-01-06 A | QTS-1030 SS | 100% | 2026-02-16 | 2026-02-18 | Do we need? | CAP |  |
| DC1-POD-AC-L2-2460 | DH2200 COMP-E22-02 L2 Checklist *Delete* | 3d | 2026-01-06 A | 2026-01-06 A | QTS-1030 SS | 100% | 2026-02-16 | 2026-02-18 | Do we need? | CAP |  |
| DC1-POD-AC-L2-2470 | DH2200 FAN-E22-02 L2 Checklist *Delete* | 3d | 2026-01-06 A | 2026-01-06 A | QTS-1030 SS | 100% | 2026-02-16 | 2026-02-18 | Do we need? | CAP |  |
| DC1-POD-AC-L2-2480 | DH2200 COMP-F22-01 L2 Checklist *Delete* | 3d | 2026-01-06 A | 2026-01-06 A | QTS-1030 SS | 100% | 2026-02-19 | 2026-02-23 | Do we need? | CAP |  |
| DC1-POD-AC-L2-2490 | DH2200 FAN-F22-01 L2 Checklist *Delete* | 3d | 2026-01-06 A | 2026-01-06 A | QTS-1030 SS | 100% | 2026-02-19 | 2026-02-23 | Do we need? | CAP |  |
| DC1-POD-AC-L2-2500 | DH2200 COMP-F22-02 L2 Checklist *Delete* | 3d | 2026-01-06 A | 2026-01-06 A | QTS-1030 SS | 100% | 2026-02-19 | 2026-02-23 | Do we need? | CAP |  |
| DC1-POD-AC-L2-2510 | DH2200 FAN-F22-02 L2 Checklist *Delete* | 3d | 2026-01-06 A | 2026-01-06 A | QTS-1030 SS | 100% | 2026-02-19 | 2026-02-23 | Do we need? | CAP |  |
| DC1-POD-AC-L2-2520 | DH2200 COMP-R22-01 L2 Checklist *Delete* | 3d | 2026-01-06 A | 2026-01-06 A | QTS-1030 SS | 100% | 2026-02-24 | 2026-02-26 | Do we need? | CAP |  |
| DC1-POD-AC-L2-2530 | DH2200 FAN-R22-01 L2 Checklist *Delete* | 3d | 2026-01-06 A | 2026-01-06 A | QTS-1030 SS | 100% | 2026-02-24 | 2026-02-26 | Do we need? | CAP |  |
| DC1-POD-AC-L2-2540 | DH2200 COMP-R22-02 L2 Checklist *Delete* | 3d | 2026-01-06 A | 2026-01-06 A | QTS-1030 SS | 100% | 2026-02-24 | 2026-02-26 | Do we need? | CAP |  |
| DC1-POD-AC-L2-2550 | DH2200 FAN-R22-02 L2 Checklist *Delete* | 3d | 2026-01-06 A | 2026-01-06 A | QTS-1030 SS | 100% | 2026-02-24 | 2026-02-26 | Do we need? | CAP |  |
| DC1-POD-AC-L2-2560 | DH1200 COMP-A12-01 L2 Checklist *Delete* | 3d | 2026-01-06 A | 2026-01-06 A | QTS-1030 SS | 100% | 2026-01-07 | 2026-01-09 |  | CAP | 01ADMIN |
| DC1-POD-AC-L2-2570 | DH1200 FAN-A12-01 L2 Checklist *Delete* | 3d | 2026-01-06 A | 2026-01-06 A | QTS-1030 SS | 100% | 2026-01-07 | 2026-01-09 |  | CAP | 01ADMIN |
| DC1-POD-AC-L2-2580 | DH1200 COMP-A12-02 L2 Checklist *Delete* | 3d | 2026-01-06 A | 2026-01-06 A | QTS-1030 SS | 100% | 2026-01-07 | 2026-01-09 |  | CAP | 01ADMIN |
| DC1-POD-AC-L2-2590 | DH1200 FAN-A12-02 L2 Checklist *Delete* | 3d | 2026-01-06 A | 2026-01-06 A | QTS-1030 SS | 100% | 2026-01-07 | 2026-01-09 |  | CAP | 01ADMIN |
| DC1-POD-AC-L2-2600 | DH1200 COMP-B12-01 L2 Checklist *Delete* | 3d | 2026-01-06 A | 2026-01-06 A | QTS-1030 SS | 100% | 2026-01-12 | 2026-01-14 |  | CAP | 01ADMIN |
| DC1-POD-AC-L2-2610 | DH1200 FAN-B12-01 L2 Checklist *Delete* | 3d | 2026-01-06 A | 2026-01-06 A | QTS-1030 SS | 100% | 2026-01-12 | 2026-01-14 |  | CAP | 01ADMIN |
| DC1-POD-AC-L2-2620 | DH1200 COMP-B12-02 L2 Checklist *Delete* | 3d | 2026-01-06 A | 2026-01-06 A | QTS-1030 SS | 100% | 2026-01-12 | 2026-01-14 |  | CAP | 01ADMIN |
| DC1-POD-AC-L2-2630 | DH1200 FAN-B12-02 L2 Checklist *Delete* | 3d | 2026-01-06 A | 2026-01-06 A | QTS-1030 SS | 100% | 2026-01-12 | 2026-01-14 |  | CAP | 01ADMIN |
| DC1-POD-AC-L2-2640 | DH1200 COMP-C12-01 L2 Checklist *Delete* | 3d | 2026-01-06 A | 2026-01-06 A | QTS-1030 SS | 100% | 2026-01-15 | 2026-01-20 |  | CAP |  |
| DC1-POD-AC-L2-2650 | DH1200 FAN-C12-01 L2 Checklist *Delete* | 3d | 2026-01-06 A | 2026-01-06 A | QTS-1030 SS | 100% | 2026-01-15 | 2026-01-20 |  | CAP |  |
| DC1-POD-AC-L2-2660 | DH1200 COMP-C12-02 L2 Checklist *Delete* | 3d | 2026-01-06 A | 2026-01-06 A | QTS-1030 SS | 100% | 2026-01-15 | 2026-01-20 |  | CAP |  |
| DC1-POD-AC-L2-2670 | DH1200 FAN-C12-02 L2 Checklist *Delete* | 3d | 2026-01-06 A | 2026-01-06 A | QTS-1030 SS | 100% | 2026-01-15 | 2026-01-20 |  | CAP |  |
| DC1-POD-AC-L2-2680 | DH1200 COMP-D12-01 L2 Checklist *Delete* | 3d | 2026-01-06 A | 2026-01-06 A | QTS-1030 SS | 100% | 2026-01-21 | 2026-01-23 |  | CAP |  |
| DC1-POD-AC-L2-2690 | DH1200 FAN-D12-01 L2 Checklist *Delete* | 3d | 2026-01-06 A | 2026-01-06 A | QTS-1030 SS | 100% | 2026-01-21 | 2026-01-23 |  | CAP |  |
| DC1-POD-AC-L2-2700 | DH1200 COMP-D12-02 L2 Checklist *Delete* | 3d | 2026-01-06 A | 2026-01-06 A | QTS-1030 SS | 100% | 2026-01-21 | 2026-01-23 |  | CAP |  |
| DC1-POD-AC-L2-2710 | DH1200 FAN-D12-02 L2 Checklist *Delete* | 3d | 2026-01-06 A | 2026-01-06 A | QTS-1030 SS | 100% | 2026-01-21 | 2026-01-23 |  | CAP |  |
| DC1-POD-AC-L2-2720 | DH1200 COMP-E12-01 L2 Checklist *Delete* | 3d | 2026-01-06 A | 2026-01-06 A | QTS-1030 SS | 100% | 2026-01-26 | 2026-01-28 |  | CAP |  |
| DC1-POD-AC-L2-2730 | DH1200 FAN-E12-01 L2 Checklist *Delete* | 3d | 2026-01-06 A | 2026-01-06 A | QTS-1030 SS | 100% | 2026-01-26 | 2026-01-28 |  | CAP |  |
| DC1-POD-AC-L2-2740 | DH1200 COMP-E12-02 L2 Checklist *Delete* | 3d | 2026-01-06 A | 2026-01-06 A | QTS-1030 SS | 100% | 2026-01-26 | 2026-01-28 |  | CAP |  |
| DC1-POD-AC-L2-2750 | DH1200 FAN-E12-02 L2 Checklist *Delete* | 3d | 2026-01-06 A | 2026-01-06 A | QTS-1030 SS | 100% | 2026-01-26 | 2026-01-28 |  | CAP |  |
| DC1-POD-AC-L2-2760 | DH1200 COMP-F12-01 L2 Checklist *Delete* | 3d | 2026-01-06 A | 2026-01-06 A | QTS-1030 SS | 100% | 2026-01-29 | 2026-02-02 | Do we need? | CAP |  |
| DC1-POD-AC-L2-2770 | DH1200 FAN-F12-01 L2 Checklist *Delete* | 3d | 2026-01-06 A | 2026-01-06 A | QTS-1030 SS | 100% | 2026-01-29 | 2026-02-02 | Do we need? | CAP |  |
| DC1-POD-AC-L2-2780 | DH1200 COMP-F12-02 L2 Checklist *Delete* | 3d | 2026-01-06 A | 2026-01-06 A | QTS-1030 SS | 100% | 2026-01-29 | 2026-02-02 | Do we need? | CAP |  |
| DC1-POD-AC-L2-2790 | DH1200 FAN-F12-02 L2 Checklist *Delete* | 3d | 2026-01-06 A | 2026-01-06 A | QTS-1030 SS | 100% | 2026-01-29 | 2026-02-02 | Do we need? | CAP |  |
| DC1-POD-AC-L2-2800 | DH1200 COMP-R12-01 L2 Checklist *Delete* | 3d | 2026-01-06 A | 2026-01-06 A | QTS-1030 SS | 100% | 2026-02-03 | 2026-02-05 | Do we need? | CAP |  |
| DC1-POD-AC-L2-2810 | DH1200 FAN-R12-01 L2 Checklist *Delete* | 3d | 2026-01-06 A | 2026-01-06 A | QTS-1030 SS | 100% | 2026-02-03 | 2026-02-05 | Do we need? | CAP |  |
| DC1-POD-AC-L2-2820 | DH1200 COMP-R12-02 L2 Checklist *Delete* | 3d | 2026-01-06 A | 2026-01-06 A | QTS-1030 SS | 100% | 2026-02-03 | 2026-02-05 | Do we need? | CAP |  |
| DC1-POD-AC-L2-2830 | DH1200 FAN-R12-02 L2 Checklist *Delete* | 3d | 2026-01-06 A | 2026-01-06 A | QTS-1030 SS | 100% | 2026-02-03 | 2026-02-05 | Do we need? | CAP |  |
| DC1-POD-AC-L2-2840 | DH2300 COMP-A23-01 L2 Checklist *Delete* | 3d | 2026-01-06 A | 2026-01-06 A | QTS-1030 SS | 100% | 2026-02-23 | 2026-02-25 | Do we need? | CAP |  |
| DC1-POD-AC-L2-2850 | DH2300 FAN-A23-01 L2 Checklist *Delete* | 3d | 2026-01-06 A | 2026-01-06 A | QTS-1030 SS | 100% | 2026-02-23 | 2026-02-25 | Do we need? | CAP |  |
| DC1-POD-AC-L2-2860 | DH2300 COMP-A23-02 L2 Checklist *Delete* | 3d | 2026-01-06 A | 2026-01-06 A | QTS-1030 SS | 100% | 2026-02-23 | 2026-02-25 | Do we need? | CAP |  |
| DC1-POD-AC-L2-2870 | DH2300 FAN-A23-02 L2 Checklist *Delete* | 3d | 2026-01-06 A | 2026-01-06 A | QTS-1030 SS | 100% | 2026-02-23 | 2026-02-25 | Do we need? | CAP |  |
| DC1-POD-AC-L2-2880 | DH2300 COMP-B23-01 L2 Checklist *Delete* | 3d | 2026-01-06 A | 2026-01-06 A | QTS-1030 SS | 100% | 2026-02-26 | 2026-03-02 | Do we need? | CAP |  |
| DC1-POD-AC-L2-2890 | DH2300 FAN-B23-01 L2 Checklist *Delete* | 3d | 2026-01-06 A | 2026-01-06 A | QTS-1030 SS | 100% | 2026-02-26 | 2026-03-02 | Do we need? | CAP |  |
| DC1-POD-AC-L2-2900 | DH2300 COMP-B23-02 L2 Checklist *Delete* | 3d | 2026-01-06 A | 2026-01-06 A | QTS-1030 SS | 100% | 2026-02-26 | 2026-03-02 | Do we need? | CAP |  |
| DC1-POD-AC-L2-2910 | DH2300 FAN-B23-02 L2 Checklist *Delete* | 3d | 2026-01-06 A | 2026-01-06 A | QTS-1030 SS | 100% | 2026-02-26 | 2026-03-02 | Do we need? | CAP |  |
| DC1-POD-AC-L2-2920 | DH2300 COMP-C23-01 L2 Checklist *Delete* | 3d | 2026-01-06 A | 2026-01-06 A | QTS-1030 SS | 100% | 2026-03-03 | 2026-03-05 | Do we need? | CAP |  |
| DC1-POD-AC-L2-2930 | DH2300 FAN-C23-01 L2 Checklist *Delete* | 3d | 2026-01-06 A | 2026-01-06 A | QTS-1030 SS | 100% | 2026-03-03 | 2026-03-05 | Do we need? | CAP |  |
| DC1-POD-AC-L2-2940 | DH2300 COMP-C23-02 L2 Checklist *Delete* | 3d | 2026-01-06 A | 2026-01-06 A | QTS-1030 SS | 100% | 2026-03-03 | 2026-03-05 | Do we need? | CAP |  |
| DC1-POD-AC-L2-2950 | DH2300 FAN-C23-02 L2 Checklist *Delete* | 3d | 2026-01-06 A | 2026-01-06 A | QTS-1030 SS | 100% | 2026-03-03 | 2026-03-05 | Do we need? | CAP |  |
| DC1-POD-AC-L2-2960 | DH2300 COMP-D23-01 L2 Checklist *Delete* | 3d | 2026-01-06 A | 2026-01-06 A | QTS-1030 SS | 100% | 2026-03-06 | 2026-03-10 | Do we need? | CAP |  |
| DC1-POD-AC-L2-2970 | DH2300 FAN-D23-01 L2 Checklist *Delete* | 3d | 2026-01-06 A | 2026-01-06 A | QTS-1030 SS | 100% | 2026-03-06 | 2026-03-10 | Do we need? | CAP |  |
| DC1-POD-AC-L2-2980 | DH2300 COMP-D23-02 L2 Checklist *Delete* | 3d | 2026-01-06 A | 2026-01-06 A | QTS-1030 SS | 100% | 2026-03-06 | 2026-03-10 | Do we need? | CAP |  |
| DC1-POD-AC-L2-2990 | DH2300 FAN-D23-02 L2 Checklist *Delete* | 3d | 2026-01-06 A | 2026-01-06 A | QTS-1030 SS | 100% | 2026-03-06 | 2026-03-10 | Do we need? | CAP |  |
| DC1-POD-AC-L2-3000 | DH2300 COMP-E23-01 L2 Checklist *Delete* | 3d | 2026-01-06 A | 2026-01-06 A | QTS-1030 SS | 100% | 2026-03-11 | 2026-03-13 | Do we need? | CAP |  |
| DC1-POD-AC-L2-3010 | DH2300 FAN-E23-01 L2 Checklist *Delete* | 3d | 2026-01-06 A | 2026-01-06 A | QTS-1030 SS | 100% | 2026-03-11 | 2026-03-13 | Do we need? | CAP |  |
| DC1-POD-AC-L2-3020 | DH2300 COMP-E23-02 L2 Checklist *Delete* | 3d | 2026-01-06 A | 2026-01-06 A | QTS-1030 SS | 100% | 2026-03-11 | 2026-03-13 | Do we need? | CAP |  |
| DC1-POD-AC-L2-3030 | DH2300 FAN-E23-02 L2 Checklist *Delete* | 3d | 2026-01-06 A | 2026-01-06 A | QTS-1030 SS | 100% | 2026-03-11 | 2026-03-13 | Do we need? | CAP |  |
| DC1-POD-AC-L2-3040 | DH2300 COMP-F23-01 L2 Checklist *Delete* | 3d | 2026-01-06 A | 2026-01-06 A | QTS-1030 SS | 100% | 2026-03-16 | 2026-03-18 | Do we need? | CAP |  |
| DC1-POD-AC-L2-3050 | DH2300 FAN-F23-01 L2 Checklist *Delete* | 3d | 2026-01-06 A | 2026-01-06 A | QTS-1030 SS | 100% | 2026-03-16 | 2026-03-18 | Do we need? | CAP |  |
| DC1-POD-AC-L2-3060 | DH2300 COMP-F23-02 L2 Checklist *Delete* | 3d | 2026-01-06 A | 2026-01-06 A | QTS-1030 SS | 100% | 2026-03-16 | 2026-03-18 | Do we need? | CAP |  |
| DC1-POD-AC-L2-3070 | DH2300 FAN-F23-02 L2 Checklist *Delete* | 3d | 2026-01-06 A | 2026-01-06 A | QTS-1030 SS | 100% | 2026-03-16 | 2026-03-18 | Do we need? | CAP |  |
| DC1-POD-AC-L2-3080 | DH2300 COMP-R23-01 L2 Checklist *Delete* | 3d | 2026-01-06 A | 2026-01-06 A | QTS-1030 SS | 100% | 2026-03-19 | 2026-03-23 | Do we need? | CAP |  |
| DC1-POD-AC-L2-3090 | DH2300 FAN-R23-01 L2 Checklist *Delete* | 3d | 2026-01-06 A | 2026-01-06 A | QTS-1030 SS | 100% | 2026-03-19 | 2026-03-23 | Do we need? | CAP |  |

Notes:
- DC1-POD-AC-L2-2400: Steps: Vendor Pre-Energization Checklist; CXA Pre-Energization Inspection; PEI/Clean-Walk
- DC1-POD-AC-L2-2410: Steps: Vendor Pre-Energization Checklist; CXA Pre-Energization Inspection; PEI/Clean-Walk
- DC1-POD-AC-L2-2420: Steps: Vendor Pre-Energization Checklist; CXA Pre-Energization Inspection; PEI/Clean-Walk
- DC1-POD-AC-L2-2430: Steps: Vendor Pre-Energization Checklist; CXA Pre-Energization Inspection; PEI/Clean-Walk
- DC1-POD-AC-L2-2440: Steps: Vendor Pre-Energization Checklist; CXA Pre-Energization Inspection; PEI/Clean-Walk
- DC1-POD-AC-L2-2450: Steps: Vendor Pre-Energization Checklist; CXA Pre-Energization Inspection; PEI/Clean-Walk
- DC1-POD-AC-L2-2460: Steps: Vendor Pre-Energization Checklist; CXA Pre-Energization Inspection; PEI/Clean-Walk
- DC1-POD-AC-L2-2470: Steps: Vendor Pre-Energization Checklist; CXA Pre-Energization Inspection; PEI/Clean-Walk
- DC1-POD-AC-L2-2480: Steps: Vendor Pre-Energization Checklist; CXA Pre-Energization Inspection; PEI/Clean-Walk
- DC1-POD-AC-L2-2490: Steps: Vendor Pre-Energization Checklist; CXA Pre-Energization Inspection; PEI/Clean-Walk
- DC1-POD-AC-L2-2500: Steps: Vendor Pre-Energization Checklist; CXA Pre-Energization Inspection; PEI/Clean-Walk
- DC1-POD-AC-L2-2510: Steps: Vendor Pre-Energization Checklist; CXA Pre-Energization Inspection; PEI/Clean-Walk
- DC1-POD-AC-L2-2520: Steps: Vendor Pre-Energization Checklist; CXA Pre-Energization Inspection; PEI/Clean-Walk
- DC1-POD-AC-L2-2530: Steps: Vendor Pre-Energization Checklist; CXA Pre-Energization Inspection; PEI/Clean-Walk
- DC1-POD-AC-L2-2540: Steps: Vendor Pre-Energization Checklist; CXA Pre-Energization Inspection; PEI/Clean-Walk
- DC1-POD-AC-L2-2550: Steps: Vendor Pre-Energization Checklist; CXA Pre-Energization Inspection; PEI/Clean-Walk
- DC1-POD-AC-L2-2560: Steps: Vendor Pre-Energization Checklist; CXA Pre-Energization Inspection; PEI/Clean-Walk
- DC1-POD-AC-L2-2570: Steps: Vendor Pre-Energization Checklist; CXA Pre-Energization Inspection; PEI/Clean-Walk
- DC1-POD-AC-L2-2580: Steps: Vendor Pre-Energization Checklist; CXA Pre-Energization Inspection; PEI/Clean-Walk
- DC1-POD-AC-L2-2590: Steps: Vendor Pre-Energization Checklist; CXA Pre-Energization Inspection; PEI/Clean-Walk
- DC1-POD-AC-L2-2600: Steps: Vendor Pre-Energization Checklist; CXA Pre-Energization Inspection; PEI/Clean-Walk
- DC1-POD-AC-L2-2610: Steps: Vendor Pre-Energization Checklist; CXA Pre-Energization Inspection; PEI/Clean-Walk
- DC1-POD-AC-L2-2620: Steps: Vendor Pre-Energization Checklist; CXA Pre-Energization Inspection; PEI/Clean-Walk
- DC1-POD-AC-L2-2630: Steps: Vendor Pre-Energization Checklist; CXA Pre-Energization Inspection; PEI/Clean-Walk
- DC1-POD-AC-L2-2640: Steps: Vendor Pre-Energization Checklist; CXA Pre-Energization Inspection; PEI/Clean-Walk
- DC1-POD-AC-L2-2650: Steps: Vendor Pre-Energization Checklist; CXA Pre-Energization Inspection; PEI/Clean-Walk
- DC1-POD-AC-L2-2660: Steps: Vendor Pre-Energization Checklist; CXA Pre-Energization Inspection; PEI/Clean-Walk
- DC1-POD-AC-L2-2670: Steps: Vendor Pre-Energization Checklist; CXA Pre-Energization Inspection; PEI/Clean-Walk
- DC1-POD-AC-L2-2680: Steps: Vendor Pre-Energization Checklist; CXA Pre-Energization Inspection; PEI/Clean-Walk
- DC1-POD-AC-L2-2690: Steps: Vendor Pre-Energization Checklist; CXA Pre-Energization Inspection; PEI/Clean-Walk
- DC1-POD-AC-L2-2700: Steps: Vendor Pre-Energization Checklist; CXA Pre-Energization Inspection; PEI/Clean-Walk
- DC1-POD-AC-L2-2710: Steps: Vendor Pre-Energization Checklist; CXA Pre-Energization Inspection; PEI/Clean-Walk
- DC1-POD-AC-L2-2720: Steps: Vendor Pre-Energization Checklist; CXA Pre-Energization Inspection; PEI/Clean-Walk
- DC1-POD-AC-L2-2730: Steps: Vendor Pre-Energization Checklist; CXA Pre-Energization Inspection; PEI/Clean-Walk
- DC1-POD-AC-L2-2740: Steps: Vendor Pre-Energization Checklist; CXA Pre-Energization Inspection; PEI/Clean-Walk
- DC1-POD-AC-L2-2750: Steps: Vendor Pre-Energization Checklist; CXA Pre-Energization Inspection; PEI/Clean-Walk
- DC1-POD-AC-L2-2760: Steps: Vendor Pre-Energization Checklist; CXA Pre-Energization Inspection; PEI/Clean-Walk
- DC1-POD-AC-L2-2770: Steps: Vendor Pre-Energization Checklist; CXA Pre-Energization Inspection; PEI/Clean-Walk
- DC1-POD-AC-L2-2780: Steps: Vendor Pre-Energization Checklist; CXA Pre-Energization Inspection; PEI/Clean-Walk
- DC1-POD-AC-L2-2790: Steps: Vendor Pre-Energization Checklist; CXA Pre-Energization Inspection; PEI/Clean-Walk
- DC1-POD-AC-L2-2800: Steps: Vendor Pre-Energization Checklist; CXA Pre-Energization Inspection; PEI/Clean-Walk
- DC1-POD-AC-L2-2810: Steps: Vendor Pre-Energization Checklist; CXA Pre-Energization Inspection; PEI/Clean-Walk
- DC1-POD-AC-L2-2820: Steps: Vendor Pre-Energization Checklist; CXA Pre-Energization Inspection; PEI/Clean-Walk
- DC1-POD-AC-L2-2830: Steps: Vendor Pre-Energization Checklist; CXA Pre-Energization Inspection; PEI/Clean-Walk
- DC1-POD-AC-L2-2840: Steps: Vendor Pre-Energization Checklist; CXA Pre-Energization Inspection; PEI/Clean-Walk
- DC1-POD-AC-L2-2850: Steps: Vendor Pre-Energization Checklist; CXA Pre-Energization Inspection; PEI/Clean-Walk
- DC1-POD-AC-L2-2860: Steps: Vendor Pre-Energization Checklist; CXA Pre-Energization Inspection; PEI/Clean-Walk
- DC1-POD-AC-L2-2870: Steps: Vendor Pre-Energization Checklist; CXA Pre-Energization Inspection; PEI/Clean-Walk
- DC1-POD-AC-L2-2880: Steps: Vendor Pre-Energization Checklist; CXA Pre-Energization Inspection; PEI/Clean-Walk
- DC1-POD-AC-L2-2890: Steps: Vendor Pre-Energization Checklist; CXA Pre-Energization Inspection; PEI/Clean-Walk
- DC1-POD-AC-L2-2900: Steps: Vendor Pre-Energization Checklist; CXA Pre-Energization Inspection; PEI/Clean-Walk
- DC1-POD-AC-L2-2910: Steps: Vendor Pre-Energization Checklist; CXA Pre-Energization Inspection; PEI/Clean-Walk
- DC1-POD-AC-L2-2920: Steps: Vendor Pre-Energization Checklist; CXA Pre-Energization Inspection; PEI/Clean-Walk
- DC1-POD-AC-L2-2930: Steps: Vendor Pre-Energization Checklist; CXA Pre-Energization Inspection; PEI/Clean-Walk
- DC1-POD-AC-L2-2940: Steps: Vendor Pre-Energization Checklist; CXA Pre-Energization Inspection; PEI/Clean-Walk
- DC1-POD-AC-L2-2950: Steps: Vendor Pre-Energization Checklist; CXA Pre-Energization Inspection; PEI/Clean-Walk
- DC1-POD-AC-L2-2960: Steps: Vendor Pre-Energization Checklist; CXA Pre-Energization Inspection; PEI/Clean-Walk
- DC1-POD-AC-L2-2970: Steps: Vendor Pre-Energization Checklist; CXA Pre-Energization Inspection; PEI/Clean-Walk
- DC1-POD-AC-L2-2980: Steps: Vendor Pre-Energization Checklist; CXA Pre-Energization Inspection; PEI/Clean-Walk
- DC1-POD-AC-L2-2990: Steps: Vendor Pre-Energization Checklist; CXA Pre-Energization Inspection; PEI/Clean-Walk
- DC1-POD-AC-L2-3000: Steps: Vendor Pre-Energization Checklist; CXA Pre-Energization Inspection; PEI/Clean-Walk
- DC1-POD-AC-L2-3010: Steps: Vendor Pre-Energization Checklist; CXA Pre-Energization Inspection; PEI/Clean-Walk
- DC1-POD-AC-L2-3020: Steps: Vendor Pre-Energization Checklist; CXA Pre-Energization Inspection; PEI/Clean-Walk
- DC1-POD-AC-L2-3030: Steps: Vendor Pre-Energization Checklist; CXA Pre-Energization Inspection; PEI/Clean-Walk
- DC1-POD-AC-L2-3040: Steps: Vendor Pre-Energization Checklist; CXA Pre-Energization Inspection; PEI/Clean-Walk
- DC1-POD-AC-L2-3050: Steps: Vendor Pre-Energization Checklist; CXA Pre-Energization Inspection; PEI/Clean-Walk
- DC1-POD-AC-L2-3060: Steps: Vendor Pre-Energization Checklist; CXA Pre-Energization Inspection; PEI/Clean-Walk
- DC1-POD-AC-L2-3070: Steps: Vendor Pre-Energization Checklist; CXA Pre-Energization Inspection; PEI/Clean-Walk
- DC1-POD-AC-L2-3080: Steps: Vendor Pre-Energization Checklist; CXA Pre-Energization Inspection; PEI/Clean-Walk
- DC1-POD-AC-L2-3090: Steps: Vendor Pre-Energization Checklist; CXA Pre-Energization Inspection; PEI/Clean-Walk

| ID | Activity | Duration | Start | Finish | Predecessors | Complete | Planned start | Planned finish | Calendar | Notes | Vendor Responsible Party | Subcontractor | Baseline | Layton Responsible Party | Phase-1 | Project Section | Allucent CSI Group | Project Section-1 | Level | Location | Phase-1-1 |
| --- | --- | --- | --- | --- | --- | --- | --- | --- | --- | --- | --- | --- | --- | --- | --- | --- | --- | --- | --- | --- | --- |
| DC1-POD-AC-L2-3100 | DH2300 COMP-R23-02 L2 Checklist *Delete* | 3d | 2026-01-06 A | 2026-01-06 A | QTS-1030 SS | 100% | 2026-03-19 | 2026-03-23 |  | Do we need? | CAP |  |  |  |  |  |  |  |  |  |  |
| DC1-POD-AC-L2-3110 | DH2300 FAN-R23-02 L2 Checklist *Delete* | 3d | 2026-01-06 A | 2026-01-06 A | QTS-1030 SS | 100% | 2026-03-19 | 2026-03-23 |  | Do we need? | CAP |  |  |  |  |  |  |  |  |  |  |
| DC1-POD-AC-L2-3120 | DH1300 COMP-A13-01 L2 Checklist *Delete* | 3d | 2026-01-06 A | 2026-01-06 A | QTS-1030 SS | 100% | 2026-02-20 | 2026-02-24 |  | Do we need these? | CAP |  |  |  |  |  |  |  |  |  |  |
| DC1-POD-AC-L2-3130 | DH1300 FAN-A13-01 L2 Checklist *Delete* | 3d | 2026-01-06 A | 2026-01-06 A | QTS-1030 SS | 100% | 2026-02-20 | 2026-02-24 |  | Do we need these? | CAP |  |  |  |  |  |  |  |  |  |  |
| DC1-POD-AC-L2-3140 | DH1300 COMP-A13-02 L2 Checklist *Delete* | 3d | 2026-01-06 A | 2026-01-06 A | QTS-1030 SS | 100% | 2026-02-20 | 2026-02-24 |  | Do we need these? | CAP |  |  |  |  |  |  |  |  |  |  |
| DC1-POD-AC-L2-3150 | DH1300 FAN-A13-02 L2 Checklist *Delete* | 3d | 2026-01-06 A | 2026-01-06 A | QTS-1030 SS | 100% | 2026-02-20 | 2026-02-24 |  | Do we need these? | CAP |  |  |  |  |  |  |  |  |  |  |
| DC1-POD-AC-L2-3160 | DH1300 COMP-B13-01 L2 Checklist *Delete* | 3d | 2026-01-06 A | 2026-01-06 A | QTS-1030 SS | 100% | 2026-02-25 | 2026-02-27 |  | Do we need these? | CAP |  |  |  |  |  |  |  |  |  |  |
| DC1-POD-AC-L2-3170 | DH1300 FAN-B13-01 L2 Checklist *Delete* | 3d | 2026-01-06 A | 2026-01-06 A | QTS-1030 SS | 100% | 2026-02-25 | 2026-02-27 |  | Do we need these? | CAP |  |  |  |  |  |  |  |  |  |  |
| DC1-POD-AC-L2-3180 | DH1300 COMP-B13-02 L2 Checklist *Delete* | 3d | 2026-01-06 A | 2026-01-06 A | QTS-1030 SS | 100% | 2026-02-25 | 2026-02-27 |  | Do we need these? | CAP |  |  |  |  |  |  |  |  |  |  |
| DC1-POD-AC-L2-3190 | DH1300 FAN-B13-02 L2 Checklist *Delete* | 3d | 2026-01-06 A | 2026-01-06 A | QTS-1030 SS | 100% | 2026-02-25 | 2026-02-27 |  | Do we need these? | CAP |  |  |  |  |  |  |  |  |  |  |
| DC1-POD-AC-L2-3200 | DH1300 COMP-C13-01 L2 Checklist *Delete* | 3d | 2026-01-06 A | 2026-01-06 A | QTS-1030 SS | 100% | 2026-03-02 | 2026-03-04 |  | Do we need these? | CAP |  |  |  |  |  |  |  |  |  |  |
| DC1-POD-AC-L2-3210 | DH1300 FAN-C13-01 L2 Checklist *Delete* | 3d | 2026-01-06 A | 2026-01-06 A | QTS-1030 SS | 100% | 2026-03-02 | 2026-03-04 |  | Do we need these? | CAP |  |  |  |  |  |  |  |  |  |  |
| DC1-POD-AC-L2-3220 | DH1300 COMP-C13-02 L2 Checklist *Delete* | 3d | 2026-01-06 A | 2026-01-06 A | QTS-1030 SS | 100% | 2026-03-02 | 2026-03-04 |  | Do we need these? | CAP |  |  |  |  |  |  |  |  |  |  |
| DC1-POD-AC-L2-3230 | DH1300 FAN-C13-02 L2 Checklist *Delete* | 3d | 2026-01-06 A | 2026-01-06 A | QTS-1030 SS | 100% | 2026-03-02 | 2026-03-04 |  | Do we need these? | CAP |  |  |  |  |  |  |  |  |  |  |
| DC1-POD-AC-L2-3240 | DH1300 COMP-D13-01 L2 Checklist *Delete* | 3d | 2026-01-06 A | 2026-01-06 A | QTS-1030 SS | 100% | 2026-03-05 | 2026-03-09 |  | Do we need these? | CAP |  |  |  |  |  |  |  |  |  |  |
| DC1-POD-AC-L2-3250 | DH1300 FAN-D13-01 L2 Checklist *Delete* | 3d | 2026-01-06 A | 2026-01-06 A | QTS-1030 SS | 100% | 2026-03-05 | 2026-03-09 |  | Do we need these? | CAP |  |  |  |  |  |  |  |  |  |  |
| DC1-POD-AC-L2-3260 | DH1300 COMP-D13-02 L2 Checklist *Delete* | 3d | 2026-01-06 A | 2026-01-06 A | QTS-1030 SS | 100% | 2026-03-05 | 2026-03-09 |  | Do we need these? | CAP |  |  |  |  |  |  |  |  |  |  |
| DC1-POD-AC-L2-3270 | DH1300 FAN-D13-02 L2 Checklist *Delete* | 3d | 2026-01-06 A | 2026-01-06 A | QTS-1030 SS | 100% | 2026-03-05 | 2026-03-09 |  | Do we need these? | CAP |  |  |  |  |  |  |  |  |  |  |
| DC1-POD-AC-L2-3280 | DH1300 COMP-E13-01 L2 Checklist *Delete* | 3d | 2026-01-06 A | 2026-01-06 A | QTS-1030 SS | 100% | 2026-03-10 | 2026-03-12 |  | Do we need these? | CAP |  |  |  |  |  |  |  |  |  |  |
| DC1-POD-AC-L2-3290 | DH1300 FAN-E13-01 L2 Checklist *Delete* | 3d | 2026-01-06 A | 2026-01-06 A | QTS-1030 SS | 100% | 2026-03-10 | 2026-03-12 |  | Do we need these? | CAP |  |  |  |  |  |  |  |  |  |  |
| DC1-POD-AC-L2-3300 | DH1300 COMP-E13-02 L2 Checklist *Delete* | 3d | 2026-01-06 A | 2026-01-06 A | QTS-1030 SS | 100% | 2026-03-10 | 2026-03-12 |  | Do we need these? | CAP |  |  |  |  |  |  |  |  |  |  |
| DC1-POD-AC-L2-3310 | DH1300 FAN-E13-02 L2 Checklist *Delete* | 3d | 2026-01-06 A | 2026-01-06 A | QTS-1030 SS | 100% | 2026-03-10 | 2026-03-12 |  | Do we need these? | CAP |  |  |  |  |  |  |  |  |  |  |
| DC1-POD-AC-L2-3320 | DH1300 COMP-F13-01 L2 Checklist *Delete* | 3d | 2026-01-06 A | 2026-01-06 A | QTS-1030 SS | 100% | 2026-03-13 | 2026-03-17 |  | Do we need these? | CAP |  |  |  |  |  |  |  |  |  |  |
| DC1-POD-AC-L2-3330 | DH1300 FAN-F13-01 L2 Checklist *Delete* | 3d | 2026-01-06 A | 2026-01-06 A | QTS-1030 SS | 100% | 2026-03-13 | 2026-03-17 |  | Do we need these? | CAP |  |  |  |  |  |  |  |  |  |  |
| DC1-POD-AC-L2-3340 | DH1300 COMP-F13-02 L2 Checklist *Delete* | 3d | 2026-01-06 A | 2026-01-06 A | QTS-1030 SS | 100% | 2026-03-13 | 2026-03-17 |  | Do we need these? | CAP |  |  |  |  |  |  |  |  |  |  |
| DC1-POD-AC-L2-3350 | DH1300 FAN-F13-02 L2 Checklist *Delete* | 3d | 2026-01-06 A | 2026-01-06 A | QTS-1030 SS | 100% | 2026-03-13 | 2026-03-17 |  | Do we need these? | CAP |  |  |  |  |  |  |  |  |  |  |
| DC1-POD-AC-L2-3360 | DH1300 COMP-R13-01 L2 Checklist *Delete* | 3d | 2026-01-06 A | 2026-01-06 A | QTS-1030 SS | 100% | 2026-03-18 | 2026-03-20 |  | Do we need these? | CAP |  |  |  |  |  |  |  |  |  |  |
| DC1-POD-AC-L2-3370 | DH1300 FAN-R13-01 L2 Checklist *Delete* | 3d | 2026-01-06 A | 2026-01-06 A | QTS-1030 SS | 100% | 2026-03-18 | 2026-03-20 |  | Do we need these? | CAP |  |  |  |  |  |  |  |  |  |  |
| DC1-POD-AC-L2-3380 | DH1300 COMP-R13-02 L2 Checklist *Delete* | 3d | 2026-01-06 A | 2026-01-06 A | QTS-1030 SS | 100% | 2026-03-18 | 2026-03-20 |  | Do we need these? | CAP |  |  |  |  |  |  |  |  |  |  |
| DC1-POD-AC-L2-3390 | DH1300 FAN-R13-02 L2 Checklist *Delete* | 3d | 2026-01-06 A | 2026-01-06 A | QTS-1030 SS | 100% | 2026-03-18 | 2026-03-20 |  | Do we need these? | CAP |  |  |  |  |  |  |  |  |  |  |
| QTS-12481 | Zone 3 Gridlines 30-41 / South // Frame Soffit *Delete* | 5d | 2026-01-06 A | 2026-01-06 A | QTS-1371 SS | 100% | 2026-03-04 | 2026-03-10 |  |  |  | Performance Contracting, Inc. | IGMP | Sean Waisner | Phase 3 | Construction | 01ADMIN |  |  |  |  |
| QTS-13261 | Zone 3 Gridlines 30-41 / South // Rough Electrical for Soffit Lighting *Delete* | 3d | 2026-01-06 A | 2026-01-06 A | QTS-1371 SS | 100% | 2026-01-07 | 2026-01-09 |  |  |  | Rosendin Electric, Inc | IGMP | Sean Waisner | Phase 3 | Construction | 01ADMIN |  |  |  |  |
| QTS-13271 | East Elevation // Frame Soffit *Delete* | 5d | 2026-01-06 A | 2026-01-06 A | QTS-1371 SS | 100% | 2026-03-11 | 2026-03-17 |  |  |  | D.H. Pace Company, Inc. | IGMP | Sean Waisner | Phase 3 | Construction | 01ADMIN |  |  |  |  |
| QTS-14011 | East Elevation // Rough Electrical for Soffit Lighting *Delete* | 3d | 2026-01-06 A | 2026-01-06 A | QTS-1371 SS | 100% | 2026-01-07 | 2026-01-09 |  |  |  | Rosendin Electric, Inc | IGMP | Sean Waisner | Phase 3 | Construction |  |  |  |  |  |
| QTS-14391 | Zone 3 Gridlines 30-41 / South // Hang Soffit Sheathing *Delete* | 4d | 2026-01-06 A | 2026-01-06 A | QTS-1371 SS | 100% | 2026-05-01 | 2026-05-06 |  |  |  | Performance Contracting, Inc. | IGMP | Sean Waisner | Phase 3 | Construction |  |  |  |  |  |
| QTS-15211 | Zone 3 Gridlines 30-41 / South // Install ISO Board *Delete* | 3d | 2026-01-06 A | 2026-01-06 A | QTS-1371 SS | 100% | 2026-05-07 | 2026-05-11 |  |  |  | Performance Contracting, Inc. | IGMP | Sean Waisner | Phase 3 | Construction |  |  |  |  |  |
| QTS-50691 | Zone 1 Gridlines 1-21 / South // Frame Metal Panels - Furr Out *Delete* | 8d | 2026-01-06 A | 2026-01-06 A | QTS-1371 SS | 100% | 2026-01-07 | 2026-01-16 |  |  |  | True Metal Solutions, LLC | IGMP | Sean Waisner | Phase 1 | Construction | 01ADMIN | Construction |  |  |  |
| QTS-22521 | Zone 3 Gridlines 30-41 Corridor 2307 // Install VESDA *Delete* | 5d | 2026-01-12 A | 2026-01-16 A | QTS-1030 SS | 100% |  |  | QTS-PHX3 DC1 - 6 day w/ Holidays |  |  |  | IGMP | Dave Wiltberger |  | Construction | 01ADMIN |  | Level 2 |  |  |
| QTS-22751 | Zone 2 Gridline 21-30 / Corridor 1013 // Install VESDA *Delete* | 5d | 2026-01-12 A | 2026-01-16 A | QTS-1030 SS | 100% |  |  | QTS-PHX3 DC1 - 6 day w/ Holidays |  |  |  | IGMP | Dave Wiltberger |  | Construction |  |  | Level 1 |  |  |
| QTS-23071 | Zone 3 Gridlines 30-41 Corridor 1012 // Install VESDA *Delete* | 5d | 2026-01-12 A | 2026-01-16 A | QTS-1030 SS | 100% |  |  | QTS-PHX3 DC1 - 6 day w/ Holidays |  |  |  | IGMP | Dave Wiltberger |  | Construction |  |  | Level 1 |  |  |
| DC1-DH1100-LB-1020 | DC1-DH1100 Connect Loadbanks (Connect to RPP Whips) *Delete* | 10d | 2026-01-13 A | 2026-01-13 A | QTS-1371 SS | 100% | 2026-01-14 | 2026-01-28 |  |  | PHE |  |  | Riley Warring |  |  |  |  |  |  |  |
| DC1-DH1200-LB-1020 | DC1-DH1200 Connect Loadbanks (Connect to RPP Whips) *Delete* | 10d | 2026-01-13 A | 2026-01-13 A | QTS-1371 SS | 100% | 2026-01-14 | 2026-01-28 |  |  | PHE |  |  | Riley Warring |  |  |  |  |  |  |  |
| DC1-DH1300-LB-1020 | DC1-DH1300 Connect Loadbanks (Connect to RPP Whips) *Delete* | 10d | 2026-01-13 A | 2026-01-13 A | QTS-1371 SS | 100% | 2026-01-14 | 2026-01-28 |  |  | PHE |  |  | Riley Warring |  |  |  |  |  |  |  |
| DC1-DH2100-LB-1030 | DC1-DH2100 Connect RPP Whips *Delete* | 6d | 2026-01-13 A | 2026-01-13 A | QTS-1371 SS | 100% | 2026-01-14 | 2026-01-22 |  |  | PHE |  |  | Riley Warring |  |  |  |  |  |  |  |
| DC1-DH2200-LB-1020 | DC1-DH2200 Connect Loadbanks (Connect to RPP Whips) *Delete* | 10d | 2026-01-13 A | 2026-01-13 A | QTS-1371 SS | 100% | 2026-01-14 | 2026-01-28 |  |  | PHE |  |  | Riley Warring |  |  |  |  |  |  |  |
| DC1-DH2300-LB-1020 | DC1-DH2300 Connect Loadbanks (Connect to RPP Whips) *Delete* | 10d | 2026-01-13 A | 2026-01-13 A | QTS-1371 SS | 100% | 2026-01-14 | 2026-01-28 |  |  | PHE |  |  | Riley Warring |  |  |  |  |  |  |  |
| QTS-14121 | DH 1100 / Mechanical Gallery 1103 // Top of Wall Fire Stop *Delete* | 2d | 2026-01-14 A | 2026-01-14 A | QTS-1371 SS | 100% | 2026-01-14 | 2026-01-15 | QTS-PHX3 DC1 - 6 day w/ Holidays |  |  | Alpha Insulation & Waterproofing, Inc. | IGMP | Sean Waisner |  | Construction | 01ADMIN | Construction | Level 1 | DH1100 | Phase 1 |
| QTS-49401 | DH 2100 / Rooftop Mechanical // Rough In Plumbing from to DOAS *Delete* | 1d | 2026-01-14 A | 2026-01-14 A | QTS-1371 SS | 100% | 2026-01-21 | 2026-01-21 | QTS-PHX3 DC1 - 6 day w/ Holidays |  |  | Bel-Aire Mechanical, LLC |  | Dave Wiltberger |  |  | 01ADMIN |  |  |  |  |
| DC1-L4-Cx-1015 | DC1 Data Hall 2100 Generator Connect Loadbanks to A21 & B21 *Deleted* | 1d | 2026-01-27 A | 2026-01-27 A | QTS-1371 SS | 100% | 2026-01-28 | 2026-01-28 |  |  | HLT |  |  |  |  |  |  |  |  |  |  |
| DC1-L4-Cx-1025 | DC1 Data Hall 2100 Generator Connect Loadbanks to C21 & D21 *Deleted* | 1d | 2026-01-27 A | 2026-01-27 A | QTS-1371 SS | 100% | 2026-01-28 | 2026-01-28 |  |  | HLT |  |  |  |  |  |  |  |  |  |  |
| DC1-L4-Cx-1035 | DC1 Data Hall 2100 Generator Connect Loadbanks to E21 & F21 *Deleted* | 1d | 2026-01-27 A | 2026-01-27 A | QTS-1371 SS | 100% | 2026-01-28 | 2026-01-28 |  |  | HLT |  |  |  |  |  |  |  |  |  |  |
| DC1-L4-Cx-1045 | DC1 Data Hall 2100 Generator Connect Loadbanks to R21 & FOH HSE *Deleted* | 1d | 2026-01-27 A | 2026-01-27 A | QTS-1371 SS | 100% | 2026-01-28 | 2026-01-28 |  |  | HLT |  |  |  |  |  |  |  |  |  |  |

Notes:
- DC1-POD-AC-L2-3100: Steps: Vendor Pre-Energization Checklist; CXA Pre-Energization Inspection; PEI/Clean-Walk
- DC1-POD-AC-L2-3110: Steps: Vendor Pre-Energization Checklist; CXA Pre-Energization Inspection; PEI/Clean-Walk
- DC1-POD-AC-L2-3120: Steps: Vendor Pre-Energization Checklist; CXA Pre-Energization Inspection; PEI/Clean-Walk
- DC1-POD-AC-L2-3130: Steps: Vendor Pre-Energization Checklist; CXA Pre-Energization Inspection; PEI/Clean-Walk
- DC1-POD-AC-L2-3140: Steps: Vendor Pre-Energization Checklist; CXA Pre-Energization Inspection; PEI/Clean-Walk
- DC1-POD-AC-L2-3150: Steps: Vendor Pre-Energization Checklist; CXA Pre-Energization Inspection; PEI/Clean-Walk
- DC1-POD-AC-L2-3160: Steps: Vendor Pre-Energization Checklist; CXA Pre-Energization Inspection; PEI/Clean-Walk
- DC1-POD-AC-L2-3170: Steps: Vendor Pre-Energization Checklist; CXA Pre-Energization Inspection; PEI/Clean-Walk
- DC1-POD-AC-L2-3180: Steps: Vendor Pre-Energization Checklist; CXA Pre-Energization Inspection; PEI/Clean-Walk
- DC1-POD-AC-L2-3190: Steps: Vendor Pre-Energization Checklist; CXA Pre-Energization Inspection; PEI/Clean-Walk
- DC1-POD-AC-L2-3200: Steps: Vendor Pre-Energization Checklist; CXA Pre-Energization Inspection; PEI/Clean-Walk
- DC1-POD-AC-L2-3210: Steps: Vendor Pre-Energization Checklist; CXA Pre-Energization Inspection; PEI/Clean-Walk
- DC1-POD-AC-L2-3220: Steps: Vendor Pre-Energization Checklist; CXA Pre-Energization Inspection; PEI/Clean-Walk
- DC1-POD-AC-L2-3230: Steps: Vendor Pre-Energization Checklist; CXA Pre-Energization Inspection; PEI/Clean-Walk
- DC1-POD-AC-L2-3240: Steps: Vendor Pre-Energization Checklist; CXA Pre-Energization Inspection; PEI/Clean-Walk
- DC1-POD-AC-L2-3250: Steps: Vendor Pre-Energization Checklist; CXA Pre-Energization Inspection; PEI/Clean-Walk
- DC1-POD-AC-L2-3260: Steps: Vendor Pre-Energization Checklist; CXA Pre-Energization Inspection; PEI/Clean-Walk
- DC1-POD-AC-L2-3270: Steps: Vendor Pre-Energization Checklist; CXA Pre-Energization Inspection; PEI/Clean-Walk
- DC1-POD-AC-L2-3280: Steps: Vendor Pre-Energization Checklist; CXA Pre-Energization Inspection; PEI/Clean-Walk
- DC1-POD-AC-L2-3290: Steps: Vendor Pre-Energization Checklist; CXA Pre-Energization Inspection; PEI/Clean-Walk
- DC1-POD-AC-L2-3300: Steps: Vendor Pre-Energization Checklist; CXA Pre-Energization Inspection; PEI/Clean-Walk
- DC1-POD-AC-L2-3310: Steps: Vendor Pre-Energization Checklist; CXA Pre-Energization Inspection; PEI/Clean-Walk
- DC1-POD-AC-L2-3320: Steps: Vendor Pre-Energization Checklist; CXA Pre-Energization Inspection; PEI/Clean-Walk
- DC1-POD-AC-L2-3330: Steps: Vendor Pre-Energization Checklist; CXA Pre-Energization Inspection; PEI/Clean-Walk
- DC1-POD-AC-L2-3340: Steps: Vendor Pre-Energization Checklist; CXA Pre-Energization Inspection; PEI/Clean-Walk
- DC1-POD-AC-L2-3350: Steps: Vendor Pre-Energization Checklist; CXA Pre-Energization Inspection; PEI/Clean-Walk
- DC1-POD-AC-L2-3360: Steps: Vendor Pre-Energization Checklist; CXA Pre-Energization Inspection; PEI/Clean-Walk
- DC1-POD-AC-L2-3370: Steps: Vendor Pre-Energization Checklist; CXA Pre-Energization Inspection; PEI/Clean-Walk
- DC1-POD-AC-L2-3380: Steps: Vendor Pre-Energization Checklist; CXA Pre-Energization Inspection; PEI/Clean-Walk
- DC1-POD-AC-L2-3390: Steps: Vendor Pre-Energization Checklist; CXA Pre-Energization Inspection; PEI/Clean-Walk

## Activity codes

| Code | Value | Meaning |
| --- | --- | --- |
| Allucent CSI Group | 01ADMIN | Admin |
| Baseline | DC | DC13 |
| Location | BOH | Back of House |
| Location | DH1100 | Data Hall 1100 |
| Location | DH1200 | Data Hall 1200 |
| Location | DH1300 | Data Hall 1300 |
| Location | DH2100 | Data Hall 2100 |
| Location | DH2200 | Data Hall 2200 |
| Location | DH2300 | Data Hall 2300 |
| Location | FOH | Front of House |
| Location | Gen Yard | Generator Yard |
| Project Section | Exec Summary | Executive Summary |
| Project Section-1 | Exec Summary | Executive Summary |
| Subcontractor | Advantic Building Group, LLC | ADVBUI04 |
| Subcontractor | Alpha Insulation & Waterproofing, Inc. | ALPINS02 |
| Subcontractor | Bel-Aire Mechanical, LLC | 00015082 |
| Subcontractor | D.H. Pace Company, Inc. | 00007967 |
| Subcontractor | E2 Optics, LLC | 00017359 |
| Subcontractor | Giroux Glass, Inc | 00084146 |
| Subcontractor | ISEC Incorporated | ISEINC01 |
| Subcontractor | Inter-Co Restroom and Locker Supply, Inc | INTRES01 |
| Subcontractor | Olympic West Fire Protection | OLYWES01 |
| Subcontractor | Oregon Electric Group | OREELE02 |
| Subcontractor | Otis Elevator Company | OTIELE03 |
| Subcontractor | Pennington Painting Company, LLC | PENPAI01 |
| Subcontractor | Performance Contracting, Inc. | PERCON01 |
| Subcontractor | Progressive Roofing | PROROO01 |
| Subcontractor | Redpoint Contracting | 00024963 |
| Subcontractor | Rosendin Electric, Inc | 00056282 |
| Subcontractor | Securitas Technology Corporation | STACON04 |
| Subcontractor | Specified Electrical Contractors, Inc | SPEELE01 |
| Subcontractor | Steel, LLC | 13153 |
| Subcontractor | SteelFab Texas, Inc | STETEX01 |
| Subcontractor | Structure Tone / Layton Construction | STOLAY01 |
| Subcontractor | Suntec Concrete Inc | SUNCON01 |
| Subcontractor | True Metal Solutions, LLC | TRUSOL01 |
| Subcontractor | Wholesale Floors, LLC -AZ | WHOFLO01 |
| Vendor Responsible Party | BAM | Bel-Aire Mechanical |
| Vendor Responsible Party | CAP | Caps |
| Vendor Responsible Party | FBB | Fiberbond |
| Vendor Responsible Party | HLT | Holt/CAT |
| Vendor Responsible Party | LAY | Layton (CFCI) |
| Vendor Responsible Party | MAV | Maverick Power |
| Vendor Responsible Party | PHE | Perrish-Hare |
| Vendor Responsible Party | PRM | Prime |
| Vendor Responsible Party | ROS | Rosiden |
| Vendor Responsible Party | SIE | Siemens |
| Vendor Responsible Party | SQD | Square D |
| Vendor Responsible Party | TAS | Texas Air System |
| Vendor Responsible Party | VER | Vertiv |
| Vendor Responsible Party | VTC | Virginia Transformer Corporation |
| Vendor Responsible Party | YCY | YCY/CAT |
