# QTS - PHX3 DC1 (54MW) Construction Schedule

Schedule from Primavera P6, 2024-11-13 to 2026-11-19, data date 2026-08-19, A marks actual dates.

## Calendars

- QTS-PHX3 DC1 - 5 day w/ Holidays: Mon-Fri 08:00-12:00, 13:00-17:00; Sat-Sun off. Exceptions (off unless hours are given): 2024-11-28 to 2024-11-29, 2024-12-25, 2025-01-01, 2025-01-20, 2025-05-26, 2025-07-04, 2025-09-01, 2025-11-27 to 2025-11-28, 2025-12-24 to 2025-12-26, 2026-01-01 to 2026-01-02, 2026-01-19, 2026-05-25, 2026-07-03, 2026-09-07.
- QTS-PHX3 DC1 - 6 day w/ Holidays: Mon-Sat 08:00-12:00, 13:00-17:00; Sun off. Exceptions (off unless hours are given): 2024-11-28 to 2024-11-29, 2024-12-25, 2025-01-01, 2025-01-20, 2025-05-26, 2025-07-04, 2025-09-01, 2025-11-27 to 2025-11-28, 2025-12-25, 2026-01-01, 2026-01-19, 2026-05-25, 2026-07-03 to 2026-07-04, 2026-09-07.
- **GLOBAL - 6 Day Workweek w/ Basic Holidays: Mon-Sat 08:00-12:00, 13:00-17:00; Sun off. Exceptions (off unless hours are given): 2024-11-28 to 2024-11-29, 2024-12-25, 2025-01-01, 2025-01-20, 2025-05-26, 2025-07-04, 2025-09-01, 2025-11-27 to 2025-11-28, 2025-12-25, 2026-01-01, 2026-01-19, 2026-05-25, 2026-07-04, 2026-09-07.
- **GLOBAL - 5 Day Workweek w/ Basic Holidays: Mon-Fri 08:00-12:00, 13:00-17:00; Sat-Sun off. Exceptions (off unless hours are given): 2024-11-28 to 2024-11-29, 2024-12-25, 2025-01-01, 2025-01-20, 2025-05-26, 2025-07-04, 2025-09-01, 2025-11-27 to 2025-11-28, 2025-12-25, 2026-01-01, 2026-01-19, 2026-05-25, 2026-07-03, 2026-09-07.
- QTS-PHX3 DC1 - 7 day No Holidays: Mon-Sun 08:00-12:00, 13:00-17:00.
- **GLOBAL - 7 Day Workweek w/ Basic Holidays: Mon-Sun 08:00-12:00, 13:00-17:00. Exceptions (off unless hours are given): 2024-11-28 to 2024-11-29, 2024-12-25, 2025-01-01, 2025-01-20, 2025-05-26, 2025-07-04, 2025-09-01, 2025-11-27 to 2025-11-28, 2025-12-25, 2026-01-01, 2026-01-19, 2026-05-25, 2026-07-03, 2026-09-07.

## Schedule

| ID | WBS | Activity | Type | Duration | Start | Finish | Predecessors | Complete | Planned start | Planned finish | Total float | Free float | Constraint | Vendor Responsible Party | Layton Discipline | Baseline | Project Section-1 | Contract | Allucent CSI Group | Project Section | Trade Partner |
| --- | --- | --- | --- | --- | --- | --- | --- | --- | --- | --- | --- | --- | --- | --- | --- | --- | --- | --- | --- | --- | --- |
|  | 1 | **Executive Summary** |  |  | 2025-01-15 | 2026-11-19 |  |  |  |  |  |  |  |  |  |  |  |  |  |  |  |
|  | 1 | **Milestones** |  |  | 2025-01-15 | 2026-11-19 |  |  |  |  |  |  |  |  |  |  |  |  |  |  |  |
|  | 1 | **Construction Milestones** |  |  | 2025-01-15 | 2026-11-19 |  |  |  |  |  |  |  |  |  |  |  |  |  |  |  |
| QTS-1030 |  | Start Construction | milestone | 0d | 2025-01-15 A | 2025-01-15 A | QTS-1371 | 100% | 2025-03-17 | 2025-03-17 |  |  |  | LAY | Milestone | IGMP | Exec Summary | BAB |  |  |  |
| QTS-1020 |  | Site Mobilized | milestone | 0d | 2025-01-22 A | 2025-01-22 A | QTS-1201 FF | 100% | 2025-03-17 | 2025-03-17 |  |  |  | LAY | Milestone | IGMP | Exec Summary | BAB |  |  |  |
| QTS-1031 |  | Site Preparation Pad Ready | milestone | 0d | 2025-03-14 A | 2025-03-14 A | QTS-41921 FF, QTS-41901 FF, QTS-4721 FF | 100% |  |  |  |  |  | LAY | Milestone | IGMP | Exec Summary | BAB |  |  |  |
| QTS-8671 |  | Start Deep Foundations | milestone | 0d | 2025-03-17 A | 2025-03-17 A | QTS-10851 SS | 100% |  |  |  |  |  | LAY | Milestone | IGMP | Exec Summary | BAB |  |  |  |
| QTS-1010 |  | Design Complete | milestone | 0d | 2025-04-07 A | 2025-04-07 A | QTS-15371 FF | 100% | 2025-03-31 | 2025-03-31 |  |  |  | LAY | Milestone | IGMP | Exec Summary | BAB |  |  |  |
| QTS-1015 |  | Permitting Complete | milestone | 0d | 2025-04-07 A | 2025-04-07 A | QTS-19141 FF | 100% |  |  |  |  |  | LAY | Milestone | IGMP | Exec Summary | BAB |  |  |  |
| QTS-19471 |  | Start Structural Steel | milestone | 0d | 2025-04-30 A | 2025-04-30 A | QTS-16911 SS | 100% | 2025-05-07 | 2025-05-07 |  |  |  | LAY | Milestone | IGMP | Exec Summary | BAB |  |  |  |
| QTS-1000 |  | GMP Contract Executed | milestone | 0d | 2025-05-19 A | 2025-05-19 A | QTS-1010 FF, QTS-11901 FF | 100% | 2026-07-10 | 2026-07-10 |  |  |  |  | Milestone | IGMP | Exec Summary | BAB | 01ADMIN | Exec Summary |  |
| QTS-1033 |  | Foundations Complete (Footings, Foundation Walls, & Slabs) | milestone | 0d | 2025-06-25 A | 2025-06-25 A | QTS-15721 FF | 100% |  |  |  |  |  | LAY | Milestone | IGMP | Exec Summary | BAB | 01ADMIN | Exec Summary |  |
| QTS-M3000 |  | Start Infrastructure Buildout | milestone | 0d | 2025-08-22 A | 2025-08-22 A | QTS-25441 SS | 100% |  |  |  |  |  | LAY | Milestone | IGMP | Exec Summary | BAB |  | Exec Summary |  |
| QTS-1035 |  | Steel Complete | milestone | 0d | 2025-09-02 A | 2025-09-02 A | QTS-22981 FF, QTS-22621 FF | 100% |  |  |  |  |  | LAY | Milestone | IGMP | Exec Summary | BAB | 01ADMIN | Exec Summary |  |
| QTS-1040 |  | Tilt Up Panels Complete | milestone | 0d | 2025-10-08 A | 2025-10-08 A | QTS-23261 FF | 100% |  |  |  |  |  | LAY | Milestone | IGMP | Exec Summary | BAB | 01ADMIN | Exec Summary |  |
| QTS-1050 |  | Weather Tight (Dry-In) | milestone | 0d | 2025-10-15 A | 2025-10-15 A | QTS-23911 FF | 100% |  |  |  |  |  | LAY | Milestone | IGMP | Exec Summary | BAB | 01ADMIN | Exec Summary |  |
| QTS-M1000 |  | Utility Permanent Power Available | milestone | 0d | 2026-02-27 A | 2026-02-27 A | QTS-1101 FF | 100% |  |  |  |  |  | LAY | Milestone | IGMP | Exec Summary | BAB |  | Exec Summary |  |
| QTS-M4170 |  | CHW Loop Pressure / Water Test Complete - Zone 1 | milestone | 0d | 2026-03-03 A | 2026-03-03 A | QTS-100270 FF, QTS-100280 FF, QTS-100520 FF, QTS-100530 FF | 100% | 2026-05-13 | 2026-05-13 |  |  |  |  | Milestone | IGMP | Exec Summary | BAB |  | Exec Summary |  |
| QTS-1000700 |  | FOH Energization Ready | milestone | 0d | 2026-03-11 A | 2026-03-11 A | DC1-SWBD-HSE-L2-1000 FF, QTS-120370 SF | 100% | 2026-03-18 | 2026-03-18 |  |  | finish on or before 2025-12-17 | LAY | Milestone | IGMP | Exec Summary | BAB | 01ADMIN | Exec Summary |  |
| QTS-1000710 |  | DH 2100 & 1100 Energization Ready (02/19/2025) | milestone | 0d | 2026-03-11 A | 2026-03-11 A | QTS-1115.A FF, QTS-1115.B FF, QTS-1000700 FF | 100% | 2026-03-18 | 2026-03-18 |  |  | finish on or before 2026-02-19 | LAY | Milestone | IGMP | Exec Summary | BAB |  | Exec Summary |  |
| QTS-1090 |  | Phase 1 - L3 Startup Cx Scripts Approved | milestone | 0d | 2026-03-11 A | 2026-03-11 A | QTS-24091 FF | 100% |  |  |  |  |  | LAY | Milestone | IGMP | Exec Summary | BAB |  | Exec Summary |  |
| QTS-120370 |  | Start Commissioning (L3) | milestone | 0d | 2026-03-11 A | 2026-03-11 A | QTS-1090, QTS-1030 SS | 100% | 2026-03-18 | 2026-03-18 |  |  |  | LAY | Milestone | IGMP | Exec Summary | BAB |  | Exec Summary |  |
| QTS-1004740 |  | Energization DC1-MVG-B1 | milestone | 0d | 2026-03-23 A | 2026-03-23 A | QTS-1015 FF | 100% | 2026-04-01 | 2026-04-01 |  |  |  | LAY | Milestone | IGMP | Exec Summary | BAB |  | Exec Summary |  |
| QTS-1004750 |  | Energization DC1-MVG-C1 | milestone | 0d | 2026-03-27 A | 2026-03-27 A | QTS-1015 FF | 100% |  |  |  |  |  |  | Milestone | IGMP | Exec Summary | BAB |  | Exec Summary |  |
| QTS-1004780 |  | Energization DC1-MVG-C2/G1 | milestone | 0d | 2026-03-27 A | 2026-03-27 A | QTS-1015 FF | 100% | 2026-04-08 | 2026-04-08 |  |  |  |  | Milestone | IGMP | Exec Summary | BAB |  | Exec Summary |  |
| QTS-1000520 |  | Network Live | milestone | 0d | 2026-03-30 A | 2026-03-30 A | QTS-1002990 FF, DC1-FOH-UPS-L3-1000 FF | 100% | 2026-04-01 | 2026-04-01 |  |  |  | LAY | Milestone | IGMP | Exec Summary | BAB |  | Exec Summary |  |
| QTS-M4050 |  | Industrial Loop Fill & Flush Complete - Zone 1 | milestone | 0d | 2026-03-31 A | 2026-03-31 A | QTS-100300 FF, QTS-100550 FF | 100% | 2026-05-13 | 2026-05-13 |  |  |  |  | Milestone | IGMP | Exec Summary | BAB |  | Exec Summary |  |
| QTS-1004760 |  | Energization DC1-MVG-D1 | milestone | 0d | 2026-04-01 A | 2026-04-01 A | QTS-1015 FF | 100% | 2026-04-02 | 2026-04-02 |  |  |  | LAY | Milestone | IGMP | Exec Summary | BAB |  | Exec Summary |  |
| QTS-1004770 |  | Energization DC1-MVG-A2 | milestone | 0d | 2026-04-01 A | 2026-04-01 A | QTS-1015 FF | 100% | 2026-04-02 | 2026-04-02 |  |  |  | LAY | Milestone | IGMP | Exec Summary | BAB |  | Exec Summary |  |
| QTS-1045 |  | Building Enclosure Complete (Roof, Exterior Walls, Windows & Doors) | milestone | 0d | 2026-04-21 A | 2026-04-21 A | QTS-99470 FF, QTS-99480 FF, QTS-11911 FF, QTS-25141 FF, QTS-23261 FF | 100% | 2026-05-13 | 2026-05-13 |  |  |  |  | Milestone | IGMP | Exec Summary | BAB |  | Exec Summary |  |
| QTS-1007140 |  | Controls L3 Start | milestone | 0d | 2026-04-21 A | 2026-04-21 A | QTS-1007130 FF, QTS-1009480 FF | 100% | 2026-04-27 | 2026-04-27 |  |  |  | LAY | Milestone | IGMP | Exec Summary | BAB |  | Exec Summary |  |
| QTS-M4330 |  | Fire Inspections Complete | milestone | 0d | 2026-06-09 A | 2026-06-09 A | QTS-1371 SF, QTS-1011940 | 100% | 2026-06-10 | 2026-06-10 |  |  |  |  | Milestone | IGMP | Exec Summary | BAB |  | Exec Summary |  |
| QTS-102740 |  | BOH Early Access Energization Ready | milestone | 0d | 2026-06-25 A | 2026-06-25 A | DC1-SWBD-HSE-L3-1030, DC1-SWBD-HSE-L3-1000, DC1-SWBD-HSE-L2-1000, QTS-1004770 | 100% | 2026-07-01 | 2026-07-01 |  |  |  | LAY | Milestone | IGMP | Exec Summary | BAB |  | Exec Summary |  |
| QTS-M4010 |  | Generator First Start Complete | milestone | 0d | 2026-07-06 A | 2026-07-06 A | DC1-GEN-L3-CX-2010 SS, DC1-GEN-L3-CX-2190 SS, DC1-GEN-L3-CX-2010 FF, DC1-GEN-L3-CX-2190 FF | 100% | 2026-07-15 | 2026-07-15 |  |  |  |  | Milestone | IGMP | Exec Summary | BAB |  | Exec Summary |  |
| QTS-M4100 |  | Industrial Loop Fill & Flush Complete - Zone 2 | milestone | 0d | 2026-07-10 A | 2026-07-10 A | QTS-100840 FF | 100% | 2026-07-29 | 2026-07-29 |  |  |  |  | Milestone | IGMP | Exec Summary | BAB |  | Exec Summary |  |
| QTS-M4180 |  | CHW Loop Pressure / Water Test Complete - Zone 2 | milestone | 0d | 2026-07-10 A | 2026-07-10 A | QTS-100820 FF, QTS-100800 FF, QTS-100790 FF | 100% | 2026-07-17 | 2026-07-17 |  |  |  |  | Milestone | IGMP | Exec Summary | BAB |  | Exec Summary |  |
| QTS-1091 |  | L4 Functional Performance Testing Cx Scripts Approved | milestone | 0d | 2026-07-14 A | 2026-07-14 A | QTS-120370 SF, DC1-MECH-L4-Cx-1110 | 100% | 2026-07-17 | 2026-07-17 |  |  |  | LAY | Milestone | IGMP | Exec Summary | BAB |  | Exec Summary |  |
| QTS-M4090 |  | Network Backbone Live | milestone | 0d | 2026-07-14 A | 2026-07-14 A | QTS-1371 SF, QTS-1000520 | 100% | 2026-07-22 | 2026-07-22 |  |  |  |  | Milestone | IGMP | Exec Summary | BAB |  | Exec Summary |  |
| QTS-M4190 |  | CHW Loop Pressure / Water Test Complete - Zone 3 | milestone | 0d | 2026-08-24 | 2026-08-24 | QTS-101560 FF, QTS-101550 FF, QTS-101540 FF |  |  |  | 6d | 62d |  |  | Milestone | IGMP | Exec Summary | BAB |  | Exec Summary |  |
| QTS-M4300 |  | DCIM Integration Complete | milestone | 0d | 2026-08-28 | 2026-08-28 | QTS-1371 SF, QTS-1007130, QTS-1080.2, QTS-1070.1, QTS-1080.1, QTS-1070.3, QTS-1080.3, QTS-1070.4, QTS-1080.4, QTS-1070.5, QTS-1080.5, QTS-1070.6, QTS-1080.6 |  |  |  | 2d | 58d |  |  | Milestone | IGMP | Exec Summary | BAB |  | Exec Summary |  |
| QTS-M4120 |  | Industrial Loop Fill & Flush Complete - Zone 3 | milestone | 0d | 2026-09-03 | 2026-09-03 | QTS-101570 FF |  |  |  | -2d | 54d |  |  | Milestone | IGMP | Exec Summary | BAB |  | Exec Summary |  |
| QTS-M4000 |  | UPS Installed & Powered | milestone | 0d | 2026-09-29 | 2026-09-29 | QTS-6800, QTS-6270, QTS-7340, QTS-4180 |  |  |  | -19d | 37d |  |  | Milestone | IGMP | Exec Summary | BAB |  | Exec Summary |  |
| QTS-1065 |  | Elect & Mech OFCI L2 Interior Installation Complete | milestone | 0d | 2026-10-05 | 2026-10-05 | QTS-4271 FF, QTS-1013380, QTS-7150, QTS-6600 |  |  |  | -44d | 2d |  |  | Milestone | IGMP | Exec Summary | BAB |  | Exec Summary |  |
| QTS-M4020 |  | Load Bank Testing Complete | milestone | 0d | 2026-10-08 | 2026-10-08 | QTS-2750, QTS-1750, QTS-5330, QTS-3970 |  |  |  | -26d | 30d |  |  | Milestone | IGMP | Exec Summary | BAB |  | Exec Summary |  |
| QTS-M4310 |  | Security System Operational | milestone | 0d | 2026-10-22 | 2026-10-22 | QTS-1371 SF, QTS-1009780, QTS-1000210, QTS-1009760, QTS-1010490, QTS-1010860, QTS-1010810, QTS-1009140, QTS-1010760 |  |  |  | -36d | 20d |  |  | Milestone | IGMP | Exec Summary | BAB |  | Exec Summary |  |
| QTS-M4320 |  | Access Control (Guards) | milestone | 0d | 2026-10-27 | 2026-10-27 | QTS-1130.A FF |  |  |  | -39d | 17d |  |  | Milestone | IGMP | Exec Summary | BAB |  | Exec Summary |  |
| QTS-1140 |  | Closeout Complete | milestone | 0d | 2026-11-19 | 2026-11-19 | QTS-17921 FF, QTS-18371 FF, QTS-99130 FF, QTS-19131 FF, QTS-30821 FF, QTS-1070.15 FF, QTS-1110.16, QTS-30271, QTS-4431, QTS-4441, QTS-29911, QTS-4481, QTS-4491 |  |  |  | -56d | 0d |  | LAY | Milestone | IGMP | Exec Summary | BAB |  | Exec Summary | REI |
| QTS-1150 |  | Final Certificate of Occupancy | milestone | 0d | 2026-11-19 | 2026-11-19 | QTS-1110.6 FF, QTS-1130.E FF, QTS-1130.D FF, QTS-1130.C FF, QTS-1130.B FF, QTS-1130.A FF, QTS-1130.F FF, QTS-1130.A10 FF, QTS-1120.11 FF, QTS-1002080 FF, QTS-1115.B10 FF, QTS-1060.13 FF, QTS-1120.14 FF, QTS-1070.15 FF, QTS-1110.16 FF, QTS-29461 FF, QTS-28991 FF, QTS-30971 |  |  |  | -56d | 0d |  | LAY | Milestone | IGMP | Exec Summary | BAB |  | Exec Summary | Securitas |
| QTS-1160 |  | Final Completion | milestone | 0d | 2026-11-19 | 2026-11-19 | QTS-46291 FF, QTS-46281 FF, QTS-3121 FF, QTS-28961 FF, QTS-46411 FF, QTS-46401 FF, QTS-46391 FF, QTS-46381 FF, QTS-46371 FF, QTS-46361 FF, QTS-46351 FF, QTS-46341 FF, QTS-46331 FF, QTS-46321 FF, QTS-46311 FF, QTS-46301 FF, QTS-46271 FF, QTS-46261 FF, QTS-46251 FF, QTS-46241 FF, QTS-46231 FF, QTS-46221 FF, QTS-46211 FF, QTS-46201 FF, QTS-46191 FF, QTS-46181 FF, QTS-46171 FF, QTS-46161 FF, QTS-46151 FF, QTS-46141 FF, QTS-46131 FF, QTS-46121 FF, QTS-46111 FF, QTS-46101 FF, QTS-46091 FF, QTS-46081 FF, QTS-45701 FF, QTS-45681 FF, QTS-44231 FF, QTS-43671 FF, QTS-43661 FF, QTS-43651 FF, QTS-43641 FF, QTS-24161 FF, QTS-24041 FF, QTS-24151 FF, QTS-24031 FF, QTS-24131 FF, QTS-24011 FF, QTS-28031 FF, QTS-21281 FF, QTS-20451 FF, QTS-15981 FF, QTS-15951 FF, QTS-15891 FF, QTS-15921 FF, QTS-101590 FF, QTS-101580 FF, QTS-101350 FF, QTS-101340 FF, QTS-101110 FF, QTS-101100 FF, QTS-100870 FF, QTS-100860 FF, QTS-100570 FF, QTS-100560 FF, QTS-100320 FF, QTS-100310 FF, QTS-27861 FF, QTS-28521 FF, QTS-27231 FF, QTS-19971 FF, QTS-19251 FF, QTS-19191 FF, QTS-20611 FF, QTS-20151 FF, QTS-19721 FF, QTS-20341 FF, QTS-19791 FF, QTS-19461 FF, QTS-21931 FF, QTS-21231 FF, QTS-20331 FF, QTS-20321 FF, QTS-21591 FF, QTS-20141 FF, QTS-19451 FF, QTS-19441 FF, QTS-21141 FF, QTS-19961 FF, QTS-19241 FF, QTS-19181 FF, QTS-20601, QTS-20131 FF, QTS-19711 FF, QTS-20311 FF, QTS-19781 FF, QTS-19431 FF, QTS-21921 FF, QTS-21221 FF, QTS-20301 FF, QTS-20291 FF, QTS-21581 FF, QTS-20121 FF, QTS-19421 FF, QTS-19411 FF, QTS-21131 FF, QTS-19951 FF, QTS-19231 FF, QTS-19171 FF, QTS-20591 FF, QTS-20111 FF, QTS-19701 FF, QTS-20281 FF, QTS-19771 FF, QTS-19401 FF, QTS-21911 FF, QTS-21211 FF, QTS-20271 FF, QTS-20261 FF, QTS-21571 FF, QTS-20101 FF, QTS-19391 FF, QTS-19381 FF, QTS-21121 FF, QTS-19941 FF, QTS-19221 FF, QTS-19161 FF, QTS-20581 FF, QTS-20091 FF, QTS-19691 FF, QTS-20251 FF, QTS-19761 FF, QTS-19371 FF, QTS-21901 FF, QTS-21201 FF, QTS-20241 FF, QTS-20231 FF, QTS-21561 FF, QTS-20081 FF, QTS-19361 FF, QTS-19351 FF, QTS-21111 FF, QTS-19931 FF, QTS-19211 FF, QTS-19151 FF, QTS-20571 FF, QTS-20071 FF, QTS-19681 FF, QTS-20221 FF, QTS-19751 FF, QTS-19341 FF, QTS-21891 FF, QTS-21191 FF, QTS-20211 FF, QTS-20201 FF, QTS-21551 FF, QTS-20061 FF, QTS-19331 FF, QTS-19321 FF, QTS-21101 FF, QTS-29311 FF, QTS-28721 FF, QTS-28581 FF, QTS-29641 FF, QTS-29391 FF, QTS-29131 FF, QTS-29451 FF, QTS-29141 FF, QTS-28881 FF, QTS-30261 FF, QTS-29801 FF, QTS-29441 FF, QTS-29431 FF, QTS-30031 FF, QTS-29381 FF, QTS-28871 FF, QTS-28861 FF, QTS-29791 FF, QTS-99120 FF, QTS-43581 FF, QTS-43571 FF, QTS-43561 FF, QTS-43551 FF, QTS-43541 FF, QTS-43531 FF, QTS-43521 FF, QTS-43511 FF, QTS-43491 FF, QTS-99110 FF, QTS-99100 FF, QTS-99090 FF, QTS-99080 FF, QTS-99070 FF, QTS-99060 FF, QTS-99050 FF, QTS-99040 FF, QTS-6771 FF, QTS-27301 FF, QTS-27321 FF, QTS-26471 FF, QTS-26171 FF, QTS-25091 FF, QTS-24701 FF, QTS-29191 FF, QTS-23601 FF, QTS-49511 FF, QTS-44721 FF, QTS-44711 FF, QTS-13231 FF, QTS-11841 FF, QTS-44701 FF, QTS-44691 FF, QTS-11851 FF, QTS-13221 FF, QTS-10021 FF, QTS-11821 FF, QTS-44681 FF, QTS-44671 FF, QTS-7251 FF, QTS-11831 FF, QTS-13211 FF, QTS-4681 FF, QTS-9991 FF, QTS-11801 FF, QTS-44661 FF, QTS-44651 FF, QTS-7201 FF, QTS-11811 FF, QTS-13201 FF, QTS-4641 FF, QTS-9961 FF, QTS-11781 FF, QTS-44641 FF, QTS-44631 FF, QTS-7151 FF, QTS-11791 FF, QTS-13191 FF, QTS-4601 FF, QTS-9931 FF, QTS-11761 FF, QTS-7101 FF, QTS-11771 FF, QTS-4561 FF, QTS-9901 FF, QTS-7051 FF, QTS-50161 FF, QTS-22181 FF, QTS-22661 FF, QTS-50151 FF, QTS-4521 FF, QTS-21661 FF, QTS- 255221 FF, QTS-41611 FF, QTS-6931 FF, QTS-41851 FF, QTS-41841 FF, QTS-41791 FF, QTS-41741 FF, QTS-41661 FF, QTS-41551 FF, QTS-30021 FF, QTS-23711 FF, QTS-30411 FF, QTS-25641 FF, QTS-29991 FF, QTS-25601 FF, QTS-25881 FF, QTS-28501 FF, QTS-28491 FF, QTS-25871 FF, QTS-25861 FF, QTS-25851 FF, QTS-17921 FF, QTS-18371 FF, QTS-49521 FF, QTS-42731 FF, QTS-42711 FF, QTS-42721 FF, QTS-25581 FF, QTS-24901 FF, QTS-24631 FF, QTS-25691 FF, QTS-24601 FF, QTS-15991 FF, QTS-13251 FF, QTS-15051 FF, QTS-25131 FF, QTS-24841 FF, QTS-30321 FF, QTS-30331 FF, QTS-30241 FF, QTS-4691 FF, QTS-25611 FF, QTS-4651 FF, QTS-25621 FF, QTS-25631 FF, QTS-4611 FF, QTS-4571 FF, QTS-4531 FF, QTS-42641 FF, QTS-20911 FF, QTS-49531 FF, QTS-6721 FF, QTS-27941 FF, QTS-26671 FF, QTS-25701 FF, QTS-16791 FF, QTS-25261 FF, QTS-25361 FF, QTS-24961 FF, QTS-42741 FF, QTS-42751 FF, QTS-25401 FF, QTS-42901 FF, QTS-42861 FF, QTS-42841 FF, QTS-42831 FF, QTS-42811 FF, QTS-42761 FF, QTS-26451 FF, QTS-23951 FF, QTS-25811 FF, QTS-23661 FF, QTS-23481 FF, QTS-23371 FF, QTS-23961 FF, QTS-23811 FF, QTS-23721 FF, QTS-23101 FF, QTS-23271 FF, QTS-23491 FF, QTS-22971 FF, QTS-23131 FF, QTS-23241 FF, QTS-23161 FF, QTS-23151 FF, QTS-23081 FF, QTS-22961 FF, QTS-22941 FF, QTS-22881 FF, QTS-22871 FF, QTS-22841 FF, QTS-22781 FF, QTS-22771 FF, QTS-22601 FF, QTS-22561 FF, QTS-22551 FF, QTS-22531 FF, QTS-22301, QTS-22451 FF, QTS-22341 FF, QTS-22001 FF, QTS-21991 FF, QTS-21631 FF, QTS-19201 FF, QTS-28211 FF, QTS-25471 FF, QTS-23411 FF, QTS-22951 FF, QTS-22671 FF, QTS-25321 FF, QTS-22541 FF, QTS-25311 FF, QTS-21981 FF, QTS-21881 FF, QTS-21451 FF, QTS-21351 FF, QTS-24871 FF, QTS-20501 FF, QTS-20481 FF, QTS-20161 FF, QTS-19881 FF, QTS-21021 FF, QTS-20491 FF, QTS-18921 FF, QTS-18771 FF, QTS-27561 FF, QTS-25211 FF, QTS-25201 FF, QTS-24781 FF, QTS-24341 FF, QTS-22831 FF, QTS-24051 FF, QTS-23781 FF, QTS-23771 FF, QTS-22221 FF, QTS-22171 FF, QTS-22081 FF, QTS-22041 FF, QTS-21971 FF, QTS-21871 FF, QTS-21841 FF, QTS-23231 FF, QTS-23221 FF, QTS-21741 FF, QTS-21441 FF, QTS-21431 FF, QTS-21341 FF, QTS-21331 FF, QTS-21321 FF, QTS-22761 FF, QTS-20871 FF, QTS-20861 FF, QTS-20641 FF, QTS-20471 FF, QTS-20431 FF, QTS-20391 FF, QTS-20031 FF, QTS-20021 FF, QTS-19871 FF, QTS-19861 FF, QTS-19851 FF, QTS-19641 FF, QTS-19921 FF, QTS-19541 FF, QTS-27141 FF, QTS-24061 FF, QTS-23941 FF, QTS-21621 FF, QTS-21361 FF, QTS-21161 FF, QTS-21051 FF, QTS-21041 FF, QTS-21031 FF, QTS-20891 FF, QTS-20661 FF, QTS-20651 FF, QTS-20421 FF, QTS-20411 FF, QTS-20401 FF, QTS-20171 FF, QTS-20051 FF, QTS-19901 FF, QTS-19891 FF, QTS-19741 FF, QTS-19731 FF, QTS-19671 FF, QTS-19661 FF, QTS-19651 FF, QTS-19551 FF, QTS-19281 FF, QTS-47051 FF, QTS-47041 FF, QTS-25831 FF, QTS-25681 FF, QTS-24381 FF, QTS-17431 FF, QTS-17141 FF, QTS-7291 FF, QTS-7191 FF, QTS-7141 FF, QTS-7041 FF, QTS-13911 FF, QTS-7091 FF, QTS-12311 FF, QTS-44751 FF, QTS-5651 FF, QTS-44741 FF, QTS-4711 FF, QTS-13841 FF, QTS-44731 FF, QTS-42141 FF, QTS-17491 FF, QTS-12271 FF, QTS-4251 FF, QTS-5631 FF, QTS-12041 FF, QTS-11671 FF, QTS-13771 FF, QTS-17221 FF, QTS-4671 FF, QTS-12231 FF, QTS-42131 FF, QTS-5621 FF, QTS-5611 FF, QTS-13701 FF, QTS-17461 FF, QTS-4161 FF, QTS-12011 FF, QTS-12191 FF, QTS-11631 FF, QTS-4631 FF, QTS-5591 FF, QTS-42121 FF, QTS-17181 FF, QTS-4071 FF, QTS-4591 FF, QTS-11981 FF, QTS-42101 FF, QTS-11591 FF, QTS-13631 FF, QTS-17401 FF, QTS-3981 FF, QTS-23291 FF, QTS-11951 FF, QTS-12151 FF, QTS-11551 FF, QTS-5571 FF, QTS-22711 FF, QTS-17101 FF, QTS-4551 FF, QTS-17371 FF, QTS-3891 FF, QTS-11921 FF, QTS-11511 FF, QTS-24951 FF, QTS-17061 FF, QTS-22631 FF, QTS-22111 FF, QTS-24791 FF, QTS-37951 FF, QTS-37941 FF, QTS-37111 FF, QTS-37101 FF, QTS-35301 FF, QTS-35291 FF, QTS-34941 FF, QTS-34931 FF, QTS-34581 FF, QTS-34571 FF, QTS-34221 FF, QTS-34211 FF, QTS-14341 FF, QTS-14281 FF, QTS-14221 FF, QTS-14161 FF, QTS-23581 FF, QTS-14101 FF, QTS-6841 FF, QTS-6831 FF, QTS-6821 FF, QTS-6811 FF, QTS-18331 FF, QTS-18311 FF, QTS-18271 FF, QTS-6801 FF, QTS-18251 FF, QTS-25331 FF, QTS-42091 FF, QTS-18291 FF, QTS-14431, QTS-25301 FF, QTS-24551 FF, QTS-26881 FF, QTS-25911 FF, QTS-26871 FF, QTS-25901 FF, QTS-25291 FF, QTS-24541 FF, QTS-25281 FF, QTS-24531 FF, QTS-25271 FF, QTS-24521 FF, QTS-7011 FF, QTS-14601 FF, QTS-15551 FF, QTS-1033 FF, QTS-1150 FF, QTS-1140, QTS-1010 FF, QTS-1000 FF, QTS-1020 FF, QTS-1140 FF, QTS-22161 FF, QTS-30381 FF, QTS-29331 FF, QTS-29011 FF, QTS-21961 FF, QTS-14421 FF, QTS-14591 FF, QTS-28931 FF, QTS-17681 FF, QTS-24941 FF, QTS-42261 FF, QTS-6341 FF, QTS-8021 FF, QTS-7941 FF, QTS-7961 FF, QTS-8041 FF, QTS-8061 FF, QTS-17721 FF, QTS-17761 FF, QTS-8221 FF, QTS-8081 FF, QTS-7981 FF, QTS-8001 FF, QTS-8101 FF, QTS-8121 FF, QTS-8241 FF, QTS-8261 FF, QTS-8141 FF, QTS-8161 FF, QTS-8281 FF, QTS-8301 FF, QTS-8181 FF, QTS-8201 FF, QTS-17841 FF, QTS-8421 FF, QTS-8441 FF, QTS-8461 FF, QTS-8481 FF, QTS-8501 FF, QTS-17801 FF, QTS-8321 FF, QTS-8341 FF, QTS-8361 FF, QTS-8381 FF, QTS-8401 FF, QTS-30161 FF, QTS-50101 FF, QTS-50511 FF, QTS-50521 FF, QTS-50531 FF, QTS-50541 FF, QTS-50551 FF, QTS-50561 FF, QTS-50571 FF, QTS-50711 FF, QTS-50701 FF, DC1-POD-AC-L2-1000 FF, DC1-POD-AC-L2-1010 FF, DC1-POD-AC-L2-1020 FF, DC1-POD-AC-L2-1030 FF, DC1-POD-AC-L2-1040 FF, DC1-POD-AC-L2-1050 FF, DC1-POD-AC-L2-1060 FF, DC1-POD-AC-L2-1070 FF, DC1-POD-AC-L2-1080 FF, DC1-POD-AC-L2-1090 FF, DC1-POD-AC-L2-1100 FF, DC1-POD-AC-L2-1110 FF, DC1-POD-AC-L2-1120 FF, DC1-POD-AC-L2-1130 FF, DC1-POD-AC-L2-1140 FF, DC1-POD-AC-L2-1150 FF, DC1-POD-AC-L2-1160 FF, DC1-POD-AC-L2-1170 FF, DC1-POD-AC-L2-1180 FF, DC1-POD-AC-L2-1190 FF, DC1-POD-AC-L2-1200 FF, DC1-POD-AC-L2-1210 FF, DC1-POD-AC-L2-1220 FF, DC1-POD-AC-L2-1230 FF, DC1-POD-AC-L2-1240 FF, DC1-POD-AC-L2-1250 FF, DC1-POD-AC-L2-1260 FF, DC1-POD-AC-L2-1270 FF, DC1-POD-AC-L2-2000 FF, DC1-POD-AC-L2-2010 FF, DC1-POD-AC-L2-2020 FF, DC1-POD-AC-L2-2030 FF, DC1-POD-AC-L2-2040 FF, DC1-POD-AC-L2-2050 FF, DC1-POD-AC-L2-2060 FF, DC1-POD-AC-L2-2070 FF, DC1-POD-AC-L2-2080 FF, DC1-POD-AC-L2-2090 FF, DC1-POD-AC-L2-2100 FF, DC1-POD-AC-L2-2110 FF, DC1-POD-AC-L2-2120 FF, DC1-POD-AC-L2-2130 FF, DC1-POD-AC-L2-2140 FF, DC1-POD-AC-L2-2150 FF, DC1-POD-AC-L2-2160 FF, DC1-POD-AC-L2-2170 FF, DC1-POD-AC-L2-2180 FF, DC1-POD-AC-L2-2190 FF, DC1-POD-AC-L2-2200 FF, DC1-POD-AC-L2-2210 FF, DC1-POD-AC-L2-2220 FF, DC1-POD-AC-L2-2230 FF, DC1-POD-AC-L2-2240 FF, DC1-POD-AC-L2-2250 FF, DC1-POD-AC-L2-2260 FF, DC1-POD-AC-L2-2270 FF, DC1-POD-AC-L2-2280 FF, DC1-POD-AC-L2-2290 FF, DC1-POD-AC-L2-2300 FF, DC1-POD-AC-L2-2310 FF, DC1-POD-AC-L2-2320 FF, DC1-POD-AC-L2-2330 FF, DC1-POD-AC-L2-2340 FF, DC1-POD-AC-L2-2350 FF, DC1-POD-AC-L2-2360 FF, DC1-POD-AC-L2-2370 FF, DC1-POD-AC-L2-2380 FF, DC1-POD-AC-L2-2400 FF, DC1-POD-AC-L2-2410 FF, DC1-POD-AC-L2-2420 FF, DC1-POD-AC-L2-2430 FF, DC1-POD-AC-L2-2440 FF, DC1-POD-AC-L2-2450 FF, DC1-POD-AC-L2-2460 FF, DC1-POD-AC-L2-2470 FF, DC1-POD-AC-L2-2480 FF, DC1-POD-AC-L2-2490 FF, DC1-POD-AC-L2-2500 FF, DC1-POD-AC-L2-2510 FF, DC1-POD-AC-L2-2520 FF, DC1-POD-AC-L2-2530 FF, DC1-POD-AC-L2-2540 FF, DC1-POD-AC-L2-2550 FF, DC1-POD-AC-L2-2560 FF, DC1-POD-AC-L2-2570 FF, DC1-POD-AC-L2-2580 FF, DC1-POD-AC-L2-2590 FF, DC1-POD-AC-L2-2600 FF, DC1-POD-AC-L2-2610 FF, DC1-POD-AC-L2-2620 FF, DC1-POD-AC-L2-2630 FF, DC1-POD-AC-L2-2640 FF, DC1-POD-AC-L2-2650 FF, DC1-POD-AC-L2-2670 FF, DC1-POD-AC-L2-2680 FF, DC1-POD-AC-L2-2690 FF, DC1-POD-AC-L2-2700 FF, DC1-POD-AC-L2-2710 FF, DC1-POD-AC-L2-2720 FF, DC1-POD-AC-L2-2730 FF, DC1-POD-AC-L2-2740 FF, DC1-POD-AC-L2-2750 FF, DC1-POD-AC-L2-2760 FF, DC1-POD-AC-L2-2770 FF, DC1-POD-AC-L2-2780 FF, DC1-POD-AC-L2-2790 FF, DC1-POD-AC-L2-2800 FF, DC1-POD-AC-L2-2810 FF, DC1-POD-AC-L2-2820 FF, DC1-POD-AC-L2-2830 FF, DC1-POD-AC-L2-2840 FF, DC1-POD-AC-L2-2850 FF, DC1-POD-AC-L2-2860 FF, DC1-POD-AC-L2-2870 FF, DC1-POD-AC-L2-2880 FF, DC1-POD-AC-L2-2890 FF, DC1-POD-AC-L2-2900 FF, DC1-POD-AC-L2-2910 FF, DC1-POD-AC-L2-2920 FF, DC1-POD-AC-L2-2930 FF, DC1-POD-AC-L2-2940 FF, DC1-POD-AC-L2-2950 FF, DC1-POD-AC-L2-2960 FF, DC1-POD-AC-L2-2970 FF, DC1-POD-AC-L2-2980 FF, DC1-POD-AC-L2-2990 FF, DC1-POD-AC-L2-3000 FF, DC1-POD-AC-L2-3010 FF, DC1-POD-AC-L2-3020 FF, DC1-POD-AC-L2-3030 FF, DC1-POD-AC-L2-3040 FF, DC1-POD-AC-L2-3050 FF, DC1-POD-AC-L2-3060 FF, DC1-POD-AC-L2-3070 FF, DC1-POD-AC-L2-3080 FF, DC1-POD-AC-L2-3090 FF, DC1-POD-AC-L2-3100 FF, DC1-POD-AC-L2-3110 FF, DC1-POD-AC-L2-3120 FF, DC1-POD-AC-L2-3130 FF, DC1-POD-AC-L2-3140 FF, DC1-POD-AC-L2-3150 FF, DC1-POD-AC-L2-3160 FF, DC1-POD-AC-L2-3170 FF, DC1-POD-AC-L2-3180 FF, DC1-POD-AC-L2-3190 FF, DC1-POD-AC-L2-3200 FF, DC1-POD-AC-L2-3210 FF, DC1-POD-AC-L2-3220 FF, DC1-POD-AC-L2-3230 FF, DC1-POD-AC-L2-3240 FF, DC1-POD-AC-L2-3250 FF, DC1-POD-AC-L2-3260 FF, DC1-POD-AC-L2-3270 FF, DC1-POD-AC-L2-3280 FF, DC1-POD-AC-L2-3290 FF, DC1-POD-AC-L2-3300 FF, DC1-POD-AC-L2-3310 FF, DC1-POD-AC-L2-3320 FF, DC1-POD-AC-L2-3330 FF, DC1-POD-AC-L2-3340 FF, DC1-POD-AC-L2-3350 FF, DC1-POD-AC-L2-3360 FF, DC1-POD-AC-L2-3370 FF, DC1-POD-AC-L2-3380 FF, DC1-POD-AC-L2-3390 FF, DC1-POD-AC-L2-2390 FF, DC1-POD-AC-L2-2660 FF, QTS-12481 FF, QTS-14391 FF, QTS-15211 FF, QTS-13271 FF, QTS-50691 FF, QTS-14011 FF, QTS-13261 FF, QTS-22521 FF, QTS-22751 FF, QTS-23071 FF, QTS-101680 FF, QTS-101690 FF, DC1-DH2100-LB-1030 FF, DC1-DH1100-LB-1020 FF, DC1-DH2200-LB-1020 FF, DC1-DH1200-LB-1020 FF, DC1-DH2300-LB-1020 FF, DC1-DH1300-LB-1020 FF, QTS-14121 FF, QTS-49401 FF, DC1-L4-Cx-1015 FF, DC1-L4-Cx-1025 FF, DC1-L4-Cx-1035 FF, DC1-L4-Cx-1045 FF, QTS-28731 FF, QTS-100290 FF, QTS-100510 FF, QTS-100580 FF, QTS-100590 FF, QTS-100600 FF, QTS-100610 FF, QTS-100620 FF, QTS-100630 FF, QTS-45311 FF, QTS-100540 FF, QTS-30831 FF, QTS-13091 FF, QTS-102540 FF, QTS-1002500 FF, QTS-1002510 FF, QTS-1002560 FF, QTS-1002570 FF, QTS-1003450 FF, QTS-1003460 FF, QTS-1003470 FF, QTS-1003890 FF, QTS-1003900 FF, QTS - 15130 FF, QTS - 24591 FF, QTS-14241 FF, QTS-13061 FF, QTS-13461 FF, QTS-1003260 FF, QTS-1003280 FF, QTS-1003340 FF, QTS-1003660 FF, QTS-1003670 FF, QTS-1003680 FF, QTS-1003690 FF, QTS-1003700 FF, QTS-1003760 FF, QTS-1003770 FF, QTS-3811 FF, QTS-5541 FF, QTS-7021 FF, QTS-8731 FF, QTS-3901 FF, QTS-5561 FF, QTS-7071 FF, QTS-8891 FF, QTS-3991 FF, QTS-5581 FF, QTS-7121 FF, QTS-9051 FF, QTS-4081 FF, QTS-5601 FF, QTS-7171 FF, QTS-9211 FF, QTS-4171 FF, QTS-6221 FF, QTS-7221 FF, QTS-9371 FF, QTS-4261 FF, QTS-5641 FF, QTS-7271 FF, QTS-9531 FF, QTS-25651 FF, QTS-25171 FF, QTS-18511 FF, QTS-16051 FF, QTS-17941 FF, QTS-44391 FF, QTS-44441 FF, QTS-24181 FF, QTS-18261 FF, QTS-16811 FF, QTS-24561 FF, QTS-25341 FF, QTS-44141 FF, QTS-13601 FF, QTS-41671 FF, QTS-15541 FF, QTS-15931 FF, QTS-17441 FF, QTS-44361 FF, QTS-1000320 FF, QTS-1001230 FF, QTS-15971 FF, QTS-15191 FF, QTS-15961 FF, QTS-17471 FF, QTS-42891 FF, QTS-50011 FF, QTS-2191 FF, QTS-18641 FF, QTS-18961 FF, QTS-39792 FF, QTS-39812 FF, QTS-39782 FF, QTS-39802 FF, QTS-17711 FF, QTS-18651 FF, QTS-50291 FF, QTS-18981 FF, QTS-41401 FF, QTS-41421 FF, QTS-101170 FF, QTS-50301 FF, QTS-50311 FF, QTS-41391 FF, QTS-41411 FF, QTS-50321 FF, QTS-101220 FF, QTS-101130 FF, QTS-101140 FF, QTS-101150 FF, QTS-101200 FF, QTS-101190 FF, QTS-101210 FF, QTS-101230 FF, QTS-101240 FF, QTS-101250 FF, QTS-101260 FF, QTS-101300 FF, QTS-101310 FF, QTS-101320 FF, QTS-101330 FF, QTS-101270 FF, QTS-101280 FF, QTS-101290 FF, QTS-15151 FF, QTS-15901 FF, QTS-15911 FF, QTS-17411 FF, QTS-1000300 FF, QTS-42851 FF, QTS-1004830 FF, QTS-1001840 FF, QTS-101050 FF, QTS-101040 FF, QTS-101090 FF, QTS-101080 FF, QTS-101070 FF, QTS-101060 FF, QTS-101020 FF, QTS-50211 FF, QTS-50221 FF, QTS-50231 FF, QTS-50241 FF, QTS-100890 FF, QTS-100930 FF, QTS-101510 FF, QTS-101520 FF, QTS-101530 FF, QTS-100810 FF, QTS-100830 FF, QTS-100850 FF, QTS-1001960 FF, QTS-M4090 FF, QTS-M4170 FF, QTS-M4300 FF, QTS-M4310 FF, QTS-M4330 FF, QTS-M4050 FF, QTS-M4010 FF, QTS-M4270 FF, QTS-M4220 FF, QTS-M4070 FF, QTS-M4140 FF, QTS-M4180 FF, QTS-M4060 FF, QTS-M4080 FF, QTS-M4200 FF, QTS-M4230 FF, QTS-M4100 FF, QTS-M4250 FF, QTS-M4280 FF, QTS-M4190 FF, QTS-M4030 FF, QTS-M4040 FF, QTS-M4120 FF, QTS-M4020 FF, QTS-M4000 FF, QTS-M4240 FF, QTS-M4290 FF, QTS-M4150 FF, QTS-M4260 FF, QTS-M4210 FF, QTS-M4160 FF, QTS-M4110 FF, QTS-M4130 FF, QTS-M4320 FF, QTS-14581 FF, QTS-27681 FF, QTS-28291 FF, QTS-29091 FF, QTS-30051 FF, QTS-28771 FF, QTS-29581 FF, QTS-29371 FF, QTS-29411 FF, QTS-29591 FF, QTS-29781 FF, QTS-29981 FF, QTS-30171 FF, QTS-30351 FF, QTS-30421 FF, QTS-29821 FF, QTS-29151 FF, QTS-26921 FF, QTS-28401 FF, QTS-28791 FF, QTS-29101 FF, QTS-30361 FF, QTS-29161 FF, QTS-29171 FF, QTS-29691 FF, QTS-29721 FF, QTS-29841 FF, QTS-30111 FF, QTS-30291 FF, QTS-30461 FF, QTS-30511 FF, QTS-30541 FF, QTS-29611 FF, QTS-29181 FF, QTS-29471 FF, QTS-29621 FF, QTS-30641 FF, QTS-30671 FF, QTS-29201 FF, QTS-29111 FF, QTS-30371 FF, QTS-29851 FF, QTS-29651 FF, QTS-29861 FF, QTS-29871 FF, QTS-30121 FF, QTS-30611, QTS-30621, QTS-30191 FF, QTS-29211 FF, QTS-29231 FF, QTS-29921 FF, QTS-29731 FF, QTS-29931 FF, QTS-29941 FF, QTS-30151 FF, QTS-30221 FF, QTS-30311 FF, QTS-30581 FF, QTS-30061 FF, QTS-30701 FF, QTS-30651 FF, QTS-30231 FF, QTS-30391 FF, QTS-29741 FF, QTS-30071 FF, QTS-30081 FF, QTS-30131 FF, QTS-27781 FF, QTS-28321 FF, QTS-29121 FF, QTS-30471 FF, QTS-28561 FF, QTS-29881 FF, QTS-29701 FF, QTS-29891 FF, QTS-29901 FF, QTS-30251 FF, QTS-30401 FF, QTS-30551 FF, QTS-30631 FF, QTS-30661 FF, QTS-30201 FF, QTS-29241 FF, QTS-29521 FF, QTS-28201 FF, QTS-26981 FF, QTS-26861 FF, QTS-30211 FF, QTS-28451 FF, QTS-28921 FF, QTS-29251 FF, QTS-30091 FF, QTS-28461 FF, QTS-29421 FF, QTS-29761 FF, QTS-29771 FF, QTS-30011 FF, QTS-30431 FF, QTS-29631 FF, QTS-26661 FF, QTS-29361 FF, QTS-30521 FF, QTS-29971 FF, QTS-29261 FF, QTS-29071 FF, QTS-11421 FF, QTS-10821 FF, QTS-44121 FF, QTS-44881 FF, QTS-44911 FF, QTS-44941 FF, QTS-44951 FF, QTS-44961 FF, QTS-44971 FF, QTS - 24391 FF, QTS - 24441 FF, QTS-1002320 FF, QTS-1002580 FF, QTS-1002590 FF, QTS-1002600 FF, QTS-1004100 FF, QTS-1005230 FF, QTS - 26021 FF, QTS-1009250 FF, QTS-1009280 FF, QTS-1009290 FF, QTS-1009300 FF, QTS-18381, QTS-45171, QTS-45411, QTS - 24571, QTS - 25121, QTS - 25161, QTS - 24581, QTS - 24531, QTS - 24541, QTS - 25091, QTS - 25131, QTS - 25171, QTS - 25101, QTS - 25141, QTS - 25181, QTS - 15100, QTS - 15110, QTS - 15120, QTS - 15070, QTS - 15080, QTS-1001720, QTS-1011080, QTS-1011090, QTS-1011110, QTS - 24561, DC1-L4-Cx-1010, DC1-MECH-L4-Cx-1010, DC1-MECH-L4-Cx-1100, DC1-L4-Cx-1060, DC1-MECH-L4-Cx-1020, DC1-MECH-L4-Cx-1030, DC1-MECH-L4-Cx-1080, DC1-MECH-L4-Cx-1040, DC1-MECH-L4-Cx-1090, DC1-MECH-L4-Cx-1070, DC1-MECH-L4-Cx-1050, DC1-MECH-L4-Cx-1060, QTS - 25211, QTS - 25221, QTS - 24971, QTS - 25331, QTS - 24981, QTS - 25341, QTS - 3590, QTS - 25571, QTS - 25581, QTS - 25451, QTS - 25461, QTS - 2930, QTS - 3130, QTS - 3140, QTS - 3160, QTS - 3470, QTS - 3480, QTS - 3560, QTS - 3570, QTS - 5430, QTS - 5590, QTS - 5600, QTS - 5660, QTS - 5820, QTS - 5830, QTS - 6020, QTS - 6030, QTS - 6110, QTS - 6120, QTS - 6730, QTS - 6890, QTS - 6900, QTS - 6960, QTS - 7120, QTS - 7130, QTS - 7320, QTS - 7330, QTS - 7410, QTS - 7420, QTS - 8050, QTS - 8210, QTS - 8220, QTS - 8280, QTS - 8440, QTS - 8730, QTS - 8740, QTS - 9350, QTS - 9510, QTS - 9520, QTS - 9580, QTS - 9740, QTS - 9750, QTS - 9940, QTS - 9950, QTS - 10030, QTS - 10040, QTS - 25001, QTS - 25011, QTS - 25021, QTS - 25041, QTS - 25051, QTS - 25061, QTS - 25241, QTS - 25251, QTS - 25261, QTS - 25281, QTS - 25291, QTS - 25301, QTS - 25361, QTS - 25371, QTS - 25381, QTS - 25401, QTS - 25411, QTS - 25481, QTS - 25491, QTS - 25501, QTS - 25521, QTS - 25531, QTS - 25541, QTS - 25601, QTS - 25611, QTS - 25621, QTS - 25641, QTS - 25651, QTS - 25661, QTS - 2900, QTS - 2910, QTS - 8450, QTS - 8650, QTS - 8640, QTS - 26291, QTS - 26271, QTS - 26281, QTS - 26301, QTS - 26311, QTS - 26321, QTS - 26331, QTS - 26341, QTS - 26351, QTS - 26361, QTS - 26371, QTS - 24991, QTS - 25031, QTS - 6130, QTS - 25231, QTS - 25271, QTS - 25351, QTS - 25391, QTS - 25471, QTS - 25511, QTS - 25591, QTS - 25631, QTS - 25421, QTS-1011070, QTS - 24911, QTS - 8620, QTS-1130.A, QTS-1011920, QTS-1130.A50, QTS-1130.A40, QTS-1012250, QTS-15351, QTS-16001, QTS-18231, QTS-16631, QTS-30761, QTS-1012320, QTS-24991, QTS - 1720, QTS - 3430, QTS - 10180, QTS - 3670, QTS - 3660, QTS - 1240, QTS - 3360, QTS - 3420, QTS - 3410, QTS - 3550, QTS - 3540, QTS - 3390, QTS - 1280, QTS - 25941, QTS - 25951, QTS - 25931, QTS - 3620, QTS - 4670, QTS - 24471, QTS - 15010, QTS - 3830, QTS-1012510, QTS-25791, QTS-17541, QTS-17551, QTS-16061, QTS-1003070, QTS-13731, QTS-18401, QTS-14941, QTS-15471, QTS - 6010, QTS - 6000, QTS - 5100, QTS - 5230, QTS - 5110, QTS - 5130, QTS - 5240, QTS - 6190, QTS - 5250, QTS - 6200, QTS - 6220, QTS - 6210, QTS - 6230, QTS - 5140, QTS-16291, QTS-1010950, QTS-1010960, QTS - 5870, QTS - 5890, QTS - 5900, QTS - 5920, QTS - 5930, QTS - 5940, QTS - 5950, QTS - 5960, QTS - 5970, QTS - 5980, QTS - 5990, QTS - 6060, QTS - 6070, QTS - 6080, QTS - 6090, QTS - 6100, QTS-18521, QTS - 5050, QTS - 5170, QTS - 5060, QTS - 6140, QTS - 5350, QTS - 5340, QTS - 5330, QTS - 25201, QTS - 10390, QTS - 5160, QTS - 6170, QTS - 1330, QTS - 3050, QTS - 3280, QTS - 5550, QTS - 5580, QTS - 10410, QTS - 5510, QTS - 5540, QTS - 6160, QTS - 5780, QTS - 5810, QTS - 10430, QTS - 5770, QTS - 6050, QTS-28241, QTS-17561, QTS-17571, QTS-1000610, QTS-16081, QTS-13801, QTS-14961, QTS-18421, QTS-15491, QTS-1003550, QTS-16341, QTS-18531, QTS - 7680, QTS - 7970, QTS - 8760, QTS - 7950, QTS - 25321, QTS - 10450, QTS - 7670, QTS - 7780, QTS - 8790, QTS - 8200, QTS - 10470, QTS - 8130, QTS - 8160, QTS - 8780, QTS - 8430, QTS - 10490, QTS - 8360, QTS - 8390, QTS - 8670, QTS - 8750, QTS - 7720, QTS - 7730, QTS - 7760, QTS - 7860, QTS - 7750, QTS - 7870, QTS - 8810, QTS - 8820, QTS - 8840, QTS - 8830, QTS - 8850, QTS - 8550, QTS - 6560, QTS - 25431, QTS - 7430, QTS - 6650, QTS - 6630, QTS - 6250, QTS - 7480, QTS - 25861, QTS - 7470, QTS - 6850, QTS - 6860, QTS - 6880, QTS - 6710, QTS - 6780, QTS - 25851, QTS - 6800, QTS - 7460, QTS - 7080, QTS - 7090, QTS - 7110, QTS - 6940, QTS - 7010, QTS - 25841, QTS - 7030, QTS - 7350, QTS - 8540, QTS - 8690, QTS - 8720, QTS - 8610, QTS - 8520, QTS - 8570, QTS - 8580, QTS - 8600, QTS - 8560, QTS - 8680, QTS - 8700, QTS - 8710, QTS - 8510, QTS - 8590, QTS - 8530, QTS - 8490, QTS-25771, QTS-24641, QTS-4990, QTS-5010, QTS-17581, QTS-17591, QTS-16101, QTS-14261, QTS-1003580, QTS-18441, QTS-14981, QTS-102520, QTS-13871, QTS-1012360, QTS-1012420, QTS - 26521, QTS - 24401, QTS - 24451, QTS - 24411, QTS - 26501, QTS - 26511, QTS - 6470, QTS - 6440, QTS - 7300, QTS - 7280, QTS - 7230, QTS - 9900, QTS - 9920, QTS-1013410, QTS - 6280, QTS - 6300, QTS - 6640, QTS - 6660, QTS - 7440, QTS - 25441, QTS - 6320, QTS - 6350, QTS - 6340, QTS - 6360, QTS - 6450, QTS - 6740, QTS - 7450, QTS - 6760, QTS - 6910, QTS - 6810, QTS - 6820, QTS - 6830, QTS - 6970, QTS - 7340, QTS - 7040, QTS - 6990, QTS - 7140, QTS - 7050, QTS - 7060, QTS - 6380, QTS - 6420, QTS - 6530, QTS - 10270, QTS - 6620, QTS - 6390, QTS - 6410, QTS - 10280, QTS - 6400, QTS - 6540, QTS - 6430, QTS - 7310, QTS - 7500, QTS - 7490, QTS - 7510, QTS - 7520, QTS - 7530, QTS - 7170, QTS - 7180, QTS - 7190, QTS - 7200, QTS - 7210, QTS - 7220, QTS - 7240, QTS - 7250, QTS - 7260, QTS - 7270, QTS - 7290, QTS - 7360, QTS - 7370, QTS - 7380, QTS - 7390, QTS - 7400, QTS-46771, QTS-46781, QTS-16431, QTS-16441, QTS-16611, QTS - 8870, QTS - 8900, QTS - 8920, QTS - 8970, QTS - 9280, QTS - 25561, QTS - 9330, QTS - 9360, QTS - 9380, QTS - 9430, QTS - 9530, QTS - 9560, QTS - 9590, QTS - 9610, QTS - 9660, QTS - 9760, QTS - 9800, QTS - 9810, QTS - 9820, QTS - 9830, QTS - 9840, QTS - 9860, QTS - 9870, QTS - 9880, QTS - 9890, QTS - 9910, QTS - 9980, QTS - 9990, QTS - 10000, QTS - 10010, QTS - 10020, QTS - 9010, QTS - 9020, QTS - 9030, QTS - 9040, QTS - 9050, QTS - 9150, QTS - 9160, QTS - 9170, QTS - 9240, QTS - 9930, QTS - 10110, QTS - 10120, QTS - 10130, QTS - 10140, QTS - 10150, QTS - 10290, QTS - 10300, QTS - 9000, QTS - 9790, QTS-1013420, QTS-1013430, DC1-CDU-L2-1000, DC1-CDU-L2-1010, DC1-CDU-L2-1020, DC1-CDU-L2-1030, DC1-CDU-L2-1040, DC1-CDU-L2-1050, DC1-CDU-L2-1070, DC1-CDU-L2-1080, DC1-CDU-L2-1090, DC1-CDU-L2-1100, DC1-CDU-L2-1110, DC1-CDU-L2-1120, DC1-CDU-L2-1140, DC1-CDU-L2-1150, DC1-CDU-L2-1160, DC1-CDU-L2-1170, DC1-CDU-L2-1180, DC1-CDU-L2-1190, DC1-CRAH-L2-3600, DC1-CDU-L3-CX-1000, DC1-CDU-L3-CX-1005, DC1-CDU-L3-CX-1010, DC1-CDU-L3-CX-1015, DC1-CDU-L3-CX-1020, DC1-CDU-L3-CX-1025, DC1-CDU-L3-CX-1030, DC1-CDU-L3-CX-1035, DC1-CDU-L3-CX-1040, DC1-CDU-L3-CX-1045, DC1-CDU-L3-CX-1050, DC1-CDU-L3-CX-1055, DC1-CDU-L3-CX-1060, DC1-CDU-L3-CX-1065, DC1-CDU-L3-CX-1070, DC1-CDU-L3-CX-1075, DC1-CDU-L3-CX-1080, DC1-CDU-L3-CX-1085, DC1-CDU-L3-CX-1105, DC1-CDU-L3-CX-1110, DC1-CDU-L3-CX-1115, DC1-CDU-L3-CX-1120, DC1-CDU-L3-CX-1125, DC1-CDU-L3-CX-1130, DC1-CDU-L3-CX-1135, DC1-CDU-L3-CX-1140, DC1-CDU-L3-CX-1145, DC1-CDU-L3-CX-1150, DC1-CDU-L3-CX-1155, DC1-CDU-L3-CX-1160, DC1-CDU-L3-CX-1165, DC1-CDU-L3-CX-1170, DC1-CDU-L3-CX-1175, DC1-CDU-L3-CX-1180, DC1-CDU-L3-CX-1185, DC1-CDU-L3-CX-1190, DC1-CDU-L3-CX-1210, DC1-CDU-L3-CX-1215, DC1-CDU-L3-CX-1220, DC1-CDU-L3-CX-1225, DC1-CDU-L3-CX-1230, DC1-CDU-L3-CX-1235, DC1-CDU-L3-CX-1240, DC1-CDU-L3-CX-1245, DC1-CDU-L3-CX-1250, DC1-CDU-L3-CX-1255, DC1-CDU-L3-CX-1260, DC1-CDU-L3-CX-1265, DC1-CDU-L3-CX-1270, DC1-CDU-L3-CX-1275, DC1-CDU-L3-CX-1280, DC1-CDU-L3-CX-1285, DC1-CDU-L3-CX-1290, DC1-CDU-L3-CX-1295, DC1-DOAS-L3-Cx-2300, DC1-DOAS-L3-Cx-2310, DC1-DOAS-L3-Cx-2320, DC1-DH2100-LB-1020, DC1-DH2100-LB-1040, DC1-DH2100-LB-1050, DC1-DH2100-LB-1060, DC1-DH2100-TAB-1010, DC1-L4-Cx-1070, DC1-L4-Cx-1080, DC1-L4-Cx-1000, DC1-IST-1000, DC1-CDU-L3-CX-2000, DC1-CDU-L3-CX-2005, DC1-CDU-L3-CX-2010, DC1-CDU-L3-CX-2015, DC1-CDU-L3-CX-2020, DC1-CDU-L3-CX-2025, DC1-CDU-L3-CX-2030, DC1-CDU-L3-CX-2035, DC1-CDU-L3-CX-2040, DC1-CDU-L3-CX-2045, DC1-CDU-L3-CX-2050, DC1-CDU-L3-CX-2055, DC1-CDU-L3-CX-2060, DC1-CDU-L3-CX-2065, DC1-CDU-L3-CX-2070, DC1-CDU-L3-CX-2075, DC1-CDU-L3-CX-2080, DC1-CDU-L3-CX-2085, DC1-DOAS-L3-Cx-2330, DC1-DOAS-L3-Cx-2340, DC1-DOAS-L3-Cx-2350, DC1-DH1100-LB-1030, DC1-DH1100-LB-1060, DC1-DH1100-LB-1040, DC1-DH1100-LB-1050, DC1-ELEC-L4-Cx-1010, DC1-ELEC-L4-Cx-1100, DC1-IST-2000, DC1-ATS-L2-2360, DC1-ATS-L2-2370, DC1-ATS-L2-2380, DC1-ATS-L2-2390, DC1-ATS-L2-2400, DC1-ATS-L2-2410, DC1-ATS-L2-2420, DC1-ATS-L2-2430, DC1-ATS-L2-2440, DC1-ATS-L2-2450, DC1-ATS-L2-2460, DC1-ATS-L2-2470, DC1-ATS-L2-2480, DC1-ATS-L2-2490, DC1-ATS-L2-2500, DC1-ATS-L2-2510, DC1-ATS-L2-2520, DC1-ATS-L2-2530, DC1-ATS-L2-2540, DC1-ATS-L2-2550, DC1-ATS-L2-2560, DC1-ATS-L2-2570, DC1-ATS-L2-2580, DC1-ATS-L2-2590, DC1-ATS-L2-2600, DC1-ATS-L2-2610, DC1-ATS-L2-2620, DC1-ATS-L2-2630, DC1-ATS-L2-2640, DC1-ATS-L2-2650, DC1-ATS-L2-2660, DC1-ATS-L2-2670, DC1-ATS-L2-2680, DC1-ATS-L2-2690, DC1-ATS-L2-2700, DC1-ATS-L2-2710, DC1-COD-L2-2360, DC1-COD-L2-2370, DC1-COD-L2-2380, DC1-COD-L2-2390, DC1-COD-L2-2400, DC1-COD-L2-2410, DC1-COD-L2-2420, DC1-COD-L2-2430, DC1-COD-L2-2440, DC1-COD-L2-2450, DC1-COD-L2-2460, DC1-COD-L2-2470, DC1-COD-L2-2480, DC1-COD-L2-2490, DC1-COD-L2-2500, DC1-COD-L2-2510, DC1-COD-L2-2520, DC1-COD-L2-2530, DC1-COD-L2-2540, DC1-COD-L2-2550, DC1-COD-L2-2560, DC1-COD-L2-2570, DC1-COD-L2-2580, DC1-COD-L2-2590, DC1-COD-L2-2600, DC1-COD-L2-2610, DC1-COD-L2-2620, DC1-COD-L2-2630, DC1-COD-L2-2640, DC1-COD-L2-2650, DC1-COD-L2-2660, DC1-COD-L2-2670, DC1-COD-L2-2680, DC1-COD-L2-2690, DC1-COD-L2-2700, DC1-COD-L2-2710, DC1-RPP-L2-2360, DC1-RPP-L2-2370, DC1-RPP-L2-2380, DC1-RPP-L2-2390, DC1-RPP-L2-2400, DC1-RPP-L2-2410, DC1-RPP-L2-2420, DC1-RPP-L2-2430, DC1-RPP-L2-2440, DC1-RPP-L2-2450, DC1-RPP-L2-2460, DC1-RPP-L2-2470, DC1-RPP-L2-2480, DC1-RPP-L2-2490, DC1-RPP-L2-2500, DC1-RPP-L2-2510, DC1-RPP-L2-2520, DC1-RPP-L2-2530, DC1-RPP-L2-2540, DC1-RPP-L2-2550, DC1-RPP-L2-2560, DC1-RPP-L2-2570, DC1-RPP-L2-2580, DC1-RPP-L2-2590, DC1-RPP-L2-2600, DC1-RPP-L2-2610, DC1-RPP-L2-2620, DC1-RPP-L2-2630, DC1-RPP-L2-2640, DC1-RPP-L2-2650, DC1-RPP-L2-2660, DC1-RPP-L2-2670, DC1-RPP-L2-2680, DC1-RPP-L2-2690, DC1-RPP-L2-2700, DC1-RPP-L2-2710, DC1-MOD03-L2-2070, DC1-MOD03-L2-2080, DC1-MOD03-L2-2090, DC1-MOD03-L2-2100, DC1-MOD03-L2-2110, DC1-MOD03-L2-2120, DC1-MOD03-L2-2130, DC1-CDU-L2-2550, DC1-CDU-L2-2560, DC1-CDU-L2-2570, DC1-CDU-L2-2580, DC1-CDU-L2-2590, DC1-CDU-L2-2600, DC1-CDU-L2-2610, DC1-CDU-L2-2620, DC1-CDU-L2-2630, DC1-CDU-L2-2640, DC1-CDU-L2-2650, DC1-CDU-L2-2660, DC1-CDU-L2-2670, DC1-CDU-L2-2680, DC1-CDU-L2-2690, DC1-CDU-L2-2700, DC1-CDU-L2-2710, DC1-CDU-L2-2720, DC1-CHLR-L2-1070, DC1-CHLR-L2-1080, DC1-CHLR-L2-1090, DC1-CHLR-L2-1100, DC1-CHLR-L2-1110, DC1-CHLR-L2-1120, DC1-CHLR-L2-1130, DC1-CRAH-L2-2320, DC1-CRAH-L2-2330, DC1-CRAH-L2-2340, DC1-CRAH-L2-2350, DC1-CRAH-L2-2360, DC1-CRAH-L2-2370, DC1-CRAH-L2-2380, DC1-CRAH-L2-2390, DC1-CRAH-L2-2400, DC1-CRAH-L2-2410, DC1-CRAH-L2-2420, DC1-CRAH-L2-2430, DC1-CRAH-L2-2440, DC1-CRAH-L2-2450, DC1-CRAH-L2-2460, DC1-CRAH-L2-2470, DC1-CRAH-L2-2480, DC1-CRAH-L2-2490, DC1-CRAH-L2-2500, DC1-CRAH-L2-2510, DC1-CRAH-L2-2520, DC1-CRAH-L2-2530, DC1-CRAH-L2-2540, DC1-CRAH-L2-2550, DC1-CRAH-L2-2560, DC1-CRAH-L2-2570, DC1-CRAH-L2-2580, DC1-CRAH-L2-2590, DC1-CRAH-L2-2600, DC1-CRAH-L2-2610, DC1-CRAH-L2-2620, DC1-CRAH-L2-2630, DC1-DOAS-L2-2020, DC1-DOAS-L2-2030, DC1-ATS-L3-CX-2545, DC1-ATS-L3-CX-2555, DC1-ATS-L3-CX-2565, DC1-ATS-L3-CX-2575, DC1-ATS-L3-CX-2585, DC1-ATS-L3-CX-2595, DC1-ATS-L3-CX-2605, DC1-ATS-L3-CX-2615, DC1-ATS-L3-CX-2625, DC1-ATS-L3-CX-2635, DC1-ATS-L3-CX-2645, DC1-ATS-L3-CX-2655, DC1-ATS-L3-CX-2665, DC1-ATS-L3-CX-2675, DC1-ATS-L3-CX-2685, DC1-ATS-L3-CX-2695, DC1-ATS-L3-CX-2705, DC1-ATS-L3-CX-2715, DC1-ATS-L3-CX-2725, DC1-ATS-L3-CX-2735, DC1-ATS-L3-CX-2745, DC1-ATS-L3-CX-2755, DC1-ATS-L3-CX-2765, DC1-ATS-L3-CX-2775, DC1-ATS-L3-CX-2785, DC1-ATS-L3-CX-2795, DC1-ATS-L3-CX-2805, DC1-ATS-L3-CX-2815, DC1-ATS-L3-CX-2825, DC1-ATS-L3-CX-2835, DC1-ATS-L3-CX-2845, DC1-ATS-L3-CX-2855, DC1-ATS-L3-CX-2865, DC1-ATS-L3-CX-2875, DC1-ATS-L3-CX-2885, DC1-ATS-L3-CX-2895, DC1-ATS-L3-CX-2905, DC1-ATS-L3-CX-2915, DC1-ATS-L3-CX-2925, DC1-ATS-L3-CX-2935, DC1-ATS-L3-CX-2945, DC1-ATS-L3-CX-2955, DC1-ATS-L3-CX-2965, DC1-ATS-L3-CX-2975, DC1-ATS-L3-CX-2985, DC1-ATS-L3-CX-2995, DC1-ATS-L3-CX-3005, DC1-ATS-L3-CX-3015, DC1-ATS-L3-CX-3025, DC1-ATS-L3-CX-3035, DC1-ATS-L3-CX-3045, DC1-ATS-L3-CX-3055, DC1-ATS-L3-CX-3065, DC1-ATS-L3-CX-3075, DC1-ATS-L3-CX-3085, DC1-ATS-L3-CX-3095, DC1-ATS-L3-CX-3105, DC1-ATS-L3-CX-3115, DC1-ATS-L3-CX-3125, DC1-ATS-L3-CX-3135, DC1-ATS-L3-CX-3145, DC1-ATS-L3-CX-3155, DC1-ATS-L3-CX-3165, DC1-ATS-L3-CX-3175, DC1-ATS-L3-CX-3185, DC1-ATS-L3-CX-3195, DC1-ATS-L3-CX-3205, DC1-ATS-L3-CX-3215, DC1-ATS-L3-CX-3225, DC1-ATS-L3-CX-3235, DC1-ATS-L3-CX-3245, DC1-ATS-L3-CX-3255, DC1-ATS-L3-CX-3265, DC1-ATS-L3-CX-3275, DC1-ATS-L3-CX-3285, DC1-ATS-L3-CX-3295, DC1-ATS-L3-CX-3305, DC1-ATS-L3-CX-3315, DC1-ATS-L3-CX-3325, DC1-ATS-L3-CX-3335, DC1-ATS-L3-CX-3345, DC1-ATS-L3-CX-3355, DC1-ATS-L3-CX-3365, DC1-ATS-L3-CX-3375, DC1-ATS-L3-CX-3385, DC1-ATS-L3-CX-3395, DC1-ATS-L3-CX-3405, DC1-ATS-L3-CX-3415, DC1-ATS-L3-CX-3425, DC1-ATS-L3-CX-3435, DC1-ATS-L3-CX-3445, DC1-ATS-L3-CX-3455, DC1-ATS-L3-CX-3465, DC1-ATS-L3-CX-3475, DC1-ATS-L3-CX-3485, DC1-ATS-L3-CX-3495, DC1-ATS-L3-CX-3505, DC1-ATS-L3-CX-3515, DC1-ATS-L3-CX-3525, DC1-ATS-L3-CX-3535, DC1-ATS-L3-CX-3545, DC1-ATS-L3-CX-3555, DC1-ATS-L3-CX-3565, DC1-ATS-L3-CX-3575, DC1-ATS-L3-CX-3585, DC1-ATS-L3-CX-3595, DC1-ATS-L3-CX-3605, DC1-ATS-L3-CX-3615, DC1-COD-L3-CX-2545, DC1-COD-L3-CX-2555, DC1-COD-L3-CX-2565, DC1-COD-L3-CX-2575, DC1-COD-L3-CX-2585, DC1-COD-L3-CX-2595, DC1-COD-L3-CX-2605, DC1-COD-L3-CX-2615, DC1-COD-L3-CX-2625, DC1-COD-L3-CX-2635, DC1-COD-L3-CX-2645, DC1-COD-L3-CX-2655, DC1-COD-L3-CX-2665, DC1-COD-L3-CX-2675, DC1-COD-L3-CX-2685, DC1-COD-L3-CX-2695, DC1-COD-L3-CX-2705, DC1-COD-L3-CX-2715, DC1-COD-L3-CX-2725, DC1-COD-L3-CX-2735, DC1-COD-L3-CX-2745, DC1-COD-L3-CX-2755, DC1-COD-L3-CX-2765, DC1-COD-L3-CX-2775, DC1-COD-L3-CX-2785, DC1-COD-L3-CX-2795, DC1-COD-L3-CX-2805, DC1-COD-L3-CX-2815, DC1-COD-L3-CX-2825, DC1-COD-L3-CX-2835, DC1-COD-L3-CX-2845, DC1-COD-L3-CX-2855, DC1-COD-L3-CX-2865, DC1-COD-L3-CX-2875, DC1-COD-L3-CX-2885, DC1-COD-L3-CX-2895, DC1-COD-L3-CX-2905, DC1-COD-L3-CX-2915, DC1-COD-L3-CX-2925, DC1-COD-L3-CX-2935, DC1-COD-L3-CX-2945, DC1-COD-L3-CX-2955, DC1-COD-L3-CX-2965, DC1-COD-L3-CX-2975, DC1-COD-L3-CX-2985, DC1-COD-L3-CX-2995, DC1-COD-L3-CX-3005, DC1-COD-L3-CX-3015, DC1-COD-L3-CX-3025, DC1-COD-L3-CX-3035, DC1-COD-L3-CX-3045, DC1-COD-L3-CX-3055, DC1-COD-L3-CX-3065, DC1-COD-L3-CX-3075, DC1-COD-L3-CX-3085, DC1-COD-L3-CX-3095, DC1-COD-L3-CX-3105, DC1-COD-L3-CX-3115, DC1-COD-L3-CX-3125, DC1-COD-L3-CX-3135, DC1-COD-L3-CX-3145, DC1-COD-L3-CX-3155, DC1-COD-L3-CX-3165, DC1-COD-L3-CX-3175, DC1-COD-L3-CX-3185, DC1-COD-L3-CX-3195, DC1-COD-L3-CX-3205, DC1-COD-L3-CX-3215, DC1-COD-L3-CX-3225, DC1-COD-L3-CX-3235, DC1-COD-L3-CX-3245, DC1-COD-L3-CX-3255, DC1-COD-L3-CX-3265, DC1-COD-L3-CX-3275, DC1-COD-L3-CX-3285, DC1-COD-L3-CX-3295, DC1-COD-L3-CX-3305, DC1-COD-L3-CX-3315, DC1-COD-L3-CX-3325, DC1-COD-L3-CX-3335, DC1-COD-L3-CX-3345, DC1-COD-L3-CX-3355, DC1-COD-L3-CX-3365, DC1-COD-L3-CX-3375, DC1-COD-L3-CX-3385, DC1-COD-L3-CX-3395, DC1-COD-L3-CX-3405, DC1-COD-L3-CX-3415, DC1-COD-L3-CX-3425, DC1-COD-L3-CX-3435, DC1-COD-L3-CX-3445, DC1-COD-L3-CX-3455, DC1-COD-L3-CX-3465, DC1-COD-L3-CX-3475, DC1-COD-L3-CX-3485, DC1-COD-L3-CX-3495, DC1-COD-L3-CX-3505, DC1-COD-L3-CX-3515, DC1-COD-L3-CX-3525, DC1-COD-L3-CX-3535, DC1-COD-L3-CX-3545, DC1-COD-L3-CX-3555, DC1-COD-L3-CX-3565, DC1-COD-L3-CX-3575, DC1-COD-L3-CX-3585, DC1-COD-L3-CX-3595, DC1-COD-L3-CX-3605, DC1-COD-L3-CX-3615, DC1-RPP-L3-CX-2545, DC1-RPP-L3-CX-2555, DC1-RPP-L3-CX-2565, DC1-RPP-L3-CX-2575, DC1-RPP-L3-CX-2585, DC1-RPP-L3-CX-2595, DC1-RPP-L3-CX-2605, DC1-RPP-L3-CX-2615, DC1-RPP-L3-CX-2625, DC1-RPP-L3-CX-2635, DC1-RPP-L3-CX-2645, DC1-RPP-L3-CX-2655, DC1-RPP-L3-CX-2665, DC1-RPP-L3-CX-2675, DC1-RPP-L3-CX-2685, DC1-RPP-L3-CX-2695, DC1-RPP-L3-CX-2705, DC1-RPP-L3-CX-2715, DC1-RPP-L3-CX-2725, DC1-RPP-L3-CX-2735, DC1-RPP-L3-CX-2745, DC1-RPP-L3-CX-2755, DC1-RPP-L3-CX-2765, DC1-RPP-L3-CX-2775, DC1-RPP-L3-CX-2785, DC1-RPP-L3-CX-2795, DC1-RPP-L3-CX-2805, DC1-RPP-L3-CX-2815, DC1-RPP-L3-CX-2825, DC1-RPP-L3-CX-2835, DC1-RPP-L3-CX-2845, DC1-RPP-L3-CX-2855, DC1-RPP-L3-CX-2865, DC1-RPP-L3-CX-2875, DC1-RPP-L3-CX-2885, DC1-RPP-L3-CX-2895, DC1-RPP-L3-CX-2905, DC1-RPP-L3-CX-2915, DC1-RPP-L3-CX-2925, DC1-RPP-L3-CX-2935, DC1-RPP-L3-CX-2945, DC1-RPP-L3-CX-2955, DC1-RPP-L3-CX-2965, DC1-RPP-L3-CX-2975, DC1-RPP-L3-CX-2985, DC1-RPP-L3-CX-2995, DC1-RPP-L3-CX-3005, DC1-RPP-L3-CX-3015, DC1-RPP-L3-CX-3025, DC1-RPP-L3-CX-3035, DC1-RPP-L3-CX-3045, DC1-RPP-L3-CX-3055, DC1-RPP-L3-CX-3065, DC1-RPP-L3-CX-3075, DC1-RPP-L3-CX-3085, DC1-RPP-L3-CX-3095, DC1-RPP-L3-CX-3105, DC1-RPP-L3-CX-3115, DC1-RPP-L3-CX-3125, DC1-RPP-L3-CX-3135, DC1-RPP-L3-CX-3145, DC1-RPP-L3-CX-3155, DC1-RPP-L3-CX-3165, DC1-RPP-L3-CX-3175, DC1-RPP-L3-CX-3185, DC1-RPP-L3-CX-3195, DC1-RPP-L3-CX-3205, DC1-RPP-L3-CX-3215, DC1-RPP-L3-CX-3225, DC1-RPP-L3-CX-3235, DC1-RPP-L3-CX-3245, DC1-RPP-L3-CX-3255, DC1-RPP-L3-CX-3265, DC1-RPP-L3-CX-3275, DC1-RPP-L3-CX-3285, DC1-RPP-L3-CX-3295, DC1-RPP-L3-CX-3305, DC1-RPP-L3-CX-3315, DC1-RPP-L3-CX-3325, DC1-RPP-L3-CX-3335, DC1-RPP-L3-CX-3345, DC1-RPP-L3-CX-3355, DC1-RPP-L3-CX-3365, DC1-RPP-L3-CX-3375, DC1-RPP-L3-CX-3385, DC1-RPP-L3-CX-3395, DC1-RPP-L3-CX-3405, DC1-RPP-L3-CX-3415, DC1-RPP-L3-CX-3425, DC1-RPP-L3-CX-3435, DC1-RPP-L3-CX-3445, DC1-RPP-L3-CX-3455, DC1-RPP-L3-CX-3465, DC1-RPP-L3-CX-3475, DC1-RPP-L3-CX-3485, DC1-RPP-L3-CX-3495, DC1-RPP-L3-CX-3505, DC1-RPP-L3-CX-3515, DC1-RPP-L3-CX-3525, DC1-RPP-L3-CX-3535, DC1-RPP-L3-CX-3545, DC1-RPP-L3-CX-3555, DC1-RPP-L3-CX-3565, DC1-RPP-L3-CX-3575, DC1-RPP-L3-CX-3585, DC1-RPP-L3-CX-3595, DC1-RPP-L3-CX-3605, DC1-RPP-L3-CX-3615, DC1-MOD2-L3-Cx-2210, DC1-MOD2-L3-Cx-2220, DC1-MOD2-L3-Cx-2230, DC1-MOD2-L3-Cx-2240, DC1-MOD2-L3-Cx-2250, DC1-MOD2-L3-Cx-2260, DC1-MOD2-L3-Cx-2270, DC1-MOD2-L3-Cx-2280, DC1-MOD2-L3-Cx-2290, DC1-MOD2-L3-Cx-2300, DC1-MOD2-L3-Cx-2310, DC1-MOD2-L3-Cx-2320, DC1-MOD2-L3-Cx-2330, DC1-MOD2-L3-Cx-2340, DC1-MOD2-L3-Cx-2350, DC1-MOD2-L3-Cx-2360, DC1-MOD2-L3-Cx-2370, DC1-MOD2-L3-Cx-2380, DC1-MOD2-L3-Cx-2390, DC1-MOD2-L3-Cx-2400, DC1-MOD2-L3-Cx-2410, DC1-MOD3-L3-Cx-2210, DC1-MOD3-L3-Cx-2220, DC1-MOD3-L3-Cx-2230, DC1-MOD3-L3-Cx-2240, DC1-MOD3-L3-Cx-2250, DC1-MOD3-L3-Cx-2260, DC1-MOD3-L3-Cx-2270, DC1-MOD3-L3-Cx-2280, DC1-MOD3-L3-Cx-2290, DC1-MOD3-L3-Cx-2300, DC1-MOD3-L3-Cx-2310, DC1-MOD3-L3-Cx-2320, DC1-MOD3-L3-Cx-2330, DC1-MOD3-L3-Cx-2340, DC1-MOD3-L3-Cx-2350, DC1-MOD3-L3-Cx-2360, DC1-MOD3-L3-Cx-2370, DC1-MOD3-L3-Cx-2380, DC1-MOD3-L3-Cx-2390, DC1-MOD3-L3-Cx-2400, DC1-MOD3-L3-Cx-2410, DC1-CDU-L3-CX-2725, DC1-CDU-L3-CX-2735, DC1-CDU-L3-CX-2745, DC1-CDU-L3-CX-2755, DC1-CDU-L3-CX-2765, DC1-CDU-L3-CX-2775, DC1-CDU-L3-CX-2785, DC1-CDU-L3-CX-2795, DC1-CDU-L3-CX-2805, DC1-CDU-L3-CX-2815, DC1-CDU-L3-CX-2825, DC1-CDU-L3-CX-2835, DC1-CDU-L3-CX-2845, DC1-CDU-L3-CX-2855, DC1-CDU-L3-CX-2865, DC1-CDU-L3-CX-2875, DC1-CDU-L3-CX-2885, DC1-CDU-L3-CX-2895, DC1-CDU-L3-CX-2905, DC1-CDU-L3-CX-2915, DC1-CDU-L3-CX-2925, DC1-CDU-L3-CX-2935, DC1-CDU-L3-CX-2945, DC1-CDU-L3-CX-2955, DC1-CDU-L3-CX-2965, DC1-CDU-L3-CX-2975, DC1-CDU-L3-CX-2985, DC1-CDU-L3-CX-2995, DC1-CDU-L3-CX-3005, DC1-CDU-L3-CX-3015, DC1-CDU-L3-CX-3025, DC1-CDU-L3-CX-3035, DC1-CDU-L3-CX-3045, DC1-CDU-L3-CX-3055, DC1-CDU-L3-CX-3065, DC1-CDU-L3-CX-3075, DC1-CDU-L3-CX-3085, DC1-CDU-L3-CX-3095, DC1-CDU-L3-CX-3105, DC1-CDU-L3-CX-3115, DC1-CDU-L3-CX-3125, DC1-CDU-L3-CX-3135, DC1-CDU-L3-CX-3145, DC1-CDU-L3-CX-3155, DC1-CDU-L3-CX-3165, DC1-CDU-L3-CX-3175, DC1-CDU-L3-CX-3185, DC1-CDU-L3-CX-3195, DC1-CDU-L3-CX-3205, DC1-CDU-L3-CX-3215, DC1-CDU-L3-CX-3225, DC1-CDU-L3-CX-3235, DC1-CDU-L3-CX-3245, DC1-CDU-L3-CX-3255, DC1-CHLR-L3-Cx-2210, DC1-CHLR-L3-Cx-2420, DC1-CHLR-L3-Cx-2220, DC1-CHLR-L3-Cx-2230, DC1-CHLR-L3-Cx-2240, DC1-CHLR-L3-Cx-2430, DC1-CHLR-L3-Cx-2250, DC1-CHLR-L3-Cx-2260, DC1-CHLR-L3-Cx-2270, DC1-CHLR-L3-Cx-2440, DC1-CHLR-L3-Cx-2280, DC1-CHLR-L3-Cx-2290, DC1-CHLR-L3-Cx-2300, DC1-CHLR-L3-Cx-2450, DC1-CHLR-L3-Cx-2310, DC1-CHLR-L3-Cx-2320, DC1-CHLR-L3-Cx-2330, DC1-CHLR-L3-Cx-2460, DC1-CHLR-L3-Cx-2340, DC1-CHLR-L3-Cx-2350, DC1-CHLR-L3-Cx-2360, DC1-CHLR-L3-Cx-2470, DC1-CHLR-L3-Cx-2370, DC1-CHLR-L3-Cx-2380, DC1-CHLR-L3-Cx-2390, DC1-CHLR-L3-Cx-2480, DC1-CHLR-L3-Cx-2400, DC1-CHLR-L3-Cx-2410, DC1-CRAH-L3-Cx-2960, DC1-CRAH-L3-Cx-2970, DC1-CRAH-L3-Cx-2980, DC1-CRAH-L3-Cx-2990, DC1-CRAH-L3-Cx-3000, DC1-CRAH-L3-Cx-3010, DC1-CRAH-L3-Cx-3020, DC1-CRAH-L3-Cx-3030, DC1-CRAH-L3-Cx-3040, DC1-CRAH-L3-Cx-3050, DC1-CRAH-L3-Cx-3060, DC1-CRAH-L3-Cx-3070, DC1-CRAH-L3-Cx-3080, DC1-CRAH-L3-Cx-3090, DC1-CRAH-L3-Cx-3100, DC1-CRAH-L3-Cx-3110, DC1-CRAH-L3-Cx-3120, DC1-CRAH-L3-Cx-3130, DC1-CRAH-L3-Cx-3140, DC1-CRAH-L3-Cx-3150, DC1-CRAH-L3-Cx-3160, DC1-CRAH-L3-Cx-3170, DC1-CRAH-L3-Cx-3180, DC1-CRAH-L3-Cx-3190, DC1-CRAH-L3-Cx-3200, DC1-CRAH-L3-Cx-3210, DC1-CRAH-L3-Cx-3220, DC1-CRAH-L3-Cx-3230, DC1-CRAH-L3-Cx-3240, DC1-CRAH-L3-Cx-3250, DC1-CRAH-L3-Cx-3260, DC1-CRAH-L3-Cx-3270, DC1-CRAH-L3-Cx-3280, DC1-CRAH-L3-Cx-3290, DC1-CRAH-L3-Cx-3300, DC1-CRAH-L3-Cx-3310, DC1-CRAH-L3-Cx-3320, DC1-CRAH-L3-Cx-3330, DC1-CRAH-L3-Cx-3340, DC1-CRAH-L3-Cx-3350, DC1-CRAH-L3-Cx-3360, DC1-CRAH-L3-Cx-3370, DC1-CRAH-L3-Cx-3380, DC1-CRAH-L3-Cx-3390, DC1-CRAH-L3-Cx-3400, DC1-CRAH-L3-Cx-3410, DC1-CRAH-L3-Cx-3420, DC1-CRAH-L3-Cx-3430, DC1-CRAH-L3-Cx-3440, DC1-CRAH-L3-Cx-3450, DC1-CRAH-L3-Cx-3460, DC1-CRAH-L3-Cx-3470, DC1-CRAH-L3-Cx-3480, DC1-CRAH-L3-Cx-3490, DC1-CRAH-L3-Cx-3500, DC1-CRAH-L3-Cx-3510, DC1-CRAH-L3-Cx-3520, DC1-CRAH-L3-Cx-3530, DC1-CRAH-L3-Cx-3540, DC1-CRAH-L3-Cx-3550, DC1-CRAH-L3-Cx-3560, DC1-CRAH-L3-Cx-3570, DC1-CRAH-L3-Cx-3580, DC1-CRAH-L3-Cx-3590, DC1-CRAH-L3-Cx-3600, DC1-CRAH-L3-Cx-3610, DC1-CRAH-L3-Cx-3620, DC1-CRAH-L3-Cx-3630, DC1-CRAH-L3-Cx-3640, DC1-CRAH-L3-Cx-3650, DC1-CRAH-L3-Cx-3660, DC1-CRAH-L3-Cx-3670, DC1-CRAH-L3-Cx-3680, DC1-CRAH-L3-Cx-3690, DC1-CRAH-L3-Cx-3700, DC1-CRAH-L3-Cx-3710, DC1-CRAH-L3-Cx-3720, DC1-CRAH-L3-Cx-3730, DC1-CRAH-L3-Cx-3740, DC1-CRAH-L3-Cx-3750, DC1-CRAH-L3-Cx-3760, DC1-CRAH-L3-Cx-3770, DC1-CRAH-L3-Cx-3780, DC1-CRAH-L3-Cx-3790, DC1-CRAH-L3-Cx-3800, DC1-CRAH-L3-Cx-3810, DC1-CRAH-L3-Cx-3820, DC1-CRAH-L3-Cx-3830, DC1-CRAH-L3-Cx-3840, DC1-CRAH-L3-Cx-3850, DC1-CRAH-L3-Cx-3860, DC1-CRAH-L3-Cx-3870, DC1-CRAH-L3-Cx-3880, DC1-CRAH-L3-Cx-3890, DC1-CRAH-L3-Cx-3900, DC1-CRAH-L3-Cx-3910, DC1-DOAS-L3-Cx-2060, DC1-DOAS-L3-Cx-2070, DC1-DOAS-L3-Cx-2080, DC1-DOAS-L3-Cx-2090, DC1-DOAS-L3-Cx-2100, DC1-DOAS-L3-Cx-2110, DC1-DH2200-LB-1030, DC1-DH2200-LB-1060, DC1-DH2200-LB-1000, DC1-DH2200-LB-1010, DC1-DH2200-LB-1040, DC1-DH2200-LB-1050, DC1-DH2200-TAB-1000, DC1-DH2200-TAB-1010, DC1-ELEC-L4-Cx-1090, DC1-MECH-L4-Cx-1120, DC1-ELEC-L4-Cx-1020, DC1-IST-2010, DC1-BUS-L2-1020, DC1-BUS-L2-1030, DC1-BUS-L3-CX-2060, DC1-BUS-L3-CX-2070, DC1-BUS-L3-CX-2080, DC1-BUS-L3-CX-2090, DC1-BUS-L3-CX-2100, DC1-BUS-L3-CX-2110, DC1-CHWP-L3-Cx-2210, DC1-CHWP-L3-Cx-2220, DC1-CHWP-L3-Cx-2230, DC1-CHWP-L3-Cx-2240, DC1-CHWP-L3-Cx-2250, DC1-CHWP-L3-Cx-2260, DC1-CHWP-L3-Cx-2270, DC1-CHWP-L3-Cx-2280, DC1-CHWP-L3-Cx-2290, DC1-CHWP-L3-Cx-2300, DC1-CHWP-L3-Cx-2310, DC1-CHWP-L3-Cx-2320, DC1-CHWP-L3-Cx-2330, DC1-CHWP-L3-Cx-2340, DC1-CHWP-L3-Cx-2350, DC1-CHWP-L3-Cx-2360, DC1-CHWP-L3-Cx-2370, DC1-CHWP-L3-Cx-2380, DC1-CHWP-L3-Cx-2390, DC1-CHWP-L3-Cx-2400, DC1-CHWP-L3-Cx-2410, DC1-BUS-L2-1040, DC1-BUS-L2-1050, DC1-ATS-L2-2720, DC1-ATS-L2-2730, DC1-ATS-L2-2740, DC1-ATS-L2-2750, DC1-ATS-L2-2760, DC1-ATS-L2-2770, DC1-ATS-L2-2780, DC1-ATS-L2-2790, DC1-ATS-L2-2800, DC1-ATS-L2-2810, DC1-ATS-L2-2820, DC1-ATS-L2-2830, DC1-ATS-L2-2840, DC1-ATS-L2-2850, DC1-ATS-L2-2860, DC1-ATS-L2-2870, DC1-ATS-L2-2880, DC1-ATS-L2-2890, DC1-ATS-L2-2900, DC1-ATS-L2-2910, DC1-ATS-L2-2920, DC1-ATS-L2-2930, DC1-ATS-L2-2940, DC1-ATS-L2-2950, DC1-ATS-L2-2960, DC1-ATS-L2-2970, DC1-ATS-L2-2980, DC1-ATS-L2-2990, DC1-ATS-L2-3000, DC1-ATS-L2-3010, DC1-ATS-L2-3020, DC1-ATS-L2-3030, DC1-ATS-L2-3040, DC1-ATS-L2-3050, DC1-ATS-L2-3060, DC1-ATS-L2-3070, DC1-COD-L2-2720, DC1-COD-L2-2730, DC1-COD-L2-2740, DC1-COD-L2-2750, DC1-COD-L2-2760, DC1-COD-L2-2770, DC1-COD-L2-2780, DC1-COD-L2-2790, DC1-COD-L2-2800, DC1-COD-L2-2810, DC1-COD-L2-2820, DC1-COD-L2-2830, DC1-COD-L2-2840, DC1-COD-L2-2850, DC1-COD-L2-2860, DC1-COD-L2-2870, DC1-COD-L2-2880, DC1-COD-L2-2890, DC1-COD-L2-2900, DC1-COD-L2-2910, DC1-COD-L2-2920, DC1-COD-L2-2930, DC1-COD-L2-2940, DC1-COD-L2-2950, DC1-COD-L2-2960, DC1-COD-L2-2970, DC1-COD-L2-2980, DC1-COD-L2-2990, DC1-COD-L2-3000, DC1-COD-L2-3010, DC1-COD-L2-3020, DC1-COD-L2-3030, DC1-COD-L2-3040, DC1-COD-L2-3050, DC1-COD-L2-3060, DC1-COD-L2-3070, DC1-RPP-L2-2720, DC1-RPP-L2-2730, DC1-RPP-L2-2740, DC1-RPP-L2-2750, DC1-RPP-L2-2760, DC1-RPP-L2-2770, DC1-RPP-L2-2780, DC1-RPP-L2-2790, DC1-RPP-L2-2800, DC1-RPP-L2-2810, DC1-RPP-L2-2820, DC1-RPP-L2-2830, DC1-RPP-L2-2840, DC1-RPP-L2-2850, DC1-RPP-L2-2860, DC1-RPP-L2-2870, DC1-RPP-L2-2880, DC1-RPP-L2-2890, DC1-RPP-L2-2900, DC1-RPP-L2-2910, DC1-RPP-L2-2920, DC1-RPP-L2-2930, DC1-RPP-L2-2940, DC1-RPP-L2-2950, DC1-RPP-L2-2960, DC1-RPP-L2-2970, DC1-RPP-L2-2980, DC1-RPP-L2-2990, DC1-RPP-L2-3000, DC1-RPP-L2-3010, DC1-RPP-L2-3020, DC1-RPP-L2-3030, DC1-RPP-L2-3040, DC1-RPP-L2-3050, DC1-RPP-L2-3060, DC1-RPP-L2-3070, DC1-MOD02-L2-2160, DC1-MOD02-L2-2170, DC1-MOD02-L2-2140, DC1-MOD02-L2-2150, DC1-MOD02-L2-2180, DC1-MOD02-L2-2190, DC1-MOD02-L2-2200, DC1-MOD03-L2-2150, DC1-MOD03-L2-2160, DC1-MOD03-L2-2140, DC1-MOD03-L2-2170, DC1-MOD03-L2-2180, DC1-MOD03-L2-2190, DC1-MOD03-L2-2200, DC1-CDU-L2-3030, DC1-CDU-L2-3040, DC1-CDU-L2-3050, DC1-CDU-L2-3060, DC1-CDU-L2-3070, DC1-CDU-L2-3080, DC1-CDU-L2-3090, DC1-CDU-L2-3100, DC1-CDU-L2-3110, DC1-CDU-L2-3120, DC1-CDU-L2-3130, DC1-CDU-L2-3140, DC1-CDU-L2-3150, DC1-CDU-L2-3160, DC1-CDU-L2-3170, DC1-CDU-L2-3180, DC1-CDU-L2-3190, DC1-CDU-L2-3200, DC1-CHLR-L2-1140, DC1-CHLR-L2-1150, DC1-CHLR-L2-1160, DC1-CHLR-L2-1170, DC1-CHLR-L2-1180, DC1-CHLR-L2-1190, DC1-CHLR-L2-1200, DC1-CHWP-L2-Cx-2140, DC1-CHWP-L2-Cx-2150, DC1-CHWP-L2-Cx-2160, DC1-CHWP-L2-Cx-2170, DC1-CHWP-L2-Cx-2180, DC1-CHWP-L2-Cx-2190, DC1-CHWP-L2-Cx-2200, DC1-CRAH-L2-2640, DC1-CRAH-L2-2650, DC1-CRAH-L2-2660, DC1-CRAH-L2-2670, DC1-CRAH-L2-2680, DC1-CRAH-L2-2690, DC1-CRAH-L2-2700, DC1-CRAH-L2-2710, DC1-CRAH-L2-2720, DC1-CRAH-L2-2730, DC1-CRAH-L2-2740, DC1-CRAH-L2-2750, DC1-CRAH-L2-2760, DC1-CRAH-L2-2770, DC1-CRAH-L2-2780, DC1-CRAH-L2-2790, DC1-CRAH-L2-2800, DC1-CRAH-L2-2810, DC1-CRAH-L2-2820, DC1-CRAH-L2-2830, DC1-CRAH-L2-2840, DC1-CRAH-L2-2850, DC1-CRAH-L2-2860, DC1-CRAH-L2-2870, DC1-CRAH-L2-2880, DC1-CRAH-L2-2890, DC1-CRAH-L2-2900, DC1-CRAH-L2-2910, DC1-CRAH-L2-2920, DC1-CRAH-L2-2930, DC1-CRAH-L2-2940, DC1-CRAH-L2-2950, DC1-DOAS-L2-2040, DC1-DOAS-L2-2050, DC1-BUS-L3-CX-2120, DC1-BUS-L3-CX-2130, DC1-BUS-L3-CX-2140, DC1-BUS-L3-CX-2150, DC1-BUS-L3-CX-2160, DC1-BUS-L3-CX-2170, DC1-ATS-L3-CX-3625, DC1-ATS-L3-CX-3635, DC1-ATS-L3-CX-3645, DC1-ATS-L3-CX-3655, DC1-ATS-L3-CX-3665, DC1-ATS-L3-CX-3675, DC1-ATS-L3-CX-3685, DC1-ATS-L3-CX-3695, DC1-ATS-L3-CX-3705, DC1-ATS-L3-CX-3715, DC1-ATS-L3-CX-3725, DC1-ATS-L3-CX-3735, DC1-ATS-L3-CX-3745, DC1-ATS-L3-CX-3755, DC1-ATS-L3-CX-3765, DC1-ATS-L3-CX-3775, DC1-ATS-L3-CX-3785, DC1-ATS-L3-CX-3795, DC1-ATS-L3-CX-3805, DC1-ATS-L3-CX-3815, DC1-ATS-L3-CX-3825, DC1-ATS-L3-CX-3835, DC1-ATS-L3-CX-3845, DC1-ATS-L3-CX-3855, DC1-ATS-L3-CX-3865, DC1-ATS-L3-CX-3875, DC1-ATS-L3-CX-3885, DC1-ATS-L3-CX-3895, DC1-ATS-L3-CX-3905, DC1-ATS-L3-CX-3915, DC1-ATS-L3-CX-3925, DC1-ATS-L3-CX-3935, DC1-ATS-L3-CX-3945, DC1-ATS-L3-CX-3955, DC1-ATS-L3-CX-3965, DC1-ATS-L3-CX-3975, DC1-ATS-L3-CX-3985, DC1-ATS-L3-CX-3995, DC1-ATS-L3-CX-4005, DC1-ATS-L3-CX-4015, DC1-ATS-L3-CX-4025, DC1-ATS-L3-CX-4035, DC1-ATS-L3-CX-4045, DC1-ATS-L3-CX-4055, DC1-ATS-L3-CX-4065, DC1-ATS-L3-CX-4075, DC1-ATS-L3-CX-4085, DC1-ATS-L3-CX-4095, DC1-ATS-L3-CX-4105, DC1-ATS-L3-CX-4115, DC1-ATS-L3-CX-4125, DC1-ATS-L3-CX-4135, DC1-ATS-L3-CX-4145, DC1-ATS-L3-CX-4155, DC1-ATS-L3-CX-4165, DC1-ATS-L3-CX-4175, DC1-ATS-L3-CX-4185, DC1-ATS-L3-CX-4195, DC1-ATS-L3-CX-4205, DC1-ATS-L3-CX-4215, DC1-ATS-L3-CX-4225, DC1-ATS-L3-CX-4235, DC1-ATS-L3-CX-4245, DC1-ATS-L3-CX-4255, DC1-ATS-L3-CX-4265, DC1-ATS-L3-CX-4275, DC1-ATS-L3-CX-4285, DC1-ATS-L3-CX-4295, DC1-ATS-L3-CX-4305, DC1-ATS-L3-CX-4315, DC1-ATS-L3-CX-4325, DC1-ATS-L3-CX-4335, DC1-ATS-L3-CX-4345, DC1-ATS-L3-CX-4355, DC1-ATS-L3-CX-4365, DC1-ATS-L3-CX-4375, DC1-ATS-L3-CX-4385, DC1-ATS-L3-CX-4395, DC1-ATS-L3-CX-4405, DC1-ATS-L3-CX-4415, DC1-ATS-L3-CX-4425, DC1-ATS-L3-CX-4435, DC1-ATS-L3-CX-4445, DC1-ATS-L3-CX-4455, DC1-ATS-L3-CX-4465, DC1-ATS-L3-CX-4475, DC1-ATS-L3-CX-4485, DC1-ATS-L3-CX-4495, DC1-ATS-L3-CX-4505, DC1-ATS-L3-CX-4515, DC1-ATS-L3-CX-4525, DC1-ATS-L3-CX-4535, DC1-ATS-L3-CX-4545, DC1-ATS-L3-CX-4555, DC1-ATS-L3-CX-4565, DC1-ATS-L3-CX-4575, DC1-ATS-L3-CX-4585, DC1-ATS-L3-CX-4595, DC1-ATS-L3-CX-4605, DC1-ATS-L3-CX-4615, DC1-ATS-L3-CX-4625, DC1-ATS-L3-CX-4635, DC1-ATS-L3-CX-4645, DC1-ATS-L3-CX-4655, DC1-ATS-L3-CX-4665, DC1-ATS-L3-CX-4675, DC1-ATS-L3-CX-4685, DC1-ATS-L3-CX-4695, DC1-COD-L3-CX-3625, DC1-COD-L3-CX-3635, DC1-COD-L3-CX-3645, DC1-COD-L3-CX-3655, DC1-COD-L3-CX-3665, DC1-COD-L3-CX-3675, DC1-COD-L3-CX-3685, DC1-COD-L3-CX-3695, DC1-COD-L3-CX-3705, DC1-COD-L3-CX-3715, DC1-COD-L3-CX-3725, DC1-COD-L3-CX-3735, DC1-COD-L3-CX-3745, DC1-COD-L3-CX-3755, DC1-COD-L3-CX-3765, DC1-COD-L3-CX-3775, DC1-COD-L3-CX-3785, DC1-COD-L3-CX-3795, DC1-COD-L3-CX-3805, DC1-COD-L3-CX-3815, DC1-COD-L3-CX-3825, DC1-COD-L3-CX-3835, DC1-COD-L3-CX-3845, DC1-COD-L3-CX-3855, DC1-COD-L3-CX-3865, DC1-COD-L3-CX-3875, DC1-COD-L3-CX-3885, DC1-COD-L3-CX-3895, DC1-COD-L3-CX-3905, DC1-COD-L3-CX-3915, DC1-COD-L3-CX-3925, DC1-COD-L3-CX-3935, DC1-COD-L3-CX-3945, DC1-COD-L3-CX-3955, DC1-COD-L3-CX-3965, DC1-COD-L3-CX-3975, DC1-COD-L3-CX-3985, DC1-COD-L3-CX-3995, DC1-COD-L3-CX-4005, DC1-COD-L3-CX-4015, DC1-COD-L3-CX-4025, DC1-COD-L3-CX-4035, DC1-COD-L3-CX-4045, DC1-COD-L3-CX-4055, DC1-COD-L3-CX-4065, DC1-COD-L3-CX-4075, DC1-COD-L3-CX-4085, DC1-COD-L3-CX-4095, DC1-COD-L3-CX-4105, DC1-COD-L3-CX-4115, DC1-COD-L3-CX-4125, DC1-COD-L3-CX-4135, DC1-COD-L3-CX-4145, DC1-COD-L3-CX-4155, DC1-COD-L3-CX-4165, DC1-COD-L3-CX-4175, DC1-COD-L3-CX-4185, DC1-COD-L3-CX-4195, DC1-COD-L3-CX-4205, DC1-COD-L3-CX-4215, DC1-COD-L3-CX-4225, DC1-COD-L3-CX-4235, DC1-COD-L3-CX-4245, DC1-COD-L3-CX-4255, DC1-COD-L3-CX-4265, DC1-COD-L3-CX-4275, DC1-COD-L3-CX-4285, DC1-COD-L3-CX-4295, DC1-COD-L3-CX-4305, DC1-COD-L3-CX-4315, DC1-COD-L3-CX-4325, DC1-COD-L3-CX-4335, DC1-COD-L3-CX-4345, DC1-COD-L3-CX-4355, DC1-COD-L3-CX-4365, DC1-COD-L3-CX-4375, DC1-COD-L3-CX-4385, DC1-COD-L3-CX-4395, DC1-COD-L3-CX-4405, DC1-COD-L3-CX-4415, DC1-COD-L3-CX-4425, DC1-COD-L3-CX-4435, DC1-COD-L3-CX-4445, DC1-COD-L3-CX-4455, DC1-COD-L3-CX-4465, DC1-COD-L3-CX-4475, DC1-COD-L3-CX-4485, DC1-COD-L3-CX-4495, DC1-COD-L3-CX-4505, DC1-COD-L3-CX-4515, DC1-COD-L3-CX-4525, DC1-COD-L3-CX-4535, DC1-COD-L3-CX-4545, DC1-COD-L3-CX-4555, DC1-COD-L3-CX-4565, DC1-COD-L3-CX-4575, DC1-COD-L3-CX-4585, DC1-COD-L3-CX-4595, DC1-COD-L3-CX-4605, DC1-COD-L3-CX-4615, DC1-COD-L3-CX-4625, DC1-COD-L3-CX-4635, DC1-COD-L3-CX-4645, DC1-COD-L3-CX-4655, DC1-COD-L3-CX-4665, DC1-COD-L3-CX-4675, DC1-COD-L3-CX-4685, DC1-COD-L3-CX-4695, DC1-RPP-L3-CX-3625, DC1-RPP-L3-CX-3635, DC1-RPP-L3-CX-3645, DC1-RPP-L3-CX-3655, DC1-RPP-L3-CX-3665, DC1-RPP-L3-CX-3675, DC1-RPP-L3-CX-3685, DC1-RPP-L3-CX-3695, DC1-RPP-L3-CX-3705, DC1-RPP-L3-CX-3715, DC1-RPP-L3-CX-3725, DC1-RPP-L3-CX-3735, DC1-RPP-L3-CX-3745, DC1-RPP-L3-CX-3755, DC1-RPP-L3-CX-3765, DC1-RPP-L3-CX-3775, DC1-RPP-L3-CX-3785, DC1-RPP-L3-CX-3795, DC1-RPP-L3-CX-3805, DC1-RPP-L3-CX-3815, DC1-RPP-L3-CX-3825, DC1-RPP-L3-CX-3835, DC1-RPP-L3-CX-3845, DC1-RPP-L3-CX-3855, DC1-RPP-L3-CX-3865, DC1-RPP-L3-CX-3875, DC1-RPP-L3-CX-3885, DC1-RPP-L3-CX-3895, DC1-RPP-L3-CX-3905, DC1-RPP-L3-CX-3915, DC1-RPP-L3-CX-3925, DC1-RPP-L3-CX-3935, DC1-RPP-L3-CX-3945, DC1-RPP-L3-CX-3955, DC1-RPP-L3-CX-3965, DC1-RPP-L3-CX-3975, DC1-RPP-L3-CX-3985, DC1-RPP-L3-CX-3995, DC1-RPP-L3-CX-4005, DC1-RPP-L3-CX-4015, DC1-RPP-L3-CX-4025, DC1-RPP-L3-CX-4035, DC1-RPP-L3-CX-4045, DC1-RPP-L3-CX-4055, DC1-RPP-L3-CX-4065, DC1-RPP-L3-CX-4075, DC1-RPP-L3-CX-4085, DC1-RPP-L3-CX-4095, DC1-RPP-L3-CX-4105, DC1-RPP-L3-CX-4115, DC1-RPP-L3-CX-4125, DC1-RPP-L3-CX-4135, DC1-RPP-L3-CX-4145, DC1-RPP-L3-CX-4155, DC1-RPP-L3-CX-4165, DC1-RPP-L3-CX-4175, DC1-RPP-L3-CX-4185, DC1-RPP-L3-CX-4195, DC1-RPP-L3-CX-4205, DC1-RPP-L3-CX-4215, DC1-RPP-L3-CX-4225, DC1-RPP-L3-CX-4235, DC1-RPP-L3-CX-4245, DC1-RPP-L3-CX-4255, DC1-RPP-L3-CX-4265, DC1-RPP-L3-CX-4275, DC1-RPP-L3-CX-4285, DC1-RPP-L3-CX-4295, DC1-RPP-L3-CX-4305, DC1-RPP-L3-CX-4315, DC1-RPP-L3-CX-4325, DC1-RPP-L3-CX-4335, DC1-RPP-L3-CX-4345, DC1-RPP-L3-CX-4355, DC1-RPP-L3-CX-4365, DC1-RPP-L3-CX-4375, DC1-RPP-L3-CX-4385, DC1-RPP-L3-CX-4395, DC1-RPP-L3-CX-4405, DC1-RPP-L3-CX-4415, DC1-RPP-L3-CX-4425, DC1-RPP-L3-CX-4435, DC1-RPP-L3-CX-4445, DC1-RPP-L3-CX-4455, DC1-RPP-L3-CX-4465, DC1-RPP-L3-CX-4475, DC1-RPP-L3-CX-4485, DC1-RPP-L3-CX-4495, DC1-RPP-L3-CX-4505, DC1-RPP-L3-CX-4515, DC1-RPP-L3-CX-4525, DC1-RPP-L3-CX-4535, DC1-RPP-L3-CX-4545, DC1-RPP-L3-CX-4555, DC1-RPP-L3-CX-4565, DC1-RPP-L3-CX-4575, DC1-RPP-L3-CX-4585, DC1-RPP-L3-CX-4595, DC1-RPP-L3-CX-4605, DC1-RPP-L3-CX-4615, DC1-RPP-L3-CX-4625, DC1-RPP-L3-CX-4635, DC1-RPP-L3-CX-4645, DC1-RPP-L3-CX-4655, DC1-RPP-L3-CX-4665, DC1-RPP-L3-CX-4675, DC1-RPP-L3-CX-4685, DC1-RPP-L3-CX-4695, DC1-MOD2-L3-Cx-2420, DC1-MOD2-L3-Cx-2430, DC1-MOD2-L3-Cx-2440, DC1-MOD2-L3-Cx-2450, DC1-MOD2-L3-Cx-2460, DC1-MOD2-L3-Cx-2470, DC1-MOD2-L3-Cx-2480, DC1-MOD2-L3-Cx-2490, DC1-MOD2-L3-Cx-2500, DC1-MOD2-L3-Cx-2510, DC1-MOD2-L3-Cx-2520, DC1-MOD2-L3-Cx-2530, DC1-MOD2-L3-Cx-2540, DC1-MOD2-L3-Cx-2550, DC1-MOD2-L3-Cx-2560, DC1-MOD2-L3-Cx-2570, DC1-MOD2-L3-Cx-2580, DC1-MOD2-L3-Cx-2590, DC1-MOD2-L3-Cx-2600, DC1-MOD2-L3-Cx-2610, DC1-MOD2-L3-Cx-2620, DC1-MOD3-L3-Cx-2420, DC1-MOD3-L3-Cx-2430, DC1-MOD3-L3-Cx-2440, DC1-MOD3-L3-Cx-2450, DC1-MOD3-L3-Cx-2460, DC1-MOD3-L3-Cx-2470, DC1-MOD3-L3-Cx-2480, DC1-MOD3-L3-Cx-2490, DC1-MOD3-L3-Cx-2500, DC1-MOD3-L3-Cx-2510, DC1-MOD3-L3-Cx-2520, DC1-MOD3-L3-Cx-2530, DC1-MOD3-L3-Cx-2540, DC1-MOD3-L3-Cx-2550, DC1-MOD3-L3-Cx-2560, DC1-MOD3-L3-Cx-2570, DC1-MOD3-L3-Cx-2580, DC1-MOD3-L3-Cx-2590, DC1-MOD3-L3-Cx-2600, DC1-MOD3-L3-Cx-2610, DC1-MOD3-L3-Cx-2620, DC1-CDU-L3-CX-4165, DC1-CDU-L3-CX-4175, DC1-CDU-L3-CX-4185, DC1-CDU-L3-CX-4195, DC1-CDU-L3-CX-4205, DC1-CDU-L3-CX-4215, DC1-CDU-L3-CX-4225, DC1-CDU-L3-CX-4235, DC1-CDU-L3-CX-4245, DC1-CDU-L3-CX-4255, DC1-CDU-L3-CX-4265, DC1-CDU-L3-CX-4275, DC1-CDU-L3-CX-4285, DC1-CDU-L3-CX-4295, DC1-CDU-L3-CX-4305, DC1-CDU-L3-CX-4315, DC1-CDU-L3-CX-4325, DC1-CDU-L3-CX-4335, DC1-CDU-L3-CX-4345, DC1-CDU-L3-CX-4355, DC1-CDU-L3-CX-4365, DC1-CDU-L3-CX-4375, DC1-CDU-L3-CX-4385, DC1-CDU-L3-CX-4395, DC1-CDU-L3-CX-4405, DC1-CDU-L3-CX-4415, DC1-CDU-L3-CX-4425, DC1-CDU-L3-CX-4435, DC1-CDU-L3-CX-4445, DC1-CDU-L3-CX-4455, DC1-CDU-L3-CX-4465, DC1-CDU-L3-CX-4475, DC1-CDU-L3-CX-4485, DC1-CDU-L3-CX-4495, DC1-CDU-L3-CX-4505, DC1-CDU-L3-CX-4515, DC1-CDU-L3-CX-4525, DC1-CDU-L3-CX-4535, DC1-CDU-L3-CX-4545, DC1-CDU-L3-CX-4555, DC1-CDU-L3-CX-4565, DC1-CDU-L3-CX-4575, DC1-CDU-L3-CX-4585, DC1-CDU-L3-CX-4595, DC1-CDU-L3-CX-4605, DC1-CDU-L3-CX-4615, DC1-CDU-L3-CX-4625, DC1-CDU-L3-CX-4635, DC1-CDU-L3-CX-4645, DC1-CDU-L3-CX-4655, DC1-CDU-L3-CX-4665, DC1-CDU-L3-CX-4675, DC1-CDU-L3-CX-4685, DC1-CDU-L3-CX-4695, DC1-CHLR-L3-Cx-2490, DC1-CHLR-L3-Cx-2700, DC1-CHLR-L3-Cx-2500, DC1-CHLR-L3-Cx-2510, DC1-CHLR-L3-Cx-2520, DC1-CHLR-L3-Cx-2710, DC1-CHLR-L3-Cx-2530, DC1-CHLR-L3-Cx-2540, DC1-CHLR-L3-Cx-2550, DC1-CHLR-L3-Cx-2720, DC1-CHLR-L3-Cx-2560, DC1-CHLR-L3-Cx-2570, DC1-CHLR-L3-Cx-2580, DC1-CHLR-L3-Cx-2730, DC1-CHLR-L3-Cx-2590, DC1-CHLR-L3-Cx-2600, DC1-CHLR-L3-Cx-2610, DC1-CHLR-L3-Cx-2740, DC1-CHLR-L3-Cx-2620, DC1-CHLR-L3-Cx-2630, DC1-CHLR-L3-Cx-2640, DC1-CHLR-L3-Cx-2750, DC1-CHLR-L3-Cx-2650, DC1-CHLR-L3-Cx-2660, DC1-CHLR-L3-Cx-2670, DC1-CHLR-L3-Cx-2760, DC1-CHLR-L3-Cx-2680, DC1-CHLR-L3-Cx-2690, DC1-CHWP-L3-Cx-2420, DC1-CHWP-L3-Cx-2430, DC1-CHWP-L3-Cx-2440, DC1-CHWP-L3-Cx-2450, DC1-CHWP-L3-Cx-2460, DC1-CHWP-L3-Cx-2470, DC1-CHWP-L3-Cx-2480, DC1-CHWP-L3-Cx-2490, DC1-CHWP-L3-Cx-2500, DC1-CHWP-L3-Cx-2510, DC1-CHWP-L3-Cx-2520, DC1-CHWP-L3-Cx-2530, DC1-CHWP-L3-Cx-2540, DC1-CHWP-L3-Cx-2550, DC1-CHWP-L3-Cx-2560, DC1-CHWP-L3-Cx-2570, DC1-CHWP-L3-Cx-2580, DC1-CHWP-L3-Cx-2590, DC1-CHWP-L3-Cx-2600, DC1-CHWP-L3-Cx-2610, DC1-CHWP-L3-Cx-2620, DC1-CRAH-L3-Cx-3920, DC1-CRAH-L3-Cx-3930, DC1-CRAH-L3-Cx-3940, DC1-CRAH-L3-Cx-3950, DC1-CRAH-L3-Cx-3960, DC1-CRAH-L3-Cx-3970, DC1-CRAH-L3-Cx-3980, DC1-CRAH-L3-Cx-3990, DC1-CRAH-L3-Cx-4000, DC1-CRAH-L3-Cx-4010, DC1-CRAH-L3-Cx-4020, DC1-CRAH-L3-Cx-4030, DC1-CRAH-L3-Cx-4040, DC1-CRAH-L3-Cx-4050, DC1-CRAH-L3-Cx-4060, DC1-CRAH-L3-Cx-4070, DC1-CRAH-L3-Cx-4080, DC1-CRAH-L3-Cx-4090, DC1-CRAH-L3-Cx-4100, DC1-CRAH-L3-Cx-4110, DC1-CRAH-L3-Cx-4120, DC1-CRAH-L3-Cx-4130, DC1-CRAH-L3-Cx-4140, DC1-CRAH-L3-Cx-4150, DC1-CRAH-L3-Cx-4160, DC1-CRAH-L3-Cx-4170, DC1-CRAH-L3-Cx-4180, DC1-CRAH-L3-Cx-4190, DC1-CRAH-L3-Cx-4200, DC1-CRAH-L3-Cx-4210, DC1-CRAH-L3-Cx-4220, DC1-CRAH-L3-Cx-4230, DC1-CRAH-L3-Cx-4240, DC1-CRAH-L3-Cx-4250, DC1-CRAH-L3-Cx-4260, DC1-CRAH-L3-Cx-4270, DC1-CRAH-L3-Cx-4280, DC1-CRAH-L3-Cx-4290, DC1-CRAH-L3-Cx-4300, DC1-CRAH-L3-Cx-4310, DC1-CRAH-L3-Cx-4320, DC1-CRAH-L3-Cx-4330, DC1-CRAH-L3-Cx-4340, DC1-CRAH-L3-Cx-4350, DC1-CRAH-L3-Cx-4360, DC1-CRAH-L3-Cx-4370, DC1-CRAH-L3-Cx-4380, DC1-CRAH-L3-Cx-4390, DC1-CRAH-L3-Cx-4400, DC1-CRAH-L3-Cx-4410, DC1-CRAH-L3-Cx-4420, DC1-CRAH-L3-Cx-4430, DC1-CRAH-L3-Cx-4440, DC1-CRAH-L3-Cx-4450, DC1-CRAH-L3-Cx-4460, DC1-CRAH-L3-Cx-4470, DC1-CRAH-L3-Cx-4480, DC1-CRAH-L3-Cx-4490, DC1-CRAH-L3-Cx-4500, DC1-CRAH-L3-Cx-4510, DC1-CRAH-L3-Cx-4520, DC1-CRAH-L3-Cx-4530, DC1-CRAH-L3-Cx-4540, DC1-CRAH-L3-Cx-4550, DC1-CRAH-L3-Cx-4560, DC1-CRAH-L3-Cx-4570, DC1-CRAH-L3-Cx-4580, DC1-CRAH-L3-Cx-4590, DC1-CRAH-L3-Cx-4600, DC1-CRAH-L3-Cx-4610, DC1-CRAH-L3-Cx-4620, DC1-CRAH-L3-Cx-4630, DC1-CRAH-L3-Cx-4640, DC1-CRAH-L3-Cx-4650, DC1-CRAH-L3-Cx-4660, DC1-CRAH-L3-Cx-4670, DC1-CRAH-L3-Cx-4680, DC1-CRAH-L3-Cx-4690, DC1-CRAH-L3-Cx-4700, DC1-CRAH-L3-Cx-4710, DC1-CRAH-L3-Cx-4720, DC1-CRAH-L3-Cx-4730, DC1-CRAH-L3-Cx-4740, DC1-CRAH-L3-Cx-4750, DC1-CRAH-L3-Cx-4760, DC1-CRAH-L3-Cx-4770, DC1-CRAH-L3-Cx-4780, DC1-CRAH-L3-Cx-4790, DC1-CRAH-L3-Cx-4800, DC1-CRAH-L3-Cx-4810, DC1-CRAH-L3-Cx-4820, DC1-CRAH-L3-Cx-4830, DC1-CRAH-L3-Cx-4840, DC1-CRAH-L3-Cx-4850, DC1-CRAH-L3-Cx-4860, DC1-CRAH-L3-Cx-4870, DC1-DOAS-L3-Cx-2120, DC1-DOAS-L3-Cx-2130, DC1-DOAS-L3-Cx-2140, DC1-DOAS-L3-Cx-2150, DC1-DOAS-L3-Cx-2160, DC1-DOAS-L3-Cx-2170, DC1-DH1200-LB-1030, DC1-DH1200-LB-1000, DC1-DH1200-LB-1010, DC1-DH1200-LB-1060, DC1-DH1200-LB-1040, DC1-DH1200-LB-1050, DC1-DH1200-TAB-1000, DC1-DH1200-TAB-1010, DC1-MECH-L4-Cx-1130, DC1-ELEC-L4-Cx-1080, DC1-ELEC-L4-Cx-1030, DC1-L4-Cx-1230, DC1-L4-Cx-1240, DC1-L4-Cx-1250, DC1-L4-Cx-1260, DC1-IST-2020, DC1-L4-Cx-1190, DC1-L4-Cx-1200, DC1-L4-Cx-1210, DC1-L4-Cx-1220, DC1-XFMR-L2-2210, DC1-XFMR-L2-2270, DC1-XFMR-L2-2230, DC1-XFMR-L2-2260, DC1-XFMR-L2-2220, DC1-XFMR-L2-2240, DC1-XFMR-L2-2250, DC1-SWD-L2-2270, DC1-SWD-L2-2210, DC1-SWD-L2-2220, DC1-SWD-L2-2230, DC1-SWD-L2-2240, DC1-SWD-L2-2250, DC1-SWD-L2-2260, DC1-MOD01-L2-2210, DC1-MOD01-L2-2220, DC1-MOD01-L2-2230, DC1-MOD01-L2-2240, DC1-MOD01-L2-2250, DC1-MOD01-L2-2260, DC1-MOD01-L2-2270, DC1-UPS-M-L2-2210, DC1-UPS-M-L2-2220, DC1-UPS-M-L2-2230, DC1-UPS-M-L2-2240, DC1-UPS-M-L2-2250, DC1-UPS-M-L2-2260, DC1-UPS-M-L2-2270, DC1-BUS-L2-1060, DC1-BUS-L2-1070, DC1-ATS-L2-3080, DC1-ATS-L2-3090, DC1-ATS-L2-3100, DC1-ATS-L2-3110, DC1-ATS-L2-3120, DC1-ATS-L2-3130, DC1-ATS-L2-3140, DC1-ATS-L2-3150, DC1-ATS-L2-3160, DC1-ATS-L2-3170, DC1-ATS-L2-3180, DC1-ATS-L2-3190, DC1-ATS-L2-3200, DC1-ATS-L2-3210, DC1-ATS-L2-3220, DC1-ATS-L2-3230, DC1-ATS-L2-3240, DC1-ATS-L2-3250, DC1-ATS-L2-3260, DC1-ATS-L2-3270, DC1-ATS-L2-3280, DC1-ATS-L2-3290, DC1-ATS-L2-3300, DC1-ATS-L2-3310, DC1-ATS-L2-3320, DC1-ATS-L2-3330, DC1-ATS-L2-3340, DC1-ATS-L2-3350, DC1-ATS-L2-3360, DC1-ATS-L2-3370, DC1-ATS-L2-3380, DC1-ATS-L2-3390, DC1-ATS-L2-3400, DC1-ATS-L2-3410, DC1-ATS-L2-3420, DC1-ATS-L2-3430, DC1-COD-L2-3080, DC1-COD-L2-3090, DC1-COD-L2-3100, DC1-COD-L2-3110, DC1-COD-L2-3120, DC1-COD-L2-3130, DC1-COD-L2-3140, DC1-COD-L2-3150, DC1-COD-L2-3160, DC1-COD-L2-3170, DC1-COD-L2-3180, DC1-COD-L2-3190, DC1-COD-L2-3200, DC1-COD-L2-3210, DC1-COD-L2-3220, DC1-COD-L2-3230, DC1-COD-L2-3240, DC1-COD-L2-3250, DC1-COD-L2-3260, DC1-COD-L2-3270, DC1-COD-L2-3280, DC1-COD-L2-3290, DC1-COD-L2-3300, DC1-COD-L2-3310, DC1-COD-L2-3320, DC1-COD-L2-3330, DC1-COD-L2-3340, DC1-COD-L2-3350, DC1-COD-L2-3360, DC1-COD-L2-3370, DC1-COD-L2-3380, DC1-COD-L2-3390, DC1-COD-L2-3400, DC1-COD-L2-3410, DC1-COD-L2-3420, DC1-COD-L2-3430, DC1-RPP-L2-3080, DC1-RPP-L2-3090, DC1-RPP-L2-3100, DC1-RPP-L2-3110, DC1-RPP-L2-3120, DC1-RPP-L2-3130, DC1-RPP-L2-3140, DC1-RPP-L2-3150, DC1-RPP-L2-3160, DC1-RPP-L2-3170, DC1-RPP-L2-3180, DC1-RPP-L2-3190, DC1-RPP-L2-3200, DC1-RPP-L2-3210, DC1-RPP-L2-3220, DC1-RPP-L2-3230, DC1-RPP-L2-3240, DC1-RPP-L2-3250, DC1-RPP-L2-3260, DC1-RPP-L2-3270, DC1-RPP-L2-3280, DC1-RPP-L2-3290, DC1-RPP-L2-3300, DC1-RPP-L2-3310, DC1-RPP-L2-3320, DC1-RPP-L2-3330, DC1-RPP-L2-3340, DC1-RPP-L2-3350, DC1-RPP-L2-3360, DC1-RPP-L2-3370, DC1-RPP-L2-3380, DC1-RPP-L2-3390, DC1-RPP-L2-3400, DC1-RPP-L2-3410, DC1-RPP-L2-3420, DC1-RPP-L2-3430, DC1-MOD02-L2-2210, DC1-MOD02-L2-2220, DC1-MOD02-L2-2230, DC1-MOD02-L2-2240, DC1-MOD02-L2-2250, DC1-MOD02-L2-2260, DC1-MOD02-L2-2270, DC1-MOD03-L2-2210, DC1-MOD03-L2-2220, DC1-MOD03-L2-2230, DC1-MOD03-L2-2240, DC1-MOD03-L2-2250, DC1-MOD03-L2-2260, DC1-MOD03-L2-2270, DC1-CDU-L2-3510, DC1-CDU-L2-3520, DC1-CDU-L2-3530, DC1-CDU-L2-3540, DC1-CDU-L2-3550, DC1-CDU-L2-3560, DC1-CDU-L2-3570, DC1-CDU-L2-3580, DC1-CDU-L2-3590, DC1-CDU-L2-3600, DC1-CDU-L2-3610, DC1-CDU-L2-3620, DC1-CDU-L2-3630, DC1-CDU-L2-3640, DC1-CDU-L2-3650, DC1-CDU-L2-3660, DC1-CDU-L2-3670, DC1-CDU-L2-3680, DC1-CHLR-L2-1210, DC1-CHLR-L2-1240, DC1-CHLR-L2-1220, DC1-CHLR-L2-1250, DC1-CHLR-L2-1230, DC1-CHLR-L2-1260, DC1-CHLR-L2-1270, DC1-CHWP-L2-Cx-2210, DC1-CHWP-L2-Cx-2240, DC1-CHWP-L2-Cx-2220, DC1-CHWP-L2-Cx-2250, DC1-CHWP-L2-Cx-2230, DC1-CHWP-L2-Cx-2260, DC1-CHWP-L2-Cx-2270, DC1-CRAH-L2-2960, DC1-CRAH-L2-2970, DC1-CRAH-L2-2980, DC1-CRAH-L2-2990, DC1-CRAH-L2-3000, DC1-CRAH-L2-3010, DC1-CRAH-L2-3020, DC1-CRAH-L2-3030, DC1-CRAH-L2-3040, DC1-CRAH-L2-3050, DC1-CRAH-L2-3060, DC1-CRAH-L2-3070, DC1-CRAH-L2-3080, DC1-CRAH-L2-3090, DC1-CRAH-L2-3100, DC1-CRAH-L2-3110, DC1-CRAH-L2-3120, DC1-CRAH-L2-3130, DC1-CRAH-L2-3140, DC1-CRAH-L2-3150, DC1-CRAH-L2-3160, DC1-CRAH-L2-3170, DC1-CRAH-L2-3180, DC1-CRAH-L2-3190, DC1-CRAH-L2-3200, DC1-CRAH-L2-3210, DC1-CRAH-L2-3220, DC1-CRAH-L2-3230, DC1-CRAH-L2-3240, DC1-CRAH-L2-3250, DC1-CRAH-L2-3260, DC1-CRAH-L2-3270, DC1-DOAS-L2-2060, DC1-DOAS-L2-2070, DC1-BUS-L3-CX-2180, DC1-BUS-L3-CX-2190, DC1-BUS-L3-CX-2200, DC1-BUS-L3-CX-2210, DC1-BUS-L3-CX-2220, DC1-BUS-L3-CX-2230, DC1-ATS-L3-CX-4705, DC1-ATS-L3-CX-4715, DC1-ATS-L3-CX-4725, DC1-ATS-L3-CX-4735, DC1-ATS-L3-CX-4745, DC1-ATS-L3-CX-4755, DC1-ATS-L3-CX-4765, DC1-ATS-L3-CX-4775, DC1-ATS-L3-CX-4785, DC1-ATS-L3-CX-4795, DC1-ATS-L3-CX-4805, DC1-ATS-L3-CX-4815, DC1-ATS-L3-CX-4825, DC1-ATS-L3-CX-4835, DC1-ATS-L3-CX-4845, DC1-ATS-L3-CX-4855, DC1-ATS-L3-CX-4865, DC1-ATS-L3-CX-4875, DC1-ATS-L3-CX-4885, DC1-ATS-L3-CX-4895, DC1-ATS-L3-CX-4905, DC1-ATS-L3-CX-4915, DC1-ATS-L3-CX-4925, DC1-ATS-L3-CX-4935, DC1-ATS-L3-CX-4945, DC1-ATS-L3-CX-4955, DC1-ATS-L3-CX-4965, DC1-ATS-L3-CX-4975, DC1-ATS-L3-CX-4985, DC1-ATS-L3-CX-4995, DC1-ATS-L3-CX-5005, DC1-ATS-L3-CX-5015, DC1-ATS-L3-CX-5025, DC1-ATS-L3-CX-5035, DC1-ATS-L3-CX-5045, DC1-ATS-L3-CX-5055, DC1-ATS-L3-CX-5065, DC1-ATS-L3-CX-5075, DC1-ATS-L3-CX-5085, DC1-ATS-L3-CX-5095, DC1-ATS-L3-CX-5105, DC1-ATS-L3-CX-5115, DC1-ATS-L3-CX-5125, DC1-ATS-L3-CX-5135, DC1-ATS-L3-CX-5145, DC1-ATS-L3-CX-5155, DC1-ATS-L3-CX-5165, DC1-ATS-L3-CX-5175, DC1-ATS-L3-CX-5185, DC1-ATS-L3-CX-5195, DC1-ATS-L3-CX-5205, DC1-ATS-L3-CX-5215, DC1-ATS-L3-CX-5225, DC1-ATS-L3-CX-5235, DC1-ATS-L3-CX-5245, DC1-ATS-L3-CX-5255, DC1-ATS-L3-CX-5265, DC1-ATS-L3-CX-5275, DC1-ATS-L3-CX-5285, DC1-ATS-L3-CX-5295, DC1-ATS-L3-CX-5305, DC1-ATS-L3-CX-5315, DC1-ATS-L3-CX-5325, DC1-ATS-L3-CX-5335, DC1-ATS-L3-CX-5345, DC1-ATS-L3-CX-5355, DC1-ATS-L3-CX-5365, DC1-ATS-L3-CX-5375, DC1-ATS-L3-CX-5385, DC1-ATS-L3-CX-5395, DC1-ATS-L3-CX-5405, DC1-ATS-L3-CX-5415, DC1-ATS-L3-CX-5425, DC1-ATS-L3-CX-5435, DC1-ATS-L3-CX-5445, DC1-ATS-L3-CX-5455, DC1-ATS-L3-CX-5465, DC1-ATS-L3-CX-5475, DC1-ATS-L3-CX-5485, DC1-ATS-L3-CX-5495, DC1-ATS-L3-CX-5505, DC1-ATS-L3-CX-5515, DC1-ATS-L3-CX-5525, DC1-ATS-L3-CX-5535, DC1-ATS-L3-CX-5545, DC1-ATS-L3-CX-5555, DC1-ATS-L3-CX-5565, DC1-ATS-L3-CX-5575, DC1-ATS-L3-CX-5585, DC1-ATS-L3-CX-5595, DC1-ATS-L3-CX-5605, DC1-ATS-L3-CX-5615, DC1-ATS-L3-CX-5625, DC1-ATS-L3-CX-5635, DC1-ATS-L3-CX-5645, DC1-ATS-L3-CX-5655, DC1-ATS-L3-CX-5665, DC1-ATS-L3-CX-5675, DC1-ATS-L3-CX-5685, DC1-ATS-L3-CX-5695, DC1-ATS-L3-CX-5705, DC1-ATS-L3-CX-5715, DC1-ATS-L3-CX-5725, DC1-ATS-L3-CX-5735, DC1-ATS-L3-CX-5745, DC1-ATS-L3-CX-5755, DC1-ATS-L3-CX-5765, DC1-ATS-L3-CX-5775, DC1-COD-L3-CX-4705, DC1-COD-L3-CX-4715, DC1-COD-L3-CX-4725, DC1-COD-L3-CX-4735, DC1-COD-L3-CX-4745, DC1-COD-L3-CX-4755, DC1-COD-L3-CX-4765, DC1-COD-L3-CX-4775, DC1-COD-L3-CX-4785, DC1-COD-L3-CX-4795, DC1-COD-L3-CX-4805, DC1-COD-L3-CX-4815, DC1-COD-L3-CX-4825, DC1-COD-L3-CX-4835, DC1-COD-L3-CX-4845, DC1-COD-L3-CX-4855, DC1-COD-L3-CX-4865, DC1-COD-L3-CX-4875, DC1-COD-L3-CX-4885, DC1-COD-L3-CX-4895, DC1-COD-L3-CX-4905, DC1-COD-L3-CX-4915, DC1-COD-L3-CX-4925, DC1-COD-L3-CX-4935, DC1-COD-L3-CX-4945, DC1-COD-L3-CX-4955, DC1-COD-L3-CX-4965, DC1-COD-L3-CX-4975, DC1-COD-L3-CX-4985, DC1-COD-L3-CX-4995, DC1-COD-L3-CX-5005, DC1-COD-L3-CX-5015, DC1-COD-L3-CX-5025, DC1-COD-L3-CX-5035, DC1-COD-L3-CX-5045, DC1-COD-L3-CX-5055, DC1-COD-L3-CX-5065, DC1-COD-L3-CX-5075, DC1-COD-L3-CX-5085, DC1-COD-L3-CX-5095, DC1-COD-L3-CX-5105, DC1-COD-L3-CX-5115, DC1-COD-L3-CX-5125, DC1-COD-L3-CX-5135, DC1-COD-L3-CX-5145, DC1-COD-L3-CX-5155, DC1-COD-L3-CX-5165, DC1-COD-L3-CX-5175, DC1-COD-L3-CX-5185, DC1-COD-L3-CX-5195, DC1-COD-L3-CX-5205, DC1-COD-L3-CX-5215, DC1-COD-L3-CX-5225, DC1-COD-L3-CX-5235, DC1-COD-L3-CX-5245, DC1-COD-L3-CX-5255, DC1-COD-L3-CX-5265, DC1-COD-L3-CX-5275, DC1-COD-L3-CX-5285, DC1-COD-L3-CX-5295, DC1-COD-L3-CX-5305, DC1-COD-L3-CX-5315, DC1-COD-L3-CX-5325, DC1-COD-L3-CX-5335, DC1-COD-L3-CX-5345, DC1-COD-L3-CX-5355, DC1-COD-L3-CX-5365, DC1-COD-L3-CX-5375, DC1-COD-L3-CX-5385, DC1-COD-L3-CX-5395, DC1-COD-L3-CX-5405, DC1-COD-L3-CX-5415, DC1-COD-L3-CX-5425, DC1-COD-L3-CX-5435, DC1-COD-L3-CX-5445, DC1-COD-L3-CX-5455, DC1-COD-L3-CX-5465, DC1-COD-L3-CX-5475, DC1-COD-L3-CX-5485, DC1-COD-L3-CX-5495, DC1-COD-L3-CX-5505, DC1-COD-L3-CX-5515, DC1-COD-L3-CX-5525, DC1-COD-L3-CX-5535, DC1-COD-L3-CX-5545, DC1-COD-L3-CX-5555, DC1-COD-L3-CX-5565, DC1-COD-L3-CX-5575, DC1-COD-L3-CX-5585, DC1-COD-L3-CX-5595, DC1-COD-L3-CX-5605, DC1-COD-L3-CX-5615, DC1-COD-L3-CX-5625, DC1-COD-L3-CX-5635, DC1-COD-L3-CX-5645, DC1-COD-L3-CX-5655, DC1-COD-L3-CX-5665, DC1-COD-L3-CX-5675, DC1-COD-L3-CX-5685, DC1-COD-L3-CX-5695, DC1-COD-L3-CX-5705, DC1-COD-L3-CX-5715, DC1-COD-L3-CX-5725, DC1-COD-L3-CX-5735, DC1-COD-L3-CX-5745, DC1-COD-L3-CX-5755, DC1-COD-L3-CX-5765, DC1-COD-L3-CX-5775, DC1-RPP-L3-CX-4705, DC1-RPP-L3-CX-4715, DC1-RPP-L3-CX-4725, DC1-RPP-L3-CX-4735, DC1-RPP-L3-CX-4745, DC1-RPP-L3-CX-4755, DC1-RPP-L3-CX-4765, DC1-RPP-L3-CX-4775, DC1-RPP-L3-CX-4785, DC1-RPP-L3-CX-4795, DC1-RPP-L3-CX-4805, DC1-RPP-L3-CX-4815, DC1-RPP-L3-CX-4825, DC1-RPP-L3-CX-4835, DC1-RPP-L3-CX-4845, DC1-RPP-L3-CX-4855, DC1-RPP-L3-CX-4865, DC1-RPP-L3-CX-4875, DC1-RPP-L3-CX-4885, DC1-RPP-L3-CX-4895, DC1-RPP-L3-CX-4905, DC1-RPP-L3-CX-4915, DC1-RPP-L3-CX-4925, DC1-RPP-L3-CX-4935, DC1-RPP-L3-CX-4945, DC1-RPP-L3-CX-4955, DC1-RPP-L3-CX-4965, DC1-RPP-L3-CX-4975, DC1-RPP-L3-CX-4985, DC1-RPP-L3-CX-4995, DC1-RPP-L3-CX-5005, DC1-RPP-L3-CX-5015, DC1-RPP-L3-CX-5025, DC1-RPP-L3-CX-5035, DC1-RPP-L3-CX-5045, DC1-RPP-L3-CX-5055, DC1-RPP-L3-CX-5065, DC1-RPP-L3-CX-5075, DC1-RPP-L3-CX-5085, DC1-RPP-L3-CX-5095, DC1-RPP-L3-CX-5105, DC1-RPP-L3-CX-5115, DC1-RPP-L3-CX-5125, DC1-RPP-L3-CX-5135, DC1-RPP-L3-CX-5145, DC1-RPP-L3-CX-5155, DC1-RPP-L3-CX-5165, DC1-RPP-L3-CX-5175, DC1-RPP-L3-CX-5185, DC1-RPP-L3-CX-5195, DC1-RPP-L3-CX-5205, DC1-RPP-L3-CX-5215, DC1-RPP-L3-CX-5225, DC1-RPP-L3-CX-5235, DC1-RPP-L3-CX-5245, DC1-RPP-L3-CX-5255, DC1-RPP-L3-CX-5265, DC1-RPP-L3-CX-5275, DC1-RPP-L3-CX-5285, DC1-RPP-L3-CX-5295, DC1-RPP-L3-CX-5305, DC1-RPP-L3-CX-5315, DC1-RPP-L3-CX-5325, DC1-RPP-L3-CX-5335, DC1-RPP-L3-CX-5345, DC1-RPP-L3-CX-5355, DC1-RPP-L3-CX-5365, DC1-RPP-L3-CX-5375, DC1-RPP-L3-CX-5385, DC1-RPP-L3-CX-5395, DC1-RPP-L3-CX-5405, DC1-RPP-L3-CX-5415, DC1-RPP-L3-CX-5425, DC1-RPP-L3-CX-5435, DC1-RPP-L3-CX-5445, DC1-RPP-L3-CX-5455, DC1-RPP-L3-CX-5465, DC1-RPP-L3-CX-5475, DC1-RPP-L3-CX-5485, DC1-RPP-L3-CX-5495, DC1-RPP-L3-CX-5505, DC1-RPP-L3-CX-5515, DC1-RPP-L3-CX-5525, DC1-RPP-L3-CX-5535, DC1-RPP-L3-CX-5545, DC1-RPP-L3-CX-5555, DC1-RPP-L3-CX-5565, DC1-RPP-L3-CX-5575, DC1-RPP-L3-CX-5585, DC1-RPP-L3-CX-5595, DC1-RPP-L3-CX-5605, DC1-RPP-L3-CX-5615, DC1-RPP-L3-CX-5625, DC1-RPP-L3-CX-5635, DC1-RPP-L3-CX-5645, DC1-RPP-L3-CX-5655, DC1-RPP-L3-CX-5665, DC1-RPP-L3-CX-5675, DC1-RPP-L3-CX-5685, DC1-RPP-L3-CX-5695, DC1-RPP-L3-CX-5705, DC1-RPP-L3-CX-5715, DC1-RPP-L3-CX-5725, DC1-RPP-L3-CX-5735, DC1-RPP-L3-CX-5745, DC1-RPP-L3-CX-5755, DC1-RPP-L3-CX-5765, DC1-RPP-L3-CX-5775, DC1-MOD2-L3-Cx-2630, DC1-MOD2-L3-Cx-2640, DC1-MOD2-L3-Cx-2650, DC1-MOD2-L3-Cx-2660, DC1-MOD2-L3-Cx-2670, DC1-MOD2-L3-Cx-2680, DC1-MOD2-L3-Cx-2690, DC1-MOD2-L3-Cx-2700, DC1-MOD2-L3-Cx-2710, DC1-MOD2-L3-Cx-2720, DC1-MOD2-L3-Cx-2730, DC1-MOD2-L3-Cx-2740, DC1-MOD2-L3-Cx-2750, DC1-MOD2-L3-Cx-2760, DC1-MOD2-L3-Cx-2770, DC1-MOD2-L3-Cx-2780, DC1-MOD2-L3-Cx-2790, DC1-MOD2-L3-Cx-2800, DC1-MOD2-L3-Cx-2810, DC1-MOD2-L3-Cx-2820, DC1-MOD2-L3-Cx-2830, DC1-MOD3-L3-Cx-2630, DC1-MOD3-L3-Cx-2640, DC1-MOD3-L3-Cx-2650, DC1-MOD3-L3-Cx-2660, DC1-MOD3-L3-Cx-2670, DC1-MOD3-L3-Cx-2680, DC1-MOD3-L3-Cx-2690, DC1-MOD3-L3-Cx-2700, DC1-MOD3-L3-Cx-2710, DC1-MOD3-L3-Cx-2720, DC1-MOD3-L3-Cx-2730, DC1-MOD3-L3-Cx-2740, DC1-MOD3-L3-Cx-2750, DC1-MOD3-L3-Cx-2760, DC1-MOD3-L3-Cx-2770, DC1-MOD3-L3-Cx-2780, DC1-MOD3-L3-Cx-2790, DC1-MOD3-L3-Cx-2800, DC1-MOD3-L3-Cx-2810, DC1-MOD3-L3-Cx-2820, DC1-MOD3-L3-Cx-2830, DC1-CDU-L3-CX-5605, DC1-CDU-L3-CX-5615, DC1-CDU-L3-CX-5625, DC1-CDU-L3-CX-5635, DC1-CDU-L3-CX-5645, DC1-CDU-L3-CX-5655, DC1-CDU-L3-CX-5665, DC1-CDU-L3-CX-5675, DC1-CDU-L3-CX-5685, DC1-CDU-L3-CX-5695, DC1-CDU-L3-CX-5705, DC1-CDU-L3-CX-5715, DC1-CDU-L3-CX-5725, DC1-CDU-L3-CX-5735, DC1-CDU-L3-CX-5745, DC1-CDU-L3-CX-5755, DC1-CDU-L3-CX-5765, DC1-CDU-L3-CX-5775, DC1-CDU-L3-CX-5785, DC1-CDU-L3-CX-5795, DC1-CDU-L3-CX-5805, DC1-CDU-L3-CX-5815, DC1-CDU-L3-CX-5825, DC1-CDU-L3-CX-5835, DC1-CDU-L3-CX-5845, DC1-CDU-L3-CX-5855, DC1-CDU-L3-CX-5865, DC1-CDU-L3-CX-5875, DC1-CDU-L3-CX-5885, DC1-CDU-L3-CX-5895, DC1-CDU-L3-CX-5905, DC1-CDU-L3-CX-5915, DC1-CDU-L3-CX-5925, DC1-CDU-L3-CX-5935, DC1-CDU-L3-CX-5945, DC1-CDU-L3-CX-5955, DC1-CDU-L3-CX-5965, DC1-CDU-L3-CX-5975, DC1-CDU-L3-CX-5985, DC1-CDU-L3-CX-5995, DC1-CDU-L3-CX-6005, DC1-CDU-L3-CX-6015, DC1-CDU-L3-CX-6025, DC1-CDU-L3-CX-6035, DC1-CDU-L3-CX-6045, DC1-CDU-L3-CX-6055, DC1-CDU-L3-CX-6065, DC1-CDU-L3-CX-6075, DC1-CDU-L3-CX-6085, DC1-CDU-L3-CX-6095, DC1-CDU-L3-CX-6105, DC1-CDU-L3-CX-6115, DC1-CDU-L3-CX-6125, DC1-CDU-L3-CX-6135, DC1-CHLR-L3-Cx-2770, DC1-CHLR-L3-Cx-2980, DC1-CHLR-L3-Cx-2780, DC1-CHLR-L3-Cx-2790, DC1-CHLR-L3-Cx-2800, DC1-CHLR-L3-Cx-2990, DC1-CHLR-L3-Cx-2810, DC1-CHLR-L3-Cx-2820, DC1-CHLR-L3-Cx-2830, DC1-CHLR-L3-Cx-3000, DC1-CHLR-L3-Cx-2840, DC1-CHLR-L3-Cx-2850, DC1-CHLR-L3-Cx-2860, DC1-CHLR-L3-Cx-3010, DC1-CHLR-L3-Cx-2870, DC1-CHLR-L3-Cx-2880, DC1-CHLR-L3-Cx-2890, DC1-CHLR-L3-Cx-3020, DC1-CHLR-L3-Cx-2900, DC1-CHLR-L3-Cx-2910, DC1-CHLR-L3-Cx-2920, DC1-CHLR-L3-Cx-3030, DC1-CHLR-L3-Cx-2930, DC1-CHLR-L3-Cx-2940, DC1-CHLR-L3-Cx-2950, DC1-CHLR-L3-Cx-3040, DC1-CHLR-L3-Cx-2960, DC1-CHLR-L3-Cx-2970, DC1-CHWP-L3-Cx-2630, DC1-CHWP-L3-Cx-2640, DC1-CHWP-L3-Cx-2650, DC1-CHWP-L3-Cx-2660, DC1-CHWP-L3-Cx-2670, DC1-CHWP-L3-Cx-2680, DC1-CHWP-L3-Cx-2690, DC1-CHWP-L3-Cx-2700, DC1-CHWP-L3-Cx-2710, DC1-CHWP-L3-Cx-2720, DC1-CHWP-L3-Cx-2730, DC1-CHWP-L3-Cx-2740, DC1-CHWP-L3-Cx-2750, DC1-CHWP-L3-Cx-2760, DC1-CHWP-L3-Cx-2770, DC1-CHWP-L3-Cx-2780, DC1-CHWP-L3-Cx-2790, DC1-CHWP-L3-Cx-2800, DC1-CHWP-L3-Cx-2810, DC1-CHWP-L3-Cx-2820, DC1-CHWP-L3-Cx-2830, DC1-CRAH-L3-Cx-4880, DC1-CRAH-L3-Cx-4890, DC1-CRAH-L3-Cx-4900, DC1-CRAH-L3-Cx-4910, DC1-CRAH-L3-Cx-4920, DC1-CRAH-L3-Cx-4930, DC1-CRAH-L3-Cx-4940, DC1-CRAH-L3-Cx-4950, DC1-CRAH-L3-Cx-4960, DC1-CRAH-L3-Cx-4970, DC1-CRAH-L3-Cx-4980, DC1-CRAH-L3-Cx-4990, DC1-CRAH-L3-Cx-5000, DC1-CRAH-L3-Cx-5010, DC1-CRAH-L3-Cx-5020, DC1-CRAH-L3-Cx-5030, DC1-CRAH-L3-Cx-5040, DC1-CRAH-L3-Cx-5050, DC1-CRAH-L3-Cx-5060, DC1-CRAH-L3-Cx-5070, DC1-CRAH-L3-Cx-5080, DC1-CRAH-L3-Cx-5090, DC1-CRAH-L3-Cx-5100, DC1-CRAH-L3-Cx-5110, DC1-CRAH-L3-Cx-5120, DC1-CRAH-L3-Cx-5130, DC1-CRAH-L3-Cx-5140, DC1-CRAH-L3-Cx-5150, DC1-CRAH-L3-Cx-5160, DC1-CRAH-L3-Cx-5170, DC1-CRAH-L3-Cx-5180, DC1-CRAH-L3-Cx-5190, DC1-CRAH-L3-Cx-5200, DC1-CRAH-L3-Cx-5210, DC1-CRAH-L3-Cx-5220, DC1-CRAH-L3-Cx-5230, DC1-CRAH-L3-Cx-5240, DC1-CRAH-L3-Cx-5250, DC1-CRAH-L3-Cx-5260, DC1-CRAH-L3-Cx-5270, DC1-CRAH-L3-Cx-5280, DC1-CRAH-L3-Cx-5290, DC1-CRAH-L3-Cx-5300, DC1-CRAH-L3-Cx-5310, DC1-CRAH-L3-Cx-5320, DC1-CRAH-L3-Cx-5330, DC1-CRAH-L3-Cx-5340, DC1-CRAH-L3-Cx-5350, DC1-CRAH-L3-Cx-5360, DC1-CRAH-L3-Cx-5370, DC1-CRAH-L3-Cx-5380, DC1-CRAH-L3-Cx-5390, DC1-CRAH-L3-Cx-5400, DC1-CRAH-L3-Cx-5410, DC1-CRAH-L3-Cx-5420, DC1-CRAH-L3-Cx-5430, DC1-CRAH-L3-Cx-5440, DC1-CRAH-L3-Cx-5450, DC1-CRAH-L3-Cx-5460, DC1-CRAH-L3-Cx-5470, DC1-CRAH-L3-Cx-5480, DC1-CRAH-L3-Cx-5490, DC1-CRAH-L3-Cx-5500, DC1-CRAH-L3-Cx-5510, DC1-CRAH-L3-Cx-5520, DC1-CRAH-L3-Cx-5530, DC1-CRAH-L3-Cx-5540, DC1-CRAH-L3-Cx-5550, DC1-CRAH-L3-Cx-5560, DC1-CRAH-L3-Cx-5570, DC1-CRAH-L3-Cx-5580, DC1-CRAH-L3-Cx-5590, DC1-CRAH-L3-Cx-5600, DC1-CRAH-L3-Cx-5610, DC1-CRAH-L3-Cx-5620, DC1-CRAH-L3-Cx-5630, DC1-CRAH-L3-Cx-5640, DC1-CRAH-L3-Cx-5650, DC1-CRAH-L3-Cx-5660, DC1-CRAH-L3-Cx-5670, DC1-CRAH-L3-Cx-5680, DC1-CRAH-L3-Cx-5690, DC1-CRAH-L3-Cx-5700, DC1-CRAH-L3-Cx-5710, DC1-CRAH-L3-Cx-5720, DC1-CRAH-L3-Cx-5730, DC1-CRAH-L3-Cx-5740, DC1-CRAH-L3-Cx-5750, DC1-CRAH-L3-Cx-5760, DC1-CRAH-L3-Cx-5770, DC1-CRAH-L3-Cx-5780, DC1-CRAH-L3-Cx-5790, DC1-CRAH-L3-Cx-5800, DC1-CRAH-L3-Cx-5810, DC1-CRAH-L3-Cx-5820, DC1-CRAH-L3-Cx-5830, DC1-DOAS-L3-Cx-2180, DC1-DOAS-L3-Cx-2190, DC1-DOAS-L3-Cx-2200, DC1-DOAS-L3-Cx-2210, DC1-DOAS-L3-Cx-2220, DC1-DOAS-L3-Cx-2230, DC1-DH2300-LB-1030, DC1-DH2300-LB-1060, DC1-DH2300-LB-1000, DC1-DH2300-LB-1010, DC1-DH2300-LB-1040, DC1-DH2300-LB-1050, DC1-DH2300-TAB-1010, DC1-DH2300-TAB-1000, DC1-ELEC-L4-Cx-1070, DC1-MECH-L4-Cx-1140, DC1-ELEC-L4-Cx-1040, DC1-L4-Cx-1270, DC1-L4-Cx-1280, DC1-L4-Cx-1290, DC1-L4-Cx-1300, DC1-IST-2030, DC1-XFMR-L2-2340, DC1-XFMR-L2-2320, DC1-XFMR-L2-2280, DC1-XFMR-L2-2300, DC1-XFMR-L2-2330, DC1-XFMR-L2-2310, DC1-XFMR-L2-2290, DC1-SWD-L2-2340, DC1-SWD-L2-2280, DC1-SWD-L2-2290, DC1-SWD-L2-2300, DC1-SWD-L2-2310, DC1-SWD-L2-2320, DC1-SWD-L2-2330, DC1-MOD01-L2-2280, DC1-MOD01-L2-2290, DC1-MOD01-L2-2300, DC1-MOD01-L2-2310, DC1-MOD01-L2-2320, DC1-MOD01-L2-2330, DC1-MOD01-L2-2340, DC1-UPS-M-L2-2280, DC1-UPS-M-L2-2290, DC1-UPS-M-L2-2300, DC1-UPS-M-L2-2310, DC1-UPS-M-L2-2320, DC1-UPS-M-L2-2330, DC1-UPS-M-L2-2340, DC1-BUS-L2-1080, DC1-BUS-L2-1090, DC1-ATS-L2-3440, DC1-ATS-L2-3450, DC1-ATS-L2-3460, DC1-ATS-L2-3470, DC1-ATS-L2-3480, DC1-ATS-L2-3490, DC1-ATS-L2-3500, DC1-ATS-L2-3510, DC1-ATS-L2-3520, DC1-ATS-L2-3530, DC1-ATS-L2-3540, DC1-ATS-L2-3550, DC1-ATS-L2-3560, DC1-ATS-L2-3570, DC1-ATS-L2-3580, DC1-ATS-L2-3590, DC1-ATS-L2-3600, DC1-ATS-L2-3610, DC1-ATS-L2-3620, DC1-ATS-L2-3630, DC1-ATS-L2-3640, DC1-ATS-L2-3650, DC1-ATS-L2-3660, DC1-ATS-L2-3670, DC1-ATS-L2-3680, DC1-ATS-L2-3690, DC1-ATS-L2-3700, DC1-ATS-L2-3710, DC1-ATS-L2-3720, DC1-ATS-L2-3730, DC1-ATS-L2-3740, DC1-ATS-L2-3750, DC1-ATS-L2-3760, DC1-ATS-L2-3770, DC1-ATS-L2-3780, DC1-ATS-L2-3790, DC1-COD-L2-3440, DC1-COD-L2-3450, DC1-COD-L2-3460, DC1-COD-L2-3470, DC1-COD-L2-3480, DC1-COD-L2-3490, DC1-COD-L2-3500, DC1-COD-L2-3510, DC1-COD-L2-3530, DC1-COD-L2-3540, DC1-COD-L2-3550, DC1-COD-L2-3520, DC1-COD-L2-3560, DC1-COD-L2-3570, DC1-COD-L2-3580, DC1-COD-L2-3590, DC1-COD-L2-3600, DC1-COD-L2-3610, DC1-COD-L2-3620, DC1-COD-L2-3630, DC1-COD-L2-3640, DC1-COD-L2-3650, DC1-COD-L2-3660, DC1-COD-L2-3670, DC1-COD-L2-3680, DC1-COD-L2-3690, DC1-COD-L2-3700, DC1-COD-L2-3710, DC1-COD-L2-3720, DC1-COD-L2-3730, DC1-COD-L2-3740, DC1-COD-L2-3750, DC1-COD-L2-3760, DC1-COD-L2-3770, DC1-COD-L2-3780, DC1-COD-L2-3790, DC1-RPP-L2-3440, DC1-RPP-L2-3450, DC1-RPP-L2-3460, DC1-RPP-L2-3470, DC1-RPP-L2-3480, DC1-RPP-L2-3490, DC1-RPP-L2-3500, DC1-RPP-L2-3510, DC1-RPP-L2-3520, DC1-RPP-L2-3530, DC1-RPP-L2-3540, DC1-RPP-L2-3550, DC1-RPP-L2-3560, DC1-RPP-L2-3570, DC1-RPP-L2-3580, DC1-RPP-L2-3590, DC1-RPP-L2-3600, DC1-RPP-L2-3610, DC1-RPP-L2-3620, DC1-RPP-L2-3630, DC1-RPP-L2-3640, DC1-RPP-L2-3650, DC1-RPP-L2-3660, DC1-RPP-L2-3670, DC1-RPP-L2-3680, DC1-RPP-L2-3690, DC1-RPP-L2-3700, DC1-RPP-L2-3710, DC1-RPP-L2-3720, DC1-RPP-L2-3730, DC1-RPP-L2-3740, DC1-RPP-L2-3750, DC1-RPP-L2-3760, DC1-RPP-L2-3770, DC1-RPP-L2-3780, DC1-RPP-L2-3790, DC1-MOD02-L2-2280, DC1-MOD02-L2-2290, DC1-MOD02-L2-2300, DC1-MOD02-L2-2310, DC1-MOD02-L2-2320, DC1-MOD02-L2-2330, DC1-MOD02-L2-2340, DC1-MOD03-L2-2280, DC1-MOD03-L2-2290, DC1-MOD03-L2-2300, DC1-MOD03-L2-2310, DC1-MOD03-L2-2320, DC1-MOD03-L2-2330, DC1-MOD03-L2-2340, DC1-CDU-L2-3990, DC1-CDU-L2-4000, DC1-CDU-L2-4010, DC1-CDU-L2-4020, DC1-CDU-L2-4030, DC1-CDU-L2-4040, DC1-CDU-L2-4050, DC1-CDU-L2-4060, DC1-CDU-L2-4070, DC1-CDU-L2-4080, DC1-CDU-L2-4090, DC1-CDU-L2-4100, DC1-CDU-L2-4110, DC1-CDU-L2-4120, DC1-CDU-L2-4130, DC1-CDU-L2-4140, DC1-CDU-L2-4150, DC1-CDU-L2-4160, DC1-CHLR-L2-1280, DC1-CHLR-L2-1310, DC1-CHLR-L2-1290, DC1-CHLR-L2-1320, DC1-CHLR-L2-1300, DC1-CHLR-L2-1330, DC1-CHLR-L2-1340, DC1-CHWP-L2-Cx-2280, DC1-CHWP-L2-Cx-2290, DC1-CHWP-L2-Cx-2300, DC1-CHWP-L2-Cx-2310, DC1-CHWP-L2-Cx-2320, DC1-CHWP-L2-Cx-2330, DC1-CHWP-L2-Cx-2340, DC1-CRAH-L2-3280, DC1-CRAH-L2-3290, DC1-CRAH-L2-3300, DC1-CRAH-L2-3310, DC1-CRAH-L2-3320, DC1-CRAH-L2-3330, DC1-CRAH-L2-3340, DC1-CRAH-L2-3350, DC1-CRAH-L2-3360, DC1-CRAH-L2-3370, DC1-CRAH-L2-3380, DC1-CRAH-L2-3390, DC1-CRAH-L2-3400, DC1-CRAH-L2-3410, DC1-CRAH-L2-3420, DC1-CRAH-L2-3430, DC1-CRAH-L2-3440, DC1-CRAH-L2-3450, DC1-CRAH-L2-3460, DC1-CRAH-L2-3470, DC1-CRAH-L2-3480, DC1-CRAH-L2-3490, DC1-CRAH-L2-3500, DC1-CRAH-L2-3510, DC1-CRAH-L2-3520, DC1-CRAH-L2-3530, DC1-CRAH-L2-3540, DC1-CRAH-L2-3550, DC1-CRAH-L2-3560, DC1-CRAH-L2-3570, DC1-CRAH-L2-3580, DC1-CRAH-L2-3590, DC1-DOAS-L2-2080, DC1-DOAS-L2-2090, DC1-XFM-L3-CX-1840, DC1-XFM-L3-CX-1850, DC1-XFM-L3-CX-1860, DC1-XFM-L3-CX-1870, DC1-XFM-L3-CX-1880, DC1-XFM-L3-CX-1890, DC1-XFM-L3-CX-1900, DC1-XFM-L3-CX-1910, DC1-XFM-L3-CX-1920, DC1-XFM-L3-CX-1930, DC1-XFM-L3-CX-1940, DC1-XFM-L3-CX-1950, DC1-XFM-L3-CX-1960, DC1-XFM-L3-CX-1970, DC1-XFM-L3-CX-1980, DC1-XFM-L3-CX-1990, DC1-XFM-L3-CX-2000, DC1-XFM-L3-CX-2010, DC1-XFM-L3-CX-2020, DC1-XFM-L3-CX-2030, DC1-XFM-L3-CX-2040, DC1-SWD-L3-CX-2840, DC1-SWD-L3-CX-2850, DC1-SWD-L3-CX-2860, DC1-SWD-L3-CX-2870, DC1-SWD-L3-CX-2880, DC1-SWD-L3-CX-2890, DC1-SWD-L3-CX-2900, DC1-SWD-L3-CX-2910, DC1-SWD-L3-CX-2920, DC1-SWD-L3-CX-2930, DC1-SWD-L3-CX-2940, DC1-SWD-L3-CX-2950, DC1-SWD-L3-CX-2960, DC1-SWD-L3-CX-2970, DC1-SWD-L3-CX-2980, DC1-SWD-L3-CX-2990, DC1-SWD-L3-CX-3000, DC1-SWD-L3-CX-3010, DC1-SWD-L3-CX-3020, DC1-SWD-L3-CX-3030, DC1-SWD-L3-CX-3040, DC1-MOD1-L3-CX-2840, DC1-MOD1-L3-CX-2850, DC1-MOD1-L3-CX-2860, DC1-MOD1-L3-CX-2870, DC1-MOD1-L3-CX-2880, DC1-MOD1-L3-CX-2890, DC1-MOD1-L3-CX-2900, DC1-MOD1-L3-CX-2910, DC1-MOD1-L3-CX-2920, DC1-MOD1-L3-CX-2930, DC1-MOD1-L3-CX-2940, DC1-MOD1-L3-CX-2950, DC1-MOD1-L3-CX-2960, DC1-MOD1-L3-CX-2970, DC1-MOD1-L3-CX-2980, DC1-MOD1-L3-CX-2990, DC1-MOD1-L3-CX-3000, DC1-MOD1-L3-CX-3010, DC1-MOD1-L3-CX-3020, DC1-MOD1-L3-CX-3030, DC1-MOD1-L3-CX-3040, DC1-UPSM-L3-CX-2840, DC1-UPSM-L3-CX-2850, DC1-UPSM-L3-CX-2860, DC1-UPSM-L3-CX-2870, DC1-UPSM-L3-CX-2880, DC1-UPSM-L3-CX-2890, DC1-UPSM-L3-CX-2900, DC1-UPSM-L3-CX-2910, DC1-UPSM-L3-CX-2920, DC1-UPSM-L3-CX-2930, DC1-UPSM-L3-CX-2940, DC1-UPSM-L3-CX-2950, DC1-UPSM-L3-CX-2960, DC1-UPSM-L3-CX-2970, DC1-UPSM-L3-CX-2980, DC1-UPSM-L3-CX-2990, DC1-UPSM-L3-CX-3000, DC1-UPSM-L3-CX-3010, DC1-UPSM-L3-CX-3020, DC1-UPSM-L3-CX-3030, DC1-UPSM-L3-CX-3040, DC1-BUS-L3-CX-2240, DC1-BUS-L3-CX-2250, DC1-BUS-L3-CX-2260, DC1-BUS-L3-CX-2270, DC1-BUS-L3-CX-2280, DC1-BUS-L3-CX-2290, DC1-ATS-L3-CX-5785, DC1-ATS-L3-CX-5795, DC1-ATS-L3-CX-5805, DC1-ATS-L3-CX-5815, DC1-ATS-L3-CX-5825, DC1-ATS-L3-CX-5835, DC1-ATS-L3-CX-5845, DC1-ATS-L3-CX-5855, DC1-ATS-L3-CX-5865, DC1-ATS-L3-CX-5875, DC1-ATS-L3-CX-5885, DC1-ATS-L3-CX-5895, DC1-ATS-L3-CX-5905, DC1-ATS-L3-CX-5915, DC1-ATS-L3-CX-5925, DC1-ATS-L3-CX-5935, DC1-ATS-L3-CX-5945, DC1-ATS-L3-CX-5955, DC1-ATS-L3-CX-5965, DC1-ATS-L3-CX-5975, DC1-ATS-L3-CX-5985, DC1-ATS-L3-CX-5995, DC1-ATS-L3-CX-6005, DC1-ATS-L3-CX-6015, DC1-ATS-L3-CX-6025, DC1-ATS-L3-CX-6035, DC1-ATS-L3-CX-6045, DC1-ATS-L3-CX-6055, DC1-ATS-L3-CX-6065, DC1-ATS-L3-CX-6075, DC1-ATS-L3-CX-6085, DC1-ATS-L3-CX-6095, DC1-ATS-L3-CX-6105, DC1-ATS-L3-CX-6115, DC1-ATS-L3-CX-6125, DC1-ATS-L3-CX-6135, DC1-ATS-L3-CX-6145, DC1-ATS-L3-CX-6155, DC1-ATS-L3-CX-6165, DC1-ATS-L3-CX-6175, DC1-ATS-L3-CX-6185, DC1-ATS-L3-CX-6195, DC1-ATS-L3-CX-6205, DC1-ATS-L3-CX-6215, DC1-ATS-L3-CX-6225, DC1-ATS-L3-CX-6235, DC1-ATS-L3-CX-6245, DC1-ATS-L3-CX-6255, DC1-ATS-L3-CX-6265, DC1-ATS-L3-CX-6275, DC1-ATS-L3-CX-6285, DC1-ATS-L3-CX-6295, DC1-ATS-L3-CX-6305, DC1-ATS-L3-CX-6315, DC1-ATS-L3-CX-6325, DC1-ATS-L3-CX-6335, DC1-ATS-L3-CX-6345, DC1-ATS-L3-CX-6355, DC1-ATS-L3-CX-6365, DC1-ATS-L3-CX-6375, DC1-ATS-L3-CX-6385, DC1-ATS-L3-CX-6395, DC1-ATS-L3-CX-6405, DC1-ATS-L3-CX-6415, DC1-ATS-L3-CX-6425, DC1-ATS-L3-CX-6435, DC1-ATS-L3-CX-6445, DC1-ATS-L3-CX-6455, DC1-ATS-L3-CX-6465, DC1-ATS-L3-CX-6475, DC1-ATS-L3-CX-6485, DC1-ATS-L3-CX-6495, DC1-ATS-L3-CX-6505, DC1-ATS-L3-CX-6515, DC1-ATS-L3-CX-6525, DC1-ATS-L3-CX-6535, DC1-ATS-L3-CX-6545, DC1-ATS-L3-CX-6555, DC1-ATS-L3-CX-6565, DC1-ATS-L3-CX-6575, DC1-ATS-L3-CX-6585, DC1-ATS-L3-CX-6595, DC1-ATS-L3-CX-6605, DC1-ATS-L3-CX-6615, DC1-ATS-L3-CX-6625, DC1-ATS-L3-CX-6635, DC1-ATS-L3-CX-6645, DC1-ATS-L3-CX-6655, DC1-ATS-L3-CX-6665, DC1-ATS-L3-CX-6675, DC1-ATS-L3-CX-6685, DC1-ATS-L3-CX-6695, DC1-ATS-L3-CX-6705, DC1-ATS-L3-CX-6715, DC1-ATS-L3-CX-6725, DC1-ATS-L3-CX-6735, DC1-ATS-L3-CX-6745, DC1-ATS-L3-CX-6755, DC1-ATS-L3-CX-6765, DC1-ATS-L3-CX-6775, DC1-ATS-L3-CX-6785, DC1-ATS-L3-CX-6795, DC1-ATS-L3-CX-6805, DC1-ATS-L3-CX-6815, DC1-ATS-L3-CX-6825, DC1-ATS-L3-CX-6835, DC1-ATS-L3-CX-6845, DC1-ATS-L3-CX-6855, DC1-COD-L3-CX-5785, DC1-COD-L3-CX-5795, DC1-COD-L3-CX-5805, DC1-COD-L3-CX-5815, DC1-COD-L3-CX-5825, DC1-COD-L3-CX-5835, DC1-COD-L3-CX-5845, DC1-COD-L3-CX-5855, DC1-COD-L3-CX-5865, DC1-COD-L3-CX-5875, DC1-COD-L3-CX-5885, DC1-COD-L3-CX-5895, DC1-COD-L3-CX-5905, DC1-COD-L3-CX-5915, DC1-COD-L3-CX-5925, DC1-COD-L3-CX-5935, DC1-COD-L3-CX-5945, DC1-COD-L3-CX-5955, DC1-COD-L3-CX-5965, DC1-COD-L3-CX-5975, DC1-COD-L3-CX-5985, DC1-COD-L3-CX-5995, DC1-COD-L3-CX-6005, DC1-COD-L3-CX-6015, DC1-COD-L3-CX-6025, DC1-COD-L3-CX-6035, DC1-COD-L3-CX-6045, DC1-COD-L3-CX-6055, DC1-COD-L3-CX-6065, DC1-COD-L3-CX-6075, DC1-COD-L3-CX-6085, DC1-COD-L3-CX-6095, DC1-COD-L3-CX-6105, DC1-COD-L3-CX-6115, DC1-COD-L3-CX-6125, DC1-COD-L3-CX-6135, DC1-COD-L3-CX-6145, DC1-COD-L3-CX-6155, DC1-COD-L3-CX-6165, DC1-COD-L3-CX-6175, DC1-COD-L3-CX-6185, DC1-COD-L3-CX-6195, DC1-COD-L3-CX-6205, DC1-COD-L3-CX-6215, DC1-COD-L3-CX-6225, DC1-COD-L3-CX-6235, DC1-COD-L3-CX-6245, DC1-COD-L3-CX-6255, DC1-COD-L3-CX-6265, DC1-COD-L3-CX-6275, DC1-COD-L3-CX-6285, DC1-COD-L3-CX-6295, DC1-COD-L3-CX-6305, DC1-COD-L3-CX-6315, DC1-COD-L3-CX-6325, DC1-COD-L3-CX-6335, DC1-COD-L3-CX-6345, DC1-COD-L3-CX-6355, DC1-COD-L3-CX-6365, DC1-COD-L3-CX-6375, DC1-COD-L3-CX-6385, DC1-COD-L3-CX-6395, DC1-COD-L3-CX-6405, DC1-COD-L3-CX-6415, DC1-COD-L3-CX-6425, DC1-COD-L3-CX-6435, DC1-COD-L3-CX-6445, DC1-COD-L3-CX-6455, DC1-COD-L3-CX-6465, DC1-COD-L3-CX-6475, DC1-COD-L3-CX-6485, DC1-COD-L3-CX-6495, DC1-COD-L3-CX-6505, DC1-COD-L3-CX-6515, DC1-COD-L3-CX-6525, DC1-COD-L3-CX-6535, DC1-COD-L3-CX-6545, DC1-COD-L3-CX-6555, DC1-COD-L3-CX-6565, DC1-COD-L3-CX-6575, DC1-COD-L3-CX-6585, DC1-COD-L3-CX-6595, DC1-COD-L3-CX-6605, DC1-COD-L3-CX-6615, DC1-COD-L3-CX-6625, DC1-COD-L3-CX-6635, DC1-COD-L3-CX-6645, DC1-COD-L3-CX-6655, DC1-COD-L3-CX-6665, DC1-COD-L3-CX-6675, DC1-COD-L3-CX-6685, DC1-COD-L3-CX-6695, DC1-COD-L3-CX-6705, DC1-COD-L3-CX-6715, DC1-COD-L3-CX-6725, DC1-COD-L3-CX-6735, DC1-COD-L3-CX-6745, DC1-COD-L3-CX-6755, DC1-COD-L3-CX-6765, DC1-COD-L3-CX-6775, DC1-COD-L3-CX-6785, DC1-COD-L3-CX-6795, DC1-COD-L3-CX-6805, DC1-COD-L3-CX-6815, DC1-COD-L3-CX-6825, DC1-COD-L3-CX-6835, DC1-COD-L3-CX-6845, DC1-COD-L3-CX-6855, DC1-RPP-L3-CX-5785, DC1-RPP-L3-CX-5795, DC1-RPP-L3-CX-5805, DC1-RPP-L3-CX-5815, DC1-RPP-L3-CX-5825, DC1-RPP-L3-CX-5835, DC1-RPP-L3-CX-5845, DC1-RPP-L3-CX-5855, DC1-RPP-L3-CX-5865, DC1-RPP-L3-CX-5875, DC1-RPP-L3-CX-5885, DC1-RPP-L3-CX-5895, DC1-RPP-L3-CX-5905, DC1-RPP-L3-CX-5915, DC1-RPP-L3-CX-5925, DC1-RPP-L3-CX-5935, DC1-RPP-L3-CX-5945, DC1-RPP-L3-CX-5955, DC1-RPP-L3-CX-5965, DC1-RPP-L3-CX-5975, DC1-RPP-L3-CX-5985, DC1-RPP-L3-CX-5995, DC1-RPP-L3-CX-6005, DC1-RPP-L3-CX-6015, DC1-RPP-L3-CX-6025, DC1-RPP-L3-CX-6035, DC1-RPP-L3-CX-6045, DC1-RPP-L3-CX-6055, DC1-RPP-L3-CX-6065, DC1-RPP-L3-CX-6075, DC1-RPP-L3-CX-6085, DC1-RPP-L3-CX-6095, DC1-RPP-L3-CX-6105, DC1-RPP-L3-CX-6115, DC1-RPP-L3-CX-6125, DC1-RPP-L3-CX-6135, DC1-RPP-L3-CX-6145, DC1-RPP-L3-CX-6155, DC1-RPP-L3-CX-6165, DC1-RPP-L3-CX-6175, DC1-RPP-L3-CX-6185, DC1-RPP-L3-CX-6195, DC1-RPP-L3-CX-6205, DC1-RPP-L3-CX-6215, DC1-RPP-L3-CX-6225, DC1-RPP-L3-CX-6235, DC1-RPP-L3-CX-6245, DC1-RPP-L3-CX-6255, DC1-RPP-L3-CX-6265, DC1-RPP-L3-CX-6275, DC1-RPP-L3-CX-6285, DC1-RPP-L3-CX-6295, DC1-RPP-L3-CX-6305, DC1-RPP-L3-CX-6315, DC1-RPP-L3-CX-6325, DC1-RPP-L3-CX-6335, DC1-RPP-L3-CX-6345, DC1-RPP-L3-CX-6355, DC1-RPP-L3-CX-6365, DC1-RPP-L3-CX-6375, DC1-RPP-L3-CX-6385, DC1-RPP-L3-CX-6395, DC1-RPP-L3-CX-6405, DC1-RPP-L3-CX-6415, DC1-RPP-L3-CX-6425, DC1-RPP-L3-CX-6435, DC1-RPP-L3-CX-6445, DC1-RPP-L3-CX-6455, DC1-RPP-L3-CX-6465, DC1-RPP-L3-CX-6475, DC1-RPP-L3-CX-6485, DC1-RPP-L3-CX-6495, DC1-RPP-L3-CX-6505, DC1-RPP-L3-CX-6515, DC1-RPP-L3-CX-6525, DC1-RPP-L3-CX-6535, DC1-RPP-L3-CX-6545, DC1-RPP-L3-CX-6555, DC1-RPP-L3-CX-6565, DC1-RPP-L3-CX-6575, DC1-RPP-L3-CX-6585, DC1-RPP-L3-CX-6595, DC1-RPP-L3-CX-6605, DC1-RPP-L3-CX-6615, DC1-RPP-L3-CX-6625, DC1-RPP-L3-CX-6635, DC1-RPP-L3-CX-6645, DC1-RPP-L3-CX-6655, DC1-RPP-L3-CX-6665, DC1-RPP-L3-CX-6675, DC1-RPP-L3-CX-6685, DC1-RPP-L3-CX-6695, DC1-RPP-L3-CX-6705, DC1-RPP-L3-CX-6715, DC1-RPP-L3-CX-6725, DC1-RPP-L3-CX-6735, DC1-RPP-L3-CX-6745, DC1-RPP-L3-CX-6755, DC1-RPP-L3-CX-6765, DC1-RPP-L3-CX-6775, DC1-RPP-L3-CX-6785, DC1-RPP-L3-CX-6795, DC1-RPP-L3-CX-6805, DC1-RPP-L3-CX-6815, DC1-RPP-L3-CX-6825, DC1-RPP-L3-CX-6835, DC1-RPP-L3-CX-6845, DC1-RPP-L3-CX-6855, DC1-MOD2-L3-Cx-2840, DC1-MOD2-L3-Cx-2850, DC1-MOD2-L3-Cx-2860, DC1-MOD2-L3-Cx-2870, DC1-MOD2-L3-Cx-2880, DC1-MOD2-L3-Cx-2890, DC1-MOD2-L3-Cx-2900, DC1-MOD2-L3-Cx-2910, DC1-MOD2-L3-Cx-2920, DC1-MOD2-L3-Cx-2930, DC1-MOD2-L3-Cx-2940, DC1-MOD2-L3-Cx-2950, DC1-MOD2-L3-Cx-2960, DC1-MOD2-L3-Cx-2970, DC1-MOD2-L3-Cx-2980, DC1-MOD2-L3-Cx-2990, DC1-MOD2-L3-Cx-3000, DC1-MOD2-L3-Cx-3010, DC1-MOD2-L3-Cx-3020, DC1-MOD2-L3-Cx-3030, DC1-MOD2-L3-Cx-3040, DC1-MOD3-L3-Cx-2840, DC1-MOD3-L3-Cx-2850, DC1-MOD3-L3-Cx-2860, DC1-MOD3-L3-Cx-2870, DC1-MOD3-L3-Cx-2880, DC1-MOD3-L3-Cx-2890, DC1-MOD3-L3-Cx-2900, DC1-MOD3-L3-Cx-2910, DC1-MOD3-L3-Cx-2920, DC1-MOD3-L3-Cx-2930, DC1-MOD3-L3-Cx-2940, DC1-MOD3-L3-Cx-2950, DC1-MOD3-L3-Cx-2960, DC1-MOD3-L3-Cx-2970, DC1-MOD3-L3-Cx-2980, DC1-MOD3-L3-Cx-2990, DC1-MOD3-L3-Cx-3000, DC1-MOD3-L3-Cx-3010, DC1-MOD3-L3-Cx-3020, DC1-MOD3-L3-Cx-3030, DC1-MOD3-L3-Cx-3040, DC1-CDU-L3-CX-7045, DC1-CDU-L3-CX-7055, DC1-CDU-L3-CX-7065, DC1-CDU-L3-CX-7075, DC1-CDU-L3-CX-7085, DC1-CDU-L3-CX-7095, DC1-CDU-L3-CX-7105, DC1-CDU-L3-CX-7115, DC1-CDU-L3-CX-7125, DC1-CDU-L3-CX-7135, DC1-CDU-L3-CX-7145, DC1-CDU-L3-CX-7155, DC1-CDU-L3-CX-7165, DC1-CDU-L3-CX-7175, DC1-CDU-L3-CX-7185, DC1-CDU-L3-CX-7195, DC1-CDU-L3-CX-7205, DC1-CDU-L3-CX-7215, DC1-CDU-L3-CX-7225, DC1-CDU-L3-CX-7235, DC1-CDU-L3-CX-7245, DC1-CDU-L3-CX-7255, DC1-CDU-L3-CX-7265, DC1-CDU-L3-CX-7275, DC1-CDU-L3-CX-7285, DC1-CDU-L3-CX-7295, DC1-CDU-L3-CX-7305, DC1-CDU-L3-CX-7315, DC1-CDU-L3-CX-7325, DC1-CDU-L3-CX-7335, DC1-CDU-L3-CX-7345, DC1-CDU-L3-CX-7355, DC1-CDU-L3-CX-7365, DC1-CDU-L3-CX-7375, DC1-CDU-L3-CX-7385, DC1-CDU-L3-CX-7395, DC1-CDU-L3-CX-7405, DC1-CDU-L3-CX-7415, DC1-CDU-L3-CX-7425, DC1-CDU-L3-CX-7435, DC1-CDU-L3-CX-7445, DC1-CDU-L3-CX-7455, DC1-CDU-L3-CX-7465, DC1-CDU-L3-CX-7475, DC1-CDU-L3-CX-7485, DC1-CDU-L3-CX-7495, DC1-CDU-L3-CX-7505, DC1-CDU-L3-CX-7515, DC1-CDU-L3-CX-7525, DC1-CDU-L3-CX-7535, DC1-CDU-L3-CX-7545, DC1-CDU-L3-CX-7555, DC1-CDU-L3-CX-7565, DC1-CDU-L3-CX-7575, DC1-CHLR-L3-Cx-3050, DC1-CHLR-L3-Cx-3260, DC1-CHLR-L3-Cx-3060, DC1-CHLR-L3-Cx-3070, DC1-CHLR-L3-Cx-3080, DC1-CHLR-L3-Cx-3270, DC1-CHLR-L3-Cx-3090, DC1-CHLR-L3-Cx-3100, DC1-CHLR-L3-Cx-3110, DC1-CHLR-L3-Cx-3280, DC1-CHLR-L3-Cx-3120, DC1-CHLR-L3-Cx-3130, DC1-CHLR-L3-Cx-3140, DC1-CHLR-L3-Cx-3290, DC1-CHLR-L3-Cx-3150, DC1-CHLR-L3-Cx-3160, DC1-CHLR-L3-Cx-3170, DC1-CHLR-L3-Cx-3300, DC1-CHLR-L3-Cx-3180, DC1-CHLR-L3-Cx-3190, DC1-CHLR-L3-Cx-3200, DC1-CHLR-L3-Cx-3310, DC1-CHLR-L3-Cx-3210, DC1-CHLR-L3-Cx-3220, DC1-CHLR-L3-Cx-3230, DC1-CHLR-L3-Cx-3320, DC1-CHLR-L3-Cx-3240, DC1-CHLR-L3-Cx-3250, DC1-CHWP-L3-Cx-2840, DC1-CHWP-L3-Cx-2850, DC1-CHWP-L3-Cx-2860, DC1-CHWP-L3-Cx-2870, DC1-CHWP-L3-Cx-2880, DC1-CHWP-L3-Cx-2890, DC1-CHWP-L3-Cx-2900, DC1-CHWP-L3-Cx-2910, DC1-CHWP-L3-Cx-2920, DC1-CHWP-L3-Cx-2930, DC1-CHWP-L3-Cx-2940, DC1-CHWP-L3-Cx-2950, DC1-CHWP-L3-Cx-2960, DC1-CHWP-L3-Cx-2970, DC1-CHWP-L3-Cx-2980, DC1-CHWP-L3-Cx-2990, DC1-CHWP-L3-Cx-3000, DC1-CHWP-L3-Cx-3010, DC1-CHWP-L3-Cx-3020, DC1-CHWP-L3-Cx-3030, DC1-CHWP-L3-Cx-3040, DC1-CRAH-L3-Cx-5840, DC1-CRAH-L3-Cx-5850, DC1-CRAH-L3-Cx-5860, DC1-CRAH-L3-Cx-5870, DC1-CRAH-L3-Cx-5880, DC1-CRAH-L3-Cx-5890, DC1-CRAH-L3-Cx-5900, DC1-CRAH-L3-Cx-5910, DC1-CRAH-L3-Cx-5920, DC1-CRAH-L3-Cx-5930, DC1-CRAH-L3-Cx-5940, DC1-CRAH-L3-Cx-5950, DC1-CRAH-L3-Cx-5960, DC1-CRAH-L3-Cx-5970, DC1-CRAH-L3-Cx-5980, DC1-CRAH-L3-Cx-5990, DC1-CRAH-L3-Cx-6000, DC1-CRAH-L3-Cx-6010, DC1-CRAH-L3-Cx-6020, DC1-CRAH-L3-Cx-6030, DC1-CRAH-L3-Cx-6040, DC1-CRAH-L3-Cx-6050, DC1-CRAH-L3-Cx-6060, DC1-CRAH-L3-Cx-6070, DC1-CRAH-L3-Cx-6080, DC1-CRAH-L3-Cx-6090, DC1-CRAH-L3-Cx-6100, DC1-CRAH-L3-Cx-6110, DC1-CRAH-L3-Cx-6120, DC1-CRAH-L3-Cx-6130, DC1-CRAH-L3-Cx-6140, DC1-CRAH-L3-Cx-6150, DC1-CRAH-L3-Cx-6160, DC1-CRAH-L3-Cx-6170, DC1-CRAH-L3-Cx-6180, DC1-CRAH-L3-Cx-6190, DC1-CRAH-L3-Cx-6200, DC1-CRAH-L3-Cx-6210, DC1-CRAH-L3-Cx-6220, DC1-CRAH-L3-Cx-6230, DC1-CRAH-L3-Cx-6240, DC1-CRAH-L3-Cx-6250, DC1-CRAH-L3-Cx-6260, DC1-CRAH-L3-Cx-6270, DC1-CRAH-L3-Cx-6280, DC1-CRAH-L3-Cx-6290, DC1-CRAH-L3-Cx-6300, DC1-CRAH-L3-Cx-6310, DC1-CRAH-L3-Cx-6320, DC1-CRAH-L3-Cx-6330, DC1-CRAH-L3-Cx-6340, DC1-CRAH-L3-Cx-6350, DC1-CRAH-L3-Cx-6360, DC1-CRAH-L3-Cx-6370, DC1-CRAH-L3-Cx-6380, DC1-CRAH-L3-Cx-6390, DC1-CRAH-L3-Cx-6400, DC1-CRAH-L3-Cx-6410, DC1-CRAH-L3-Cx-6420, DC1-CRAH-L3-Cx-6430, DC1-CRAH-L3-Cx-6440, DC1-CRAH-L3-Cx-6450, DC1-CRAH-L3-Cx-6460, DC1-CRAH-L3-Cx-6470, DC1-CRAH-L3-Cx-6480, DC1-CRAH-L3-Cx-6490, DC1-CRAH-L3-Cx-6500, DC1-CRAH-L3-Cx-6510, DC1-CRAH-L3-Cx-6520, DC1-CRAH-L3-Cx-6530, DC1-CRAH-L3-Cx-6540, DC1-CRAH-L3-Cx-6550, DC1-CRAH-L3-Cx-6560, DC1-CRAH-L3-Cx-6570, DC1-CRAH-L3-Cx-6580, DC1-CRAH-L3-Cx-6590, DC1-CRAH-L3-Cx-6600, DC1-CRAH-L3-Cx-6610, DC1-CRAH-L3-Cx-6620, DC1-CRAH-L3-Cx-6630, DC1-CRAH-L3-Cx-6640, DC1-CRAH-L3-Cx-6650, DC1-CRAH-L3-Cx-6660, DC1-CRAH-L3-Cx-6670, DC1-CRAH-L3-Cx-6680, DC1-CRAH-L3-Cx-6690, DC1-CRAH-L3-Cx-6700, DC1-CRAH-L3-Cx-6710, DC1-CRAH-L3-Cx-6720, DC1-CRAH-L3-Cx-6730, DC1-CRAH-L3-Cx-6740, DC1-CRAH-L3-Cx-6750, DC1-CRAH-L3-Cx-6760, DC1-CRAH-L3-Cx-6770, DC1-CRAH-L3-Cx-6780, DC1-CRAH-L3-Cx-6790, DC1-DOAS-L3-Cx-2240, DC1-DOAS-L3-Cx-2250, DC1-DOAS-L3-Cx-2260, DC1-DOAS-L3-Cx-2270, DC1-DOAS-L3-Cx-2280, DC1-DOAS-L3-Cx-2290, DC1-DH1300-LB-1030, DC1-DH1300-LB-1060, DC1-DH1300-LB-1000, DC1-DH1300-LB-1010, DC1-DH1300-LB-1040, DC1-DH1300-LB-1050, DC1-DH1300-TAB-1010, DC1-DH1300-TAB-1000, DC1-ELEC-L4-Cx-1060, DC1-ELEC-L4-Cx-1110, DC1-ELEC-L4-Cx-1050, DC1-L4-Cx-1310, DC1-L4-Cx-1320, DC1-L4-Cx-1330, DC1-L4-Cx-1340, DC1-IST-2040, DC1-CHWP-L2-Cx-2070, DC1-CHWP-L2-Cx-2080, DC1-CHWP-L2-Cx-2090, DC1-CHWP-L2-Cx-2100, DC1-CHWP-L2-Cx-2110, DC1-CHWP-L2-Cx-2120, DC1-CHWP-L2-Cx-2130, QTS-14781, QTS-1008810, QTS-46801, QTS-46791, QTS-15011, QTS-13941, QTS-18181, QTS-9461, QTS-9481, QTS-9511, QTS-16621, QTS-1008820, QTS-9391, QTS-9421, QTS-1000650, QTS-9451, QTS-45161, QTS-1012060, QTS-7351, QTS-24681, QTS-24741, QTS-25801, QTS-7811, QTS-11051, QTS-12131, QTS-11501, QTS-11061, QTS-12511, QTS-11441, QTS-11071, QTS-11451, QTS-13181, QTS-13311, QTS-11081, QTS-18681, QTS-18691, QTS-14531, QTS-18541, QTS-18191, QTS-18321, QTS-16111, QTS-16381, QTS-16391, QTS-16571, QTS-16581, QTS-17191, QTS-18001, QTS-15501, QTS-15511, QTS-15641, QTS-15651, QTS-16591, QTS-4181, QTS-7231, QTS-7241, QTS-9401, QTS-9431, QTS-5271, QTS-5291, QTS-9491, QTS-5311, QTS-9521, QTS-5331, QTS-17831, QTS-18701, QTS-18711, QTS-18991, QTS-14551, QTS-14321, QTS-15001, QTS-16121, QTS-17601, QTS-17611, QTS-18461, QTS-16891, QTS-18211, QTS-18551, QTS-18221, QTS-18341, QTS-14351, QTS-15331, QTS-16131, QTS-17231, QTS-18021, QTS-15521, QTS-15531, QTS-15671, QTS-6231, QTS-7281, QTS-3051, QTS-9551, QTS-9561, QTS-3061, QTS-9581, QTS-9591, QTS-3071, QTS-9611, QTS-9621, QTS-3081, QTS-9641, QTS-9651, QTS-3091, QTS-9671, QTS-9681, QTS-5431, QTS-38641, QTS-38651, QTS-38671, QTS-38681, QTS-43821, QTS-43831, QTS-43841, QTS-43851, QTS-43861, QTS-43871, QTS-44531, QTS-44561, QTS-45131, QTS-45191, QTS-45231, QTS-45241, QTS-45261, QTS-45271, QTS-45281, QTS-45291, QTS-45471, QTS-46701, QTS-46711, QTS-46721, QTS-46731, QTS - 7790, QTS - 8170, QTS - 8400, QTS - 8910, QTS - 8940, QTS - 8960, QTS - 8980, QTS - 9060, QTS - 9080, QTS - 9090, QTS - 9180, QTS - 9250, QTS - 9260, QTS - 9270, QTS - 9370, QTS - 9400, QTS - 9420, QTS - 9440, QTS - 9460, QTS - 9470, QTS - 9480, QTS - 9500, QTS - 9600, QTS - 9630, QTS - 9650, QTS - 9670, QTS - 9690, QTS - 9700, QTS - 9710, QTS - 9730, QTS - 9850, QTS - 9960, QTS - 9970, QTS - 10060, QTS - 10070, QTS - 10080, QTS - 10090, QTS - 10100, QTS-1003750, QTS-1003800, QTS - 25551, QTS - 25811, QTS - 25821, QTS - 25831, QTS-1008800, QTS-1008860, QTS-1010590, QTS-1010580, QTS-1010600, QTS-1010620, QTS-1010610, QTS-1010630, QTS-1010690, QTS-1010670, QTS-1010680, QTS-1010720, QTS-1010700, QTS-1010710, QTS-1010970, QTS-1010980, QTS-1010990, QTS-1011000, QTS-1011030, QTS-1011040, QTS-1011050, QTS-1011060, QTS-1012290, QTS-1012340, QTS-1012470, QTS - 6550, DC1-DH2100-TAB-1020, DC1-MOD1-L3-CX-2830, DC1-UPSM-L3-CX-2650, DC1-UPSM-L3-CX-2680, DC1-UPSM-L3-CX-2710, DC1-UPSM-L3-CX-2740, DC1-UPSM-L3-CX-2770, DC1-UPSM-L3-CX-2800, DC1-UPSM-L3-CX-2830, DC1-UPSM-L3-CX-2630, DC1-UPSM-L3-CX-2640, DC1-UPSM-L3-CX-2670, DC1-UPSM-L3-CX-2690, DC1-UPSM-L3-CX-2700, DC1-UPSM-L3-CX-2720, DC1-UPSM-L3-CX-2730, DC1-UPSM-L3-CX-2750, DC1-UPSM-L3-CX-2760, DC1-UPSM-L3-CX-2780, DC1-UPSM-L3-CX-2790, DC1-UPSM-L3-CX-2810, DC1-UPSM-L3-CX-2820, DC1-UPSM-L3-CX-2660, QTS-1011990, QTS-5411, QTS-1012120, DC1-XFM-L3-CX-1630, DC1-XFM-L3-CX-1640, DC1-XFM-L3-CX-1650 FF, DC1-XFM-L3-CX-1660, DC1-XFM-L3-CX-1670, DC1-XFM-L3-CX-1680 FF, DC1-XFM-L3-CX-1690, DC1-XFM-L3-CX-1700, DC1-XFM-L3-CX-1710 FF, DC1-XFM-L3-CX-1720, DC1-XFM-L3-CX-1730, DC1-XFM-L3-CX-1740 FF, DC1-XFM-L3-CX-1750, DC1-XFM-L3-CX-1760, DC1-XFM-L3-CX-1770 FF, DC1-XFM-L3-CX-1780, DC1-XFM-L3-CX-1790, DC1-XFM-L3-CX-1800 FF, DC1-XFM-L3-CX-1810, DC1-XFM-L3-CX-1820, DC1-XFM-L3-CX-1830 FF, DC1-SWD-L3-CX-2630, DC1-SWD-L3-CX-2640, DC1-SWD-L3-CX-2650 FF, DC1-SWD-L3-CX-2660, DC1-SWD-L3-CX-2670, DC1-SWD-L3-CX-2680 FF, DC1-SWD-L3-CX-2690, DC1-SWD-L3-CX-2700, DC1-SWD-L3-CX-2710 FF, DC1-SWD-L3-CX-2720, DC1-SWD-L3-CX-2730, DC1-SWD-L3-CX-2740 FF, DC1-SWD-L3-CX-2750, DC1-SWD-L3-CX-2760, DC1-SWD-L3-CX-2770 FF, DC1-SWD-L3-CX-2780, DC1-SWD-L3-CX-2790, DC1-SWD-L3-CX-2800 FF, DC1-SWD-L3-CX-2810, DC1-SWD-L3-CX-2820, DC1-SWD-L3-CX-2830 FF, DC1-MOD1-L3-CX-2630, DC1-MOD1-L3-CX-2640, DC1-MOD1-L3-CX-2650 FF, DC1-MOD1-L3-CX-2660, DC1-MOD1-L3-CX-2670, DC1-MOD1-L3-CX-2680 FF, DC1-MOD1-L3-CX-2690, DC1-MOD1-L3-CX-2700, DC1-MOD1-L3-CX-2710 FF, DC1-MOD1-L3-CX-2720, DC1-MOD1-L3-CX-2730, DC1-MOD1-L3-CX-2740 FF, DC1-MOD1-L3-CX-2750, DC1-MOD1-L3-CX-2760, DC1-MOD1-L3-CX-2770 FF, DC1-MOD1-L3-CX-2780, DC1-MOD1-L3-CX-2790, DC1-MOD1-L3-CX-2800 FF, DC1-MOD1-L3-CX-2810, DC1-MOD1-L3-CX-2820, QTS-1008440, QTS-47301, QTS-47331, QTS-47611, QTS-47621, QTS-47631, QTS-47901, QTS-47921, QTS-48821, QTS-48841, QTS-48851, QTS-1008580, QTS-1008650, QTS-1008600, QTS-1008590, A1050, QTS-30881, QTS-28811, QTS-29401, QTS-31001, QTS-30981, QTS-30851, QTS-30891, QTS-7781, QTS-11001, QTS-11011, QTS-7791, QTS-1012490, QTS-1009750, QTS-48181, QTS-48201, QTS-48211, QTS-48501, QTS-48521, QTS-48531, QTS-1012480, QTS-1009170, DC1-GEN-L2-2210, DC1-GEN-L2-2220, DC1-GEN-L2-2230, DC1-GEN-L2-2240, DC1-GEN-L2-2250, DC1-GEN-L2-2260, DC1-GEN-L2-2270, DC1-GEN-L3-CX-2630, DC1-GEN-L3-CX-2640, DC1-GEN-L3-CX-2650, DC1-GEN-L3-CX-2660, DC1-GEN-L3-CX-2670, DC1-GEN-L3-CX-2680, DC1-GEN-L3-CX-2690, DC1-GEN-L3-CX-2700, DC1-GEN-L3-CX-2710, DC1-GEN-L3-CX-2720, DC1-GEN-L3-CX-2730, DC1-GEN-L3-CX-2740, DC1-GEN-L3-CX-2750, DC1-GEN-L3-CX-2760, DC1-GEN-L3-CX-2770, DC1-GEN-L3-CX-2780, DC1-GEN-L3-CX-2790, DC1-GEN-L3-CX-2800, DC1-GEN-L3-CX-2810, DC1-GEN-L3-CX-2820, DC1-GEN-L3-CX-2830, DC1-COMP-L3-CX-2630, DC1-FAN-L3-CX-2630, DC1-COMP-L3-CX-2640, DC1-FAN-L3-CX-2640, DC1-COMP-L3-CX-2650, DC1-FAN-L3-CX-2650, DC1-COMP-L3-CX-2660, DC1-FAN-L3-CX-2660, DC1-COMP-L3-CX-2670, DC1-FAN-L3-CX-2670, DC1-COMP-L3-CX-2680, DC1-FAN-L3-CX-2680, DC1-COMP-L3-CX-2690, DC1-FAN-L3-CX-2690, DC1-COMP-L3-CX-2700, DC1-FAN-L3-CX-2700, DC1-COMP-L3-CX-2710, DC1-FAN-L3-CX-2710, DC1-COMP-L3-CX-2720, DC1-FAN-L3-CX-2720, DC1-COMP-L3-CX-2730, DC1-FAN-L3-CX-2730, DC1-COMP-L3-CX-2740, DC1-FAN-L3-CX-2740, DC1-COMP-L3-CX-2750, DC1-FAN-L3-CX-2750, DC1-COMP-L3-CX-2760, DC1-FAN-L3-CX-2760, DC1-COMP-L3-CX-2770, DC1-FAN-L3-CX-2770, DC1-COMP-L3-CX-2780, DC1-FAN-L3-CX-2780, DC1-COMP-L3-CX-2790, DC1-FAN-L3-CX-2790, DC1-COMP-L3-CX-2800, DC1-FAN-L3-CX-2800, DC1-COMP-L3-CX-2810, DC1-FAN-L3-CX-2810, DC1-COMP-L3-CX-2820, DC1-FAN-L3-CX-2820, DC1-COMP-L3-CX-2830, DC1-FAN-L3-CX-2830, DC1-GEN-L2-2280, DC1-GEN-L2-2290, DC1-GEN-L2-2300, DC1-GEN-L2-2310, DC1-GEN-L2-2320, DC1-GEN-L2-2330, DC1-GEN-L2-2340, DC1-GEN-L3-CX-2840, DC1-GEN-L3-CX-2850, DC1-GEN-L3-CX-2860, DC1-GEN-L3-CX-2870, DC1-GEN-L3-CX-2880, DC1-GEN-L3-CX-2890, DC1-GEN-L3-CX-2900, DC1-GEN-L3-CX-2910, DC1-GEN-L3-CX-2920, DC1-GEN-L3-CX-2930, DC1-GEN-L3-CX-2940, DC1-GEN-L3-CX-2950, DC1-GEN-L3-CX-2960, DC1-GEN-L3-CX-2970, DC1-GEN-L3-CX-2980, DC1-GEN-L3-CX-2990, DC1-GEN-L3-CX-3000, DC1-GEN-L3-CX-3010, DC1-GEN-L3-CX-3020, DC1-GEN-L3-CX-3030, DC1-GEN-L3-CX-3040, DC1-COMP-L3-CX-2840, DC1-FAN-L3-CX-2840, DC1-COMP-L3-CX-2850, DC1-FAN-L3-CX-2850, DC1-COMP-L3-CX-2860, DC1-FAN-L3-CX-2860, DC1-COMP-L3-CX-2870, DC1-FAN-L3-CX-2870, DC1-COMP-L3-CX-2880, DC1-FAN-L3-CX-2880, DC1-COMP-L3-CX-2890, DC1-FAN-L3-CX-2890, DC1-COMP-L3-CX-2900, DC1-FAN-L3-CX-2900, DC1-COMP-L3-CX-2910, DC1-FAN-L3-CX-2910, DC1-COMP-L3-CX-2920, DC1-FAN-L3-CX-2920, DC1-COMP-L3-CX-2930, DC1-FAN-L3-CX-2930, DC1-COMP-L3-CX-2940, DC1-FAN-L3-CX-2940, DC1-COMP-L3-CX-2950, DC1-FAN-L3-CX-2950, DC1-COMP-L3-CX-2960, DC1-FAN-L3-CX-2960, DC1-COMP-L3-CX-2970, DC1-FAN-L3-CX-2970, DC1-COMP-L3-CX-2980, DC1-FAN-L3-CX-2980, DC1-COMP-L3-CX-2990, DC1-FAN-L3-CX-2990, DC1-COMP-L3-CX-3000, DC1-FAN-L3-CX-3000, DC1-COMP-L3-CX-3010, DC1-FAN-L3-CX-3010, DC1-COMP-L3-CX-3020, DC1-FAN-L3-CX-3020, DC1-COMP-L3-CX-3030, DC1-FAN-L3-CX-3030, DC1-COMP-L3-CX-3040, DC1-FAN-L3-CX-3040, DC1-COMM-1020, QTS-7120, QTS-7130, QTS-1014070 |  |  |  | -56d | 0d | finish on or before 2026-09-01 | LAY | Milestone | IGMP | Exec Summary | BAB |  | Exec Summary | PPC |

Notes:
- QTS-1040: allucent_notes_20251014_152335: Jason Johnston on 2025-10-13 10:10: Forgot to actualize milestone activity

| ID | WBS | Activity | Type | Duration | Start | Finish | Predecessors | Complete | Planned start | Planned finish | Total float | Free float | Constraint | Project Section | Layton Discipline | Baseline | Project Section-1 | Contract | Vendor Responsible Party | Owner Impact Analysis | Allucent CSI Group | D | Location | Weekly Path | Sort |
| --- | --- | --- | --- | --- | --- | --- | --- | --- | --- | --- | --- | --- | --- | --- | --- | --- | --- | --- | --- | --- | --- | --- | --- | --- | --- |
|  | 8 | **TCO (1st Turnover)** |  |  | 2026-08-19 | 2026-10-27 |  |  |  |  |  |  |  |  |  |  |  |  |  |  |  |  |  |  |  |
| QTS-M4030 |  | Power Path A Complete | milestone | 0d | 2026-08-19 | 2026-08-19 | QTS-1000200 FF, QTS-1000230 FF, QTS-1000250 FF |  |  |  | 9d | 65d |  | Exec Summary | Milestone | IGMP | Exec Summary | BAB |  |  |  |  |  |  |  |
| QTS-M4040 |  | Power Path B Complete | milestone | 0d | 2026-08-19 | 2026-08-19 | QTS-1000240 FF, QTS-1000220 FF, QTS-1000250 FF |  |  |  | 9d | 65d |  | Exec Summary | Milestone | IGMP | Exec Summary | BAB |  |  |  |  |  |  |  |
| QTS-1130.A60 |  | TCO Building Ready - FOH (1st and 2nd Floor) | milestone | 0d | 2026-08-31 | 2026-08-31 | QTS-1010350, QTS-1010370, QTS-1011530, QTS-1011520, QTS-1011420, QTS-1011640, QTS-1011630, QTS - 26231, QTS-45421, QTS-1002300, QTS-45431, QTS-45461, QTS-1003990, QTS-1004620, QTS-1009810, QTS-1004710, QTS-1011550, QTS-1011570, QTS-1004730, QTS-1011740, QTS-1001090, QTS-1001080, QTS-1012130, QTS-15361, QTS-44191, QTS-M4330, QTS-1000250, QTS-1012380, QTS-1012430, QTS-1012440, QTS-0100, QTS-1013840, QTS-0250 |  |  |  | -63d | 41d | finish on or before 2026-06-01 | Exec Summary | Milestone | IGMP | Exec Summary | BAB | LAY | Y |  |  |  |  |  |
| QTS-1130.A20 |  | FOH Completion | milestone | 0d | 2026-10-20 | 2026-10-20 | DC1-HSE-TAB-1000, DC1-L4-Cx-1110, DC1-L4-Cx-1100, DC1-L4-Cx-1090, QTS-99130, QTS-1011550, QTS-1000260 |  |  |  | -99d | 5d | finish on or before 2026-06-01 | Exec Summary | Milestone | IGMP | Exec Summary | BAB | LAY | Y |  |  |  |  |  |
| QTS-1130.A |  | FOH/BOH TCO Completion (Day 2) | milestone | 0d | 2026-10-27 | 2026-10-27 | QTS-120250 FF, QTS-120330 FF, QTS-120010 FF, QTS-46891 FF, QTS-102740 FF, QTS-1002930 FF, QTS-29051 FF, QTS-28381 FF, QTS-26841 FF, QTS-28971 FF, QTS-27881 FF, QTS-29221 FF, QTS-28901 FF, QTS-29351 FF, QTS-30301 FF, QTS-26061 FF, QTS-45591 FF, QTS-45601 FF, QTS-1009120 FF, QTS-1009500 FF, QTS-1009510 FF, QTS-1009520 FF, QTS-1009530 FF, QTS-1009540 FF, QTS-1009550 FF, QTS-28301 FF, QTS-1004520 FF, QTS-1011540, QTS-1011570, QTS-1011420, QTS-1011680, QTS-1011740, QTS - 24421, QTS - 24431, QTS-1004050, QTS-1011440, QTS-1130.A20, QTS-1130.A30, QTS-1130.A60, QTS-1001050, QTS-1001060, QTS-0270, QTS-0230 |  |  |  | -39d | 0d |  | Exec Summary | Milestone | IGMP | Exec Summary | BAB | LAY | Y |  |  |  |  |  |
| QTS-1130.A30 |  | BOH Completion | milestone | 0d | 2026-10-27 | 2026-10-27 | DC1-L4-Cx-1140, DC1-L4-Cx-1130, DC1-L4-Cx-1120, QTS-99820 |  |  |  | -39d | 0d |  | Exec Summary | Milestone | IGMP | Exec Summary | BAB | LAY | Y |  |  |  |  |  |
|  | 3 | **DH 1100 Milestones** |  |  | 2025-12-04 | 2026-08-31 |  |  |  |  |  |  |  |  |  |  |  |  |  |  |  |  |  |  |  |
| QTS-1060.2 |  | DH 1100 Gallery 1102 Room Ready To Receive Interior Equipment Level 1 Complete | milestone | 0d | 2025-12-04 A | 2025-12-04 A | QTS-12971 FF, QTS-20771 FF | 100% |  |  |  |  |  | Exec Summary | Milestone | IGMP | Exec Summary | BAB | LAY |  | 01ADMIN |  |  |  |  |
| QTS-1115.B |  | DH 1100 Early Access Ready (Minimum 30 Days Prior to L3 Energization) | milestone | 0d | 2026-03-11 A | 2026-03-11 A | QTS-6311 FF, QTS-21731 FF, QTS-6731 FF | 100% | 2026-03-18 | 2026-03-18 |  |  |  | Exec Summary | Milestone | IGMP | Exec Summary | BAB | LAY |  | 01ADMIN |  |  |  |  |
| QTS-1070.2 |  | DH 1100 DCIM Headroom Level 2 Complete (Early Access) | milestone | 0d | 2026-03-18 A | 2026-03-18 A | QTS-6311 FF, QTS-43451 FF, QTS-1060.2 FF, QTS-21731 FF, QTS-6731 FF, QTS-16501, QTS-26141, QTS - 4800, QTS - 4610, QTS-17071, QTS-15251 | 100% | 2026-05-13 | 2026-05-13 |  |  |  | Exec Summary | Milestone | IGMP | Exec Summary | BAB | LAY |  | 01ADMIN |  |  |  |  |
| QTS-M4140 |  | DH1100 Technical Loop Fill & Flush Complete | milestone | 0d | 2026-05-01 A | 2026-05-01 A | QTS - 4850 FF, QTS - 4660 FF | 100% | 2026-07-15 | 2026-07-15 |  |  |  | Exec Summary | Milestone | IGMP | Exec Summary | BAB |  |  |  |  |  |  |  |
| QTS-M4220 |  | DH1100 Air TAB | milestone | 0d | 2026-05-12 A | 2026-05-12 A | DC1-DH1100-TAB-1010 FF | 100% | 2026-05-26 | 2026-05-26 |  |  |  | Exec Summary | Milestone | IGMP | Exec Summary | BAB |  |  |  |  |  |  |  |
| QTS-1115.B20 |  | DH 1100 Tenant Early Access Complete | milestone | 0d | 2026-06-02 A | 2026-06-02 A | QTS-1011780, QTS-26121, QTS-1011270, QTS - 3800, QTS - 15020, QTS - 24481, QTS - 4850, QTS-1011760, QTS-14651, QTS-1009480, QTS-1005460, QTS-1005480, QTS-1005490, QTS-1005420, QTS-1005440, QTS-1006830, QTS-1005430, QTS-1005410, QTS-1005470, QTS-1005450, QTS-1006840, QTS-1006010, QTS-1006060, QTS-1005980, QTS-1006000, QTS-1006030, QTS-1005970, QTS-1006050, QTS-100550 | 100% | 2026-06-11 | 2026-06-11 |  |  |  | Exec Summary | Milestone | IGMP | Exec Summary | BAB | LAY |  | 01ADMIN |  |  |  |  |
| QTS-1080.2 |  | DH 1100 DCIM Headroom Level 3 Complete (Early Access) | milestone | 0d | 2026-06-29 A | 2026-06-29 A | QTS-1070.2 FF, QTS - 24671 FF, QTS-46501, QTS - 4920, QTS-46541, QTS - 4730, QTS-46551 | 100% | 2026-07-17 | 2026-07-17 |  |  |  | Exec Summary | Milestone | IGMP | Exec Summary | BAB | LAY |  |  |  |  |  |  |
| QTS-M4270 |  | DH1100 Cooling Available | milestone | 0d | 2026-07-13 A | 2026-07-13 A | DC1-CHLR-L3-Cx-2010 FF, DC1-CHLR-L3-Cx-2040 FF, DC1-CHLR-L3-Cx-2070 FF, DC1-CHLR-L3-Cx-2100 FF, DC1-CHLR-L3-Cx-2130 FF, DC1-CHLR-L3-Cx-2160 FF, DC1-CHLR-L3-Cx-2190 FF, DC1-CHWP-L3-Cx-2010 FF, DC1-CHWP-L3-Cx-2040 FF, DC1-CHWP-L3-Cx-2070 FF, DC1-CHWP-L3-Cx-2100 FF, DC1-CHWP-L3-Cx-2130 FF, DC1-CHWP-L3-Cx-2160 FF, DC1-CHWP-L3-Cx-2190 FF, DC1-CRAH-L3-Cx-2010 FF, DC1-CRAH-L3-Cx-2040 FF, DC1-CRAH-L3-Cx-2070 FF, DC1-CRAH-L3-Cx-2100 FF, DC1-CRAH-L3-Cx-2130 FF, DC1-CRAH-L3-Cx-2160 FF, DC1-CRAH-L3-Cx-2190 FF, DC1-CRAH-L3-Cx-2220 FF, DC1-CRAH-L3-Cx-2250 FF, DC1-CRAH-L3-Cx-2280 FF, DC1-CRAH-L3-Cx-2310 FF, DC1-CRAH-L3-Cx-2340 FF, DC1-CRAH-L3-Cx-2370 FF, DC1-CRAH-L3-Cx-2400 FF, DC1-CRAH-L3-Cx-2430 FF, DC1-CRAH-L3-Cx-2460 FF, DC1-CRAH-L3-Cx-2490 FF, DC1-CRAH-L3-Cx-2520 FF, DC1-CRAH-L3-Cx-2550 FF, DC1-CRAH-L3-Cx-2580 FF, DC1-CRAH-L3-Cx-2610 FF, DC1-CRAH-L3-Cx-2640 FF, DC1-CRAH-L3-Cx-2670 FF, DC1-CRAH-L3-Cx-2700 FF, DC1-CRAH-L3-Cx-2730 FF, DC1-CRAH-L3-Cx-2760 FF, DC1-CRAH-L3-Cx-2790 FF, DC1-CRAH-L3-Cx-2820 FF, DC1-CRAH-L3-Cx-2850 FF, DC1-CRAH-L3-Cx-2880 FF, DC1-CRAH-L3-Cx-2910 FF, DC1-CRAH-L3-Cx-2940 FF | 100% | 2026-07-16 | 2026-07-16 |  |  |  | Exec Summary | Milestone | IGMP | Exec Summary | BAB |  |  |  |  |  |  |  |
| QTS-1110.2 |  | DH 1100 CX-L3 Complete | milestone | 0d | 2026-07-16 A | 2026-07-16 A | DC1-COD-L3-CX-2010 FF, DC1-COD-L3-CX-2025 FF, DC1-COD-L3-CX-2040 FF, DC1-COD-L3-CX-2055 FF, DC1-COD-L3-CX-2070 FF, DC1-COD-L3-CX-2085 FF, DC1-COD-L3-CX-2100 FF, DC1-COD-L3-CX-2115 FF, DC1-COD-L3-CX-2130 FF, DC1-COD-L3-CX-2145 FF, DC1-COD-L3-CX-2160 FF, DC1-COD-L3-CX-2175 FF, DC1-COD-L3-CX-2190 FF, DC1-COD-L3-CX-2205 FF, DC1-COD-L3-CX-2220 FF, DC1-COD-L3-CX-2235 FF, DC1-COD-L3-CX-2250 FF, DC1-COD-L3-CX-2265 FF, DC1-COD-L3-CX-2280 FF, DC1-COD-L3-CX-2295 FF, DC1-COD-L3-CX-2310 FF, DC1-COD-L3-CX-2325 FF, DC1-COD-L3-CX-2340 FF, DC1-COD-L3-CX-2355 FF, DC1-COD-L3-CX-2370 FF, DC1-COD-L3-CX-2385 FF, DC1-COD-L3-CX-2400 FF, DC1-COD-L3-CX-2415 FF, DC1-COD-L3-CX-2430 FF, DC1-COD-L3-CX-2445 FF, DC1-COD-L3-CX-2460 FF, DC1-COD-L3-CX-2475 FF, DC1-COD-L3-CX-2490 FF, DC1-COD-L3-CX-2505 FF, DC1-COD-L3-CX-2520 FF, DC1-COD-L3-CX-2535 FF, DC1-MOD2-L3-Cx-2020 FF, DC1-MOD2-L3-Cx-2050 FF, DC1-MOD2-L3-Cx-2080 FF, DC1-MOD2-L3-Cx-2110 FF, DC1-MOD2-L3-Cx-2140 FF, DC1-MOD2-L3-Cx-2170 FF, DC1-MOD2-L3-Cx-2200 FF, DC1-MOD3-L3-Cx-2020 FF, DC1-MOD3-L3-Cx-2050 FF, DC1-MOD3-L3-Cx-2080 FF, DC1-MOD3-L3-Cx-2110 FF, DC1-MOD3-L3-Cx-2140 FF, DC1-MOD3-L3-Cx-2170 FF, DC1-MOD3-L3-Cx-2200 FF, DC1-RPP-L3-CX-2085 FF, DC1-RPP-L3-CX-2175 FF, DC1-RPP-L3-CX-2355 FF, DC1-RPP-L3-CX-2445 FF, DC1-RPP-L3-CX-2535 FF, DC1-CHLR-L3-Cx-2020 FF, DC1-CHLR-L3-Cx-2050 FF, DC1-CHLR-L3-Cx-2080 FF, DC1-CHLR-L3-Cx-2110 FF, DC1-CHLR-L3-Cx-2140 FF, DC1-CHLR-L3-Cx-2170 FF, DC1-CHLR-L3-Cx-2200 FF, DC1-CHWP-L3-Cx-2020 FF, DC1-CHWP-L3-Cx-2050 FF, DC1-CHWP-L3-Cx-2080 FF, DC1-CHWP-L3-Cx-2110 FF, DC1-CHWP-L3-Cx-2140 FF, DC1-CHWP-L3-Cx-2170 FF, DC1-CHWP-L3-Cx-2200 FF, DC1-CRAH-L3-Cx-2020, DC1-CRAH-L3-Cx-2050, DC1-CRAH-L3-Cx-2080, DC1-CRAH-L3-Cx-2110, DC1-CRAH-L3-Cx-2140, DC1-CRAH-L3-Cx-2170, DC1-CRAH-L3-Cx-2200, DC1-CRAH-L3-Cx-2230, DC1-CRAH-L3-Cx-2260, DC1-CRAH-L3-Cx-2290, DC1-CRAH-L3-Cx-2320, DC1-CRAH-L3-Cx-2350, DC1-CRAH-L3-Cx-2380, DC1-CRAH-L3-Cx-2410, DC1-CRAH-L3-Cx-2440, DC1-CRAH-L3-Cx-2470, DC1-CRAH-L3-Cx-2500, DC1-CRAH-L3-Cx-2530, DC1-CRAH-L3-Cx-2560, DC1-CRAH-L3-Cx-2590, DC1-CRAH-L3-Cx-2620, DC1-CRAH-L3-Cx-2650, DC1-CRAH-L3-Cx-2680, DC1-CRAH-L3-Cx-2710, DC1-CRAH-L3-Cx-2740, DC1-CRAH-L3-Cx-2770, DC1-CRAH-L3-Cx-2800, DC1-CRAH-L3-Cx-2830, DC1-CRAH-L3-Cx-2860, DC1-CRAH-L3-Cx-2890, DC1-CRAH-L3-Cx-2920, DC1-CRAH-L3-Cx-2950, DC1-DOAS-L3-Cx-2020, DC1-DOAS-L3-Cx-2050, DC1-RPP-L3-CX-2190, DC1-RPP-L3-CX-2205, DC1-RPP-L3-CX-2220, DC1-RPP-L3-CX-2235, DC1-RPP-L3-CX-2250, DC1-RPP-L3-CX-2265, DC1-RPP-L3-CX-2280, DC1-RPP-L3-CX-2295, DC1-RPP-L3-CX-2310, DC1-RPP-L3-CX-2325, DC1-RPP-L3-CX-2340, DC1-RPP-L3-CX-2370, DC1-RPP-L3-CX-2385, DC1-RPP-L3-CX-2400, DC1-RPP-L3-CX-2415, DC1-RPP-L3-CX-2430, DC1-RPP-L3-CX-2460, DC1-RPP-L3-CX-2475, DC1-RPP-L3-CX-2490, DC1-RPP-L3-CX-2505, DC1-RPP-L3-CX-2520, DC1-SWD-L3-CX-2010, DC1-UPSM-L3-CX-2010, DC1-UPSM-L3-CX-2040, DC1-UPSM-L3-CX-2070, DC1-UPSM-L3-CX-2100, DC1-UPSM-L3-CX-2130, DC1-UPSM-L3-CX-2160, DC1-UPSM-L3-CX-2190 | 100% | 2026-07-20 | 2026-07-20 |  |  |  | Exec Summary | Milestone | IGMP | Exec Summary | BAB |  |  |  | DH1100 |  |  |  |
| QTS-1120.2 |  | DH 1100 CX-L4 & IST Complete | milestone | 0d | 2026-08-18 A | 2026-08-18 A | QTS-1110.2 FF, QTS-39161 FF, QTS-1011370, QTS-0660, QTS-1004740, QTS-1011280, QTS-1011290 | 100% | 2026-08-12 | 2026-08-12 |  |  | finish on or before 2026-05-01 | Exec Summary | Milestone | IGMP | Exec Summary | BAB |  | Y |  | DH1100 | DH1100 | Y |  |
| QTS-1115.B10 |  | DH 1100 TFO Scope Completion (6/1/26) | milestone | 0d | 2026-08-19 | 2026-08-19 | QTS-1012240, QTS - 3810, DC1-CRAH-L2-3610, QTS - 10220, QTS-1013770, QTS-1013500, QTS-0670 |  |  |  | -55d | 66d | finish on or before 2026-06-01 |  | Milestone |  |  | TFO | LAY | Y |  | DH1100 |  |  |  |
| QTS-1130.B |  | DH 1100 Substantial Completion / TCO (05/01/26) | milestone | 0d | 2026-08-31 | 2026-08-31 | QTS-46851 FF, QTS-1045 FF, QTS-1291 FF, QTS-1011870, QTS-1115.B20, QTS-4431, QTS-0490, QTS-5670, QTS-5660, QTS-0720, QTS-0540, QTS-1012500, DC1-UPSM-L3-CX-2020, DC1-UPSM-L3-CX-2050, DC1-UPSM-L3-CX-2080, DC1-UPSM-L3-CX-2140, DC1-L4-Cx-1170, QTS-1012210, DC1-UPSM-L3-CX-2170, DC1-UPSM-L3-CX-2200, QTS-1012230, QTS-0530, QTS-0710, QTS-0580, QTS-1120.2, QTS-1014500, QTS-1014510, QTS-1014520, QTS-1014530, QTS-1014540, QTS-1014550, QTS-1014560 |  |  |  | -84d | 35d | finish on or before 2026-05-01 | Exec Summary | Milestone | IGMP | Exec Summary | BAB | LAY | Y |  | DH1100 |  | Y |  |
|  | 2 | **DH 2100 Milestones** |  |  | 2025-11-05 | 2026-09-11 |  |  |  |  |  |  |  |  |  |  |  |  |  |  |  |  |  |  |  |
| QTS-1060.1 |  | DH 2100 Gallery 2102 Room Ready To Receive Interior Equipment Level 1 Complete | milestone | 0d | 2025-11-05 A | 2025-11-05 A | QTS-23051 FF | 100% |  |  |  |  |  | Exec Summary | Milestone | IGMP | Exec Summary | BAB | LAY |  | 01ADMIN |  |  |  |  |
| QTS-1101 |  | DH 2100 Energize DC1-MVG-A1 | milestone | 0d | 2026-02-27 A | 2026-02-27 A | QTS-1015 FF | 100% | 2026-03-04 | 2026-03-04 |  |  |  | Exec Summary | Milestone | IGMP | Exec Summary | BAB | LAY |  |  |  |  |  |  |
| QTS-1100 |  | DH 2100 Energized MVG to Building SWR | milestone | 0d | 2026-03-11 A | 2026-03-11 A | QTS-1000710 FF, QTS-1101 FF, QTS-M1000 FF | 100% | 2026-03-18 | 2026-03-18 |  |  |  | Exec Summary | Milestone | IGMP | Exec Summary | BAB | LAY |  |  |  |  |  | x |
| QTS-1115.A |  | DH 2100 Early Access Ready (Minimum 30 Days Prior to L3 Energization) | milestone | 0d | 2026-03-11 A | 2026-03-11 A | QTS-28041 FF, QTS-28851 FF, QTS-38561 FF, QTS-39221 FF, QTS-39281 FF | 100% | 2026-03-18 | 2026-03-18 |  |  |  | Exec Summary | Milestone | IGMP | Exec Summary | BAB | LAY |  | 01ADMIN |  |  |  |  |
| QTS-1070.1 |  | DH 2100 DCIM Headroom Level 2 Complete (Early Access) | milestone | 0d | 2026-05-21 A | 2026-05-21 A | QTS-28041 FF, QTS-28851 FF, QTS-38561 FF, QTS-43481 FF, QTS-1060.1 FF, QTS - 1340, QTS - 3400, QTS-24711, QTS-24371 | 100% | 2026-06-03 | 2026-06-03 |  |  |  | Exec Summary | Milestone | IGMP | Exec Summary | BAB | LAY |  | 01ADMIN |  |  |  | x |
| QTS-1080.1 |  | DH 2100 DCIM Headroom Level 3 Complete (Early Access) | milestone | 0d | 2026-05-21 A | 2026-05-21 A | QTS-13661 FF, QTS-1070.1, QTS-45671, QTS - 3270 | 100% | 2026-06-03 | 2026-06-03 |  |  |  | Exec Summary | Milestone | IGMP | Exec Summary | BAB | LAY |  |  |  |  |  |  |
| QTS-M4080 |  | DH2100 Cooling Available | milestone | 0d | 2026-07-20 A | 2026-07-20 A | DC1-CHLR-L3-Cx-1010 FF, DC1-CHLR-L3-Cx-1040 FF, DC1-CHLR-L3-Cx-1070 FF, DC1-CHLR-L3-Cx-1100 FF, DC1-CHLR-L3-Cx-1130 FF, DC1-CHLR-L3-Cx-1160 FF, DC1-CHLR-L3-Cx-1190 FF, DC1-CHWP-L3-Cx-1010 FF, DC1-CHWP-L3-Cx-1040 FF, DC1-CHWP-L3-Cx-1070 FF, DC1-CHWP-L3-Cx-1100 FF, DC1-CHWP-L3-Cx-1130 FF, DC1-CHWP-L3-Cx-1160 FF, DC1-CHWP-L3-Cx-1190 FF, DC1-CRAH-L3-Cx-1010 FF, DC1-CRAH-L3-Cx-1040 FF, DC1-CRAH-L3-Cx-1070 FF, DC1-CRAH-L3-Cx-1100 FF, DC1-CRAH-L3-Cx-1130 FF, DC1-CRAH-L3-Cx-1160 FF, DC1-CRAH-L3-Cx-1190 FF, DC1-CRAH-L3-Cx-1220 FF, DC1-CRAH-L3-Cx-1250 FF, DC1-CRAH-L3-Cx-1280 FF, DC1-CRAH-L3-Cx-1310 FF, DC1-CRAH-L3-Cx-1340 FF, DC1-CRAH-L3-Cx-1370 FF, DC1-CRAH-L3-Cx-1400 FF, DC1-CRAH-L3-Cx-1430 FF, DC1-CRAH-L3-Cx-1460 FF, DC1-CRAH-L3-Cx-1490 FF, DC1-CRAH-L3-Cx-1520 FF, DC1-CRAH-L3-Cx-1550 FF, DC1-CRAH-L3-Cx-1580 FF, DC1-CRAH-L3-Cx-1610 FF, DC1-CRAH-L3-Cx-1640 FF, DC1-CRAH-L3-Cx-1670 FF, DC1-CRAH-L3-Cx-1700 FF, DC1-CRAH-L3-Cx-1730 FF, DC1-CRAH-L3-Cx-1760 FF, DC1-CRAH-L3-Cx-1790 FF, DC1-CRAH-L3-Cx-1820 FF, DC1-CRAH-L3-Cx-1850 FF, DC1-CRAH-L3-Cx-1880 FF, DC1-CRAH-L3-Cx-1910 FF, DC1-CRAH-L3-Cx-1940 FF | 100% | 2026-08-12 | 2026-08-12 |  |  |  | Exec Summary | Milestone | IGMP | Exec Summary | BAB |  |  |  |  |  |  |  |
| QTS-M4060 |  | DH2100 Technical Loop Fill & Flush Complete | milestone | 0d | 2026-07-25 A | 2026-07-25 A | QTS - 1210 FF, QTS - 3650 FF, QTS - 3520 FF, QTS - 3380 FF, QTS-0880 | 100% | 2026-07-29 | 2026-07-29 |  |  |  | Exec Summary | Milestone | IGMP | Exec Summary | BAB |  |  |  |  |  |  |  |
| QTS-M4070 |  | DH2100 Air Tab | milestone | 0d | 2026-07-25 A | 2026-07-25 A | QTS-0980 | 100% | 2026-07-29 | 2026-07-29 |  |  |  | Exec Summary | Milestone | IGMP | Exec Summary | BAB |  |  |  |  |  |  |  |
| QTS-1110.1 |  | DH 2100 CX-L3 Complete | milestone | 0d | 2026-08-24 | 2026-08-24 | QTS-1101 FF, DC1-COD-L3-CX-1010 FF, DC1-COD-L3-CX-1025 FF, DC1-COD-L3-CX-1040 FF, DC1-COD-L3-CX-1055 FF, DC1-COD-L3-CX-1070 FF, DC1-COD-L3-CX-1085 FF, DC1-COD-L3-CX-1100 FF, DC1-COD-L3-CX-1115 FF, DC1-COD-L3-CX-1130 FF, DC1-COD-L3-CX-1145 FF, DC1-COD-L3-CX-1160 FF, DC1-COD-L3-CX-1175 FF, DC1-COD-L3-CX-1190 FF, DC1-COD-L3-CX-1205 FF, DC1-COD-L3-CX-1220 FF, DC1-COD-L3-CX-1235 FF, DC1-COD-L3-CX-1250 FF, DC1-COD-L3-CX-1265 FF, DC1-COD-L3-CX-1280 FF, DC1-COD-L3-CX-1295 FF, DC1-COD-L3-CX-1310 FF, DC1-COD-L3-CX-1325 FF, DC1-COD-L3-CX-1340 FF, DC1-COD-L3-CX-1355 FF, DC1-COD-L3-CX-1370 FF, DC1-COD-L3-CX-1385 FF, DC1-COD-L3-CX-1400 FF, DC1-COD-L3-CX-1415 FF, DC1-COD-L3-CX-1430 FF, DC1-COD-L3-CX-1445 FF, DC1-COD-L3-CX-1460 FF, DC1-COD-L3-CX-1475 FF, DC1-COD-L3-CX-1490 FF, DC1-COD-L3-CX-1505 FF, DC1-COD-L3-CX-1520 FF, DC1-COD-L3-CX-1535 FF, DC1-BUS-L3-CX-1020 FF, DC1-RPP-L3-CX-1085 FF, DC1-RPP-L3-CX-1175 FF, DC1-RPP-L3-CX-1265 FF, DC1-RPP-L3-CX-1355 FF, DC1-RPP-L3-CX-1445 FF, DC1-RPP-L3-CX-1535 FF, DC1-MOD2-L3-Cx-1170 FF, DC1-MOD2-L3-Cx-1200 FF, DC1-CHLR-L3-Cx-1020 FF, DC1-CHLR-L3-Cx-1050 FF, DC1-CHLR-L3-Cx-1080 FF, DC1-CHLR-L3-Cx-1110 FF, DC1-CHLR-L3-Cx-1140 FF, DC1-CHLR-L3-Cx-1170 FF, DC1-CHLR-L3-Cx-1200 FF, DC1-CHWP-L3-Cx-1020 FF, DC1-CHWP-L3-Cx-1050 FF, DC1-CHWP-L3-Cx-1080 FF, DC1-CHWP-L3-Cx-1110 FF, DC1-CHWP-L3-Cx-1140 FF, DC1-CHWP-L3-Cx-1170 FF, DC1-CHWP-L3-Cx-1200 FF, DC1-DOAS-L3-Cx-1010, DC1-DOAS-L3-Cx-1040, QTS-1013490, DC1-DH2100-TAB-1000, DC1-DH2100-TAB-1030 |  |  |  | -59d | 13d |  | Exec Summary | Milestone | IGMP | Exec Summary | BAB |  |  |  |  |  |  |  |
| QTS-1120.1 |  | DH 2100 CX-L4 & IST Complete | milestone | 0d | 2026-09-11 | 2026-09-11 | QTS-1110.1 FF, QTS-1004890 FF, QTS-1009390, QTS-1110, QTS-1004740 |  |  |  | -72d | 0d |  | Exec Summary | Milestone | IGMP | Exec Summary | BAB |  | Y |  | DH2100 |  | Y |  |
| QTS-1120.11 |  | DH 2100 Substantial Completion / TCO (05/01/26) | milestone | 0d | 2026-09-11 | 2026-09-11 | QTS-1281 FF, DC1-HSE-TAB-1010 FF, QTS-1001660 FF, QTS-18851 FF, QTS-6050, QTS-0960, QTS-5710, QTS-5700, QTS-1210, QTS-1000540, QTS-0820, QTS-44381, DC1-XFM-L3-CX-1020, DC1-XFM-L3-CX-1050, DC1-XFM-L3-CX-1080, DC1-XFM-L3-CX-1110, DC1-XFM-L3-CX-1140, DC1-XFM-L3-CX-1170, DC1-XFM-L3-CX-1200, DC1-UPSM-L3-CX-1020, DC1-UPSM-L3-CX-1050, DC1-UPSM-L3-CX-1080, DC1-UPSM-L3-CX-1110, DC1-UPSM-L3-CX-1140, DC1-UPSM-L3-CX-1170, DC1-UPSM-L3-CX-1200, DC1-RPP-L3-CX-1010, DC1-RPP-L3-CX-1025, DC1-RPP-L3-CX-1040, DC1-RPP-L3-CX-1055, DC1-RPP-L3-CX-1070, DC1-RPP-L3-CX-1100, DC1-RPP-L3-CX-1115, DC1-RPP-L3-CX-1130, DC1-RPP-L3-CX-1145, DC1-RPP-L3-CX-1160, DC1-RPP-L3-CX-1190, DC1-RPP-L3-CX-1205, DC1-RPP-L3-CX-1220, DC1-RPP-L3-CX-1235, DC1-RPP-L3-CX-1250, DC1-RPP-L3-CX-1280, DC1-RPP-L3-CX-1295, DC1-RPP-L3-CX-1310, DC1-RPP-L3-CX-1325, DC1-RPP-L3-CX-1340, DC1-RPP-L3-CX-1370, DC1-RPP-L3-CX-1385, DC1-RPP-L3-CX-1400, DC1-RPP-L3-CX-1415, DC1-RPP-L3-CX-1430, DC1-RPP-L3-CX-1460, DC1-RPP-L3-CX-1475, DC1-RPP-L3-CX-1490, DC1-RPP-L3-CX-1505, DC1-RPP-L3-CX-1520, DC1-MOD2-L3-Cx-1020, DC1-MOD2-L3-Cx-1050, DC1-MOD2-L3-Cx-1080, DC1-MOD2-L3-Cx-1110, DC1-MOD2-L3-Cx-1140, DC1-MOD3-L3-Cx-1020, DC1-MOD3-L3-Cx-1050, DC1-MOD3-L3-Cx-1080, DC1-MOD3-L3-Cx-1110, DC1-MOD3-L3-Cx-1140, DC1-MOD3-L3-Cx-1170, DC1-MOD3-L3-Cx-1200, DC1-CRAH-L3-Cx-1020, DC1-CRAH-L3-Cx-1860, DC1-CRAH-L3-Cx-1890, DC1-CRAH-L3-Cx-1920, DC1-CRAH-L3-Cx-1950, DC1-DOAS-L3-Cx-1020, DC1-DOAS-L3-Cx-1050, QTS-30271, QTS-0950, QTS-0870, QTS-0850, QTS-0810, QTS-1200, QTS-5720, QTS-1120.1 |  |  |  | -72d | 49d | finish on or before 2026-06-01 |  | Milestone |  |  | BAB |  | Y |  | DH2100 |  | Y |  |
| QTS-1130.A10 |  | DH 2100 TFO Scope Completion (6/1/26) | milestone | 0d | 2026-09-11 | 2026-09-11 | QTS-1012240, QTS-1120, QTS - 10220, QTS - 3640, QTS - 3530, QTS - 3240, QTS - 1300 |  |  |  | -72d | 49d | finish on or before 2026-06-01 |  | Milestone |  |  | TFO | LAY |  |  | DH2100 |  |  |  |

Notes:
- QTS-1115.B: allucent_notes_20251216_165335: Jason Johnston on 2025-12-16 15:44: Need to re-evaluate what this milestone is / allucent_notes_20251230_164549: Jason Johnston on 2025-12-16 15:44: Need to re-evaluate what this milestone is / Jason Johnston on 2025-12-30 16:45: No update / allucent_notes: 2025-12-16 15:44 - User: Jason Johnston - Date Added: 2025-12-16 15:44 - Note: Need to re-evaluate what this milestone is / 2025-12-30 16:45 - User: Jason Johnston - Date Added: 2025-12-30 16:45 - Note: No update
- QTS-1115.B20: allucent_notes_20251216_165335: Jason Johnston on 2025-12-16 15:44: Need to re-evaluate what this milestone is / allucent_notes_20251230_164549: Jason Johnston on 2025-12-16 15:44: Need to re-evaluate what this milestone is / Jason Johnston on 2025-12-30 16:45: No update / allucent_notes: 2025-12-16 15:44 - User: Jason Johnston - Date Added: 2025-12-16 15:44 - Note: Need to re-evaluate what this milestone is / 2025-12-30 16:45 - User: Jason Johnston - Date Added: 2025-12-30 16:45 - Note: No update
- QTS-1060.1: allucent_notes_20251118_192630: Jason Johnston on 2025-11-04 16:11: Update needed - Need to confirm with schedule this is actually complete. / allucent_notes_20251111_182405: Jason Johnston on 2025-11-04 16:11: Update needed - Need to confirm with schedule this is actually complete. / allucent_notes_20251104_160200: Jason Johnston on 2025-11-04 16:11: Update needed - Need to confirm with schedule this is actually complete. / allucent_notes: 2025-11-04 16:11 - User: Jason Johnston - Date Added: 2025-11-04 16:11 - Note: Update needed - Need to confirm with schedule this is actually complete.
- QTS-1115.A: allucent_notes_20251216_165335: Jason Johnston on 2025-12-16 15:44: Need to re-evaluate what this milestone is / allucent_notes_20251230_164549: Jason Johnston on 2025-12-16 15:44: Need to re-evaluate what this milestone is / Jason Johnston on 2025-12-30 16:44: No update / allucent_notes: 2025-12-16 15:44 - User: Jason Johnston - Date Added: 2025-12-16 15:44 - Note: Need to re-evaluate what this milestone is / 2025-12-30 16:44 - User: Jason Johnston - Date Added: 2025-12-30 16:44 - Note: No update

| ID | WBS | Activity | Type | Duration | Start | Finish | Predecessors | Complete | Planned start | Planned finish | Total float | Free float | Constraint | Allucent CSI Group | Project Section | Layton Discipline | Baseline | Project Section-1 | Contract | Vendor Responsible Party | Weekly Path | D |
| --- | --- | --- | --- | --- | --- | --- | --- | --- | --- | --- | --- | --- | --- | --- | --- | --- | --- | --- | --- | --- | --- | --- |
|  | 4 | **DH 2200 Milestones** |  |  | 2026-02-13 | 2026-10-19 |  |  |  |  |  |  |  |  |  |  |  |  |  |  |  |  |
| QTS-1060.3 |  | DH 2200 Gallery 2202 Room Ready To Receive Interior Equipment Level 1 Complete | milestone | 0d | 2026-02-13 A | 2026-02-13 A | QTS-13001 FF, QTS-20771 FF | 100% | 2026-06-15 | 2026-06-15 |  |  |  | 01ADMIN | Exec Summary | Milestone | IGMP | Exec Summary | BAB |  |  |  |
| QTS-1070.3 |  | DH 2200 DCIM Headroom Level 2 Complete (Early Access) | milestone | 0d | 2026-07-01 A | 2026-07-01 A | QTS-38591 FF, QTS-1060.3 FF, QTS-16531, QTS-17111, QTS-15271, QTS - 4800, QTS - 4610 | 100% | 2026-07-15 | 2026-07-15 |  |  |  | 01ADMIN | Exec Summary | Milestone | IGMP | Exec Summary | BAB |  |  |  |
| QTS-1080.3 |  | DH 2200 DCIM Headroom Level 3 Complete (Early Access) | milestone | 0d | 2026-07-01 A | 2026-07-01 A | QTS-1070.3 FF, QTS-1080.2 | 100% | 2026-07-27 | 2026-07-27 |  |  |  |  | Exec Summary | Milestone | IGMP | Exec Summary | BAB |  |  |  |
| QTS-M4250 |  | DH2200 Cooling Available | milestone | 0d | 2026-08-26 | 2026-08-26 | QTS-1013530, QTS-1013520 |  |  |  | 4d | 60d |  |  | Exec Summary | Milestone | IGMP | Exec Summary | BAB |  |  |  |
| QTS-M4200 |  | DH2200 Air Tab | milestone | 0d | 2026-09-08 | 2026-09-08 | QTS-2750 |  |  |  | -3d | 53d |  |  | Exec Summary | Milestone | IGMP | Exec Summary | BAB |  |  |  |
| QTS-M4110 |  | DH2200 Technical Loop Fill & Flush Complete | milestone | 0d | 2026-09-15 | 2026-09-15 | QTS-5910 FF |  |  |  | -9d | 47d |  |  | Exec Summary | Milestone | IGMP | Exec Summary | BAB |  |  |  |
| QTS-1110.3 |  | DH 2200 CX-L3 Complete | milestone | 0d | 2026-09-24 | 2026-09-24 | QTS-1115.C FF, QTS-1013460, QTS-1013100, QTS-1012890, QTS-1012880 |  |  |  | -81d | 6d |  |  | Exec Summary | Milestone | IGMP | Exec Summary | BAB | LAY |  |  |
| QTS-1115.C |  | DH 2200 Early Access Ready (Level 1) | milestone | 0d | 2026-09-24 | 2026-09-24 | QTS-1060.3 FF, QTS-2030 |  |  |  | -81d | 0d |  | 01ADMIN | Exec Summary | Milestone | IGMP | Exec Summary | BAB |  |  |  |
| QTS-1120.3 |  | DH 2200 CX-L4 & IST Complete | milestone | 0d | 2026-10-05 | 2026-10-05 | QTS-39341 FF, QTS-1110.3 FF, QTS-2780, QTS-1010500, QTS-1010520, QTS-1011020, QTS-1014400 |  |  |  | -87d | 0d |  |  | Exec Summary | Milestone | IGMP | Exec Summary | BAB | LAY | Y | DH2200 |
| QTS-1130.C |  | DH 2200 Substantial Completion / TCO (06/01/26) | milestone | 0d | 2026-10-12 | 2026-10-12 | QTS-1301 FF, QTS-1120.3 FF, QTS-44011 FF, QTS-1001780 FF, QTS-1008740, QTS-2040, QTS-2700, QTS-5930, QTS-2920, QTS-2310, DC1-COMP-L3-CX-2230, DC1-FAN-L3-CX-2230, DC1-COMP-L3-CX-2260, DC1-FAN-L3-CX-2260, DC1-COMP-L3-CX-2290, DC1-FAN-L3-CX-2290, DC1-COMP-L3-CX-2320, DC1-FAN-L3-CX-2320, DC1-COMP-L3-CX-2350, DC1-FAN-L3-CX-2350, DC1-COMP-L3-CX-2380, DC1-FAN-L3-CX-2380, DC1-COMP-L3-CX-2410, DC1-FAN-L3-CX-2410, DC1-GEN-L3-CX-2230, DC1-GEN-L3-CX-2260, DC1-GEN-L3-CX-2290, DC1-GEN-L3-CX-2320, DC1-GEN-L3-CX-2350, DC1-GEN-L3-CX-2380, DC1-GEN-L3-CX-2410, QTS-1005250, QTS-4441, QTS-1014330 |  |  |  | -93d | 0d | finish on or before 2026-06-01 |  | Exec Summary | Milestone | IGMP | Exec Summary | BAB | LAY | Y | DH2200 |
| QTS-1060.13 |  | DH 2200 TFO Scope Completion (7/1/26) | milestone | 0d | 2026-10-19 | 2026-10-19 | QTS-1012240, QTS-2790, QTS - 10220 |  |  |  | -75d | 24d | finish on or before 2026-07-01 |  |  | Milestone |  |  | TFO | LAY |  | DH2200 |
|  | 5 | **DH 1200 Milestones** |  |  | 2026-01-16 | 2026-10-26 |  |  |  |  |  |  |  |  |  |  |  |  |  |  |  |  |
| QTS-1060.4 |  | DH 1200 Gallery 1202 Room Ready To Receive Interior Equipment Level 1 Complete | milestone | 0d | 2026-01-16 A | 2026-01-16 A | QTS-13031 FF, QTS-20771 FF | 100% | 2026-06-03 | 2026-06-03 |  |  |  | 01ADMIN | Exec Summary | Milestone | IGMP | Exec Summary | BAB |  |  |  |
| QTS-1070.4 |  | DH 1200 DCIM Headroom Level 2 Complete (Early Access) | milestone | 0d | 2026-06-20 A | 2026-06-20 A | QTS-1060.4 FF, QTS-38621 FF, QTS-26181, QTS-16561, QTS-17151, QTS-15291, QTS - 7700 | 100% | 2026-07-01 | 2026-07-01 |  |  |  |  | Exec Summary | Milestone | IGMP | Exec Summary | BAB |  |  |  |
| QTS-1080.4 |  | DH 1200 DCIM Headroom Level 3 Complete (Early Access) | milestone | 0d | 2026-07-08 A | 2026-07-08 A | QTS-1070.4 FF | 100% | 2026-07-27 | 2026-07-27 |  |  |  |  | Exec Summary | Milestone | IGMP | Exec Summary | BAB | LAY |  |  |
| QTS-M4280 |  | DH1200 Cooling Available | milestone | 0d | 2026-08-28 | 2026-08-28 | QTS-1013540, QTS-1013550 |  |  |  | 2d | 58d |  |  | Exec Summary | Milestone | IGMP | Exec Summary | BAB |  |  |  |
| QTS-M4230 |  | DH1200 Air TAB | milestone | 0d | 2026-09-03 | 2026-09-03 | QTS-1750 |  |  |  | -2d | 54d |  |  | Exec Summary | Milestone | IGMP | Exec Summary | BAB |  |  |  |
| QTS-M4150 |  | DH1200 Technical Loop Fill & Flush Complete | milestone | 0d | 2026-09-08 | 2026-09-08 | QTS-1441 |  |  |  | -3d | 53d |  |  | Exec Summary | Milestone | IGMP | Exec Summary | BAB |  |  |  |
| QTS-1110.4 |  | DH 1200 CX-L3 Complete | milestone | 0d | 2026-09-24 | 2026-09-24 | QTS-1115.D FF, QTS-1013540, QTS-1013470, QTS-7290, QTS-1013230 |  |  |  | -81d | 1d |  |  | Exec Summary | Milestone | IGMP | Exec Summary | BAB | LAY |  |  |
| QTS-1115.D |  | DH 1200 Early Access Ready (Level 1) | milestone | 0d | 2026-09-24 | 2026-09-24 | QTS-1060.4 FF, QTS-1115.C, QTS-1185 |  |  |  | -81d | 0d |  | 01ADMIN | Exec Summary | Milestone | IGMP | Exec Summary | BAB |  |  |  |
| QTS-1120.4 |  | DH 1200 CX-L4 & IST Complete | milestone | 0d | 2026-09-28 | 2026-09-28 | QTS-39401 FF, QTS-1110.4 FF, QTS-1780, QTS-1004760, QTS-1010920, QTS-1010940, QTS-17151 |  |  |  | -82d | 21d |  |  | Exec Summary | Milestone | IGMP | Exec Summary | BAB | LAY | Y | DH1200 |
| QTS-1120.14 |  | DH 1200 TFO Scope Completion (7/1/26) | milestone | 0d | 2026-10-12 | 2026-10-12 | QTS-1012240, QTS-1790, QTS - 10220, QTS - 7650, QTS - 8110, QTS - 8340 |  |  |  | -70d | 29d | finish on or before 2026-07-01 |  |  | Milestone |  |  | TFO | LAY |  | DH1200 |
| QTS-1130.D |  | DH 1200 Substantial Completion / TCO (06/01/26) | milestone | 0d | 2026-10-26 | 2026-10-26 | QTS-1311 FF, QTS-1120.4 FF, QTS-46651, QTS-1300, QTS-1705, QTS-1470, QTS-1920, QTS-1360, DC1-XFM-L3-CX-1620, QTS-1010870, QTS-29911 |  |  |  | -103d | 0d | finish on or before 2026-06-01 |  | Exec Summary | Milestone | IGMP | Exec Summary | BAB | LAY | Y | DH1200 |

| ID | WBS | Activity | Type | Duration | Start | Finish | Predecessors | Complete | Planned start | Planned finish | Total float | Free float | Constraint | Allucent CSI Group | Project Section | Layton Discipline | Baseline | Project Section-1 | Contract | Vendor Responsible Party | Weekly Path |
| --- | --- | --- | --- | --- | --- | --- | --- | --- | --- | --- | --- | --- | --- | --- | --- | --- | --- | --- | --- | --- | --- |
|  | 6 | **DH 2300 Milestones** |  |  | 2026-04-13 | 2026-11-10 |  |  |  |  |  |  |  |  |  |  |  |  |  |  |  |
| QTS-1060.5 |  | DH 2300 Gallery 2302 Room Ready To Receive Interior Equipment Level 1 Complete | milestone | 0d | 2026-04-13 A | 2026-04-13 A | QTS-1050 FF, QTS-1003640 FF | 100% | 2026-06-03 | 2026-06-03 |  |  |  | 01ADMIN | Exec Summary | Milestone | IGMP | Exec Summary | BAB |  |  |
| QTS-1070.5 |  | DH 2300 DCIM Headroom Level 2 Complete (Early Access) | milestone | 0d | 2026-08-26 | 2026-08-26 | QTS-1060.5 FF, QTS-24731, QTS-4860, QTS-15311, QTS-5490, QTS-4450 |  |  |  | -36d | 2d |  |  | Exec Summary | Milestone | IGMP | Exec Summary | BAB |  |  |
| QTS-1080.5 |  | DH 2300 DCIM Headroom Level 3 Complete (Early Access) | milestone | 0d | 2026-08-28 | 2026-08-28 | QTS-1070.5 FF |  |  |  | -38d | 0d | as late as possible |  | Exec Summary | Milestone | IGMP | Exec Summary | BAB | LAY |  |
| QTS-M4260 |  | Cooling Available - DH2300 | milestone | 0d | 2026-09-17 | 2026-09-17 | QTS-1013580, QTS-1013570 |  |  |  | -11d | 45d |  |  | Exec Summary | Milestone | IGMP | Exec Summary | BAB |  |  |
| QTS-M4130 |  | Technical Loop Fill & Flush Complete - DH2300 | milestone | 0d | 2026-09-18 | 2026-09-18 | QTS-4690 |  |  |  | -12d | 44d |  |  | Exec Summary | Milestone | IGMP | Exec Summary | BAB |  |  |
| QTS-1115.E |  | DH 2300 Early Access Ready (Level 1) | milestone | 0d | 2026-09-24 | 2026-09-24 | QTS-1060.5 FF, QTS-1115.D, QTS-4330 |  |  |  | -37d | 0d |  | 01ADMIN | Exec Summary | Milestone | IGMP | Exec Summary | BAB |  |  |
| QTS-1110.5 |  | DH 2300 CX-L3 Complete | milestone | 0d | 2026-09-25 | 2026-09-25 | QTS-1115.E FF, QTS-7340, QTS-6860, QTS-6890, QTS-7050, QTS-7080, QTS-7290 |  |  |  | -38d | 20d |  |  | Exec Summary | Milestone | IGMP | Exec Summary | BAB |  |  |
| QTS-M4210 |  | Air Tab - DH2300 | milestone | 0d | 2026-10-01 | 2026-10-01 | QTS-5330 |  |  |  | -21d | 35d |  |  | Exec Summary | Milestone | IGMP | Exec Summary | BAB |  |  |
| QTS-1120.5 |  | DH 2300 CX-L4 & IST Complete | milestone | 0d | 2026-10-26 | 2026-10-26 | QTS-42011 FF, QTS-1110.5 FF, QTS-5360, QTS-1004780 |  |  |  | -58d | 1d |  |  | Exec Summary | Milestone | IGMP | Exec Summary | BAB | LAY | Y |
| QTS-1130.E |  | DH 2300 Substantial Completion / TCO (08/03/26) | milestone | 0d | 2026-11-05 | 2026-11-05 | QTS-46881 FF, QTS-46871 FF, QTS-1461 FF, QTS-1120.5 FF, QTS-1001900 FF, QTS-14301, QTS-4340, QTS-5280, QTS-4950, QTS-5620, QTS-4610, QTS-44541, QTS - 26381, QTS-25921, QTS-4300, QTS-4481 |  |  |  | -67d | 0d | finish on or before 2026-08-03 |  | Exec Summary | Milestone | IGMP | Exec Summary | BAB | LAY | Y |
| QTS-1070.15 |  | DH 2300 TFO Scope Completion (9/1/26) | milestone | 0d | 2026-11-10 | 2026-11-10 | QTS-1012240, QTS-5370, QTS - 10220, QTS-1013790, QTS-1013800 |  |  |  | -49d | 7d | finish on or before 2026-09-01 |  |  | Milestone |  |  | TFO | LAY |  |
|  | 7 | **DH 1300 Milestones** |  |  | 2026-08-19 | 2026-11-19 |  |  |  |  |  |  |  |  |  |  |  |  |  |  |  |
| QTS-1060.6 |  | DH 1300 Gallery 1302 Room Ready To Receive Interior Equipment Level 1 Complete | milestone | 0d | 2026-08-19 | 2026-08-19 | QTS-20771 FF, QTS-1003820 FF |  |  |  | -30d | 8d |  |  | Exec Summary | Milestone | IGMP | Exec Summary | BAB |  |  |
| QTS-1070.6 |  | DH 1300 DCIM Headroom Level 2 Complete (Early Access) | milestone | 0d | 2026-08-28 | 2026-08-28 | QTS-1060.6 FF, QTS-24761, QTS-3500, QTS-3525, QTS-4440, QTS-3140, QTS-1013910 |  |  |  | -38d | 0d |  |  | Exec Summary | Milestone | IGMP | Exec Summary | BAB |  |  |
| QTS-1080.6 |  | DH 1300 DCIM Headroom Level 3 Complete (Early Access) | milestone | 0d | 2026-08-28 | 2026-08-28 | QTS-1070.6 FF |  |  |  | -38d | 0d | as late as possible |  | Exec Summary | Milestone | IGMP | Exec Summary | BAB | LAY |  |
| QTS-M4290 |  | Cooling Available - DH1300 | milestone | 0d | 2026-09-22 | 2026-09-22 | QTS-1013610, QTS-1013620, QTS-1013600 |  |  |  | -14d | 42d |  |  | Exec Summary | Milestone | IGMP | Exec Summary | BAB |  |  |
| QTS-1115.F |  | DH 1300 Early Access Ready (Level 1) | milestone | 0d | 2026-09-24 | 2026-09-24 | QTS-1060.6 FF, QTS-1115.E, QTS-3030 |  |  |  | -37d | 9d |  |  | Exec Summary | Milestone | IGMP | Exec Summary | BAB |  |  |
| QTS-M4160 |  | Technical Loop Fill & Flush Complete - DH1300 | milestone | 0d | 2026-09-29 | 2026-09-29 | QTS-3365 |  |  |  | -19d | 37d |  |  | Exec Summary | Milestone | IGMP | Exec Summary | BAB |  |  |
| QTS-1110.6 |  | DH 1300 CX-L3 Complete | milestone | 0d | 2026-10-07 | 2026-10-07 | QTS-1065 FF, QTS-1115.F FF, QTS-4180, QTS-6330, QTS-6360, QTS-6480, QTS-6520, QTS-6640 |  |  |  | -46d | 18d |  |  | Exec Summary | Milestone | IGMP | Exec Summary | BAB |  |  |
| QTS-M4240 |  | Air Tab - DH1300 | milestone | 0d | 2026-10-08 | 2026-10-08 | QTS-3970 |  |  |  | -26d | 30d |  |  | Exec Summary | Milestone | IGMP | Exec Summary | BAB |  |  |
| QTS-1120.6 |  | DH 1300 CX-L4 & IST Complete | milestone | 0d | 2026-11-02 | 2026-11-02 | QTS-42071 FF, QTS-1110.6 FF, QTS-4000, QTS-1004780 |  |  |  | -64d | 0d |  |  | Exec Summary | Milestone | IGMP | Exec Summary | BAB | LAY | Y |
| QTS-1130.F |  | DH 1300 Substantial Completion / Closeout Complete / Certificate of Occupancy (08/03/26) | milestone | 0d | 2026-11-12 | 2026-11-12 | QTS-3181 FF, QTS-1451 FF, QTS-1120.6 FF, QTS-100770, QTS-1009770, QTS-1009060, QTS-1009070, QTS-1012080, QTS-1012300, QTS-3040, QTS-3920, QTS-3590, QTS-3285, QTS - 26381, QTS-46741, QTS-3451, QTS-25921, QTS-4150, QTS-4491, QTS-1014120, QTS-1010740, QTS-1010770, QTS-1010760 |  |  |  | -72d | 0d | finish on or before 2026-08-03 |  | Exec Summary | Milestone | IGMP | Exec Summary | BAB | LAY | Y |
| QTS-1110.16 |  | DH 1300 TFO Scope Completion (9/1/26) | milestone | 0d | 2026-11-19 | 2026-11-19 | QTS-1012240, QTS-4010, QTS - 10220, QTS-1013790, QTS-1013800 |  |  |  | -56d | 0d | finish on or before 2026-09-01 |  |  | Milestone |  |  | TFO | LAY |  |

| ID | WBS | Activity | Type | Duration | Start | Finish | Predecessors | Complete | Remaining | Planned start | Planned finish | Total float | Free float | Project Section | Layton Discipline | Baseline | Contract | Project Section-1 | Precon Phase | Allucent CSI Group | Layton Super |
| --- | --- | --- | --- | --- | --- | --- | --- | --- | --- | --- | --- | --- | --- | --- | --- | --- | --- | --- | --- | --- | --- |
|  | 2 | **Durations (Calendar Days)** |  |  | 2025-01-15 | 2026-11-12 |  |  |  |  |  |  |  |  |  |  |  |  |  |  |  |
|  | 1 | **Overall Construction** |  |  | 2025-01-15 | 2026-11-12 |  |  |  |  |  |  |  |  |  |  |  |  |  |  |  |
| QTS-3181 |  | Construction Duration | level of effort | 328d | 2025-01-15 A | 2026-11-12 | QTS-1030 SS | 81% | 61d | 2025-01-21 | 2026-05-08 | -72d | 0d | Exec Summary | Duration | IGMP | BAB |  |  |  |  |
|  | 2 | **Monthly Reporting** |  |  | 2025-01-22 | 2026-11-12 |  |  |  |  |  |  |  |  |  |  |  |  |  |  |  |
| QTS-1191 |  | Pad Prep | level of effort | 23d | 2025-01-22 A | 2025-03-14 A | QTS-1201 | 100% |  | 2025-01-23 | 2025-02-24 |  |  |  | Duration | IGMP | BAB | Exec Summary |  |  |  |
| QTS-7311 |  | Piers, UG Utilities, Foundations (Including Elevator Pits) | level of effort | 62d | 2025-02-17 A | 2025-10-09 A | QTS-1191, QTS-7301 SS | 100% |  | 2025-01-31 | 2025-04-28 |  |  | Exec Summary | Duration | IGMP | BAB | Exec Summary |  |  |  |
| QTS-16931 |  | Steel Erection (Includes Detailing) | level of effort | 59d | 2025-04-30 A | 2025-08-19 A | QTS-16911 SS | 100% |  | 2025-04-30 | 2025-07-23 |  |  | Exec Summary | Duration | IGMP | BAB | Exec Summary |  |  |  |
| QTS-15071 |  | Tilt Panels (Includes Casting) | level of effort | 72d | 2025-06-06 A | 2025-09-25 A | QTS-15041 SS | 100% |  | 2025-06-06 | 2025-09-17 |  |  | Exec Summary | Duration | IGMP | BAB | Exec Summary |  |  |  |
| QTS-19031 |  | Concrete (SOMD & SOG) | level of effort | 71d | 2025-06-23 A | 2025-10-28 A | QTS-18941 SS | 100% |  | 2025-06-23 | 2025-10-01 |  |  | Exec Summary | Duration | IGMP | BAB | Exec Summary |  |  |  |
| QTS-1291 |  | DH 1100 Buildout | level of effort | 174d | 2025-07-14 A | 2026-08-31 | QTS-1691 SS | 95% | 9d | 2025-08-22 | 2026-05-05 | -84d | 0d | Exec Summary | Duration | IGMP | BAB | Exec Summary |  |  |  |
| QTS-1281 |  | DH 2100 Buildout | level of effort | 197d | 2025-07-24 A | 2026-09-11 | QTS-19841 SS | 91% | 17d | 2025-07-24 | 2026-05-07 | -72d | 0d | Exec Summary | Duration | IGMP | BAB | Exec Summary |  |  |  |
| QTS-1301 |  | DH 2200 Buildout | level of effort | 197d | 2025-08-27 A | 2026-10-12 | QTS-1821 SS | 81% | 38d | 2025-08-27 | 2026-06-11 | -93d | 0d | Exec Summary | Duration | IGMP | BAB | Exec Summary |  |  |  |
| QTS-20881 |  | Roofing | level of effort | 80d | 2025-08-27 A | 2025-12-17 A | QTS-20771 SS | 100% |  | 2025-09-02 | 2025-12-29 |  |  | Exec Summary | Duration | IGMP | BAB | Exec Summary |  |  |  |
| QTS-1311 |  | DH 1200 Buildout | level of effort | 195d | 2025-09-02 A | 2026-10-26 | QTS-1951 SS | 75% | 48d | 2025-10-03 | 2026-07-16 | -103d | 0d | Exec Summary | Duration | IGMP | BAB | Exec Summary |  |  |  |
| QTS-1461 |  | DH 2300 Buildout | level of effort | 217d | 2025-09-24 A | 2026-11-05 | QTS-2081 SS | 74% | 56d | 2025-09-24 | 2026-08-06 | -67d | 0d | Exec Summary | Duration | IGMP | BAB | Exec Summary |  |  |  |
| QTS-1451 |  | DH 1300 Buildout | level of effort | 197d | 2025-10-21 A | 2026-11-12 | QTS-2211 SS | 69% | 61d | 2025-10-21 | 2026-08-05 | -72d | 0d | Exec Summary | Duration | IGMP | BAB | Exec Summary |  |  |  |
|  | 2 | **Preconstruction** |  |  | 2024-11-13 | 2026-08-27 |  |  |  |  |  |  |  |  |  |  |  |  |  |  |  |
|  | 2 | **Owner Contracting** |  |  | 2024-11-13 | 2025-05-19 |  |  |  |  |  |  |  |  |  |  |  |  |  |  |  |
| QTS-1371 |  | Notice to Proceed | milestone | 0d | 2024-11-13 A | 2024-11-13 A |  | 100% |  | 2025-01-31 | 2025-01-31 |  |  |  | Precon | IGMP | BAB | Preconstruction | Owner Contracting |  |  |
| QTS-1351 |  | IGMP Contract Review & Approval (Executed) |  | 18d | 2024-12-02 A | 2025-02-28 A | QTS-1371 | 100% |  | 2025-01-31 | 2025-02-25 |  |  |  | Precon | IGMP | BAB | Preconstruction | Owner Contracting |  |  |
| QTS-9711 |  | Issue Notice to Proceed (NTP/Early Release) |  | 1d | 2025-01-22 A | 2025-01-22 A | QTS-1011 SS, QTS-1351 SS+24d, QTS-1371 | 100% |  | 2025-01-31 | 2025-01-31 |  |  |  | Precon | IGMP | BAB | Preconstruction | Owner Contracting |  |  |
| QTS-11901 |  | Final GMP Contract Review & Approval (Executed) |  | 28d | 2025-03-03 A | 2025-05-19 A | QTS-1151, QTS-1351, QTS-7001 | 100% |  | 2025-04-03 | 2025-05-12 |  |  | Preconstruction | Precon | IGMP | BAB | Preconstruction | Owner Contracting | 01ADMIN |  |
| QTS-7001 |  | Layton Prepare & Submit Final GMP Schedule of Values |  | 8d | 2025-03-24 A | 2025-04-02 A | QTS-1351 | 100% |  |  |  |  |  |  | Precon | IGMP | BAB | Preconstruction | Owner Contracting |  |  |
|  | 3 | **Design** |  |  | 2024-11-13 | 2026-08-04 |  |  |  |  |  |  |  |  |  |  |  |  |  |  |  |
| QTS-1361 |  | Provide ABM for Steel Fabrication |  | 13d | 2024-11-13 A | 2024-11-27 A | QTS-1051 | 100% |  | 2025-01-31 | 2025-02-18 |  |  |  | Precon | GMP | BAB | Preconstruction | Design |  |  |
| QTS-5711 |  | Steel Subcontractor Process ABM |  | 5d | 2024-11-27 A | 2024-11-27 A | QTS-1361 | 100% |  | 2025-01-31 | 2025-02-06 |  |  |  | Precon | IGMP | BAB | Preconstruction |  |  |  |
| QTS-1381 |  | Construction Documents Package (IFP) |  | 5d | 2025-01-15 A | 2025-01-24 A | QTS-1371 | 100% |  | 2025-01-31 | 2025-02-06 |  |  |  | Precon | IGMP | BAB | Preconstruction |  |  |  |
| QTS-15371 |  | Construction Documents Package (IFC) |  | 14d | 2025-03-19 A | 2025-04-07 A | QTS-1371, QTS-9721 | 100% |  |  |  |  |  |  | Precon | IGMP | BAB | Preconstruction |  |  |  |
| QTS-16941 |  | Subcontractors Review & Prepare ROM Pricing for IFC |  | 7d | 2025-04-08 A | 2025-04-29 A | QTS-15371 | 100% |  | 2025-04-08 | 2025-04-16 |  |  |  | Precon | IGMP | BAB | Preconstruction |  |  |  |
| QTS-16951 |  | Subcontractors Review & Prepare Final Pricing for IFC |  | 15d | 2025-04-08 A | 2025-05-30 A | QTS-15371 | 100% |  | 2025-04-08 | 2025-04-28 |  |  |  | Precon | IGMP | BAB | Preconstruction |  |  |  |
| QTS-18051 |  | Owner Review ROM Pricing for IFC |  | 5d | 2025-05-07 A | 2025-05-13 A | QTS-16941 | 100% |  |  |  |  |  |  | Precon | IGMP | BAB | Preconstruction |  |  |  |
| QTS-46901 |  | Owner Review & Approve Final Pricing for IFC |  | 4d | 2025-05-14 A | 2025-05-19 A | QTS-1371 SS | 100% |  |  |  |  |  |  | Precon | IGMP | BAB | Preconstruction |  |  |  |
| QTS-18581 |  | Owner Review & Approve RTA Buyout |  | 33d | 2025-05-20 A | 2025-07-11 A | QTS-46901, QTS-16951, QTS-18051 | 100% |  | 2025-05-20 | 2025-07-07 |  |  | Preconstruction | Precon | IGMP | BAB | Preconstruction |  | 01ADMIN |  |
| QTS-18831 |  | Revise & Resubmit Final Pricing for IFC |  | 5d | 2025-07-14 A | 2025-11-25 A | QTS-18581 | 100% |  | 2025-07-14 | 2025-07-18 |  |  | Preconstruction | Precon | IGMP | BAB | Preconstruction |  | 01ADMIN |  |
| QTS-18931 |  | Owner Review & Approve Revised Final Pricing for IFC |  | 5d | 2025-11-26 A | 2026-02-04 A | QTS-18831, QTS-1000 | 100% |  | 2025-11-24 | 2025-12-02 |  |  | Preconstruction | Precon | IGMP | BAB | Preconstruction |  | 01ADMIN |  |
| QTS-19131 |  | Layton Execute CO's with Subcontractors |  | 5d | 2026-02-24 A | 2026-08-04 A | QTS-18931, QTS-18581, QTS-1000 | 100% |  | 2026-02-24 | 2026-03-02 |  |  | Preconstruction | Precon | IGMP | BAB | Preconstruction |  | 01ADMIN | Andrew Melis |

Notes:
- QTS-18831: allucent_notes_20251202_153722: Andrew Melis on 2025-08-12 15:08: Pricing is not ready and will be due 8/15. Updated pricing needed by subcontractors. / Andrew Melis on 2025-08-18 11:08: IFC pricing is being updated and resubmitted to QTS due to revisions by the Steel contractor. / Andrew Melis on 2025-08-26 15:08: This change order is in review w/ QTS and Layton to verify and validate the final pricing. / Andrew Melis on 2025-09-17 09:09: PCO is currently in review with QTS / Andrew Melis on 2025-10-07 11:10: This is in review with QTS / Andrew Melis on 2025-10-21 12:10: IFC Package is in review with QTS / Andrew Melis on 2025-11-04 09:11: This package is in review wtih QTS still for full approval / Jason Johnston on 2025-12-01 14:21: Final pricing received. / allucent_notes_20251118_192630: Andrew Melis on 2025-08-12 15:08: Pricing is not ready and will be due 8/15. Updated pricing needed by subcontractors. / Andrew Melis on 2025-08-18 11:08: IFC pricing is being updated and resubmitted to QTS due to revisions by the Steel contractor. / Andrew Melis on 2025-08-26 15:08: This change order is in review w/ QTS and Layton to verify and validate the final pricing. / Andrew Melis on 2025-09-17 09:09: PCO is currently in review with QTS / Andrew Melis on 2025-10-07 11:10: This is in review with QTS / Andrew Melis on 2025-10-21 12:10: IFC Package is in review with QTS / Andrew Melis on 2025-11-04 09:11: This package is in review wtih QTS still for full approval / allucent_notes_20251111_182405: Andrew Melis on 2025-08-12 15:08: Pricing is not ready and will be due 8/15. Updated pricing needed by subcontractors. / Andrew Melis on 2025-08-18 11:08: IFC pricing is being updated and resubmitted to QTS due to revisions by the Steel contractor. / Andrew Melis on 2025-08-26 15:08: This change order is in review w/ QTS and Layton to verify and validate the final pricing. / Andrew Melis on 2025-09-17 09:09: PCO is currently in review with QTS / Andrew Melis on 2025-10-07 11:10: This is in review with QTS / Andrew Melis on 2025-10-21 12:10: IFC Package is in review with QTS / Andrew Melis on 2025-11-04 09:11: This package is in review wtih QTS still for full approval / allucent_notes_20251104_160200: Andrew Melis on 2025-08-12 15:08: Pricing is not ready and will be due 8/15. Updated pricing needed by subcontractors. / Andrew Melis on 2025-08-18 11:08: IFC pricing is being updated and resubmitted to QTS due to revisions by the Steel contractor. / Andrew Melis on 2025-08-26 15:08: This change order is in review w/ QTS and Layton to verify and validate the final pricing. / Andrew Melis on 2025-09-17 09:09: PCO is currently in review with QTS / Andrew Melis on 2025-10-07 11:10: This is in review with QTS / Andrew Melis on 2025-10-21 12:10: IFC Package is in review with QTS / Andrew Melis on 2025-11-04 09:11: This package is in review wtih QTS still for full approval / allucent_notes_20251028_163138: Andrew Melis on 2025-08-12 15:08: Pricing is not ready and will be due 8/15. Updated pricing needed by subcontractors. / Andrew Melis on 2025-08-18 11:08: IFC pricing is being updated and resubmitted to QTS due to revisions by the Steel contractor. / Andrew Melis on 2025-08-26 15:08: This change order is in review w/ QTS and Layton to verify and validate the final pricing. / Andrew Melis on 2025-09-17 09:09: PCO is currently in review with QTS / Andrew Melis on 2025-10-07 11:10: This is in review with QTS / Andrew Melis on 2025-10-21 12:10: IFC Package is in review with QTS / allucent_notes_20251027_224008: Andrew Melis on 2025-08-12 15:08: Pricing is not ready and will be due 8/15. Updated pricing needed by subcontractors. / Andrew Melis on 2025-08-18 11:08: IFC pricing is being updated and resubmitted to QTS due to revisions by the Steel contractor. / Andrew Melis on 2025-08-26 15:08: This change order is in review w/ QTS and Layton to verify and validate the final pricing. / Andrew Melis on 2025-09-17 09:09: PCO is currently in review with QTS / Andrew Melis on 2025-10-07 11:10: This is in review with QTS / Andrew Melis on 2025-10-21 12:10: IFC Package is in review with QTS / allucent_notes_20251021_145627: Andrew Melis on 2025-08-12 15:08: Pricing is not ready and will be due 8/15. Updated pricing needed by subcontractors. / Andrew Melis on 2025-08-18 11:08: IFC pricing is being updated and resubmitted to QTS due to revisions by the Steel contractor. / Andrew Melis on 2025-08-26 15:08: This change order is in review w/ QTS and Layton to verify and validate the final pricing. / Andrew Melis on 2025-09-17 09:09: PCO is currently in review with QTS / Andrew Melis on 2025-10-07 11:10: This is in review with QTS / Andrew Melis on 2025-10-21 12:10: IFC Package is in review with QTS / allucent_notes_20251014_152335: Andrew Melis on 2025-08-12 15:08: Pricing is not ready and will be due 8/15. Updated pricing needed by subcontractors. / Andrew Melis on 2025-08-18 11:08: IFC pricing is being updated and resubmitted to QTS due to revisions by the Steel contractor. / Andrew Melis on 2025-08-26 15:08: This change order is in review w/ QTS and Layton to verify and validate the final pricing. / Andrew Melis on 2025-09-17 09:09: PCO is currently in review with QTS / Andrew Melis on 2025-10-07 11:10: This is in review with QTS / allucent_notes: Andrew Melis on 2025-10-08 13:12: QTS and Layton review / and verification of changes that were / made. / allucent_notes: 2025-08-12 15:08 - User: Andrew Melis - Date Added: 2025-08-12 15:08 - Note: Pricing is not ready and will be due 8/15. Updated pricing needed by subcontractors. / 2025-08-18 11:08 - User: Andrew Melis - Date Added: 2025-08-18 11:08 - Note: IFC pricin
- QTS-18931: allucent_notes_20251216_165335: Andrew Melis on 2025-12-09 15:40: Pending approved OCO from QTS. It is approved but not signed by QTS / Jason Johnston on 2025-12-16 15:49: not yet / allucent_notes_20251209_203830: Andrew Melis on 2025-12-09 15:40: Pending approved OCO from QTS. It is approved but not signed by QTS / allucent_notes_20251230_164549: Andrew Melis on 2025-12-09 15:40: Pending approved OCO from QTS. It is approved but not signed by QTS / Jason Johnston on 2025-12-16 15:49: not yet / allucent_notes: 2025-12-09 15:40 - User: Andrew Melis - Date Added: 2025-12-09 15:40 - Note: Pending approved OCO from QTS. It is approved but not signed by QTS / 2025-12-16 15:49 - User: Jason Johnston - Date Added: 2025-12-16 15:49 - Note: not yet

| ID | WBS | Activity | Type | Duration | Start | Finish | Predecessors | Complete | Planned start | Planned finish | Layton Discipline | Baseline | Project Section-1 | Precon Phase | Contract | Owner Impact Analysis | Fragnet Responsible Party | Delay Notice 07-26 |
| --- | --- | --- | --- | --- | --- | --- | --- | --- | --- | --- | --- | --- | --- | --- | --- | --- | --- | --- |
|  | 4 | **Permitting** |  |  | 2025-01-24 | 2026-03-30 |  |  |  |  |  |  |  |  |  |  |  |  |
| QTS-3271 |  | Design Team Prepare & Submit City Submittal for Early Foundation Package |  | 5d | 2025-01-24 A | 2025-01-27 A | QTS-1381 | 100% | 2025-01-31 | 2025-02-06 | Precon | IGMP | Preconstruction | Permitting | BAB |  |  |  |
| QTS-3281 |  | Design Team Prepare & Submit City Submittal for Site Utilities (Wet/Dry), & Underslab Utilities |  | 9d | 2025-01-24 A | 2025-01-27 A | QTS-1381 | 100% | 2025-02-07 | 2025-02-19 | Precon | IGMP | Preconstruction | Permitting | BAB |  |  |  |
| QTS-3291 |  | Design Team Prepare & Submit City Submittal for Construction Documents Package |  | 9d | 2025-01-24 A | 2025-01-24 A | QTS-1381 | 100% | 2025-02-07 | 2025-02-19 | Precon | IGMP | Preconstruction | Permitting | BAB |  |  |  |
| QTS-9721 |  | City 1st Review of Construction Documents Package |  | 43d | 2025-01-24 A | 2025-03-18 A | QTS-1381 SS, QTS-3291 SS | 100% | 2025-02-19 | 2025-04-18 | Precon | IGMP | Preconstruction | Permitting | BAB |  |  |  |
| QTS-9731 |  | City Review of Site Utilities (Wet/Dry), Underslab Utilities Package |  | 8d | 2025-01-24 A | 2025-03-26 A | QTS-1381 SS, QTS-3281 SS | 100% | 2025-03-07 | 2025-03-18 | Precon | IGMP | Preconstruction | Permitting | BAB |  |  |  |
| QTS-9751 |  | City Review of At Risk Grading Package |  | 1d | 2025-01-24 A | 2025-01-24 A | QTS-9721 SS | 100% |  |  | Precon | IGMP | Preconstruction | Permitting | BAB |  |  |  |
| QTS-6081 |  | City Review of Deep Foundation Package |  | 9d | 2025-01-27 A | 2025-02-06 A | QTS-1381, QTS-6091 SS | 100% |  |  | Precon | IGMP | Preconstruction | Permitting | BAB |  |  |  |
| QTS-6101 |  | Municipality Issue Plan Review Fee |  | 5d | 2025-02-04 A | 2025-02-04 A | QTS-3271, QTS-3281, QTS-3291 | 100% | 2025-02-05 | 2025-02-11 | Precon | IGMP | Preconstruction | Permitting | BAB |  |  |  |
| QTS-12761 |  | Issue Foundation Permit | milestone | 0d | 2025-02-06 A | 2025-02-06 A | QTS-9751 FF, QTS-6101 FF, QTS-6081 FF, QTS-9721 FF | 100% |  |  | Precon | IGMP | Preconstruction | Permitting | BAB |  |  |  |
| QTS-14381 |  | Issue Site Utilities (Wet/Dry), Underslab Utilities, Permit | milestone | 0d | 2025-03-26 A | 2025-03-26 A | QTS-9731 FF | 100% | 2025-03-25 | 2025-03-25 | Precon | IGMP | Preconstruction | Permitting | BAB |  |  |  |
| QTS-19141 |  | Issue IFP Building Permit | milestone | 0d | 2025-04-07 A | 2025-04-07 A | QTS-15371 FF, QTS-9721 FF | 100% |  |  | Precon | IGMP | Preconstruction | Permitting | BAB |  |  |  |
|  | 1 | **Fragnet Delays for Permitting** |  |  | 2026-03-30 | 2026-03-30 |  |  |  |  |  |  |  |  |  |  |  |  |
| QTS-1014040 |  | HMIS acceptance for Generators | milestone | 0d | 2026-03-30 A | 2026-03-30 A | QTS-9721 | 100% | 2025-02-06 | 2025-02-06 | Precon |  | Preconstruction | Permitting | BAB | Y | Quality Technology Services | Delay 07-26 |
|  | 7 | **Critical Early Onboarding** |  |  | 2024-11-13 | 2025-02-11 |  |  |  |  |  |  |  |  |  |  |  |  |
|  | 3 | **Site Civil** |  |  | 2024-11-18 | 2025-01-15 |  |  |  |  |  |  |  |  |  |  |  |  |
| QTS-1011 |  | Site Civil // Issue NTP |  | 10d | 2024-11-18 A | 2024-12-10 A | QTS-1001 SS | 100% | 2024-11-25 | 2024-12-10 | Precon | GMP | Preconstruction | Critical Early Onboarding | BAB |  |  |  |
| QTS-1061 |  | Site Civil // Owner Approval of NTP |  | 3d | 2024-12-11 A | 2025-01-14 A | QTS-1011 | 100% | 2024-12-12 | 2024-12-16 | Precon | GMP | Preconstruction | Critical Early Onboarding | BAB |  |  |  |
| QTS-1431 |  | Site Civil // Trade Partner Award |  | 1d | 2025-01-15 A | 2025-01-15 A | QTS-1061 SS, QTS-1061 FF | 100% | 2025-01-31 | 2025-01-31 | Precon | GMP | Preconstruction | Critical Early Onboarding | BAB |  |  |  |
|  | 2 | **Deep Foundation** |  |  | 2024-11-18 | 2025-02-11 |  |  |  |  |  |  |  |  |  |  |  |  |
| QTS-1001 |  | Deep Foundation // Issue NTP |  | 16d | 2024-11-18 A | 2024-12-16 A | QTS-10312 SS | 100% | 2024-10-22 | 2024-11-12 | Precon | GMP | Preconstruction | Critical Early Onboarding | BAB |  |  |  |
| QTS-1081 |  | Deep Foundation // Owner Approval of NTP |  | 3d | 2024-12-16 A | 2024-12-23 A | QTS-1001 | 100% | 2024-12-16 | 2024-12-18 | Precon | GMP | Preconstruction | Critical Early Onboarding | BAB |  |  |  |
| QTS-10912 |  | Deep Foundation // Trade Partner Award |  | 3d | 2024-12-23 A | 2024-12-30 A | QTS-1081 | 100% | 2025-01-13 | 2025-01-15 | Precon | GMP | Preconstruction | Critical Early Onboarding | BAB |  |  |  |
| QTS-10922 |  | Deep Foundation // Design & Approval |  | 5d | 2024-12-30 A | 2025-02-11 A | QTS-10912 | 100% | 2025-01-31 | 2025-02-06 | Precon | GMP | Preconstruction | Critical Early Onboarding | BAB |  |  |  |

| ID | WBS | Activity | Duration | Start | Finish | Predecessors | Complete | Planned start | Planned finish | Layton Discipline | Baseline | Project Section-1 | Precon Phase | Contract | Allucent CSI Group | Project Section |
| --- | --- | --- | --- | --- | --- | --- | --- | --- | --- | --- | --- | --- | --- | --- | --- | --- |
|  | 1 | **Concrete/Foundations/Tilt-Up Wall Panels** |  | 2024-11-18 | 2025-01-02 |  |  |  |  |  |  |  |  |  |  |  |
| QTS-10312 |  | Concrete/Foundations/Tilt-Up Wall Panels // Issue NTP | 18d | 2024-11-18 A | 2024-12-20 A | QTS-1051 SS | 100% | 2024-11-25 | 2024-12-20 | Precon | GMP | Preconstruction | Critical Early Onboarding | BAB |  |  |
| QTS-1111 |  | Concrete/Foundations/Tilt-Up Wall Panels // Owner Approval of NTP | 5d | 2024-12-20 A | 2024-12-27 A | QTS-10312 FF | 100% | 2024-12-16 | 2024-12-20 | Precon | GMP | Preconstruction | Critical Early Onboarding | BAB |  |  |
| QTS-1131 |  | Concrete/Foundations/Tilt-Up Wall Panels // Trade Partner Award | 3d | 2024-12-27 A | 2025-01-02 A | QTS-1111 | 100% | 2025-01-13 | 2025-01-15 | Precon | GMP | Preconstruction | Critical Early Onboarding | BAB |  |  |
|  | 5 | **Steel** |  | 2024-11-13 | 2024-11-27 |  |  |  |  |  |  |  |  |  |  |  |
| QTS-1051 |  | Steel // Issue NTP | 19d | 2024-11-13 A | 2024-11-18 A | QTS-1371 SS | 100% | 2025-01-13 | 2025-02-07 | Precon | IGMP | Preconstruction | Critical Early Onboarding | BAB |  |  |
| QTS-11012 |  | Steel // Owner Approval of NTP | 5d | 2024-11-18 A | 2024-11-27 A | QTS-1051 | 100% | 2024-12-16 | 2024-12-20 | Precon | IGMP | Preconstruction | Critical Early Onboarding | BAB |  |  |
| QTS-1121 |  | Steel // Trade Partner Award | 3d | 2024-11-27 A | 2024-11-27 A | QTS-11012 | 100% | 2025-01-13 | 2025-01-15 | Precon | IGMP | Preconstruction | Critical Early Onboarding | BAB |  |  |
|  | 1 | **Contracting** |  |  |  |  |  |  |  |  |  |  |  |  |  |  |
|  | 5 | **Bid & Buyout** |  | 2025-01-06 | 2025-07-11 |  |  |  |  |  |  |  |  |  |  |  |
| QTS-1161 |  | Bid / Level / Buyout // Deep Foundation - Issue Letter of Intent | 5d | 2025-01-06 A | 2025-01-10 A | QTS-1001 | 100% | 2025-01-15 | 2025-01-22 | Precon | IGMP | Preconstruction | Bid & Buyout | BAB |  |  |
| QTS-1171 |  | Bid / Level / Buyout // Earthwork - Issue Letter of Intent | 5d | 2025-01-10 A | 2025-01-15 A | QTS-1431 | 100% | 2025-01-15 | 2025-01-22 | Precon | IGMP | Preconstruction | Bid & Buyout | BAB |  |  |
| QTS-3241 |  | Bid / Level / Buyout // Structural Concrete | 30d | 2025-01-20 A | 2025-02-28 A | QTS-1381 SS | 100% | 2025-01-31 | 2025-03-13 | Precon | GMP | Preconstruction | Bid & Buyout | BAB |  |  |
| QTS-1151 |  | Bid / Level / Buyout // Deep Foundation | 15d | 2025-01-22 A | 2025-02-12 A | QTS-1381 SS | 100% | 2025-01-23 | 2025-02-12 | Precon | IGMP | Preconstruction | Bid & Buyout | BAB |  |  |
| QTS-3251 |  | Bid / Level / Buyout // Earthwork | 15d | 2025-01-27 A | 2025-02-14 A | QTS-1381 | 100% |  |  | Precon | IGMP | Preconstruction | Bid & Buyout | BAB |  |  |
| QTS-1411 |  | Bid / Level / Buyout // Elevator | 8d | 2025-02-19 A | 2025-03-19 A | QTS-1381 | 100% | 2025-02-19 | 2025-02-28 | Precon | IGMP | Preconstruction | Bid & Buyout | BAB |  |  |
| QTS-1421 |  | Bid / Level / Buyout // Electrical | 8d | 2025-02-19 A | 2025-04-08 A | QTS-1381 | 100% | 2025-02-19 | 2025-02-28 | Precon | IGMP | Preconstruction | Bid & Buyout | BAB |  |  |
| QTS-9851 |  | Bid / Level / Buyout // Mechanical & Plumbing | 8d | 2025-02-19 A | 2025-04-08 A | QTS-9711 | 100% | 2025-02-19 | 2025-02-28 | Precon | IGMP | Preconstruction | Bid & Buyout | BAB |  |  |
| QTS-5691 |  | Bid / Level / Buyout // Structural Steel (Letter of Intent) | 7d | 2025-02-26 A | 2025-03-06 A | QTS-1361 | 100% |  |  | Precon | IGMP | Preconstruction | Bid & Buyout | BAB |  |  |
| QTS-16171 |  | Bid / Level / Buyout // Glazing - Issue Letter of Intent | 1d | 2025-03-12 A | 2025-03-12 A | QTS-1351 SS+59d, QTS-9711 | 100% |  |  | Precon | IGMP | Preconstruction | Bid & Buyout | BAB |  |  |
| QTS-16021 |  | Bid / Level / Buyout // Roofing - Issue Letter of Intent | 1d | 2025-03-13 A | 2025-03-13 A | QTS-9711, QTS-1351 SS+58d | 100% |  |  | Precon | IGMP | Preconstruction | Bid & Buyout | BAB |  |  |
| QTS-9891 |  | Bid / Level / Buyout // OH Doors & Loading Dock Equipment - Issue Letter of Intent | 1d | 2025-03-14 A | 2025-03-14 A | QTS-9711 | 100% |  |  | Precon | IGMP | Preconstruction | Bid & Buyout | BAB |  |  |
| QTS-3261 |  | Bid / Level / Buyout // Site Utilities | 30d | 2025-04-08 A | 2025-07-03 A | QTS-1381 | 100% | 2025-04-08 | 2025-05-19 | Precon | IGMP | Preconstruction | Bid & Buyout | BAB | 01ADMIN | Preconstruction |
| QTS-3321 |  | Bid / Level / Buyout // Fire Protection | 5d | 2025-04-08 A | 2025-07-11 A | QTS-1151 | 100% | 2025-04-08 | 2025-04-14 | Precon | IGMP | Preconstruction | Bid & Buyout | BAB | 01ADMIN | Preconstruction |
| QTS-9871 |  | Bid / Level / Buyout // Controls | 5d | 2025-04-08 A | 2025-06-26 A | QTS-9851, QTS-1421, QTS-9711 | 100% | 2025-04-08 | 2025-04-14 | Precon | IGMP | Preconstruction | Bid & Buyout | BAB | 01ADMIN | Preconstruction |
| QTS-9881 |  | Bid / Level / Buyout // Metal Panels Issue Letter of Intent | 1d | 2025-04-08 A | 2025-04-08 A | QTS-9711 | 100% |  |  | Precon | IGMP | Preconstruction | Bid & Buyout | BAB |  |  |

| ID | WBS | Activity | Duration | Start | Finish | Predecessors | Complete | Planned start | Planned finish | Layton Discipline | Baseline | Project Section-1 | Precon Phase | Contract |
| --- | --- | --- | --- | --- | --- | --- | --- | --- | --- | --- | --- | --- | --- | --- |
|  | 6 | **Submittals & Procurement** |  | 2024-11-27 | 2026-07-08 |  |  |  |  |  |  |  |  |  |
|  | 16 | **Rammed Aggregate Piers** |  | 2025-01-06 | 2025-02-11 |  |  |  |  |  |  |  |  |  |
| QTS-1391 |  | Prepare Rammed Aggregate Pier Design | 10d | 2025-01-06 A | 2025-01-25 A | QTS-1161 | 100% | 2025-01-31 | 2025-02-13 | Precon | GMP | Preconstruction | CFCI Procurement | BAB |
| QTS-6091 |  | Design Team Review & Approve Rammed Aggregate Pier Design | 5d | 2025-01-25 A | 2025-02-11 A | QTS-1391 | 100% | 2025-02-05 | 2025-02-11 | Precon | GMP | Preconstruction | CFCI Procurement | BAB |
|  | 22 | **Concrete** |  | 2025-02-17 | 2025-05-12 |  |  |  |  |  |  |  |  |  |
|  | 2 | **Concrete Mix Designs** |  | 2025-02-28 | 2025-03-10 |  |  |  |  |  |  |  |  |  |
| QTS-6261 |  | Prepare Concrete Mix Designs | 5d | 2025-02-28 A | 2025-03-03 A | QTS-3241 SS+10d | 100% | 2025-02-28 | 2025-03-06 | Precon | GMP | Preconstruction | CFCI Procurement | BAB |
| QTS-7681 |  | Layton Review Concrete Mix Designs | 1d | 2025-03-04 A | 2025-03-04 A | QTS-6261 | 100% |  |  | Precon | GMP | Preconstruction | CFCI Procurement | BAB |
| QTS-7871 |  | Design Team Review & Approve Concrete Mix Designs | 10d | 2025-03-05 A | 2025-03-10 A | QTS-7681 | 100% | 2025-03-05 | 2025-03-18 | Precon | GMP | Preconstruction | CFCI Procurement | BAB |
|  | 1 | **Foundation Rebar** |  | 2025-02-28 | 2025-04-08 |  |  |  |  |  |  |  |  |  |
| QTS-6271 |  | Prepare Foundation Rebar Shop Drawings | 5d | 2025-02-28 A | 2025-03-06 A | QTS-3241 SS+10d | 100% |  |  | Precon | GMP | Preconstruction | CFCI Procurement | BAB |
| QTS-7701 |  | Layton Review Foundation Rebar Shop Drawings | 1d | 2025-03-07 A | 2025-03-07 A | QTS-6271 | 100% |  |  | Precon | GMP | Preconstruction | CFCI Procurement | BAB |
| QTS-7881 |  | Design Team Review & Approve Foundation Rebar Shop Drawings | 10d | 2025-03-10 A | 2025-03-21 A | QTS-7701 | 100% |  |  | Precon | GMP | Preconstruction | CFCI Procurement | BAB |
| QTS-11401 |  | Foundation Rebar Procurement | 10d | 2025-03-24 A | 2025-04-08 A | QTS-7881 | 100% | 2025-03-24 | 2025-04-04 | Precon | GMP | Preconstruction | CFCI Procurement | BAB |
|  | 6 | **Tilt Panel Architectural & Engineered Drawings** |  | 2025-02-28 | 2025-04-01 |  |  |  |  |  |  |  |  |  |
| QTS-6251 |  | Prepare Tilt Panel Book | 10d | 2025-02-28 A | 2025-03-13 A | QTS-3241 SS+10d | 100% |  |  | Precon | GMP | Preconstruction | CFCI Procurement | BAB |
| QTS-12341 |  | Layton Review Tilt Panel Book | 1d | 2025-03-14 A | 2025-03-14 A | QTS-6251 FF, QTS-6251 SS+21d | 100% |  |  | Precon | GMP | Preconstruction | CFCI Procurement | BAB |
| QTS-12491 |  | Design Team Review & Approve Tilt Panel Book | 15d | 2025-03-17 A | 2025-04-01 A | QTS-12341 | 100% | 2025-03-17 | 2025-04-04 | Precon | GMP | Preconstruction | CFCI Procurement | BAB |
|  | 14 | **Tilt Panel Rebar Pour** |  | 2025-02-17 | 2025-05-12 |  |  |  |  |  |  |  |  |  |
| QTS-7691 |  | Prepare Tilt Panel Pour #1 Rebar Shop Drawings | 5d | 2025-02-17 A | 2025-02-21 A | QTS-9711 | 100% | 2025-02-10 | 2025-02-14 | Precon | GMP | Preconstruction | CFCI Procurement | BAB |
| QTS-11471 |  | Layton Review Tilt Panel Pour #1 Rebar Shop Drawings | 1d | 2025-02-24 A | 2025-02-24 A | QTS-7691 | 100% |  |  | Precon | GMP | Preconstruction | CFCI Procurement | BAB |
| QTS-11741 |  | Design Team Review & Approve Tilt Panel Pour #1 Rebar Shop Drawings | 15d | 2025-02-25 A | 2025-04-28 A | QTS-11471 | 100% | 2025-02-25 | 2025-03-17 | Precon | GMP | Preconstruction | CFCI Procurement | BAB |
| QTS-14071 |  | Tilt Panel P01-P40 Rebar Procurement | 10d | 2025-04-29 A | 2025-05-12 A | QTS-11741 | 100% |  |  | Precon | GMP | Preconstruction | CFCI Procurement | BAB |
|  | 3 | **Structural Steel** |  | 2024-11-27 | 2025-06-11 |  |  |  |  |  |  |  |  |  |
|  | 6 | **Package 1** |  | 2024-11-27 | 2025-04-21 |  |  |  |  |  |  |  |  |  |
| QTS-42971 |  | Prepare Structural Steel Shop Drawings (Package 1) | 20d | 2024-11-27 A | 2025-01-31 A | QTS-5711 | 100% | 2025-02-19 | 2025-03-18 | Precon | GMP | Preconstruction | CFCI Procurement | BAB |
| QTS-42981 |  | Layton Review Structural Steel Shop Drawings (Package 1) | 1d | 2025-02-03 A | 2025-02-03 A | QTS-42971 | 100% | 2025-02-14 | 2025-02-14 | Precon | GMP | Preconstruction | CFCI Procurement | BAB |
| QTS-42991 |  | Design Team Review & Approve Structural Steel Shop Drawings (Package 1) | 8d | 2025-02-04 A | 2025-02-13 A | QTS-42981 | 100% |  |  | Precon | GMP | Preconstruction | CFCI Procurement | BAB |
| QTS-43001 |  | Structural Steel Procurement (Package 1) | 47d | 2025-02-14 A | 2025-04-21 A | QTS-42991 | 100% |  |  | Precon | GMP | Preconstruction | CFCI Procurement | BAB |

Notes:
- QTS-7881: Schedulers Notes: 07/15/24 - GL1-12 foundation rebar shop drawings approved as noted. Corgan / has requested that Suntec provide a "record submittal".

| ID | WBS | Activity | Duration | Start | Finish | Predecessors | Complete | Planned start | Planned finish | Layton Discipline | Baseline | Project Section-1 | Precon Phase | Contract | Project Section |
| --- | --- | --- | --- | --- | --- | --- | --- | --- | --- | --- | --- | --- | --- | --- | --- |
|  | 4 | **Package 2** |  | 2024-11-27 | 2025-05-07 |  |  |  |  |  |  |  |  |  |  |
| QTS-43391 |  | Prepare Structural Steel Shop Drawings (Package 2) | 20d | 2024-11-27 A | 2025-02-17 A | QTS-5711 | 100% | 2025-02-19 | 2025-03-18 | Precon | GMP | Preconstruction | CFCI Procurement | BAB |  |
| QTS-43401 |  | Layton Review Structural Steel Shop Drawings (Package 2) | 1d | 2025-02-18 A | 2025-02-18 A | QTS-43391 | 100% | 2025-03-12 | 2025-03-12 | Precon | GMP | Preconstruction | CFCI Procurement | BAB |  |
| QTS-43411 |  | Design Team Review & Approve Structural Steel Shop Drawings (Package 2) | 5d | 2025-02-19 A | 2025-03-03 A | QTS-43401 | 100% | 2025-03-13 | 2025-03-19 | Precon | GMP | Preconstruction | CFCI Procurement | BAB |  |
| QTS-43421 |  | Structural Steel Procurement (Package 2) | 30d | 2025-03-04 A | 2025-05-07 A | QTS-43411 | 100% | 2025-03-20 | 2025-04-30 | Precon | GMP | Preconstruction | CFCI Procurement | BAB |  |
|  | 2 | **Package 3** |  | 2024-11-27 | 2025-05-22 |  |  |  |  |  |  |  |  |  |  |
| QTS-5671 |  | Prepare Structural Steel Shop Drawings (Package 3) | 20d | 2024-11-27 A | 2025-03-27 A | QTS-5711 FF, QTS-5711, QTS-1361 | 100% | 2025-02-19 | 2025-03-18 | Precon | GMP |  | CFCI Procurement | BAB | Preconstruction |
| QTS-11871 |  | Design Team Review & Approve Structural Steel Shop Drawings (Package 3) | 9d | 2025-03-11 A | 2025-03-19 A | QTS-11711 | 100% | 2025-03-31 | 2025-04-10 | Precon | GMP |  | CFCI Procurement | BAB | Preconstruction |
| QTS-13471 |  | Structural Steel Procurement (Package 3) | 30d | 2025-03-20 A | 2025-05-22 A | QTS-5691, QTS-11871 | 100% | 2025-04-11 | 2025-05-22 | Precon | GMP |  | CFCI Procurement | BAB | Preconstruction |
| QTS-11711 |  | Layton Review Structural Steel Shop Drawings (Package 3) | 1d | 2025-03-28 A | 2025-03-28 A | QTS-5671 | 100% |  |  | Precon | GMP |  | CFCI Procurement | BAB | Preconstruction |
|  | 3 | **Package 4** |  | 2025-04-15 | 2025-06-11 |  |  |  |  |  |  |  |  |  |  |
| QTS-11721 |  | Prepare Structural Steel Shop Drawings (Package 4) | 16d | 2025-04-15 A | 2025-04-22 A | QTS-5711, QTS-5671 | 100% | 2025-04-15 | 2025-05-06 | Precon | GMP |  | CFCI Procurement | BAB | Preconstruction |
| QTS-14021 |  | Layton Review Structural Steel Shop Drawings (Package 4) | 1d | 2025-04-23 A | 2025-04-23 A | QTS-11721 | 100% |  |  | Precon | GMP |  | CFCI Procurement | BAB | Preconstruction |
| QTS-14061 |  | Design Team Review & Approve Structural Steel Shop Drawings (Package 4) | 4d | 2025-04-24 A | 2025-04-29 A | QTS-14021 | 100% |  |  | Precon | GMP |  | CFCI Procurement | BAB | Preconstruction |
| QTS-14861 |  | Structural Steel Procurement (Package 4) | 30d | 2025-04-30 A | 2025-06-11 A | QTS-14061 | 100% |  |  | Precon | GMP |  | CFCI Procurement | BAB | Preconstruction |
|  | 1 | **Anchor Rods & Embeds** |  | 2025-01-23 | 2025-03-14 |  |  |  |  |  |  |  |  |  |  |
| QTS-1251 |  | Prepare Anchor Rods & Embed Shop Drawings | 5d | 2025-01-23 A | 2025-01-29 A | QTS-9711 | 100% |  |  | Precon | GMP |  | CFCI Procurement | BAB | Preconstruction |
| QTS-3231 |  | Layton Review Anchor Rods & Embed Shop Drawings | 5d | 2025-01-30 A | 2025-02-05 A | QTS-1251 | 100% |  |  | Precon | GMP |  | CFCI Procurement | BAB | Preconstruction |
| QTS-4451 |  | Design Team Review & Approve Anchor Rods & Embed Shop Drawings | 2d | 2025-02-06 A | 2025-02-11 A | QTS-3231 | 100% | 2025-02-06 | 2025-02-07 | Precon | GMP |  | CFCI Procurement | BAB | Preconstruction |
| QTS-6241 |  | Anchor Rods & Embeds Procurement | 15d | 2025-02-12 A | 2025-03-14 A | QTS-4451 SS+5d, QTS-4451 FF+3d | 100% | 2025-02-10 | 2025-02-28 | Precon | GMP |  | CFCI Procurement | BAB | Preconstruction |
|  | 14 | **Miscellaneous Steel** |  | 2025-02-20 | 2025-07-30 |  |  |  |  |  |  |  |  |  |  |
|  | 1 | **Package 1** |  | 2025-02-20 | 2025-05-07 |  |  |  |  |  |  |  |  |  |  |
| QTS-43141 |  | Prepare Grating Steel Shop Drawings (Package 1) | 14d | 2025-02-20 A | 2025-03-06 A | QTS-5711 | 100% | 2025-02-20 | 2025-03-11 | Precon | GMP | Preconstruction | CFCI Procurement | BAB |  |
| QTS-43151 |  | Layton Review Grating Steel Shop Drawings (Package 1) | 1d | 2025-03-07 A | 2025-03-07 A | QTS-43141 | 100% | 2025-03-12 | 2025-03-12 | Precon | GMP | Preconstruction | CFCI Procurement | BAB |  |
| QTS-43161 |  | Design Team Review & Approve Grating Steel Shop Drawings (Package 1) | 9d | 2025-03-10 A | 2025-03-21 A | QTS-43151 | 100% | 2025-03-13 | 2025-03-25 | Precon | GMP | Preconstruction | CFCI Procurement | BAB |  |
| QTS-43171 |  | Grating Steel Procurement (Package 1) | 30d | 2025-03-24 A | 2025-05-07 A | QTS-43161 | 100% | 2025-03-24 | 2025-05-02 | Precon | GMP | Preconstruction | CFCI Procurement | BAB |  |

Notes:
- QTS-6241: allucent_notes: Owen Porter on 2024-10-21 14:10: Anchor rods delivered 10.16.24.

| ID | WBS | Activity | Duration | Start | Finish | Predecessors | Complete | Planned start | Planned finish | Layton Discipline | Baseline | Project Section-1 | Precon Phase | Contract | Allucent CSI Group | Project Section |
| --- | --- | --- | --- | --- | --- | --- | --- | --- | --- | --- | --- | --- | --- | --- | --- | --- |
|  | 2 | **Package 2** |  | 2025-03-07 | 2025-05-14 |  |  |  |  |  |  |  |  |  |  |  |
| QTS-43181 |  | Prepare Grating Steel Shop Drawings (Package 2) | 14d | 2025-03-07 A | 2025-03-24 A | QTS-5711 | 100% | 2025-03-07 | 2025-03-26 | Precon | GMP | Preconstruction | CFCI Procurement | BAB |  |  |
| QTS-43191 |  | Layton Review Grating Steel Shop Drawings (Package 2) | 1d | 2025-03-25 A | 2025-03-25 A | QTS-43181 | 100% |  |  | Precon | GMP | Preconstruction | CFCI Procurement | BAB |  |  |
| QTS-43201 |  | Design Team Review & Approve Grating Steel Shop Drawings (Package 2) | 9d | 2025-03-26 A | 2025-04-02 A | QTS-43191 | 100% | 2025-03-26 | 2025-04-07 | Precon | GMP | Preconstruction | CFCI Procurement | BAB |  |  |
| QTS-43211 |  | Grating Steel Procurement (Package 2) | 30d | 2025-04-03 A | 2025-05-14 A | QTS-43201 | 100% |  |  | Precon | GMP | Preconstruction | CFCI Procurement | BAB |  |  |
|  | 3 | **Package 3** |  | 2025-03-07 | 2025-06-10 |  |  |  |  |  |  |  |  |  |  |  |
| QTS-43101 |  | Prepare Grating Steel Shop Drawings (Package 3) | 27d | 2025-03-07 A | 2025-04-11 A | QTS-5711 | 100% | 2025-03-07 | 2025-04-14 | Precon | GMP | Preconstruction | CFCI Procurement | BAB |  |  |
| QTS-43111 |  | Layton Review Grating Steel Shop Drawings (Package 3) | 1d | 2025-04-14 A | 2025-04-14 A | QTS-43101 | 100% |  |  | Precon | GMP | Preconstruction | CFCI Procurement | BAB |  |  |
| QTS-43121 |  | Design Team Review & Approve Grating Steel Shop Drawings (Package 3) | 6d | 2025-04-15 A | 2025-04-28 A | QTS-43111 | 100% | 2025-04-15 | 2025-04-22 | Precon | GMP | Preconstruction | CFCI Procurement | BAB |  |  |
| QTS-43131 |  | Grating Steel Procurement (Package 3) | 30d | 2025-04-29 A | 2025-06-10 A | QTS-43121 | 100% |  |  | Precon | GMP | Preconstruction | CFCI Procurement | BAB |  |  |
|  | 4 | **Package 4** |  | 2025-04-11 | 2025-07-30 |  |  |  |  |  |  |  |  |  |  |  |
| QTS-43221 |  | Prepare Grating Steel Shop Drawings (Package 4) | 47d | 2025-04-11 A | 2025-05-12 A | QTS-5711 | 100% | 2025-03-07 | 2025-05-12 | Precon | GMP | Preconstruction | CFCI Procurement | BAB |  |  |
| QTS-43231 |  | Layton Review Grating Steel Shop Drawings (Package 4) | 1d | 2025-05-13 A | 2025-05-13 A | QTS-43221 | 100% |  |  | Precon | GMP | Preconstruction | CFCI Procurement | BAB |  |  |
| QTS-43241 |  | Design Team Review & Approve Grating Steel Shop Drawings (Package 4) | 6d | 2025-05-14 A | 2025-06-17 A | QTS-43231 | 100% | 2025-05-14 | 2025-05-21 | Precon | GMP | Preconstruction | CFCI Procurement | BAB |  |  |
| QTS-43251 |  | Grating Steel Procurement (Package 4) | 30d | 2025-06-18 A | 2025-07-30 A | QTS-43241 | 100% |  |  | Precon | GMP | Preconstruction | CFCI Procurement | BAB | 01ADMIN | Preconstruction |
|  | 18 | **Stairs** |  | 2025-02-25 | 2025-09-10 |  |  |  |  |  |  |  |  |  |  |  |
|  | 1 | **Package 01** |  | 2025-02-25 | 2025-05-13 |  |  |  |  |  |  |  |  |  |  |  |
| QTS-43261 |  | Prepare Stair Steel Shop Drawings (Package 1) | 14d | 2025-02-25 A | 2025-03-14 A | QTS-5711 | 100% |  |  | Precon | GMP | Preconstruction | CFCI Procurement | BAB |  |  |
| QTS-43271 |  | Layton Review Stair Steel Shop Drawings (Package 1) | 1d | 2025-03-17 A | 2025-03-17 A | QTS-43261 | 100% |  |  | Precon | GMP | Preconstruction | CFCI Procurement | BAB |  |  |
| QTS-43281 |  | Design Team Review & Approve Stair Steel Shop Drawings (Package 1) | 9d | 2025-03-18 A | 2025-04-01 A | QTS-43271 | 100% | 2025-03-18 | 2025-03-28 | Precon | GMP | Preconstruction | CFCI Procurement | BAB |  |  |
| QTS-43291 |  | Stair Steel Procurement (Package 1) | 30d | 2025-04-02 A | 2025-05-13 A | QTS-43281 | 100% |  |  | Precon | GMP | Preconstruction | CFCI Procurement | BAB |  |  |
|  | 12 | **Sequence 701** |  | 2025-05-14 | 2025-06-25 |  |  |  |  |  |  |  |  |  |  |  |
| QTS-49361 |  | Prepare Stair Steel Shop Drawings (Sequence 701) | 9d | 2025-05-14 A | 2025-05-27 A | QTS-5711 | 100% |  |  | Precon | GMP | Preconstruction | CFCI Procurement | BAB |  |  |
| QTS-49371 |  | Layton Review Stair Steel Shop Drawings (Sequence 701) | 1d | 2025-05-28 A | 2025-05-28 A | QTS-49361 | 100% |  |  | Precon | GMP | Preconstruction | CFCI Procurement | BAB |  |  |
| QTS-49381 |  | Design Team Review & Approve Stair Steel Shop Drawings (Sequence 701) | 6d | 2025-05-29 A | 2025-06-05 A | QTS-49371 | 100% |  |  | Precon | GMP | Preconstruction | CFCI Procurement | BAB |  |  |
| QTS-49391 |  | Stair Steel Procurement (Sequence 701) | 8d | 2025-06-09 A | 2025-06-25 A | QTS-49381 | 100% | 2025-06-09 | 2025-06-18 | Precon | GMP | Preconstruction | CFCI Procurement | BAB | 01ADMIN | Preconstruction |

| ID | WBS | Activity | Duration | Start | Finish | Predecessors | Complete | Planned start | Planned finish | Layton Discipline | Baseline | Project Section-1 | Precon Phase | Contract | Allucent CSI Group | Project Section |
| --- | --- | --- | --- | --- | --- | --- | --- | --- | --- | --- | --- | --- | --- | --- | --- | --- |
|  | 2 | **Sequence 702** |  | 2025-03-07 | 2025-06-13 |  |  |  |  |  |  |  |  |  |  |  |
| QTS-43341 |  | Prepare Stair Steel Shop Drawings (Package 2) | 9d | 2025-03-07 A | 2025-03-18 A | QTS-5711 | 100% | 2025-03-07 | 2025-03-19 | Precon | GMP | Preconstruction | CFCI Procurement | BAB |  |  |
| QTS-43351 |  | Layton Review Stair Steel Shop Drawings (Package 2) | 1d | 2025-03-19 A | 2025-03-19 A | QTS-43341 | 100% |  |  | Precon | GMP | Preconstruction | CFCI Procurement | BAB |  |  |
| QTS-43361 |  | Design Team Review & Approve Stair Steel Shop Drawings (Package 2) | 6d | 2025-03-20 A | 2025-04-08 A | QTS-43351 | 100% | 2025-03-20 | 2025-03-27 | Precon | GMP | Preconstruction | CFCI Procurement | BAB |  |  |
| QTS-43371 |  | Stair Steel Procurement (Sequence 702) | 30d | 2025-04-09 A | 2025-06-13 A | QTS-43361 | 100% | 2025-04-09 | 2025-05-20 | Precon | GMP | Preconstruction | CFCI Procurement | BAB |  |  |
|  | 3 | **Sequence 703** |  | 2025-03-07 | 2025-06-17 |  |  |  |  |  |  |  |  |  |  |  |
| QTS-43301 |  | Prepare Stair Steel Shop Drawings (Package 3) | 17d | 2025-03-07 A | 2025-03-31 A | QTS-5711 | 100% |  |  | Precon | GMP | Preconstruction | CFCI Procurement | BAB |  |  |
| QTS-43311 |  | Layton Review Stair Steel Shop Drawings (Package 3) | 1d | 2025-04-01 A | 2025-04-01 A | QTS-43301 | 100% |  |  | Precon | GMP | Preconstruction | CFCI Procurement | BAB |  |  |
| QTS-43321 |  | Design Team Review & Approve Stair Steel Shop Drawings (Package 3) | 6d | 2025-04-01 A | 2025-05-12 A | QTS-43311 | 100% | 2025-04-02 | 2025-04-09 | Precon | GMP | Preconstruction | CFCI Procurement | BAB |  |  |
| QTS-43331 |  | Stair Steel Procurement (Sequence 703) | 30d | 2025-05-13 A | 2025-06-17 A | QTS-43321 | 100% | 2025-05-13 | 2025-06-24 | Precon | GMP | Preconstruction | CFCI Procurement | BAB |  |  |
|  | 4 | **Sequence 704** |  | 2025-06-09 | 2025-08-29 |  |  |  |  |  |  |  |  |  |  |  |
| QTS-49061 |  | Stair Steel Procurement (Sequence 704) | 59d | 2025-06-09 A | 2025-08-29 A | QTS-49381 | 100% |  |  | Precon | GMP | Preconstruction | CFCI Procurement | BAB | 01ADMIN | Preconstruction |
|  | 5 | **Sequence 705** |  | 2025-04-28 | 2025-06-11 |  |  |  |  |  |  |  |  |  |  |  |
| QTS-49221 |  | Stair Steel Procurement (Sequence 705) | 32d | 2025-04-28 A | 2025-06-11 A | QTS-49381 | 100% |  |  | Precon | GMP | Preconstruction | CFCI Procurement | BAB |  |  |
|  | 6 | **Sequence 706** |  | 2025-06-09 | 2025-07-31 |  |  |  |  |  |  |  |  |  |  |  |
| QTS-49181 |  | Stair Steel Procurement (Sequence 706) | 38d | 2025-06-09 A | 2025-07-31 A | QTS-49381 | 100% |  |  | Precon | GMP | Preconstruction | CFCI Procurement | BAB | 01ADMIN | Preconstruction |
|  | 7 | **Sequence 707** |  | 2025-06-09 | 2025-09-10 |  |  |  |  |  |  |  |  |  |  |  |
| QTS-49141 |  | Stair Steel Procurement (Sequence 707) | 66d | 2025-06-09 A | 2025-09-10 A | QTS-49381 | 100% |  |  | Precon | GMP | Preconstruction | CFCI Procurement | BAB | 01ADMIN | Preconstruction |
|  | 8 | **Sequence 708** |  | 2025-06-25 | 2025-08-13 |  |  |  |  |  |  |  |  |  |  |  |
| QTS-49101 |  | Stair Steel Procurement (Sequence 708) | 30d | 2025-06-25 A | 2025-08-13 A | QTS-49381 | 100% | 2025-06-25 | 2025-08-06 | Precon | GMP | Preconstruction | CFCI Procurement | BAB | 01ADMIN | Preconstruction |
|  | 10 | **Sequence 709** |  | 2025-06-09 | 2025-08-15 |  |  |  |  |  |  |  |  |  |  |  |
| QTS-49301 |  | Stair Steel Procurement (Sequence 709) | 49d | 2025-06-09 A | 2025-08-15 A | QTS-49381 | 100% |  |  | Precon | GMP | Preconstruction | CFCI Procurement | BAB | 01ADMIN | Preconstruction |
|  | 11 | **Sequence 710** |  | 2025-06-09 | 2025-07-30 |  |  |  |  |  |  |  |  |  |  |  |
| QTS-49341 |  | Stair Steel Procurement (Sequence 710) | 33d | 2025-06-09 A | 2025-07-30 A | QTS-49381 | 100% | 2025-06-09 | 2025-07-24 | Precon | GMP | Preconstruction | CFCI Procurement | BAB | 01ADMIN | Preconstruction |

| ID | WBS | Activity | Duration | Start | Finish | Predecessors | Complete | Planned start | Planned finish | Allucent CSI Group | Project Section | Layton Discipline | Baseline | Project Section-1 | Precon Phase | Contract |
| --- | --- | --- | --- | --- | --- | --- | --- | --- | --- | --- | --- | --- | --- | --- | --- | --- |
|  | 9 | **Sequence 711** |  | 2025-06-25 | 2025-08-13 |  |  |  |  |  |  |  |  |  |  |  |
| QTS-49261 |  | Stair Steel Procurement (Sequence 711) | 30d | 2025-06-25 A | 2025-08-13 A | QTS-49381 | 100% | 2025-06-25 | 2025-08-06 | 01ADMIN | Preconstruction | Precon | GMP | Preconstruction | CFCI Procurement | BAB |
|  | 34 | **Supplemental Steel** |  | 2025-06-19 | 2025-08-01 |  |  |  |  |  |  |  |  |  |  |  |
| QTS-50801 |  | Supplemental Steel Zone 1 Procurement | 31d | 2025-06-19 A | 2025-08-01 A | QTS-1371 SS | 100% | 2025-06-25 | 2025-08-07 | 01ADMIN | Preconstruction | Precon | GMP | Preconstruction | CFCI Procurement | BAB |
|  | 28 | **RTU Curbs** |  | 2025-04-09 | 2025-07-21 |  |  |  |  |  |  |  |  |  |  |  |
| QTS-17891 |  | Prepare RTU Curb Submittals | 10d | 2025-04-09 A | 2025-05-20 A | QTS-9851 | 100% | 2025-04-09 | 2025-04-22 |  |  | Precon | GMP | Preconstruction | CFCI Procurement | BAB |
| QTS-18741 |  | Layton Review RTU Curb Submittals | 1d | 2025-05-21 A | 2025-05-21 A | QTS-17891 | 100% |  |  |  |  | Precon | GMP | Preconstruction | CFCI Procurement | BAB |
| QTS-18821 |  | Design Team Review & Approve RTU Curb Submittals | 8d | 2025-05-22 A | 2025-06-03 A | QTS-18741 | 100% |  |  |  |  | Precon | GMP | Preconstruction | CFCI Procurement | BAB |
| QTS-19121 |  | RTU Curbs Procurement | 40d | 2025-06-04 A | 2025-07-21 A | QTS-18821 | 100% | 2025-06-04 | 2025-07-30 | 01ADMIN | Preconstruction | Precon | GMP | Preconstruction | CFCI Procurement | BAB |
|  | 5 | **Interior Frames/ Doors** |  | 2025-04-08 | 2026-05-12 |  |  |  |  |  |  |  |  |  |  |  |
| QTS-9791 |  | Prepare Frame/ Door Submittals | 22d | 2025-04-08 A | 2025-04-16 A | QTS-9711 | 100% | 2025-04-08 | 2025-05-07 |  |  | Precon | GMP | Preconstruction | CFCI Procurement | BAB |
| QTS-12101 |  | Layton Review Frame/ Door Submittals | 3d | 2025-04-17 A | 2025-06-23 A | QTS-9791 | 100% | 2025-04-17 | 2025-04-21 |  |  | Precon | GMP | Preconstruction | CFCI Procurement | BAB |
| QTS-12641 |  | Design Team Review & Approve Frame/Door Submittals | 6d | 2025-06-24 A | 2025-07-01 A | QTS-12101 | 100% |  |  | 01ADMIN | Preconstruction | Precon | GMP | Preconstruction | CFCI Procurement | BAB |
| QTS-44761 |  | Layton Review Frame/ Door Shop Drawings | 25d | 2025-07-02 A | 2025-08-13 A | QTS-12641 | 100% | 2025-07-02 | 2025-08-06 | 01ADMIN | Preconstruction | Precon | GMP | Preconstruction | CFCI Procurement | BAB |
| QTS-44771 |  | Design Team Review & Approve Frame/Door Shop Drawings | 2d | 2025-08-14 A | 2025-08-29 A | QTS-44761 | 100% | 2025-08-14 | 2025-08-15 | 01ADMIN | Preconstruction | Precon | GMP | Preconstruction | CFCI Procurement | BAB |
| QTS-15231 |  | FOH / Zone 1 Frame Procurement | 50d | 2025-09-02 A | 2025-11-03 A | QTS-44771, QTS-12641 | 100% | 2025-09-02 | 2025-11-10 | 01ADMIN | Preconstruction | Precon | GMP | Preconstruction | CFCI Procurement | BAB |
| QTS-99620 |  | HM Door Frame Procurement | 62d | 2025-09-23 A | 2025-12-09 A | QTS-44771 | 100% | 2025-09-02 | 2025-11-26 | 01ADMIN | Preconstruction | Precon | GMP | Preconstruction | CFCI Procurement | BAB |
| QTS-99630 |  | HM Door Procurement | 62d | 2025-09-23 A | 2026-01-27 A | QTS-44771 | 100% | 2025-09-02 | 2025-11-26 | 01ADMIN | Preconstruction | Precon | GMP | Preconstruction | CFCI Procurement | BAB |
| QTS-99640 |  | Wood Door Procurement | 75d | 2025-09-23 A | 2026-05-12 A | QTS-44771 | 100% | 2025-09-02 | 2025-12-17 | 01ADMIN | Preconstruction | Precon | GMP | Preconstruction | CFCI Procurement | BAB |
| QTS-99650 |  | Door Hardware Procurement | 52d | 2025-09-23 A | 2025-12-10 A | QTS-44771 | 100% | 2025-09-02 | 2025-11-12 | 01ADMIN | Preconstruction | Precon | GMP | Preconstruction | CFCI Procurement | BAB |
|  | 29 | **Exterior Door Frames** |  | 2025-04-08 | 2025-06-10 |  |  |  |  |  |  |  |  |  |  |  |
| QTS-9861 |  | Prepare Exterior Door Frames Submittals | 10d | 2025-04-08 A | 2025-04-16 A | QTS-9711 | 100% | 2025-04-08 | 2025-04-21 |  |  | Precon | GMP | Preconstruction | CFCI Procurement | BAB |
| QTS-11751 |  | Layton Review Exterior Door Frames Submittals | 2d | 2025-04-15 A | 2025-04-16 A | QTS-9861 FF, QTS-9861 SS+5d | 100% |  |  |  |  | Precon | GMP | Preconstruction | CFCI Procurement | BAB |
| QTS-12111 |  | Design Team Review & Approve Exterior Door Frames Submittals | 10d | 2025-04-17 A | 2025-05-07 A | QTS-11751 | 100% | 2025-04-17 | 2025-04-30 |  |  | Precon | GMP | Preconstruction | CFCI Procurement | BAB |
| QTS-13611 |  | Exterior Frames Procurement | 12d | 2025-05-08 A | 2025-06-10 A | QTS-12111 | 100% | 2025-05-08 | 2025-05-23 |  |  | Precon | GMP | Preconstruction | CFCI Procurement | BAB |

Notes:
- QTS-44771: allucent_notes: Jack Garrett on 2025-08-19 09:08: This is the final due date for the revised submittal after receiving the Approved as Noted Submittal. / allucent_notes: 2025-08-19 09:08 - User: Jack Garrett - Date Added: 2025-08-19 09:08 - Note: This is the final due date for the revised submittal after receiving the Approved as Noted Submittal.
- QTS-15231: allucent_notes_20251104_160200: Jack Garrett on 2025-10-27 10:10: Pushed back to 10/30. / Jack Garrett on 2025-11-04 08:11: anchor issues from supplier frame delivery delayed till 11/3/2025 / allucent_notes_20251028_163138: Jack Garrett on 2025-10-27 10:10: Pushed back to 10/30. / allucent_notes_20251027_224008: Jack Garrett on 2025-10-27 10:10: Pushed back to 10/30. / allucent_notes: 2025-10-27 10:10 - User: Jack Garrett - Date Added: 2025-10-27 10:10 - Note: Pushed back to 10/30. / 2025-11-04 08:11 - User: Jack Garrett - Date Added: 2025-11-04 08:11 - Note: anchor issues from supplier frame delivery delayed till 11/3/2025
- QTS-99630: allucent_notes_20251230_164549: Jack Garrett on 2025-12-30 09:44: Delayed till mid January. RFI 682. / allucent_notes: 2025-12-30 09:44 - User: Jack Garrett - Date Added: 2025-12-30 09:44 - Note: Delayed till mid January. RFI 682.
- QTS-99650: allucent_notes_20251216_165335: Hunter Wright on 2025-12-09 15:23: arriving 12/10 / allucent_notes_20251209_203830: Hunter Wright on 2025-12-09 15:23: arriving 12/10 / allucent_notes: 2025-12-09 15:23 - User: Hunter Wright - Date Added: 2025-12-09 15:23 - Note: arriving 12/10
- QTS-9861: Schedulers Notes: 10/08/24 - New exterior door frame submittal section created to coordinate / door frame installation during the tilt panel framing process.

| ID | WBS | Activity | Duration | Start | Finish | Predecessors | Complete | Planned start | Planned finish | Layton Discipline | Baseline | Project Section-1 | Precon Phase | Contract | Allucent CSI Group | Project Section | Notes | Fragnet | Fragnet Responsible Party |
| --- | --- | --- | --- | --- | --- | --- | --- | --- | --- | --- | --- | --- | --- | --- | --- | --- | --- | --- | --- |
|  | 19 | **Curtain Wall/ Glazing** |  | 2025-03-14 | 2026-05-21 |  |  |  |  |  |  |  |  |  |  |  |  |  |  |
| QTS-16461 |  | Prepare Curtain Wall/ Glazing Submittals | 35d | 2025-03-14 A | 2025-05-23 A | QTS-16171 | 100% | 2025-03-14 | 2025-05-01 | Precon | GMP | Preconstruction | CFCI Procurement | BAB |  |  |  |  |  |
| QTS-16471 |  | Layton Review Curtain Wall/ Glazing Submittals | 3d | 2025-05-27 A | 2025-05-27 A | QTS-16461 | 100% | 2025-05-27 | 2025-05-29 | Precon | GMP | Preconstruction | CFCI Procurement | BAB |  |  |  |  |  |
| QTS-16801 |  | Design Team Review & Approve Curtain Wall/ Glazing Submittals | 15d | 2025-05-28 A | 2025-07-02 A | QTS-16471 | 100% | 2025-05-28 | 2025-06-17 | Precon | GMP | Preconstruction | CFCI Procurement | BAB | 01ADMIN | Preconstruction |  |  |  |
| QTS-18561 |  | Curtain Wall/ Glazing Procurement | 90d | 2025-07-08 A | 2025-10-17 A | QTS-16801, QTS-11901 | 100% | 2025-07-03 | 2025-11-07 | Precon | GMP | Preconstruction | CFCI Procurement | BAB | 01ADMIN | Preconstruction |  |  |  |
|  | 46 | **Fragnet // Glazing** |  | 2026-04-15 | 2026-05-21 |  |  |  |  |  |  |  |  |  |  |  |  |  |  |
| QTS-1011070 |  | Fragnet // Procurement - Glazing for FOH Interior Doors | 5d | 2026-04-15 A | 2026-05-21 A | QTS-1371 | 100% | 2026-04-15 | 2026-04-21 | Precon | GMP | Preconstruction | CFCI Procurement | BAB | 01ADMIN | Preconstruction | Design Change | Fragnet | Giroux Glass, Inc |
| QTS-1011080 |  | Fragnet // Procurement - Glazing for Security Office Deal Trays & Communications | 5d | 2026-04-15 A | 2026-05-21 A | QTS-1371 | 100% | 2026-04-15 | 2026-04-21 | Precon | GMP | Preconstruction | CFCI Procurement | BAB | 01ADMIN | Preconstruction |  | Fragnet | Giroux Glass, Inc |
| QTS-1011090 |  | Fragnet // Procurement - Glazing for Main Vestibule Door | 5d | 2026-04-15 A | 2026-05-21 A | QTS-1371 | 100% | 2026-04-15 | 2026-04-21 | Precon | GMP | Preconstruction | CFCI Procurement | BAB | 01ADMIN | Preconstruction |  | Fragnet | Giroux Glass, Inc |
| QTS-1011100 |  | Fragnet // Procurement - Glazing for Stair Glass and Cladding | 5d | 2026-04-15 A | 2026-05-21 A | QTS-1371 | 100% | 2026-04-15 | 2026-04-21 | Precon | GMP | Preconstruction | CFCI Procurement | BAB | 01ADMIN | Preconstruction |  | Fragnet | Giroux Glass, Inc |
| QTS-1011110 |  | Fragnet // Procurement - Glazing for BOH Interior Doors | 5d | 2026-04-15 A | 2026-05-21 A | QTS-1371 | 100% | 2026-04-15 | 2026-04-21 | Precon | GMP | Preconstruction | CFCI Procurement | BAB | 01ADMIN | Preconstruction |  | Fragnet | Giroux Glass, Inc |
|  | 17 | **Waterproofing** |  | 2025-04-11 | 2025-05-07 |  |  |  |  |  |  |  |  |  |  |  |  |  |  |
| QTS-8691 |  | Prepare Waterproofing Submittals | 3d | 2025-04-11 A | 2025-04-11 A | QTS-7001 | 100% | 2025-04-11 | 2025-04-15 | Precon | GMP | Preconstruction | CFCI Procurement | BAB |  |  |  |  |  |
| QTS-9781 |  | Layton Review Waterproofing Submittals | 1d | 2025-04-14 A | 2025-04-14 A | QTS-8691 FF, QTS-8691 SS+2d | 100% |  |  | Precon | GMP | Preconstruction | CFCI Procurement | BAB |  |  |  |  |  |
| QTS-10071 |  | Design Team Review & Approve Waterproofing Submittals | 5d | 2025-04-15 A | 2025-04-22 A | QTS-9781 | 100% | 2025-04-15 | 2025-04-21 | Precon | GMP | Preconstruction | CFCI Procurement | BAB |  |  |  |  |  |
| QTS-10081 |  | Waterproofing Procurement | 6d | 2025-04-23 A | 2025-05-07 A | QTS-10071 | 100% | 2025-04-23 | 2025-04-30 | Precon | GMP | Preconstruction | CFCI Procurement | BAB |  |  |  |  |  |
|  | 13 | **Roofing** |  | 2025-04-08 | 2025-09-02 |  |  |  |  |  |  |  |  |  |  |  |  |  |  |
| QTS-16141 |  | Prepare Roofing Submittals | 10d | 2025-04-08 A | 2025-04-11 A | QTS-16021 | 100% | 2025-04-08 | 2025-04-21 | Precon | GMP | Preconstruction | CFCI Procurement | BAB |  |  |  |  |  |
| QTS-17641 |  | Layton Review Roofing Submittals | 1d | 2025-04-14 A | 2025-05-19 A | QTS-16141 | 100% | 2025-04-14 | 2025-04-14 | Precon | GMP | Preconstruction | CFCI Procurement | BAB |  |  |  |  |  |
| QTS-17871 |  | Design Team Review & Approve Roofing Submittals | 1d | 2025-05-20 A | 2025-05-20 A | QTS-17641 | 100% |  |  | Precon | GMP | Preconstruction | CFCI Procurement | BAB |  |  |  |  |  |
| QTS-18881 |  | Roofing Procurement | 38d | 2025-07-02 A | 2025-09-02 A | QTS-17871 | 100% | 2025-06-25 | 2025-08-18 | Precon | GMP | Preconstruction | CFCI Procurement | BAB | 01ADMIN | Preconstruction |  |  |  |
|  | 9 | **Overhead Doors** |  | 2025-03-17 | 2025-12-12 |  |  |  |  |  |  |  |  |  |  |  |  |  |  |
| QTS-10091 |  | Prepare OH Doors Submittals | 15d | 2025-03-17 A | 2025-03-31 A | QTS-9891 | 100% | 2025-03-17 | 2025-04-04 | Precon | GMP | Preconstruction | CFCI Procurement | BAB |  |  |  |  |  |
| QTS-13121 |  | Layton Review OH Doors Submittals | 1d | 2025-04-01 A | 2025-04-01 A | QTS-10091 | 100% |  |  | Precon | GMP | Preconstruction | CFCI Procurement | BAB |  |  |  |  |  |
| QTS-13491 |  | Design Team Review & Approve OH Doors Submittals | 12d | 2025-04-02 A | 2025-04-17 A | QTS-13121 | 100% |  |  | Precon | GMP | Preconstruction | CFCI Procurement | BAB |  |  |  |  |  |
| QTS-16151 |  | OH Doors Procurement | 100d | 2025-04-18 A | 2025-12-12 A | QTS-13491 | 100% | 2025-04-18 | 2025-09-09 | Precon | GMP | Preconstruction | CFCI Procurement | BAB | 01ADMIN | Preconstruction |  |  |  |

Notes:
- QTS-1011070: Scheduler Notes: Design Change
- QTS-8691: Schedulers Notes: 08/07/24 - To mitigate schedule delay, Layton requested waterproofing / submittals prior to execution of the GMP and execution of the subcontract.
- QTS-16151: allucent_notes_20251216_165335: Andrew Melis on 2025-09-17 09:09: The OH Doors are ordered based on field measurements. They are planning to start field measuring doors next week for FOH / allucent_notes_20251209_203830: Andrew Melis on 2025-09-17 09:09: The OH Doors are ordered based on field measurements. They are planning to start field measuring doors next week for FOH / allucent_notes_20251202_153722: Andrew Melis on 2025-09-17 09:09: The OH Doors are ordered based on field measurements. They are planning to start field measuring doors next week for FOH / allucent_notes_20251118_192630: Andrew Melis on 2025-09-17 09:09: The OH Doors are ordered based on field measurements. They are planning to start field measuring doors next week for FOH / allucent_notes_20251111_182405: Andrew Melis on 2025-09-17 09:09: The OH Doors are ordered based on field measurements. They are planning to start field measuring doors next week for FOH / allucent_notes_20251104_160200: Andrew Melis on 2025-09-17 09:09: The OH Doors are ordered based on field measurements. They are planning to start field measuring doors next week for FOH / allucent_notes_20251028_163138: Andrew Melis on 2025-09-17 09:09: The OH Doors are ordered based on field measurements. They are planning to start field measuring doors next week for FOH / allucent_notes_20251027_224008: Andrew Melis on 2025-09-17 09:09: The OH Doors are ordered based on field measurements. They are planning to start field measuring doors next week for FOH / allucent_notes_20251021_145627: Andrew Melis on 2025-09-17 09:09: The OH Doors are ordered based on field measurements. They are planning to start field measuring doors next week for FOH / allucent_notes_20251014_152335: Andrew Melis on 2025-09-17 09:09: The OH Doors are ordered based on field measurements. They are planning to start field measuring doors next week for FOH / allucent_notes: 2025-09-17 09:09 - User: Andrew Melis - Date Added: 2025-09-17 09:09 - Note: The OH Doors are ordered based on field measurements. They are planning to start field measuring doors next week for FOH

| ID | WBS | Activity | Duration | Start | Finish | Predecessors | Complete | Planned start | Planned finish | Calendar | Layton Discipline | Baseline | Project Section-1 | Precon Phase | Contract | Allucent CSI Group | Project Section |
| --- | --- | --- | --- | --- | --- | --- | --- | --- | --- | --- | --- | --- | --- | --- | --- | --- | --- |
|  | 7 | **Freight Elevators** |  | 2025-03-26 | 2026-01-09 |  |  |  |  |  |  |  |  |  |  |  |  |
| QTS-14611 |  | Prepare Freight Elevator E2 Shop Drawings | 11d | 2025-03-26 A | 2025-04-23 A | QTS-9761 FF | 100% | 2025-03-26 | 2025-04-09 |  | Precon | GMP | Preconstruction | CFCI Procurement | BAB |  |  |
| QTS-9761 |  | Prepare Freight Elevator E4 Shop Drawings | 10d | 2025-03-26 A | 2025-04-23 A | QTS-1411 SS+10d, QTS-1351 SS, QTS-9711 | 100% | 2025-03-26 | 2025-04-08 |  | Precon | GMP | Preconstruction | CFCI Procurement | BAB |  |  |
| QTS-15561 |  | Layton Review Freight Elevator E2 Shop Drawings | 5d | 2025-04-24 A | 2025-05-07 A | QTS-14611 | 100% | 2025-04-24 | 2025-04-30 |  | Precon | GMP | Preconstruction | CFCI Procurement | BAB |  |  |
| QTS-18571 |  | Layton Review Freight Elevator E4 Shop Drawings | 5d | 2025-04-24 A | 2025-05-07 A | QTS-9761 | 100% | 2025-04-24 | 2025-04-30 |  | Precon | GMP | Preconstruction | CFCI Procurement | BAB |  |  |
| QTS-15811 |  | Design Team Review & Approve Freight Elevator E2 Shop Drawings | 5d | 2025-05-08 A | 2025-05-13 A | QTS-15561 | 100% | 2025-05-08 | 2025-05-14 |  | Precon | GMP | Preconstruction | CFCI Procurement | BAB |  |  |
| QTS-18601 |  | Design Team Review & Approve Freight Elevator E4 Shop Drawings | 5d | 2025-05-08 A | 2025-05-13 A | QTS-18571 | 100% | 2025-05-08 | 2025-05-14 |  | Precon | GMP | Preconstruction | CFCI Procurement | BAB |  |  |
| QTS-17311 |  | FOH Freight Elevator E2 Procurement | 140d | 2025-05-14 A | 2026-01-09 A | QTS-15811, QTS-1411, QTS-15571 | 100% | 2025-05-14 | 2025-10-27 | QTS-PHX3 DC1 - 6 day w/ Holidays | Precon | GMP | Preconstruction | CFCI Procurement | BAB | 01ADMIN | Preconstruction |
| QTS-18861 |  | BOH Freight Elevator E4 Procurement | 140d | 2025-05-14 A | 2025-12-29 A | QTS-1411, QTS-15571, QTS-18601 | 100% | 2025-05-14 | 2025-12-02 |  | Precon | GMP | Preconstruction | CFCI Procurement | BAB | 01ADMIN | Preconstruction |
|  | 31 | **Freight Elevator Doors** |  | 2025-03-26 | 2025-05-07 |  |  |  |  |  |  |  |  |  |  |  |  |
| QTS-14621 |  | Prepare Freight Elevator Shop Drawings | 5d | 2025-03-26 A | 2025-04-23 A | QTS-9761 FF | 100% | 2025-03-26 | 2025-04-01 |  | Precon | GMP | Preconstruction | CFCI Procurement | BAB |  |  |
| QTS-15571 |  | Layton Review Freight Elevator Shop Drawings | 5d | 2025-04-24 A | 2025-05-07 A | QTS-14621 | 100% | 2025-04-24 | 2025-04-30 |  | Precon | GMP | Preconstruction | CFCI Procurement | BAB |  |  |
|  | 23 | **Passenger Elevator** |  | 2025-03-26 | 2025-12-01 |  |  |  |  |  |  |  |  |  |  |  |  |
| QTS-17041 |  | Prepare Passenger Elevator E1 Shop Drawings | 11d | 2025-03-26 A | 2025-04-23 A | QTS-9771 SS | 100% | 2025-03-26 | 2025-04-09 |  | Precon | GMP | Preconstruction | CFCI Procurement | BAB |  |  |
| QTS-9771 |  | Prepare Passenger Elevator E3 Shop Drawings | 11d | 2025-03-26 A | 2025-04-23 A | QTS-1411, QTS-1351 SS, QTS-9711 | 100% | 2025-03-26 | 2025-04-09 |  | Precon | GMP | Preconstruction | CFCI Procurement | BAB |  |  |
| QTS-17031 |  | Layton Review Passenger Elevator E3 Shop Drawings | 5d | 2025-04-24 A | 2025-05-07 A | QTS-9771 | 100% | 2025-04-24 | 2025-04-30 |  | Precon | GMP | Preconstruction | CFCI Procurement | BAB |  |  |
| QTS-21751 |  | Layton Review Passenger Elevator E1 Shop Drawings | 5d | 2025-04-24 A | 2025-05-07 A | QTS-17041 | 100% | 2025-04-24 | 2025-04-30 |  | Precon | GMP | Preconstruction | CFCI Procurement | BAB |  |  |
| QTS-17501 |  | Design Team Review & Approve Passenger Elevator E3 Shop Drawings | 5d | 2025-05-08 A | 2025-05-13 A | QTS-17031 | 100% | 2025-05-08 | 2025-05-14 |  | Precon | GMP | Preconstruction | CFCI Procurement | BAB |  |  |
| QTS-21851 |  | Design Team Review & Approve Passenger Elevator E1 Shop Drawings | 5d | 2025-05-08 A | 2025-05-13 A | QTS-21751 | 100% | 2025-05-08 | 2025-05-14 |  | Precon | GMP | Preconstruction | CFCI Procurement | BAB |  |  |
| QTS-22571 |  | Passenger Elevator E1 Procurement | 140d | 2025-05-14 A | 2025-11-24 A | QTS-1411, QTS-21851 | 100% | 2025-05-14 | 2025-12-02 |  | Precon | GMP | Preconstruction | CFCI Procurement | BAB | 01ADMIN | Preconstruction |
| QTS-44081 |  | Passenger Elevator E3 Procurement | 140d | 2025-05-14 A | 2025-12-01 A | QTS-17501 | 100% | 2025-05-14 | 2025-12-02 |  | Precon | GMP | Preconstruction | CFCI Procurement | BAB | 01ADMIN | Preconstruction |
|  | 2 | **Site Water** |  | 2025-04-28 | 2025-08-15 |  |  |  |  |  |  |  |  |  |  |  |  |
| QTS-10971 |  | Prepare Site Water Submittals | 10d | 2025-04-28 A | 2025-05-06 A | QTS-3261 SS+25d | 100% | 2025-04-28 | 2025-05-09 |  | Precon | GMP | Preconstruction | CFCI Procurement | BAB |  |  |
| QTS-12911 |  | Layton Review Site Water Submittals | 1d | 2025-05-07 A | 2025-05-09 A | QTS-10971 | 100% | 2025-05-07 | 2025-05-07 |  | Precon | GMP | Preconstruction | CFCI Procurement | BAB |  |  |
| QTS-13151 |  | Design Team Review & Approve Site Water Submittals | 15d | 2025-05-12 A | 2025-07-02 A | QTS-12911 | 100% | 2025-05-12 | 2025-06-02 |  | Precon | GMP | Preconstruction | CFCI Procurement | BAB | 01ADMIN | Preconstruction |
| QTS-15701 |  | Water Line Piping Procurement | 10d | 2025-07-03 A | 2025-08-15 A | QTS-13111, QTS-13151 | 100% | 2025-06-26 | 2025-07-10 |  | Precon | GMP | Preconstruction | CFCI Procurement | BAB | 01ADMIN | Preconstruction |

Notes:
- QTS-17311: allucent_notes_20251216_165335: Andrew Melis on 2025-12-02 13:46: 12/10 ETA / Andrew Melis on 2025-12-16 12:23: elevator not yet delivered onsite / allucent_notes_20251209_203830: Andrew Melis on 2025-12-02 13:46: 12/10 ETA / allucent_notes_20251202_153722: Andrew Melis on 2025-12-02 13:46: 12/10 ETA / allucent_notes_20251230_164549: Andrew Melis on 2025-12-02 13:46: 12/10 ETA / Andrew Melis on 2025-12-16 12:23: elevator not yet delivered onsite / Andrew Melis on 2025-12-30 13:04: pending arrival / allucent_notes: 2025-12-02 13:46 - User: Andrew Melis - Date Added: 2025-12-02 13:46 - Note: 12/10 ETA / 2025-12-16 12:23 - User: Andrew Melis - Date Added: 2025-12-16 12:23 - Note: elevator not yet delivered onsite / 2025-12-30 13:04 - User: Andrew Melis - Date Add
- QTS-18861: allucent_notes_20251216_165335: Andrew Melis on 2025-12-02 13:46: 12/10 ETA / Andrew Melis on 2025-12-16 12:24: Material is not yet delivered to site / allucent_notes_20251209_203830: Andrew Melis on 2025-12-02 13:46: 12/10 ETA / allucent_notes_20251202_153722: Andrew Melis on 2025-12-02 13:46: 12/10 ETA / allucent_notes_20251230_164549: Andrew Melis on 2025-12-02 13:46: 12/10 ETA / Andrew Melis on 2025-12-16 12:24: Material is not yet delivered to site / allucent_notes: 2025-12-02 13:46 - User: Andrew Melis - Date Added: 2025-12-02 13:46 - Note: 12/10 ETA / 2025-12-16 12:24 - User: Andrew Melis - Date Added: 2025-12-16 12:24 - Note: Material is not yet delivered to site
- QTS-22571: allucent_notes_20251202_153722: Andrew Melis on 2025-12-02 13:46: Delivered / allucent_notes: 2025-12-02 13:46 - User: Andrew Melis - Date Added: 2025-12-02 13:46 - Note: Delivered
- QTS-44081: allucent_notes_20251202_153722: Andrew Melis on 2025-12-02 13:46: early delivery / allucent_notes: 2025-12-02 13:46 - User: Andrew Melis - Date Added: 2025-12-02 13:46 - Note: early delivery

| ID | WBS | Activity | Duration | Start | Finish | Predecessors | Complete | Planned start | Planned finish | Allucent CSI Group | Project Section | Layton Discipline | Baseline | Project Section-1 | Precon Phase | Contract | Notes | Level | Fragnet | Fragnet Responsible Party |
| --- | --- | --- | --- | --- | --- | --- | --- | --- | --- | --- | --- | --- | --- | --- | --- | --- | --- | --- | --- | --- |
|  | 15 | **Site Sewer** |  | 2025-07-02 | 2025-08-19 |  |  |  |  |  |  |  |  |  |  |  |  |  |  |  |
| QTS-10981 |  | Prepare Site Sewer Submittals | 10d | 2025-07-02 A | 2025-07-16 A | QTS-3261 SS+25d | 100% | 2025-06-25 | 2025-07-09 | 01ADMIN | Preconstruction | Precon | GMP | Preconstruction | CFCI Procurement | BAB |  |  |  |  |
| QTS-12921 |  | Layton Review Site Sewer Submittals | 1d | 2025-07-17 A | 2025-07-17 A | QTS-10981 | 100% |  |  | 01ADMIN | Preconstruction | Precon | GMP | Preconstruction | CFCI Procurement | BAB |  |  |  |  |
| QTS-13161 |  | Design Team Review & Approve Site Sewer Submittals | 15d | 2025-07-18 A | 2025-07-18 A | QTS-12921 | 100% | 2025-07-18 | 2025-08-07 | 01ADMIN | Preconstruction | Precon | GMP | Preconstruction | CFCI Procurement | BAB |  |  |  |  |
| QTS-18031 |  | Sanitary Line Piping Procurement | 10d | 2025-08-13 A | 2025-08-19 A | QTS-13161 | 100% | 2025-08-15 | 2025-08-28 | 01ADMIN | Preconstruction | Precon | GMP | Preconstruction | CFCI Procurement | BAB |  |  |  |  |
|  | 24 | **Site Storm (Reinforced Concrete Piping)** |  | 2025-03-17 | 2025-07-16 |  |  |  |  |  |  |  |  |  |  |  |  |  |  |  |
| QTS-10961 |  | Prepare Site Storm Submittals | 10d | 2025-03-17 A | 2025-05-23 A | QTS-3261 SS+25d | 100% | 2025-03-17 | 2025-03-28 |  |  | Precon | GMP | Preconstruction | CFCI Procurement | BAB |  |  |  |  |
| QTS-12891 |  | Layton Review Site Storm Submittals | 1d | 2025-05-27 A | 2025-05-27 A | QTS-10961 | 100% |  |  |  |  | Precon | GMP | Preconstruction | CFCI Procurement | BAB |  |  |  |  |
| QTS-13111 |  | Design Team Review & Approve Site Storm Submittals | 10d | 2025-05-28 A | 2025-06-06 A | QTS-12891 | 100% | 2025-05-28 | 2025-06-10 | 01ADMIN | Preconstruction | Precon | GMP | Preconstruction | CFCI Procurement | BAB |  |  |  |  |
| QTS-14891 |  | Storm Line Piping Procurement | 15d | 2025-06-25 A | 2025-07-16 A | QTS-13111 | 100% | 2025-06-26 | 2025-07-17 | 01ADMIN | Preconstruction | Precon | GMP | Preconstruction | CFCI Procurement | BAB |  |  |  |  |
|  | 4 | **Water Meter Vault** |  | 2025-07-07 | 2025-07-18 |  |  |  |  |  |  |  |  |  |  |  |  |  |  |  |
| QTS-12091 |  | Prepare Water Meter Vault Submittals | 10d | 2025-07-07 A | 2025-07-18 A | QTS-3261 | 100% | 2025-06-26 | 2025-07-10 | 01ADMIN | Preconstruction | Precon | GMP | Preconstruction | CFCI Procurement | BAB |  |  |  |  |
| QTS-13481 |  | Layton Review Water Meter Vault Submittals | 1d | 2025-07-18 A | 2025-07-18 A | QTS-12091 SS, QTS-12091 FF | 100% |  |  | 01ADMIN | Preconstruction | Precon | GMP | Preconstruction | CFCI Procurement | BAB |  |  |  |  |
|  | 30 | **Storm/Trench Drain** |  | 2025-07-14 | 2025-10-15 |  |  |  |  |  |  |  |  |  |  |  |  |  |  |  |
| QTS-17271 |  | Prepare Trench Drain Submittals | 5d | 2025-07-14 A | 2025-07-18 A | QTS-3261, QTS-9711 | 100% |  |  | 01ADMIN | Preconstruction | Precon | GMP | Preconstruction | CFCI Procurement | BAB |  |  |  |  |
| QTS-17901 |  | Layton Review Trench Drain Submittals | 1d | 2025-07-18 A | 2025-07-18 A | QTS-17271 SS, QTS-17271 FF | 100% |  |  | 01ADMIN | Preconstruction | Precon | GMP | Preconstruction | CFCI Procurement | BAB |  |  |  |  |
| QTS-18041 |  | Design Team Review & Approve Trench Drain Submittals | 10d | 2025-07-21 A | 2025-07-21 A | QTS-17901 | 100% | 2025-07-21 | 2025-08-01 | 01ADMIN | Preconstruction | Precon | GMP | Preconstruction | CFCI Procurement | BAB |  |  |  |  |
| QTS-18781 |  | Trench Drains Procurement | 15d | 2025-08-13 A | 2025-10-15 A | QTS-18041 | 100% | 2025-08-14 | 2025-09-04 | 01ADMIN | Preconstruction | Precon | GMP | Preconstruction | CFCI Procurement | BAB |  |  |  |  |
|  | 6 | **Metal Panels** |  | 2025-04-09 | 2026-05-11 |  |  |  |  |  |  |  |  |  |  |  |  |  |  |  |
|  | 2 | **Fragnet - Metal Panels** |  | 2026-03-17 | 2026-05-11 |  |  |  |  |  |  |  |  |  |  |  |  |  |  |  |
| QTS-1009430 |  | Fragnet / RFI #907 Procure Collector Boxes | 10d | 2026-03-17 A | 2026-05-11 A | QTS-1009420 | 100% | 2026-02-23 | 2026-03-06 |  | Construction | Precon | IGMP |  |  | BAB | RFI 907 to procure and attach collector boxes to ACM panel | Roof | Fragnet | True Metal Solutions, LLC |
|  | 1 | **Metal Panels - Existing Scope** |  | 2025-04-09 | 2026-01-12 |  |  |  |  |  |  |  |  |  |  |  |  |  |  |  |
| QTS-10101 |  | Prepare Metal Panels Submittals | 15d | 2025-04-09 A | 2025-04-29 A | QTS-9881 | 100% |  |  |  |  | Precon | GMP | Preconstruction | CFCI Procurement | BAB |  |  |  |  |
| QTS-13131 |  | Layton Review Metal Panels Submittals | 3d | 2025-04-30 A | 2025-06-26 A | QTS-10101 | 100% | 2025-04-30 | 2025-05-02 | 01ADMIN | Preconstruction | Precon | GMP | Preconstruction | CFCI Procurement | BAB |  |  |  |  |
| QTS-13501 |  | Design Team Review & Approve Metal Panels Submittals | 10d | 2025-06-27 A | 2025-08-28 A | QTS-13131 | 100% | 2025-06-30 | 2025-07-14 | 01ADMIN | Preconstruction | Precon | GMP | Preconstruction | CFCI Procurement | BAB |  |  |  |  |
| QTS-16161 |  | Metal Panels Material Procurement | 40d | 2025-07-14 A | 2025-11-14 A | QTS-13501 SS | 100% | 2025-07-14 | 2025-09-08 | 01ADMIN | Preconstruction | Precon | GMP | Preconstruction | CFCI Procurement | BAB |  |  |  |  |
| QTS-15801 |  | Zone 3 / Fabricate & Deliver Metal Panels | 20d | 2025-11-17 A | 2026-01-12 A | QTS-16161 | 100% | 2025-11-17 | 2025-12-16 |  | Preconstruction | Precon | GMP |  | CFCI Procurement | BAB |  |  |  |  |
| QTS-25411 |  | Zone 1 / Fabricate & Deliver Metal Panels | 20d | 2025-11-17 A | 2025-12-16 A | QTS-16161, QTS-24861 | 100% |  |  | 01ADMIN | Preconstruction | Precon | GMP |  | CFCI Procurement | BAB |  |  |  |  |
| QTS-25821 |  | Zone 2 / Fabricate & Deliver Metal Panels | 20d | 2025-11-17 A | 2026-01-12 A | QTS-16161 | 100% | 2025-11-17 | 2025-12-16 | 01ADMIN | Preconstruction | Precon | GMP |  | CFCI Procurement | BAB |  |  |  |  |

Notes:
- QTS-13161: allucent_notes: John Capriotti on 2025-08-19 15:08: Site sewer sent in 4/2 and approved 4/15 / John Capriotti on 2025-08-19 15:08: Site sewer sent in 4/2 and approved 4/15 / allucent_notes: 2025-08-19 15:08 - User: John Capriotti - Date Added: 2025-08-19 15:08 - Note: Site sewer sent in 4/2 and approved 4/15 / 2025-08-19 15:08 - User: John Capriotti - Date Added: 2025-08-19 15:08 - Note: Site sewer sent in 4/2 and approved 4/15
- QTS-18031: allucent_notes: John Capriotti on 2025-08-19 15:08: Confirmed with C&S Team / allucent_notes: 2025-08-19 15:08 - User: John Capriotti - Date Added: 2025-08-19 15:08 - Note: Confirmed with C&S Team
- QTS-18041: allucent_notes: Jason Johnston on 2025-08-12 18:08: Need response from team / allucent_notes: 2025-08-12 18:08 - User: Jason Johnston - Date Added: 2025-08-12 18:08 - Note: Need response from team / 2025-08-19 15:08 - User: John Capriotti - Date Added: 2025-08-19 15:08 - Note: Updated this to the correct submittal date. This was when it was sent
- QTS-18781: allucent_notes_20251021_145627: Jason Johnston on 2025-09-30 15:09: Waiting for update. / Jason Johnston on 2025-10-14 15:10: Drelan getting me info 10/15 / allucent_notes_20251014_152335: Jason Johnston on 2025-09-30 15:09: Waiting for update. / Jason Johnston on 2025-10-14 15:10: Drelan getting me info 10/15 / allucent_notes: 2025-09-30 15:09 - User: Jason Johnston - Date Added: 2025-09-30 15:09 - Note: Waiting for update. / 2025-10-14 15:10 - User: Jason Johnston - Date Added: 2025-10-14 15:10 - Note: Drelan getting me info 10/15
- QTS-1009430: Scheduler Notes: RFI 907 to procure and attach collector boxes to ACM panel
- QTS-13501: allucent_notes: Andrew Melis on 2025-08-12 15:08: Subcontractor is requiring a revise and resubmit of the ACM shop drawings. / Material has been ordered while the shop drawings are being resubmitted for review. / allucent_notes: 2025-08-12 15:08 - User: Andrew Melis - Date Added: 2025-08-12 15:08 - Note: Subcontractor is requiring a revise and resubmit of the ACM shop drawings. Material has been ordered while the shop drawings are being resubmitted for review. / 2025-08-18 11:
- QTS-16161: allucent_notes_20251118_192630: Andrew Melis on 2025-09-17 09:09: 10/6 is current plan arrival date for the ACM metal panels / Andrew Melis on 2025-10-14 08:10: Balance of metal panel material is arriving 10/23 / Jason Johnston on 2025-10-27 16:10: Andrew's update didn't stick / Andrew Melis on 2025-11-04 09:11: This material is ready to go but not delivered to site. They are forecasting a 11/24 start date / allucent_notes_20251111_182405: Andrew Melis on 2025-09-17 09:09: 10/6 is current plan arrival date for the ACM metal panels / Andrew Melis on 2025-10-14 08:10: Balance of metal panel material is arriving 10/23 / Jason Johnston on 2025-10-27 16:10: Andrew's update didn't stick / Andrew Melis on 2025-11-04 09:11: This material is ready to go but not delivered to site. They are forecasting a 11/24 start date / allucent_notes_20251104_160200: Andrew Melis on 2025-09-17 09:09: 10/6 is current plan arrival date for the ACM metal panels / Andrew Melis on 2025-10-14 08:10: Balance of metal panel material is arriving 10/23 / Jason Johnston on 2025-10-27 16:10: Andrew's update didn't stick / Andrew Melis on 2025-11-04 09:11: This material is ready to go but not delivered to site. They are forecasting a 11/24 start date / allucent_notes_20251028_163138: Andrew Melis on 2025-09-17 09:09: 10/6 is current plan arrival date for the ACM metal panels / Andrew Melis on 2025-10-14 08:10: Balance of metal panel material is arriving 10/23 / Jason Johnston on 2025-10-27 16:10: Andrew's update didn't stick / allucent_notes_20251027_224008: Andrew Melis on 2025-09-17 09:09: 10/6 is current plan arrival date for the ACM metal panels / Andrew Melis on 2025-10-14 08:10: Balance of metal panel material is arriving 10/23 / Jason Johnston on 2025-10-27 16:10: Andrew's update didn't stick / allucent_notes_20251021_145627: Andrew Melis on 2025-09-17 09:09: 10/6 is current plan arrival date for the ACM metal panels / Andrew Melis on 2025-10-14 08:10: Balance of metal panel material is arriving 10/23 / allucent_notes_20251014_152335: Andrew Melis on 2025-09-17 09:09: 10/6 is current plan arrival date for the ACM metal panels / Andrew Melis on 2025-10-14 08:10: Balance of metal panel material is arriving 10/23 / allucent_notes: 2025-09-17 09:09 - User: Andrew Melis - Date Added: 2025-09-17 09:09 - Note: 10/6 is current plan arrival date for the ACM metal panels / 2025-10-14 08:10 - User: Andrew Melis - Date Added: 2025-10-14 08:10 - Note: Balance of metal panel material is ar
- QTS-25821: allucent_notes_20251216_165335: Andrew Melis on 2025-12-16 12:23: material not delivered to site yet. it is being coordinated with the space and availaibility on the roof / allucent_notes_20251230_164549: Andrew Melis on 2025-12-16 12:23: material not delivered to site yet. it is being coordinated with the space and availaibility on the roof / Andrew Melis on 2025-12-30 13:21: Pending arrival / Andrew Melis on 2025-12-30 13:21: pending arrvial / allucent_notes: 2025-12-16 12:23 - User: Andrew Melis - Date Added: 2025-12-16 12:23 - Note: material not delivered to site yet. it is being coordinated with the space and availaibility on the roof / 2025-12-30 13:21 - User: Andrew Melis - Date Added: 2025-12-30 13:21

| ID | WBS | Activity | Duration | Start | Finish | Predecessors | Complete | Planned start | Planned finish | Calendar | Project Section | Phase-1 | Layton Discipline | Baseline | Location | Level | Fragnet | Fragnet Responsible Party | Contract | Allucent CSI Group | Project Section-1 | Precon Phase | Owner Impact Analysis | Layton Super | Delay Notice 07-26 |
| --- | --- | --- | --- | --- | --- | --- | --- | --- | --- | --- | --- | --- | --- | --- | --- | --- | --- | --- | --- | --- | --- | --- | --- | --- | --- |
|  | 8 | **Fire Suppression** |  | 2025-03-24 | 2026-06-23 |  |  |  |  |  |  |  |  |  |  |  |  |  |  |  |  |  |  |  |  |
|  | 1 | **Fragnet / Trystar Docking Station** |  | 2025-08-14 | 2026-02-04 |  |  |  |  |  |  |  |  |  |  |  |  |  |  |  |  |  |  |  |  |
| QTS-120210 |  | Fragnet / Submittal Rejected for Trystar Docking Station | 1d | 2025-08-14 A | 2025-08-14 A | QTS-1030 SS | 100% |  |  |  | Construction | Phase 1 | Precon | IGMP | FOH | Level 1 | Fragnet | Rosendin Electric Inc. | BAB |  |  |  |  |  |  |
| QTS-120220 |  | Fragnet / Design Response from AHJ for Trystar Docking Station | 69d | 2025-08-15 A | 2025-11-20 A | QTS-120210 | 100% |  |  |  | Construction | Phase 1 | Precon | IGMP | FOH | Level 1 | Fragnet | Rosendin Electric Inc. | BAB |  |  |  |  |  |  |
| QTS-120230 |  | Fragnet / Resubmit Submittal for Trystar Docking Station | 7d | 2025-11-21 A | 2025-12-19 A | QTS-120220 | 100% | 2025-11-21 | 2025-12-03 |  | Construction | Phase 1 | Precon | IGMP | FOH | Level 1 | Fragnet | Rosendin Electric Inc. | BAB | 01ADMIN |  |  |  |  |  |
| QTS-120250 |  | Fragnet / Procurement for Trystar Docking Station | 80d | 2025-11-26 A | 2026-02-04 A | QTS-120240 | 100% | 2025-11-26 | 2026-03-27 |  | Construction | Phase 1 | Precon | IGMP | FOH | Level 1 | Fragnet | Rosendin Electric Inc. | BAB | 01ADMIN |  |  |  |  |  |
| QTS-120240 |  | Fragnet / Approved Submittal for Trystar Docking Station | 15d | 2025-12-22 A | 2025-12-22 A | QTS-120230 | 100% | 2025-12-18 | 2026-01-14 |  | Construction | Phase 1 | Precon | IGMP | FOH | Level 1 | Fragnet | Rosendin Electric Inc. | BAB | 01ADMIN |  |  |  |  |  |
|  | 2 | **Fragnet / POD Fire Permit Approval** |  | 2026-04-08 | 2026-06-23 |  |  |  |  |  |  |  |  |  |  |  |  |  |  |  |  |  |  |  |  |
| QTS-1011830 |  | Fragnet HMIS Approval and OFCI POD Battery System | 15d | 2026-04-08 A | 2026-06-09 A | QTS-1011870 FF, QTS-18851 | 100% | 2026-04-08 | 2026-04-28 |  | Preconstruction |  | Precon | GMP |  |  | Fragnet | Quality Technology Services | BAB | 01ADMIN | Preconstruction | CFCI Procurement | Y | Chris Perales | Delay 07-26 |
| QTS-1011840 |  | Fragnet / QTS Needing Information from Layton for SPCC | 1d | 2026-04-08 A | 2026-04-08 A | QTS-1371 | 100% |  |  |  | Preconstruction |  | Precon | GMP |  |  | Fragnet | Quality Technology Services | BAB | 01ADMIN | Preconstruction | CFCI Procurement | Y |  |  |
| QTS-1011850 |  | Fragnet / Layton Sent Oil Capacities for SPCC to QTS | 10d | 2026-04-09 A | 2026-04-28 A | QTS-1011840 | 100% | 2026-04-09 | 2026-04-22 |  | Preconstruction |  | Precon | GMP |  |  | Fragnet | Quality Technology Services | BAB | 01ADMIN | Preconstruction | CFCI Procurement | Y |  |  |
| QTS-1011860 |  | Fragnet / QTS Submitted Fire Permit to City | 1d | 2026-04-29 A | 2026-04-29 A | QTS-1011850 | 100% |  |  |  | Preconstruction |  | Precon | GMP |  |  | Fragnet | Quality Technology Services | BAB | 01ADMIN | Preconstruction | CFCI Procurement | Y |  |  |
| QTS-1011870 |  | Fragnet / Fire Suppression Permit Approval By City | 10d | 2026-04-30 A | 2026-05-08 A | QTS-1011860 | 100% | 2026-04-30 | 2026-05-13 |  | Preconstruction |  | Precon | GMP |  |  | Fragnet | Quality Technology Services | BAB | 01ADMIN | Preconstruction | CFCI Procurement | Y |  |  |
| QTS-1013980 |  | Fragnet HMIS OFCI POD Battery System Permit Received | 15d | 2026-06-10 A | 2026-06-18 A | QTS-1011870 FF, QTS-18851, QTS-1011830 | 100% | 2026-04-08 | 2026-04-28 |  | Preconstruction |  | Precon | GMP |  |  | Fragnet | Quality Technology Services | BAB | 01ADMIN | Preconstruction | CFCI Procurement | Y | Chris Perales | Delay 07-26 |
| QTS-13531 |  | Fragnet / Dialer and Antenna for Fire Department Communications RFI 1096 | 20d | 2026-06-23 A | 2026-06-23 A | QTS-1013980 | 100% | 2026-07-08 | 2026-08-04 | **GLOBAL - 5 Day Workweek w/ Basic Holidays |  |  | Procurement |  |  |  | Fragnet | Quality Technology Services | BAB |  |  |  | Y |  | Delay 07-26 |
|  | 3 | **Fragnet / Dialer and Antenna for Fire Department Communications** |  |  |  |  |  |  |  |  |  |  |  |  |  |  |  |  |  |  |  |  |  |  |  |
|  | 4 | **Fragnet / Fire Suppression** |  | 2026-03-24 | 2026-04-09 |  |  |  |  |  |  |  |  |  |  |  |  |  |  |  |  |  |  |  |  |
| QTS-1011190 |  | Fragnet / AHJ Review Complete | 1d | 2026-03-24 A | 2026-03-24 A | QTS-1371 | 100% |  |  |  | Preconstruction |  | Precon | GMP |  |  | Fragnet | Olympic West Fire Protection | BAB | 01ADMIN | Preconstruction | CFCI Procurement | Y |  |  |
| QTS-1011200 |  | Fragnet / Olympic Receives AHJ Redlines | 2d | 2026-03-25 A | 2026-03-26 A | QTS-1011190 | 100% |  |  |  | Preconstruction |  | Precon | GMP |  |  | Fragnet | Olympic West Fire Protection | BAB | 01ADMIN | Preconstruction | CFCI Procurement | Y |  |  |
| QTS-1011210 |  | Fragnet / Olympic West SDs Review w/Layton, QTS, AHJ, Design Team, Shambaugh | 2d | 2026-03-27 A | 2026-03-30 A | QTS-1011200 | 100% |  |  |  | Preconstruction |  | Precon | GMP |  |  | Fragnet | Olympic West Fire Protection | BAB | 01ADMIN | Preconstruction | CFCI Procurement | Y |  |  |
| QTS-1011220 |  | Fragnet / DC 1, 2, 9 COG Fire Suppression MTG | 1d | 2026-04-03 A | 2026-04-03 A | QTS-1011210 | 100% |  |  |  | Preconstruction |  | Precon | GMP |  |  | Fragnet | Olympic West Fire Protection | BAB | 01ADMIN | Preconstruction | CFCI Procurement | Y |  |  |
| QTS-1011230 |  | Fragnet / DC 1, 2, 9 COG Fire Suppression MTG | 1d | 2026-04-07 A | 2026-04-07 A | QTS-1011220 | 100% |  |  |  | Preconstruction |  | Precon | GMP |  |  | Fragnet | Olympic West Fire Protection | BAB | 01ADMIN | Preconstruction | CFCI Procurement | Y |  |  |
| QTS-1011240 |  | Fragnet / Given NTP on 0.3 GPM | 2d | 2026-04-08 A | 2026-04-09 A | QTS-1011230 | 100% |  |  |  | Preconstruction |  | Precon | GMP |  |  | Fragnet | Olympic West Fire Protection | BAB | 01ADMIN | Preconstruction | CFCI Procurement | Y |  |  |
|  | 5 | **Fire Suppression - Existing Scope** |  | 2025-03-24 | 2026-04-07 |  |  |  |  |  |  |  |  |  |  |  |  |  |  |  |  |  |  |  |  |
| QTS-13511 |  | Prepare Fire Suppression Design Submittal | 40d | 2025-03-24 A | 2025-05-12 A | QTS-11901 SS | 100% | 2025-03-24 | 2025-05-16 |  |  |  | Precon | GMP |  |  |  |  | BAB |  | Preconstruction | CFCI Procurement |  |  |  |
| QTS-18841 |  | Design Team Review & Approve Fire Suppression Design Submittal | 15d | 2025-05-13 A | 2025-08-13 A | QTS-13511 | 100% | 2025-05-13 | 2025-06-03 |  | Preconstruction |  | Precon | GMP |  |  |  |  | BAB | 01ADMIN | Preconstruction | CFCI Procurement |  |  |  |
| QTS-12901 |  | Electric Fire Pump Procurement | 70d | 2025-07-16 A | 2026-01-27 A | QTS-9811 | 100% | 2025-08-20 | 2025-11-26 |  | Preconstruction |  | Precon | GMP |  |  |  |  | BAB | 01ADMIN | Preconstruction | CFCI Procurement |  |  |  |
| QTS-4461 |  | Prepare Electric Fire Pump Submittal | 1d | 2025-07-21 A | 2025-07-21 A | QTS-3321 | 100% |  |  |  | Preconstruction |  | Precon | GMP |  |  |  |  | BAB | 01ADMIN | Preconstruction | CFCI Procurement |  |  |  |
| QTS-7731 |  | Layton Review Electric Fire Pump Submittal | 1d | 2025-07-21 A | 2025-07-21 A | QTS-4461 | 100% | 2025-08-04 | 2025-08-04 |  | Preconstruction |  | Precon | GMP |  |  |  |  | BAB | 01ADMIN | Preconstruction | CFCI Procurement |  |  |  |
| QTS-9811 |  | Design Team Review & Approve Electric Fire Pump Submittal | 15d | 2025-07-30 A | 2025-08-13 A | QTS-7731 | 100% | 2025-07-30 | 2025-08-19 |  | Preconstruction |  | Precon | GMP |  |  |  |  | BAB | 01ADMIN | Preconstruction | CFCI Procurement |  |  |  |
| QTS-18851 |  | City Review & Approve Fire Suppression Design Submittal | 15d | 2025-08-08 A | 2026-04-07 A | QTS-13511, QTS-1011240 FF | 100% | 2025-08-07 | 2025-08-27 |  | Preconstruction |  | Precon | GMP |  |  |  |  | BAB | 01ADMIN | Preconstruction | CFCI Procurement | Y |  |  |

Notes:
- QTS-120210: Scheduler Notes: John Capriotti on 2025-12-09 13:03: Confirming with EOR that we can just / resubmit same information/submittal. / Jason Johnston on 2025-12-16 15:49: no update / John Capriotti on 2025-12-30 10:54: Resubmitted on 12/19 / Notes: Confirming with EOR that we can just resubmit same information/submittal.
- QTS-120230: allucent_notes_20251216_165335: John Capriotti on 2025-12-09 13:03: Confirming with EOR that we can just resubmit same information/submittal. / Jason Johnston on 2025-12-16 15:49: no update / allucent_notes_20251209_203830: John Capriotti on 2025-12-09 13:03: Confirming with EOR that we can just resubmit same information/submittal. / allucent_notes_20251230_164549: John Capriotti on 2025-12-09 13:03: Confirming with EOR that we can just resubmit same information/submittal. / Jason Johnston on 2025-12-16 15:49: no update / John Capriotti on 2025-12-30 10:54: Resubmitted on 12/19 / Scheduler Notes: John Capriotti on 2025-12-09 13:03: Confirming with EOR that we can just / resubmit same information/submittal. / Jason Johnston on 2025-12-16 15:49: no update / John Capriotti on 2025-12-30 10:54: Resubmitted on 12/19 / allucent_notes: 2025-12-09 13:03 - User: John Capriotti - Date Added: 2025-12-09 13:03 - Note: Confirming with EOR that we can just resubmit same information/submittal. / 2025-12-16 15:49 - User: Jason Johnston - Date Added: 2025-12-16 15:49 - Note: no update / 2025-12
- QTS-120240: allucent_notes_20251230_164549: John Capriotti on 2025-12-30 10:54: Approved as Noted by EOR on 12/22 / Scheduler Notes: John Capriotti on 2025-12-30 10:54: Approved as Noted by EOR on / 12/22 / allucent_notes: 2025-12-30 10:54 - User: John Capriotti - Date Added: 2025-12-30 10:54 - Note: Approved as Noted by EOR on 12/22
- QTS-1011830: allucent_notes_20251216_165335: John Capriotti on 2025-08-05 15:08: Olympic West to submit the design to the city on 8/6, City review to 8/7. / John Capriotti on 2025-08-12 14:08: Fire Suppression contractor submitted the design to the city for review/approval on 8/8. / Chris Perales on 2025-09-02 12:09: Delay in getting fire pump approved by the city. City is requesting more documentation from tenant / Jason Johnston on 2025-10-21 14:10: Awaiting response / Jason Johnston on 2025-10-27 16:10: Waiting for feedback from city. / Jason Johnston on 2025-10-28 16:10: Need an answer from CP / Jason Johnston on 2025-12-02 14:16: Waiting for design submittal approval / Jason Johnston on 2025-12-16 15:49: no update / allucent_notes_20251209_203830: John Capriotti on 2025-08-05 15:08: Olympic West to submit the design to the city on 8/6, City review to 8/7. / John Capriotti on 2025-08-12 14:08: Fire Suppression contractor submitted the design to the city for review/approval on 8/8. / Chris Perales on 2025-09-02 12:09: Delay in getting fire pump approved by the city. City is requesting more documentation from tenant / Jason Johnston on 2025-10-21 14:10: Awaiting response / Jason Johnston on 2025-10-27 16:10: Waiting for feedback from city. / Jason Johnston on 2025-10-28 16:10: Need an answer from CP / Jason Johnston on 2025-12-02 14:16: Waiting for design submittal approval / allucent_notes_20251202_153722: John Capriotti on 2025-08-05 15:08: Olympic West to submit the design to the city on 8/6, City review to 8/7. / John Capriotti on 2025-08-12 14:08: Fire Suppression contractor submitted the design to the city for review/approval on 8/8. / Chris Perales on 2025-09-02 12:09: Delay in getting fire pump approved by the city. City is requesting more documentation from tenant / Jason Johnston on 2025-10-21 14:10: Awaiting response / Jason Johnston on 2025-10-27 16:10: Waiting for feedback from city. / Jason Johnston on 2025-10-28 16:10: Need an answer from CP / Jason Johnston on 2025-12-02 14:16: Waiting for design submittal approval / allucent_notes_20251118_192630: John Capriotti on 2025-08-05 15:08: Olympic West to submit the design to the city on 8/6, City review to 8/7. / John Capriotti on 2025-08-12 14:08: Fire Suppression contractor submitted the design to the city for review/approval on 8/8. / Chris Perales on 2025-09-02 12:09: Delay in getting fire pump approved by the city. City is requesting more documentation from tenant / Jason Johnston on 2025-10-21 14:10: Awaiting response / Jason Johnston on 2025-10-27 16:10: Waiting for feedback from city. / Jason Johnston on 2025-10-28 16:10: Need an answer from CP / allucent_notes_20251111_182405: John Capriotti on 2025-08-05 15:08: Olympic West to submit the design to the city on 8/6, City review to 8/7. / John Capriotti on 2025-08-12 14:08: Fire Suppression contractor submitted the design to the city for review/approval on 8/8. / Chris Perales on 2025-09-02 12:09: Delay in getting fire pump approved by the city. City is requesting more documentation from tenant / Jason Johnston on 2025-10-21 14:10: Awaiting response / Jason Johnston on 2025-10-27 16:10: Waiting for feedback from city. / Jason Johnston on 2025-10-28 16:10: Need an answer from CP / allucent_notes_20251104_160200: John Capriotti on 2025-08-05 15:08: Olympic West to submit the design to the city on 8/6, City review to 8/7. / John Capriotti on 2025-08-12 14:08: Fire Suppression contractor submitted the design to the city for review/approval on 8/8. / Chris Perales on 2025-09-02 12:09: Delay in getting fire pump approved by the city. City is requesting more documentation from tenant / Jason Johnston on 2025-10-21 14:10: Awaiting response / Jason Johnston on 2025-10-27 16:10: Waiting for feedback from city. / Jason Johnston on 2025-10-28 16:10: Need an answer from CP / allucent_notes_20251028_163138: John Capriotti on 2025-08-05 15:08: Olympic West to submit the design to the city on 8/6, City review to 8/7. / John Capriotti on 2025-08-12 14:08: Fire Suppression contractor submitted the design to the city for review/approval on 8/8. / Chris Perales on 2025-09-02 12:09: Delay in getting fire pump approved by the city. City is requesting more documentation from tenant / Jason Johnston on 2025-10-21 14:10: Awaiting response / Jason Johnston on 2025-10-27 16:10: Waiting for feedback from city. / Jason Johnston on 2025-10-28 16:10: Need an answer from CP / allucent_notes_20251027_224008: John Capriotti on 2025-08-05 15:08: Olympic West to submit the design to the city on 8/6, City review to 8/7. / John Capriotti on 2025-08-12 14:08: Fire Suppression contractor submitted the design to the city for review/approval on 8/8. / Chris Perales on 2025-09-02 12:09: Delay in getting fire pump approved by the city. City is requesting more documentation from tenant / Jason Johnston on 2025-10-21 14:10: Awaiting response / Jason Johnston on 2025-10-27 16:10: Waiting for feedback from city. / allucent_notes_20251021_145627: John Capriotti on 2025-08-05 15:08: Olympic West to submit the design to the city on 8/6, City review to 8/7. / John Capriotti on 2025-08-12 14:08: Fire Suppression contractor submitted the design to the city for review/approval on 8/8. / Chris Perales on 2025-09-02 12:09: Delay in getting fire pump approved by the city. City is requesting more documentation from tenant / Jason Johnston on 2025-10-21 14:10: Awaiting response / allucent_notes_20251014_152335: John Capriotti on 2025-08-05 15:08: Olympic West to submit the design to the city on 8/6, City review to 8/7. / John Capriotti on 2025-08-12 14:08: Fire Suppression contractor submitted the design to the city for review/approval on 8/8. / Chris Perales on 2025-09-02 12:09: Delay in getting fire pump approved by the city. City is requesting more documentation from tenant / allucent_notes: John Capriotti on 2025-08-05 15:08: Olympic West to submit the design to the city on 8/6, City review to 8/7. / allucent_notes_20251230_164549: John Capriotti on 2025-08-05 15:08: Olympic West to submit the design to the city on 8/6, City review to 8/7. / John Capriotti on 2025-08-12 14:08: Fire Suppression contractor submitted the design to the city for review/approval on 8/8. / Chris Perales on 2025-09-02 12:09: Delay in getting fire pump approved by the city. City is requesting more documentation from tenant / Jason Johnston on 2025-10-21 14:10: Awaiting response / Jason Johnston on 2025-10-27 16:10: Waiting for feedback from city. / Jason Johnston on 2025-10-28 16:10: Need an answer from CP / Jason Johnston on 2025-12-02 14:16: Waiting for design submittal approval / Jason Johnston on 2025-12-16 15:49: no update / Scheduler Notes: John Capriotti on 2025-08-05 15:08: Olympic West to submit the design to the / city on 8/6, City review to 8/7. / John Capriotti on 2025-08-12 14:08: Fire Suppression contractor submitted the / design to the city for review/approval on 8/8. / Chris Perales on 2025-09-02 12:09: Delay in getting fire pump approved by the / city. City is requesting more documentation from tenant / Jason Johnston on 2025-10-21 14:10: Awaiting response / Jason Johnston on 2025-10-27 16:10: Waiting for feedback from city. / Jason Johnston on 2025-10-28 16:10: Need an answer from CP / allucent_notes: 2025-08-05 15:08 - User: John Capriotti - Date Added: 2025-08-05 15:08 - Note: Olympic West to submit the design to the city on 8/6, City review to 8/7. / 2025-08-12 14:08 - User: John Capriotti - Date Added: 2025-08-12 14:08 - Note: Fire Suppression con
- QTS-1011840: allucent_notes_20251216_165335: John Capriotti on 2025-08-05 15:08: Olympic West to submit the design to the city on 8/6, City review to 8/7. / John Capriotti on 2025-08-12 14:08: Fire Suppression contractor submitted the design to the city for review/approval on 8/8. / Chris Perales on 2025-09-02 12:09: Delay in getting fire pump approved by the city. City is requesting more documentation from tenant / Jason Johnston on 2025-10-21 14:10: Awaiting response / Jason Johnston on 2025-10-27 16:10: Waiting for feedback from city. / Jason Johnston on 2025-10-28 16:10: Need an answer from CP / Jason Johnston on 2025-12-02 14:16: Waiting for design submittal approval / Jason Johnston on 2025-12-16 15:49: no update / allucent_notes_20251209_203830: John Capriotti on 2025-08-05 15:08: Olympic West to submit the design to the city on 8/6, City review to 8/7. / John Capriotti on 2025-08-12 14:08: Fire Suppression contractor submitted the design to the city for review/approval on 8/8. / Chris Perales on 2025-09-02 12:09: Delay in getting fire pump approved by the city. City is requesting more documentation from tenant / Jason Johnston on 2025-10-21 14:10: Awaiting response / Jason Johnston on 2025-10-27 16:10: Waiting for feedback from city. / Jason Johnston on 2025-10-28 16:10: Need an answer from CP / Jason Johnston on 2025-12-02 14:16: Waiting for design submittal approval / allucent_notes_20251202_153722: John Capriotti on 2025-08-05 15:08: Olympic West to submit the design to the city on 8/6, City review to 8/7. / John Capriotti on 2025-08-12 14:08: Fire Suppression contractor submitted the design to the city for review/approval on 8/8. / Chris Perales on 2025-09-02 12:09: Delay in getting fire pump approved by the city. City is requesting more documentation from tenant / Jason Johnston on 2025-10-21 14:10: Awaiting response / Jason Johnston on 2025-10-27 16:10: Waiting for feedback from city. / Jason Johnston on 2025-10-28 16:10: Need an answer from CP / Jason Johnston on 2025-12-02 14:16: Waiting for design submittal approval / allucent_notes_20251118_192630: John Capriotti on 2025-08-05 15:08: Olympic West to submit the design to the city on 8/6, City review to 8/7. / John Capriotti on 2025-08-12 14:08: Fire Suppression contractor submitted the design to the city for review/approval on 8/8. / Chris Perales on 2025-09-02 12:09: Delay in getting fire pump approved by the city. City is requesting more documentation from tenant / Jason Johnston on 2025-10-21 14:10: Awaiting response / Jason Johnston on 2025-10-27 16:10: Waiting for feedback from city. / Jason Johnston on 2025-10-28 16:10: Need an answer from CP / allucent_notes_20251111_182405: John Capriotti on 2025-08-05 15:08: Olympic West to submit the design to the city on 8/6, City review to 8/7. / John Capriotti on 2025-08-12 14:08: Fire Suppression contractor submitted the design to the city for review/approval on 8/8. / Chris Perales on 2025-09-02 12:09: Delay in getting fire pump approved by the city. City is requesting more documentation from tenant / Jason Johnston on 2025-10-21 14:10: Awaiting response / Jason Johnston on 2025-10-27 16:10: Waiting for feedback from city. / Jason Johnston on 2025-10-28 16:10: Need an answer from CP / allucent_notes_20251104_160200: John Capriotti on 2025-08-05 15:08: Olympic West to submit the design to the city on 8/6, City review to 8/7. / John Capriotti on 2025-08-12 14:08: Fire Suppression contractor submitted the design to the city for review/approval on 8/8. / Chris Perales on 2025-09-02 12:09: Delay in getting fire pump approved by the city. City is requesting more documentation from tenant / Jason Johnston on 2025-10-21 14:10: Awaiting response / Jason Johnston on 2025-10-27 16:10: Waiting for feedback from city. / Jason Johnston on 2025-10-28 16:10: Need an answer from CP / allucent_notes_20251028_163138: John Capriotti on 2025-08-05 15:08: Olympic West to submit the design to the city on 8/6, City review to 8/7. / John Capriotti on 2025-08-12 14:08: Fire Suppression contractor submitted the design to the city for review/approval on 8/8. / Chris Perales on 2025-09-02 12:09: Delay in getting fire pump approved by the city. City is requesting more documentation from tenant / Jason Johnston on 2025-10-21 14:10: Awaiting response / Jason Johnston on 2025-10-27 16:10: Waiting for feedback from city. / Jason Johnston on 2025-10-28 16:10: Need an answer from CP / allucent_notes_20251027_224008: John Capriotti on 2025-08-05 15:08: Olympic West to submit the design to the city on 8/6, City review to 8/7. / John Capriotti on 2025-08-12 14:08: Fire Suppression contractor submitted the design to the city for review/approval on 8/8. / Chris Perales on 2025-09-02 12:09: Delay in getting fire pump approved by the city. City is requesting more documentation from tenant / Jason Johnston on 2025-10-21 14:10: Awaiting response / Jason Johnston on 2025-10-27 16:10: Waiting for feedback from city. / allucent_notes_20251021_145627: John Capriotti on 2025-08-05 15:08: Olympic West to submit the design to the city on 8/6, City review to 8/7. / John Capriotti on 2025-08-12 14:08: Fire Suppression contractor submitted the design to the city for review/approval on 8/8. / Chris Perales on 2025-09-02 12:09: Delay in getting fire pump approved by the city. City is requesting more documentation from tenant / Jason Johnston on 2025-10-21 14:10: Awaiting response / allucent_notes_20251014_152335: John Capriotti on 2025-08-05 15:08: Olympic West to submit the design to the city on 8/6, City review to 8/7. / John Capriotti on 2025-08-12 14:08: Fire Suppression contractor submitted the design to the city for review/approval on 8/8. / Chris Perales on 2025-09-02 12:09: Delay in getting fire pump approved by the city. City is requesting more documentation from tenant / allucent_notes: John Capriotti on 2025-08-05 15:08: Olympic West to submit the design to the city on 8/6, City review to 8/7. / allucent_notes_20251230_164549: John Capriotti on 2025-08-05 15:08: Olympic West to submit the design to the city on 8/6, City review to 8/7. / John Capriotti on 2025-08-12 14:08: Fire Suppression contractor submitted the design to the city for review/approval on 8/8. / Chris Perales on 2025-09-02 12:09: Delay in getting fire pump approved by the city. City is requesting more documentation from tenant / Jason Johnston on 2025-10-21 14:10: Awaiting response / Jason Johnston on 2025-10-27 16:10: Waiting for feedback from city. / Jason Johnston on 2025-10-28 16:10: Need an answer from CP / Jason Johnston on 2025-12-02 14:16: Waiting for design submittal approval / Jason Johnston on 2025-12-16 15:49: no update / allucent_notes: 2025-08-05 15:08 - User: John Capriotti - Date Added: 2025-08-05 15:08 - Note: Olympic West to submit the design to the city on 8/6, City review to 8/7. / 2025-08-12 14:08 - User: John Capriotti - Date Added: 2025-08-12 14:08 - Note: Fire Suppression con
- QTS-1011850: allucent_notes_20251216_165335: John Capriotti on 2025-08-05 15:08: Olympic West to submit the design to the city on 8/6, City review to 8/7. / John Capriotti on 2025-08-12 14:08: Fire Suppression contractor submitted the design to the city for review/approval on 8/8. / Chris Perales on 2025-09-02 12:09: Delay in getting fire pump approved by the city. City is requesting more documentation from tenant / Jason Johnston on 2025-10-21 14:10: Awaiting response / Jason Johnston on 2025-10-27 16:10: Waiting for feedback from city. / Jason Johnston on 2025-10-28 16:10: Need an answer from CP / Jason Johnston on 2025-12-02 14:16: Waiting for design submittal approval / Jason Johnston on 2025-12-16 15:49: no update / allucent_notes_20251209_203830: John Capriotti on 2025-08-05 15:08: Olympic West to submit the design to the city on 8/6, City review to 8/7. / John Capriotti on 2025-08-12 14:08: Fire Suppression contractor submitted the design to the city for review/approval on 8/8. / Chris Perales on 2025-09-02 12:09: Delay in getting fire pump approved by the city. City is requesting more documentation from tenant / Jason Johnston on 2025-10-21 14:10: Awaiting response / Jason Johnston on 2025-10-27 16:10: Waiting for feedback from city. / Jason Johnston on 2025-10-28 16:10: Need an answer from CP / Jason Johnston on 2025-12-02 14:16: Waiting for design submittal approval / allucent_notes_20251202_153722: John Capriotti on 2025-08-05 15:08: Olympic West to submit the design to the city on 8/6, City review to 8/7. / John Capriotti on 2025-08-12 14:08: Fire Suppression contractor submitted the design to the city for review/approval on 8/8. / Chris Perales on 2025-09-02 12:09: Delay in getting fire pump approved by the city. City is requesting more documentation from tenant / Jason Johnston on 2025-10-21 14:10: Awaiting response / Jason Johnston on 2025-10-27 16:10: Waiting for feedback from city. / Jason Johnston on 2025-10-28 16:10: Need an answer from CP / Jason Johnston on 2025-12-02 14:16: Waiting for design submittal approval / allucent_notes_20251118_192630: John Capriotti on 2025-08-05 15:08: Olympic West to submit the design to the city on 8/6, City review to 8/7. / John Capriotti on 2025-08-12 14:08: Fire Suppression contractor submitted the design to the city for review/approval on 8/8. / Chris Perales on 2025-09-02 12:09: Delay in getting fire pump approved by the city. City is requesting more documentation from tenant / Jason Johnston on 2025-10-21 14:10: Awaiting response / Jason Johnston on 2025-10-27 16:10: Waiting for feedback from city. / Jason Johnston on 2025-10-28 16:10: Need an answer from CP / allucent_notes_20251111_182405: John Capriotti on 2025-08-05 15:08: Olympic West to submit the design to the city on 8/6, City review to 8/7. / John Capriotti on 2025-08-12 14:08: Fire Suppression contractor submitted the design to the city for review/approval on 8/8. / Chris Perales on 2025-09-02 12:09: Delay in getting fire pump approved by the city. City is requesting more documentation from tenant / Jason Johnston on 2025-10-21 14:10: Awaiting response / Jason Johnston on 2025-10-27 16:10: Waiting for feedback from city. / Jason Johnston on 2025-10-28 16:10: Need an answer from CP / allucent_notes_20251104_160200: John Capriotti on 2025-08-05 15:08: Olympic West to submit the design to the city on 8/6, City review to 8/7. / John Capriotti on 2025-08-12 14:08: Fire Suppression contractor submitted the design to the city for review/approval on 8/8. / Chris Perales on 2025-09-02 12:09: Delay in getting fire pump approved by the city. City is requesting more documentation from tenant / Jason Johnston on 2025-10-21 14:10: Awaiting response / Jason Johnston on 2025-10-27 16:10: Waiting for feedback from city. / Jason Johnston on 2025-10-28 16:10: Need an answer from CP / allucent_notes_20251028_163138: John Capriotti on 2025-08-05 15:08: Olympic West to submit the design to the city on 8/6, City review to 8/7. / John Capriotti on 2025-08-12 14:08: Fire Suppression contractor submitted the design to the city for review/approval on 8/8. / Chris Perales on 2025-09-02 12:09: Delay in getting fire pump approved by the city. City is requesting more documentation from tenant / Jason Johnston on 2025-10-21 14:10: Awaiting response / Jason Johnston on 2025-10-27 16:10: Waiting for feedback from city. / Jason Johnston on 2025-10-28 16:10: Need an answer from CP / allucent_notes_20251027_224008: John Capriotti on 2025-08-05 15:08: Olympic West to submit the design to the city on 8/6, City review to 8/7. / John Capriotti on 2025-08-12 14:08: Fire Suppression contractor submitted the design to the city for review/approval on 8/8. / Chris Perales on 2025-09-02 12:09: Delay in getting fire pump approved by the city. City is requesting more documentation from tenant / Jason Johnston on 2025-10-21 14:10: Awaiting response / Jason Johnston on 2025-10-27 16:10: Waiting for feedback from city. / allucent_notes_20251021_145627: John Capriotti on 2025-08-05 15:08: Olympic West to submit the design to the city on 8/6, City review to 8/7. / John Capriotti on 2025-08-12 14:08: Fire Suppression contractor submitted the design to the city for review/approval on 8/8. / Chris Perales on 2025-09-02 12:09: Delay in getting fire pump approved by the city. City is requesting more documentation from tenant / Jason Johnston on 2025-10-21 14:10: Awaiting response / allucent_notes_20251014_152335: John Capriotti on 2025-08-05 15:08: Olympic West to submit the design to the city on 8/6, City review to 8/7. / John Capriotti on 2025-08-12 14:08: Fire Suppression contractor submitted the design to the city for review/approval on 8/8. / Chris Perales on 2025-09-02 12:09: Delay in getting fire pump approved by the city. City is requesting more documentation from tenant / allucent_notes: John Capriotti on 2025-08-05 15:08: Olympic West to submit the design to the city on 8/6, City review to 8/7. / allucent_notes_20251230_164549: John Capriotti on 2025-08-05 15:08: Olympic West to submit the design to the city on 8/6, City review to 8/7. / John Capriotti on 2025-08-12 14:08: Fire Suppression contractor submitted the design to the city for review/approval on 8/8. / Chris Perales on 2025-09-02 12:09: Delay in getting fire pump approved by the city. City is requesting more documentation from tenant / Jason Johnston on 2025-10-21 14:10: Awaiting response / Jason Johnston on 2025-10-27 16:10: Waiting for feedback from city. / Jason Johnston on 2025-10-28 16:10: Need an answer from CP / Jason Johnston on 2025-12-02 14:16: Waiting for design submittal approval / Jason Johnston on 2025-12-16 15:49: no update / allucent_notes: 2025-08-05 15:08 - User: John Capriotti - Date Added: 2025-08-05 15:08 - Note: Olympic West to submit the design to the city on 8/6, City review to 8/7. / 2025-08-12 14:08 - User: John Capriotti - Date Added: 2025-08-12 14:08 - Note: Fire Suppression con
- QTS-1011860: allucent_notes_20251216_165335: John Capriotti on 2025-08-05 15:08: Olympic West to submit the design to the city on 8/6, City review to 8/7. / John Capriotti on 2025-08-12 14:08: Fire Suppression contractor submitted the design to the city for review/approval on 8/8. / Chris Perales on 2025-09-02 12:09: Delay in getting fire pump approved by the city. City is requesting more documentation from tenant / Jason Johnston on 2025-10-21 14:10: Awaiting response / Jason Johnston on 2025-10-27 16:10: Waiting for feedback from city. / Jason Johnston on 2025-10-28 16:10: Need an answer from CP / Jason Johnston on 2025-12-02 14:16: Waiting for design submittal approval / Jason Johnston on 2025-12-16 15:49: no update / allucent_notes_20251209_203830: John Capriotti on 2025-08-05 15:08: Olympic West to submit the design to the city on 8/6, City review to 8/7. / John Capriotti on 2025-08-12 14:08: Fire Suppression contractor submitted the design to the city for review/approval on 8/8. / Chris Perales on 2025-09-02 12:09: Delay in getting fire pump approved by the city. City is requesting more documentation from tenant / Jason Johnston on 2025-10-21 14:10: Awaiting response / Jason Johnston on 2025-10-27 16:10: Waiting for feedback from city. / Jason Johnston on 2025-10-28 16:10: Need an answer from CP / Jason Johnston on 2025-12-02 14:16: Waiting for design submittal approval / allucent_notes_20251202_153722: John Capriotti on 2025-08-05 15:08: Olympic West to submit the design to the city on 8/6, City review to 8/7. / John Capriotti on 2025-08-12 14:08: Fire Suppression contractor submitted the design to the city for review/approval on 8/8. / Chris Perales on 2025-09-02 12:09: Delay in getting fire pump approved by the city. City is requesting more documentation from tenant / Jason Johnston on 2025-10-21 14:10: Awaiting response / Jason Johnston on 2025-10-27 16:10: Waiting for feedback from city. / Jason Johnston on 2025-10-28 16:10: Need an answer from CP / Jason Johnston on 2025-12-02 14:16: Waiting for design submittal approval / allucent_notes_20251118_192630: John Capriotti on 2025-08-05 15:08: Olympic West to submit the design to the city on 8/6, City review to 8/7. / John Capriotti on 2025-08-12 14:08: Fire Suppression contractor submitted the design to the city for review/approval on 8/8. / Chris Perales on 2025-09-02 12:09: Delay in getting fire pump approved by the city. City is requesting more documentation from tenant / Jason Johnston on 2025-10-21 14:10: Awaiting response / Jason Johnston on 2025-10-27 16:10: Waiting for feedback from city. / Jason Johnston on 2025-10-28 16:10: Need an answer from CP / allucent_notes_20251111_182405: John Capriotti on 2025-08-05 15:08: Olympic West to submit the design to the city on 8/6, City review to 8/7. / John Capriotti on 2025-08-12 14:08: Fire Suppression contractor submitted the design to the city for review/approval on 8/8. / Chris Perales on 2025-09-02 12:09: Delay in getting fire pump approved by the city. City is requesting more documentation from tenant / Jason Johnston on 2025-10-21 14:10: Awaiting response / Jason Johnston on 2025-10-27 16:10: Waiting for feedback from city. / Jason Johnston on 2025-10-28 16:10: Need an answer from CP / allucent_notes_20251104_160200: John Capriotti on 2025-08-05 15:08: Olympic West to submit the design to the city on 8/6, City review to 8/7. / John Capriotti on 2025-08-12 14:08: Fire Suppression contractor submitted the design to the city for review/approval on 8/8. / Chris Perales on 2025-09-02 12:09: Delay in getting fire pump approved by the city. City is requesting more documentation from tenant / Jason Johnston on 2025-10-21 14:10: Awaiting response / Jason Johnston on 2025-10-27 16:10: Waiting for feedback from city. / Jason Johnston on 2025-10-28 16:10: Need an answer from CP / allucent_notes_20251028_163138: John Capriotti on 2025-08-05 15:08: Olympic West to submit the design to the city on 8/6, City review to 8/7. / John Capriotti on 2025-08-12 14:08: Fire Suppression contractor submitted the design to the city for review/approval on 8/8. / Chris Perales on 2025-09-02 12:09: Delay in getting fire pump approved by the city. City is requesting more documentation from tenant / Jason Johnston on 2025-10-21 14:10: Awaiting response / Jason Johnston on 2025-10-27 16:10: Waiting for feedback from city. / Jason Johnston on 2025-10-28 16:10: Need an answer from CP / allucent_notes_20251027_224008: John Capriotti on 2025-08-05 15:08: Olympic West to submit the design to the city on 8/6, City review to 8/7. / John Capriotti on 2025-08-12 14:08: Fire Suppression contractor submitted the design to the city for review/approval on 8/8. / Chris Perales on 2025-09-02 12:09: Delay in getting fire pump approved by the city. City is requesting more documentation from tenant / Jason Johnston on 2025-10-21 14:10: Awaiting response / Jason Johnston on 2025-10-27 16:10: Waiting for feedback from city. / allucent_notes_20251021_145627: John Capriotti on 2025-08-05 15:08: Olympic West to submit the design to the city on 8/6, City review to 8/7. / John Capriotti on 2025-08-12 14:08: Fire Suppression contractor submitted the design to the city for review/approval on 8/8. / Chris Perales on 2025-09-02 12:09: Delay in getting fire pump approved by the city. City is requesting more documentation from tenant / Jason Johnston on 2025-10-21 14:10: Awaiting response / allucent_notes_20251014_152335: John Capriotti on 2025-08-05 15:08: Olympic West to submit the design to the city on 8/6, City review to 8/7. / John Capriotti on 2025-08-12 14:08: Fire Suppression contractor submitted the design to the city for review/approval on 8/8. / Chris Perales on 2025-09-02 12:09: Delay in getting fire pump approved by the city. City is requesting more documentation from tenant / allucent_notes: John Capriotti on 2025-08-05 15:08: Olympic West to submit the design to the city on 8/6, City review to 8/7. / allucent_notes_20251230_164549: John Capriotti on 2025-08-05 15:08: Olympic West to submit the design to the city on 8/6, City review to 8/7. / John Capriotti on 2025-08-12 14:08: Fire Suppression contractor submitted the design to the city for review/approval on 8/8. / Chris Perales on 2025-09-02 12:09: Delay in getting fire pump approved by the city. City is requesting more documentation from tenant / Jason Johnston on 2025-10-21 14:10: Awaiting response / Jason Johnston on 2025-10-27 16:10: Waiting for feedback from city. / Jason Johnston on 2025-10-28 16:10: Need an answer from CP / Jason Johnston on 2025-12-02 14:16: Waiting for design submittal approval / Jason Johnston on 2025-12-16 15:49: no update / allucent_notes: 2025-08-05 15:08 - User: John Capriotti - Date Added: 2025-08-05 15:08 - Note: Olympic West to submit the design to the city on 8/6, City review to 8/7. / 2025-08-12 14:08 - User: John Capriotti - Date Added: 2025-08-12 14:08 - Note: Fire Suppression con
- QTS-1011870: allucent_notes_20251216_165335: John Capriotti on 2025-08-05 15:08: Olympic West to submit the design to the city on 8/6, City review to 8/7. / John Capriotti on 2025-08-12 14:08: Fire Suppression contractor submitted the design to the city for review/approval on 8/8. / Chris Perales on 2025-09-02 12:09: Delay in getting fire pump approved by the city. City is requesting more documentation from tenant / Jason Johnston on 2025-10-21 14:10: Awaiting response / Jason Johnston on 2025-10-27 16:10: Waiting for feedback from city. / Jason Johnston on 2025-10-28 16:10: Need an answer from CP / Jason Johnston on 2025-12-02 14:16: Waiting for design submittal approval / Jason Johnston on 2025-12-16 15:49: no update / allucent_notes_20251209_203830: John Capriotti on 2025-08-05 15:08: Olympic West to submit the design to the city on 8/6, City review to 8/7. / John Capriotti on 2025-08-12 14:08: Fire Suppression contractor submitted the design to the city for review/approval on 8/8. / Chris Perales on 2025-09-02 12:09: Delay in getting fire pump approved by the city. City is requesting more documentation from tenant / Jason Johnston on 2025-10-21 14:10: Awaiting response / Jason Johnston on 2025-10-27 16:10: Waiting for feedback from city. / Jason Johnston on 2025-10-28 16:10: Need an answer from CP / Jason Johnston on 2025-12-02 14:16: Waiting for design submittal approval / allucent_notes_20251202_153722: John Capriotti on 2025-08-05 15:08: Olympic West to submit the design to the city on 8/6, City review to 8/7. / John Capriotti on 2025-08-12 14:08: Fire Suppression contractor submitted the design to the city for review/approval on 8/8. / Chris Perales on 2025-09-02 12:09: Delay in getting fire pump approved by the city. City is requesting more documentation from tenant / Jason Johnston on 2025-10-21 14:10: Awaiting response / Jason Johnston on 2025-10-27 16:10: Waiting for feedback from city. / Jason Johnston on 2025-10-28 16:10: Need an answer from CP / Jason Johnston on 2025-12-02 14:16: Waiting for design submittal approval / allucent_notes_20251118_192630: John Capriotti on 2025-08-05 15:08: Olympic West to submit the design to the city on 8/6, City review to 8/7. / John Capriotti on 2025-08-12 14:08: Fire Suppression contractor submitted the design to the city for review/approval on 8/8. / Chris Perales on 2025-09-02 12:09: Delay in getting fire pump approved by the city. City is requesting more documentation from tenant / Jason Johnston on 2025-10-21 14:10: Awaiting response / Jason Johnston on 2025-10-27 16:10: Waiting for feedback from city. / Jason Johnston on 2025-10-28 16:10: Need an answer from CP / allucent_notes_20251111_182405: John Capriotti on 2025-08-05 15:08: Olympic West to submit the design to the city on 8/6, City review to 8/7. / John Capriotti on 2025-08-12 14:08: Fire Suppression contractor submitted the design to the city for review/approval on 8/8. / Chris Perales on 2025-09-02 12:09: Delay in getting fire pump approved by the city. City is requesting more documentation from tenant / Jason Johnston on 2025-10-21 14:10: Awaiting response / Jason Johnston on 2025-10-27 16:10: Waiting for feedback from city. / Jason Johnston on 2025-10-28 16:10: Need an answer from CP / allucent_notes_20251104_160200: John Capriotti on 2025-08-05 15:08: Olympic West to submit the design to the city on 8/6, City review to 8/7. / John Capriotti on 2025-08-12 14:08: Fire Suppression contractor submitted the design to the city for review/approval on 8/8. / Chris Perales on 2025-09-02 12:09: Delay in getting fire pump approved by the city. City is requesting more documentation from tenant / Jason Johnston on 2025-10-21 14:10: Awaiting response / Jason Johnston on 2025-10-27 16:10: Waiting for feedback from city. / Jason Johnston on 2025-10-28 16:10: Need an answer from CP / allucent_notes_20251028_163138: John Capriotti on 2025-08-05 15:08: Olympic West to submit the design to the city on 8/6, City review to 8/7. / John Capriotti on 2025-08-12 14:08: Fire Suppression contractor submitted the design to the city for review/approval on 8/8. / Chris Perales on 2025-09-02 12:09: Delay in getting fire pump approved by the city. City is requesting more documentation from tenant / Jason Johnston on 2025-10-21 14:10: Awaiting response / Jason Johnston on 2025-10-27 16:10: Waiting for feedback from city. / Jason Johnston on 2025-10-28 16:10: Need an answer from CP / allucent_notes_20251027_224008: John Capriotti on 2025-08-05 15:08: Olympic West to submit the design to the city on 8/6, City review to 8/7. / John Capriotti on 2025-08-12 14:08: Fire Suppression contractor submitted the design to the city for review/approval on 8/8. / Chris Perales on 2025-09-02 12:09: Delay in getting fire pump approved by the city. City is requesting more documentation from tenant / Jason Johnston on 2025-10-21 14:10: Awaiting response / Jason Johnston on 2025-10-27 16:10: Waiting for feedback from city. / allucent_notes_20251021_145627: John Capriotti on 2025-08-05 15:08: Olympic West to submit the design to the city on 8/6, City review to 8/7. / John Capriotti on 2025-08-12 14:08: Fire Suppression contractor submitted the design to the city for review/approval on 8/8. / Chris Perales on 2025-09-02 12:09: Delay in getting fire pump approved by the city. City is requesting more documentation from tenant / Jason Johnston on 2025-10-21 14:10: Awaiting response / allucent_notes_20251014_152335: John Capriotti on 2025-08-05 15:08: Olympic West to submit the design to the city on 8/6, City review to 8/7. / John Capriotti on 2025-08-12 14:08: Fire Suppression contractor submitted the design to the city for review/approval on 8/8. / Chris Perales on 2025-09-02 12:09: Delay in getting fire pump approved by the city. City is requesting more documentation from tenant / allucent_notes: John Capriotti on 2025-08-05 15:08: Olympic West to submit the design to the city on 8/6, City review to 8/7. / allucent_notes_20251230_164549: John Capriotti on 2025-08-05 15:08: Olympic West to submit the design to the city on 8/6, City review to 8/7. / John Capriotti on 2025-08-12 14:08: Fire Suppression contractor submitted the design to the city for review/approval on 8/8. / Chris Perales on 2025-09-02 12:09: Delay in getting fire pump approved by the city. City is requesting more documentation from tenant / Jason Johnston on 2025-10-21 14:10: Awaiting response / Jason Johnston on 2025-10-27 16:10: Waiting for feedback from city. / Jason Johnston on 2025-10-28 16:10: Need an answer from CP / Jason Johnston on 2025-12-02 14:16: Waiting for design submittal approval / Jason Johnston on 2025-12-16 15:49: no update / allucent_notes: 2025-08-05 15:08 - User: John Capriotti - Date Added: 2025-08-05 15:08 - Note: Olympic West to submit the design to the city on 8/6, City review to 8/7. / 2025-08-12 14:08 - User: John Capriotti - Date Added: 2025-08-12 14:08 - Note: Fire Suppression con
- QTS-1013980: allucent_notes_20251216_165335: John Capriotti on 2025-08-05 15:08: Olympic West to submit the design to the city on 8/6, City review to 8/7. / John Capriotti on 2025-08-12 14:08: Fire Suppression contractor submitted the design to the city for review/approval on 8/8. / Chris Perales on 2025-09-02 12:09: Delay in getting fire pump approved by the city. City is requesting more documentation from tenant / Jason Johnston on 2025-10-21 14:10: Awaiting response / Jason Johnston on 2025-10-27 16:10: Waiting for feedback from city. / Jason Johnston on 2025-10-28 16:10: Need an answer from CP / Jason Johnston on 2025-12-02 14:16: Waiting for design submittal approval / Jason Johnston on 2025-12-16 15:49: no update / allucent_notes_20251209_203830: John Capriotti on 2025-08-05 15:08: Olympic West to submit the design to the city on 8/6, City review to 8/7. / John Capriotti on 2025-08-12 14:08: Fire Suppression contractor submitted the design to the city for review/approval on 8/8. / Chris Perales on 2025-09-02 12:09: Delay in getting fire pump approved by the city. City is requesting more documentation from tenant / Jason Johnston on 2025-10-21 14:10: Awaiting response / Jason Johnston on 2025-10-27 16:10: Waiting for feedback from city. / Jason Johnston on 2025-10-28 16:10: Need an answer from CP / Jason Johnston on 2025-12-02 14:16: Waiting for design submittal approval / allucent_notes_20251202_153722: John Capriotti on 2025-08-05 15:08: Olympic West to submit the design to the city on 8/6, City review to 8/7. / John Capriotti on 2025-08-12 14:08: Fire Suppression contractor submitted the design to the city for review/approval on 8/8. / Chris Perales on 2025-09-02 12:09: Delay in getting fire pump approved by the city. City is requesting more documentation from tenant / Jason Johnston on 2025-10-21 14:10: Awaiting response / Jason Johnston on 2025-10-27 16:10: Waiting for feedback from city. / Jason Johnston on 2025-10-28 16:10: Need an answer from CP / Jason Johnston on 2025-12-02 14:16: Waiting for design submittal approval / allucent_notes_20251118_192630: John Capriotti on 2025-08-05 15:08: Olympic West to submit the design to the city on 8/6, City review to 8/7. / John Capriotti on 2025-08-12 14:08: Fire Suppression contractor submitted the design to the city for review/approval on 8/8. / Chris Perales on 2025-09-02 12:09: Delay in getting fire pump approved by the city. City is requesting more documentation from tenant / Jason Johnston on 2025-10-21 14:10: Awaiting response / Jason Johnston on 2025-10-27 16:10: Waiting for feedback from city. / Jason Johnston on 2025-10-28 16:10: Need an answer from CP / allucent_notes_20251111_182405: John Capriotti on 2025-08-05 15:08: Olympic West to submit the design to the city on 8/6, City review to 8/7. / John Capriotti on 2025-08-12 14:08: Fire Suppression contractor submitted the design to the city for review/approval on 8/8. / Chris Perales on 2025-09-02 12:09: Delay in getting fire pump approved by the city. City is requesting more documentation from tenant / Jason Johnston on 2025-10-21 14:10: Awaiting response / Jason Johnston on 2025-10-27 16:10: Waiting for feedback from city. / Jason Johnston on 2025-10-28 16:10: Need an answer from CP / allucent_notes_20251104_160200: John Capriotti on 2025-08-05 15:08: Olympic West to submit the design to the city on 8/6, City review to 8/7. / John Capriotti on 2025-08-12 14:08: Fire Suppression contractor submitted the design to the city for review/approval on 8/8. / Chris Perales on 2025-09-02 12:09: Delay in getting fire pump approved by the city. City is requesting more documentation from tenant / Jason Johnston on 2025-10-21 14:10: Awaiting response / Jason Johnston on 2025-10-27 16:10: Waiting for feedback from city. / Jason Johnston on 2025-10-28 16:10: Need an answer from CP / allucent_notes_20251028_163138: John Capriotti on 2025-08-05 15:08: Olympic West to submit the design to the city on 8/6, City review to 8/7. / John Capriotti on 2025-08-12 14:08: Fire Suppression contractor submitted the design to the city for review/approval on 8/8. / Chris Perales on 2025-09-02 12:09: Delay in getting fire pump approved by the city. City is requesting more documentation from tenant / Jason Johnston on 2025-10-21 14:10: Awaiting response / Jason Johnston on 2025-10-27 16:10: Waiting for feedback from city. / Jason Johnston on 2025-10-28 16:10: Need an answer from CP / allucent_notes_20251027_224008: John Capriotti on 2025-08-05 15:08: Olympic West to submit the design to the city on 8/6, City review to 8/7. / John Capriotti on 2025-08-12 14:08: Fire Suppression contractor submitted the design to the city for review/approval on 8/8. / Chris Perales on 2025-09-02 12:09: Delay in getting fire pump approved by the city. City is requesting more documentation from tenant / Jason Johnston on 2025-10-21 14:10: Awaiting response / Jason Johnston on 2025-10-27 16:10: Waiting for feedback from city. / allucent_notes_20251021_145627: John Capriotti on 2025-08-05 15:08: Olympic West to submit the design to the city on 8/6, City review to 8/7. / John Capriotti on 2025-08-12 14:08: Fire Suppression contractor submitted the design to the city for review/approval on 8/8. / Chris Perales on 2025-09-02 12:09: Delay in getting fire pump approved by the city. City is requesting more documentation from tenant / Jason Johnston on 2025-10-21 14:10: Awaiting response / allucent_notes_20251014_152335: John Capriotti on 2025-08-05 15:08: Olympic West to submit the design to the city on 8/6, City review to 8/7. / John Capriotti on 2025-08-12 14:08: Fire Suppression contractor submitted the design to the city for review/approval on 8/8. / Chris Perales on 2025-09-02 12:09: Delay in getting fire pump approved by the city. City is requesting more documentation from tenant / allucent_notes: John Capriotti on 2025-08-05 15:08: Olympic West to submit the design to the city on 8/6, City review to 8/7. / allucent_notes_20251230_164549: John Capriotti on 2025-08-05 15:08: Olympic West to submit the design to the city on 8/6, City review to 8/7. / John Capriotti on 2025-08-12 14:08: Fire Suppression contractor submitted the design to the city for review/approval on 8/8. / Chris Perales on 2025-09-02 12:09: Delay in getting fire pump approved by the city. City is requesting more documentation from tenant / Jason Johnston on 2025-10-21 14:10: Awaiting response / Jason Johnston on 2025-10-27 16:10: Waiting for feedback from city. / Jason Johnston on 2025-10-28 16:10: Need an answer from CP / Jason Johnston on 2025-12-02 14:16: Waiting for design submittal approval / Jason Johnston on 2025-12-16 15:49: no update / Scheduler Notes: John Capriotti on 2025-08-05 15:08: Olympic West to submit the design to the / city on 8/6, City review to 8/7. / John Capriotti on 2025-08-12 14:08: Fire Suppression contractor submitted the / design to the city for review/approval on 8/8. / Chris Perales on 2025-09-02 12:09: Delay in getting fire pump approved by the / city. City is requesting more documentation from tenant / Jason Johnston on 2025-10-21 14:10: Awaiting response / Jason Johnston on 2025-10-27 16:10: Waiting for feedback from city. / Jason Johnston on 2025-10-28 16:10: Need an answer from CP / allucent_notes: 2025-08-05 15:08 - User: John Capriotti - Date Added: 2025-08-05 15:08 - Note: Olympic West to submit the design to the city on 8/6, City review to 8/7. / 2025-08-12 14:08 - User: John Capriotti - Date Added: 2025-08-12 14:08 - Note: Fire Suppression con
- QTS-1011190: allucent_notes_20251216_165335: John Capriotti on 2025-08-05 15:08: Olympic West to submit the design to the city on 8/6, City review to 8/7. / John Capriotti on 2025-08-12 14:08: Fire Suppression contractor submitted the design to the city for review/approval on 8/8. / Chris Perales on 2025-09-02 12:09: Delay in getting fire pump approved by the city. City is requesting more documentation from tenant / Jason Johnston on 2025-10-21 14:10: Awaiting response / Jason Johnston on 2025-10-27 16:10: Waiting for feedback from city. / Jason Johnston on 2025-10-28 16:10: Need an answer from CP / Jason Johnston on 2025-12-02 14:16: Waiting for design submittal approval / Jason Johnston on 2025-12-16 15:49: no update / allucent_notes_20251209_203830: John Capriotti on 2025-08-05 15:08: Olympic West to submit the design to the city on 8/6, City review to 8/7. / John Capriotti on 2025-08-12 14:08: Fire Suppression contractor submitted the design to the city for review/approval on 8/8. / Chris Perales on 2025-09-02 12:09: Delay in getting fire pump approved by the city. City is requesting more documentation from tenant / Jason Johnston on 2025-10-21 14:10: Awaiting response / Jason Johnston on 2025-10-27 16:10: Waiting for feedback from city. / Jason Johnston on 2025-10-28 16:10: Need an answer from CP / Jason Johnston on 2025-12-02 14:16: Waiting for design submittal approval / allucent_notes_20251202_153722: John Capriotti on 2025-08-05 15:08: Olympic West to submit the design to the city on 8/6, City review to 8/7. / John Capriotti on 2025-08-12 14:08: Fire Suppression contractor submitted the design to the city for review/approval on 8/8. / Chris Perales on 2025-09-02 12:09: Delay in getting fire pump approved by the city. City is requesting more documentation from tenant / Jason Johnston on 2025-10-21 14:10: Awaiting response / Jason Johnston on 2025-10-27 16:10: Waiting for feedback from city. / Jason Johnston on 2025-10-28 16:10: Need an answer from CP / Jason Johnston on 2025-12-02 14:16: Waiting for design submittal approval / allucent_notes_20251118_192630: John Capriotti on 2025-08-05 15:08: Olympic West to submit the design to the city on 8/6, City review to 8/7. / John Capriotti on 2025-08-12 14:08: Fire Suppression contractor submitted the design to the city for review/approval on 8/8. / Chris Perales on 2025-09-02 12:09: Delay in getting fire pump approved by the city. City is requesting more documentation from tenant / Jason Johnston on 2025-10-21 14:10: Awaiting response / Jason Johnston on 2025-10-27 16:10: Waiting for feedback from city. / Jason Johnston on 2025-10-28 16:10: Need an answer from CP / allucent_notes_20251111_182405: John Capriotti on 2025-08-05 15:08: Olympic West to submit the design to the city on 8/6, City review to 8/7. / John Capriotti on 2025-08-12 14:08: Fire Suppression contractor submitted the design to the city for review/approval on 8/8. / Chris Perales on 2025-09-02 12:09: Delay in getting fire pump approved by the city. City is requesting more documentation from tenant / Jason Johnston on 2025-10-21 14:10: Awaiting response / Jason Johnston on 2025-10-27 16:10: Waiting for feedback from city. / Jason Johnston on 2025-10-28 16:10: Need an answer from CP / allucent_notes_20251104_160200: John Capriotti on 2025-08-05 15:08: Olympic West to submit the design to the city on 8/6, City review to 8/7. / John Capriotti on 2025-08-12 14:08: Fire Suppression contractor submitted the design to the city for review/approval on 8/8. / Chris Perales on 2025-09-02 12:09: Delay in getting fire pump approved by the city. City is requesting more documentation from tenant / Jason Johnston on 2025-10-21 14:10: Awaiting response / Jason Johnston on 2025-10-27 16:10: Waiting for feedback from city. / Jason Johnston on 2025-10-28 16:10: Need an answer from CP / allucent_notes_20251028_163138: John Capriotti on 2025-08-05 15:08: Olympic West to submit the design to the city on 8/6, City review to 8/7. / John Capriotti on 2025-08-12 14:08: Fire Suppression contractor submitted the design to the city for review/approval on 8/8. / Chris Perales on 2025-09-02 12:09: Delay in getting fire pump approved by the city. City is requesting more documentation from tenant / Jason Johnston on 2025-10-21 14:10: Awaiting response / Jason Johnston on 2025-10-27 16:10: Waiting for feedback from city. / Jason Johnston on 2025-10-28 16:10: Need an answer from CP / allucent_notes_20251027_224008: John Capriotti on 2025-08-05 15:08: Olympic West to submit the design to the city on 8/6, City review to 8/7. / John Capriotti on 2025-08-12 14:08: Fire Suppression contractor submitted the design to the city for review/approval on 8/8. / Chris Perales on 2025-09-02 12:09: Delay in getting fire pump approved by the city. City is requesting more documentation from tenant / Jason Johnston on 2025-10-21 14:10: Awaiting response / Jason Johnston on 2025-10-27 16:10: Waiting for feedback from city. / allucent_notes_20251021_145627: John Capriotti on 2025-08-05 15:08: Olympic West to submit the design to the city on 8/6, City review to 8/7. / John Capriotti on 2025-08-12 14:08: Fire Suppression contractor submitted the design to the city for review/approval on 8/8. / Chris Perales on 2025-09-02 12:09: Delay in getting fire pump approved by the city. City is requesting more documentation from tenant / Jason Johnston on 2025-10-21 14:10: Awaiting response / allucent_notes_20251014_152335: John Capriotti on 2025-08-05 15:08: Olympic West to submit the design to the city on 8/6, City review to 8/7. / John Capriotti on 2025-08-12 14:08: Fire Suppression contractor submitted the design to the city for review/approval on 8/8. / Chris Perales on 2025-09-02 12:09: Delay in getting fire pump approved by the city. City is requesting more documentation from tenant / allucent_notes: John Capriotti on 2025-08-05 15:08: Olympic West to submit the design to the city on 8/6, City review to 8/7. / allucent_notes_20251230_164549: John Capriotti on 2025-08-05 15:08: Olympic West to submit the design to the city on 8/6, City review to 8/7. / John Capriotti on 2025-08-12 14:08: Fire Suppression contractor submitted the design to the city for review/approval on 8/8. / Chris Perales on 2025-09-02 12:09: Delay in getting fire pump approved by the city. City is requesting more documentation from tenant / Jason Johnston on 2025-10-21 14:10: Awaiting response / Jason Johnston on 2025-10-27 16:10: Waiting for feedback from city. / Jason Johnston on 2025-10-28 16:10: Need an answer from CP / Jason Johnston on 2025-12-02 14:16: Waiting for design submittal approval / Jason Johnston on 2025-12-16 15:49: no update / Scheduler Notes: John Capriotti on 2025-08-05 15:08: Olympic West to submit the design to the / city on 8/6, City review to 8/7. / John Capriotti on 2025-08-12 14:08: Fire Suppression contractor submitted the / design to the city for review/approval on 8/8. / Chris Perales on 2025-09-02 12:09: Delay in getting fire pump approved by the / city. City is requesting more documentation from tenant / Jason Johnston on 2025-10-21 14:10: Awaiting response / Jason Johnston on 2025-10-27 16:10: Waiting for feedback from / city. / allucent_notes: 2025-08-05 15:08 - User: John Capriotti - Date Added: 2025-08-05 15:08 - Note: Olympic West to submit the design to the city on 8/6, City review to 8/7. / 2025-08-12 14:08 - User: John Capriotti - Date Added: 2025-08-12 14:08 - Note: Fire Suppression con
- QTS-1011200: allucent_notes_20251216_165335: John Capriotti on 2025-08-05 15:08: Olympic West to submit the design to the city on 8/6, City review to 8/7. / John Capriotti on 2025-08-12 14:08: Fire Suppression contractor submitted the design to the city for review/approval on 8/8. / Chris Perales on 2025-09-02 12:09: Delay in getting fire pump approved by the city. City is requesting more documentation from tenant / Jason Johnston on 2025-10-21 14:10: Awaiting response / Jason Johnston on 2025-10-27 16:10: Waiting for feedback from city. / Jason Johnston on 2025-10-28 16:10: Need an answer from CP / Jason Johnston on 2025-12-02 14:16: Waiting for design submittal approval / Jason Johnston on 2025-12-16 15:49: no update / allucent_notes_20251209_203830: John Capriotti on 2025-08-05 15:08: Olympic West to submit the design to the city on 8/6, City review to 8/7. / John Capriotti on 2025-08-12 14:08: Fire Suppression contractor submitted the design to the city for review/approval on 8/8. / Chris Perales on 2025-09-02 12:09: Delay in getting fire pump approved by the city. City is requesting more documentation from tenant / Jason Johnston on 2025-10-21 14:10: Awaiting response / Jason Johnston on 2025-10-27 16:10: Waiting for feedback from city. / Jason Johnston on 2025-10-28 16:10: Need an answer from CP / Jason Johnston on 2025-12-02 14:16: Waiting for design submittal approval / allucent_notes_20251202_153722: John Capriotti on 2025-08-05 15:08: Olympic West to submit the design to the city on 8/6, City review to 8/7. / John Capriotti on 2025-08-12 14:08: Fire Suppression contractor submitted the design to the city for review/approval on 8/8. / Chris Perales on 2025-09-02 12:09: Delay in getting fire pump approved by the city. City is requesting more documentation from tenant / Jason Johnston on 2025-10-21 14:10: Awaiting response / Jason Johnston on 2025-10-27 16:10: Waiting for feedback from city. / Jason Johnston on 2025-10-28 16:10: Need an answer from CP / Jason Johnston on 2025-12-02 14:16: Waiting for design submittal approval / allucent_notes_20251118_192630: John Capriotti on 2025-08-05 15:08: Olympic West to submit the design to the city on 8/6, City review to 8/7. / John Capriotti on 2025-08-12 14:08: Fire Suppression contractor submitted the design to the city for review/approval on 8/8. / Chris Perales on 2025-09-02 12:09: Delay in getting fire pump approved by the city. City is requesting more documentation from tenant / Jason Johnston on 2025-10-21 14:10: Awaiting response / Jason Johnston on 2025-10-27 16:10: Waiting for feedback from city. / Jason Johnston on 2025-10-28 16:10: Need an answer from CP / allucent_notes_20251111_182405: John Capriotti on 2025-08-05 15:08: Olympic West to submit the design to the city on 8/6, City review to 8/7. / John Capriotti on 2025-08-12 14:08: Fire Suppression contractor submitted the design to the city for review/approval on 8/8. / Chris Perales on 2025-09-02 12:09: Delay in getting fire pump approved by the city. City is requesting more documentation from tenant / Jason Johnston on 2025-10-21 14:10: Awaiting response / Jason Johnston on 2025-10-27 16:10: Waiting for feedback from city. / Jason Johnston on 2025-10-28 16:10: Need an answer from CP / allucent_notes_20251104_160200: John Capriotti on 2025-08-05 15:08: Olympic West to submit the design to the city on 8/6, City review to 8/7. / John Capriotti on 2025-08-12 14:08: Fire Suppression contractor submitted the design to the city for review/approval on 8/8. / Chris Perales on 2025-09-02 12:09: Delay in getting fire pump approved by the city. City is requesting more documentation from tenant / Jason Johnston on 2025-10-21 14:10: Awaiting response / Jason Johnston on 2025-10-27 16:10: Waiting for feedback from city. / Jason Johnston on 2025-10-28 16:10: Need an answer from CP / allucent_notes_20251028_163138: John Capriotti on 2025-08-05 15:08: Olympic West to submit the design to the city on 8/6, City review to 8/7. / John Capriotti on 2025-08-12 14:08: Fire Suppression contractor submitted the design to the city for review/approval on 8/8. / Chris Perales on 2025-09-02 12:09: Delay in getting fire pump approved by the city. City is requesting more documentation from tenant / Jason Johnston on 2025-10-21 14:10: Awaiting response / Jason Johnston on 2025-10-27 16:10: Waiting for feedback from city. / Jason Johnston on 2025-10-28 16:10: Need an answer from CP / allucent_notes_20251027_224008: John Capriotti on 2025-08-05 15:08: Olympic West to submit the design to the city on 8/6, City review to 8/7. / John Capriotti on 2025-08-12 14:08: Fire Suppression contractor submitted the design to the city for review/approval on 8/8. / Chris Perales on 2025-09-02 12:09: Delay in getting fire pump approved by the city. City is requesting more documentation from tenant / Jason Johnston on 2025-10-21 14:10: Awaiting response / Jason Johnston on 2025-10-27 16:10: Waiting for feedback from city. / allucent_notes_20251021_145627: John Capriotti on 2025-08-05 15:08: Olympic West to submit the design to the city on 8/6, City review to 8/7. / John Capriotti on 2025-08-12 14:08: Fire Suppression contractor submitted the design to the city for review/approval on 8/8. / Chris Perales on 2025-09-02 12:09: Delay in getting fire pump approved by the city. City is requesting more documentation from tenant / Jason Johnston on 2025-10-21 14:10: Awaiting response / allucent_notes_20251014_152335: John Capriotti on 2025-08-05 15:08: Olympic West to submit the design to the city on 8/6, City review to 8/7. / John Capriotti on 2025-08-12 14:08: Fire Suppression contractor submitted the design to the city for review/approval on 8/8. / Chris Perales on 2025-09-02 12:09: Delay in getting fire pump approved by the city. City is requesting more documentation from tenant / allucent_notes: John Capriotti on 2025-08-05 15:08: Olympic West to submit the design to the city on 8/6, City review to 8/7. / allucent_notes_20251230_164549: John Capriotti on 2025-08-05 15:08: Olympic West to submit the design to the city on 8/6, City review to 8/7. / John Capriotti on 2025-08-12 14:08: Fire Suppression contractor submitted the design to the city for review/approval on 8/8. / Chris Perales on 2025-09-02 12:09: Delay in getting fire pump approved by the city. City is requesting more documentation from tenant / Jason Johnston on 2025-10-21 14:10: Awaiting response / Jason Johnston on 2025-10-27 16:10: Waiting for feedback from city. / Jason Johnston on 2025-10-28 16:10: Need an answer from CP / Jason Johnston on 2025-12-02 14:16: Waiting for design submittal approval / Jason Johnston on 2025-12-16 15:49: no update / allucent_notes: 2025-08-05 15:08 - User: John Capriotti - Date Added: 2025-08-05 15:08 - Note: Olympic West to submit the design to the city on 8/6, City review to 8/7. / 2025-08-12 14:08 - User: John Capriotti - Date Added: 2025-08-12 14:08 - Note: Fire Suppression con
- QTS-1011210: allucent_notes_20251216_165335: John Capriotti on 2025-08-05 15:08: Olympic West to submit the design to the city on 8/6, City review to 8/7. / John Capriotti on 2025-08-12 14:08: Fire Suppression contractor submitted the design to the city for review/approval on 8/8. / Chris Perales on 2025-09-02 12:09: Delay in getting fire pump approved by the city. City is requesting more documentation from tenant / Jason Johnston on 2025-10-21 14:10: Awaiting response / Jason Johnston on 2025-10-27 16:10: Waiting for feedback from city. / Jason Johnston on 2025-10-28 16:10: Need an answer from CP / Jason Johnston on 2025-12-02 14:16: Waiting for design submittal approval / Jason Johnston on 2025-12-16 15:49: no update / allucent_notes_20251209_203830: John Capriotti on 2025-08-05 15:08: Olympic West to submit the design to the city on 8/6, City review to 8/7. / John Capriotti on 2025-08-12 14:08: Fire Suppression contractor submitted the design to the city for review/approval on 8/8. / Chris Perales on 2025-09-02 12:09: Delay in getting fire pump approved by the city. City is requesting more documentation from tenant / Jason Johnston on 2025-10-21 14:10: Awaiting response / Jason Johnston on 2025-10-27 16:10: Waiting for feedback from city. / Jason Johnston on 2025-10-28 16:10: Need an answer from CP / Jason Johnston on 2025-12-02 14:16: Waiting for design submittal approval / allucent_notes_20251202_153722: John Capriotti on 2025-08-05 15:08: Olympic West to submit the design to the city on 8/6, City review to 8/7. / John Capriotti on 2025-08-12 14:08: Fire Suppression contractor submitted the design to the city for review/approval on 8/8. / Chris Perales on 2025-09-02 12:09: Delay in getting fire pump approved by the city. City is requesting more documentation from tenant / Jason Johnston on 2025-10-21 14:10: Awaiting response / Jason Johnston on 2025-10-27 16:10: Waiting for feedback from city. / Jason Johnston on 2025-10-28 16:10: Need an answer from CP / Jason Johnston on 2025-12-02 14:16: Waiting for design submittal approval / allucent_notes_20251118_192630: John Capriotti on 2025-08-05 15:08: Olympic West to submit the design to the city on 8/6, City review to 8/7. / John Capriotti on 2025-08-12 14:08: Fire Suppression contractor submitted the design to the city for review/approval on 8/8. / Chris Perales on 2025-09-02 12:09: Delay in getting fire pump approved by the city. City is requesting more documentation from tenant / Jason Johnston on 2025-10-21 14:10: Awaiting response / Jason Johnston on 2025-10-27 16:10: Waiting for feedback from city. / Jason Johnston on 2025-10-28 16:10: Need an answer from CP / allucent_notes_20251111_182405: John Capriotti on 2025-08-05 15:08: Olympic West to submit the design to the city on 8/6, City review to 8/7. / John Capriotti on 2025-08-12 14:08: Fire Suppression contractor submitted the design to the city for review/approval on 8/8. / Chris Perales on 2025-09-02 12:09: Delay in getting fire pump approved by the city. City is requesting more documentation from tenant / Jason Johnston on 2025-10-21 14:10: Awaiting response / Jason Johnston on 2025-10-27 16:10: Waiting for feedback from city. / Jason Johnston on 2025-10-28 16:10: Need an answer from CP / allucent_notes_20251104_160200: John Capriotti on 2025-08-05 15:08: Olympic West to submit the design to the city on 8/6, City review to 8/7. / John Capriotti on 2025-08-12 14:08: Fire Suppression contractor submitted the design to the city for review/approval on 8/8. / Chris Perales on 2025-09-02 12:09: Delay in getting fire pump approved by the city. City is requesting more documentation from tenant / Jason Johnston on 2025-10-21 14:10: Awaiting response / Jason Johnston on 2025-10-27 16:10: Waiting for feedback from city. / Jason Johnston on 2025-10-28 16:10: Need an answer from CP / allucent_notes_20251028_163138: John Capriotti on 2025-08-05 15:08: Olympic West to submit the design to the city on 8/6, City review to 8/7. / John Capriotti on 2025-08-12 14:08: Fire Suppression contractor submitted the design to the city for review/approval on 8/8. / Chris Perales on 2025-09-02 12:09: Delay in getting fire pump approved by the city. City is requesting more documentation from tenant / Jason Johnston on 2025-10-21 14:10: Awaiting response / Jason Johnston on 2025-10-27 16:10: Waiting for feedback from city. / Jason Johnston on 2025-10-28 16:10: Need an answer from CP / allucent_notes_20251027_224008: John Capriotti on 2025-08-05 15:08: Olympic West to submit the design to the city on 8/6, City review to 8/7. / John Capriotti on 2025-08-12 14:08: Fire Suppression contractor submitted the design to the city for review/approval on 8/8. / Chris Perales on 2025-09-02 12:09: Delay in getting fire pump approved by the city. City is requesting more documentation from tenant / Jason Johnston on 2025-10-21 14:10: Awaiting response / Jason Johnston on 2025-10-27 16:10: Waiting for feedback from city. / allucent_notes_20251021_145627: John Capriotti on 2025-08-05 15:08: Olympic West to submit the design to the city on 8/6, City review to 8/7. / John Capriotti on 2025-08-12 14:08: Fire Suppression contractor submitted the design to the city for review/approval on 8/8. / Chris Perales on 2025-09-02 12:09: Delay in getting fire pump approved by the city. City is requesting more documentation from tenant / Jason Johnston on 2025-10-21 14:10: Awaiting response / allucent_notes_20251014_152335: John Capriotti on 2025-08-05 15:08: Olympic West to submit the design to the city on 8/6, City review to 8/7. / John Capriotti on 2025-08-12 14:08: Fire Suppression contractor submitted the design to the city for review/approval on 8/8. / Chris Perales on 2025-09-02 12:09: Delay in getting fire pump approved by the city. City is requesting more documentation from tenant / allucent_notes: John Capriotti on 2025-08-05 15:08: Olympic West to submit the design to the city on 8/6, City review to 8/7. / allucent_notes_20251230_164549: John Capriotti on 2025-08-05 15:08: Olympic West to submit the design to the city on 8/6, City review to 8/7. / John Capriotti on 2025-08-12 14:08: Fire Suppression contractor submitted the design to the city for review/approval on 8/8. / Chris Perales on 2025-09-02 12:09: Delay in getting fire pump approved by the city. City is requesting more documentation from tenant / Jason Johnston on 2025-10-21 14:10: Awaiting response / Jason Johnston on 2025-10-27 16:10: Waiting for feedback from city. / Jason Johnston on 2025-10-28 16:10: Need an answer from CP / Jason Johnston on 2025-12-02 14:16: Waiting for design submittal approval / Jason Johnston on 2025-12-16 15:49: no update / allucent_notes: 2025-08-05 15:08 - User: John Capriotti - Date Added: 2025-08-05 15:08 - Note: Olympic West to submit the design to the city on 8/6, City review to 8/7. / 2025-08-12 14:08 - User: John Capriotti - Date Added: 2025-08-12 14:08 - Note: Fire Suppression con
- QTS-1011220: allucent_notes_20251216_165335: John Capriotti on 2025-08-05 15:08: Olympic West to submit the design to the city on 8/6, City review to 8/7. / John Capriotti on 2025-08-12 14:08: Fire Suppression contractor submitted the design to the city for review/approval on 8/8. / Chris Perales on 2025-09-02 12:09: Delay in getting fire pump approved by the city. City is requesting more documentation from tenant / Jason Johnston on 2025-10-21 14:10: Awaiting response / Jason Johnston on 2025-10-27 16:10: Waiting for feedback from city. / Jason Johnston on 2025-10-28 16:10: Need an answer from CP / Jason Johnston on 2025-12-02 14:16: Waiting for design submittal approval / Jason Johnston on 2025-12-16 15:49: no update / allucent_notes_20251209_203830: John Capriotti on 2025-08-05 15:08: Olympic West to submit the design to the city on 8/6, City review to 8/7. / John Capriotti on 2025-08-12 14:08: Fire Suppression contractor submitted the design to the city for review/approval on 8/8. / Chris Perales on 2025-09-02 12:09: Delay in getting fire pump approved by the city. City is requesting more documentation from tenant / Jason Johnston on 2025-10-21 14:10: Awaiting response / Jason Johnston on 2025-10-27 16:10: Waiting for feedback from city. / Jason Johnston on 2025-10-28 16:10: Need an answer from CP / Jason Johnston on 2025-12-02 14:16: Waiting for design submittal approval / allucent_notes_20251202_153722: John Capriotti on 2025-08-05 15:08: Olympic West to submit the design to the city on 8/6, City review to 8/7. / John Capriotti on 2025-08-12 14:08: Fire Suppression contractor submitted the design to the city for review/approval on 8/8. / Chris Perales on 2025-09-02 12:09: Delay in getting fire pump approved by the city. City is requesting more documentation from tenant / Jason Johnston on 2025-10-21 14:10: Awaiting response / Jason Johnston on 2025-10-27 16:10: Waiting for feedback from city. / Jason Johnston on 2025-10-28 16:10: Need an answer from CP / Jason Johnston on 2025-12-02 14:16: Waiting for design submittal approval / allucent_notes_20251118_192630: John Capriotti on 2025-08-05 15:08: Olympic West to submit the design to the city on 8/6, City review to 8/7. / John Capriotti on 2025-08-12 14:08: Fire Suppression contractor submitted the design to the city for review/approval on 8/8. / Chris Perales on 2025-09-02 12:09: Delay in getting fire pump approved by the city. City is requesting more documentation from tenant / Jason Johnston on 2025-10-21 14:10: Awaiting response / Jason Johnston on 2025-10-27 16:10: Waiting for feedback from city. / Jason Johnston on 2025-10-28 16:10: Need an answer from CP / allucent_notes_20251111_182405: John Capriotti on 2025-08-05 15:08: Olympic West to submit the design to the city on 8/6, City review to 8/7. / John Capriotti on 2025-08-12 14:08: Fire Suppression contractor submitted the design to the city for review/approval on 8/8. / Chris Perales on 2025-09-02 12:09: Delay in getting fire pump approved by the city. City is requesting more documentation from tenant / Jason Johnston on 2025-10-21 14:10: Awaiting response / Jason Johnston on 2025-10-27 16:10: Waiting for feedback from city. / Jason Johnston on 2025-10-28 16:10: Need an answer from CP / allucent_notes_20251104_160200: John Capriotti on 2025-08-05 15:08: Olympic West to submit the design to the city on 8/6, City review to 8/7. / John Capriotti on 2025-08-12 14:08: Fire Suppression contractor submitted the design to the city for review/approval on 8/8. / Chris Perales on 2025-09-02 12:09: Delay in getting fire pump approved by the city. City is requesting more documentation from tenant / Jason Johnston on 2025-10-21 14:10: Awaiting response / Jason Johnston on 2025-10-27 16:10: Waiting for feedback from city. / Jason Johnston on 2025-10-28 16:10: Need an answer from CP / allucent_notes_20251028_163138: John Capriotti on 2025-08-05 15:08: Olympic West to submit the design to the city on 8/6, City review to 8/7. / John Capriotti on 2025-08-12 14:08: Fire Suppression contractor submitted the design to the city for review/approval on 8/8. / Chris Perales on 2025-09-02 12:09: Delay in getting fire pump approved by the city. City is requesting more documentation from tenant / Jason Johnston on 2025-10-21 14:10: Awaiting response / Jason Johnston on 2025-10-27 16:10: Waiting for feedback from city. / Jason Johnston on 2025-10-28 16:10: Need an answer from CP / allucent_notes_20251027_224008: John Capriotti on 2025-08-05 15:08: Olympic West to submit the design to the city on 8/6, City review to 8/7. / John Capriotti on 2025-08-12 14:08: Fire Suppression contractor submitted the design to the city for review/approval on 8/8. / Chris Perales on 2025-09-02 12:09: Delay in getting fire pump approved by the city. City is requesting more documentation from tenant / Jason Johnston on 2025-10-21 14:10: Awaiting response / Jason Johnston on 2025-10-27 16:10: Waiting for feedback from city. / allucent_notes_20251021_145627: John Capriotti on 2025-08-05 15:08: Olympic West to submit the design to the city on 8/6, City review to 8/7. / John Capriotti on 2025-08-12 14:08: Fire Suppression contractor submitted the design to the city for review/approval on 8/8. / Chris Perales on 2025-09-02 12:09: Delay in getting fire pump approved by the city. City is requesting more documentation from tenant / Jason Johnston on 2025-10-21 14:10: Awaiting response / allucent_notes_20251014_152335: John Capriotti on 2025-08-05 15:08: Olympic West to submit the design to the city on 8/6, City review to 8/7. / John Capriotti on 2025-08-12 14:08: Fire Suppression contractor submitted the design to the city for review/approval on 8/8. / Chris Perales on 2025-09-02 12:09: Delay in getting fire pump approved by the city. City is requesting more documentation from tenant / allucent_notes: John Capriotti on 2025-08-05 15:08: Olympic West to submit the design to the city on 8/6, City review to 8/7. / allucent_notes_20251230_164549: John Capriotti on 2025-08-05 15:08: Olympic West to submit the design to the city on 8/6, City review to 8/7. / John Capriotti on 2025-08-12 14:08: Fire Suppression contractor submitted the design to the city for review/approval on 8/8. / Chris Perales on 2025-09-02 12:09: Delay in getting fire pump approved by the city. City is requesting more documentation from tenant / Jason Johnston on 2025-10-21 14:10: Awaiting response / Jason Johnston on 2025-10-27 16:10: Waiting for feedback from city. / Jason Johnston on 2025-10-28 16:10: Need an answer from CP / Jason Johnston on 2025-12-02 14:16: Waiting for design submittal approval / Jason Johnston on 2025-12-16 15:49: no update / allucent_notes: 2025-08-05 15:08 - User: John Capriotti - Date Added: 2025-08-05 15:08 - Note: Olympic West to submit the design to the city on 8/6, City review to 8/7. / 2025-08-12 14:08 - User: John Capriotti - Date Added: 2025-08-12 14:08 - Note: Fire Suppression con
- QTS-1011230: allucent_notes_20251216_165335: John Capriotti on 2025-08-05 15:08: Olympic West to submit the design to the city on 8/6, City review to 8/7. / John Capriotti on 2025-08-12 14:08: Fire Suppression contractor submitted the design to the city for review/approval on 8/8. / Chris Perales on 2025-09-02 12:09: Delay in getting fire pump approved by the city. City is requesting more documentation from tenant / Jason Johnston on 2025-10-21 14:10: Awaiting response / Jason Johnston on 2025-10-27 16:10: Waiting for feedback from city. / Jason Johnston on 2025-10-28 16:10: Need an answer from CP / Jason Johnston on 2025-12-02 14:16: Waiting for design submittal approval / Jason Johnston on 2025-12-16 15:49: no update / allucent_notes_20251209_203830: John Capriotti on 2025-08-05 15:08: Olympic West to submit the design to the city on 8/6, City review to 8/7. / John Capriotti on 2025-08-12 14:08: Fire Suppression contractor submitted the design to the city for review/approval on 8/8. / Chris Perales on 2025-09-02 12:09: Delay in getting fire pump approved by the city. City is requesting more documentation from tenant / Jason Johnston on 2025-10-21 14:10: Awaiting response / Jason Johnston on 2025-10-27 16:10: Waiting for feedback from city. / Jason Johnston on 2025-10-28 16:10: Need an answer from CP / Jason Johnston on 2025-12-02 14:16: Waiting for design submittal approval / allucent_notes_20251202_153722: John Capriotti on 2025-08-05 15:08: Olympic West to submit the design to the city on 8/6, City review to 8/7. / John Capriotti on 2025-08-12 14:08: Fire Suppression contractor submitted the design to the city for review/approval on 8/8. / Chris Perales on 2025-09-02 12:09: Delay in getting fire pump approved by the city. City is requesting more documentation from tenant / Jason Johnston on 2025-10-21 14:10: Awaiting response / Jason Johnston on 2025-10-27 16:10: Waiting for feedback from city. / Jason Johnston on 2025-10-28 16:10: Need an answer from CP / Jason Johnston on 2025-12-02 14:16: Waiting for design submittal approval / allucent_notes_20251118_192630: John Capriotti on 2025-08-05 15:08: Olympic West to submit the design to the city on 8/6, City review to 8/7. / John Capriotti on 2025-08-12 14:08: Fire Suppression contractor submitted the design to the city for review/approval on 8/8. / Chris Perales on 2025-09-02 12:09: Delay in getting fire pump approved by the city. City is requesting more documentation from tenant / Jason Johnston on 2025-10-21 14:10: Awaiting response / Jason Johnston on 2025-10-27 16:10: Waiting for feedback from city. / Jason Johnston on 2025-10-28 16:10: Need an answer from CP / allucent_notes_20251111_182405: John Capriotti on 2025-08-05 15:08: Olympic West to submit the design to the city on 8/6, City review to 8/7. / John Capriotti on 2025-08-12 14:08: Fire Suppression contractor submitted the design to the city for review/approval on 8/8. / Chris Perales on 2025-09-02 12:09: Delay in getting fire pump approved by the city. City is requesting more documentation from tenant / Jason Johnston on 2025-10-21 14:10: Awaiting response / Jason Johnston on 2025-10-27 16:10: Waiting for feedback from city. / Jason Johnston on 2025-10-28 16:10: Need an answer from CP / allucent_notes_20251104_160200: John Capriotti on 2025-08-05 15:08: Olympic West to submit the design to the city on 8/6, City review to 8/7. / John Capriotti on 2025-08-12 14:08: Fire Suppression contractor submitted the design to the city for review/approval on 8/8. / Chris Perales on 2025-09-02 12:09: Delay in getting fire pump approved by the city. City is requesting more documentation from tenant / Jason Johnston on 2025-10-21 14:10: Awaiting response / Jason Johnston on 2025-10-27 16:10: Waiting for feedback from city. / Jason Johnston on 2025-10-28 16:10: Need an answer from CP / allucent_notes_20251028_163138: John Capriotti on 2025-08-05 15:08: Olympic West to submit the design to the city on 8/6, City review to 8/7. / John Capriotti on 2025-08-12 14:08: Fire Suppression contractor submitted the design to the city for review/approval on 8/8. / Chris Perales on 2025-09-02 12:09: Delay in getting fire pump approved by the city. City is requesting more documentation from tenant / Jason Johnston on 2025-10-21 14:10: Awaiting response / Jason Johnston on 2025-10-27 16:10: Waiting for feedback from city. / Jason Johnston on 2025-10-28 16:10: Need an answer from CP / allucent_notes_20251027_224008: John Capriotti on 2025-08-05 15:08: Olympic West to submit the design to the city on 8/6, City review to 8/7. / John Capriotti on 2025-08-12 14:08: Fire Suppression contractor submitted the design to the city for review/approval on 8/8. / Chris Perales on 2025-09-02 12:09: Delay in getting fire pump approved by the city. City is requesting more documentation from tenant / Jason Johnston on 2025-10-21 14:10: Awaiting response / Jason Johnston on 2025-10-27 16:10: Waiting for feedback from city. / allucent_notes_20251021_145627: John Capriotti on 2025-08-05 15:08: Olympic West to submit the design to the city on 8/6, City review to 8/7. / John Capriotti on 2025-08-12 14:08: Fire Suppression contractor submitted the design to the city for review/approval on 8/8. / Chris Perales on 2025-09-02 12:09: Delay in getting fire pump approved by the city. City is requesting more documentation from tenant / Jason Johnston on 2025-10-21 14:10: Awaiting response / allucent_notes_20251014_152335: John Capriotti on 2025-08-05 15:08: Olympic West to submit the design to the city on 8/6, City review to 8/7. / John Capriotti on 2025-08-12 14:08: Fire Suppression contractor submitted the design to the city for review/approval on 8/8. / Chris Perales on 2025-09-02 12:09: Delay in getting fire pump approved by the city. City is requesting more documentation from tenant / allucent_notes: John Capriotti on 2025-08-05 15:08: Olympic West to submit the design to the city on 8/6, City review to 8/7. / allucent_notes_20251230_164549: John Capriotti on 2025-08-05 15:08: Olympic West to submit the design to the city on 8/6, City review to 8/7. / John Capriotti on 2025-08-12 14:08: Fire Suppression contractor submitted the design to the city for review/approval on 8/8. / Chris Perales on 2025-09-02 12:09: Delay in getting fire pump approved by the city. City is requesting more documentation from tenant / Jason Johnston on 2025-10-21 14:10: Awaiting response / Jason Johnston on 2025-10-27 16:10: Waiting for feedback from city. / Jason Johnston on 2025-10-28 16:10: Need an answer from CP / Jason Johnston on 2025-12-02 14:16: Waiting for design submittal approval / Jason Johnston on 2025-12-16 15:49: no update / allucent_notes: 2025-08-05 15:08 - User: John Capriotti - Date Added: 2025-08-05 15:08 - Note: Olympic West to submit the design to the city on 8/6, City review to 8/7. / 2025-08-12 14:08 - User: John Capriotti - Date Added: 2025-08-12 14:08 - Note: Fire Suppression con
- QTS-1011240: allucent_notes_20251216_165335: John Capriotti on 2025-08-05 15:08: Olympic West to submit the design to the city on 8/6, City review to 8/7. / John Capriotti on 2025-08-12 14:08: Fire Suppression contractor submitted the design to the city for review/approval on 8/8. / Chris Perales on 2025-09-02 12:09: Delay in getting fire pump approved by the city. City is requesting more documentation from tenant / Jason Johnston on 2025-10-21 14:10: Awaiting response / Jason Johnston on 2025-10-27 16:10: Waiting for feedback from city. / Jason Johnston on 2025-10-28 16:10: Need an answer from CP / Jason Johnston on 2025-12-02 14:16: Waiting for design submittal approval / Jason Johnston on 2025-12-16 15:49: no update / allucent_notes_20251209_203830: John Capriotti on 2025-08-05 15:08: Olympic West to submit the design to the city on 8/6, City review to 8/7. / John Capriotti on 2025-08-12 14:08: Fire Suppression contractor submitted the design to the city for review/approval on 8/8. / Chris Perales on 2025-09-02 12:09: Delay in getting fire pump approved by the city. City is requesting more documentation from tenant / Jason Johnston on 2025-10-21 14:10: Awaiting response / Jason Johnston on 2025-10-27 16:10: Waiting for feedback from city. / Jason Johnston on 2025-10-28 16:10: Need an answer from CP / Jason Johnston on 2025-12-02 14:16: Waiting for design submittal approval / allucent_notes_20251202_153722: John Capriotti on 2025-08-05 15:08: Olympic West to submit the design to the city on 8/6, City review to 8/7. / John Capriotti on 2025-08-12 14:08: Fire Suppression contractor submitted the design to the city for review/approval on 8/8. / Chris Perales on 2025-09-02 12:09: Delay in getting fire pump approved by the city. City is requesting more documentation from tenant / Jason Johnston on 2025-10-21 14:10: Awaiting response / Jason Johnston on 2025-10-27 16:10: Waiting for feedback from city. / Jason Johnston on 2025-10-28 16:10: Need an answer from CP / Jason Johnston on 2025-12-02 14:16: Waiting for design submittal approval / allucent_notes_20251118_192630: John Capriotti on 2025-08-05 15:08: Olympic West to submit the design to the city on 8/6, City review to 8/7. / John Capriotti on 2025-08-12 14:08: Fire Suppression contractor submitted the design to the city for review/approval on 8/8. / Chris Perales on 2025-09-02 12:09: Delay in getting fire pump approved by the city. City is requesting more documentation from tenant / Jason Johnston on 2025-10-21 14:10: Awaiting response / Jason Johnston on 2025-10-27 16:10: Waiting for feedback from city. / Jason Johnston on 2025-10-28 16:10: Need an answer from CP / allucent_notes_20251111_182405: John Capriotti on 2025-08-05 15:08: Olympic West to submit the design to the city on 8/6, City review to 8/7. / John Capriotti on 2025-08-12 14:08: Fire Suppression contractor submitted the design to the city for review/approval on 8/8. / Chris Perales on 2025-09-02 12:09: Delay in getting fire pump approved by the city. City is requesting more documentation from tenant / Jason Johnston on 2025-10-21 14:10: Awaiting response / Jason Johnston on 2025-10-27 16:10: Waiting for feedback from city. / Jason Johnston on 2025-10-28 16:10: Need an answer from CP / allucent_notes_20251104_160200: John Capriotti on 2025-08-05 15:08: Olympic West to submit the design to the city on 8/6, City review to 8/7. / John Capriotti on 2025-08-12 14:08: Fire Suppression contractor submitted the design to the city for review/approval on 8/8. / Chris Perales on 2025-09-02 12:09: Delay in getting fire pump approved by the city. City is requesting more documentation from tenant / Jason Johnston on 2025-10-21 14:10: Awaiting response / Jason Johnston on 2025-10-27 16:10: Waiting for feedback from city. / Jason Johnston on 2025-10-28 16:10: Need an answer from CP / allucent_notes_20251028_163138: John Capriotti on 2025-08-05 15:08: Olympic West to submit the design to the city on 8/6, City review to 8/7. / John Capriotti on 2025-08-12 14:08: Fire Suppression contractor submitted the design to the city for review/approval on 8/8. / Chris Perales on 2025-09-02 12:09: Delay in getting fire pump approved by the city. City is requesting more documentation from tenant / Jason Johnston on 2025-10-21 14:10: Awaiting response / Jason Johnston on 2025-10-27 16:10: Waiting for feedback from city. / Jason Johnston on 2025-10-28 16:10: Need an answer from CP / allucent_notes_20251027_224008: John Capriotti on 2025-08-05 15:08: Olympic West to submit the design to the city on 8/6, City review to 8/7. / John Capriotti on 2025-08-12 14:08: Fire Suppression contractor submitted the design to the city for review/approval on 8/8. / Chris Perales on 2025-09-02 12:09: Delay in getting fire pump approved by the city. City is requesting more documentation from tenant / Jason Johnston on 2025-10-21 14:10: Awaiting response / Jason Johnston on 2025-10-27 16:10: Waiting for feedback from city. / allucent_notes_20251021_145627: John Capriotti on 2025-08-05 15:08: Olympic West to submit the design to the city on 8/6, City review to 8/7. / John Capriotti on 2025-08-12 14:08: Fire Suppression contractor submitted the design to the city for review/approval on 8/8. / Chris Perales on 2025-09-02 12:09: Delay in getting fire pump approved by the city. City is requesting more documentation from tenant / Jason Johnston on 2025-10-21 14:10: Awaiting response / allucent_notes_20251014_152335: John Capriotti on 2025-08-05 15:08: Olympic West to submit the design to the city on 8/6, City review to 8/7. / John Capriotti on 2025-08-12 14:08: Fire Suppression contractor submitted the design to the city for review/approval on 8/8. / Chris Perales on 2025-09-02 12:09: Delay in getting fire pump approved by the city. City is requesting more documentation from tenant / allucent_notes: John Capriotti on 2025-08-05 15:08: Olympic West to submit the design to the city on 8/6, City review to 8/7. / allucent_notes_20251230_164549: John Capriotti on 2025-08-05 15:08: Olympic West to submit the design to the city on 8/6, City review to 8/7. / John Capriotti on 2025-08-12 14:08: Fire Suppression contractor submitted the design to the city for review/approval on 8/8. / Chris Perales on 2025-09-02 12:09: Delay in getting fire pump approved by the city. City is requesting more documentation from tenant / Jason Johnston on 2025-10-21 14:10: Awaiting response / Jason Johnston on 2025-10-27 16:10: Waiting for feedback from city. / Jason Johnston on 2025-10-28 16:10: Need an answer from CP / Jason Johnston on 2025-12-02 14:16: Waiting for design submittal approval / Jason Johnston on 2025-12-16 15:49: no update / allucent_notes: 2025-08-05 15:08 - User: John Capriotti - Date Added: 2025-08-05 15:08 - Note: Olympic West to submit the design to the city on 8/6, City review to 8/7. / 2025-08-12 14:08 - User: John Capriotti - Date Added: 2025-08-12 14:08 - Note: Fire Suppression con
- QTS-18841: allucent_notes: Jason Johnston on 2025-08-12 18:08: Need response from team / allucent_notes: 2025-08-12 18:08 - User: Jason Johnston - Date Added: 2025-08-12 18:08 - Note: Need response from team
- QTS-12901: allucent_notes_20251216_165335: John Capriotti on 2025-08-19 14:08: Confirmed with Olympic West that their order confirmation/procurement date was 7/16/2025 with 10-11 week lead time. / John Capriotti on 2025-08-19 14:08: Confirmed with Olympic West that their order confirmation/procurement date was 7/16/2025 with 10-11 week lead time. 11 week lead time puts delivery estimate at 10/1/2025. / Andrew Melis on 2025-10-27 13:10: Half is already onsite. Balance it due on site withing the next 5-10 days / allucent_notes_20251209_203830: John Capriotti on 2025-08-19 14:08: Confirmed with Olympic West that their order confirmation/procurement date was 7/16/2025 with 10-11 week lead time. / John Capriotti on 2025-08-19 14:08: Confirmed with Olympic West that their order confirmation/procurement date was 7/16/2025 with 10-11 week lead time. 11 week lead time puts delivery estimate at 10/1/2025. / Andrew Melis on 2025-10-27 13:10: Half is already onsite. Balance it due on site withing the next 5-10 days / allucent_notes_20251202_153722: John Capriotti on 2025-08-19 14:08: Confirmed with Olympic West that their order confirmation/procurement date was 7/16/2025 with 10-11 week lead time. / John Capriotti on 2025-08-19 14:08: Confirmed with Olympic West that their order confirmation/procurement date was 7/16/2025 with 10-11 week lead time. 11 week lead time puts delivery estimate at 10/1/2025. / Andrew Melis on 2025-10-27 13:10: Half is already onsite. Balance it due on site withing the next 5-10 days / allucent_notes_20251118_192630: John Capriotti on 2025-08-19 14:08: Confirmed with Olympic West that their order confirmation/procurement date was 7/16/2025 with 10-11 week lead time. / John Capriotti on 2025-08-19 14:08: Confirmed with Olympic West that their order confirmation/procurement date was 7/16/2025 with 10-11 week lead time. 11 week lead time puts delivery estimate at 10/1/2025. / Andrew Melis on 2025-10-27 13:10: Half is already onsite. Balance it due on site withing the next 5-10 days / allucent_notes_20251111_182405: John Capriotti on 2025-08-19 14:08: Confirmed with Olympic West that their order confirmation/procurement date was 7/16/2025 with 10-11 week lead time. / John Capriotti on 2025-08-19 14:08: Confirmed with Olympic West that their order confirmation/procurement date was 7/16/2025 with 10-11 week lead time. 11 week lead time puts delivery estimate at 10/1/2025. / Andrew Melis on 2025-10-27 13:10: Half is already onsite. Balance it due on site withing the next 5-10 days / allucent_notes_20251104_160200: John Capriotti on 2025-08-19 14:08: Confirmed with Olympic West that their order confirmation/procurement date was 7/16/2025 with 10-11 week lead time. / John Capriotti on 2025-08-19 14:08: Confirmed with Olympic West that their order confirmation/procurement date was 7/16/2025 with 10-11 week lead time. 11 week lead time puts delivery estimate at 10/1/2025. / Andrew Melis on 2025-10-27 13:10: Half is already onsite. Balance it due on site withing the next 5-10 days / allucent_notes_20251028_163138: John Capriotti on 2025-08-19 14:08: Confirmed with Olympic West that their order confirmation/procurement date was 7/16/2025 with 10-11 week lead time. / John Capriotti on 2025-08-19 14:08: Confirmed with Olympic West that their order confirmation/procurement date was 7/16/2025 with 10-11 week lead time. 11 week lead time puts delivery estimate at 10/1/2025. / Andrew Melis on 2025-10-27 13:10: Half is already onsite. Balance it due on site withing the next 5-10 days / allucent_notes_20251027_224008: John Capriotti on 2025-08-19 14:08: Confirmed with Olympic West that their order confirmation/procurement date was 7/16/2025 with 10-11 week lead time. / John Capriotti on 2025-08-19 14:08: Confirmed with Olympic West that their order confirmation/procurement date was 7/16/2025 with 10-11 week lead time. 11 week lead time puts delivery estimate at 10/1/2025. / Andrew Melis on 2025-10-27 13:10: Half is already onsite. Balance it due on site withing the next 5-10 days / allucent_notes_20251021_145627: John Capriotti on 2025-08-19 14:08: Confirmed with Olympic West that their order confirmation/procurement date was 7/16/2025 with 10-11 week lead time. / John Capriotti on 2025-08-19 14:08: Confirmed with Olympic West that their order confirmation/procurement date was 7/16/2025 with 10-11 week lead time. 11 week lead time puts delivery estimate at 10/1/2025. / allucent_notes_20251014_152335: John Capriotti on 2025-08-19 14:08: Confirmed with Olympic West that their order confirmation/procurement date was 7/16/2025 with 10-11 week lead time. / John Capriotti on 2025-08-19 14:08: Confirmed with Olympic West that their order confirmation/procurement date was 7/16/2025 with 10-11 week lead time. 11 week lead time puts delivery estimate at 10/1/2025. / allucent_notes: John Capriotti on 2025-08-19 14:08: Confirmed with Olympic West that their order confirmation/procurement date was 7/16/2025 with 10-11 week lead time. / John Capriotti on 2025-08-19 14:08: Confirmed with Olympic West that their order confirmation/procurement date was 7/16/2025 with 10-11 week lead time. 11 week lead time puts delivery estimate at 10/1/2025. / allucent_notes_20251230_164549: John Capriotti on 2025-08-19 14:08: Confirmed with Olympic West that their order confirmation/procurement date was 7/16/2025 with 10-11 week lead time. / John Capriotti on 2025-08-19 14:08: Confirmed with Olympic West that their order confirmation/procurement date was 7/16/2025 with 10-11 week lead time. 11 week lead time puts delivery estimate at 10/1/2025. / Andrew Melis on 2025-10-27 13:10: Half is already onsite. Balance it due on site withing the next 5-10 days / allucent_notes: 2025-08-19 14:08 - User: John Capriotti - Date Added: 2025-08-19 14:08 - Note: Confirmed with Olympic West that their order confirmation/procurement date was 7/16/2025 with 10-11 week lead time. / 2025-08-19 14:08 - User: John Capriotti - Date Added: 202
- QTS-9811: allucent_notes: John Capriotti on 2025-08-19 14:08: Actual Date is 8/13. / allucent_notes: 2025-08-19 14:08 - User: John Capriotti - Date Added: 2025-08-19 14:08 - Note: Actual Date is 8/13.
- QTS-18851: allucent_notes_20251216_165335: John Capriotti on 2025-08-05 15:08: Olympic West to submit the design to the city on 8/6, City review to 8/7. / John Capriotti on 2025-08-12 14:08: Fire Suppression contractor submitted the design to the city for review/approval on 8/8. / Chris Perales on 2025-09-02 12:09: Delay in getting fire pump approved by the city. City is requesting more documentation from tenant / Jason Johnston on 2025-10-21 14:10: Awaiting response / Jason Johnston on 2025-10-27 16:10: Waiting for feedback from city. / Jason Johnston on 2025-10-28 16:10: Need an answer from CP / Jason Johnston on 2025-12-02 14:16: Waiting for design submittal approval / Jason Johnston on 2025-12-16 15:49: no update / allucent_notes_20251209_203830: John Capriotti on 2025-08-05 15:08: Olympic West to submit the design to the city on 8/6, City review to 8/7. / John Capriotti on 2025-08-12 14:08: Fire Suppression contractor submitted the design to the city for review/approval on 8/8. / Chris Perales on 2025-09-02 12:09: Delay in getting fire pump approved by the city. City is requesting more documentation from tenant / Jason Johnston on 2025-10-21 14:10: Awaiting response / Jason Johnston on 2025-10-27 16:10: Waiting for feedback from city. / Jason Johnston on 2025-10-28 16:10: Need an answer from CP / Jason Johnston on 2025-12-02 14:16: Waiting for design submittal approval / allucent_notes_20251202_153722: John Capriotti on 2025-08-05 15:08: Olympic West to submit the design to the city on 8/6, City review to 8/7. / John Capriotti on 2025-08-12 14:08: Fire Suppression contractor submitted the design to the city for review/approval on 8/8. / Chris Perales on 2025-09-02 12:09: Delay in getting fire pump approved by the city. City is requesting more documentation from tenant / Jason Johnston on 2025-10-21 14:10: Awaiting response / Jason Johnston on 2025-10-27 16:10: Waiting for feedback from city. / Jason Johnston on 2025-10-28 16:10: Need an answer from CP / Jason Johnston on 2025-12-02 14:16: Waiting for design submittal approval / allucent_notes_20251118_192630: John Capriotti on 2025-08-05 15:08: Olympic West to submit the design to the city on 8/6, City review to 8/7. / John Capriotti on 2025-08-12 14:08: Fire Suppression contractor submitted the design to the city for review/approval on 8/8. / Chris Perales on 2025-09-02 12:09: Delay in getting fire pump approved by the city. City is requesting more documentation from tenant / Jason Johnston on 2025-10-21 14:10: Awaiting response / Jason Johnston on 2025-10-27 16:10: Waiting for feedback from city. / Jason Johnston on 2025-10-28 16:10: Need an answer from CP / allucent_notes_20251111_182405: John Capriotti on 2025-08-05 15:08: Olympic West to submit the design to the city on 8/6, City review to 8/7. / John Capriotti on 2025-08-12 14:08: Fire Suppression contractor submitted the design to the city for review/approval on 8/8. / Chris Perales on 2025-09-02 12:09: Delay in getting fire pump approved by the city. City is requesting more documentation from tenant / Jason Johnston on 2025-10-21 14:10: Awaiting response / Jason Johnston on 2025-10-27 16:10: Waiting for feedback from city. / Jason Johnston on 2025-10-28 16:10: Need an answer from CP / allucent_notes_20251104_160200: John Capriotti on 2025-08-05 15:08: Olympic West to submit the design to the city on 8/6, City review to 8/7. / John Capriotti on 2025-08-12 14:08: Fire Suppression contractor submitted the design to the city for review/approval on 8/8. / Chris Perales on 2025-09-02 12:09: Delay in getting fire pump approved by the city. City is requesting more documentation from tenant / Jason Johnston on 2025-10-21 14:10: Awaiting response / Jason Johnston on 2025-10-27 16:10: Waiting for feedback from city. / Jason Johnston on 2025-10-28 16:10: Need an answer from CP / allucent_notes_20251028_163138: John Capriotti on 2025-08-05 15:08: Olympic West to submit the design to the city on 8/6, City review to 8/7. / John Capriotti on 2025-08-12 14:08: Fire Suppression contractor submitted the design to the city for review/approval on 8/8. / Chris Perales on 2025-09-02 12:09: Delay in getting fire pump approved by the city. City is requesting more documentation from tenant / Jason Johnston on 2025-10-21 14:10: Awaiting response / Jason Johnston on 2025-10-27 16:10: Waiting for feedback from city. / Jason Johnston on 2025-10-28 16:10: Need an answer from CP / allucent_notes_20251027_224008: John Capriotti on 2025-08-05 15:08: Olympic West to submit the design to the city on 8/6, City review to 8/7. / John Capriotti on 2025-08-12 14:08: Fire Suppression contractor submitted the design to the city for review/approval on 8/8. / Chris Perales on 2025-09-02 12:09: Delay in getting fire pump approved by the city. City is requesting more documentation from tenant / Jason Johnston on 2025-10-21 14:10: Awaiting response / Jason Johnston on 2025-10-27 16:10: Waiting for feedback from city. / allucent_notes_20251021_145627: John Capriotti on 2025-08-05 15:08: Olympic West to submit the design to the city on 8/6, City review to 8/7. / John Capriotti on 2025-08-12 14:08: Fire Suppression contractor submitted the design to the city for review/approval on 8/8. / Chris Perales on 2025-09-02 12:09: Delay in getting fire pump approved by the city. City is requesting more documentation from tenant / Jason Johnston on 2025-10-21 14:10: Awaiting response / allucent_notes_20251014_152335: John Capriotti on 2025-08-05 15:08: Olympic West to submit the design to the city on 8/6, City review to 8/7. / John Capriotti on 2025-08-12 14:08: Fire Suppression contractor submitted the design to the city for review/approval on 8/8. / Chris Perales on 2025-09-02 12:09: Delay in getting fire pump approved by the city. City is requesting more documentation from tenant / allucent_notes: John Capriotti on 2025-08-05 15:08: Olympic West to submit the design to the city on 8/6, City review to 8/7. / allucent_notes_20251230_164549: John Capriotti on 2025-08-05 15:08: Olympic West to submit the design to the city on 8/6, City review to 8/7. / John Capriotti on 2025-08-12 14:08: Fire Suppression contractor submitted the design to the city for review/approval on 8/8. / Chris Perales on 2025-09-02 12:09: Delay in getting fire pump approved by the city. City is requesting more documentation from tenant / Jason Johnston on 2025-10-21 14:10: Awaiting response / Jason Johnston on 2025-10-27 16:10: Waiting for feedback from city. / Jason Johnston on 2025-10-28 16:10: Need an answer from CP / Jason Johnston on 2025-12-02 14:16: Waiting for design submittal approval / Jason Johnston on 2025-12-16 15:49: no update / allucent_notes: 2025-08-05 15:08 - User: John Capriotti - Date Added: 2025-08-05 15:08 - Note: Olympic West to submit the design to the city on 8/6, City review to 8/7. / 2025-08-12 14:08 - User: John Capriotti - Date Added: 2025-08-12 14:08 - Note: Fire Suppression con

| ID | WBS | Activity | Duration | Start | Finish | Predecessors | Complete | Planned start | Planned finish | Layton Discipline | Baseline | Project Section-1 | Precon Phase | Contract | Allucent CSI Group | Project Section | TFO-CONST ONLY |
| --- | --- | --- | --- | --- | --- | --- | --- | --- | --- | --- | --- | --- | --- | --- | --- | --- | --- |
|  | 10 | **Mechanical Doghouses** |  | 2025-05-07 | 2025-07-22 |  |  |  |  |  |  |  |  |  |  |  |  |
| QTS-18721 |  | Prepare Mechanical Doghouse Submittals | 5d | 2025-05-07 A | 2025-05-13 A | QTS-9851, QTS-17881 | 100% |  |  | Precon | GMP | Preconstruction | CFCI Procurement | BAB |  |  |  |
| QTS-18891 |  | Layton Review Mechanical Doghouse Submittals | 5d | 2025-05-13 A | 2025-05-13 A | QTS-18721 FF | 100% | 2025-05-13 | 2025-05-19 | Precon | GMP | Preconstruction | CFCI Procurement | BAB |  |  |  |
| QTS-19001 |  | Design Team Review & Approve Doghouse Submittals | 15d | 2025-05-14 A | 2025-05-27 A | QTS-18891 | 100% | 2025-05-14 | 2025-06-04 | Precon | GMP | Preconstruction | CFCI Procurement | BAB |  |  |  |
| QTS-19911 |  | Mechanical Doghouse Procurement | 70d | 2025-05-28 A | 2025-07-22 A | QTS-19001 | 100% | 2025-05-28 | 2025-09-04 | Precon | GMP | Preconstruction | CFCI Procurement | BAB | 01ADMIN | Preconstruction |  |
|  | 32 | **Electrical Doghouses** |  | 2025-04-15 | 2025-09-19 |  |  |  |  |  |  |  |  |  |  |  |  |
| QTS-18751 |  | Prepare Electrical Doghouse Submittals | 5d | 2025-04-15 A | 2025-04-21 A | QTS-1421 | 100% |  |  | Precon | GMP | Preconstruction | CFCI Procurement | BAB |  |  |  |
| QTS-18901 |  | Layton Review Electrical Doghouse Submittals | 5d | 2025-04-22 A | 2025-06-12 A | QTS-18751 | 100% | 2025-04-22 | 2025-04-28 | Precon | GMP | Preconstruction | CFCI Procurement | BAB | 01ADMIN | Preconstruction |  |
| QTS-19011 |  | Design Team Review & Approve Electrical Doghouse Submittals | 10d | 2025-06-12 A | 2025-06-25 A | QTS-18901 | 100% | 2025-06-26 | 2025-07-10 | Precon | GMP | Preconstruction | CFCI Procurement | BAB | 01ADMIN | Preconstruction |  |
| QTS-19561 |  | Electrical Doghouse Procurement | 70d | 2025-06-25 A | 2025-09-19 A | QTS-19011 | 100% | 2025-07-11 | 2025-10-17 | Precon | GMP | Preconstruction | CFCI Procurement | BAB | 01ADMIN | Preconstruction |  |
|  | 11 | **Humidifiers** |  | 2025-04-15 | 2025-09-26 |  |  |  |  |  |  |  |  |  |  |  |  |
| QTS-17881 |  | Prepare Humidifier Submittals | 10d | 2025-04-15 A | 2025-05-14 A | QTS-9851 | 100% | 2025-04-15 | 2025-04-28 | Precon | GMP | Preconstruction | CFCI Procurement | BAB |  |  |  |
| QTS-18731 |  | Layton Review Humidifier Submittals | 3d | 2025-05-14 A | 2025-05-14 A | QTS-17881 FF | 100% | 2025-05-15 | 2025-05-19 | Precon | GMP | Preconstruction | CFCI Procurement | BAB |  |  |  |
| QTS-18811 |  | Design Team Review & Approve Humidifier Submittals | 15d | 2025-05-15 A | 2025-05-29 A | QTS-18731 | 100% | 2025-05-15 | 2025-06-05 | Precon | GMP | Preconstruction | CFCI Procurement | BAB |  |  |  |
| QTS-19481 |  | DH 2100 Humidifiers Procurement | 60d | 2025-05-30 A | 2025-09-26 A | QTS-18811 | 100% | 2025-05-30 | 2025-08-22 | Precon | GMP | Preconstruction | CFCI Procurement | BAB | 01ADMIN | Preconstruction |  |
| QTS-19491 |  | DH 1100 Humidifiers Procurement | 60d | 2025-05-30 A | 2025-09-26 A | QTS-18811 | 100% | 2025-05-30 | 2025-08-22 | Precon | GMP | Preconstruction | CFCI Procurement | BAB | 01ADMIN | Preconstruction |  |
| QTS-19501 |  | DH 2200 Humidifiers Procurement | 60d | 2025-05-30 A | 2025-09-26 A | QTS-18811 | 100% | 2025-05-30 | 2025-08-22 | Precon | GMP | Preconstruction | CFCI Procurement | BAB | 01ADMIN | Preconstruction |  |
| QTS-19511 |  | DH 1200 Humidifiers Procurement | 60d | 2025-05-30 A | 2025-09-26 A | QTS-18811 | 100% | 2025-05-30 | 2025-08-22 | Precon | GMP | Preconstruction | CFCI Procurement | BAB | 01ADMIN | Preconstruction |  |
| QTS-36051 |  | DH 2300 Humidifiers Procurement | 60d | 2025-05-30 A | 2025-09-26 A | QTS-18811 | 100% | 2025-05-30 | 2025-08-22 | Precon | GMP | Preconstruction | CFCI Procurement | BAB | 01ADMIN | Preconstruction |  |
| QTS-36061 |  | DH 1300 Humidifiers Procurement | 60d | 2025-05-30 A | 2025-09-26 A | QTS-18811 | 100% | 2025-05-30 | 2025-08-22 | Precon | GMP | Preconstruction | CFCI Procurement | BAB | 01ADMIN | Preconstruction |  |
|  | 12 | **FRP Mechanical Yard Platforms** |  | 2025-11-13 | 2026-02-10 |  |  |  |  |  |  |  |  |  |  |  |  |
| QTS-1321 |  | DH 1100 Mechanical Yard FRP Platforms Procurement | 30d | 2025-11-13 A | 2025-12-05 A | QTS-15861 | 100% | 2025-11-18 | 2026-01-07 | Precon | GMP | Preconstruction | CFCI Procurement | TFO | 01ADMIN | Preconstruction | TFO CONST |
| QTS-24981 |  | DH 2100 Mechanical Yard FRP Platforms Procurement | 30d | 2025-11-13 A | 2025-12-05 A | QTS-24931 | 100% | 2025-11-13 | 2025-12-31 | Precon | GMP | Preconstruction | CFCI Procurement | TFO | 01ADMIN | Preconstruction | TFO CONST |
| QTS-1331 |  | DH 2200 Mechanical Yard FRP Platforms Procurement | 30d | 2025-12-10 A | 2026-01-30 A | QTS-24981 | 100% | 2025-12-10 | 2026-01-28 | Precon | GMP | Preconstruction | CFCI Procurement | TFO | 01ADMIN | Preconstruction | TFO CONST |
| QTS-1341 |  | DH 1200 Mechanical Yard FRP Platforms Procurement | 30d | 2025-12-10 A | 2026-02-10 A | QTS-24981 | 100% | 2025-12-10 | 2026-01-28 | Precon | GMP | Preconstruction | CFCI Procurement | TFO | 01ADMIN | Preconstruction | TFO CONST |
| QTS-36071 |  | DH 1300 Mechanical Yard FRP Platforms Procurement | 30d | 2025-12-10 A | 2026-02-10 A | QTS-24981 | 100% | 2025-12-10 | 2026-01-28 | Precon | GMP | Preconstruction | CFCI Procurement | TFO | 01ADMIN | Preconstruction | TFO CONST |
| QTS-36081 |  | DH 2300 Mechanical Yard FRP Platforms Procurement | 30d | 2025-12-10 A | 2026-02-10 A | QTS-24981 | 100% | 2025-12-10 | 2026-01-28 | Precon | GMP | Preconstruction | CFCI Procurement | TFO | 01ADMIN | Preconstruction | TFO CONST |

Notes:
- QTS-19481: allucent_notes: John Capriotti on 2025-08-26 15:08: Current delivery date is 9/3. Confirming with Belaire once more that this is still on track. / John Capriotti on 2025-08-26 15:08: Just received an update that these are targeted for 9/19 delivery per Belaire. / allucent_notes: 2025-08-26 15:08 - User: John Capriotti - Date Added: 2025-08-26 15:08 - Note: Current delivery date is 9/3. Confirming with Belaire once more that this is still on track. / 2025-08-26 15:08 - User: John Capriotti - Date Added: 2025-08-26 15:08 - Note: J
- QTS-19491: allucent_notes: John Capriotti on 2025-08-26 15:08: Current delivery date is 9/3. Confirming with Belaire once more that this is still on track. / John Capriotti on 2025-08-26 15:08: Just received an update that these are targeted for 9/19 delivery per Belaire. / allucent_notes: 2025-08-26 15:08 - User: John Capriotti - Date Added: 2025-08-26 15:08 - Note: Current delivery date is 9/3. Confirming with Belaire once more that this is still on track. / 2025-08-26 15:08 - User: John Capriotti - Date Added: 2025-08-26 15:08 - Note: J
- QTS-19501: allucent_notes: John Capriotti on 2025-08-26 15:08: Current delivery date is 9/3. Confirming with Belaire once more that this is still on track. / John Capriotti on 2025-08-26 15:08: Just received an update that these are targeted for 9/19 delivery per Belaire. / allucent_notes: 2025-08-26 15:08 - User: John Capriotti - Date Added: 2025-08-26 15:08 - Note: Current delivery date is 9/3. Confirming with Belaire once more that this is still on track. / 2025-08-26 15:08 - User: John Capriotti - Date Added: 2025-08-26 15:08 - Note: J
- QTS-19511: allucent_notes: John Capriotti on 2025-08-26 15:08: Current delivery date is 9/3. Confirming with Belaire once more that this is still on track. / John Capriotti on 2025-08-26 15:08: Just received an update that these are targeted for 9/19 delivery per Belaire. / allucent_notes: 2025-08-26 15:08 - User: John Capriotti - Date Added: 2025-08-26 15:08 - Note: Current delivery date is 9/3. Confirming with Belaire once more that this is still on track. / 2025-08-26 15:08 - User: John Capriotti - Date Added: 2025-08-26 15:08 - Note: J
- QTS-36051: allucent_notes: John Capriotti on 2025-08-26 15:08: Current delivery date is 9/3. Confirming with Belaire once more that this is still on track. / John Capriotti on 2025-08-26 15:08: Just received an update that these are targeted for 9/19 delivery per Belaire. / allucent_notes: 2025-08-26 15:08 - User: John Capriotti - Date Added: 2025-08-26 15:08 - Note: Current delivery date is 9/3. Confirming with Belaire once more that this is still on track. / 2025-08-26 15:08 - User: John Capriotti - Date Added: 2025-08-26 15:08 - Note: J
- QTS-36061: allucent_notes: John Capriotti on 2025-08-26 15:08: Current delivery date is 9/3. Confirming with Belaire once more that this is still on track. / John Capriotti on 2025-08-26 15:08: Just received an update that these are targeted for 9/19 delivery per Belaire. / allucent_notes: 2025-08-26 15:08 - User: John Capriotti - Date Added: 2025-08-26 15:08 - Note: Current delivery date is 9/3. Confirming with Belaire once more that this is still on track. / 2025-08-26 15:08 - User: John Capriotti - Date Added: 2025-08-26 15:08 - Note: J
- QTS-1321: allucent_notes_20251209_203830: Jason Johnston on 2025-12-09 15:41: Arrived early / allucent_notes: 2025-12-09 15:41 - User: Jason Johnston - Date Added: 2025-12-09 15:41 - Note: Arrived early

| ID | WBS | Activity | Duration | Start | Finish | Predecessors | Complete | Planned start | Planned finish | Layton Discipline | Baseline | Project Section-1 | Precon Phase | Contract | Allucent CSI Group | Project Section |
| --- | --- | --- | --- | --- | --- | --- | --- | --- | --- | --- | --- | --- | --- | --- | --- | --- |
|  | 25 | **Loading Dock Equipment** |  | 2025-03-17 | 2025-09-25 |  |  |  |  |  |  |  |  |  |  |  |
| QTS-10121 |  | Prepare Loading Dock Equipment Submittals | 10d | 2025-03-17 A | 2025-04-14 A | QTS-9891 | 100% | 2025-03-17 | 2025-03-28 | Precon | GMP | Preconstruction | CFCI Procurement | BAB |  |  |
| QTS-12371 |  | Layton Review Loading Dock Equipment Submittals | 3d | 2025-04-15 A | 2025-04-21 A | QTS-10121 | 100% | 2025-04-15 | 2025-04-17 | Precon | GMP | Preconstruction | CFCI Procurement | BAB |  |  |
| QTS-12791 |  | Design Team Review & Approve Loading Dock Equipment Submittals | 15d | 2025-04-22 A | 2025-05-07 A | QTS-12371 | 100% | 2025-04-18 | 2025-05-08 | Precon | GMP | Preconstruction | CFCI Procurement | BAB |  |  |
| QTS-15391 |  | Loading Dock Equipment Procurement | 60d | 2025-05-08 A | 2025-09-25 A | QTS-12791 | 100% | 2025-05-07 | 2025-07-31 | Precon | GMP | Preconstruction | CFCI Procurement | BAB | 01ADMIN | Preconstruction |
|  | 26 | **Raised Access Flooring** |  |  |  |  |  |  |  |  |  |  |  |  |  |  |
|  | 27 | **Terrazzo Tile** |  | 2025-07-07 | 2026-04-01 |  |  |  |  |  |  |  |  |  |  |  |
| QTS-1401 |  | Prepare Terrazzo Tile Samples | 10d | 2025-07-07 A | 2025-07-23 A | QTS-11901, QTS-1371 | 100% | 2025-06-26 | 2025-07-10 | Precon | GMP | Preconstruction | CFCI Procurement | BAB | 01ADMIN | Preconstruction |
| QTS-13521 |  | Prepare Terrazzo Tile Submittals | 10d | 2025-07-14 A | 2025-08-19 A | QTS-11901, QTS-1401 SS+5d, QTS-1401 FF | 100% | 2025-07-14 | 2025-07-25 | Precon | GMP | Preconstruction | CFCI Procurement | BAB | 01ADMIN | Preconstruction |
| QTS-4471 |  | Layton Review Terrazzo Tile Samples | 3d | 2025-07-30 A | 2025-08-01 A | QTS-1401 | 100% |  |  | Precon | GMP | Preconstruction | CFCI Procurement | BAB | 01ADMIN | Preconstruction |
| QTS-15401 |  | Layton Review Terrazzo Tile Submittals | 3d | 2025-08-04 A | 2025-08-04 A | QTS-13521 SS+1d | 100% | 2025-08-04 | 2025-08-06 | Precon | GMP | Preconstruction | CFCI Procurement | BAB | 01ADMIN | Preconstruction |
| QTS-5701 |  | Design Team Review & Approve Terrazzo Tile Samples | 15d | 2025-08-04 A | 2025-08-04 A | QTS-4471 | 100% | 2025-08-04 | 2025-08-22 | Precon | GMP | Preconstruction | CFCI Procurement | BAB | 01ADMIN | Preconstruction |
| QTS-15821 |  | Design Team Review & Approve Terrazzo Tile Submittals | 9d | 2025-08-20 A | 2025-09-03 A | QTS-13521, QTS-15401 | 100% | 2025-08-20 | 2025-09-02 | Precon | GMP | Preconstruction | CFCI Procurement | BAB | 01ADMIN | Preconstruction |
| QTS-18241 |  | Terrazzo Tile Procurement | 60d | 2025-09-04 A | 2026-02-10 A | QTS-15821, QTS-5701 | 100% | 2025-09-04 | 2025-11-26 | Precon | GMP | Preconstruction | CFCI Procurement | BAB | 01ADMIN | Preconstruction |
| QTS-1005290 |  | Terrazzo Tile Arrival On Site | 10d | 2026-02-11 A | 2026-04-01 A | QTS-18241 | 100% | 2026-02-11 | 2026-02-24 | Precon | GMP | Preconstruction | CFCI Procurement | BAB | 01ADMIN | Preconstruction |
|  | 20 | **Reserve Busway** |  | 2025-02-28 | 2025-10-15 |  |  |  |  |  |  |  |  |  |  |  |
| QTS-49581 |  | Prepare Reserve Busway Submittals | 5d | 2025-02-28 A | 2025-03-06 A | QTS-9851 | 100% |  |  | Precon | GMP | Preconstruction | CFCI Procurement | BAB |  |  |
| QTS-49591 |  | Layton Review Reserve Busway Submittals | 1d | 2025-03-07 A | 2025-03-07 A | QTS-49581 | 100% |  |  | Precon | GMP | Preconstruction | CFCI Procurement | BAB |  |  |
| QTS-49601 |  | Design Team Review & Approve Reserve Busway Submittals | 10d | 2025-03-10 A | 2025-03-12 A | QTS-49591 | 100% | 2025-03-10 | 2025-03-21 | Precon | GMP | Preconstruction | CFCI Procurement | BAB |  |  |
| QTS-49611 |  | Gallery 2102 / Reserve Busway Procurement | 100d | 2025-04-03 A | 2025-10-15 A | QTS-49601 | 100% | 2025-04-03 | 2025-08-22 | Precon | GMP | Preconstruction | CFCI Procurement | BAB | 01ADMIN | Preconstruction |
| QTS-50021 |  | Gallery 1102 / Reserve Busway Procurement | 100d | 2025-04-03 A | 2025-10-15 A | QTS-49601 | 100% | 2025-04-03 | 2025-08-22 | Precon | GMP | Preconstruction | CFCI Procurement | BAB | 01ADMIN | Preconstruction |
| QTS-50031 |  | Gallery 2202 / Reserve Busway Procurement | 100d | 2025-04-03 A | 2025-10-07 A | QTS-49601 | 100% | 2025-04-03 | 2025-08-22 | Precon | GMP | Preconstruction | CFCI Procurement | BAB | 01ADMIN | Preconstruction |
| QTS-50041 |  | Gallery 1202 / Reserve Busway Procurement | 100d | 2025-04-03 A | 2025-10-07 A | QTS-49601 | 100% | 2025-04-03 | 2025-08-22 | Precon | GMP | Preconstruction | CFCI Procurement | BAB | 01ADMIN | Preconstruction |
| QTS-50051 |  | Gallery 2302 / Reserve Busway Procurement | 100d | 2025-04-03 A | 2025-10-09 A | QTS-49601 | 100% | 2025-04-03 | 2025-08-22 | Precon | GMP | Preconstruction | CFCI Procurement | BAB | 01ADMIN | Preconstruction |
| QTS-50061 |  | Gallery 1302 / Reserve Busway Procurement | 100d | 2025-04-03 A | 2025-10-09 A | QTS-49601 | 100% | 2025-04-03 | 2025-08-22 | Precon | GMP | Preconstruction | CFCI Procurement | BAB | 01ADMIN | Preconstruction |

Notes:
- QTS-15391: allucent_notes: Andrew Melis on 2025-08-12 15:08: Need to validate Loading Dock Equipment arrival. Install date is not affected by this update. / allucent_notes: 2025-08-12 15:08 - User: Andrew Melis - Date Added: 2025-08-12 15:08 - Note: Need to validate Loading Dock Equipment arrival. Install date is not affected by this update. / 2025-08-26 15:08 - User: Andrew Melis - Date Added: 2025-08-26 15:08 - Note: T
- QTS-13521: allucent_notes: Jack Garrett on 2025-08-12 14:08: Need confirmation from Suntec that updated layout is sufficient / Jack Garrett on 2025-08-12 14:08: Need to make sure updated layout on shop drawings aligns with Suntecs sawcuts / allucent_notes: 2025-08-12 14:08 - User: Jack Garrett - Date Added: 2025-08-12 14:08 - Note: Need confirmation from Suntec that updated layout is sufficient / 2025-08-12 14:08 - User: Jack Garrett - Date Added: 2025-08-12 14:08 - Note: Need to make sure updated layout o
- QTS-15821: allucent_notes: Jack Garrett on 2025-08-06 07:08: Receiving Updated Shop Drawing from Stone Finish 8/8 / allucent_notes: 2025-08-06 07:08 - User: Jack Garrett - Date Added: 2025-08-06 07:08 - Note: Receiving Updated Shop Drawing from Stone Finish 8/8 / 2025-08-12 14:08 - User: Jack Garrett - Date Added: 2025-08-12 14:08 - Note: Need confirmation that Submittals are suffici
- QTS-18241: allucent_notes_20251216_165335: Jack Garrett on 2025-09-09 13:09: Terrazzo is scheduled farther out / Jack Garrett on 2025-09-19 11:09: Terrazzo Flooring Install at Lobby and Stairs begins on 22-December and has 4 week lead time / Jack Garrett on 2025-09-19 11:09: All Terrazzo Materials have a 4 week lead time / Jack Garrett on 2025-12-02 12:01: Terrazzo Pushed Back. / allucent_notes_20251209_203830: Jack Garrett on 2025-09-09 13:09: Terrazzo is scheduled farther out / Jack Garrett on 2025-09-19 11:09: Terrazzo Flooring Install at Lobby and Stairs begins on 22-December and has 4 week lead time / Jack Garrett on 2025-09-19 11:09: All Terrazzo Materials have a 4 week lead time / Jack Garrett on 2025-12-02 12:01: Terrazzo Pushed Back. / allucent_notes_20251202_153722: Jack Garrett on 2025-09-09 13:09: Terrazzo is scheduled farther out / Jack Garrett on 2025-09-19 11:09: Terrazzo Flooring Install at Lobby and Stairs begins on 22-December and has 4 week lead time / Jack Garrett on 2025-09-19 11:09: All Terrazzo Materials have a 4 week lead time / Jack Garrett on 2025-12-02 12:01: Terrazzo Pushed Back. / allucent_notes_20251118_192630: Jack Garrett on 2025-09-09 13:09: Terrazzo is scheduled farther out / Jack Garrett on 2025-09-19 11:09: Terrazzo Flooring Install at Lobby and Stairs begins on 22-December and has 4 week lead time / Jack Garrett on 2025-09-19 11:09: All Terrazzo Materials have a 4 week lead time / allucent_notes_20251111_182405: Jack Garrett on 2025-09-09 13:09: Terrazzo is scheduled farther out / Jack Garrett on 2025-09-19 11:09: Terrazzo Flooring Install at Lobby and Stairs begins on 22-December and has 4 week lead time / Jack Garrett on 2025-09-19 11:09: All Terrazzo Materials have a 4 week lead time / allucent_notes_20251104_160200: Jack Garrett on 2025-09-09 13:09: Terrazzo is scheduled farther out / Jack Garrett on 2025-09-19 11:09: Terrazzo Flooring Install at Lobby and Stairs begins on 22-December and has 4 week lead time / Jack Garrett on 2025-09-19 11:09: All Terrazzo Materials have a 4 week lead time / allucent_notes_20251028_163138: Jack Garrett on 2025-09-09 13:09: Terrazzo is scheduled farther out / Jack Garrett on 2025-09-19 11:09: Terrazzo Flooring Install at Lobby and Stairs begins on 22-December and has 4 week lead time / Jack Garrett on 2025-09-19 11:09: All Terrazzo Materials have a 4 week lead time / allucent_notes_20251027_224008: Jack Garrett on 2025-09-09 13:09: Terrazzo is scheduled farther out / Jack Garrett on 2025-09-19 11:09: Terrazzo Flooring Install at Lobby and Stairs begins on 22-December and has 4 week lead time / Jack Garrett on 2025-09-19 11:09: All Terrazzo Materials have a 4 week lead time / allucent_notes_20251021_145627: Jack Garrett on 2025-09-09 13:09: Terrazzo is scheduled farther out / Jack Garrett on 2025-09-19 11:09: Terrazzo Flooring Install at Lobby and Stairs begins on 22-December and has 4 week lead time / Jack Garrett on 2025-09-19 11:09: All Terrazzo Materials have a 4 week lead time / allucent_notes_20251014_152335: Jack Garrett on 2025-09-09 13:09: Terrazzo is scheduled farther out / Jack Garrett on 2025-09-19 11:09: Terrazzo Flooring Install at Lobby and Stairs begins on 22-December and has 4 week lead time / Jack Garrett on 2025-09-19 11:09: All Terrazzo Materials have a 4 week lead time / allucent_notes_20251230_164549: Jack Garrett on 2025-09-09 13:09: Terrazzo is scheduled farther out / Jack Garrett on 2025-09-19 11:09: Terrazzo Flooring Install at Lobby and Stairs begins on 22-December and has 4 week lead time / Jack Garrett on 2025-09-19 11:09: All Terrazzo Materials have a 4 week lead time / Jack Garrett on 2025-12-02 12:01: Terrazzo Pushed Back. / allucent_notes: 2025-09-09 13:09 - User: Jack Garrett - Date Added: 2025-09-09 13:09 - Note: Terrazzo is scheduled farther out / 2025-09-19 11:09 - User: Jack Garrett - Date Added: 2025-09-19 11:09 - Note: Terrazzo Flooring Install at Lobby and Stairs begins on 22-Decem
- QTS-1005290: allucent_notes_20251216_165335: Jack Garrett on 2025-09-09 13:09: Terrazzo is scheduled farther out / Jack Garrett on 2025-09-19 11:09: Terrazzo Flooring Install at Lobby and Stairs begins on 22-December and has 4 week lead time / Jack Garrett on 2025-09-19 11:09: All Terrazzo Materials have a 4 week lead time / Jack Garrett on 2025-12-02 12:01: Terrazzo Pushed Back. / allucent_notes_20251209_203830: Jack Garrett on 2025-09-09 13:09: Terrazzo is scheduled farther out / Jack Garrett on 2025-09-19 11:09: Terrazzo Flooring Install at Lobby and Stairs begins on 22-December and has 4 week lead time / Jack Garrett on 2025-09-19 11:09: All Terrazzo Materials have a 4 week lead time / Jack Garrett on 2025-12-02 12:01: Terrazzo Pushed Back. / allucent_notes_20251202_153722: Jack Garrett on 2025-09-09 13:09: Terrazzo is scheduled farther out / Jack Garrett on 2025-09-19 11:09: Terrazzo Flooring Install at Lobby and Stairs begins on 22-December and has 4 week lead time / Jack Garrett on 2025-09-19 11:09: All Terrazzo Materials have a 4 week lead time / Jack Garrett on 2025-12-02 12:01: Terrazzo Pushed Back. / allucent_notes_20251118_192630: Jack Garrett on 2025-09-09 13:09: Terrazzo is scheduled farther out / Jack Garrett on 2025-09-19 11:09: Terrazzo Flooring Install at Lobby and Stairs begins on 22-December and has 4 week lead time / Jack Garrett on 2025-09-19 11:09: All Terrazzo Materials have a 4 week lead time / allucent_notes_20251111_182405: Jack Garrett on 2025-09-09 13:09: Terrazzo is scheduled farther out / Jack Garrett on 2025-09-19 11:09: Terrazzo Flooring Install at Lobby and Stairs begins on 22-December and has 4 week lead time / Jack Garrett on 2025-09-19 11:09: All Terrazzo Materials have a 4 week lead time / allucent_notes_20251104_160200: Jack Garrett on 2025-09-09 13:09: Terrazzo is scheduled farther out / Jack Garrett on 2025-09-19 11:09: Terrazzo Flooring Install at Lobby and Stairs begins on 22-December and has 4 week lead time / Jack Garrett on 2025-09-19 11:09: All Terrazzo Materials have a 4 week lead time / allucent_notes_20251028_163138: Jack Garrett on 2025-09-09 13:09: Terrazzo is scheduled farther out / Jack Garrett on 2025-09-19 11:09: Terrazzo Flooring Install at Lobby and Stairs begins on 22-December and has 4 week lead time / Jack Garrett on 2025-09-19 11:09: All Terrazzo Materials have a 4 week lead time / allucent_notes_20251027_224008: Jack Garrett on 2025-09-09 13:09: Terrazzo is scheduled farther out / Jack Garrett on 2025-09-19 11:09: Terrazzo Flooring Install at Lobby and Stairs begins on 22-December and has 4 week lead time / Jack Garrett on 2025-09-19 11:09: All Terrazzo Materials have a 4 week lead time / allucent_notes_20251021_145627: Jack Garrett on 2025-09-09 13:09: Terrazzo is scheduled farther out / Jack Garrett on 2025-09-19 11:09: Terrazzo Flooring Install at Lobby and Stairs begins on 22-December and has 4 week lead time / Jack Garrett on 2025-09-19 11:09: All Terrazzo Materials have a 4 week lead time / allucent_notes_20251014_152335: Jack Garrett on 2025-09-09 13:09: Terrazzo is scheduled farther out / Jack Garrett on 2025-09-19 11:09: Terrazzo Flooring Install at Lobby and Stairs begins on 22-December and has 4 week lead time / Jack Garrett on 2025-09-19 11:09: All Terrazzo Materials have a 4 week lead time / allucent_notes_20251230_164549: Jack Garrett on 2025-09-09 13:09: Terrazzo is scheduled farther out / Jack Garrett on 2025-09-19 11:09: Terrazzo Flooring Install at Lobby and Stairs begins on 22-December and has 4 week lead time / Jack Garrett on 2025-09-19 11:09: All Terrazzo Materials have a 4 week lead time / Jack Garrett on 2025-12-02 12:01: Terrazzo Pushed Back. / allucent_notes: 2025-09-09 13:09 - User: Jack Garrett - Date Added: 2025-09-09 13:09 - Note: Terrazzo is scheduled farther out / 2025-09-19 11:09 - User: Jack Garrett - Date Added: 2025-09-19 11:09 - Note: Terrazzo Flooring Install at Lobby and Stairs begins on 22-Decem
- QTS-49611: allucent_notes_20251021_145627: John Capriotti on 2025-09-30 10:09: Confirmed with Belaire that all humidifiers were delivered on Friday, 9/26/2025. / John Capriotti on 2025-09-30 10:09: Error/Accidental Adjustment , Resetting to 9/30. / John Capriotti on 2025-09-30 11:09: Per Update on 9/26 and 9/30 from Rosendin, expecting Reserve Busway to be delivered to their warehouse 10/15/second week of October. These busways will come in multiple shipments for each hall so will update them all individually as they come in. / allucent_notes_20251014_152335: John Capriotti on 2025-09-30 10:09: Confirmed with Belaire that all humidifiers were delivered on Friday, 9/26/2025. / John Capriotti on 2025-09-30 10:09: Error/Accidental Adjustment , Resetting to 9/30. / John Capriotti on 2025-09-30 11:09: Per Update on 9/26 and 9/30 from Rosendin, expecting Reserve Busway to be delivered to their warehouse 10/15/second week of October. These busways will come in multiple shipments for each hall so will update them all individually as they come in. / allucent_notes: 2025-09-30 10:09 - User: John Capriotti - Date Added: 2025-09-30 10:09 - Note: Confirmed with Belaire that all humidifiers were delivered on Friday, 9/26/2025. / 2025-09-30 10:09 - User: John Capriotti - Date Added: 2025-09-30 10:09 - Note: Error/Acciden
- QTS-50021: allucent_notes_20251021_145627: John Capriotti on 2025-09-30 10:09: Confirmed with Belaire that all humidifiers were delivered on Friday, 9/26/2025. / John Capriotti on 2025-09-30 10:09: Error/Accidental Adjustment , Resetting to 9/30. / John Capriotti on 2025-09-30 11:09: Per Update on 9/26 and 9/30 from Rosendin, expecting Reserve Busway to be delivered to their warehouse 10/15/second week of October. These busways will come in multiple shipments for each hall so will update them all individually as they come in. / allucent_notes_20251014_152335: John Capriotti on 2025-09-30 10:09: Confirmed with Belaire that all humidifiers were delivered on Friday, 9/26/2025. / John Capriotti on 2025-09-30 10:09: Error/Accidental Adjustment , Resetting to 9/30. / John Capriotti on 2025-09-30 11:09: Per Update on 9/26 and 9/30 from Rosendin, expecting Reserve Busway to be delivered to their warehouse 10/15/second week of October. These busways will come in multiple shipments for each hall so will update them all individually as they come in. / allucent_notes: 2025-09-30 10:09 - User: John Capriotti - Date Added: 2025-09-30 10:09 - Note: Confirmed with Belaire that all humidifiers were delivered on Friday, 9/26/2025. / 2025-09-30 10:09 - User: John Capriotti - Date Added: 2025-09-30 10:09 - Note: Error/Acciden
- QTS-50031: allucent_notes_20251118_192630: John Capriotti on 2025-08-26 16:08: Pending updated delivery date from REI. Should have update by end of week, 8/29. / Jason Johnston on 2025-08-27 07:08: No comment / John Capriotti on 2025-09-02 15:09: Estimated delivery date per REI is 9/30 to have Maintenance and Catcher Bus. / John Capriotti on 2025-09-30 10:09: Confirmed with Belaire that all humidifiers were delivered on Friday, 9/26/2025. / John Capriotti on 2025-09-30 10:09: Error/Accidental Adjustment , Resetting to 9/30. / John Capriotti on 2025-09-30 11:09: Per Update on 9/26 and 9/30 from Rosendin, expecting Reserve Busway to be delivered to their warehouse 10/15/second week of October. These busways will come in multiple shipments for each hall so will update them all individually as they come in. / John Capriotti on 2025-10-21 14:10: Pending confirmation that all maint/catcher has been received. Shipments have been coming consistently need to confirm total quantities per hall. / John Capriotti on 2025-10-27 18:10: Pending bus plugs / Jason Johnston on 2025-11-11 17:11: John owes me 11/11 update / allucent_notes_20251111_182405: John Capriotti on 2025-08-26 16:08: Pending updated delivery date from REI. Should have update by end of week, 8/29. / Jason Johnston on 2025-08-27 07:08: No comment / John Capriotti on 2025-09-02 15:09: Estimated delivery date per REI is 9/30 to have Maintenance and Catcher Bus. / John Capriotti on 2025-09-30 10:09: Confirmed with Belaire that all humidifiers were delivered on Friday, 9/26/2025. / John Capriotti on 2025-09-30 10:09: Error/Accidental Adjustment , Resetting to 9/30. / John Capriotti on 2025-09-30 11:09: Per Update on 9/26 and 9/30 from Rosendin, expecting Reserve Busway to be delivered to their warehouse 10/15/second week of October. These busways will come in multiple shipments for each hall so will update them all individually as they come in. / John Capriotti on 2025-10-21 14:10: Pending confirmation that all maint/catcher has been received. Shipments have been coming consistently need to confirm total quantities per hall. / John Capriotti on 2025-10-27 18:10: Pending bus plugs / Jason Johnston on 2025-11-11 17:11: John owes me 11/11 update / allucent_notes_20251104_160200: John Capriotti on 2025-08-26 16:08: Pending updated delivery date from REI. Should have update by end of week, 8/29. / Jason Johnston on 2025-08-27 07:08: No comment / John Capriotti on 2025-09-02 15:09: Estimated delivery date per REI is 9/30 to have Maintenance and Catcher Bus. / John Capriotti on 2025-09-30 10:09: Confirmed with Belaire that all humidifiers were delivered on Friday, 9/26/2025. / John Capriotti on 2025-09-30 10:09: Error/Accidental Adjustment , Resetting to 9/30. / John Capriotti on 2025-09-30 11:09: Per Update on 9/26 and 9/30 from Rosendin, expecting Reserve Busway to be delivered to their warehouse 10/15/second week of October. These busways will come in multiple shipments for each hall so will update them all individually as they come in. / John Capriotti on 2025-10-21 14:10: Pending confirmation that all maint/catcher has been received. Shipments have been coming consistently need to confirm total quantities per hall. / John Capriotti on 2025-10-27 18:10: Pending bus plugs / allucent_notes_20251028_163138: John Capriotti on 2025-08-26 16:08: Pending updated delivery date from REI. Should have update by end of week, 8/29. / Jason Johnston on 2025-08-27 07:08: No comment / John Capriotti on 2025-09-02 15:09: Estimated delivery date per REI is 9/30 to have Maintenance and Catcher Bus. / John Capriotti on 2025-09-30 10:09: Confirmed with Belaire that all humidifiers were delivered on Friday, 9/26/2025. / John Capriotti on 2025-09-30 10:09: Error/Accidental Adjustment , Resetting to 9/30. / John Capriotti on 2025-09-30 11:09: Per Update on 9/26 and 9/30 from Rosendin, expecting Reserve Busway to be delivered to their warehouse 10/15/second week of October. These busways will come in multiple shipments for each hall so will update them all individually as they come in. / John Capriotti on 2025-10-21 14:10: Pending confirmation that all maint/catcher has been received. Shipments have been coming consistently need to confirm total quantities per hall. / John Capriotti on 2025-10-27 18:10: Pending bus plugs / allucent_notes_20251027_224008: John Capriotti on 2025-08-26 16:08: Pending updated delivery date from REI. Should have update by end of week, 8/29. / Jason Johnston on 2025-08-27 07:08: No comment / John Capriotti on 2025-09-02 15:09: Estimated delivery date per REI is 9/30 to have Maintenance and Catcher Bus. / John Capriotti on 2025-09-30 10:09: Confirmed with Belaire that all humidifiers were delivered on Friday, 9/26/2025. / John Capriotti on 2025-09-30 10:09: Error/Accidental Adjustment , Resetting to 9/30. / John Capriotti on 2025-09-30 11:09: Per Update on 9/26 and 9/30 from Rosendin, expecting Reserve Busway to be delivered to their warehouse 10/15/second week of October. These busways will come in multiple shipments for each hall so will update them all individually as they come in. / John Capriotti on 2025-10-21 14:10: Pending confirmation that all maint/catcher has been received. Shipments have been coming consistently need to confirm total quantities per hall. / John Capriotti on 2025-10-27 18:10: Pending bus plugs / allucent_notes_20251021_145627: John Capriotti on 2025-08-26 16:08: Pending updated delivery date from REI. Should have update by end of week, 8/29. / Jason Johnston on 2025-08-27 07:08: No comment / John Capriotti on 2025-09-02 15:09: Estimated delivery date per REI is 9/30 to have Maintenance and Catcher Bus. / John Capriotti on 2025-09-30 10:09: Confirmed with Belaire that all humidifiers were delivered on Friday, 9/26/2025. / John Capriotti on 2025-09-30 10:09: Error/Accidental Adjustment , Resetting to 9/30. / John Capriotti on 2025-09-30 11:09: Per Update on 9/26 and 9/30 from Rosendin, expecting Reserve Busway to be delivered to their warehouse 10/15/second week of October. These busways will come in multiple shipments for each hall so will update them all individually as they come in. / John Capriotti on 2025-10-21 14:10: Pending confirmation that all maint/catcher has been received. Shipments have been coming consistently need to confirm total quantities per hall. / allucent_notes_20251014_152335: John Capriotti on 2025-08-26 16:08: Pending updated delivery date from REI. Should have update by end of week, 8/29. / Jason Johnston on 2025-08-27 07:08: No comment / John Capriotti on 2025-09-02 15:09: Estimated delivery date per REI is 9/30 to have Maintenance and Catcher Bus. / John Capriotti on 2025-09-30 10:09: Confirmed with Belaire that all humidifiers were delivered on Friday, 9/26/2025. / John Capriotti on 2025-09-30 10:09: Error/Accidental Adjustment , Resetting to 9/30. / John Capriotti on 2025-09-30 11:09: Per Update on 9/26 and 9/30 from Rosendin, expecting Reserve Busway to be delivered to their warehouse 10/15/second week of October. These busways will come in multiple shipments for each hall so will update them all individually as they come in. / allucent_notes: John Capriotti on 2025-08-26 16:08: Pending updated delivery date from REI. Should have update by end of week, 8/29. / Jason Johnston on 2025-08-27 07:08: No comment / allucent_notes: 2025-08-26 16:08 - User: John Capriotti - Date Added: 2025-08-26 16:08 - Note: Pending updated delivery date from REI. Should have update by end of week, 8/29. / 2025-08-27 07:08 - User: Jason Johnston - Date Added: 2025-08-27 07:08 - Note: No comment
- QTS-50041: allucent_notes_20251118_192630: John Capriotti on 2025-08-26 16:08: Pending updated delivery date from REI. Should have update by end of week, 8/29. / Jason Johnston on 2025-08-27 07:08: No comment / John Capriotti on 2025-09-02 15:09: Estimated delivery date per REI is 9/30 to have Maintenance and Catcher Bus. / John Capriotti on 2025-09-30 10:09: Confirmed with Belaire that all humidifiers were delivered on Friday, 9/26/2025. / John Capriotti on 2025-09-30 10:09: Error/Accidental Adjustment , Resetting to 9/30. / John Capriotti on 2025-09-30 11:09: Per Update on 9/26 and 9/30 from Rosendin, expecting Reserve Busway to be delivered to their warehouse 10/15/second week of October. These busways will come in multiple shipments for each hall so will update them all individually as they come in. / John Capriotti on 2025-10-21 14:10: Pending confirmation that all maint/catcher has been received. Shipments have been coming consistently need to confirm total quantities per hall. / John Capriotti on 2025-10-27 19:10: . / John Capriotti on 2025-11-04 15:11: Need to get an update on all the components to determine if this can be closed / Jason Johnston on 2025-11-11 17:11: John owes me 11/11 update / allucent_notes_20251111_182405: John Capriotti on 2025-08-26 16:08: Pending updated delivery date from REI. Should have update by end of week, 8/29. / Jason Johnston on 2025-08-27 07:08: No comment / John Capriotti on 2025-09-02 15:09: Estimated delivery date per REI is 9/30 to have Maintenance and Catcher Bus. / John Capriotti on 2025-09-30 10:09: Confirmed with Belaire that all humidifiers were delivered on Friday, 9/26/2025. / John Capriotti on 2025-09-30 10:09: Error/Accidental Adjustment , Resetting to 9/30. / John Capriotti on 2025-09-30 11:09: Per Update on 9/26 and 9/30 from Rosendin, expecting Reserve Busway to be delivered to their warehouse 10/15/second week of October. These busways will come in multiple shipments for each hall so will update them all individually as they come in. / John Capriotti on 2025-10-21 14:10: Pending confirmation that all maint/catcher has been received. Shipments have been coming consistently need to confirm total quantities per hall. / John Capriotti on 2025-10-27 19:10: . / John Capriotti on 2025-11-04 15:11: Need to get an update on all the components to determine if this can be closed / Jason Johnston on 2025-11-11 17:11: John owes me 11/11 update / allucent_notes_20251104_160200: John Capriotti on 2025-08-26 16:08: Pending updated delivery date from REI. Should have update by end of week, 8/29. / Jason Johnston on 2025-08-27 07:08: No comment / John Capriotti on 2025-09-02 15:09: Estimated delivery date per REI is 9/30 to have Maintenance and Catcher Bus. / John Capriotti on 2025-09-30 10:09: Confirmed with Belaire that all humidifiers were delivered on Friday, 9/26/2025. / John Capriotti on 2025-09-30 10:09: Error/Accidental Adjustment , Resetting to 9/30. / John Capriotti on 2025-09-30 11:09: Per Update on 9/26 and 9/30 from Rosendin, expecting Reserve Busway to be delivered to their warehouse 10/15/second week of October. These busways will come in multiple shipments for each hall so will update them all individually as they come in. / John Capriotti on 2025-10-21 14:10: Pending confirmation that all maint/catcher has been received. Shipments have been coming consistently need to confirm total quantities per hall. / John Capriotti on 2025-10-27 19:10: . / John Capriotti on 2025-11-04 15:11: Need to get an update on all the components to determine if this can be closed / allucent_notes_20251028_163138: John Capriotti on 2025-08-26 16:08: Pending updated delivery date from REI. Should have update by end of week, 8/29. / Jason Johnston on 2025-08-27 07:08: No comment / John Capriotti on 2025-09-02 15:09: Estimated delivery date per REI is 9/30 to have Maintenance and Catcher Bus. / John Capriotti on 2025-09-30 10:09: Confirmed with Belaire that all humidifiers were delivered on Friday, 9/26/2025. / John Capriotti on 2025-09-30 10:09: Error/Accidental Adjustment , Resetting to 9/30. / John Capriotti on 2025-09-30 11:09: Per Update on 9/26 and 9/30 from Rosendin, expecting Reserve Busway to be delivered to their warehouse 10/15/second week of October. These busways will come in multiple shipments for each hall so will update them all individually as they come in. / John Capriotti on 2025-10-21 14:10: Pending confirmation that all maint/catcher has been received. Shipments have been coming consistently need to confirm total quantities per hall. / John Capriotti on 2025-10-27 19:10: . / allucent_notes_20251027_224008: John Capriotti on 2025-08-26 16:08: Pending updated delivery date from REI. Should have update by end of week, 8/29. / Jason Johnston on 2025-08-27 07:08: No comment / John Capriotti on 2025-09-02 15:09: Estimated delivery date per REI is 9/30 to have Maintenance and Catcher Bus. / John Capriotti on 2025-09-30 10:09: Confirmed with Belaire that all humidifiers were delivered on Friday, 9/26/2025. / John Capriotti on 2025-09-30 10:09: Error/Accidental Adjustment , Resetting to 9/30. / John Capriotti on 2025-09-30 11:09: Per Update on 9/26 and 9/30 from Rosendin, expecting Reserve Busway to be delivered to their warehouse 10/15/second week of October. These busways will come in multiple shipments for each hall so will update them all individually as they come in. / John Capriotti on 2025-10-21 14:10: Pending confirmation that all maint/catcher has been received. Shipments have been coming consistently need to confirm total quantities per hall. / John Capriotti on 2025-10-27 19:10: . / allucent_notes_20251021_145627: John Capriotti on 2025-08-26 16:08: Pending updated delivery date from REI. Should have update by end of week, 8/29. / Jason Johnston on 2025-08-27 07:08: No comment / John Capriotti on 2025-09-02 15:09: Estimated delivery date per REI is 9/30 to have Maintenance and Catcher Bus. / John Capriotti on 2025-09-30 10:09: Confirmed with Belaire that all humidifiers were delivered on Friday, 9/26/2025. / John Capriotti on 2025-09-30 10:09: Error/Accidental Adjustment , Resetting to 9/30. / John Capriotti on 2025-09-30 11:09: Per Update on 9/26 and 9/30 from Rosendin, expecting Reserve Busway to be delivered to their warehouse 10/15/second week of October. These busways will come in multiple shipments for each hall so will update them all individually as they come in. / John Capriotti on 2025-10-21 14:10: Pending confirmation that all maint/catcher has been received. Shipments have been coming consistently need to confirm total quantities per hall. / allucent_notes_20251014_152335: John Capriotti on 2025-08-26 16:08: Pending updated delivery date from REI. Should have update by end of week, 8/29. / Jason Johnston on 2025-08-27 07:08: No comment / John Capriotti on 2025-09-02 15:09: Estimated delivery date per REI is 9/30 to have Maintenance and Catcher Bus. / John Capriotti on 2025-09-30 10:09: Confirmed with Belaire that all humidifiers were delivered on Friday, 9/26/2025. / John Capriotti on 2025-09-30 10:09: Error/Accidental Adjustment , Resetting to 9/30. / John Capriotti on 2025-09-30 11:09: Per Update on 9/26 and 9/30 from Rosendin, expecting Reserve Busway to be delivered to their warehouse 10/15/second week of October. These busways will come in multiple shipments for each hall so will update them all individually as they come in. / allucent_notes: John Capriotti on 2025-08-26 16:08: Pending updated delivery date from REI. Should have update by end of week, 8/29. / Jason Johnston on 2025-08-27 07:08: No comment / allucent_notes: 2025-08-26 16:08 - User: John Capriotti - Date Added: 2025-08-26 16:08 - Note: Pending updated delivery date from REI. Should have update by end of week, 8/29. / 2025-08-27 07:08 - User: Jason Johnston - Date Added: 2025-08-27 07:08 - Note: No comment
- QTS-50051: allucent_notes_20251118_192630: John Capriotti on 2025-08-26 16:08: Pending updated delivery date from REI. Should have update by end of week, 8/29. / Jason Johnston on 2025-08-27 07:08: No comment / John Capriotti on 2025-09-02 15:09: Estimated delivery date per REI is 9/30 to have Maintenance and Catcher Bus. / John Capriotti on 2025-09-30 11:09: Per Update on 9/26 and 9/30 from Rosendin, expecting Reserve Busway to be delivered to their warehouse 10/15/second week of October. These busways will come in multiple shipments for each hall so will update them all individually as they come in. / John Capriotti on 2025-10-21 14:10: Pending confirmation that all maint/catcher has been received. Shipments have been coming consistently need to confirm total quantities per hall. / John Capriotti on 2025-10-27 19:10: . / John Capriotti on 2025-11-04 15:11: Need to get an update on all the components to determine if this can be closed / Jason Johnston on 2025-11-11 17:11: John owes me 11/11 update / allucent_notes_20251111_182405: John Capriotti on 2025-08-26 16:08: Pending updated delivery date from REI. Should have update by end of week, 8/29. / Jason Johnston on 2025-08-27 07:08: No comment / John Capriotti on 2025-09-02 15:09: Estimated delivery date per REI is 9/30 to have Maintenance and Catcher Bus. / John Capriotti on 2025-09-30 11:09: Per Update on 9/26 and 9/30 from Rosendin, expecting Reserve Busway to be delivered to their warehouse 10/15/second week of October. These busways will come in multiple shipments for each hall so will update them all individually as they come in. / John Capriotti on 2025-10-21 14:10: Pending confirmation that all maint/catcher has been received. Shipments have been coming consistently need to confirm total quantities per hall. / John Capriotti on 2025-10-27 19:10: . / John Capriotti on 2025-11-04 15:11: Need to get an update on all the components to determine if this can be closed / Jason Johnston on 2025-11-11 17:11: John owes me 11/11 update / allucent_notes_20251104_160200: John Capriotti on 2025-08-26 16:08: Pending updated delivery date from REI. Should have update by end of week, 8/29. / Jason Johnston on 2025-08-27 07:08: No comment / John Capriotti on 2025-09-02 15:09: Estimated delivery date per REI is 9/30 to have Maintenance and Catcher Bus. / John Capriotti on 2025-09-30 11:09: Per Update on 9/26 and 9/30 from Rosendin, expecting Reserve Busway to be delivered to their warehouse 10/15/second week of October. These busways will come in multiple shipments for each hall so will update them all individually as they come in. / John Capriotti on 2025-10-21 14:10: Pending confirmation that all maint/catcher has been received. Shipments have been coming consistently need to confirm total quantities per hall. / John Capriotti on 2025-10-27 19:10: . / John Capriotti on 2025-11-04 15:11: Need to get an update on all the components to determine if this can be closed / allucent_notes_20251028_163138: John Capriotti on 2025-08-26 16:08: Pending updated delivery date from REI. Should have update by end of week, 8/29. / Jason Johnston on 2025-08-27 07:08: No comment / John Capriotti on 2025-09-02 15:09: Estimated delivery date per REI is 9/30 to have Maintenance and Catcher Bus. / John Capriotti on 2025-09-30 11:09: Per Update on 9/26 and 9/30 from Rosendin, expecting Reserve Busway to be delivered to their warehouse 10/15/second week of October. These busways will come in multiple shipments for each hall so will update them all individually as they come in. / John Capriotti on 2025-10-21 14:10: Pending confirmation that all maint/catcher has been received. Shipments have been coming consistently need to confirm total quantities per hall. / John Capriotti on 2025-10-27 19:10: . / allucent_notes_20251027_224008: John Capriotti on 2025-08-26 16:08: Pending updated delivery date from REI. Should have update by end of week, 8/29. / Jason Johnston on 2025-08-27 07:08: No comment / John Capriotti on 2025-09-02 15:09: Estimated delivery date per REI is 9/30 to have Maintenance and Catcher Bus. / John Capriotti on 2025-09-30 11:09: Per Update on 9/26 and 9/30 from Rosendin, expecting Reserve Busway to be delivered to their warehouse 10/15/second week of October. These busways will come in multiple shipments for each hall so will update them all individually as they come in. / John Capriotti on 2025-10-21 14:10: Pending confirmation that all maint/catcher has been received. Shipments have been coming consistently need to confirm total quantities per hall. / John Capriotti on 2025-10-27 19:10: . / allucent_notes_20251021_145627: John Capriotti on 2025-08-26 16:08: Pending updated delivery date from REI. Should have update by end of week, 8/29. / Jason Johnston on 2025-08-27 07:08: No comment / John Capriotti on 2025-09-02 15:09: Estimated delivery date per REI is 9/30 to have Maintenance and Catcher Bus. / John Capriotti on 2025-09-30 11:09: Per Update on 9/26 and 9/30 from Rosendin, expecting Reserve Busway to be delivered to their warehouse 10/15/second week of October. These busways will come in multiple shipments for each hall so will update them all individually as they come in. / John Capriotti on 2025-10-21 14:10: Pending confirmation that all maint/catcher has been received. Shipments have been coming consistently need to confirm total quantities per hall. / allucent_notes_20251014_152335: John Capriotti on 2025-08-26 16:08: Pending updated delivery date from REI. Should have update by end of week, 8/29. / Jason Johnston on 2025-08-27 07:08: No comment / John Capriotti on 2025-09-02 15:09: Estimated delivery date per REI is 9/30 to have Maintenance and Catcher Bus. / John Capriotti on 2025-09-30 11:09: Per Update on 9/26 and 9/30 from Rosendin, expecting Reserve Busway to be delivered to their warehouse 10/15/second week of October. These busways will come in multiple shipments for each hall so will update them all individually as they come in. / allucent_notes: John Capriotti on 2025-08-26 16:08: Pending updated delivery date from REI. Should have update by end of week, 8/29. / Jason Johnston on 2025-08-27 07:08: No comment / allucent_notes: 2025-08-26 16:08 - User: John Capriotti - Date Added: 2025-08-26 16:08 - Note: Pending updated delivery date from REI. Should have update by end of week, 8/29. / 2025-08-27 07:08 - User: Jason Johnston - Date Added: 2025-08-27 07:08 - Note: No comment
- QTS-50061: allucent_notes_20251118_192630: John Capriotti on 2025-08-26 16:08: Pending updated delivery date from REI. Should have update by end of week, 8/29. / John Capriotti on 2025-08-26 16:08: Pending updated delivery date from REI. Should have update by end of week, 8/29. / Jason Johnston on 2025-08-27 07:08: No comment / John Capriotti on 2025-09-02 15:09: Estimated delivery date per REI is 9/30 to have Maintenance and Catcher Bus. / John Capriotti on 2025-09-30 11:09: Per Update on 9/26 and 9/30 from Rosendin, expecting Reserve Busway to be delivered to their warehouse 10/15/second week of October. These busways will come in multiple shipments for each hall so will update them all individually as they come in. / John Capriotti on 2025-10-21 14:10: Pending confirmation that all maint/catcher has been received. Shipments have been coming consistently need to confirm total quantities per hall. / John Capriotti on 2025-10-27 19:10: . / John Capriotti on 2025-11-04 15:11: Need to get an update on all the components to determine if this can be closed / Jason Johnston on 2025-11-11 17:11: John owes me 11/11 update / allucent_notes_20251111_182405: John Capriotti on 2025-08-26 16:08: Pending updated delivery date from REI. Should have update by end of week, 8/29. / John Capriotti on 2025-08-26 16:08: Pending updated delivery date from REI. Should have update by end of week, 8/29. / Jason Johnston on 2025-08-27 07:08: No comment / John Capriotti on 2025-09-02 15:09: Estimated delivery date per REI is 9/30 to have Maintenance and Catcher Bus. / John Capriotti on 2025-09-30 11:09: Per Update on 9/26 and 9/30 from Rosendin, expecting Reserve Busway to be delivered to their warehouse 10/15/second week of October. These busways will come in multiple shipments for each hall so will update them all individually as they come in. / John Capriotti on 2025-10-21 14:10: Pending confirmation that all maint/catcher has been received. Shipments have been coming consistently need to confirm total quantities per hall. / John Capriotti on 2025-10-27 19:10: . / John Capriotti on 2025-11-04 15:11: Need to get an update on all the components to determine if this can be closed / Jason Johnston on 2025-11-11 17:11: John owes me 11/11 update / allucent_notes_20251104_160200: John Capriotti on 2025-08-26 16:08: Pending updated delivery date from REI. Should have update by end of week, 8/29. / John Capriotti on 2025-08-26 16:08: Pending updated delivery date from REI. Should have update by end of week, 8/29. / Jason Johnston on 2025-08-27 07:08: No comment / John Capriotti on 2025-09-02 15:09: Estimated delivery date per REI is 9/30 to have Maintenance and Catcher Bus. / John Capriotti on 2025-09-30 11:09: Per Update on 9/26 and 9/30 from Rosendin, expecting Reserve Busway to be delivered to their warehouse 10/15/second week of October. These busways will come in multiple shipments for each hall so will update them all individually as they come in. / John Capriotti on 2025-10-21 14:10: Pending confirmation that all maint/catcher has been received. Shipments have been coming consistently need to confirm total quantities per hall. / John Capriotti on 2025-10-27 19:10: . / John Capriotti on 2025-11-04 15:11: Need to get an update on all the components to determine if this can be closed / allucent_notes_20251028_163138: John Capriotti on 2025-08-26 16:08: Pending updated delivery date from REI. Should have update by end of week, 8/29. / John Capriotti on 2025-08-26 16:08: Pending updated delivery date from REI. Should have update by end of week, 8/29. / Jason Johnston on 2025-08-27 07:08: No comment / John Capriotti on 2025-09-02 15:09: Estimated delivery date per REI is 9/30 to have Maintenance and Catcher Bus. / John Capriotti on 2025-09-30 11:09: Per Update on 9/26 and 9/30 from Rosendin, expecting Reserve Busway to be delivered to their warehouse 10/15/second week of October. These busways will come in multiple shipments for each hall so will update them all individually as they come in. / John Capriotti on 2025-10-21 14:10: Pending confirmation that all maint/catcher has been received. Shipments have been coming consistently need to confirm total quantities per hall. / John Capriotti on 2025-10-27 19:10: . / allucent_notes_20251027_224008: John Capriotti on 2025-08-26 16:08: Pending updated delivery date from REI. Should have update by end of week, 8/29. / John Capriotti on 2025-08-26 16:08: Pending updated delivery date from REI. Should have update by end of week, 8/29. / Jason Johnston on 2025-08-27 07:08: No comment / John Capriotti on 2025-09-02 15:09: Estimated delivery date per REI is 9/30 to have Maintenance and Catcher Bus. / John Capriotti on 2025-09-30 11:09: Per Update on 9/26 and 9/30 from Rosendin, expecting Reserve Busway to be delivered to their warehouse 10/15/second week of October. These busways will come in multiple shipments for each hall so will update them all individually as they come in. / John Capriotti on 2025-10-21 14:10: Pending confirmation that all maint/catcher has been received. Shipments have been coming consistently need to confirm total quantities per hall. / John Capriotti on 2025-10-27 19:10: . / allucent_notes_20251021_145627: John Capriotti on 2025-08-26 16:08: Pending updated delivery date from REI. Should have update by end of week, 8/29. / John Capriotti on 2025-08-26 16:08: Pending updated delivery date from REI. Should have update by end of week, 8/29. / Jason Johnston on 2025-08-27 07:08: No comment / John Capriotti on 2025-09-02 15:09: Estimated delivery date per REI is 9/30 to have Maintenance and Catcher Bus. / John Capriotti on 2025-09-30 11:09: Per Update on 9/26 and 9/30 from Rosendin, expecting Reserve Busway to be delivered to their warehouse 10/15/second week of October. These busways will come in multiple shipments for each hall so will update them all individually as they come in. / John Capriotti on 2025-10-21 14:10: Pending confirmation that all maint/catcher has been received. Shipments have been coming consistently need to confirm total quantities per hall. / allucent_notes_20251014_152335: John Capriotti on 2025-08-26 16:08: Pending updated delivery date from REI. Should have update by end of week, 8/29. / John Capriotti on 2025-08-26 16:08: Pending updated delivery date from REI. Should have update by end of week, 8/29. / Jason Johnston on 2025-08-27 07:08: No comment / John Capriotti on 2025-09-02 15:09: Estimated delivery date per REI is 9/30 to have Maintenance and Catcher Bus. / John Capriotti on 2025-09-30 11:09: Per Update on 9/26 and 9/30 from Rosendin, expecting Reserve Busway to be delivered to their warehouse 10/15/second week of October. These busways will come in multiple shipments for each hall so will update them all individually as they come in. / allucent_notes: John Capriotti on 2025-08-26 16:08: Pending updated delivery date from REI. Should have update by end of week, 8/29. / John Capriotti on 2025-08-26 16:08: Pending updated delivery date from REI. Should have update by end of week, 8/29. / Jason Johnston on 2025-08-27 07:08: No comment / allucent_notes: 2025-08-26 16:08 - User: John Capriotti - Date Added: 2025-08-26 16:08 - Note: Pending updated delivery date from REI. Should have update by end of week, 8/29. / 2025-08-26 16:08 - User: John Capriotti - Date Added: 2025-08-26 16:08 - Note: Pending updat

| ID | WBS | Activity | Duration | Start | Finish | Predecessors | Complete | Planned start | Planned finish | Layton Discipline | Baseline | Project Section-1 | Precon Phase | Contract | Allucent CSI Group | Project Section | Phase-1-1 | TFO-CONST ONLY |
| --- | --- | --- | --- | --- | --- | --- | --- | --- | --- | --- | --- | --- | --- | --- | --- | --- | --- | --- |
|  | 21 | **Cable Busway** |  | 2025-02-28 | 2025-11-20 |  |  |  |  |  |  |  |  |  |  |  |  |  |
| QTS-49621 |  | Prepare Cable Busway Submittals | 5d | 2025-02-28 A | 2025-03-06 A | QTS-9851 SS | 100% |  |  | Precon | GMP | Preconstruction | CFCI Procurement | BAB |  |  |  |  |
| QTS-49631 |  | Layton Review Cable Busway Submittals | 1d | 2025-03-07 A | 2025-03-07 A | QTS-49621 | 100% |  |  | Precon | GMP | Preconstruction | CFCI Procurement | BAB |  |  |  |  |
| QTS-49641 |  | Design Team Review & Approve Cable Busway Submittals | 10d | 2025-03-10 A | 2025-03-12 A | QTS-49631 | 100% | 2025-03-10 | 2025-03-21 | Precon | GMP | Preconstruction | CFCI Procurement | BAB |  |  |  |  |
| QTS-49651 |  | DH 2100 / Mechanical Yard // Cable Bus Procurement | 84d | 2025-06-05 A | 2025-08-20 A | QTS-49641 | 100% | 2025-06-05 | 2025-10-02 | Precon | GMP | Preconstruction | CFCI Procurement | BAB | 01ADMIN | Preconstruction |  |  |
| QTS-49691 |  | DH 1100 / Mechanical Yard // Cable Bus Procurement | 119d | 2025-06-05 A | 2025-10-03 A | QTS-49641 | 100% | 2025-06-05 | 2025-11-20 | Precon | GMP | Preconstruction | CFCI Procurement | BAB | 01ADMIN | Preconstruction |  |  |
| QTS-49701 |  | DH 2200 / Mechanical Yard // Cable Bus Procurement | 151d | 2025-06-05 A | 2025-10-31 A | QTS-49641 | 100% | 2025-06-05 | 2026-01-14 | Precon | GMP | Preconstruction | CFCI Procurement | BAB | 01ADMIN | Preconstruction |  |  |
| QTS-49711 |  | DH 1200 / Mechanical Yard // Cable Bus Procurement | 138d | 2025-06-05 A | 2025-10-31 A | QTS-49641 | 100% | 2025-06-05 | 2025-12-19 | Precon | GMP | Preconstruction | CFCI Procurement | BAB | 01ADMIN | Preconstruction |  |  |
| QTS-49721 |  | DH 2300 / Mechanical Yard // Cable Bus Procurement | 164d | 2025-06-05 A | 2025-11-05 A | QTS-49641 | 100% | 2025-06-05 | 2026-02-03 | Precon | GMP | Preconstruction | CFCI Procurement | BAB | 01ADMIN | Preconstruction |  |  |
| QTS-49731 |  | DH 1300 / Mechanical Yard // Cable Bus Procurement | 178d | 2025-06-05 A | 2025-11-20 A | QTS-49641 | 100% | 2025-06-05 | 2026-02-23 | Precon | GMP | Preconstruction | CFCI Procurement | BAB | 01ADMIN | Preconstruction |  |  |
|  | 33 | **Exterior OH Doors** |  | 2025-10-28 | 2026-01-09 |  |  |  |  |  |  |  |  |  |  |  |  |  |
| QTS-50731 |  | FOH / North // Procure OH Doors | 30d | 2025-10-28 A | 2026-01-09 A | QTS-50721 | 100% | 2025-10-28 | 2025-12-10 | Precon | IGMP | Construction |  | BAB | 01ADMIN | Preconstruction | Phase 2 |  |
| QTS-50771 |  | Zone 3 Gridlines 30-41 / North // Procure OH Doors | 30d | 2025-11-20 A | 2026-01-09 A | QTS-50761 | 100% | 2025-11-21 | 2026-01-12 | Precon | IGMP | Construction |  | BAB | 01ADMIN | Preconstruction | Phase 2 |  |
| QTS-50751 |  | East Elevation // Procure OH Doors | 25d | 2026-01-08 A | 2026-01-09 A | QTS-50741 | 100% | 2026-01-08 | 2026-02-12 | Precon | IGMP | Construction |  | BAB | 01ADMIN | Preconstruction | Phase 2 |  |
|  | 35 | **Casework** |  | 2025-09-18 | 2026-05-21 |  |  |  |  |  |  |  |  |  |  |  |  |  |
| QTS-99660 |  | FOH / Level 1 // Procure PLAM Casework | 30d | 2025-09-18 A | 2025-12-15 A | QTS-1371 SS | 100% | 2025-10-15 | 2025-11-25 | Precon | IGMP | Construction |  | BAB | 01ADMIN | Preconstruction | Phase 2 |  |
| QTS-99670 |  | FOH / Level 1 // Procure WD-1 Casework | 30d | 2025-09-18 A | 2026-05-21 A | QTS-1371 SS | 100% | 2025-10-15 | 2025-11-25 | Precon | IGMP | Construction |  | BAB | 01ADMIN | Preconstruction | Phase 2 |  |
|  | 36 | **Security Screen Wall** |  | 2025-10-06 | 2025-12-01 |  |  |  |  |  |  |  |  |  |  |  |  |  |
| QTS-99690 |  | RFI #608 for Security Screen Manufacturer Change | 7d | 2025-10-06 A | 2025-10-14 A | QTS-1371 SS | 100% |  |  | Precon |  |  |  | BAB |  |  |  |  |
| QTS-99680 |  | Procure Security Screen | 30d | 2025-10-15 A | 2025-12-01 A | QTS-99690 | 100% | 2025-10-15 | 2025-11-25 | Precon | IGMP | Construction |  | BAB | 01ADMIN | Preconstruction | Phase 2 |  |
|  | 37 | **Steel Grating for TES Tanks** |  | 2025-10-20 | 2025-11-24 |  |  |  |  |  |  |  |  |  |  |  |  |  |
| QTS-100330 |  | Zone 1 / Procure Grating for TES Tank Platforms | 20d | 2025-10-20 A | 2025-11-14 A | QTS-43221 | 100% |  |  | Precon | IGMP | Construction |  | TFO | 01ADMIN | Preconstruction | Phase 2 | TFO CONST |
| QTS-100340 |  | Zone 2 / Procure Grating for TES Tank Platforms | 20d | 2025-10-22 A | 2025-11-17 A | QTS-43221 | 100% | 2025-10-22 | 2025-11-18 | Precon | IGMP | Construction |  | TFO | 01ADMIN | Preconstruction | Phase 2 | TFO CONST |
| QTS-100350 |  | Zone 3 / Procure Grating for TES Tank Platforms | 20d | 2025-10-22 A | 2025-11-24 A | QTS-43221 | 100% | 2025-10-22 | 2025-11-18 | Precon | IGMP | Construction |  | TFO | 01ADMIN | Preconstruction | Phase 2 | TFO CONST |

Notes:
- QTS-49651: allucent_notes: John Capriotti on 2025-08-26 14:08: First shipment of cable bus for 2100 was received 8/20. Confirmed with REI. / allucent_notes: 2025-08-26 14:08 - User: John Capriotti - Date Added: 2025-08-26 14:08 - Note: First shipment of cable bus for 2100 was received 8/20. Confirmed with REI.
- QTS-49691: allucent_notes: John Capriotti on 2025-09-02 15:09: Per REI update: Cable bus estimated delivery is 10/3/2025. / allucent_notes: 2025-09-02 15:09 - User: John Capriotti - Date Added: 2025-09-02 15:09 - Note: Per REI update: Cable bus estimated delivery is 10/3/2025.
- QTS-49701: allucent_notes_20251104_160200: John Capriotti on 2025-09-02 15:09: Per REI update: Cable bus estimated delivery is 10/10/2025. / John Capriotti on 2025-10-14 14:10: Expected Delivery by end of week, will update when REI confirms they received the cable bus for DH2200 / John Capriotti on 2025-10-21 14:10: Pending confirmation that all bus has been received. Shipments have been coming consistently need to confirm total quantities per hall. / John Capriotti on 2025-10-27 18:10: Coming in multiple shipments, pending confirmation that we have entire data amount. / allucent_notes_20251028_163138: John Capriotti on 2025-09-02 15:09: Per REI update: Cable bus estimated delivery is 10/10/2025. / John Capriotti on 2025-10-14 14:10: Expected Delivery by end of week, will update when REI confirms they received the cable bus for DH2200 / John Capriotti on 2025-10-21 14:10: Pending confirmation that all bus has been received. Shipments have been coming consistently need to confirm total quantities per hall. / John Capriotti on 2025-10-27 18:10: Coming in multiple shipments, pending confirmation that we have entire data amount. / allucent_notes_20251027_224008: John Capriotti on 2025-09-02 15:09: Per REI update: Cable bus estimated delivery is 10/10/2025. / John Capriotti on 2025-10-14 14:10: Expected Delivery by end of week, will update when REI confirms they received the cable bus for DH2200 / John Capriotti on 2025-10-21 14:10: Pending confirmation that all bus has been received. Shipments have been coming consistently need to confirm total quantities per hall. / John Capriotti on 2025-10-27 18:10: Coming in multiple shipments, pending confirmation that we have entire data amount. / allucent_notes_20251021_145627: John Capriotti on 2025-09-02 15:09: Per REI update: Cable bus estimated delivery is 10/10/2025. / John Capriotti on 2025-10-14 14:10: Expected Delivery by end of week, will update when REI confirms they received the cable bus for DH2200 / John Capriotti on 2025-10-21 14:10: Pending confirmation that all bus has been received. Shipments have been coming consistently need to confirm total quantities per hall. / allucent_notes_20251014_152335: John Capriotti on 2025-09-02 15:09: Per REI update: Cable bus estimated delivery is 10/10/2025. / John Capriotti on 2025-10-14 14:10: Expected Delivery by end of week, will update when REI confirms they received the cable bus for DH2200 / allucent_notes: John Capriotti on 2025-09-02 15:09: Per REI update: Cable bus estimated delivery is 10/10/2025. / allucent_notes: 2025-09-02 15:09 - User: John Capriotti - Date Added: 2025-09-02 15:09 - Note: Per REI update: Cable bus estimated delivery is 10/10/2025. / 2025-10-14 14:10 - User: John Capriotti - Date Added: 2025-10-14 14:10 - Note: Expected Delivery by end of week,
- QTS-49711: allucent_notes_20251104_160200: John Capriotti on 2025-09-02 15:09: Per REI update: Cable bus estimated delivery is 10/17/2025. / John Capriotti on 2025-10-21 14:10: Pending confirmation that all bus has been received. Shipments have been coming consistently need to confirm total quantities per hall. / Jason Johnston on 2025-10-27 22:10: No update from John Capriotti / Jason Johnston on 2025-10-28 16:10: John reaching out to supplier to get an update. / allucent_notes_20251028_163138: John Capriotti on 2025-09-02 15:09: Per REI update: Cable bus estimated delivery is 10/17/2025. / John Capriotti on 2025-10-21 14:10: Pending confirmation that all bus has been received. Shipments have been coming consistently need to confirm total quantities per hall. / Jason Johnston on 2025-10-27 22:10: No update from John Capriotti / Jason Johnston on 2025-10-28 16:10: John reaching out to supplier to get an update. / allucent_notes_20251027_224008: John Capriotti on 2025-09-02 15:09: Per REI update: Cable bus estimated delivery is 10/17/2025. / John Capriotti on 2025-10-21 14:10: Pending confirmation that all bus has been received. Shipments have been coming consistently need to confirm total quantities per hall. / Jason Johnston on 2025-10-27 22:10: No update from John Capriotti / allucent_notes_20251021_145627: John Capriotti on 2025-09-02 15:09: Per REI update: Cable bus estimated delivery is 10/17/2025. / John Capriotti on 2025-10-21 14:10: Pending confirmation that all bus has been received. Shipments have been coming consistently need to confirm total quantities per hall. / allucent_notes_20251014_152335: John Capriotti on 2025-09-02 15:09: Per REI update: Cable bus estimated delivery is 10/17/2025. / allucent_notes: John Capriotti on 2025-09-02 15:09: Per REI update: Cable bus estimated delivery is 10/17/2025. / allucent_notes: 2025-09-02 15:09 - User: John Capriotti - Date Added: 2025-09-02 15:09 - Note: Per REI update: Cable bus estimated delivery is 10/17/2025. / 2025-10-21 14:10 - User: John Capriotti - Date Added: 2025-10-21 14:10 - Note: Pending confirmation that all bus
- QTS-49721: allucent_notes_20251209_203830: John Capriotti on 2025-09-02 15:09: Per REI update: Cable bus estimated delivery is 10/31/2025. / John Capriotti on 2025-11-04 14:11: Pending a status on the cable bus for all line-ups. / Jason Johnston on 2025-11-11 17:11: John owes me 11/11 update / John Capriotti on 2025-11-18T18:01:48.607Z: Cable Bus comes in multiple shipments, confirming what percentage we have, but ship date was 10/10 with estimated lead time of 12 weeks, looking at 12/9 to have all components for entire hall by 12/9. Will confirm if this is projected to be fully in ahead of time. / John Capriotti on 2025-12-09 15:31: Confirmed all components came in 11/5 from REI. / allucent_notes_20251202_153722: John Capriotti on 2025-09-02 15:09: Per REI update: Cable bus estimated delivery is 10/31/2025. / John Capriotti on 2025-11-04 14:11: Pending a status on the cable bus for all line-ups. / Jason Johnston on 2025-11-11 17:11: John owes me 11/11 update / John Capriotti on 2025-11-18T18:01:48.607Z: Cable Bus comes in multiple shipments, confirming what percentage we have, but ship date was 10/10 with estimated lead time of 12 weeks, looking at 12/9 to have all components for entire hall by 12/9. Will confirm if this is projected to be fully in ahead of time. / allucent_notes_20251118_192630: John Capriotti on 2025-09-02 15:09: Per REI update: Cable bus estimated delivery is 10/31/2025. / John Capriotti on 2025-11-04 14:11: Pending a status on the cable bus for all line-ups. / Jason Johnston on 2025-11-11 17:11: John owes me 11/11 update / John Capriotti on 2025-11-18T18:01:48.607Z: Cable Bus comes in multiple shipments, confirming what percentage we have, but ship date was 10/10 with estimated lead time of 12 weeks, looking at 12/9 to have all components for entire hall by 12/9. Will confirm if this is projected to be fully in ahead of time. / allucent_notes_20251111_182405: John Capriotti on 2025-09-02 15:09: Per REI update: Cable bus estimated delivery is 10/31/2025. / John Capriotti on 2025-11-04 14:11: Pending a status on the cable bus for all line-ups. / Jason Johnston on 2025-11-11 17:11: John owes me 11/11 update / allucent_notes_20251104_160200: John Capriotti on 2025-09-02 15:09: Per REI update: Cable bus estimated delivery is 10/31/2025. / John Capriotti on 2025-11-04 14:11: Pending a status on the cable bus for all line-ups. / allucent_notes_20251028_163138: John Capriotti on 2025-09-02 15:09: Per REI update: Cable bus estimated delivery is 10/31/2025. / allucent_notes_20251027_224008: John Capriotti on 2025-09-02 15:09: Per REI update: Cable bus estimated delivery is 10/31/2025. / allucent_notes_20251021_145627: John Capriotti on 2025-09-02 15:09: Per REI update: Cable bus estimated delivery is 10/31/2025. / allucent_notes_20251014_152335: John Capriotti on 2025-09-02 15:09: Per REI update: Cable bus estimated delivery is 10/31/2025. / allucent_notes: John Capriotti on 2025-09-02 15:09: Per REI update: Cable bus estimated delivery is 10/31/2025. / allucent_notes: 2025-09-02 15:09 - User: John Capriotti - Date Added: 2025-09-02 15:09 - Note: Per REI update: Cable bus estimated delivery is 10/31/2025. / 2025-11-04 14:11 - User: John Capriotti - Date Added: 2025-11-04 14:11 - Note: Pending a status on the cable bus
- QTS-49731: allucent_notes_20251209_203830: John Capriotti on 2025-09-02 15:09: Per REI update: Cable bus estimated delivery is 11/14/2025. / John Capriotti on 2025-11-18T18:01:27.615Z: Cable Bus comes in multiple shipments, confirming what percentage we have, but ship date was 10/10 with estimated lead time of 12 weeks, looking at 12/9 to have all components for entire hall by 12/9. Will confirm if this is projected to be fully in ahead of time. / John Capriotti on 2025-12-09 15:32: Confirmed all components came in 11/20 from REI. / John Capriotti on 2025-12-09 15:34: Confirmed all components came in 11/520 from REI. / allucent_notes_20251202_153722: John Capriotti on 2025-09-02 15:09: Per REI update: Cable bus estimated delivery is 11/14/2025. / John Capriotti on 2025-11-18T18:01:27.615Z: Cable Bus comes in multiple shipments, confirming what percentage we have, but ship date was 10/10 with estimated lead time of 12 weeks, looking at 12/9 to have all components for entire hall by 12/9. Will confirm if this is projected to be fully in ahead of time. / allucent_notes_20251118_192630: John Capriotti on 2025-09-02 15:09: Per REI update: Cable bus estimated delivery is 11/14/2025. / John Capriotti on 2025-11-18T18:01:27.615Z: Cable Bus comes in multiple shipments, confirming what percentage we have, but ship date was 10/10 with estimated lead time of 12 weeks, looking at 12/9 to have all components for entire hall by 12/9. Will confirm if this is projected to be fully in ahead of time. / allucent_notes_20251111_182405: John Capriotti on 2025-09-02 15:09: Per REI update: Cable bus estimated delivery is 11/14/2025. / allucent_notes_20251104_160200: John Capriotti on 2025-09-02 15:09: Per REI update: Cable bus estimated delivery is 11/14/2025. / allucent_notes_20251028_163138: John Capriotti on 2025-09-02 15:09: Per REI update: Cable bus estimated delivery is 11/14/2025. / allucent_notes_20251027_224008: John Capriotti on 2025-09-02 15:09: Per REI update: Cable bus estimated delivery is 11/14/2025. / allucent_notes_20251021_145627: John Capriotti on 2025-09-02 15:09: Per REI update: Cable bus estimated delivery is 11/14/2025. / allucent_notes_20251014_152335: John Capriotti on 2025-09-02 15:09: Per REI update: Cable bus estimated delivery is 11/14/2025. / allucent_notes: John Capriotti on 2025-09-02 15:09: Per REI update: Cable bus estimated delivery is 11/14/2025. / allucent_notes: 2025-09-02 15:09 - User: John Capriotti - Date Added: 2025-09-02 15:09 - Note: Per REI update: Cable bus estimated delivery is 11/14/2025. / 2025-11-18T18:01:27.615Z - User: John Capriotti - Date Added: 2025-11-18T18:01:27.615Z - Note: Cable Bus comes in
- QTS-50731: allucent_notes_20251216_165335: Andrew Melis on 2025-09-17 09:09: Field measurement of these doors are not scheduled until next week. / Andrew Melis on 2025-12-16 12:27: OH Exterior Doors are not due onsite until Janunary / allucent_notes_20251209_203830: Andrew Melis on 2025-09-17 09:09: Field measurement of these doors are not scheduled until next week. / allucent_notes_20251202_153722: Andrew Melis on 2025-09-17 09:09: Field measurement of these doors are not scheduled until next week. / allucent_notes_20251118_192630: Andrew Melis on 2025-09-17 09:09: Field measurement of these doors are not scheduled until next week. / allucent_notes_20251111_182405: Andrew Melis on 2025-09-17 09:09: Field measurement of these doors are not scheduled until next week. / allucent_notes_20251104_160200: Andrew Melis on 2025-09-17 09:09: Field measurement of these doors are not scheduled until next week. / allucent_notes_20251028_163138: Andrew Melis on 2025-09-17 09:09: Field measurement of these doors are not scheduled until next week. / allucent_notes_20251027_224008: Andrew Melis on 2025-09-17 09:09: Field measurement of these doors are not scheduled until next week. / allucent_notes_20251021_145627: Andrew Melis on 2025-09-17 09:09: Field measurement of these doors are not scheduled until next week. / allucent_notes_20251014_152335: Andrew Melis on 2025-09-17 09:09: Field measurement of these doors are not scheduled until next week. / allucent_notes_20251230_164549: Andrew Melis on 2025-09-17 09:09: Field measurement of these doors are not scheduled until next week. / Andrew Melis on 2025-12-16 12:27: OH Exterior Doors are not due onsite until Janunary / allucent_notes: 2025-09-17 09:09 - User: Andrew Melis - Date Added: 2025-09-17 09:09 - Note: Field measurement of these doors are not scheduled until next week. / 2025-12-16 12:27 - User: Andrew Melis - Date Added: 2025-12-16 12:27 - Note: OH Exterior Doors are not d
- QTS-50771: allucent_notes_20251216_165335: Andrew Melis on 2025-10-21 12:10: OH Doors are being ordered as one package. Layton is working to breakout the Exterior from the Interior doors but all exterior have not been field verified at this time / Andrew Melis on 2025-11-04 09:11: Final field verification is taking place this week for the exterior OH Doors. All OH doors are being ordered at that point / Andrew Melis on 2025-11-11 08:11: Doors have not been ordered yet as we are looking at options to seperate the interior from the exterior doors for procurement / Jason Johnston on 2025-12-01 14:23: Released vendor. / allucent_notes_20251209_203830: Andrew Melis on 2025-10-21 12:10: OH Doors are being ordered as one package. Layton is working to breakout the Exterior from the Interior doors but all exterior have not been field verified at this time / Andrew Melis on 2025-11-04 09:11: Final field verification is taking place this week for the exterior OH Doors. All OH doors are being ordered at that point / Andrew Melis on 2025-11-11 08:11: Doors have not been ordered yet as we are looking at options to seperate the interior from the exterior doors for procurement / Jason Johnston on 2025-12-01 14:23: Released vendor. / allucent_notes_20251202_153722: Andrew Melis on 2025-10-21 12:10: OH Doors are being ordered as one package. Layton is working to breakout the Exterior from the Interior doors but all exterior have not been field verified at this time / Andrew Melis on 2025-11-04 09:11: Final field verification is taking place this week for the exterior OH Doors. All OH doors are being ordered at that point / Andrew Melis on 2025-11-11 08:11: Doors have not been ordered yet as we are looking at options to seperate the interior from the exterior doors for procurement / Jason Johnston on 2025-12-01 14:23: Released vendor. / allucent_notes_20251118_192630: Andrew Melis on 2025-10-21 12:10: OH Doors are being ordered as one package. Layton is working to breakout the Exterior from the Interior doors but all exterior have not been field verified at this time / Andrew Melis on 2025-11-04 09:11: Final field verification is taking place this week for the exterior OH Doors. All OH doors are being ordered at that point / Andrew Melis on 2025-11-11 08:11: Doors have not been ordered yet as we are looking at options to seperate the interior from the exterior doors for procurement / allucent_notes_20251111_182405: Andrew Melis on 2025-10-21 12:10: OH Doors are being ordered as one package. Layton is working to breakout the Exterior from the Interior doors but all exterior have not been field verified at this time / Andrew Melis on 2025-11-04 09:11: Final field verification is taking place this week for the exterior OH Doors. All OH doors are being ordered at that point / Andrew Melis on 2025-11-11 08:11: Doors have not been ordered yet as we are looking at options to seperate the interior from the exterior doors for procurement / allucent_notes_20251104_160200: Andrew Melis on 2025-10-21 12:10: OH Doors are being ordered as one package. Layton is working to breakout the Exterior from the Interior doors but all exterior have not been field verified at this time / Andrew Melis on 2025-11-04 09:11: Final field verification is taking place this week for the exterior OH Doors. All OH doors are being ordered at that point / allucent_notes_20251028_163138: Andrew Melis on 2025-10-21 12:10: OH Doors are being ordered as one package. Layton is working to breakout the Exterior from the Interior doors but all exterior have not been field verified at this time / allucent_notes_20251027_224008: Andrew Melis on 2025-10-21 12:10: OH Doors are being ordered as one package. Layton is working to breakout the Exterior from the Interior doors but all exterior have not been field verified at this time / allucent_notes_20251021_145627: Andrew Melis on 2025-10-21 12:10: OH Doors are being ordered as one package. Layton is working to breakout the Exterior from the Interior doors but all exterior have not been field verified at this time / allucent_notes_20251230_164549: Andrew Melis on 2025-10-21 12:10: OH Doors are being ordered as one package. Layton is working to breakout the Exterior from the Interior doors but all exterior have not been field verified at this time / Andrew Melis on 2025-11-04 09:11: Final field verification is taking place this week for the exterior OH Doors. All OH doors are being ordered at that point / Andrew Melis on 2025-11-11 08:11: Doors have not been ordered yet as we are looking at options to seperate the interior from the exterior doors for procurement / Jason Johnston on 2025-12-01 14:23: Released vendor. / allucent_notes: 2025-10-21 12:10 - User: Andrew Melis - Date Added: 2025-10-21 12:10 - Note: OH Doors are being ordered as one package. Layton is working to breakout the Exterior from the Interior doors but all exterior have not been field verified at this time / 2025-
- QTS-99660: allucent_notes_20251216_165335: Jack Garrett on 2025-10-21 08:10: This is the projected delivery date / Jack Garrett on 2025-10-21 08:10: This is the correct date they began procurement. / Jason Johnston on 2025-12-16 15:52: no update / allucent_notes_20251209_203830: Jack Garrett on 2025-10-21 08:10: This is the projected delivery date / Jack Garrett on 2025-10-21 08:10: This is the correct date they began procurement. / allucent_notes_20251202_153722: Jack Garrett on 2025-10-21 08:10: This is the projected delivery date / Jack Garrett on 2025-10-21 08:10: This is the correct date they began procurement. / allucent_notes_20251118_192630: Jack Garrett on 2025-10-21 08:10: This is the projected delivery date / Jack Garrett on 2025-10-21 08:10: This is the correct date they began procurement. / allucent_notes_20251111_182405: Jack Garrett on 2025-10-21 08:10: This is the projected delivery date / Jack Garrett on 2025-10-21 08:10: This is the correct date they began procurement. / allucent_notes_20251104_160200: Jack Garrett on 2025-10-21 08:10: This is the projected delivery date / Jack Garrett on 2025-10-21 08:10: This is the correct date they began procurement. / allucent_notes_20251028_163138: Jack Garrett on 2025-10-21 08:10: This is the projected delivery date / Jack Garrett on 2025-10-21 08:10: This is the correct date they began procurement. / allucent_notes_20251027_224008: Jack Garrett on 2025-10-21 08:10: This is the projected delivery date / Jack Garrett on 2025-10-21 08:10: This is the correct date they began procurement. / allucent_notes_20251021_145627: Jack Garrett on 2025-10-21 08:10: This is the projected delivery date / Jack Garrett on 2025-10-21 08:10: This is the correct date they began procurement. / allucent_notes: 2025-10-21 08:10 - User: Jack Garrett - Date Added: 2025-10-21 08:10 - Note: This is the projected delivery date / 2025-10-21 08:10 - User: Jack Garrett - Date Added: 2025-10-21 08:10 - Note: This is the correct date they began procurement. / 2025-12-16
- QTS-99670: allucent_notes_20251216_165335: Jack Garrett on 2025-10-21 08:10: correct start date / Jack Garrett on 2025-10-21 08:10: correct projected delivery date. / Jack Garrett on 2025-12-02 12:01: Case work pushed back and being stored off site. / allucent_notes_20251209_203830: Jack Garrett on 2025-10-21 08:10: correct start date / Jack Garrett on 2025-10-21 08:10: correct projected delivery date. / Jack Garrett on 2025-12-02 12:01: Case work pushed back and being stored off site. / allucent_notes_20251202_153722: Jack Garrett on 2025-10-21 08:10: correct start date / Jack Garrett on 2025-10-21 08:10: correct projected delivery date. / Jack Garrett on 2025-12-02 12:01: Case work pushed back and being stored off site. / allucent_notes_20251118_192630: Jack Garrett on 2025-10-21 08:10: correct start date / Jack Garrett on 2025-10-21 08:10: correct projected delivery date. / allucent_notes_20251111_182405: Jack Garrett on 2025-10-21 08:10: correct start date / Jack Garrett on 2025-10-21 08:10: correct projected delivery date. / allucent_notes_20251104_160200: Jack Garrett on 2025-10-21 08:10: correct start date / Jack Garrett on 2025-10-21 08:10: correct projected delivery date. / allucent_notes_20251028_163138: Jack Garrett on 2025-10-21 08:10: correct start date / Jack Garrett on 2025-10-21 08:10: correct projected delivery date. / allucent_notes_20251027_224008: Jack Garrett on 2025-10-21 08:10: correct start date / Jack Garrett on 2025-10-21 08:10: correct projected delivery date. / allucent_notes_20251021_145627: Jack Garrett on 2025-10-21 08:10: correct start date / Jack Garrett on 2025-10-21 08:10: correct projected delivery date. / allucent_notes_20251230_164549: Jack Garrett on 2025-10-21 08:10: correct start date / Jack Garrett on 2025-10-21 08:10: correct projected delivery date. / Jack Garrett on 2025-12-02 12:01: Case work pushed back and being stored off site. / allucent_notes: 2025-10-21 08:10 - User: Jack Garrett - Date Added: 2025-10-21 08:10 - Note: correct start date / 2025-10-21 08:10 - User: Jack Garrett - Date Added: 2025-10-21 08:10 - Note: correct projected delivery date. / 2025-12-02 12:01 - User: Jack Garrett - Dat
- QTS-99680: allucent_notes_20251202_153722: Jack Garrett on 2025-11-25 12:11: delayed / allucent_notes: 2025-11-25 12:11 - User: Jack Garrett - Date Added: 2025-11-25 12:11 - Note: delayed

| ID | WBS | Activity | Duration | Start | Finish | Predecessors | Complete | Planned start | Planned finish | Notes | Allucent CSI Group | Project Section | Layton Discipline | Baseline | Phase-1-1 | Project Section-1 | Fragnet | Fragnet Responsible Party | Contract | Precon Phase |
| --- | --- | --- | --- | --- | --- | --- | --- | --- | --- | --- | --- | --- | --- | --- | --- | --- | --- | --- | --- | --- |
|  | 38 | **Fragnet / Fire Extinguisher Cabinets** |  | 2025-12-05 | 2026-05-21 |  |  |  |  |  |  |  |  |  |  |  |  |  |  |  |
| QTS-1004500 |  | Fragnet / RFI #739 Submission Fire Extinguisher Cabinets | 1d | 2025-12-05 A | 2025-12-05 A | QTS-1371 SS | 100% | 2025-10-15 | 2025-10-15 | Case work pushed back and being stored off site. | 01ADMIN | Preconstruction | Precon | IGMP | Phase 2 | Construction | Fragnet | ISEC Inc. | BAB |  |
| QTS-1004510 |  | Fragnet / RFI #739 Design Response Fire Extinguisher Cabinets | 10d | 2025-12-08 A | 2025-12-19 A | QTS-1004500 | 100% | 2025-10-15 | 2025-10-28 |  | 01ADMIN | Preconstruction | Precon | IGMP | Phase 2 | Construction | Fragnet | ISEC Inc. | BAB |  |
| QTS-1004520 |  | Fragnet / Procure Fire Extinguisher Cabinets | 70d | 2025-12-22 A | 2026-05-21 A | QTS-1004510 | 100% | 2025-10-15 | 2026-01-30 |  | 01ADMIN | Preconstruction | Precon | IGMP | Phase 2 | Construction | Fragnet | ISEC Inc. | BAB |  |
|  | 39 | **Angle Seal** |  | 2026-01-30 | 2026-03-11 |  |  |  |  |  |  |  |  |  |  |  |  |  |  |  |
| QTS-1004870 |  | Procure Angle Seal for CRAH Units | 5d | 2026-01-30 A | 2026-02-24 A | QTS-1371 SS | 100% | 2025-09-04 | 2025-09-10 |  | 01ADMIN | Preconstruction | Precon | GMP |  | Preconstruction |  |  | BAB | CFCI Procurement |
| QTS-1004880 |  | Prime & Paint Angle Seal for CRAH Units | 7d | 2026-03-06 A | 2026-03-11 A | QTS-1004870 | 100% | 2026-03-06 | 2026-03-16 |  | 01ADMIN | Preconstruction | Precon | GMP |  | Preconstruction |  |  | BAB | CFCI Procurement |
|  | 40 | **FOH Glazing Replacement** |  | 2026-02-10 | 2026-02-26 |  |  |  |  |  |  |  |  |  |  |  |  |  |  |  |
| QTS-1005080 |  | Procure Replacement Strip Glass Panes | 10d | 2026-02-10 A | 2026-02-26 A | QTS-1371 SS | 100% | 2026-02-10 | 2026-02-23 |  | 01ADMIN | Preconstruction | Precon | GMP |  | Preconstruction |  |  | BAB | CFCI Procurement |
|  | 41 | **BOH Louvered Screen Wall Panel** |  | 2026-02-16 | 2026-03-16 |  |  |  |  |  |  |  |  |  |  |  |  |  |  |  |
| QTS-1005340 |  | Procure Louvered Screen Wall Panel | 70d | 2026-02-16 A | 2026-03-16 A | QTS-1371 SS | 100% | 2026-02-16 | 2026-05-22 |  | 01ADMIN | Preconstruction | Precon | GMP |  | Preconstruction |  |  | BAB | CFCI Procurement |
|  | 42 | **Freedom Wall Metal Panels** |  | 2026-05-19 | 2026-06-04 |  |  |  |  |  |  |  |  |  |  |  |  |  |  |  |
| QTS-1007230 |  | Procure Freedom Wall Metal Panels | 20d | 2026-05-19 A | 2026-06-04 A | QTS-1007220 | 100% | 2026-05-19 | 2026-06-16 |  | 01ADMIN | Preconstruction | Precon | GMP |  | Preconstruction |  |  | BAB | CFCI Procurement |
|  | 43 | **Fragnet / Carbon Steel Delivery Delay** |  | 2025-12-03 | 2026-05-15 |  |  |  |  |  |  |  |  |  |  |  |  |  |  |  |
| QTS - 26071 |  | Fragnet // Zone 2 Fabricate Carbon Steel | 20d | 2025-12-03 A | 2026-05-15 A | QTS-1371 SS | 100% | 2025-12-03 | 2026-01-06 |  | 01ADMIN |  | Precon |  |  |  | Fragnet | Bel-Aire Mechanical. LLC | BAB |  |
| QTS - 26101 |  | Fragnet // Notice of Delayed Carbon Steel Delivery | 1d | 2026-03-11 A | 2026-03-11 A | QTS-1371 SS | 100% | 2025-12-03 | 2025-12-03 |  | 01ADMIN |  | Precon |  |  |  | Fragnet | Bel-Aire Mechanical. LLC | BAB |  |
| QTS - 26111 |  | Fragnet // Zone 3 Fabricate Carbon Steel | 20d | 2026-03-12 A | 2026-05-06 A | QTS - 26101 | 100% | 2026-03-18 | 2026-04-14 |  | 01ADMIN |  | Precon |  |  |  | Fragnet | Bel-Aire Mechanical. LLC | BAB |  |
|  | 44 | **Lighting** |  | 2026-04-22 | 2026-05-12 |  |  |  |  |  |  |  |  |  |  |  |  |  |  |  |
| QTS - 26381 |  | Procure Zone 3 Data Hall Lights - Type E | 20d | 2026-04-22 A | 2026-05-12 A | QTS-9711, QTS-46901 | 100% | 2026-03-18 | 2026-04-14 |  | 01ADMIN |  | Precon |  |  |  | Fragnet | Rosendin Electric Inc. | BAB |  |
|  | 1 | **OFCI Equipment** |  | 2025-02-10 | 2026-07-08 |  |  |  |  |  |  |  |  |  |  |  |  |  |  |  |
|  | 5 | **FOH/ BOH Roof Top Units** |  | 2025-07-18 | 2025-12-22 |  |  |  |  |  |  |  |  |  |  |  |  |  |  |  |
| QTS-25371 |  | FOH / RTU-RT05-01 | 20d | 2025-07-18 A | 2025-10-28 A | QTS-1371 | 100% | 2025-07-18 | 2025-08-14 |  | 01ADMIN | Preconstruction | Precon | GMP |  | Preconstruction |  |  | BAB | OFCI Procurement |
| QTS-36091 |  | FOH / RTU-RT05-02 | 20d | 2025-07-30 A | 2025-10-27 A | QTS-1371 | 100% | 2025-07-30 | 2025-08-26 |  | 01ADMIN | Preconstruction | Precon | GMP |  | Preconstruction |  |  | BAB | OFCI Procurement |
| QTS-23461 |  | BOH / RTU-RT05-03 | 20d | 2025-09-12 A | 2025-12-22 A | QTS-1371 | 100% | 2025-09-12 | 2025-10-09 |  | 01ADMIN | Preconstruction | Precon | GMP |  | Preconstruction |  |  | BAB | OFCI Procurement |

Notes:
- QTS-1004500: allucent_notes_20251216_165335: Jack Garrett on 2025-10-21 08:10: correct start date / Jack Garrett on 2025-10-21 08:10: correct projected delivery date. / Jack Garrett on 2025-12-02 12:01: Case work pushed back and being stored off site. / allucent_notes_20251209_203830: Jack Garrett on 2025-10-21 08:10: correct start date / Jack Garrett on 2025-10-21 08:10: correct projected delivery date. / Jack Garrett on 2025-12-02 12:01: Case work pushed back and being stored off site. / allucent_notes_20251202_153722: Jack Garrett on 2025-10-21 08:10: correct start date / Jack Garrett on 2025-10-21 08:10: correct projected delivery date. / Jack Garrett on 2025-12-02 12:01: Case work pushed back and being stored off site. / allucent_notes_20251118_192630: Jack Garrett on 2025-10-21 08:10: correct start date / Jack Garrett on 2025-10-21 08:10: correct projected delivery date. / allucent_notes_20251111_182405: Jack Garrett on 2025-10-21 08:10: correct start date / Jack Garrett on 2025-10-21 08:10: correct projected delivery date. / allucent_notes_20251104_160200: Jack Garrett on 2025-10-21 08:10: correct start date / Jack Garrett on 2025-10-21 08:10: correct projected delivery date. / allucent_notes_20251028_163138: Jack Garrett on 2025-10-21 08:10: correct start date / Jack Garrett on 2025-10-21 08:10: correct projected delivery date. / allucent_notes_20251027_224008: Jack Garrett on 2025-10-21 08:10: correct start date / Jack Garrett on 2025-10-21 08:10: correct projected delivery date. / allucent_notes_20251021_145627: Jack Garrett on 2025-10-21 08:10: correct start date / Jack Garrett on 2025-10-21 08:10: correct projected delivery date. / allucent_notes_20251230_164549: Jack Garrett on 2025-10-21 08:10: correct start date / Jack Garrett on 2025-10-21 08:10: correct projected delivery date. / Jack Garrett on 2025-12-02 12:01: Case work pushed back and being stored off site. / Scheduler Notes: Jack Garrett on 2025-10-21 08:10: correct start date / Jack Garrett on 2025-10-21 08:10: correct projected delivery date. / Jack Garrett on 2025-12-02 12:01: Case work pushed back and being stored off / site. / allucent_notes: 2025-10-21 08:10 - User: Jack Garrett - Date Added: 2025-10-21 08:10 - Note: correct start date / 2025-10-21 08:10 - User: Jack Garrett - Date Added: 2025-10-21 08:10 - Note: correct projected delivery date. / 2025-12-02 12:01 - User: Jack Garrett - Dat
- QTS-1004510: allucent_notes_20251216_165335: Jack Garrett on 2025-10-21 08:10: correct start date / Jack Garrett on 2025-10-21 08:10: correct projected delivery date. / Jack Garrett on 2025-12-02 12:01: Case work pushed back and being stored off site. / allucent_notes_20251209_203830: Jack Garrett on 2025-10-21 08:10: correct start date / Jack Garrett on 2025-10-21 08:10: correct projected delivery date. / Jack Garrett on 2025-12-02 12:01: Case work pushed back and being stored off site. / allucent_notes_20251202_153722: Jack Garrett on 2025-10-21 08:10: correct start date / Jack Garrett on 2025-10-21 08:10: correct projected delivery date. / Jack Garrett on 2025-12-02 12:01: Case work pushed back and being stored off site. / allucent_notes_20251118_192630: Jack Garrett on 2025-10-21 08:10: correct start date / Jack Garrett on 2025-10-21 08:10: correct projected delivery date. / allucent_notes_20251111_182405: Jack Garrett on 2025-10-21 08:10: correct start date / Jack Garrett on 2025-10-21 08:10: correct projected delivery date. / allucent_notes_20251104_160200: Jack Garrett on 2025-10-21 08:10: correct start date / Jack Garrett on 2025-10-21 08:10: correct projected delivery date. / allucent_notes_20251028_163138: Jack Garrett on 2025-10-21 08:10: correct start date / Jack Garrett on 2025-10-21 08:10: correct projected delivery date. / allucent_notes_20251027_224008: Jack Garrett on 2025-10-21 08:10: correct start date / Jack Garrett on 2025-10-21 08:10: correct projected delivery date. / allucent_notes_20251021_145627: Jack Garrett on 2025-10-21 08:10: correct start date / Jack Garrett on 2025-10-21 08:10: correct projected delivery date. / allucent_notes_20251230_164549: Jack Garrett on 2025-10-21 08:10: correct start date / Jack Garrett on 2025-10-21 08:10: correct projected delivery date. / Jack Garrett on 2025-12-02 12:01: Case work pushed back and being stored off site. / allucent_notes: 2025-10-21 08:10 - User: Jack Garrett - Date Added: 2025-10-21 08:10 - Note: correct start date / 2025-10-21 08:10 - User: Jack Garrett - Date Added: 2025-10-21 08:10 - Note: correct projected delivery date. / 2025-12-02 12:01 - User: Jack Garrett - Dat
- QTS-1004520: allucent_notes_20251216_165335: Jack Garrett on 2025-10-21 08:10: correct start date / Jack Garrett on 2025-10-21 08:10: correct projected delivery date. / Jack Garrett on 2025-12-02 12:01: Case work pushed back and being stored off site. / allucent_notes_20251209_203830: Jack Garrett on 2025-10-21 08:10: correct start date / Jack Garrett on 2025-10-21 08:10: correct projected delivery date. / Jack Garrett on 2025-12-02 12:01: Case work pushed back and being stored off site. / allucent_notes_20251202_153722: Jack Garrett on 2025-10-21 08:10: correct start date / Jack Garrett on 2025-10-21 08:10: correct projected delivery date. / Jack Garrett on 2025-12-02 12:01: Case work pushed back and being stored off site. / allucent_notes_20251118_192630: Jack Garrett on 2025-10-21 08:10: correct start date / Jack Garrett on 2025-10-21 08:10: correct projected delivery date. / allucent_notes_20251111_182405: Jack Garrett on 2025-10-21 08:10: correct start date / Jack Garrett on 2025-10-21 08:10: correct projected delivery date. / allucent_notes_20251104_160200: Jack Garrett on 2025-10-21 08:10: correct start date / Jack Garrett on 2025-10-21 08:10: correct projected delivery date. / allucent_notes_20251028_163138: Jack Garrett on 2025-10-21 08:10: correct start date / Jack Garrett on 2025-10-21 08:10: correct projected delivery date. / allucent_notes_20251027_224008: Jack Garrett on 2025-10-21 08:10: correct start date / Jack Garrett on 2025-10-21 08:10: correct projected delivery date. / allucent_notes_20251021_145627: Jack Garrett on 2025-10-21 08:10: correct start date / Jack Garrett on 2025-10-21 08:10: correct projected delivery date. / allucent_notes_20251230_164549: Jack Garrett on 2025-10-21 08:10: correct start date / Jack Garrett on 2025-10-21 08:10: correct projected delivery date. / Jack Garrett on 2025-12-02 12:01: Case work pushed back and being stored off site. / allucent_notes: 2025-10-21 08:10 - User: Jack Garrett - Date Added: 2025-10-21 08:10 - Note: correct start date / 2025-10-21 08:10 - User: Jack Garrett - Date Added: 2025-10-21 08:10 - Note: correct projected delivery date. / 2025-12-02 12:01 - User: Jack Garrett - Dat
- QTS-1004870: allucent_notes_20251216_165335: Jack Garrett on 2025-09-09 13:09: Terrazzo is scheduled farther out / Jack Garrett on 2025-09-19 11:09: Terrazzo Flooring Install at Lobby and Stairs begins on 22-December and has 4 week lead time / Jack Garrett on 2025-09-19 11:09: All Terrazzo Materials have a 4 week lead time / Jack Garrett on 2025-12-02 12:01: Terrazzo Pushed Back. / allucent_notes_20251209_203830: Jack Garrett on 2025-09-09 13:09: Terrazzo is scheduled farther out / Jack Garrett on 2025-09-19 11:09: Terrazzo Flooring Install at Lobby and Stairs begins on 22-December and has 4 week lead time / Jack Garrett on 2025-09-19 11:09: All Terrazzo Materials have a 4 week lead time / Jack Garrett on 2025-12-02 12:01: Terrazzo Pushed Back. / allucent_notes_20251202_153722: Jack Garrett on 2025-09-09 13:09: Terrazzo is scheduled farther out / Jack Garrett on 2025-09-19 11:09: Terrazzo Flooring Install at Lobby and Stairs begins on 22-December and has 4 week lead time / Jack Garrett on 2025-09-19 11:09: All Terrazzo Materials have a 4 week lead time / Jack Garrett on 2025-12-02 12:01: Terrazzo Pushed Back. / allucent_notes_20251118_192630: Jack Garrett on 2025-09-09 13:09: Terrazzo is scheduled farther out / Jack Garrett on 2025-09-19 11:09: Terrazzo Flooring Install at Lobby and Stairs begins on 22-December and has 4 week lead time / Jack Garrett on 2025-09-19 11:09: All Terrazzo Materials have a 4 week lead time / allucent_notes_20251111_182405: Jack Garrett on 2025-09-09 13:09: Terrazzo is scheduled farther out / Jack Garrett on 2025-09-19 11:09: Terrazzo Flooring Install at Lobby and Stairs begins on 22-December and has 4 week lead time / Jack Garrett on 2025-09-19 11:09: All Terrazzo Materials have a 4 week lead time / allucent_notes_20251104_160200: Jack Garrett on 2025-09-09 13:09: Terrazzo is scheduled farther out / Jack Garrett on 2025-09-19 11:09: Terrazzo Flooring Install at Lobby and Stairs begins on 22-December and has 4 week lead time / Jack Garrett on 2025-09-19 11:09: All Terrazzo Materials have a 4 week lead time / allucent_notes_20251028_163138: Jack Garrett on 2025-09-09 13:09: Terrazzo is scheduled farther out / Jack Garrett on 2025-09-19 11:09: Terrazzo Flooring Install at Lobby and Stairs begins on 22-December and has 4 week lead time / Jack Garrett on 2025-09-19 11:09: All Terrazzo Materials have a 4 week lead time / allucent_notes_20251027_224008: Jack Garrett on 2025-09-09 13:09: Terrazzo is scheduled farther out / Jack Garrett on 2025-09-19 11:09: Terrazzo Flooring Install at Lobby and Stairs begins on 22-December and has 4 week lead time / Jack Garrett on 2025-09-19 11:09: All Terrazzo Materials have a 4 week lead time / allucent_notes_20251021_145627: Jack Garrett on 2025-09-09 13:09: Terrazzo is scheduled farther out / Jack Garrett on 2025-09-19 11:09: Terrazzo Flooring Install at Lobby and Stairs begins on 22-December and has 4 week lead time / Jack Garrett on 2025-09-19 11:09: All Terrazzo Materials have a 4 week lead time / allucent_notes_20251014_152335: Jack Garrett on 2025-09-09 13:09: Terrazzo is scheduled farther out / Jack Garrett on 2025-09-19 11:09: Terrazzo Flooring Install at Lobby and Stairs begins on 22-December and has 4 week lead time / Jack Garrett on 2025-09-19 11:09: All Terrazzo Materials have a 4 week lead time / allucent_notes_20251230_164549: Jack Garrett on 2025-09-09 13:09: Terrazzo is scheduled farther out / Jack Garrett on 2025-09-19 11:09: Terrazzo Flooring Install at Lobby and Stairs begins on 22-December and has 4 week lead time / Jack Garrett on 2025-09-19 11:09: All Terrazzo Materials have a 4 week lead time / Jack Garrett on 2025-12-02 12:01: Terrazzo Pushed Back. / allucent_notes: 2025-09-09 13:09 - User: Jack Garrett - Date Added: 2025-09-09 13:09 - Note: Terrazzo is scheduled farther out / 2025-09-19 11:09 - User: Jack Garrett - Date Added: 2025-09-19 11:09 - Note: Terrazzo Flooring Install at Lobby and Stairs begins on 22-Decem
- QTS-1004880: allucent_notes_20251216_165335: Jack Garrett on 2025-09-09 13:09: Terrazzo is scheduled farther out / Jack Garrett on 2025-09-19 11:09: Terrazzo Flooring Install at Lobby and Stairs begins on 22-December and has 4 week lead time / Jack Garrett on 2025-09-19 11:09: All Terrazzo Materials have a 4 week lead time / Jack Garrett on 2025-12-02 12:01: Terrazzo Pushed Back. / allucent_notes_20251209_203830: Jack Garrett on 2025-09-09 13:09: Terrazzo is scheduled farther out / Jack Garrett on 2025-09-19 11:09: Terrazzo Flooring Install at Lobby and Stairs begins on 22-December and has 4 week lead time / Jack Garrett on 2025-09-19 11:09: All Terrazzo Materials have a 4 week lead time / Jack Garrett on 2025-12-02 12:01: Terrazzo Pushed Back. / allucent_notes_20251202_153722: Jack Garrett on 2025-09-09 13:09: Terrazzo is scheduled farther out / Jack Garrett on 2025-09-19 11:09: Terrazzo Flooring Install at Lobby and Stairs begins on 22-December and has 4 week lead time / Jack Garrett on 2025-09-19 11:09: All Terrazzo Materials have a 4 week lead time / Jack Garrett on 2025-12-02 12:01: Terrazzo Pushed Back. / allucent_notes_20251118_192630: Jack Garrett on 2025-09-09 13:09: Terrazzo is scheduled farther out / Jack Garrett on 2025-09-19 11:09: Terrazzo Flooring Install at Lobby and Stairs begins on 22-December and has 4 week lead time / Jack Garrett on 2025-09-19 11:09: All Terrazzo Materials have a 4 week lead time / allucent_notes_20251111_182405: Jack Garrett on 2025-09-09 13:09: Terrazzo is scheduled farther out / Jack Garrett on 2025-09-19 11:09: Terrazzo Flooring Install at Lobby and Stairs begins on 22-December and has 4 week lead time / Jack Garrett on 2025-09-19 11:09: All Terrazzo Materials have a 4 week lead time / allucent_notes_20251104_160200: Jack Garrett on 2025-09-09 13:09: Terrazzo is scheduled farther out / Jack Garrett on 2025-09-19 11:09: Terrazzo Flooring Install at Lobby and Stairs begins on 22-December and has 4 week lead time / Jack Garrett on 2025-09-19 11:09: All Terrazzo Materials have a 4 week lead time / allucent_notes_20251028_163138: Jack Garrett on 2025-09-09 13:09: Terrazzo is scheduled farther out / Jack Garrett on 2025-09-19 11:09: Terrazzo Flooring Install at Lobby and Stairs begins on 22-December and has 4 week lead time / Jack Garrett on 2025-09-19 11:09: All Terrazzo Materials have a 4 week lead time / allucent_notes_20251027_224008: Jack Garrett on 2025-09-09 13:09: Terrazzo is scheduled farther out / Jack Garrett on 2025-09-19 11:09: Terrazzo Flooring Install at Lobby and Stairs begins on 22-December and has 4 week lead time / Jack Garrett on 2025-09-19 11:09: All Terrazzo Materials have a 4 week lead time / allucent_notes_20251021_145627: Jack Garrett on 2025-09-09 13:09: Terrazzo is scheduled farther out / Jack Garrett on 2025-09-19 11:09: Terrazzo Flooring Install at Lobby and Stairs begins on 22-December and has 4 week lead time / Jack Garrett on 2025-09-19 11:09: All Terrazzo Materials have a 4 week lead time / allucent_notes_20251014_152335: Jack Garrett on 2025-09-09 13:09: Terrazzo is scheduled farther out / Jack Garrett on 2025-09-19 11:09: Terrazzo Flooring Install at Lobby and Stairs begins on 22-December and has 4 week lead time / Jack Garrett on 2025-09-19 11:09: All Terrazzo Materials have a 4 week lead time / allucent_notes_20251230_164549: Jack Garrett on 2025-09-09 13:09: Terrazzo is scheduled farther out / Jack Garrett on 2025-09-19 11:09: Terrazzo Flooring Install at Lobby and Stairs begins on 22-December and has 4 week lead time / Jack Garrett on 2025-09-19 11:09: All Terrazzo Materials have a 4 week lead time / Jack Garrett on 2025-12-02 12:01: Terrazzo Pushed Back. / allucent_notes: 2025-09-09 13:09 - User: Jack Garrett - Date Added: 2025-09-09 13:09 - Note: Terrazzo is scheduled farther out / 2025-09-19 11:09 - User: Jack Garrett - Date Added: 2025-09-19 11:09 - Note: Terrazzo Flooring Install at Lobby and Stairs begins on 22-Decem
- QTS-1005080: allucent_notes_20251216_165335: Jack Garrett on 2025-09-09 13:09: Terrazzo is scheduled farther out / Jack Garrett on 2025-09-19 11:09: Terrazzo Flooring Install at Lobby and Stairs begins on 22-December and has 4 week lead time / Jack Garrett on 2025-09-19 11:09: All Terrazzo Materials have a 4 week lead time / Jack Garrett on 2025-12-02 12:01: Terrazzo Pushed Back. / allucent_notes_20251209_203830: Jack Garrett on 2025-09-09 13:09: Terrazzo is scheduled farther out / Jack Garrett on 2025-09-19 11:09: Terrazzo Flooring Install at Lobby and Stairs begins on 22-December and has 4 week lead time / Jack Garrett on 2025-09-19 11:09: All Terrazzo Materials have a 4 week lead time / Jack Garrett on 2025-12-02 12:01: Terrazzo Pushed Back. / allucent_notes_20251202_153722: Jack Garrett on 2025-09-09 13:09: Terrazzo is scheduled farther out / Jack Garrett on 2025-09-19 11:09: Terrazzo Flooring Install at Lobby and Stairs begins on 22-December and has 4 week lead time / Jack Garrett on 2025-09-19 11:09: All Terrazzo Materials have a 4 week lead time / Jack Garrett on 2025-12-02 12:01: Terrazzo Pushed Back. / allucent_notes_20251118_192630: Jack Garrett on 2025-09-09 13:09: Terrazzo is scheduled farther out / Jack Garrett on 2025-09-19 11:09: Terrazzo Flooring Install at Lobby and Stairs begins on 22-December and has 4 week lead time / Jack Garrett on 2025-09-19 11:09: All Terrazzo Materials have a 4 week lead time / allucent_notes_20251111_182405: Jack Garrett on 2025-09-09 13:09: Terrazzo is scheduled farther out / Jack Garrett on 2025-09-19 11:09: Terrazzo Flooring Install at Lobby and Stairs begins on 22-December and has 4 week lead time / Jack Garrett on 2025-09-19 11:09: All Terrazzo Materials have a 4 week lead time / allucent_notes_20251104_160200: Jack Garrett on 2025-09-09 13:09: Terrazzo is scheduled farther out / Jack Garrett on 2025-09-19 11:09: Terrazzo Flooring Install at Lobby and Stairs begins on 22-December and has 4 week lead time / Jack Garrett on 2025-09-19 11:09: All Terrazzo Materials have a 4 week lead time / allucent_notes_20251028_163138: Jack Garrett on 2025-09-09 13:09: Terrazzo is scheduled farther out / Jack Garrett on 2025-09-19 11:09: Terrazzo Flooring Install at Lobby and Stairs begins on 22-December and has 4 week lead time / Jack Garrett on 2025-09-19 11:09: All Terrazzo Materials have a 4 week lead time / allucent_notes_20251027_224008: Jack Garrett on 2025-09-09 13:09: Terrazzo is scheduled farther out / Jack Garrett on 2025-09-19 11:09: Terrazzo Flooring Install at Lobby and Stairs begins on 22-December and has 4 week lead time / Jack Garrett on 2025-09-19 11:09: All Terrazzo Materials have a 4 week lead time / allucent_notes_20251021_145627: Jack Garrett on 2025-09-09 13:09: Terrazzo is scheduled farther out / Jack Garrett on 2025-09-19 11:09: Terrazzo Flooring Install at Lobby and Stairs begins on 22-December and has 4 week lead time / Jack Garrett on 2025-09-19 11:09: All Terrazzo Materials have a 4 week lead time / allucent_notes_20251014_152335: Jack Garrett on 2025-09-09 13:09: Terrazzo is scheduled farther out / Jack Garrett on 2025-09-19 11:09: Terrazzo Flooring Install at Lobby and Stairs begins on 22-December and has 4 week lead time / Jack Garrett on 2025-09-19 11:09: All Terrazzo Materials have a 4 week lead time / allucent_notes_20251230_164549: Jack Garrett on 2025-09-09 13:09: Terrazzo is scheduled farther out / Jack Garrett on 2025-09-19 11:09: Terrazzo Flooring Install at Lobby and Stairs begins on 22-December and has 4 week lead time / Jack Garrett on 2025-09-19 11:09: All Terrazzo Materials have a 4 week lead time / Jack Garrett on 2025-12-02 12:01: Terrazzo Pushed Back. / allucent_notes: 2025-09-09 13:09 - User: Jack Garrett - Date Added: 2025-09-09 13:09 - Note: Terrazzo is scheduled farther out / 2025-09-19 11:09 - User: Jack Garrett - Date Added: 2025-09-19 11:09 - Note: Terrazzo Flooring Install at Lobby and Stairs begins on 22-Decem
- QTS-1005340: allucent_notes_20251216_165335: Jack Garrett on 2025-09-09 13:09: Terrazzo is scheduled farther out / Jack Garrett on 2025-09-19 11:09: Terrazzo Flooring Install at Lobby and Stairs begins on 22-December and has 4 week lead time / Jack Garrett on 2025-09-19 11:09: All Terrazzo Materials have a 4 week lead time / Jack Garrett on 2025-12-02 12:01: Terrazzo Pushed Back. / allucent_notes_20251209_203830: Jack Garrett on 2025-09-09 13:09: Terrazzo is scheduled farther out / Jack Garrett on 2025-09-19 11:09: Terrazzo Flooring Install at Lobby and Stairs begins on 22-December and has 4 week lead time / Jack Garrett on 2025-09-19 11:09: All Terrazzo Materials have a 4 week lead time / Jack Garrett on 2025-12-02 12:01: Terrazzo Pushed Back. / allucent_notes_20251202_153722: Jack Garrett on 2025-09-09 13:09: Terrazzo is scheduled farther out / Jack Garrett on 2025-09-19 11:09: Terrazzo Flooring Install at Lobby and Stairs begins on 22-December and has 4 week lead time / Jack Garrett on 2025-09-19 11:09: All Terrazzo Materials have a 4 week lead time / Jack Garrett on 2025-12-02 12:01: Terrazzo Pushed Back. / allucent_notes_20251118_192630: Jack Garrett on 2025-09-09 13:09: Terrazzo is scheduled farther out / Jack Garrett on 2025-09-19 11:09: Terrazzo Flooring Install at Lobby and Stairs begins on 22-December and has 4 week lead time / Jack Garrett on 2025-09-19 11:09: All Terrazzo Materials have a 4 week lead time / allucent_notes_20251111_182405: Jack Garrett on 2025-09-09 13:09: Terrazzo is scheduled farther out / Jack Garrett on 2025-09-19 11:09: Terrazzo Flooring Install at Lobby and Stairs begins on 22-December and has 4 week lead time / Jack Garrett on 2025-09-19 11:09: All Terrazzo Materials have a 4 week lead time / allucent_notes_20251104_160200: Jack Garrett on 2025-09-09 13:09: Terrazzo is scheduled farther out / Jack Garrett on 2025-09-19 11:09: Terrazzo Flooring Install at Lobby and Stairs begins on 22-December and has 4 week lead time / Jack Garrett on 2025-09-19 11:09: All Terrazzo Materials have a 4 week lead time / allucent_notes_20251028_163138: Jack Garrett on 2025-09-09 13:09: Terrazzo is scheduled farther out / Jack Garrett on 2025-09-19 11:09: Terrazzo Flooring Install at Lobby and Stairs begins on 22-December and has 4 week lead time / Jack Garrett on 2025-09-19 11:09: All Terrazzo Materials have a 4 week lead time / allucent_notes_20251027_224008: Jack Garrett on 2025-09-09 13:09: Terrazzo is scheduled farther out / Jack Garrett on 2025-09-19 11:09: Terrazzo Flooring Install at Lobby and Stairs begins on 22-December and has 4 week lead time / Jack Garrett on 2025-09-19 11:09: All Terrazzo Materials have a 4 week lead time / allucent_notes_20251021_145627: Jack Garrett on 2025-09-09 13:09: Terrazzo is scheduled farther out / Jack Garrett on 2025-09-19 11:09: Terrazzo Flooring Install at Lobby and Stairs begins on 22-December and has 4 week lead time / Jack Garrett on 2025-09-19 11:09: All Terrazzo Materials have a 4 week lead time / allucent_notes_20251014_152335: Jack Garrett on 2025-09-09 13:09: Terrazzo is scheduled farther out / Jack Garrett on 2025-09-19 11:09: Terrazzo Flooring Install at Lobby and Stairs begins on 22-December and has 4 week lead time / Jack Garrett on 2025-09-19 11:09: All Terrazzo Materials have a 4 week lead time / allucent_notes_20251230_164549: Jack Garrett on 2025-09-09 13:09: Terrazzo is scheduled farther out / Jack Garrett on 2025-09-19 11:09: Terrazzo Flooring Install at Lobby and Stairs begins on 22-December and has 4 week lead time / Jack Garrett on 2025-09-19 11:09: All Terrazzo Materials have a 4 week lead time / Jack Garrett on 2025-12-02 12:01: Terrazzo Pushed Back. / allucent_notes: 2025-09-09 13:09 - User: Jack Garrett - Date Added: 2025-09-09 13:09 - Note: Terrazzo is scheduled farther out / 2025-09-19 11:09 - User: Jack Garrett - Date Added: 2025-09-19 11:09 - Note: Terrazzo Flooring Install at Lobby and Stairs begins on 22-Decem
- QTS-1007230: allucent_notes_20251216_165335: Jack Garrett on 2025-09-09 13:09: Terrazzo is scheduled farther out / Jack Garrett on 2025-09-19 11:09: Terrazzo Flooring Install at Lobby and Stairs begins on 22-December and has 4 week lead time / Jack Garrett on 2025-09-19 11:09: All Terrazzo Materials have a 4 week lead time / Jack Garrett on 2025-12-02 12:01: Terrazzo Pushed Back. / allucent_notes_20251209_203830: Jack Garrett on 2025-09-09 13:09: Terrazzo is scheduled farther out / Jack Garrett on 2025-09-19 11:09: Terrazzo Flooring Install at Lobby and Stairs begins on 22-December and has 4 week lead time / Jack Garrett on 2025-09-19 11:09: All Terrazzo Materials have a 4 week lead time / Jack Garrett on 2025-12-02 12:01: Terrazzo Pushed Back. / allucent_notes_20251202_153722: Jack Garrett on 2025-09-09 13:09: Terrazzo is scheduled farther out / Jack Garrett on 2025-09-19 11:09: Terrazzo Flooring Install at Lobby and Stairs begins on 22-December and has 4 week lead time / Jack Garrett on 2025-09-19 11:09: All Terrazzo Materials have a 4 week lead time / Jack Garrett on 2025-12-02 12:01: Terrazzo Pushed Back. / allucent_notes_20251118_192630: Jack Garrett on 2025-09-09 13:09: Terrazzo is scheduled farther out / Jack Garrett on 2025-09-19 11:09: Terrazzo Flooring Install at Lobby and Stairs begins on 22-December and has 4 week lead time / Jack Garrett on 2025-09-19 11:09: All Terrazzo Materials have a 4 week lead time / allucent_notes_20251111_182405: Jack Garrett on 2025-09-09 13:09: Terrazzo is scheduled farther out / Jack Garrett on 2025-09-19 11:09: Terrazzo Flooring Install at Lobby and Stairs begins on 22-December and has 4 week lead time / Jack Garrett on 2025-09-19 11:09: All Terrazzo Materials have a 4 week lead time / allucent_notes_20251104_160200: Jack Garrett on 2025-09-09 13:09: Terrazzo is scheduled farther out / Jack Garrett on 2025-09-19 11:09: Terrazzo Flooring Install at Lobby and Stairs begins on 22-December and has 4 week lead time / Jack Garrett on 2025-09-19 11:09: All Terrazzo Materials have a 4 week lead time / allucent_notes_20251028_163138: Jack Garrett on 2025-09-09 13:09: Terrazzo is scheduled farther out / Jack Garrett on 2025-09-19 11:09: Terrazzo Flooring Install at Lobby and Stairs begins on 22-December and has 4 week lead time / Jack Garrett on 2025-09-19 11:09: All Terrazzo Materials have a 4 week lead time / allucent_notes_20251027_224008: Jack Garrett on 2025-09-09 13:09: Terrazzo is scheduled farther out / Jack Garrett on 2025-09-19 11:09: Terrazzo Flooring Install at Lobby and Stairs begins on 22-December and has 4 week lead time / Jack Garrett on 2025-09-19 11:09: All Terrazzo Materials have a 4 week lead time / allucent_notes_20251021_145627: Jack Garrett on 2025-09-09 13:09: Terrazzo is scheduled farther out / Jack Garrett on 2025-09-19 11:09: Terrazzo Flooring Install at Lobby and Stairs begins on 22-December and has 4 week lead time / Jack Garrett on 2025-09-19 11:09: All Terrazzo Materials have a 4 week lead time / allucent_notes_20251014_152335: Jack Garrett on 2025-09-09 13:09: Terrazzo is scheduled farther out / Jack Garrett on 2025-09-19 11:09: Terrazzo Flooring Install at Lobby and Stairs begins on 22-December and has 4 week lead time / Jack Garrett on 2025-09-19 11:09: All Terrazzo Materials have a 4 week lead time / allucent_notes_20251230_164549: Jack Garrett on 2025-09-09 13:09: Terrazzo is scheduled farther out / Jack Garrett on 2025-09-19 11:09: Terrazzo Flooring Install at Lobby and Stairs begins on 22-December and has 4 week lead time / Jack Garrett on 2025-09-19 11:09: All Terrazzo Materials have a 4 week lead time / Jack Garrett on 2025-12-02 12:01: Terrazzo Pushed Back. / allucent_notes: 2025-09-09 13:09 - User: Jack Garrett - Date Added: 2025-09-09 13:09 - Note: Terrazzo is scheduled farther out / 2025-09-19 11:09 - User: Jack Garrett - Date Added: 2025-09-19 11:09 - Note: Terrazzo Flooring Install at Lobby and Stairs begins on 22-Decem
- QTS - 26071: Scheduler Notes: Delayed Fabrication of Carbon Steel
- QTS - 26381: Scheduler Notes: Fragnet to procure Zone 3 DH Lights - Type E
- QTS-25371: allucent_notes_20251028_163138: John Capriotti on 2025-09-02 10:09: Confirmed with QTS that all RTUs (FOH/BOH) as well as all DOAS units will not be available until 9/30. QTS estimated delivery date from the vendor is 9/30. / John Capriotti on 2025-09-30 11:09: Pushing until end of next week 10/10 until update is received from QTS/Vendor. / NOTE: / - Follow-up mail was sent by QTS/Ali Bodur to vendor on 9/25 asking for an update on ETA and estimated delivery date for site. Pending a response as of today 9/30. / - J.Capriotti/Layton sent follow-up email today 9/30 to both QTS/vendor to see if we can get a response/update. / John Capriotti on 2025-10-07 12:10: RTUs were delivered to the yard with DOAS units on 10/2/2025, Working on coordinating date to set. Pushing to get these set next week 10/16, so adjusting ROJ. / John Capriotti on 2025-10-21 13:10: Plan is to set these on 10/27, coordinated and scheduled with QTS QAE Yard and Belaire. / Jason Johnston on 2025-10-27 22:10: No update from John Capriotti / allucent_notes_20251027_224008: John Capriotti on 2025-09-02 10:09: Confirmed with QTS that all RTUs (FOH/BOH) as well as all DOAS units will not be available until 9/30. QTS estimated delivery date from the vendor is 9/30. / John Capriotti on 2025-09-30 11:09: Pushing until end of next week 10/10 until update is received from QTS/Vendor. / NOTE: / - Follow-up mail was sent by QTS/Ali Bodur to vendor on 9/25 asking for an update on ETA and estimated delivery date for site. Pending a response as of today 9/30. / - J.Capriotti/Layton sent follow-up email today 9/30 to both QTS/vendor to see if we can get a response/update. / John Capriotti on 2025-10-07 12:10: RTUs were delivered to the yard with DOAS units on 10/2/2025, Working on coordinating date to set. Pushing to get these set next week 10/16, so adjusting ROJ. / John Capriotti on 2025-10-21 13:10: Plan is to set these on 10/27, coordinated and scheduled with QTS QAE Yard and Belaire. / Jason Johnston on 2025-10-27 22:10: No update from John Capriotti / allucent_notes_20251021_145627: John Capriotti on 2025-09-02 10:09: Confirmed with QTS that all RTUs (FOH/BOH) as well as all DOAS units will not be available until 9/30. QTS estimated delivery date from the vendor is 9/30. / John Capriotti on 2025-09-30 11:09: Pushing until end of next week 10/10 until update is received from QTS/Vendor. / NOTE: / - Follow-up mail was sent by QTS/Ali Bodur to vendor on 9/25 asking for an update on ETA and estimated delivery date for site. Pending a response as of today 9/30. / - J.Capriotti/Layton sent follow-up email today 9/30 to both QTS/vendor to see if we can get a response/update. / John Capriotti on 2025-10-07 12:10: RTUs were delivered to the yard with DOAS units on 10/2/2025, Working on coordinating date to set. Pushing to get these set next week 10/16, so adjusting ROJ. / John Capriotti on 2025-10-21 13:10: Plan is to set these on 10/27, coordinated and scheduled with QTS QAE Yard and Belaire. / allucent_notes_20251014_152335: John Capriotti on 2025-09-02 10:09: Confirmed with QTS that all RTUs (FOH/BOH) as well as all DOAS units will not be available until 9/30. QTS estimated delivery date from the vendor is 9/30. / John Capriotti on 2025-09-30 11:09: Pushing until end of next week 10/10 until update is received from QTS/Vendor. / NOTE: / - Follow-up mail was sent by QTS/Ali Bodur to vendor on 9/25 asking for an update on ETA and estimated delivery date for site. Pending a response as of today 9/30. / - J.Capriotti/Layton sent follow-up email today 9/30 to both QTS/vendor to see if we can get a response/update. / John Capriotti on 2025-10-07 12:10: RTUs were delivered to the yard with DOAS units on 10/2/2025, Working on coordinating date to set. Pushing to get these set next week 10/16, so adjusting ROJ. / allucent_notes: John Capriotti on 2025-09-02 10:09: Confirmed with QTS that all RTUs (FOH/BOH) as well as all DOAS units will not be available until 9/30. QTS estimated delivery date from the vendor is 9/30. / Scheduler's Notes: 07/31/2025 / Per Ali via John Capriotti RTU delivery has been delayed until / September / allucent_notes: 2025-09-02 10:09 - User: John Capriotti - Date Added: 2025-09-02 10:09 - Note: Confirmed with QTS that all RTUs (FOH/BOH) as well as all DOAS units will not be available until 9/30. QTS estimated delivery date from the vendor is 9/30. / 2025-09-30 11:09
- QTS-36091: allucent_notes_20251027_224008: John Capriotti on 2025-09-02 10:09: Confirmed with QTS that all RTUs (FOH/BOH) as well as all DOAS units will not be available until 9/30. QTS estimated delivery date from the vendor is 9/30. / John Capriotti on 2025-09-30 11:09: Pushing until end of next week 10/10 until update is received from QTS/Vendor. / NOTE: / - Follow-up mail was sent by QTS/Ali Bodur to vendor on 9/25 asking for an update on ETA and estimated delivery date for site. Pending a response as of today 9/30. / - J.Capriotti/Layton sent follow-up email today 9/30 to both QTS/vendor to see if we can get a response/update. / John Capriotti on 2025-10-07 12:10: RTUs were delivered to the yard with DOAS units on 10/2/2025, Working on coordinating date to set. Pushing to get these set next week 10/16, so adjusting ROJ. / John Capriotti on 2025-10-21 13:10: Plan is to set these on 10/27, coordinated and scheduled with QTS QAE Yard and Belaire. / allucent_notes_20251021_145627: John Capriotti on 2025-09-02 10:09: Confirmed with QTS that all RTUs (FOH/BOH) as well as all DOAS units will not be available until 9/30. QTS estimated delivery date from the vendor is 9/30. / John Capriotti on 2025-09-30 11:09: Pushing until end of next week 10/10 until update is received from QTS/Vendor. / NOTE: / - Follow-up mail was sent by QTS/Ali Bodur to vendor on 9/25 asking for an update on ETA and estimated delivery date for site. Pending a response as of today 9/30. / - J.Capriotti/Layton sent follow-up email today 9/30 to both QTS/vendor to see if we can get a response/update. / John Capriotti on 2025-10-07 12:10: RTUs were delivered to the yard with DOAS units on 10/2/2025, Working on coordinating date to set. Pushing to get these set next week 10/16, so adjusting ROJ. / John Capriotti on 2025-10-21 13:10: Plan is to set these on 10/27, coordinated and scheduled with QTS QAE Yard and Belaire. / allucent_notes_20251014_152335: John Capriotti on 2025-09-02 10:09: Confirmed with QTS that all RTUs (FOH/BOH) as well as all DOAS units will not be available until 9/30. QTS estimated delivery date from the vendor is 9/30. / John Capriotti on 2025-09-30 11:09: Pushing until end of next week 10/10 until update is received from QTS/Vendor. / NOTE: / - Follow-up mail was sent by QTS/Ali Bodur to vendor on 9/25 asking for an update on ETA and estimated delivery date for site. Pending a response as of today 9/30. / - J.Capriotti/Layton sent follow-up email today 9/30 to both QTS/vendor to see if we can get a response/update. / John Capriotti on 2025-10-07 12:10: RTUs were delivered to the yard with DOAS units on 10/2/2025, Working on coordinating date to set. Pushing to get these set next week 10/16, so adjusting ROJ. / allucent_notes: John Capriotti on 2025-09-02 10:09: Confirmed with QTS that all RTUs (FOH/BOH) as well as all DOAS units will not be available until 9/30. QTS estimated delivery date from the vendor is 9/30. / Scheduler's Notes: 07/31/2025 / Per Ali via John Capriotti RTU delivery has been delayed until / September / allucent_notes: 2025-09-02 10:09 - User: John Capriotti - Date Added: 2025-09-02 10:09 - Note: Confirmed with QTS that all RTUs (FOH/BOH) as well as all DOAS units will not be available until 9/30. QTS estimated delivery date from the vendor is 9/30. / 2025-09-30 11:09
- QTS-23461: allucent_notes_20251216_165335: John Capriotti on 2025-10-07 12:10: RTU delivered to QAE yard on 10/2, working on confirming when we can get this set. Pushing the ROJ out until next week until I can confirm status on curbs and roof to schedule set and when we will pull this RTU from the QAE yard. / John Capriotti on 2025-10-21 14:10: Need confirmation on when we can mobilize crane and curb readiness for BOH RTU. Setting FOH on 10/27, will update once confirmed date for set with MC. / John Capriotti on 2025-11-04 15:11: Need to determine when we are setting this, it is sitting in the QAE Yard / Zack Goertz on 2025-11-11T18:18:19.990Z: This has been postponed via dave. Dave was resequencing the RTU sets so they all get set at once. Curb wrap has been done for about 2 weeks now / Jason Johnston on 2025-11-11 17:11: John owes me 11/11 update / Zack Goertz on 2025-11-17 13:11: Dave W scope. Resequenced BAM to set all RTU's at once. I had Progressive wrap the RTU curb in the mean time / Jason Johnston on 2025-12-02 11:35: Waiting for TPO Roofs / Jason Johnston on 2025-12-16 15:02: Not available yet / allucent_notes_20251209_203830: John Capriotti on 2025-10-07 12:10: RTU delivered to QAE yard on 10/2, working on confirming when we can get this set. Pushing the ROJ out until next week until I can confirm status on curbs and roof to schedule set and when we will pull this RTU from the QAE yard. / John Capriotti on 2025-10-21 14:10: Need confirmation on when we can mobilize crane and curb readiness for BOH RTU. Setting FOH on 10/27, will update once confirmed date for set with MC. / John Capriotti on 2025-11-04 15:11: Need to determine when we are setting this, it is sitting in the QAE Yard / Zack Goertz on 2025-11-11T18:18:19.990Z: This has been postponed via dave. Dave was resequencing the RTU sets so they all get set at once. Curb wrap has been done for about 2 weeks now / Jason Johnston on 2025-11-11 17:11: John owes me 11/11 update / Zack Goertz on 2025-11-17 13:11: Dave W scope. Resequenced BAM to set all RTU's at once. I had Progressive wrap the RTU curb in the mean time / Jason Johnston on 2025-12-02 11:35: Waiting for TPO Roofs / allucent_notes_20251202_153722: John Capriotti on 2025-10-07 12:10: RTU delivered to QAE yard on 10/2, working on confirming when we can get this set. Pushing the ROJ out until next week until I can confirm status on curbs and roof to schedule set and when we will pull this RTU from the QAE yard. / John Capriotti on 2025-10-21 14:10: Need confirmation on when we can mobilize crane and curb readiness for BOH RTU. Setting FOH on 10/27, will update once confirmed date for set with MC. / John Capriotti on 2025-11-04 15:11: Need to determine when we are setting this, it is sitting in the QAE Yard / Zack Goertz on 2025-11-11T18:18:19.990Z: This has been postponed via dave. Dave was resequencing the RTU sets so they all get set at once. Curb wrap has been done for about 2 weeks now / Jason Johnston on 2025-11-11 17:11: John owes me 11/11 update / Zack Goertz on 2025-11-17 13:11: Dave W scope. Resequenced BAM to set all RTU's at once. I had Progressive wrap the RTU curb in the mean time / Jason Johnston on 2025-12-02 11:35: Waiting for TPO Roofs / allucent_notes_20251118_192630: John Capriotti on 2025-10-07 12:10: RTU delivered to QAE yard on 10/2, working on confirming when we can get this set. Pushing the ROJ out until next week until I can confirm status on curbs and roof to schedule set and when we will pull this RTU from the QAE yard. / John Capriotti on 2025-10-21 14:10: Need confirmation on when we can mobilize crane and curb readiness for BOH RTU. Setting FOH on 10/27, will update once confirmed date for set with MC. / John Capriotti on 2025-11-04 15:11: Need to determine when we are setting this, it is sitting in the QAE Yard / Zack Goertz on 2025-11-11T18:18:19.990Z: This has been postponed via dave. Dave was resequencing the RTU sets so they all get set at once. Curb wrap has been done for about 2 weeks now / Jason Johnston on 2025-11-11 17:11: John owes me 11/11 update / Zack Goertz on 2025-11-17 13:11: Dave W scope. Resequenced BAM to set all RTU's at once. I had Progressive wrap the RTU curb in the mean time / allucent_notes_20251111_182405: John Capriotti on 2025-10-07 12:10: RTU delivered to QAE yard on 10/2, working on confirming when we can get this set. Pushing the ROJ out until next week until I can confirm status on curbs and roof to schedule set and when we will pull this RTU from the QAE yard. / John Capriotti on 2025-10-21 14:10: Need confirmation on when we can mobilize crane and curb readiness for BOH RTU. Setting FOH on 10/27, will update once confirmed date for set with MC. / John Capriotti on 2025-11-04 15:11: Need to determine when we are setting this, it is sitting in the QAE Yard / Zack Goertz on 2025-11-11T18:18:19.990Z: This has been postponed via dave. Dave was resequencing the RTU sets so they all get set at once. Curb wrap has been done for about 2 weeks now / Jason Johnston on 2025-11-11 17:11: John owes me 11/11 update / allucent_notes_20251104_160200: John Capriotti on 2025-10-07 12:10: RTU delivered to QAE yard on 10/2, working on confirming when we can get this set. Pushing the ROJ out until next week until I can confirm status on curbs and roof to schedule set and when we will pull this RTU from the QAE yard. / John Capriotti on 2025-10-21 14:10: Need confirmation on when we can mobilize crane and curb readiness for BOH RTU. Setting FOH on 10/27, will update once confirmed date for set with MC. / John Capriotti on 2025-11-04 15:11: Need to determine when we are setting this, it is sitting in the QAE Yard / allucent_notes_20251028_163138: John Capriotti on 2025-10-07 12:10: RTU delivered to QAE yard on 10/2, working on confirming when we can get this set. Pushing the ROJ out until next week until I can confirm status on curbs and roof to schedule set and when we will pull this RTU from the QAE yard. / John Capriotti on 2025-10-21 14:10: Need confirmation on when we can mobilize crane and curb readiness for BOH RTU. Setting FOH on 10/27, will update once confirmed date for set with MC. / allucent_notes_20251027_224008: John Capriotti on 2025-10-07 12:10: RTU delivered to QAE yard on 10/2, working on confirming when we can get this set. Pushing the ROJ out until next week until I can confirm status on curbs and roof to schedule set and when we will pull this RTU from the QAE yard. / John Capriotti on 2025-10-21 14:10: Need confirmation on when we can mobilize crane and curb readiness for BOH RTU. Setting FOH on 10/27, will update once confirmed date for set with MC. / allucent_notes_20251021_145627: John Capriotti on 2025-10-07 12:10: RTU delivered to QAE yard on 10/2, working on confirming when we can get this set. Pushing the ROJ out until next week until I can confirm status on curbs and roof to schedule set and when we will pull this RTU from the QAE yard. / John Capriotti on 2025-10-21 14:10: Need confirmation on when we can mobilize crane and curb readiness for BOH RTU. Setting FOH on 10/27, will update once confirmed date for set with MC. / allucent_notes_20251014_152335: John Capriotti on 2025-10-07 12:10: RTU delivered to QAE yard on 10/2, working on confirming when we can get this set. Pushing the ROJ out until next week until I can confirm status on curbs and roof to schedule set and when we will pull this RTU from the QAE yard. / allucent_notes_20251230_164549: John Capriotti on 2025-10-07 12:10: RTU delivered to QAE yard on 10/2, working on confirming when we can get this set. Pushing the ROJ out until next week until I can confirm status on curbs and roof to schedule set and when we will pull this RTU from the QAE yard. / John Capriotti on 2025-10-21 14:10: Need confirmation on when we can mobilize crane and curb readiness for BOH RTU. Setting FOH on 10/27, will update once confirmed date for set with MC. / John Capriotti on 2025-11-04 15:11: Need to determine when we are setting this, it is sitting in the QAE Yard / Zack Goertz on 2025-11-11T18:18:19.990Z: This has been postponed via dave. Dave was resequencing the RTU sets so they all get set at once. Curb wrap has been done for about 2 weeks now / Jason Johnston on 2025-11-11 17:11: John owes me 11/11 update / Zack Goertz on 2025-11-17 13:11: Dave W scope. Resequenced BAM to set all RTU's at once. I had Progressive wrap the RTU curb in the mean time / Jason Johnston on 2025-12-02 11:35: Waiting for TPO Roofs / Jason Johnston on 2025-12-16 15:02: Not available yet / John Capriotti on 2025-12-30T15:15:24.235Z: Actualizing ROJ: RTU delivered to QAE yard on 10/2 - technically have it just not delivered to the site from QAE yard until I can confirm set date / allucent_notes: 2025-10-07 12:10 - User: John Capriotti - Date Added: 2025-10-07 12:10 - Note: RTU delivered to QAE yard on 10/2, working on confirming when we can get this set. Pushing the ROJ out until next week until I can confirm status on curbs and roof to schedule

| ID | WBS | Activity | Duration | Start | Finish | Predecessors | Complete | Planned start | Planned finish | Allucent CSI Group | Project Section | Layton Discipline | Baseline | Project Section-1 | Precon Phase | Contract | Fragnet | Owner Impact Analysis | Fragnet Responsible Party |
| --- | --- | --- | --- | --- | --- | --- | --- | --- | --- | --- | --- | --- | --- | --- | --- | --- | --- | --- | --- |
|  | 6 | **FOH/ BOH Electrical** |  | 2025-08-28 | 2026-05-18 |  |  |  |  |  |  |  |  |  |  |  |  |  |  |
| QTS-27181 |  | FOH / 100kVA House UPS #01 | 20d | 2025-08-28 A | 2025-11-07 A | QTS-1371 | 100% | 2025-08-28 | 2025-09-25 | 01ADMIN | Preconstruction | Precon | GMP | Preconstruction | OFCI Procurement | BAB |  |  |  |
| QTS-36131 |  | BOH / 2500kW House Generator 02 | 20d | 2025-09-03 A | 2025-11-24 A | QTS-1371 | 100% | 2025-09-03 | 2025-09-30 | 01ADMIN | Preconstruction | Precon | GMP | Preconstruction | OFCI Procurement | BAB |  |  |  |
| QTS-36121 |  | FOH / 2500kVA House Transformer 01 | 20d | 2025-09-04 A | 2025-10-20 A | QTS-1371 | 100% | 2025-09-04 | 2025-10-01 | 01ADMIN | Preconstruction | Precon | GMP | Preconstruction | OFCI Procurement | BAB |  |  |  |
| QTS-39701 |  | FOH / FOH Yard // Assembly - Tank #Gen-FOH | 20d | 2025-09-09 A | 2025-11-10 A | QTS-1371 | 100% | 2025-09-09 | 2025-10-06 | 01ADMIN | Preconstruction | Precon |  | Preconstruction | OFCI Procurement | BAB |  |  |  |
| QTS-39711 |  | FOH / FOH Yard // Assembly - Engine #Gen-FOH | 20d | 2025-09-09 A | 2025-11-10 A | QTS-1371 | 100% | 2025-09-09 | 2025-10-06 | 01ADMIN | Preconstruction | Precon |  | Preconstruction | OFCI Procurement | BAB |  |  |  |
| QTS-39721 |  | FOH / FOH Yard // Assembly - SER #Gen-FOH | 20d | 2025-09-09 A | 2025-11-10 A | QTS-1371 | 100% | 2025-09-09 | 2025-10-06 | 01ADMIN | Preconstruction | Precon |  | Preconstruction | OFCI Procurement | BAB |  |  |  |
| QTS-39731 |  | FOH / FOH Yard // Assembly - Housing #Gen-FOH | 20d | 2025-09-09 A | 2025-11-10 A | QTS-1371 | 100% | 2025-09-09 | 2025-10-06 | 01ADMIN | Preconstruction | Precon |  | Preconstruction | OFCI Procurement | BAB |  |  |  |
| QTS-27171 |  | FOH / 600A Prim/ House STS #02 | 20d | 2025-10-01 A | 2025-10-28 A | QTS-1371 | 100% |  |  | 01ADMIN | Preconstruction | Precon | GMP | Preconstruction | OFCI Procurement | BAB |  |  |  |
| QTS-27191 |  | FOH / 100kVA House UPS #02 | 20d | 2025-10-01 A | 2025-11-07 A | QTS-1371 | 100% | 2025-10-01 | 2025-10-28 | 01ADMIN | Preconstruction | Precon | GMP | Preconstruction | OFCI Procurement | BAB |  |  |  |
| QTS-36141 |  | BOH / 2500kVA House Transformer 02 | 20d | 2025-10-01 A | 2025-11-04 A | QTS-1371 | 100% | 2025-10-01 | 2025-10-28 | 01ADMIN | Preconstruction | Precon | GMP | Preconstruction | OFCI Procurement | BAB |  |  |  |
| QTS-27161 |  | FOH / 600A Prim/ House STS #01 | 20d | 2025-10-15 A | 2025-11-05 A | QTS-1371 | 100% | 2025-10-15 | 2025-11-11 | 01ADMIN | Preconstruction | Precon | GMP | Preconstruction | OFCI Procurement | BAB |  |  |  |
| QTS-27201 |  | FOH / 3000A House Switchboard 01 | 20d | 2025-10-15 A | 2025-11-11 A | QTS-1371 | 100% |  |  | 01ADMIN | Preconstruction | Precon | GMP | Preconstruction | OFCI Procurement | BAB |  |  |  |
| QTS-39741 |  | BOH / BOH Yard // Assembly - Tank #Gen-BOH | 20d | 2025-10-27 A | 2025-11-24 A | QTS-36131 SS | 100% | 2025-10-27 | 2025-11-21 | 01ADMIN | Preconstruction | Precon |  | Preconstruction | OFCI Procurement | BAB |  |  |  |
| QTS-39751 |  | BOH / BOH Yard // Assembly - Engine #Gen-BOH | 20d | 2025-10-27 A | 2025-11-24 A | QTS-36131 SS | 100% | 2025-10-27 | 2025-11-21 | 01ADMIN | Preconstruction | Precon |  | Preconstruction | OFCI Procurement | BAB |  |  |  |
| QTS-39761 |  | BOH / BOH Yard // Assembly - SER #Gen-BOH | 20d | 2025-10-27 A | 2025-11-24 A | QTS-36131 SS | 100% | 2025-10-27 | 2025-11-21 | 01ADMIN | Preconstruction | Precon |  | Preconstruction | OFCI Procurement | BAB |  |  |  |
| QTS-39771 |  | BOH / BOH Yard // Assembly - Housing #Gen-BOH | 20d | 2025-10-27 A | 2025-11-24 A | QTS-36131 SS | 100% | 2025-10-27 | 2025-11-21 | 01ADMIN | Preconstruction | Precon |  | Preconstruction | OFCI Procurement | BAB |  |  |  |
| QTS-27821 |  | BOH / 600A Prim/ House STS #03 | 20d | 2025-12-03 A | 2025-12-22 A | QTS-1371 | 100% | 2025-12-03 | 2026-01-06 | 01ADMIN | Preconstruction | Precon | GMP | Preconstruction | OFCI Procurement | BAB |  |  |  |
| QTS-27831 |  | BOH / 100kVA House UPS #03 | 20d | 2025-12-03 A | 2025-12-22 A | QTS-1371 | 100% | 2025-12-03 | 2026-01-06 | 01ADMIN | Preconstruction | Precon | GMP | Preconstruction | OFCI Procurement | BAB |  |  |  |
| QTS-28471 |  | BOH / 600A Prim/ House STS #04 | 20d | 2025-12-03 A | 2026-01-09 A | QTS-1371 | 100% | 2025-12-03 | 2026-01-06 | 01ADMIN | Preconstruction | Precon | GMP | Preconstruction | OFCI Procurement | BAB |  |  |  |
| QTS-28481 |  | BOH / 100kVA House UPS #04 | 20d | 2025-12-03 A | 2025-12-22 A | QTS-1371 | 100% | 2025-12-03 | 2026-01-06 | 01ADMIN | Preconstruction | Precon | GMP | Preconstruction | OFCI Procurement | BAB |  |  |  |
| QTS-36151 |  | BOH / 3000A House Switchboard 02 | 20d | 2025-12-03 A | 2025-12-22 A | QTS-1371 | 100% | 2025-12-03 | 2026-01-06 | 01ADMIN | Preconstruction | Precon | GMP | Preconstruction | OFCI Procurement | BAB |  |  |  |
|  | 1 | **Fragnet - Shipping Delay for Generator Ship Loose** |  | 2026-04-08 | 2026-05-15 |  |  |  |  |  |  |  |  |  |  |  |  |  |  |
| QTS-1009980 |  | Fragnet / FOH / FOH Yard // Ship Loose #Gen-FOH Delivery Delay | 37d | 2026-04-08 A | 2026-05-15 A | QTS-1371 SS | 100% | 2026-04-08 | 2026-05-29 | 01ADMIN | Preconstruction | Precon |  | Preconstruction | OFCI Procurement | BAB | Fragnet | Y | Rosendin Electric Inc. |
| QTS-1010380 |  | Fragnet / BOH / 2500kW House Generator 02 - SCR/ Ship Loose Delivery Delay | 24d | 2026-04-14 A | 2026-05-15 A | QTS-1371 | 100% |  |  | 01ADMIN | Preconstruction | Precon | GMP | Preconstruction | OFCI Procurement | BAB | Fragnet | Y | Quality Technology Services |

Notes:
- QTS-27181: allucent_notes_20251118_192630: John Capriotti on 2025-11-04 14:11: Delivering to REI warehouse on 11/7 / Jason Johnston on 2025-11-11 17:11: John owes me 11/11 update / allucent_notes_20251111_182405: John Capriotti on 2025-11-04 14:11: Delivering to REI warehouse on 11/7 / Jason Johnston on 2025-11-11 17:11: John owes me 11/11 update / allucent_notes_20251104_160200: John Capriotti on 2025-11-04 14:11: Delivering to REI warehouse on 11/7 / allucent_notes: 2025-11-04 14:11 - User: John Capriotti - Date Added: 2025-11-04 14:11 - Note: Delivering to REI warehouse on 11/7 / 2025-11-11 17:11 - User: Jason Johnston - Date Added: 2025-11-11 17:11 - Note: John owes me 11/11 update
- QTS-36131: allucent_notes_20251202_153722: John Capriotti on 2025-09-30 11:09: Pushing ROJ date/date to received for BOH Gen to 10/17, pending status and updates to confirm set dates. Currently BOH Gen pad not set to be complete until roughly 10/15 per latest update from field. / John Capriotti on 2025-10-07 13:10: Editing Note: BOH GEN and XFMR pad to be fully poured and complete 10/15, working on scheduling set, possibly following week. Working on confirming if we will set these ahead of time or set when all zone 3 GENs will be set to avoid remobilizing crane. / John Capriotti on 2025-10-21 13:10: Pending confirmation on pad readiness before setting. / John Capriotti on 2025-10-27 18:10: Currently setting PODS, will follow with gens starting 11/10. / John Capriotti on 2025-11-11 12:11: Plan is to receive 11/24 and set the GEN. SCR will be set seperately, need to confirm the specific date. / allucent_notes_20251118_192630: John Capriotti on 2025-09-30 11:09: Pushing ROJ date/date to received for BOH Gen to 10/17, pending status and updates to confirm set dates. Currently BOH Gen pad not set to be complete until roughly 10/15 per latest update from field. / John Capriotti on 2025-10-07 13:10: Editing Note: BOH GEN and XFMR pad to be fully poured and complete 10/15, working on scheduling set, possibly following week. Working on confirming if we will set these ahead of time or set when all zone 3 GENs will be set to avoid remobilizing crane. / John Capriotti on 2025-10-21 13:10: Pending confirmation on pad readiness before setting. / John Capriotti on 2025-10-27 18:10: Currently setting PODS, will follow with gens starting 11/10. / John Capriotti on 2025-11-11 12:11: Plan is to receive 11/24 and set the GEN. SCR will be set seperately, need to confirm the specific date. / allucent_notes_20251111_182405: John Capriotti on 2025-09-30 11:09: Pushing ROJ date/date to received for BOH Gen to 10/17, pending status and updates to confirm set dates. Currently BOH Gen pad not set to be complete until roughly 10/15 per latest update from field. / John Capriotti on 2025-10-07 13:10: Editing Note: BOH GEN and XFMR pad to be fully poured and complete 10/15, working on scheduling set, possibly following week. Working on confirming if we will set these ahead of time or set when all zone 3 GENs will be set to avoid remobilizing crane. / John Capriotti on 2025-10-21 13:10: Pending confirmation on pad readiness before setting. / John Capriotti on 2025-10-27 18:10: Currently setting PODS, will follow with gens starting 11/10. / John Capriotti on 2025-11-11 12:11: Plan is to receive 11/24 and set the GEN. SCR will be set seperately, need to confirm the specific date. / allucent_notes_20251104_160200: John Capriotti on 2025-09-30 11:09: Pushing ROJ date/date to received for BOH Gen to 10/17, pending status and updates to confirm set dates. Currently BOH Gen pad not set to be complete until roughly 10/15 per latest update from field. / John Capriotti on 2025-10-07 13:10: Editing Note: BOH GEN and XFMR pad to be fully poured and complete 10/15, working on scheduling set, possibly following week. Working on confirming if we will set these ahead of time or set when all zone 3 GENs will be set to avoid remobilizing crane. / John Capriotti on 2025-10-21 13:10: Pending confirmation on pad readiness before setting. / John Capriotti on 2025-10-27 18:10: Currently setting PODS, will follow with gens starting 11/10. / allucent_notes_20251028_163138: John Capriotti on 2025-09-30 11:09: Pushing ROJ date/date to received for BOH Gen to 10/17, pending status and updates to confirm set dates. Currently BOH Gen pad not set to be complete until roughly 10/15 per latest update from field. / John Capriotti on 2025-10-07 13:10: Editing Note: BOH GEN and XFMR pad to be fully poured and complete 10/15, working on scheduling set, possibly following week. Working on confirming if we will set these ahead of time or set when all zone 3 GENs will be set to avoid remobilizing crane. / John Capriotti on 2025-10-21 13:10: Pending confirmation on pad readiness before setting. / John Capriotti on 2025-10-27 18:10: Currently setting PODS, will follow with gens starting 11/10. / allucent_notes_20251027_224008: John Capriotti on 2025-09-30 11:09: Pushing ROJ date/date to received for BOH Gen to 10/17, pending status and updates to confirm set dates. Currently BOH Gen pad not set to be complete until roughly 10/15 per latest update from field. / John Capriotti on 2025-10-07 13:10: Editing Note: BOH GEN and XFMR pad to be fully poured and complete 10/15, working on scheduling set, possibly following week. Working on confirming if we will set these ahead of time or set when all zone 3 GENs will be set to avoid remobilizing crane. / John Capriotti on 2025-10-21 13:10: Pending confirmation on pad readiness before setting. / John Capriotti on 2025-10-27 18:10: Currently setting PODS, will follow with gens starting 11/10. / allucent_notes_20251021_145627: John Capriotti on 2025-09-30 11:09: Pushing ROJ date/date to received for BOH Gen to 10/17, pending status and updates to confirm set dates. Currently BOH Gen pad not set to be complete until roughly 10/15 per latest update from field. / John Capriotti on 2025-10-07 13:10: Editing Note: BOH GEN and XFMR pad to be fully poured and complete 10/15, working on scheduling set, possibly following week. Working on confirming if we will set these ahead of time or set when all zone 3 GENs will be set to avoid remobilizing crane. / John Capriotti on 2025-10-21 13:10: Pending confirmation on pad readiness before setting. / allucent_notes_20251014_152335: John Capriotti on 2025-09-30 11:09: Pushing ROJ date/date to received for BOH Gen to 10/17, pending status and updates to confirm set dates. Currently BOH Gen pad not set to be complete until roughly 10/15 per latest update from field. / John Capriotti on 2025-10-07 13:10: Editing Note: BOH GEN and XFMR pad to be fully poured and complete 10/15, working on scheduling set, possibly following week. Working on confirming if we will set these ahead of time or set when all zone 3 GENs will be set to avoid remobilizing crane. / allucent_notes: 2025-09-30 11:09 - User: John Capriotti - Date Added: 2025-09-30 11:09 - Note: Pushing ROJ date/date to received for BOH Gen to 10/17, pending status and updates to confirm set dates. Currently BOH Gen pad not set to be complete until roughly 10/15 per la
- QTS-36121: allucent_notes_20251021_145627: John Capriotti on 2025-10-07 13:10: FOH GEN Pad and XFMR pad to be fully poured and cured, 10/10, planning to have XFMR delivered to site on 10/16 to set. / John Capriotti on 2025-10-21 13:10: Received and set in place on 10/20. / allucent_notes_20251014_152335: John Capriotti on 2025-10-07 13:10: FOH GEN Pad and XFMR pad to be fully poured and cured, 10/10, planning to have XFMR delivered to site on 10/16 to set. / allucent_notes: 2025-10-07 13:10 - User: John Capriotti - Date Added: 2025-10-07 13:10 - Note: FOH GEN Pad and XFMR pad to be fully poured and cured, 10/10, planning to have XFMR delivered to site on 10/16 to set. / 2025-10-21 13:10 - User: John Capriotti - Date Added:
- QTS-39701: allucent_notes_20251118_192630: John Capriotti on 2025-10-07 13:10: FOH GEN and XFMR pad to be fully poured and cured 10/10, working on planning delivery and set now. Will update with correct date after pads confirmed complete. / John Capriotti on 2025-10-21 14:10: Pending confirmation on pad readiness before setting. / John Capriotti on 2025-10-27 18:10: Currently setting PODS, will follow with gens starting 11/10. / allucent_notes_20251111_182405: John Capriotti on 2025-10-07 13:10: FOH GEN and XFMR pad to be fully poured and cured 10/10, working on planning delivery and set now. Will update with correct date after pads confirmed complete. / John Capriotti on 2025-10-21 14:10: Pending confirmation on pad readiness before setting. / John Capriotti on 2025-10-27 18:10: Currently setting PODS, will follow with gens starting 11/10. / allucent_notes_20251104_160200: John Capriotti on 2025-10-07 13:10: FOH GEN and XFMR pad to be fully poured and cured 10/10, working on planning delivery and set now. Will update with correct date after pads confirmed complete. / John Capriotti on 2025-10-21 14:10: Pending confirmation on pad readiness before setting. / John Capriotti on 2025-10-27 18:10: Currently setting PODS, will follow with gens starting 11/10. / allucent_notes_20251028_163138: John Capriotti on 2025-10-07 13:10: FOH GEN and XFMR pad to be fully poured and cured 10/10, working on planning delivery and set now. Will update with correct date after pads confirmed complete. / John Capriotti on 2025-10-21 14:10: Pending confirmation on pad readiness before setting. / John Capriotti on 2025-10-27 18:10: Currently setting PODS, will follow with gens starting 11/10. / allucent_notes_20251027_224008: John Capriotti on 2025-10-07 13:10: FOH GEN and XFMR pad to be fully poured and cured 10/10, working on planning delivery and set now. Will update with correct date after pads confirmed complete. / John Capriotti on 2025-10-21 14:10: Pending confirmation on pad readiness before setting. / John Capriotti on 2025-10-27 18:10: Currently setting PODS, will follow with gens starting 11/10. / allucent_notes_20251021_145627: John Capriotti on 2025-10-07 13:10: FOH GEN and XFMR pad to be fully poured and cured 10/10, working on planning delivery and set now. Will update with correct date after pads confirmed complete. / John Capriotti on 2025-10-21 14:10: Pending confirmation on pad readiness before setting. / allucent_notes_20251014_152335: John Capriotti on 2025-10-07 13:10: FOH GEN and XFMR pad to be fully poured and cured 10/10, working on planning delivery and set now. Will update with correct date after pads confirmed complete. / allucent_notes: 2025-10-07 13:10 - User: John Capriotti - Date Added: 2025-10-07 13:10 - Note: FOH GEN and XFMR pad to be fully poured and cured 10/10, working on planning delivery and set now. Will update with correct date after pads confirmed complete. / 2025-10-21 14
- QTS-39711: allucent_notes_20251118_192630: John Capriotti on 2025-10-07 13:10: FOH GEN Pad and XFMR pad to be fully poured and cured, 10/10, confirming set dates and delivery dates, will update once confirmed. / John Capriotti on 2025-10-21 14:10: Pending confirmation on pad readiness before setting. / John Capriotti on 2025-10-27 18:10: Currently setting PODS, will follow with gens starting 11/10. / allucent_notes_20251111_182405: John Capriotti on 2025-10-07 13:10: FOH GEN Pad and XFMR pad to be fully poured and cured, 10/10, confirming set dates and delivery dates, will update once confirmed. / John Capriotti on 2025-10-21 14:10: Pending confirmation on pad readiness before setting. / John Capriotti on 2025-10-27 18:10: Currently setting PODS, will follow with gens starting 11/10. / allucent_notes_20251104_160200: John Capriotti on 2025-10-07 13:10: FOH GEN Pad and XFMR pad to be fully poured and cured, 10/10, confirming set dates and delivery dates, will update once confirmed. / John Capriotti on 2025-10-21 14:10: Pending confirmation on pad readiness before setting. / John Capriotti on 2025-10-27 18:10: Currently setting PODS, will follow with gens starting 11/10. / allucent_notes_20251028_163138: John Capriotti on 2025-10-07 13:10: FOH GEN Pad and XFMR pad to be fully poured and cured, 10/10, confirming set dates and delivery dates, will update once confirmed. / John Capriotti on 2025-10-21 14:10: Pending confirmation on pad readiness before setting. / John Capriotti on 2025-10-27 18:10: Currently setting PODS, will follow with gens starting 11/10. / allucent_notes_20251027_224008: John Capriotti on 2025-10-07 13:10: FOH GEN Pad and XFMR pad to be fully poured and cured, 10/10, confirming set dates and delivery dates, will update once confirmed. / John Capriotti on 2025-10-21 14:10: Pending confirmation on pad readiness before setting. / John Capriotti on 2025-10-27 18:10: Currently setting PODS, will follow with gens starting 11/10. / allucent_notes_20251021_145627: John Capriotti on 2025-10-07 13:10: FOH GEN Pad and XFMR pad to be fully poured and cured, 10/10, confirming set dates and delivery dates, will update once confirmed. / John Capriotti on 2025-10-21 14:10: Pending confirmation on pad readiness before setting. / allucent_notes_20251014_152335: John Capriotti on 2025-10-07 13:10: FOH GEN Pad and XFMR pad to be fully poured and cured, 10/10, confirming set dates and delivery dates, will update once confirmed. / allucent_notes: 2025-10-07 13:10 - User: John Capriotti - Date Added: 2025-10-07 13:10 - Note: FOH GEN Pad and XFMR pad to be fully poured and cured, 10/10, confirming set dates and delivery dates, will update once confirmed. / 2025-10-21 14:10 - User: John Capriotti -
- QTS-39721: allucent_notes_20251118_192630: John Capriotti on 2025-10-07 13:10: FOH GEN Pad and XFMR pad to be fully poured and cured, 10/10, confirming set dates and delivery dates, will update once confirmed. / John Capriotti on 2025-10-21 14:10: Pending confirmation on pad readiness before setting. / John Capriotti on 2025-10-27 18:10: Setting PODs, will follow with GENs starting 11/10 / allucent_notes_20251111_182405: John Capriotti on 2025-10-07 13:10: FOH GEN Pad and XFMR pad to be fully poured and cured, 10/10, confirming set dates and delivery dates, will update once confirmed. / John Capriotti on 2025-10-21 14:10: Pending confirmation on pad readiness before setting. / John Capriotti on 2025-10-27 18:10: Setting PODs, will follow with GENs starting 11/10 / allucent_notes_20251104_160200: John Capriotti on 2025-10-07 13:10: FOH GEN Pad and XFMR pad to be fully poured and cured, 10/10, confirming set dates and delivery dates, will update once confirmed. / John Capriotti on 2025-10-21 14:10: Pending confirmation on pad readiness before setting. / John Capriotti on 2025-10-27 18:10: Setting PODs, will follow with GENs starting 11/10 / allucent_notes_20251028_163138: John Capriotti on 2025-10-07 13:10: FOH GEN Pad and XFMR pad to be fully poured and cured, 10/10, confirming set dates and delivery dates, will update once confirmed. / John Capriotti on 2025-10-21 14:10: Pending confirmation on pad readiness before setting. / John Capriotti on 2025-10-27 18:10: Setting PODs, will follow with GENs starting 11/10 / allucent_notes_20251027_224008: John Capriotti on 2025-10-07 13:10: FOH GEN Pad and XFMR pad to be fully poured and cured, 10/10, confirming set dates and delivery dates, will update once confirmed. / John Capriotti on 2025-10-21 14:10: Pending confirmation on pad readiness before setting. / John Capriotti on 2025-10-27 18:10: Setting PODs, will follow with GENs starting 11/10 / allucent_notes_20251021_145627: John Capriotti on 2025-10-07 13:10: FOH GEN Pad and XFMR pad to be fully poured and cured, 10/10, confirming set dates and delivery dates, will update once confirmed. / John Capriotti on 2025-10-21 14:10: Pending confirmation on pad readiness before setting. / allucent_notes_20251014_152335: John Capriotti on 2025-10-07 13:10: FOH GEN Pad and XFMR pad to be fully poured and cured, 10/10, confirming set dates and delivery dates, will update once confirmed. / allucent_notes: 2025-10-07 13:10 - User: John Capriotti - Date Added: 2025-10-07 13:10 - Note: FOH GEN Pad and XFMR pad to be fully poured and cured, 10/10, confirming set dates and delivery dates, will update once confirmed. / 2025-10-21 14:10 - User: John Capriotti -
- QTS-39731: allucent_notes_20251118_192630: John Capriotti on 2025-10-07 13:10: FOH GEN Pad and XFMR pad to be fully poured and cured, 10/10, confirming set dates and delivery dates, will update once confirmed. / John Capriotti on 2025-10-21 14:10: Pending confirmation on pad readiness before setting. / John Capriotti on 2025-10-27 18:10: Setting PODs, will follow with GENs starting 11/10 / allucent_notes_20251111_182405: John Capriotti on 2025-10-07 13:10: FOH GEN Pad and XFMR pad to be fully poured and cured, 10/10, confirming set dates and delivery dates, will update once confirmed. / John Capriotti on 2025-10-21 14:10: Pending confirmation on pad readiness before setting. / John Capriotti on 2025-10-27 18:10: Setting PODs, will follow with GENs starting 11/10 / allucent_notes_20251104_160200: John Capriotti on 2025-10-07 13:10: FOH GEN Pad and XFMR pad to be fully poured and cured, 10/10, confirming set dates and delivery dates, will update once confirmed. / John Capriotti on 2025-10-21 14:10: Pending confirmation on pad readiness before setting. / John Capriotti on 2025-10-27 18:10: Setting PODs, will follow with GENs starting 11/10 / allucent_notes_20251028_163138: John Capriotti on 2025-10-07 13:10: FOH GEN Pad and XFMR pad to be fully poured and cured, 10/10, confirming set dates and delivery dates, will update once confirmed. / John Capriotti on 2025-10-21 14:10: Pending confirmation on pad readiness before setting. / John Capriotti on 2025-10-27 18:10: Setting PODs, will follow with GENs starting 11/10 / allucent_notes_20251027_224008: John Capriotti on 2025-10-07 13:10: FOH GEN Pad and XFMR pad to be fully poured and cured, 10/10, confirming set dates and delivery dates, will update once confirmed. / John Capriotti on 2025-10-21 14:10: Pending confirmation on pad readiness before setting. / John Capriotti on 2025-10-27 18:10: Setting PODs, will follow with GENs starting 11/10 / allucent_notes_20251021_145627: John Capriotti on 2025-10-07 13:10: FOH GEN Pad and XFMR pad to be fully poured and cured, 10/10, confirming set dates and delivery dates, will update once confirmed. / John Capriotti on 2025-10-21 14:10: Pending confirmation on pad readiness before setting. / allucent_notes_20251014_152335: John Capriotti on 2025-10-07 13:10: FOH GEN Pad and XFMR pad to be fully poured and cured, 10/10, confirming set dates and delivery dates, will update once confirmed. / allucent_notes: 2025-10-07 13:10 - User: John Capriotti - Date Added: 2025-10-07 13:10 - Note: FOH GEN Pad and XFMR pad to be fully poured and cured, 10/10, confirming set dates and delivery dates, will update once confirmed. / 2025-10-21 14:10 - User: John Capriotti -
- QTS-27191: allucent_notes_20251118_192630: Jason Johnston on 2025-10-28 16:10: John requesting equipment brought to site. / John Capriotti on 2025-11-04 14:11: Delivering to REI warehouse on 11/7 / Jason Johnston on 2025-11-11 17:11: John owes me 11/11 update / allucent_notes_20251111_182405: Jason Johnston on 2025-10-28 16:10: John requesting equipment brought to site. / John Capriotti on 2025-11-04 14:11: Delivering to REI warehouse on 11/7 / Jason Johnston on 2025-11-11 17:11: John owes me 11/11 update / allucent_notes_20251104_160200: Jason Johnston on 2025-10-28 16:10: John requesting equipment brought to site. / John Capriotti on 2025-11-04 14:11: Delivering to REI warehouse on 11/7 / allucent_notes_20251028_163138: Jason Johnston on 2025-10-28 16:10: John requesting equipment brought to site. / allucent_notes: 2025-10-28 16:10 - User: Jason Johnston - Date Added: 2025-10-28 16:10 - Note: John requesting equipment brought to site. / 2025-11-04 14:11 - User: John Capriotti - Date Added: 2025-11-04 14:11 - Note: Delivering to REI warehouse on 11/7 / 2025-11-11 1
- QTS-36141: allucent_notes_20251104_160200: John Capriotti on 2025-10-28 15:10: Plan to receive and set BOH XFMR on 11/4, coordinated with QTS for delivery and OEG for the set. / allucent_notes_20251028_163138: John Capriotti on 2025-10-28 15:10: Plan to receive and set BOH XFMR on 11/4, coordinated with QTS for delivery and OEG for the set. / allucent_notes: 2025-10-28 15:10 - User: John Capriotti - Date Added: 2025-10-28 15:10 - Note: Plan to receive and set BOH XFMR on 11/4, coordinated with QTS for delivery and OEG for the set.
- QTS-27161: allucent_notes_20251118_192630: John Capriotti on 2025-11-11 12:11: Received all the STS on 7/29 at REIs warehouse. / John Capriotti on 2025-11-11 12:11: Received all STSs on 7/29 at REIs warehouse / allucent_notes_20251111_182405: John Capriotti on 2025-11-11 12:11: Received all the STS on 7/29 at REIs warehouse. / John Capriotti on 2025-11-11 12:11: Received all STSs on 7/29 at REIs warehouse / allucent_notes: 2025-11-11 12:11 - User: John Capriotti - Date Added: 2025-11-11 12:11 - Note: Received all the STS on 7/29 at REIs warehouse. / 2025-11-11 12:11 - User: John Capriotti - Date Added: 2025-11-11 12:11 - Note: Received all STSs on 7/29 at REIs warehouse
- QTS-1009980: allucent_notes_20251118_192630: John Capriotti on 2025-10-07 13:10: FOH GEN and XFMR pad to be fully poured and cured 10/10, working on planning delivery and set now. Will update with correct date after pads confirmed complete. / John Capriotti on 2025-10-21 14:10: Pending confirmation on pad readiness before setting. / John Capriotti on 2025-10-27 18:10: Currently setting PODS, will follow with gens starting 11/10. / allucent_notes_20251111_182405: John Capriotti on 2025-10-07 13:10: FOH GEN and XFMR pad to be fully poured and cured 10/10, working on planning delivery and set now. Will update with correct date after pads confirmed complete. / John Capriotti on 2025-10-21 14:10: Pending confirmation on pad readiness before setting. / John Capriotti on 2025-10-27 18:10: Currently setting PODS, will follow with gens starting 11/10. / allucent_notes_20251104_160200: John Capriotti on 2025-09-30 11:09: Pushing ROJ date/date to received for BOH / Gen to 10/17, pending status and updates to confirm set dates. Currently BOH Gen / pad not set to be complete until roughly 10/15 per latest update from field. / John Capriotti on 2025-10-07 13:10: Editing Note: BOH GEN and XFMR pad to be / fully poured and complete 10/15, working on scheduling set, possibly following / week. Working on confirming if we will set these ahead of time or set when all / zone 3 GENs will be set to avoid remobilizing crane. / John Capriotti on 2025-10-21 13:10: Pending confirmation on pad readiness / before setting. / John Capriotti on 2025-10-27 18:10: Currently setting PODS, will follow with / gens starting 11/10. / John Capriotti on 2025-11-11 12:11: Plan is to receive 11/24 and set the GEN. / SCR will be set seperately, need to confirm the specific date. / allucent_notes_20251028_163138: John Capriotti on 2025-10-07 13:10: FOH GEN and XFMR pad to be fully poured and cured 10/10, working on planning delivery and set now. Will update with correct date after pads confirmed complete. / John Capriotti on 2025-10-21 14:10: Pending confirmation on pad readiness before setting. / John Capriotti on 2025-10-27 18:10: Currently setting PODS, will follow with gens starting 11/10. / allucent_notes_20251027_224008: John Capriotti on 2025-10-07 13:10: FOH GEN and XFMR pad to be fully poured and cured 10/10, working on planning delivery and set now. Will update with correct date after pads confirmed complete. / John Capriotti on 2025-10-21 14:10: Pending confirmation on pad readiness before setting. / John Capriotti on 2025-10-27 18:10: Currently setting PODS, will follow with gens starting 11/10. / allucent_notes_20251021_145627: John Capriotti on 2025-10-07 13:10: FOH GEN and XFMR pad to be fully poured and cured 10/10, working on planning delivery and set now. Will update with correct date after pads confirmed complete. / John Capriotti on 2025-10-21 14:10: Pending confirmation on pad readiness before setting. / allucent_notes_20251014_152335: John Capriotti on 2025-10-07 13:10: FOH GEN and XFMR pad to be fully poured and cured 10/10, working on planning delivery and set now. Will update with correct date after pads confirmed complete. / Scheduler Notes: John Capriotti on 2025-10-07 13:10: FOH GEN and XFMR pad to be fully poured / and cured 10/10, working on planning delivery and set now. Will update with / correct date after pads confirmed complete. / John Capriotti on 2025-10-21 14:10: Pending confirmation on pad readiness / before setting. / John Capriotti on 2025-10-27 18:10: Currently setting PODS, will follow with / gens starting 11/10. / allucent_notes: 2025-10-07 13:10 - User: John Capriotti - Date Added: 2025-10-07 13:10 - Note: FOH GEN and XFMR pad to be fully poured and cured 10/10, working on planning delivery and set now. Will update with correct date after pads confirmed complete. / 2025-10-21 14
- QTS-1010380: allucent_notes_20251202_153722: John Capriotti on 2025-09-30 11:09: Pushing ROJ date/date to received for BOH Gen to 10/17, pending status and updates to confirm set dates. Currently BOH Gen pad not set to be complete until roughly 10/15 per latest update from field. / John Capriotti on 2025-10-07 13:10: Editing Note: BOH GEN and XFMR pad to be fully poured and complete 10/15, working on scheduling set, possibly following week. Working on confirming if we will set these ahead of time or set when all zone 3 GENs will be set to avoid remobilizing crane. / John Capriotti on 2025-10-21 13:10: Pending confirmation on pad readiness before setting. / John Capriotti on 2025-10-27 18:10: Currently setting PODS, will follow with gens starting 11/10. / John Capriotti on 2025-11-11 12:11: Plan is to receive 11/24 and set the GEN. SCR will be set seperately, need to confirm the specific date. / allucent_notes_20251118_192630: John Capriotti on 2025-09-30 11:09: Pushing ROJ date/date to received for BOH Gen to 10/17, pending status and updates to confirm set dates. Currently BOH Gen pad not set to be complete until roughly 10/15 per latest update from field. / John Capriotti on 2025-10-07 13:10: Editing Note: BOH GEN and XFMR pad to be fully poured and complete 10/15, working on scheduling set, possibly following week. Working on confirming if we will set these ahead of time or set when all zone 3 GENs will be set to avoid remobilizing crane. / John Capriotti on 2025-10-21 13:10: Pending confirmation on pad readiness before setting. / John Capriotti on 2025-10-27 18:10: Currently setting PODS, will follow with gens starting 11/10. / John Capriotti on 2025-11-11 12:11: Plan is to receive 11/24 and set the GEN. SCR will be set seperately, need to confirm the specific date. / allucent_notes_20251111_182405: John Capriotti on 2025-09-30 11:09: Pushing ROJ date/date to received for BOH Gen to 10/17, pending status and updates to confirm set dates. Currently BOH Gen pad not set to be complete until roughly 10/15 per latest update from field. / John Capriotti on 2025-10-07 13:10: Editing Note: BOH GEN and XFMR pad to be fully poured and complete 10/15, working on scheduling set, possibly following week. Working on confirming if we will set these ahead of time or set when all zone 3 GENs will be set to avoid remobilizing crane. / John Capriotti on 2025-10-21 13:10: Pending confirmation on pad readiness before setting. / John Capriotti on 2025-10-27 18:10: Currently setting PODS, will follow with gens starting 11/10. / John Capriotti on 2025-11-11 12:11: Plan is to receive 11/24 and set the GEN. SCR will be set seperately, need to confirm the specific date. / allucent_notes_20251104_160200: John Capriotti on 2025-09-30 11:09: Pushing ROJ date/date to received for BOH Gen to 10/17, pending status and updates to confirm set dates. Currently BOH Gen pad not set to be complete until roughly 10/15 per latest update from field. / John Capriotti on 2025-10-07 13:10: Editing Note: BOH GEN and XFMR pad to be fully poured and complete 10/15, working on scheduling set, possibly following week. Working on confirming if we will set these ahead of time or set when all zone 3 GENs will be set to avoid remobilizing crane. / John Capriotti on 2025-10-21 13:10: Pending confirmation on pad readiness before setting. / John Capriotti on 2025-10-27 18:10: Currently setting PODS, will follow with gens starting 11/10. / allucent_notes_20251028_163138: John Capriotti on 2025-09-30 11:09: Pushing ROJ date/date to received for BOH Gen to 10/17, pending status and updates to confirm set dates. Currently BOH Gen pad not set to be complete until roughly 10/15 per latest update from field. / John Capriotti on 2025-10-07 13:10: Editing Note: BOH GEN and XFMR pad to be fully poured and complete 10/15, working on scheduling set, possibly following week. Working on confirming if we will set these ahead of time or set when all zone 3 GENs will be set to avoid remobilizing crane. / John Capriotti on 2025-10-21 13:10: Pending confirmation on pad readiness before setting. / John Capriotti on 2025-10-27 18:10: Currently setting PODS, will follow with gens starting 11/10. / allucent_notes_20251027_224008: John Capriotti on 2025-09-30 11:09: Pushing ROJ date/date to received for BOH Gen to 10/17, pending status and updates to confirm set dates. Currently BOH Gen pad not set to be complete until roughly 10/15 per latest update from field. / John Capriotti on 2025-10-07 13:10: Editing Note: BOH GEN and XFMR pad to be fully poured and complete 10/15, working on scheduling set, possibly following week. Working on confirming if we will set these ahead of time or set when all zone 3 GENs will be set to avoid remobilizing crane. / John Capriotti on 2025-10-21 13:10: Pending confirmation on pad readiness before setting. / John Capriotti on 2025-10-27 18:10: Currently setting PODS, will follow with gens starting 11/10. / allucent_notes_20251021_145627: John Capriotti on 2025-09-30 11:09: Pushing ROJ date/date to received for BOH Gen to 10/17, pending status and updates to confirm set dates. Currently BOH Gen pad not set to be complete until roughly 10/15 per latest update from field. / John Capriotti on 2025-10-07 13:10: Editing Note: BOH GEN and XFMR pad to be fully poured and complete 10/15, working on scheduling set, possibly following week. Working on confirming if we will set these ahead of time or set when all zone 3 GENs will be set to avoid remobilizing crane. / John Capriotti on 2025-10-21 13:10: Pending confirmation on pad readiness before setting. / allucent_notes_20251014_152335: John Capriotti on 2025-09-30 11:09: Pushing ROJ date/date to received for BOH Gen to 10/17, pending status and updates to confirm set dates. Currently BOH Gen pad not set to be complete until roughly 10/15 per latest update from field. / John Capriotti on 2025-10-07 13:10: Editing Note: BOH GEN and XFMR pad to be fully poured and complete 10/15, working on scheduling set, possibly following week. Working on confirming if we will set these ahead of time or set when all zone 3 GENs will be set to avoid remobilizing crane. / allucent_notes: 2025-09-30 11:09 - User: John Capriotti - Date Added: 2025-09-30 11:09 - Note: Pushing ROJ date/date to received for BOH Gen to 10/17, pending status and updates to confirm set dates. Currently BOH Gen pad not set to be complete until roughly 10/15 per la

| ID | WBS | Activity | Duration | Start | Finish | Predecessors | Complete | Planned start | Planned finish | Allucent CSI Group | Project Section | Layton Discipline | Project Section-1 | Precon Phase | Fragnet | Owner Impact Analysis | Fragnet Responsible Party | Contract | Baseline |
| --- | --- | --- | --- | --- | --- | --- | --- | --- | --- | --- | --- | --- | --- | --- | --- | --- | --- | --- | --- |
|  | 2 | **Remaining Scope** |  | 2026-05-18 | 2026-05-18 |  |  |  |  |  |  |  |  |  |  |  |  |  |  |
| QTS-1009990 |  | Fragnet / FOH / FOH Yard // Ship Loose #Gen-FOH | 1d | 2026-05-18 A | 2026-05-18 A | QTS-1009980 | 100% |  |  | 01ADMIN | Preconstruction | Precon | Preconstruction | OFCI Procurement | Fragnet | Y | Rosendin Electric Inc. | BAB |  |
|  | 1 | **Data Hall 2100 (Need By Dates)** |  | 2025-07-07 | 2026-02-02 |  |  |  |  |  |  |  |  |  |  |  |  |  |  |
| QTS-34171 |  | DH 2100 / CRAH #29 (Electrical Gallery) | 20d | 2025-09-15 A | 2025-12-01 A | QTS-1371 | 100% | 2025-09-15 | 2025-10-10 | 01ADMIN | Preconstruction | Precon | Preconstruction | OFCI Procurement |  |  |  | BAB | GMP |
| QTS-34181 |  | DH 2100 / CRAH #30 (Electrical Gallery) | 20d | 2025-09-15 A | 2025-12-01 A | QTS-1371 | 100% | 2025-09-15 | 2025-10-10 | 01ADMIN | Preconstruction | Precon | Preconstruction | OFCI Procurement |  |  |  | BAB | GMP |
| QTS-34191 |  | DH 2100 / CRAH #31 (Electrical Gallery) | 20d | 2025-09-15 A | 2025-12-01 A | QTS-1371 | 100% | 2025-09-15 | 2025-10-10 | 01ADMIN | Preconstruction | Precon | Preconstruction | OFCI Procurement |  |  |  | BAB | GMP |
| QTS-34201 |  | DH 2100 / CRAH #32 (Electrical Gallery) | 20d | 2025-09-15 A | 2025-12-01 A | QTS-1371 | 100% | 2025-09-15 | 2025-10-10 | 01ADMIN | Preconstruction | Precon | Preconstruction | OFCI Procurement |  |  |  | BAB | GMP |
| QTS-33891 |  | DH 2100 / CRAH #01 | 20d | 2025-09-23 A | 2025-12-01 A | QTS-1371 | 100% | 2025-09-23 | 2025-10-20 | 01ADMIN | Preconstruction | Precon | Preconstruction | OFCI Procurement |  |  |  | BAB | GMP |
| QTS-33901 |  | DH 2100 / CRAH #02 | 20d | 2025-09-23 A | 2025-12-01 A | QTS-1371 | 100% | 2025-09-23 | 2025-10-20 | 01ADMIN | Preconstruction | Precon | Preconstruction | OFCI Procurement |  |  |  | BAB | GMP |
| QTS-33911 |  | DH 2100 / CRAH #03 | 20d | 2025-09-23 A | 2025-12-01 A | QTS-1371 | 100% | 2025-09-23 | 2025-10-20 | 01ADMIN | Preconstruction | Precon | Preconstruction | OFCI Procurement |  |  |  | BAB | GMP |
| QTS-33921 |  | DH 2100 / CRAH #04 | 20d | 2025-09-23 A | 2025-12-01 A | QTS-1371 | 100% | 2025-09-23 | 2025-10-20 | 01ADMIN | Preconstruction | Precon | Preconstruction | OFCI Procurement |  |  |  | BAB | GMP |
| QTS-33931 |  | DH 2100 / CRAH #05 | 20d | 2025-09-23 A | 2025-12-02 A | QTS-1371 | 100% | 2025-09-23 | 2025-10-20 | 01ADMIN | Preconstruction | Precon | Preconstruction | OFCI Procurement |  |  |  | BAB | GMP |
| QTS-33941 |  | DH 2100 / CRAH #06 | 20d | 2025-09-23 A | 2025-12-02 A | QTS-1371 | 100% | 2025-09-23 | 2025-10-20 | 01ADMIN | Preconstruction | Precon | Preconstruction | OFCI Procurement |  |  |  | BAB | GMP |
| QTS-33951 |  | DH 2100 / CRAH #07 | 20d | 2025-09-23 A | 2025-12-02 A | QTS-1371 | 100% | 2025-09-23 | 2025-10-20 | 01ADMIN | Preconstruction | Precon | Preconstruction | OFCI Procurement |  |  |  | BAB | GMP |
| QTS-33961 |  | DH 2100 / CRAH #08 | 20d | 2025-09-23 A | 2025-12-02 A | QTS-1371 | 100% | 2025-09-23 | 2025-10-20 | 01ADMIN | Preconstruction | Precon | Preconstruction | OFCI Procurement |  |  |  | BAB | GMP |
| QTS-33971 |  | DH 2100 / CRAH #09 | 20d | 2025-09-23 A | 2025-12-02 A | QTS-1371 | 100% | 2025-09-23 | 2025-10-20 | 01ADMIN | Preconstruction | Precon | Preconstruction | OFCI Procurement |  |  |  | BAB | GMP |
| QTS-33981 |  | DH 2100 / CRAH #10 | 20d | 2025-09-23 A | 2025-12-02 A | QTS-1371 | 100% | 2025-09-23 | 2025-10-20 | 01ADMIN | Preconstruction | Precon | Preconstruction | OFCI Procurement |  |  |  | BAB | GMP |
| QTS-33991 |  | DH 2100 / CRAH #11 | 20d | 2025-09-23 A | 2025-12-03 A | QTS-1371 | 100% | 2025-09-23 | 2025-10-20 | 01ADMIN | Preconstruction | Precon | Preconstruction | OFCI Procurement |  |  |  | BAB | GMP |
| QTS-34001 |  | DH 2100 / CRAH #12 | 20d | 2025-09-23 A | 2025-12-03 A | QTS-1371 | 100% | 2025-09-23 | 2025-10-20 | 01ADMIN | Preconstruction | Precon | Preconstruction | OFCI Procurement |  |  |  | BAB | GMP |
| QTS-34011 |  | DH 2100 / CRAH #13 | 20d | 2025-09-23 A | 2025-12-03 A | QTS-1371 | 100% | 2025-09-23 | 2025-10-20 | 01ADMIN | Preconstruction | Precon | Preconstruction | OFCI Procurement |  |  |  | BAB | GMP |
| QTS-34021 |  | DH 2100 / CRAH #14 | 20d | 2025-09-23 A | 2025-12-03 A | QTS-1371 | 100% | 2025-09-23 | 2025-10-20 | 01ADMIN | Preconstruction | Precon | Preconstruction | OFCI Procurement |  |  |  | BAB | GMP |
| QTS-22241 |  | DH 2100 / DOAS #01 | 20d | 2025-10-01 A | 2025-12-23 A | QTS-1371 | 100% | 2025-10-01 | 2025-10-28 | 01ADMIN | Preconstruction | Precon | Preconstruction | OFCI Procurement |  |  |  | BAB | GMP |
| QTS-22251 |  | DH 2100 / DOAS #02 | 20d | 2025-10-01 A | 2025-12-23 A | QTS-1371 | 100% | 2025-10-01 | 2025-10-28 | 01ADMIN | Preconstruction | Precon | Preconstruction | OFCI Procurement |  |  |  | BAB | GMP |
| QTS-34031 |  | DH 2100 / CRAH #15 | 20d | 2025-10-10 A | 2025-12-03 A | QTS-1371 | 100% | 2025-10-10 | 2025-11-06 | 01ADMIN | Preconstruction | Precon | Preconstruction | OFCI Procurement |  |  |  | BAB | GMP |
| QTS-34041 |  | DH 2100 / CRAH #16 | 20d | 2025-10-10 A | 2025-12-03 A | QTS-1371 | 100% | 2025-10-10 | 2025-11-06 | 01ADMIN | Preconstruction | Precon | Preconstruction | OFCI Procurement |  |  |  | BAB | GMP |
| QTS-34051 |  | DH 2100 / CRAH #17 | 20d | 2025-10-10 A | 2025-12-04 A | QTS-1371 | 100% | 2025-10-10 | 2025-11-06 | 01ADMIN | Preconstruction | Precon | Preconstruction | OFCI Procurement |  |  |  | BAB | GMP |
| QTS-34061 |  | DH 2100 / CRAH #18 | 20d | 2025-10-10 A | 2025-12-04 A | QTS-1371 | 100% | 2025-10-10 | 2025-11-06 | 01ADMIN | Preconstruction | Precon | Preconstruction | OFCI Procurement |  |  |  | BAB | GMP |
| QTS-34071 |  | DH 2100 / CRAH #19 | 20d | 2025-10-10 A | 2025-12-04 A | QTS-1371 | 100% | 2025-10-10 | 2025-11-06 | 01ADMIN | Preconstruction | Precon | Preconstruction | OFCI Procurement |  |  |  | BAB | GMP |
| QTS-34081 |  | DH 2100 / CRAH #20 | 20d | 2025-10-10 A | 2025-12-04 A | QTS-1371 | 100% | 2025-10-10 | 2025-11-06 | 01ADMIN | Preconstruction | Precon | Preconstruction | OFCI Procurement |  |  |  | BAB | GMP |
| QTS-34091 |  | DH 2100 / CRAH #21 | 20d | 2025-10-10 A | 2025-12-04 A | QTS-1371 | 100% | 2025-10-10 | 2025-11-06 | 01ADMIN | Preconstruction | Precon | Preconstruction | OFCI Procurement |  |  |  | BAB | GMP |
| QTS-34101 |  | DH 2100 / CRAH #22 | 20d | 2025-10-10 A | 2025-12-04 A | QTS-1371 | 100% | 2025-10-10 | 2025-11-06 | 01ADMIN | Preconstruction | Precon | Preconstruction | OFCI Procurement |  |  |  | BAB | GMP |
| QTS-34111 |  | DH 2100 / CRAH #23 | 20d | 2025-10-10 A | 2025-12-05 A | QTS-1371 | 100% | 2025-10-10 | 2025-11-06 | 01ADMIN | Preconstruction | Precon | Preconstruction | OFCI Procurement |  |  |  | BAB | GMP |
| QTS-34121 |  | DH 2100 / CRAH #24 | 20d | 2025-10-10 A | 2025-12-05 A | QTS-1371 | 100% | 2025-10-10 | 2025-11-06 | 01ADMIN | Preconstruction | Precon | Preconstruction | OFCI Procurement |  |  |  | BAB | GMP |
| QTS-34131 |  | DH 2100 / CRAH #25 | 20d | 2025-10-10 A | 2025-12-05 A | QTS-1371 | 100% | 2025-10-10 | 2025-11-06 | 01ADMIN | Preconstruction | Precon | Preconstruction | OFCI Procurement |  |  |  | BAB | GMP |
| QTS-34141 |  | DH 2100 / CRAH #26 | 20d | 2025-10-10 A | 2025-12-05 A | QTS-1371 | 100% | 2025-10-10 | 2025-11-06 | 01ADMIN | Preconstruction | Precon | Preconstruction | OFCI Procurement |  |  |  | BAB | GMP |
| QTS-34151 |  | DH 2100 / CRAH #27 | 20d | 2025-10-10 A | 2025-12-05 A | QTS-1371 | 100% | 2025-10-10 | 2025-11-06 | 01ADMIN | Preconstruction | Precon | Preconstruction | OFCI Procurement |  |  |  | BAB | GMP |
| QTS-34161 |  | DH 2100 / CRAH #28 | 20d | 2025-10-10 A | 2025-12-05 A | QTS-1371 | 100% | 2025-10-10 | 2025-11-06 | 01ADMIN | Preconstruction | Precon | Preconstruction | OFCI Procurement |  |  |  | BAB | GMP |

Notes:
- QTS-1009990: allucent_notes_20251118_192630: John Capriotti on 2025-10-07 13:10: FOH GEN and XFMR pad to be fully poured and cured 10/10, working on planning delivery and set now. Will update with correct date after pads confirmed complete. / John Capriotti on 2025-10-21 14:10: Pending confirmation on pad readiness before setting. / John Capriotti on 2025-10-27 18:10: Currently setting PODS, will follow with gens starting 11/10. / allucent_notes_20251111_182405: John Capriotti on 2025-10-07 13:10: FOH GEN and XFMR pad to be fully poured and cured 10/10, working on planning delivery and set now. Will update with correct date after pads confirmed complete. / John Capriotti on 2025-10-21 14:10: Pending confirmation on pad readiness before setting. / John Capriotti on 2025-10-27 18:10: Currently setting PODS, will follow with gens starting 11/10. / allucent_notes_20251104_160200: John Capriotti on 2025-10-07 13:10: FOH GEN and XFMR pad to be fully poured and cured 10/10, working on planning delivery and set now. Will update with correct date after pads confirmed complete. / John Capriotti on 2025-10-21 14:10: Pending confirmation on pad readiness before setting. / John Capriotti on 2025-10-27 18:10: Currently setting PODS, will follow with gens starting 11/10. / allucent_notes_20251028_163138: John Capriotti on 2025-10-07 13:10: FOH GEN and XFMR pad to be fully poured and cured 10/10, working on planning delivery and set now. Will update with correct date after pads confirmed complete. / John Capriotti on 2025-10-21 14:10: Pending confirmation on pad readiness before setting. / John Capriotti on 2025-10-27 18:10: Currently setting PODS, will follow with gens starting 11/10. / allucent_notes_20251027_224008: John Capriotti on 2025-10-07 13:10: FOH GEN and XFMR pad to be fully poured and cured 10/10, working on planning delivery and set now. Will update with correct date after pads confirmed complete. / John Capriotti on 2025-10-21 14:10: Pending confirmation on pad readiness before setting. / John Capriotti on 2025-10-27 18:10: Currently setting PODS, will follow with gens starting 11/10. / allucent_notes_20251021_145627: John Capriotti on 2025-10-07 13:10: FOH GEN and XFMR pad to be fully poured and cured 10/10, working on planning delivery and set now. Will update with correct date after pads confirmed complete. / John Capriotti on 2025-10-21 14:10: Pending confirmation on pad readiness before setting. / allucent_notes_20251014_152335: John Capriotti on 2025-10-07 13:10: FOH GEN and XFMR pad to be fully poured and cured 10/10, working on planning delivery and set now. Will update with correct date after pads confirmed complete. / Scheduler Notes: John Capriotti on 2025-10-07 13:10: FOH GEN and XFMR pad to be fully poured / and cured 10/10, working on planning delivery and set now. Will update with / correct date after pads confirmed complete. / John Capriotti on 2025-10-21 14:10: Pending confirmation on pad readiness / before setting. / John Capriotti on 2025-10-27 18:10: Currently setting PODS, will follow with / gens starting 11/10. / allucent_notes: 2025-10-07 13:10 - User: John Capriotti - Date Added: 2025-10-07 13:10 - Note: FOH GEN and XFMR pad to be fully poured and cured 10/10, working on planning delivery and set now. Will update with correct date after pads confirmed complete. / 2025-10-21 14
- QTS-34171: allucent_notes_20251216_165335: John Capriotti on 2025-10-14 12:10: From mu understanding the building is not ready to receive these CRAHS and/or store them inside. Need to confirm the area readiness and the dry-in over areas where these CRAHs will be stored. Going to reach out to QTS on coordinating these for the week of 10/27 from discussions with Layton Supers on estimated timing to receive. / John Capriotti on 2025-10-27 18:10: Starting to coordinate deliveries, pushing for the next two weeks. / Jason Johnston on 2025-11-11 17:11: John owes me 11/11 update / John Capriotti on 2025-12-09 12:29: Delivery scheduled for 12/15 / allucent_notes_20251209_203830: John Capriotti on 2025-10-14 12:10: From mu understanding the building is not ready to receive these CRAHS and/or store them inside. Need to confirm the area readiness and the dry-in over areas where these CRAHs will be stored. Going to reach out to QTS on coordinating these for the week of 10/27 from discussions with Layton Supers on estimated timing to receive. / John Capriotti on 2025-10-27 18:10: Starting to coordinate deliveries, pushing for the next two weeks. / Jason Johnston on 2025-11-11 17:11: John owes me 11/11 update / John Capriotti on 2025-12-09 12:29: Delivery scheduled for 12/15 / allucent_notes_20251202_153722: John Capriotti on 2025-10-14 12:10: From mu understanding the building is not ready to receive these CRAHS and/or store them inside. Need to confirm the area readiness and the dry-in over areas where these CRAHs will be stored. Going to reach out to QTS on coordinating these for the week of 10/27 from discussions with Layton Supers on estimated timing to receive. / John Capriotti on 2025-10-27 18:10: Starting to coordinate deliveries, pushing for the next two weeks. / Jason Johnston on 2025-11-11 17:11: John owes me 11/11 update / allucent_notes_20251118_192630: John Capriotti on 2025-10-14 12:10: From mu understanding the building is not ready to receive these CRAHS and/or store them inside. Need to confirm the area readiness and the dry-in over areas where these CRAHs will be stored. Going to reach out to QTS on coordinating these for the week of 10/27 from discussions with Layton Supers on estimated timing to receive. / John Capriotti on 2025-10-27 18:10: Starting to coordinate deliveries, pushing for the next two weeks. / Jason Johnston on 2025-11-11 17:11: John owes me 11/11 update / allucent_notes_20251111_182405: John Capriotti on 2025-10-14 12:10: From mu understanding the building is not ready to receive these CRAHS and/or store them inside. Need to confirm the area readiness and the dry-in over areas where these CRAHs will be stored. Going to reach out to QTS on coordinating these for the week of 10/27 from discussions with Layton Supers on estimated timing to receive. / John Capriotti on 2025-10-27 18:10: Starting to coordinate deliveries, pushing for the next two weeks. / Jason Johnston on 2025-11-11 17:11: John owes me 11/11 update / allucent_notes_20251104_160200: John Capriotti on 2025-10-14 12:10: From mu understanding the building is not ready to receive these CRAHS and/or store them inside. Need to confirm the area readiness and the dry-in over areas where these CRAHs will be stored. Going to reach out to QTS on coordinating these for the week of 10/27 from discussions with Layton Supers on estimated timing to receive. / John Capriotti on 2025-10-27 18:10: Starting to coordinate deliveries, pushing for the next two weeks. / allucent_notes_20251028_163138: John Capriotti on 2025-10-14 12:10: From mu understanding the building is not ready to receive these CRAHS and/or store them inside. Need to confirm the area readiness and the dry-in over areas where these CRAHs will be stored. Going to reach out to QTS on coordinating these for the week of 10/27 from discussions with Layton Supers on estimated timing to receive. / John Capriotti on 2025-10-27 18:10: Starting to coordinate deliveries, pushing for the next two weeks. / allucent_notes_20251027_224008: John Capriotti on 2025-10-14 12:10: From mu understanding the building is not ready to receive these CRAHS and/or store them inside. Need to confirm the area readiness and the dry-in over areas where these CRAHs will be stored. Going to reach out to QTS on coordinating these for the week of 10/27 from discussions with Layton Supers on estimated timing to receive. / John Capriotti on 2025-10-27 18:10: Starting to coordinate deliveries, pushing for the next two weeks. / allucent_notes_20251021_145627: John Capriotti on 2025-10-14 12:10: From mu understanding the building is not ready to receive these CRAHS and/or store them inside. Need to confirm the area readiness and the dry-in over areas where these CRAHs will be stored. Going to reach out to QTS on coordinating these for the week of 10/27 from discussions with Layton Supers on estimated timing to receive. / allucent_notes_20251014_152335: John Capriotti on 2025-10-14 12:10: From mu understanding the building is not ready to receive these CRAHS and/or store them inside. Need to confirm the area readiness and the dry-in over areas where these CRAHs will be stored. Going to reach out to QTS on coordinating these for the week of 10/27 from discussions with Layton Supers on estimated timing to receive. / allucent_notes: 2025-10-14 12:10 - User: John Capriotti - Date Added: 2025-10-14 12:10 - Note: From mu understanding the building is not ready to receive these CRAHS and/or store them inside. Need to confirm the area readiness and the dry-in over areas where these CRAHs
- QTS-34181: allucent_notes_20251216_165335: John Capriotti on 2025-10-14 12:10: From mu understanding the building is not ready to receive these CRAHS and/or store them inside. Need to confirm the area readiness and the dry-in over areas where these CRAHs will be stored. Going to reach out to QTS on coordinating these for the week of 10/27 from discussions with Layton Supers on estimated timing to receive. / John Capriotti on 2025-10-27 18:10: Starting to coordinate deliveries, pushing for the next two weeks. / Jason Johnston on 2025-11-11 17:11: John owes me 11/11 update / John Capriotti on 2025-12-09 12:29: Delivery scheduled for 12/15 / allucent_notes_20251209_203830: John Capriotti on 2025-10-14 12:10: From mu understanding the building is not ready to receive these CRAHS and/or store them inside. Need to confirm the area readiness and the dry-in over areas where these CRAHs will be stored. Going to reach out to QTS on coordinating these for the week of 10/27 from discussions with Layton Supers on estimated timing to receive. / John Capriotti on 2025-10-27 18:10: Starting to coordinate deliveries, pushing for the next two weeks. / Jason Johnston on 2025-11-11 17:11: John owes me 11/11 update / John Capriotti on 2025-12-09 12:29: Delivery scheduled for 12/15 / allucent_notes_20251202_153722: John Capriotti on 2025-10-14 12:10: From mu understanding the building is not ready to receive these CRAHS and/or store them inside. Need to confirm the area readiness and the dry-in over areas where these CRAHs will be stored. Going to reach out to QTS on coordinating these for the week of 10/27 from discussions with Layton Supers on estimated timing to receive. / John Capriotti on 2025-10-27 18:10: Starting to coordinate deliveries, pushing for the next two weeks. / Jason Johnston on 2025-11-11 17:11: John owes me 11/11 update / allucent_notes_20251118_192630: John Capriotti on 2025-10-14 12:10: From mu understanding the building is not ready to receive these CRAHS and/or store them inside. Need to confirm the area readiness and the dry-in over areas where these CRAHs will be stored. Going to reach out to QTS on coordinating these for the week of 10/27 from discussions with Layton Supers on estimated timing to receive. / John Capriotti on 2025-10-27 18:10: Starting to coordinate deliveries, pushing for the next two weeks. / Jason Johnston on 2025-11-11 17:11: John owes me 11/11 update / allucent_notes_20251111_182405: John Capriotti on 2025-10-14 12:10: From mu understanding the building is not ready to receive these CRAHS and/or store them inside. Need to confirm the area readiness and the dry-in over areas where these CRAHs will be stored. Going to reach out to QTS on coordinating these for the week of 10/27 from discussions with Layton Supers on estimated timing to receive. / John Capriotti on 2025-10-27 18:10: Starting to coordinate deliveries, pushing for the next two weeks. / Jason Johnston on 2025-11-11 17:11: John owes me 11/11 update / allucent_notes_20251104_160200: John Capriotti on 2025-10-14 12:10: From mu understanding the building is not ready to receive these CRAHS and/or store them inside. Need to confirm the area readiness and the dry-in over areas where these CRAHs will be stored. Going to reach out to QTS on coordinating these for the week of 10/27 from discussions with Layton Supers on estimated timing to receive. / John Capriotti on 2025-10-27 18:10: Starting to coordinate deliveries, pushing for the next two weeks. / allucent_notes_20251028_163138: John Capriotti on 2025-10-14 12:10: From mu understanding the building is not ready to receive these CRAHS and/or store them inside. Need to confirm the area readiness and the dry-in over areas where these CRAHs will be stored. Going to reach out to QTS on coordinating these for the week of 10/27 from discussions with Layton Supers on estimated timing to receive. / John Capriotti on 2025-10-27 18:10: Starting to coordinate deliveries, pushing for the next two weeks. / allucent_notes_20251027_224008: John Capriotti on 2025-10-14 12:10: From mu understanding the building is not ready to receive these CRAHS and/or store them inside. Need to confirm the area readiness and the dry-in over areas where these CRAHs will be stored. Going to reach out to QTS on coordinating these for the week of 10/27 from discussions with Layton Supers on estimated timing to receive. / John Capriotti on 2025-10-27 18:10: Starting to coordinate deliveries, pushing for the next two weeks. / allucent_notes_20251021_145627: John Capriotti on 2025-10-14 12:10: From mu understanding the building is not ready to receive these CRAHS and/or store them inside. Need to confirm the area readiness and the dry-in over areas where these CRAHs will be stored. Going to reach out to QTS on coordinating these for the week of 10/27 from discussions with Layton Supers on estimated timing to receive. / allucent_notes_20251014_152335: John Capriotti on 2025-10-14 12:10: From mu understanding the building is not ready to receive these CRAHS and/or store them inside. Need to confirm the area readiness and the dry-in over areas where these CRAHs will be stored. Going to reach out to QTS on coordinating these for the week of 10/27 from discussions with Layton Supers on estimated timing to receive. / allucent_notes: 2025-10-14 12:10 - User: John Capriotti - Date Added: 2025-10-14 12:10 - Note: From mu understanding the building is not ready to receive these CRAHS and/or store them inside. Need to confirm the area readiness and the dry-in over areas where these CRAHs
- QTS-34191: allucent_notes_20251216_165335: John Capriotti on 2025-10-14 12:10: From mu understanding the building is not ready to receive these CRAHS and/or store them inside. Need to confirm the area readiness and the dry-in over areas where these CRAHs will be stored. Going to reach out to QTS on coordinating these for the week of 10/27 from discussions with Layton Supers on estimated timing to receive. / John Capriotti on 2025-10-27 18:10: Starting to coordinate deliveries, pushing for the next two weeks. / Jason Johnston on 2025-11-11 17:11: John owes me 11/11 update / John Capriotti on 2025-12-09 12:29: Delivery scheduled for 12/15 / allucent_notes_20251209_203830: John Capriotti on 2025-10-14 12:10: From mu understanding the building is not ready to receive these CRAHS and/or store them inside. Need to confirm the area readiness and the dry-in over areas where these CRAHs will be stored. Going to reach out to QTS on coordinating these for the week of 10/27 from discussions with Layton Supers on estimated timing to receive. / John Capriotti on 2025-10-27 18:10: Starting to coordinate deliveries, pushing for the next two weeks. / Jason Johnston on 2025-11-11 17:11: John owes me 11/11 update / John Capriotti on 2025-12-09 12:29: Delivery scheduled for 12/15 / allucent_notes_20251202_153722: John Capriotti on 2025-10-14 12:10: From mu understanding the building is not ready to receive these CRAHS and/or store them inside. Need to confirm the area readiness and the dry-in over areas where these CRAHs will be stored. Going to reach out to QTS on coordinating these for the week of 10/27 from discussions with Layton Supers on estimated timing to receive. / John Capriotti on 2025-10-27 18:10: Starting to coordinate deliveries, pushing for the next two weeks. / Jason Johnston on 2025-11-11 17:11: John owes me 11/11 update / allucent_notes_20251118_192630: John Capriotti on 2025-10-14 12:10: From mu understanding the building is not ready to receive these CRAHS and/or store them inside. Need to confirm the area readiness and the dry-in over areas where these CRAHs will be stored. Going to reach out to QTS on coordinating these for the week of 10/27 from discussions with Layton Supers on estimated timing to receive. / John Capriotti on 2025-10-27 18:10: Starting to coordinate deliveries, pushing for the next two weeks. / Jason Johnston on 2025-11-11 17:11: John owes me 11/11 update / allucent_notes_20251111_182405: John Capriotti on 2025-10-14 12:10: From mu understanding the building is not ready to receive these CRAHS and/or store them inside. Need to confirm the area readiness and the dry-in over areas where these CRAHs will be stored. Going to reach out to QTS on coordinating these for the week of 10/27 from discussions with Layton Supers on estimated timing to receive. / John Capriotti on 2025-10-27 18:10: Starting to coordinate deliveries, pushing for the next two weeks. / Jason Johnston on 2025-11-11 17:11: John owes me 11/11 update / allucent_notes_20251104_160200: John Capriotti on 2025-10-14 12:10: From mu understanding the building is not ready to receive these CRAHS and/or store them inside. Need to confirm the area readiness and the dry-in over areas where these CRAHs will be stored. Going to reach out to QTS on coordinating these for the week of 10/27 from discussions with Layton Supers on estimated timing to receive. / John Capriotti on 2025-10-27 18:10: Starting to coordinate deliveries, pushing for the next two weeks. / allucent_notes_20251028_163138: John Capriotti on 2025-10-14 12:10: From mu understanding the building is not ready to receive these CRAHS and/or store them inside. Need to confirm the area readiness and the dry-in over areas where these CRAHs will be stored. Going to reach out to QTS on coordinating these for the week of 10/27 from discussions with Layton Supers on estimated timing to receive. / John Capriotti on 2025-10-27 18:10: Starting to coordinate deliveries, pushing for the next two weeks. / allucent_notes_20251027_224008: John Capriotti on 2025-10-14 12:10: From mu understanding the building is not ready to receive these CRAHS and/or store them inside. Need to confirm the area readiness and the dry-in over areas where these CRAHs will be stored. Going to reach out to QTS on coordinating these for the week of 10/27 from discussions with Layton Supers on estimated timing to receive. / John Capriotti on 2025-10-27 18:10: Starting to coordinate deliveries, pushing for the next two weeks. / allucent_notes_20251021_145627: John Capriotti on 2025-10-14 12:10: From mu understanding the building is not ready to receive these CRAHS and/or store them inside. Need to confirm the area readiness and the dry-in over areas where these CRAHs will be stored. Going to reach out to QTS on coordinating these for the week of 10/27 from discussions with Layton Supers on estimated timing to receive. / allucent_notes_20251014_152335: John Capriotti on 2025-10-14 12:10: From mu understanding the building is not ready to receive these CRAHS and/or store them inside. Need to confirm the area readiness and the dry-in over areas where these CRAHs will be stored. Going to reach out to QTS on coordinating these for the week of 10/27 from discussions with Layton Supers on estimated timing to receive. / allucent_notes: 2025-10-14 12:10 - User: John Capriotti - Date Added: 2025-10-14 12:10 - Note: From mu understanding the building is not ready to receive these CRAHS and/or store them inside. Need to confirm the area readiness and the dry-in over areas where these CRAHs
- QTS-34201: allucent_notes_20251216_165335: John Capriotti on 2025-10-14 12:10: From mu understanding the building is not ready to receive these CRAHS and/or store them inside. Need to confirm the area readiness and the dry-in over areas where these CRAHs will be stored. Going to reach out to QTS on coordinating these for the week of 10/27 from discussions with Layton Supers on estimated timing to receive. / John Capriotti on 2025-10-27 18:10: Starting to coordinate deliveries, pushing for the next two weeks. / Jason Johnston on 2025-11-11 17:11: John owes me 11/11 update / John Capriotti on 2025-12-09 12:29: Delivery scheduled for 12/15 / allucent_notes_20251209_203830: John Capriotti on 2025-10-14 12:10: From mu understanding the building is not ready to receive these CRAHS and/or store them inside. Need to confirm the area readiness and the dry-in over areas where these CRAHs will be stored. Going to reach out to QTS on coordinating these for the week of 10/27 from discussions with Layton Supers on estimated timing to receive. / John Capriotti on 2025-10-27 18:10: Starting to coordinate deliveries, pushing for the next two weeks. / Jason Johnston on 2025-11-11 17:11: John owes me 11/11 update / John Capriotti on 2025-12-09 12:29: Delivery scheduled for 12/15 / allucent_notes_20251202_153722: John Capriotti on 2025-10-14 12:10: From mu understanding the building is not ready to receive these CRAHS and/or store them inside. Need to confirm the area readiness and the dry-in over areas where these CRAHs will be stored. Going to reach out to QTS on coordinating these for the week of 10/27 from discussions with Layton Supers on estimated timing to receive. / John Capriotti on 2025-10-27 18:10: Starting to coordinate deliveries, pushing for the next two weeks. / Jason Johnston on 2025-11-11 17:11: John owes me 11/11 update / allucent_notes_20251118_192630: John Capriotti on 2025-10-14 12:10: From mu understanding the building is not ready to receive these CRAHS and/or store them inside. Need to confirm the area readiness and the dry-in over areas where these CRAHs will be stored. Going to reach out to QTS on coordinating these for the week of 10/27 from discussions with Layton Supers on estimated timing to receive. / John Capriotti on 2025-10-27 18:10: Starting to coordinate deliveries, pushing for the next two weeks. / Jason Johnston on 2025-11-11 17:11: John owes me 11/11 update / allucent_notes_20251111_182405: John Capriotti on 2025-10-14 12:10: From mu understanding the building is not ready to receive these CRAHS and/or store them inside. Need to confirm the area readiness and the dry-in over areas where these CRAHs will be stored. Going to reach out to QTS on coordinating these for the week of 10/27 from discussions with Layton Supers on estimated timing to receive. / John Capriotti on 2025-10-27 18:10: Starting to coordinate deliveries, pushing for the next two weeks. / Jason Johnston on 2025-11-11 17:11: John owes me 11/11 update / allucent_notes_20251104_160200: John Capriotti on 2025-10-14 12:10: From mu understanding the building is not ready to receive these CRAHS and/or store them inside. Need to confirm the area readiness and the dry-in over areas where these CRAHs will be stored. Going to reach out to QTS on coordinating these for the week of 10/27 from discussions with Layton Supers on estimated timing to receive. / John Capriotti on 2025-10-27 18:10: Starting to coordinate deliveries, pushing for the next two weeks. / allucent_notes_20251028_163138: John Capriotti on 2025-10-14 12:10: From mu understanding the building is not ready to receive these CRAHS and/or store them inside. Need to confirm the area readiness and the dry-in over areas where these CRAHs will be stored. Going to reach out to QTS on coordinating these for the week of 10/27 from discussions with Layton Supers on estimated timing to receive. / John Capriotti on 2025-10-27 18:10: Starting to coordinate deliveries, pushing for the next two weeks. / allucent_notes_20251027_224008: John Capriotti on 2025-10-14 12:10: From mu understanding the building is not ready to receive these CRAHS and/or store them inside. Need to confirm the area readiness and the dry-in over areas where these CRAHs will be stored. Going to reach out to QTS on coordinating these for the week of 10/27 from discussions with Layton Supers on estimated timing to receive. / John Capriotti on 2025-10-27 18:10: Starting to coordinate deliveries, pushing for the next two weeks. / allucent_notes_20251021_145627: John Capriotti on 2025-10-14 12:10: From mu understanding the building is not ready to receive these CRAHS and/or store them inside. Need to confirm the area readiness and the dry-in over areas where these CRAHs will be stored. Going to reach out to QTS on coordinating these for the week of 10/27 from discussions with Layton Supers on estimated timing to receive. / allucent_notes_20251014_152335: John Capriotti on 2025-10-14 12:10: From mu understanding the building is not ready to receive these CRAHS and/or store them inside. Need to confirm the area readiness and the dry-in over areas where these CRAHs will be stored. Going to reach out to QTS on coordinating these for the week of 10/27 from discussions with Layton Supers on estimated timing to receive. / allucent_notes: 2025-10-14 12:10 - User: John Capriotti - Date Added: 2025-10-14 12:10 - Note: From mu understanding the building is not ready to receive these CRAHS and/or store them inside. Need to confirm the area readiness and the dry-in over areas where these CRAHs
- QTS-33891: allucent_notes_20251202_153722: John Capriotti on 2025-10-14 12:10: From mu understanding the building is not ready to receive these CRAHS and/or store them inside. Need to confirm the area readiness and the dry-in over areas where these CRAHs will be stored. Going to reach out to QTS on coordinating these for the week of 10/27 from discussions with Layton Supers on estimated timing to receive. / John Capriotti on 2025-10-27 18:10: Starting to coordinate deliveries, pushing for the next two weeks. / Jason Johnston on 2025-11-11 17:11: John owes me 11/11 update / Jason Johnston on 2025-12-02 11:39: First delivery day / John Capriotti on 2025-12-02 12:11: Received on 12/1 / allucent_notes_20251118_192630: John Capriotti on 2025-10-14 12:10: From mu understanding the building is not ready to receive these CRAHS and/or store them inside. Need to confirm the area readiness and the dry-in over areas where these CRAHs will be stored. Going to reach out to QTS on coordinating these for the week of 10/27 from discussions with Layton Supers on estimated timing to receive. / John Capriotti on 2025-10-27 18:10: Starting to coordinate deliveries, pushing for the next two weeks. / Jason Johnston on 2025-11-11 17:11: John owes me 11/11 update / allucent_notes_20251111_182405: John Capriotti on 2025-10-14 12:10: From mu understanding the building is not ready to receive these CRAHS and/or store them inside. Need to confirm the area readiness and the dry-in over areas where these CRAHs will be stored. Going to reach out to QTS on coordinating these for the week of 10/27 from discussions with Layton Supers on estimated timing to receive. / John Capriotti on 2025-10-27 18:10: Starting to coordinate deliveries, pushing for the next two weeks. / Jason Johnston on 2025-11-11 17:11: John owes me 11/11 update / allucent_notes_20251104_160200: John Capriotti on 2025-10-14 12:10: From mu understanding the building is not ready to receive these CRAHS and/or store them inside. Need to confirm the area readiness and the dry-in over areas where these CRAHs will be stored. Going to reach out to QTS on coordinating these for the week of 10/27 from discussions with Layton Supers on estimated timing to receive. / John Capriotti on 2025-10-27 18:10: Starting to coordinate deliveries, pushing for the next two weeks. / allucent_notes_20251028_163138: John Capriotti on 2025-10-14 12:10: From mu understanding the building is not ready to receive these CRAHS and/or store them inside. Need to confirm the area readiness and the dry-in over areas where these CRAHs will be stored. Going to reach out to QTS on coordinating these for the week of 10/27 from discussions with Layton Supers on estimated timing to receive. / John Capriotti on 2025-10-27 18:10: Starting to coordinate deliveries, pushing for the next two weeks. / allucent_notes_20251027_224008: John Capriotti on 2025-10-14 12:10: From mu understanding the building is not ready to receive these CRAHS and/or store them inside. Need to confirm the area readiness and the dry-in over areas where these CRAHs will be stored. Going to reach out to QTS on coordinating these for the week of 10/27 from discussions with Layton Supers on estimated timing to receive. / John Capriotti on 2025-10-27 18:10: Starting to coordinate deliveries, pushing for the next two weeks. / allucent_notes_20251021_145627: John Capriotti on 2025-10-14 12:10: From mu understanding the building is not ready to receive these CRAHS and/or store them inside. Need to confirm the area readiness and the dry-in over areas where these CRAHs will be stored. Going to reach out to QTS on coordinating these for the week of 10/27 from discussions with Layton Supers on estimated timing to receive. / allucent_notes_20251014_152335: John Capriotti on 2025-10-14 12:10: From mu understanding the building is not ready to receive these CRAHS and/or store them inside. Need to confirm the area readiness and the dry-in over areas where these CRAHs will be stored. Going to reach out to QTS on coordinating these for the week of 10/27 from discussions with Layton Supers on estimated timing to receive. / allucent_notes: 2025-10-14 12:10 - User: John Capriotti - Date Added: 2025-10-14 12:10 - Note: From mu understanding the building is not ready to receive these CRAHS and/or store them inside. Need to confirm the area readiness and the dry-in over areas where these CRAHs
- QTS-33901: allucent_notes_20251202_153722: John Capriotti on 2025-10-14 12:10: From mu understanding the building is not ready to receive these CRAHS and/or store them inside. Need to confirm the area readiness and the dry-in over areas where these CRAHs will be stored. Going to reach out to QTS on coordinating these for the week of 10/27 from discussions with Layton Supers on estimated timing to receive. / John Capriotti on 2025-10-27 18:10: Starting to coordinate deliveries, pushing for the next two weeks. / Jason Johnston on 2025-11-11 17:11: John owes me 11/11 update / Jason Johnston on 2025-12-02 11:40: First delivery day / John Capriotti on 2025-12-02 12:11: Received on 12/1 / allucent_notes_20251118_192630: John Capriotti on 2025-10-14 12:10: From mu understanding the building is not ready to receive these CRAHS and/or store them inside. Need to confirm the area readiness and the dry-in over areas where these CRAHs will be stored. Going to reach out to QTS on coordinating these for the week of 10/27 from discussions with Layton Supers on estimated timing to receive. / John Capriotti on 2025-10-27 18:10: Starting to coordinate deliveries, pushing for the next two weeks. / Jason Johnston on 2025-11-11 17:11: John owes me 11/11 update / allucent_notes_20251111_182405: John Capriotti on 2025-10-14 12:10: From mu understanding the building is not ready to receive these CRAHS and/or store them inside. Need to confirm the area readiness and the dry-in over areas where these CRAHs will be stored. Going to reach out to QTS on coordinating these for the week of 10/27 from discussions with Layton Supers on estimated timing to receive. / John Capriotti on 2025-10-27 18:10: Starting to coordinate deliveries, pushing for the next two weeks. / Jason Johnston on 2025-11-11 17:11: John owes me 11/11 update / allucent_notes_20251104_160200: John Capriotti on 2025-10-14 12:10: From mu understanding the building is not ready to receive these CRAHS and/or store them inside. Need to confirm the area readiness and the dry-in over areas where these CRAHs will be stored. Going to reach out to QTS on coordinating these for the week of 10/27 from discussions with Layton Supers on estimated timing to receive. / John Capriotti on 2025-10-27 18:10: Starting to coordinate deliveries, pushing for the next two weeks. / allucent_notes_20251028_163138: John Capriotti on 2025-10-14 12:10: From mu understanding the building is not ready to receive these CRAHS and/or store them inside. Need to confirm the area readiness and the dry-in over areas where these CRAHs will be stored. Going to reach out to QTS on coordinating these for the week of 10/27 from discussions with Layton Supers on estimated timing to receive. / John Capriotti on 2025-10-27 18:10: Starting to coordinate deliveries, pushing for the next two weeks. / allucent_notes_20251027_224008: John Capriotti on 2025-10-14 12:10: From mu understanding the building is not ready to receive these CRAHS and/or store them inside. Need to confirm the area readiness and the dry-in over areas where these CRAHs will be stored. Going to reach out to QTS on coordinating these for the week of 10/27 from discussions with Layton Supers on estimated timing to receive. / John Capriotti on 2025-10-27 18:10: Starting to coordinate deliveries, pushing for the next two weeks. / allucent_notes_20251021_145627: John Capriotti on 2025-10-14 12:10: From mu understanding the building is not ready to receive these CRAHS and/or store them inside. Need to confirm the area readiness and the dry-in over areas where these CRAHs will be stored. Going to reach out to QTS on coordinating these for the week of 10/27 from discussions with Layton Supers on estimated timing to receive. / allucent_notes_20251014_152335: John Capriotti on 2025-10-14 12:10: From mu understanding the building is not ready to receive these CRAHS and/or store them inside. Need to confirm the area readiness and the dry-in over areas where these CRAHs will be stored. Going to reach out to QTS on coordinating these for the week of 10/27 from discussions with Layton Supers on estimated timing to receive. / allucent_notes: 2025-10-14 12:10 - User: John Capriotti - Date Added: 2025-10-14 12:10 - Note: From mu understanding the building is not ready to receive these CRAHS and/or store them inside. Need to confirm the area readiness and the dry-in over areas where these CRAHs
- QTS-33911: allucent_notes_20251202_153722: John Capriotti on 2025-10-14 12:10: From mu understanding the building is not ready to receive these CRAHS and/or store them inside. Need to confirm the area readiness and the dry-in over areas where these CRAHs will be stored. Going to reach out to QTS on coordinating these for the week of 10/27 from discussions with Layton Supers on estimated timing to receive. / John Capriotti on 2025-10-27 18:10: Starting to coordinate deliveries, pushing for the next two weeks. / Jason Johnston on 2025-11-11 17:11: John owes me 11/11 update / John Capriotti on 2025-12-02 12:11: Received on 12/1 / allucent_notes_20251118_192630: John Capriotti on 2025-10-14 12:10: From mu understanding the building is not ready to receive these CRAHS and/or store them inside. Need to confirm the area readiness and the dry-in over areas where these CRAHs will be stored. Going to reach out to QTS on coordinating these for the week of 10/27 from discussions with Layton Supers on estimated timing to receive. / John Capriotti on 2025-10-27 18:10: Starting to coordinate deliveries, pushing for the next two weeks. / Jason Johnston on 2025-11-11 17:11: John owes me 11/11 update / allucent_notes_20251111_182405: John Capriotti on 2025-10-14 12:10: From mu understanding the building is not ready to receive these CRAHS and/or store them inside. Need to confirm the area readiness and the dry-in over areas where these CRAHs will be stored. Going to reach out to QTS on coordinating these for the week of 10/27 from discussions with Layton Supers on estimated timing to receive. / John Capriotti on 2025-10-27 18:10: Starting to coordinate deliveries, pushing for the next two weeks. / Jason Johnston on 2025-11-11 17:11: John owes me 11/11 update / allucent_notes_20251104_160200: John Capriotti on 2025-10-14 12:10: From mu understanding the building is not ready to receive these CRAHS and/or store them inside. Need to confirm the area readiness and the dry-in over areas where these CRAHs will be stored. Going to reach out to QTS on coordinating these for the week of 10/27 from discussions with Layton Supers on estimated timing to receive. / John Capriotti on 2025-10-27 18:10: Starting to coordinate deliveries, pushing for the next two weeks. / allucent_notes_20251028_163138: John Capriotti on 2025-10-14 12:10: From mu understanding the building is not ready to receive these CRAHS and/or store them inside. Need to confirm the area readiness and the dry-in over areas where these CRAHs will be stored. Going to reach out to QTS on coordinating these for the week of 10/27 from discussions with Layton Supers on estimated timing to receive. / John Capriotti on 2025-10-27 18:10: Starting to coordinate deliveries, pushing for the next two weeks. / allucent_notes_20251027_224008: John Capriotti on 2025-10-14 12:10: From mu understanding the building is not ready to receive these CRAHS and/or store them inside. Need to confirm the area readiness and the dry-in over areas where these CRAHs will be stored. Going to reach out to QTS on coordinating these for the week of 10/27 from discussions with Layton Supers on estimated timing to receive. / John Capriotti on 2025-10-27 18:10: Starting to coordinate deliveries, pushing for the next two weeks. / allucent_notes_20251021_145627: John Capriotti on 2025-10-14 12:10: From mu understanding the building is not ready to receive these CRAHS and/or store them inside. Need to confirm the area readiness and the dry-in over areas where these CRAHs will be stored. Going to reach out to QTS on coordinating these for the week of 10/27 from discussions with Layton Supers on estimated timing to receive. / allucent_notes_20251014_152335: John Capriotti on 2025-10-14 12:10: From mu understanding the building is not ready to receive these CRAHS and/or store them inside. Need to confirm the area readiness and the dry-in over areas where these CRAHs will be stored. Going to reach out to QTS on coordinating these for the week of 10/27 from discussions with Layton Supers on estimated timing to receive. / allucent_notes: 2025-10-14 12:10 - User: John Capriotti - Date Added: 2025-10-14 12:10 - Note: From mu understanding the building is not ready to receive these CRAHS and/or store them inside. Need to confirm the area readiness and the dry-in over areas where these CRAHs
- QTS-33921: allucent_notes_20251202_153722: John Capriotti on 2025-10-14 12:10: From mu understanding the building is not ready to receive these CRAHS and/or store them inside. Need to confirm the area readiness and the dry-in over areas where these CRAHs will be stored. Going to reach out to QTS on coordinating these for the week of 10/27 from discussions with Layton Supers on estimated timing to receive. / John Capriotti on 2025-10-27 18:10: Starting to coordinate deliveries, pushing for the next two weeks. / Jason Johnston on 2025-11-11 17:11: John owes me 11/11 update / John Capriotti on 2025-12-02 12:12: Received on 12/1 / allucent_notes_20251118_192630: John Capriotti on 2025-10-14 12:10: From mu understanding the building is not ready to receive these CRAHS and/or store them inside. Need to confirm the area readiness and the dry-in over areas where these CRAHs will be stored. Going to reach out to QTS on coordinating these for the week of 10/27 from discussions with Layton Supers on estimated timing to receive. / John Capriotti on 2025-10-27 18:10: Starting to coordinate deliveries, pushing for the next two weeks. / Jason Johnston on 2025-11-11 17:11: John owes me 11/11 update / allucent_notes_20251111_182405: John Capriotti on 2025-10-14 12:10: From mu understanding the building is not ready to receive these CRAHS and/or store them inside. Need to confirm the area readiness and the dry-in over areas where these CRAHs will be stored. Going to reach out to QTS on coordinating these for the week of 10/27 from discussions with Layton Supers on estimated timing to receive. / John Capriotti on 2025-10-27 18:10: Starting to coordinate deliveries, pushing for the next two weeks. / Jason Johnston on 2025-11-11 17:11: John owes me 11/11 update / allucent_notes_20251104_160200: John Capriotti on 2025-10-14 12:10: From mu understanding the building is not ready to receive these CRAHS and/or store them inside. Need to confirm the area readiness and the dry-in over areas where these CRAHs will be stored. Going to reach out to QTS on coordinating these for the week of 10/27 from discussions with Layton Supers on estimated timing to receive. / John Capriotti on 2025-10-27 18:10: Starting to coordinate deliveries, pushing for the next two weeks. / allucent_notes_20251028_163138: John Capriotti on 2025-10-14 12:10: From mu understanding the building is not ready to receive these CRAHS and/or store them inside. Need to confirm the area readiness and the dry-in over areas where these CRAHs will be stored. Going to reach out to QTS on coordinating these for the week of 10/27 from discussions with Layton Supers on estimated timing to receive. / John Capriotti on 2025-10-27 18:10: Starting to coordinate deliveries, pushing for the next two weeks. / allucent_notes_20251027_224008: John Capriotti on 2025-10-14 12:10: From mu understanding the building is not ready to receive these CRAHS and/or store them inside. Need to confirm the area readiness and the dry-in over areas where these CRAHs will be stored. Going to reach out to QTS on coordinating these for the week of 10/27 from discussions with Layton Supers on estimated timing to receive. / John Capriotti on 2025-10-27 18:10: Starting to coordinate deliveries, pushing for the next two weeks. / allucent_notes_20251021_145627: John Capriotti on 2025-10-14 12:10: From mu understanding the building is not ready to receive these CRAHS and/or store them inside. Need to confirm the area readiness and the dry-in over areas where these CRAHs will be stored. Going to reach out to QTS on coordinating these for the week of 10/27 from discussions with Layton Supers on estimated timing to receive. / allucent_notes_20251014_152335: John Capriotti on 2025-10-14 12:10: From mu understanding the building is not ready to receive these CRAHS and/or store them inside. Need to confirm the area readiness and the dry-in over areas where these CRAHs will be stored. Going to reach out to QTS on coordinating these for the week of 10/27 from discussions with Layton Supers on estimated timing to receive. / allucent_notes: 2025-10-14 12:10 - User: John Capriotti - Date Added: 2025-10-14 12:10 - Note: From mu understanding the building is not ready to receive these CRAHS and/or store them inside. Need to confirm the area readiness and the dry-in over areas where these CRAHs
- QTS-33931: allucent_notes_20251202_153722: John Capriotti on 2025-10-14 13:10: From mu understanding the building is not ready to receive these CRAHS and/or store them inside. Need to confirm the area readiness and the dry-in over areas where these CRAHs will be stored. Going to reach out to QTS on coordinating these for the week of 10/27 from discussions with Layton Supers on estimated timing to receive. / John Capriotti on 2025-10-27 18:10: Starting to coordinate deliveries, pushing for the next two weeks. / Jason Johnston on 2025-11-11 17:11: John owes me 11/11 update / John Capriotti on 2025-12-02 12:12: Received on 12/2 / allucent_notes_20251118_192630: John Capriotti on 2025-10-14 13:10: From mu understanding the building is not ready to receive these CRAHS and/or store them inside. Need to confirm the area readiness and the dry-in over areas where these CRAHs will be stored. Going to reach out to QTS on coordinating these for the week of 10/27 from discussions with Layton Supers on estimated timing to receive. / John Capriotti on 2025-10-27 18:10: Starting to coordinate deliveries, pushing for the next two weeks. / Jason Johnston on 2025-11-11 17:11: John owes me 11/11 update / allucent_notes_20251111_182405: John Capriotti on 2025-10-14 13:10: From mu understanding the building is not ready to receive these CRAHS and/or store them inside. Need to confirm the area readiness and the dry-in over areas where these CRAHs will be stored. Going to reach out to QTS on coordinating these for the week of 10/27 from discussions with Layton Supers on estimated timing to receive. / John Capriotti on 2025-10-27 18:10: Starting to coordinate deliveries, pushing for the next two weeks. / Jason Johnston on 2025-11-11 17:11: John owes me 11/11 update / allucent_notes_20251104_160200: John Capriotti on 2025-10-14 13:10: From mu understanding the building is not ready to receive these CRAHS and/or store them inside. Need to confirm the area readiness and the dry-in over areas where these CRAHs will be stored. Going to reach out to QTS on coordinating these for the week of 10/27 from discussions with Layton Supers on estimated timing to receive. / John Capriotti on 2025-10-27 18:10: Starting to coordinate deliveries, pushing for the next two weeks. / allucent_notes_20251028_163138: John Capriotti on 2025-10-14 13:10: From mu understanding the building is not ready to receive these CRAHS and/or store them inside. Need to confirm the area readiness and the dry-in over areas where these CRAHs will be stored. Going to reach out to QTS on coordinating these for the week of 10/27 from discussions with Layton Supers on estimated timing to receive. / John Capriotti on 2025-10-27 18:10: Starting to coordinate deliveries, pushing for the next two weeks. / allucent_notes_20251027_224008: John Capriotti on 2025-10-14 13:10: From mu understanding the building is not ready to receive these CRAHS and/or store them inside. Need to confirm the area readiness and the dry-in over areas where these CRAHs will be stored. Going to reach out to QTS on coordinating these for the week of 10/27 from discussions with Layton Supers on estimated timing to receive. / John Capriotti on 2025-10-27 18:10: Starting to coordinate deliveries, pushing for the next two weeks. / allucent_notes_20251021_145627: John Capriotti on 2025-10-14 13:10: From mu understanding the building is not ready to receive these CRAHS and/or store them inside. Need to confirm the area readiness and the dry-in over areas where these CRAHs will be stored. Going to reach out to QTS on coordinating these for the week of 10/27 from discussions with Layton Supers on estimated timing to receive. / allucent_notes_20251014_152335: John Capriotti on 2025-10-14 13:10: From mu understanding the building is not ready to receive these CRAHS and/or store them inside. Need to confirm the area readiness and the dry-in over areas where these CRAHs will be stored. Going to reach out to QTS on coordinating these for the week of 10/27 from discussions with Layton Supers on estimated timing to receive. / allucent_notes: 2025-10-14 13:10 - User: John Capriotti - Date Added: 2025-10-14 13:10 - Note: From mu understanding the building is not ready to receive these CRAHS and/or store them inside. Need to confirm the area readiness and the dry-in over areas where these CRAHs
- QTS-33941: allucent_notes_20251202_153722: John Capriotti on 2025-10-14 13:10: From mu understanding the building is not ready to receive these CRAHS and/or store them inside. Need to confirm the area readiness and the dry-in over areas where these CRAHs will be stored. Going to reach out to QTS on coordinating these for the week of 10/27 from discussions with Layton Supers on estimated timing to receive. / John Capriotti on 2025-10-27 18:10: Starting to coordinate deliveries, pushing for the next two weeks. / Jason Johnston on 2025-11-11 17:11: John owes me 11/11 update / John Capriotti on 2025-12-02 12:13: Received on 12/2 / allucent_notes_20251118_192630: John Capriotti on 2025-10-14 13:10: From mu understanding the building is not ready to receive these CRAHS and/or store them inside. Need to confirm the area readiness and the dry-in over areas where these CRAHs will be stored. Going to reach out to QTS on coordinating these for the week of 10/27 from discussions with Layton Supers on estimated timing to receive. / John Capriotti on 2025-10-27 18:10: Starting to coordinate deliveries, pushing for the next two weeks. / Jason Johnston on 2025-11-11 17:11: John owes me 11/11 update / allucent_notes_20251111_182405: John Capriotti on 2025-10-14 13:10: From mu understanding the building is not ready to receive these CRAHS and/or store them inside. Need to confirm the area readiness and the dry-in over areas where these CRAHs will be stored. Going to reach out to QTS on coordinating these for the week of 10/27 from discussions with Layton Supers on estimated timing to receive. / John Capriotti on 2025-10-27 18:10: Starting to coordinate deliveries, pushing for the next two weeks. / Jason Johnston on 2025-11-11 17:11: John owes me 11/11 update / allucent_notes_20251104_160200: John Capriotti on 2025-10-14 13:10: From mu understanding the building is not ready to receive these CRAHS and/or store them inside. Need to confirm the area readiness and the dry-in over areas where these CRAHs will be stored. Going to reach out to QTS on coordinating these for the week of 10/27 from discussions with Layton Supers on estimated timing to receive. / John Capriotti on 2025-10-27 18:10: Starting to coordinate deliveries, pushing for the next two weeks. / allucent_notes_20251028_163138: John Capriotti on 2025-10-14 13:10: From mu understanding the building is not ready to receive these CRAHS and/or store them inside. Need to confirm the area readiness and the dry-in over areas where these CRAHs will be stored. Going to reach out to QTS on coordinating these for the week of 10/27 from discussions with Layton Supers on estimated timing to receive. / John Capriotti on 2025-10-27 18:10: Starting to coordinate deliveries, pushing for the next two weeks. / allucent_notes_20251027_224008: John Capriotti on 2025-10-14 13:10: From mu understanding the building is not ready to receive these CRAHS and/or store them inside. Need to confirm the area readiness and the dry-in over areas where these CRAHs will be stored. Going to reach out to QTS on coordinating these for the week of 10/27 from discussions with Layton Supers on estimated timing to receive. / John Capriotti on 2025-10-27 18:10: Starting to coordinate deliveries, pushing for the next two weeks. / allucent_notes_20251021_145627: John Capriotti on 2025-10-14 13:10: From mu understanding the building is not ready to receive these CRAHS and/or store them inside. Need to confirm the area readiness and the dry-in over areas where these CRAHs will be stored. Going to reach out to QTS on coordinating these for the week of 10/27 from discussions with Layton Supers on estimated timing to receive. / allucent_notes_20251014_152335: John Capriotti on 2025-10-14 13:10: From mu understanding the building is not ready to receive these CRAHS and/or store them inside. Need to confirm the area readiness and the dry-in over areas where these CRAHs will be stored. Going to reach out to QTS on coordinating these for the week of 10/27 from discussions with Layton Supers on estimated timing to receive. / allucent_notes: 2025-10-14 13:10 - User: John Capriotti - Date Added: 2025-10-14 13:10 - Note: From mu understanding the building is not ready to receive these CRAHS and/or store them inside. Need to confirm the area readiness and the dry-in over areas where these CRAHs
- QTS-33951: allucent_notes_20251202_153722: John Capriotti on 2025-10-14 13:10: From mu understanding the building is not ready to receive these CRAHS and/or store them inside. Need to confirm the area readiness and the dry-in over areas where these CRAHs will be stored. Going to reach out to QTS on coordinating these for the week of 10/27 from discussions with Layton Supers on estimated timing to receive. / John Capriotti on 2025-10-27 18:10: Starting to coordinate deliveries, pushing for the next two weeks. / Jason Johnston on 2025-11-11 17:11: John owes me 11/11 update / John Capriotti on 2025-12-02 12:13: Received on 12/2 / allucent_notes_20251118_192630: John Capriotti on 2025-10-14 13:10: From mu understanding the building is not ready to receive these CRAHS and/or store them inside. Need to confirm the area readiness and the dry-in over areas where these CRAHs will be stored. Going to reach out to QTS on coordinating these for the week of 10/27 from discussions with Layton Supers on estimated timing to receive. / John Capriotti on 2025-10-27 18:10: Starting to coordinate deliveries, pushing for the next two weeks. / Jason Johnston on 2025-11-11 17:11: John owes me 11/11 update / allucent_notes_20251111_182405: John Capriotti on 2025-10-14 13:10: From mu understanding the building is not ready to receive these CRAHS and/or store them inside. Need to confirm the area readiness and the dry-in over areas where these CRAHs will be stored. Going to reach out to QTS on coordinating these for the week of 10/27 from discussions with Layton Supers on estimated timing to receive. / John Capriotti on 2025-10-27 18:10: Starting to coordinate deliveries, pushing for the next two weeks. / Jason Johnston on 2025-11-11 17:11: John owes me 11/11 update / allucent_notes_20251104_160200: John Capriotti on 2025-10-14 13:10: From mu understanding the building is not ready to receive these CRAHS and/or store them inside. Need to confirm the area readiness and the dry-in over areas where these CRAHs will be stored. Going to reach out to QTS on coordinating these for the week of 10/27 from discussions with Layton Supers on estimated timing to receive. / John Capriotti on 2025-10-27 18:10: Starting to coordinate deliveries, pushing for the next two weeks. / allucent_notes_20251028_163138: John Capriotti on 2025-10-14 13:10: From mu understanding the building is not ready to receive these CRAHS and/or store them inside. Need to confirm the area readiness and the dry-in over areas where these CRAHs will be stored. Going to reach out to QTS on coordinating these for the week of 10/27 from discussions with Layton Supers on estimated timing to receive. / John Capriotti on 2025-10-27 18:10: Starting to coordinate deliveries, pushing for the next two weeks. / allucent_notes_20251027_224008: John Capriotti on 2025-10-14 13:10: From mu understanding the building is not ready to receive these CRAHS and/or store them inside. Need to confirm the area readiness and the dry-in over areas where these CRAHs will be stored. Going to reach out to QTS on coordinating these for the week of 10/27 from discussions with Layton Supers on estimated timing to receive. / John Capriotti on 2025-10-27 18:10: Starting to coordinate deliveries, pushing for the next two weeks. / allucent_notes_20251021_145627: John Capriotti on 2025-10-14 13:10: From mu understanding the building is not ready to receive these CRAHS and/or store them inside. Need to confirm the area readiness and the dry-in over areas where these CRAHs will be stored. Going to reach out to QTS on coordinating these for the week of 10/27 from discussions with Layton Supers on estimated timing to receive. / allucent_notes_20251014_152335: John Capriotti on 2025-10-14 13:10: From mu understanding the building is not ready to receive these CRAHS and/or store them inside. Need to confirm the area readiness and the dry-in over areas where these CRAHs will be stored. Going to reach out to QTS on coordinating these for the week of 10/27 from discussions with Layton Supers on estimated timing to receive. / allucent_notes: 2025-10-14 13:10 - User: John Capriotti - Date Added: 2025-10-14 13:10 - Note: From mu understanding the building is not ready to receive these CRAHS and/or store them inside. Need to confirm the area readiness and the dry-in over areas where these CRAHs
- QTS-33961: allucent_notes_20251202_153722: John Capriotti on 2025-10-14 13:10: From mu understanding the building is not ready to receive these CRAHS and/or store them inside. Need to confirm the area readiness and the dry-in over areas where these CRAHs will be stored. Going to reach out to QTS on coordinating these for the week of 10/27 from discussions with Layton Supers on estimated timing to receive. / John Capriotti on 2025-10-27 18:10: Starting to coordinate deliveries, pushing for the next two weeks. / Jason Johnston on 2025-11-11 17:11: John owes me 11/11 update / John Capriotti on 2025-12-02 12:13: Received on 12/2 / allucent_notes_20251118_192630: John Capriotti on 2025-10-14 13:10: From mu understanding the building is not ready to receive these CRAHS and/or store them inside. Need to confirm the area readiness and the dry-in over areas where these CRAHs will be stored. Going to reach out to QTS on coordinating these for the week of 10/27 from discussions with Layton Supers on estimated timing to receive. / John Capriotti on 2025-10-27 18:10: Starting to coordinate deliveries, pushing for the next two weeks. / Jason Johnston on 2025-11-11 17:11: John owes me 11/11 update / allucent_notes_20251111_182405: John Capriotti on 2025-10-14 13:10: From mu understanding the building is not ready to receive these CRAHS and/or store them inside. Need to confirm the area readiness and the dry-in over areas where these CRAHs will be stored. Going to reach out to QTS on coordinating these for the week of 10/27 from discussions with Layton Supers on estimated timing to receive. / John Capriotti on 2025-10-27 18:10: Starting to coordinate deliveries, pushing for the next two weeks. / Jason Johnston on 2025-11-11 17:11: John owes me 11/11 update / allucent_notes_20251104_160200: John Capriotti on 2025-10-14 13:10: From mu understanding the building is not ready to receive these CRAHS and/or store them inside. Need to confirm the area readiness and the dry-in over areas where these CRAHs will be stored. Going to reach out to QTS on coordinating these for the week of 10/27 from discussions with Layton Supers on estimated timing to receive. / John Capriotti on 2025-10-27 18:10: Starting to coordinate deliveries, pushing for the next two weeks. / allucent_notes_20251028_163138: John Capriotti on 2025-10-14 13:10: From mu understanding the building is not ready to receive these CRAHS and/or store them inside. Need to confirm the area readiness and the dry-in over areas where these CRAHs will be stored. Going to reach out to QTS on coordinating these for the week of 10/27 from discussions with Layton Supers on estimated timing to receive. / John Capriotti on 2025-10-27 18:10: Starting to coordinate deliveries, pushing for the next two weeks. / allucent_notes_20251027_224008: John Capriotti on 2025-10-14 13:10: From mu understanding the building is not ready to receive these CRAHS and/or store them inside. Need to confirm the area readiness and the dry-in over areas where these CRAHs will be stored. Going to reach out to QTS on coordinating these for the week of 10/27 from discussions with Layton Supers on estimated timing to receive. / John Capriotti on 2025-10-27 18:10: Starting to coordinate deliveries, pushing for the next two weeks. / allucent_notes_20251021_145627: John Capriotti on 2025-10-14 13:10: From mu understanding the building is not ready to receive these CRAHS and/or store them inside. Need to confirm the area readiness and the dry-in over areas where these CRAHs will be stored. Going to reach out to QTS on coordinating these for the week of 10/27 from discussions with Layton Supers on estimated timing to receive. / allucent_notes_20251014_152335: John Capriotti on 2025-10-14 13:10: From mu understanding the building is not ready to receive these CRAHS and/or store them inside. Need to confirm the area readiness and the dry-in over areas where these CRAHs will be stored. Going to reach out to QTS on coordinating these for the week of 10/27 from discussions with Layton Supers on estimated timing to receive. / allucent_notes: 2025-10-14 13:10 - User: John Capriotti - Date Added: 2025-10-14 13:10 - Note: From mu understanding the building is not ready to receive these CRAHS and/or store them inside. Need to confirm the area readiness and the dry-in over areas where these CRAHs
- QTS-33971: allucent_notes_20251202_153722: John Capriotti on 2025-10-14 13:10: From mu understanding the building is not ready to receive these CRAHS and/or store them inside. Need to confirm the area readiness and the dry-in over areas where these CRAHs will be stored. Going to reach out to QTS on coordinating these for the week of 10/27 from discussions with Layton Supers on estimated timing to receive. / John Capriotti on 2025-10-27 18:10: Starting to coordinate deliveries, pushing for the next two weeks. / Jason Johnston on 2025-11-11 17:11: John owes me 11/11 update / John Capriotti on 2025-12-02 12:13: Received on 12/2 / allucent_notes_20251118_192630: John Capriotti on 2025-10-14 13:10: From mu understanding the building is not ready to receive these CRAHS and/or store them inside. Need to confirm the area readiness and the dry-in over areas where these CRAHs will be stored. Going to reach out to QTS on coordinating these for the week of 10/27 from discussions with Layton Supers on estimated timing to receive. / John Capriotti on 2025-10-27 18:10: Starting to coordinate deliveries, pushing for the next two weeks. / Jason Johnston on 2025-11-11 17:11: John owes me 11/11 update / allucent_notes_20251111_182405: John Capriotti on 2025-10-14 13:10: From mu understanding the building is not ready to receive these CRAHS and/or store them inside. Need to confirm the area readiness and the dry-in over areas where these CRAHs will be stored. Going to reach out to QTS on coordinating these for the week of 10/27 from discussions with Layton Supers on estimated timing to receive. / John Capriotti on 2025-10-27 18:10: Starting to coordinate deliveries, pushing for the next two weeks. / Jason Johnston on 2025-11-11 17:11: John owes me 11/11 update / allucent_notes_20251104_160200: John Capriotti on 2025-10-14 13:10: From mu understanding the building is not ready to receive these CRAHS and/or store them inside. Need to confirm the area readiness and the dry-in over areas where these CRAHs will be stored. Going to reach out to QTS on coordinating these for the week of 10/27 from discussions with Layton Supers on estimated timing to receive. / John Capriotti on 2025-10-27 18:10: Starting to coordinate deliveries, pushing for the next two weeks. / allucent_notes_20251028_163138: John Capriotti on 2025-10-14 13:10: From mu understanding the building is not ready to receive these CRAHS and/or store them inside. Need to confirm the area readiness and the dry-in over areas where these CRAHs will be stored. Going to reach out to QTS on coordinating these for the week of 10/27 from discussions with Layton Supers on estimated timing to receive. / John Capriotti on 2025-10-27 18:10: Starting to coordinate deliveries, pushing for the next two weeks. / allucent_notes_20251027_224008: John Capriotti on 2025-10-14 13:10: From mu understanding the building is not ready to receive these CRAHS and/or store them inside. Need to confirm the area readiness and the dry-in over areas where these CRAHs will be stored. Going to reach out to QTS on coordinating these for the week of 10/27 from discussions with Layton Supers on estimated timing to receive. / John Capriotti on 2025-10-27 18:10: Starting to coordinate deliveries, pushing for the next two weeks. / allucent_notes_20251021_145627: John Capriotti on 2025-10-14 13:10: From mu understanding the building is not ready to receive these CRAHS and/or store them inside. Need to confirm the area readiness and the dry-in over areas where these CRAHs will be stored. Going to reach out to QTS on coordinating these for the week of 10/27 from discussions with Layton Supers on estimated timing to receive. / allucent_notes_20251014_152335: John Capriotti on 2025-10-14 13:10: From mu understanding the building is not ready to receive these CRAHS and/or store them inside. Need to confirm the area readiness and the dry-in over areas where these CRAHs will be stored. Going to reach out to QTS on coordinating these for the week of 10/27 from discussions with Layton Supers on estimated timing to receive. / allucent_notes: 2025-10-14 13:10 - User: John Capriotti - Date Added: 2025-10-14 13:10 - Note: From mu understanding the building is not ready to receive these CRAHS and/or store them inside. Need to confirm the area readiness and the dry-in over areas where these CRAHs
- QTS-33981: allucent_notes_20251202_153722: John Capriotti on 2025-10-14 13:10: From mu understanding the building is not ready to receive these CRAHS and/or store them inside. Need to confirm the area readiness and the dry-in over areas where these CRAHs will be stored. Going to reach out to QTS on coordinating these for the week of 10/27 from discussions with Layton Supers on estimated timing to receive. / John Capriotti on 2025-10-27 18:10: Starting to coordinate deliveries, pushing for the next two weeks. / Jason Johnston on 2025-11-11 17:11: John owes me 11/11 update / John Capriotti on 2025-12-02 12:13: Received on 12/2 / allucent_notes_20251118_192630: John Capriotti on 2025-10-14 13:10: From mu understanding the building is not ready to receive these CRAHS and/or store them inside. Need to confirm the area readiness and the dry-in over areas where these CRAHs will be stored. Going to reach out to QTS on coordinating these for the week of 10/27 from discussions with Layton Supers on estimated timing to receive. / John Capriotti on 2025-10-27 18:10: Starting to coordinate deliveries, pushing for the next two weeks. / Jason Johnston on 2025-11-11 17:11: John owes me 11/11 update / allucent_notes_20251111_182405: John Capriotti on 2025-10-14 13:10: From mu understanding the building is not ready to receive these CRAHS and/or store them inside. Need to confirm the area readiness and the dry-in over areas where these CRAHs will be stored. Going to reach out to QTS on coordinating these for the week of 10/27 from discussions with Layton Supers on estimated timing to receive. / John Capriotti on 2025-10-27 18:10: Starting to coordinate deliveries, pushing for the next two weeks. / Jason Johnston on 2025-11-11 17:11: John owes me 11/11 update / allucent_notes_20251104_160200: John Capriotti on 2025-10-14 13:10: From mu understanding the building is not ready to receive these CRAHS and/or store them inside. Need to confirm the area readiness and the dry-in over areas where these CRAHs will be stored. Going to reach out to QTS on coordinating these for the week of 10/27 from discussions with Layton Supers on estimated timing to receive. / John Capriotti on 2025-10-27 18:10: Starting to coordinate deliveries, pushing for the next two weeks. / allucent_notes_20251028_163138: John Capriotti on 2025-10-14 13:10: From mu understanding the building is not ready to receive these CRAHS and/or store them inside. Need to confirm the area readiness and the dry-in over areas where these CRAHs will be stored. Going to reach out to QTS on coordinating these for the week of 10/27 from discussions with Layton Supers on estimated timing to receive. / John Capriotti on 2025-10-27 18:10: Starting to coordinate deliveries, pushing for the next two weeks. / allucent_notes_20251027_224008: John Capriotti on 2025-10-14 13:10: From mu understanding the building is not ready to receive these CRAHS and/or store them inside. Need to confirm the area readiness and the dry-in over areas where these CRAHs will be stored. Going to reach out to QTS on coordinating these for the week of 10/27 from discussions with Layton Supers on estimated timing to receive. / John Capriotti on 2025-10-27 18:10: Starting to coordinate deliveries, pushing for the next two weeks. / allucent_notes_20251021_145627: John Capriotti on 2025-10-14 13:10: From mu understanding the building is not ready to receive these CRAHS and/or store them inside. Need to confirm the area readiness and the dry-in over areas where these CRAHs will be stored. Going to reach out to QTS on coordinating these for the week of 10/27 from discussions with Layton Supers on estimated timing to receive. / allucent_notes_20251014_152335: John Capriotti on 2025-10-14 13:10: From mu understanding the building is not ready to receive these CRAHS and/or store them inside. Need to confirm the area readiness and the dry-in over areas where these CRAHs will be stored. Going to reach out to QTS on coordinating these for the week of 10/27 from discussions with Layton Supers on estimated timing to receive. / allucent_notes: 2025-10-14 13:10 - User: John Capriotti - Date Added: 2025-10-14 13:10 - Note: From mu understanding the building is not ready to receive these CRAHS and/or store them inside. Need to confirm the area readiness and the dry-in over areas where these CRAHs
- QTS-33991: allucent_notes_20251209_203830: John Capriotti on 2025-10-14 13:10: From mu understanding the building is not ready to receive these CRAHS and/or store them inside. Need to confirm the area readiness and the dry-in over areas where these CRAHs will be stored. Going to reach out to QTS on coordinating these for the week of 10/27 from discussions with Layton Supers on estimated timing to receive. / John Capriotti on 2025-10-27 18:10: Starting to coordinate deliveries, pushing for the next two weeks. / Jason Johnston on 2025-11-11 17:11: John owes me 11/11 update / John Capriotti on 2025-12-02 12:15: To be delivered 12/3 / allucent_notes_20251202_153722: John Capriotti on 2025-10-14 13:10: From mu understanding the building is not ready to receive these CRAHS and/or store them inside. Need to confirm the area readiness and the dry-in over areas where these CRAHs will be stored. Going to reach out to QTS on coordinating these for the week of 10/27 from discussions with Layton Supers on estimated timing to receive. / John Capriotti on 2025-10-27 18:10: Starting to coordinate deliveries, pushing for the next two weeks. / Jason Johnston on 2025-11-11 17:11: John owes me 11/11 update / John Capriotti on 2025-12-02 12:15: To be delivered 12/3 / allucent_notes_20251118_192630: John Capriotti on 2025-10-14 13:10: From mu understanding the building is not ready to receive these CRAHS and/or store them inside. Need to confirm the area readiness and the dry-in over areas where these CRAHs will be stored. Going to reach out to QTS on coordinating these for the week of 10/27 from discussions with Layton Supers on estimated timing to receive. / John Capriotti on 2025-10-27 18:10: Starting to coordinate deliveries, pushing for the next two weeks. / Jason Johnston on 2025-11-11 17:11: John owes me 11/11 update / allucent_notes_20251111_182405: John Capriotti on 2025-10-14 13:10: From mu understanding the building is not ready to receive these CRAHS and/or store them inside. Need to confirm the area readiness and the dry-in over areas where these CRAHs will be stored. Going to reach out to QTS on coordinating these for the week of 10/27 from discussions with Layton Supers on estimated timing to receive. / John Capriotti on 2025-10-27 18:10: Starting to coordinate deliveries, pushing for the next two weeks. / Jason Johnston on 2025-11-11 17:11: John owes me 11/11 update / allucent_notes_20251104_160200: John Capriotti on 2025-10-14 13:10: From mu understanding the building is not ready to receive these CRAHS and/or store them inside. Need to confirm the area readiness and the dry-in over areas where these CRAHs will be stored. Going to reach out to QTS on coordinating these for the week of 10/27 from discussions with Layton Supers on estimated timing to receive. / John Capriotti on 2025-10-27 18:10: Starting to coordinate deliveries, pushing for the next two weeks. / allucent_notes_20251028_163138: John Capriotti on 2025-10-14 13:10: From mu understanding the building is not ready to receive these CRAHS and/or store them inside. Need to confirm the area readiness and the dry-in over areas where these CRAHs will be stored. Going to reach out to QTS on coordinating these for the week of 10/27 from discussions with Layton Supers on estimated timing to receive. / John Capriotti on 2025-10-27 18:10: Starting to coordinate deliveries, pushing for the next two weeks. / allucent_notes_20251027_224008: John Capriotti on 2025-10-14 13:10: From mu understanding the building is not ready to receive these CRAHS and/or store them inside. Need to confirm the area readiness and the dry-in over areas where these CRAHs will be stored. Going to reach out to QTS on coordinating these for the week of 10/27 from discussions with Layton Supers on estimated timing to receive. / John Capriotti on 2025-10-27 18:10: Starting to coordinate deliveries, pushing for the next two weeks. / allucent_notes_20251021_145627: John Capriotti on 2025-10-14 13:10: From mu understanding the building is not ready to receive these CRAHS and/or store them inside. Need to confirm the area readiness and the dry-in over areas where these CRAHs will be stored. Going to reach out to QTS on coordinating these for the week of 10/27 from discussions with Layton Supers on estimated timing to receive. / allucent_notes_20251014_152335: John Capriotti on 2025-10-14 13:10: From mu understanding the building is not ready to receive these CRAHS and/or store them inside. Need to confirm the area readiness and the dry-in over areas where these CRAHs will be stored. Going to reach out to QTS on coordinating these for the week of 10/27 from discussions with Layton Supers on estimated timing to receive. / allucent_notes: 2025-10-14 13:10 - User: John Capriotti - Date Added: 2025-10-14 13:10 - Note: From mu understanding the building is not ready to receive these CRAHS and/or store them inside. Need to confirm the area readiness and the dry-in over areas where these CRAHs
- QTS-34001: allucent_notes_20251209_203830: John Capriotti on 2025-10-14 13:10: From mu understanding the building is not ready to receive these CRAHS and/or store them inside. Need to confirm the area readiness and the dry-in over areas where these CRAHs will be stored. Going to reach out to QTS on coordinating these for the week of 10/27 from discussions with Layton Supers on estimated timing to receive. / John Capriotti on 2025-10-27 18:10: Starting to coordinate deliveries, pushing for the next two weeks. / Jason Johnston on 2025-11-11 17:11: John owes me 11/11 update / John Capriotti on 2025-12-02 12:15: To be delivered 12/3 / allucent_notes_20251202_153722: John Capriotti on 2025-10-14 13:10: From mu understanding the building is not ready to receive these CRAHS and/or store them inside. Need to confirm the area readiness and the dry-in over areas where these CRAHs will be stored. Going to reach out to QTS on coordinating these for the week of 10/27 from discussions with Layton Supers on estimated timing to receive. / John Capriotti on 2025-10-27 18:10: Starting to coordinate deliveries, pushing for the next two weeks. / Jason Johnston on 2025-11-11 17:11: John owes me 11/11 update / John Capriotti on 2025-12-02 12:15: To be delivered 12/3 / allucent_notes_20251118_192630: John Capriotti on 2025-10-14 13:10: From mu understanding the building is not ready to receive these CRAHS and/or store them inside. Need to confirm the area readiness and the dry-in over areas where these CRAHs will be stored. Going to reach out to QTS on coordinating these for the week of 10/27 from discussions with Layton Supers on estimated timing to receive. / John Capriotti on 2025-10-27 18:10: Starting to coordinate deliveries, pushing for the next two weeks. / Jason Johnston on 2025-11-11 17:11: John owes me 11/11 update / allucent_notes_20251111_182405: John Capriotti on 2025-10-14 13:10: From mu understanding the building is not ready to receive these CRAHS and/or store them inside. Need to confirm the area readiness and the dry-in over areas where these CRAHs will be stored. Going to reach out to QTS on coordinating these for the week of 10/27 from discussions with Layton Supers on estimated timing to receive. / John Capriotti on 2025-10-27 18:10: Starting to coordinate deliveries, pushing for the next two weeks. / Jason Johnston on 2025-11-11 17:11: John owes me 11/11 update / allucent_notes_20251104_160200: John Capriotti on 2025-10-14 13:10: From mu understanding the building is not ready to receive these CRAHS and/or store them inside. Need to confirm the area readiness and the dry-in over areas where these CRAHs will be stored. Going to reach out to QTS on coordinating these for the week of 10/27 from discussions with Layton Supers on estimated timing to receive. / John Capriotti on 2025-10-27 18:10: Starting to coordinate deliveries, pushing for the next two weeks. / allucent_notes_20251028_163138: John Capriotti on 2025-10-14 13:10: From mu understanding the building is not ready to receive these CRAHS and/or store them inside. Need to confirm the area readiness and the dry-in over areas where these CRAHs will be stored. Going to reach out to QTS on coordinating these for the week of 10/27 from discussions with Layton Supers on estimated timing to receive. / John Capriotti on 2025-10-27 18:10: Starting to coordinate deliveries, pushing for the next two weeks. / allucent_notes_20251027_224008: John Capriotti on 2025-10-14 13:10: From mu understanding the building is not ready to receive these CRAHS and/or store them inside. Need to confirm the area readiness and the dry-in over areas where these CRAHs will be stored. Going to reach out to QTS on coordinating these for the week of 10/27 from discussions with Layton Supers on estimated timing to receive. / John Capriotti on 2025-10-27 18:10: Starting to coordinate deliveries, pushing for the next two weeks. / allucent_notes_20251021_145627: John Capriotti on 2025-10-14 13:10: From mu understanding the building is not ready to receive these CRAHS and/or store them inside. Need to confirm the area readiness and the dry-in over areas where these CRAHs will be stored. Going to reach out to QTS on coordinating these for the week of 10/27 from discussions with Layton Supers on estimated timing to receive. / allucent_notes_20251014_152335: John Capriotti on 2025-10-14 13:10: From mu understanding the building is not ready to receive these CRAHS and/or store them inside. Need to confirm the area readiness and the dry-in over areas where these CRAHs will be stored. Going to reach out to QTS on coordinating these for the week of 10/27 from discussions with Layton Supers on estimated timing to receive. / allucent_notes: 2025-10-14 13:10 - User: John Capriotti - Date Added: 2025-10-14 13:10 - Note: From mu understanding the building is not ready to receive these CRAHS and/or store them inside. Need to confirm the area readiness and the dry-in over areas where these CRAHs
- QTS-34011: allucent_notes_20251209_203830: John Capriotti on 2025-10-14 13:10: From mu understanding the building is not ready to receive these CRAHS and/or store them inside. Need to confirm the area readiness and the dry-in over areas where these CRAHs will be stored. Going to reach out to QTS on coordinating these for the week of 10/27 from discussions with Layton Supers on estimated timing to receive. / John Capriotti on 2025-10-27 18:10: Starting to coordinate deliveries, pushing for the next two weeks. / Jason Johnston on 2025-11-11 17:11: John owes me 11/11 update / John Capriotti on 2025-12-02 12:15: To be delivered 12/3 / allucent_notes_20251202_153722: John Capriotti on 2025-10-14 13:10: From mu understanding the building is not ready to receive these CRAHS and/or store them inside. Need to confirm the area readiness and the dry-in over areas where these CRAHs will be stored. Going to reach out to QTS on coordinating these for the week of 10/27 from discussions with Layton Supers on estimated timing to receive. / John Capriotti on 2025-10-27 18:10: Starting to coordinate deliveries, pushing for the next two weeks. / Jason Johnston on 2025-11-11 17:11: John owes me 11/11 update / John Capriotti on 2025-12-02 12:15: To be delivered 12/3 / allucent_notes_20251118_192630: John Capriotti on 2025-10-14 13:10: From mu understanding the building is not ready to receive these CRAHS and/or store them inside. Need to confirm the area readiness and the dry-in over areas where these CRAHs will be stored. Going to reach out to QTS on coordinating these for the week of 10/27 from discussions with Layton Supers on estimated timing to receive. / John Capriotti on 2025-10-27 18:10: Starting to coordinate deliveries, pushing for the next two weeks. / Jason Johnston on 2025-11-11 17:11: John owes me 11/11 update / allucent_notes_20251111_182405: John Capriotti on 2025-10-14 13:10: From mu understanding the building is not ready to receive these CRAHS and/or store them inside. Need to confirm the area readiness and the dry-in over areas where these CRAHs will be stored. Going to reach out to QTS on coordinating these for the week of 10/27 from discussions with Layton Supers on estimated timing to receive. / John Capriotti on 2025-10-27 18:10: Starting to coordinate deliveries, pushing for the next two weeks. / Jason Johnston on 2025-11-11 17:11: John owes me 11/11 update / allucent_notes_20251104_160200: John Capriotti on 2025-10-14 13:10: From mu understanding the building is not ready to receive these CRAHS and/or store them inside. Need to confirm the area readiness and the dry-in over areas where these CRAHs will be stored. Going to reach out to QTS on coordinating these for the week of 10/27 from discussions with Layton Supers on estimated timing to receive. / John Capriotti on 2025-10-27 18:10: Starting to coordinate deliveries, pushing for the next two weeks. / allucent_notes_20251028_163138: John Capriotti on 2025-10-14 13:10: From mu understanding the building is not ready to receive these CRAHS and/or store them inside. Need to confirm the area readiness and the dry-in over areas where these CRAHs will be stored. Going to reach out to QTS on coordinating these for the week of 10/27 from discussions with Layton Supers on estimated timing to receive. / John Capriotti on 2025-10-27 18:10: Starting to coordinate deliveries, pushing for the next two weeks. / allucent_notes_20251027_224008: John Capriotti on 2025-10-14 13:10: From mu understanding the building is not ready to receive these CRAHS and/or store them inside. Need to confirm the area readiness and the dry-in over areas where these CRAHs will be stored. Going to reach out to QTS on coordinating these for the week of 10/27 from discussions with Layton Supers on estimated timing to receive. / John Capriotti on 2025-10-27 18:10: Starting to coordinate deliveries, pushing for the next two weeks. / allucent_notes_20251021_145627: John Capriotti on 2025-10-14 13:10: From mu understanding the building is not ready to receive these CRAHS and/or store them inside. Need to confirm the area readiness and the dry-in over areas where these CRAHs will be stored. Going to reach out to QTS on coordinating these for the week of 10/27 from discussions with Layton Supers on estimated timing to receive. / allucent_notes_20251014_152335: John Capriotti on 2025-10-14 13:10: From mu understanding the building is not ready to receive these CRAHS and/or store them inside. Need to confirm the area readiness and the dry-in over areas where these CRAHs will be stored. Going to reach out to QTS on coordinating these for the week of 10/27 from discussions with Layton Supers on estimated timing to receive. / allucent_notes: 2025-10-14 13:10 - User: John Capriotti - Date Added: 2025-10-14 13:10 - Note: From mu understanding the building is not ready to receive these CRAHS and/or store them inside. Need to confirm the area readiness and the dry-in over areas where these CRAHs
- QTS-34021: allucent_notes_20251209_203830: John Capriotti on 2025-10-14 13:10: From mu understanding the building is not ready to receive these CRAHS and/or store them inside. Need to confirm the area readiness and the dry-in over areas where these CRAHs will be stored. Going to reach out to QTS on coordinating these for the week of 10/27 from discussions with Layton Supers on estimated timing to receive. / John Capriotti on 2025-10-27 18:10: Starting to coordinate deliveries, pushing for the next two weeks. / Jason Johnston on 2025-11-11 17:11: John owes me 11/11 update / John Capriotti on 2025-12-02 12:15: To be delivered 12/3 / allucent_notes_20251202_153722: John Capriotti on 2025-10-14 13:10: From mu understanding the building is not ready to receive these CRAHS and/or store them inside. Need to confirm the area readiness and the dry-in over areas where these CRAHs will be stored. Going to reach out to QTS on coordinating these for the week of 10/27 from discussions with Layton Supers on estimated timing to receive. / John Capriotti on 2025-10-27 18:10: Starting to coordinate deliveries, pushing for the next two weeks. / Jason Johnston on 2025-11-11 17:11: John owes me 11/11 update / John Capriotti on 2025-12-02 12:15: To be delivered 12/3 / allucent_notes_20251118_192630: John Capriotti on 2025-10-14 13:10: From mu understanding the building is not ready to receive these CRAHS and/or store them inside. Need to confirm the area readiness and the dry-in over areas where these CRAHs will be stored. Going to reach out to QTS on coordinating these for the week of 10/27 from discussions with Layton Supers on estimated timing to receive. / John Capriotti on 2025-10-27 18:10: Starting to coordinate deliveries, pushing for the next two weeks. / Jason Johnston on 2025-11-11 17:11: John owes me 11/11 update / allucent_notes_20251111_182405: John Capriotti on 2025-10-14 13:10: From mu understanding the building is not ready to receive these CRAHS and/or store them inside. Need to confirm the area readiness and the dry-in over areas where these CRAHs will be stored. Going to reach out to QTS on coordinating these for the week of 10/27 from discussions with Layton Supers on estimated timing to receive. / John Capriotti on 2025-10-27 18:10: Starting to coordinate deliveries, pushing for the next two weeks. / Jason Johnston on 2025-11-11 17:11: John owes me 11/11 update / allucent_notes_20251104_160200: John Capriotti on 2025-10-14 13:10: From mu understanding the building is not ready to receive these CRAHS and/or store them inside. Need to confirm the area readiness and the dry-in over areas where these CRAHs will be stored. Going to reach out to QTS on coordinating these for the week of 10/27 from discussions with Layton Supers on estimated timing to receive. / John Capriotti on 2025-10-27 18:10: Starting to coordinate deliveries, pushing for the next two weeks. / allucent_notes_20251028_163138: John Capriotti on 2025-10-14 13:10: From mu understanding the building is not ready to receive these CRAHS and/or store them inside. Need to confirm the area readiness and the dry-in over areas where these CRAHs will be stored. Going to reach out to QTS on coordinating these for the week of 10/27 from discussions with Layton Supers on estimated timing to receive. / John Capriotti on 2025-10-27 18:10: Starting to coordinate deliveries, pushing for the next two weeks. / allucent_notes_20251027_224008: John Capriotti on 2025-10-14 13:10: From mu understanding the building is not ready to receive these CRAHS and/or store them inside. Need to confirm the area readiness and the dry-in over areas where these CRAHs will be stored. Going to reach out to QTS on coordinating these for the week of 10/27 from discussions with Layton Supers on estimated timing to receive. / John Capriotti on 2025-10-27 18:10: Starting to coordinate deliveries, pushing for the next two weeks. / allucent_notes_20251021_145627: John Capriotti on 2025-10-14 13:10: From mu understanding the building is not ready to receive these CRAHS and/or store them inside. Need to confirm the area readiness and the dry-in over areas where these CRAHs will be stored. Going to reach out to QTS on coordinating these for the week of 10/27 from discussions with Layton Supers on estimated timing to receive. / allucent_notes_20251014_152335: John Capriotti on 2025-10-14 13:10: From mu understanding the building is not ready to receive these CRAHS and/or store them inside. Need to confirm the area readiness and the dry-in over areas where these CRAHs will be stored. Going to reach out to QTS on coordinating these for the week of 10/27 from discussions with Layton Supers on estimated timing to receive. / allucent_notes: 2025-10-14 13:10 - User: John Capriotti - Date Added: 2025-10-14 13:10 - Note: From mu understanding the building is not ready to receive these CRAHS and/or store them inside. Need to confirm the area readiness and the dry-in over areas where these CRAHs
- QTS-22241: allucent_notes_20251216_165335: Jason Johnston on 2025-10-28 16:10: Working on crane sequencing for equipment. / John Capriotti on 2025-11-04 15:11: From my understanding we are waiting on a few walls to be finished, meeting tomorrow with Belaire to discuss when and how many to bring in each day. / Jason Johnston on 2025-12-16 15:16: not yet / allucent_notes_20251209_203830: Jason Johnston on 2025-10-28 16:10: Working on crane sequencing for equipment. / John Capriotti on 2025-11-04 15:11: From my understanding we are waiting on a few walls to be finished, meeting tomorrow with Belaire to discuss when and how many to bring in each day. / allucent_notes_20251202_153722: Jason Johnston on 2025-10-28 16:10: Working on crane sequencing for equipment. / John Capriotti on 2025-11-04 15:11: From my understanding we are waiting on a few walls to be finished, meeting tomorrow with Belaire to discuss when and how many to bring in each day. / allucent_notes_20251118_192630: Jason Johnston on 2025-10-28 16:10: Working on crane sequencing for equipment. / John Capriotti on 2025-11-04 15:11: From my understanding we are waiting on a few walls to be finished, meeting tomorrow with Belaire to discuss when and how many to bring in each day. / allucent_notes_20251111_182405: Jason Johnston on 2025-10-28 16:10: Working on crane sequencing for equipment. / John Capriotti on 2025-11-04 15:11: From my understanding we are waiting on a few walls to be finished, meeting tomorrow with Belaire to discuss when and how many to bring in each day. / allucent_notes_20251104_160200: Jason Johnston on 2025-10-28 16:10: Working on crane sequencing for equipment. / John Capriotti on 2025-11-04 15:11: From my understanding we are waiting on a few walls to be finished, meeting tomorrow with Belaire to discuss when and how many to bring in each day. / allucent_notes_20251028_163138: Jason Johnston on 2025-10-28 16:10: Working on crane sequencing for equipment. / allucent_notes_20251230_164549: Jason Johnston on 2025-10-28 16:10: Working on crane sequencing for equipment. / John Capriotti on 2025-11-04 15:11: From my understanding we are waiting on a few walls to be finished, meeting tomorrow with Belaire to discuss when and how many to bring in each day. / Jason Johnston on 2025-12-16 15:16: not yet / John Capriotti on 2025-12-30T15:15:54.475Z: Actualizing ROJ: DOAS delivered to QAE yard on 10/2 - technically have it just not delivered to the site from QAE yard until I can confirm set date / allucent_notes: 2025-10-28 16:10 - User: Jason Johnston - Date Added: 2025-10-28 16:10 - Note: Working on crane sequencing for equipment. / 2025-11-04 15:11 - User: John Capriotti - Date Added: 2025-11-04 15:11 - Note: From my understanding we are waiting on a few walls
- QTS-22251: allucent_notes_20251216_165335: Jason Johnston on 2025-10-28 16:10: Working on crane sequencing for equipment. / John Capriotti on 2025-11-04 15:11: Need to determine when we are setting this, it is sitting in the QAE Yard / Jason Johnston on 2025-11-11 17:11: John owes me 11/11 update / Jason Johnston on 2025-12-16 15:16: not yet / allucent_notes_20251209_203830: Jason Johnston on 2025-10-28 16:10: Working on crane sequencing for equipment. / John Capriotti on 2025-11-04 15:11: Need to determine when we are setting this, it is sitting in the QAE Yard / Jason Johnston on 2025-11-11 17:11: John owes me 11/11 update / allucent_notes_20251202_153722: Jason Johnston on 2025-10-28 16:10: Working on crane sequencing for equipment. / John Capriotti on 2025-11-04 15:11: Need to determine when we are setting this, it is sitting in the QAE Yard / Jason Johnston on 2025-11-11 17:11: John owes me 11/11 update / allucent_notes_20251118_192630: Jason Johnston on 2025-10-28 16:10: Working on crane sequencing for equipment. / John Capriotti on 2025-11-04 15:11: Need to determine when we are setting this, it is sitting in the QAE Yard / Jason Johnston on 2025-11-11 17:11: John owes me 11/11 update / allucent_notes_20251111_182405: Jason Johnston on 2025-10-28 16:10: Working on crane sequencing for equipment. / John Capriotti on 2025-11-04 15:11: Need to determine when we are setting this, it is sitting in the QAE Yard / Jason Johnston on 2025-11-11 17:11: John owes me 11/11 update / allucent_notes_20251104_160200: Jason Johnston on 2025-10-28 16:10: Working on crane sequencing for equipment. / John Capriotti on 2025-11-04 15:11: Need to determine when we are setting this, it is sitting in the QAE Yard / allucent_notes_20251028_163138: Jason Johnston on 2025-10-28 16:10: Working on crane sequencing for equipment. / allucent_notes_20251230_164549: Jason Johnston on 2025-10-28 16:10: Working on crane sequencing for equipment. / John Capriotti on 2025-11-04 15:11: Need to determine when we are setting this, it is sitting in the QAE Yard / Jason Johnston on 2025-11-11 17:11: John owes me 11/11 update / Jason Johnston on 2025-12-16 15:16: not yet / John Capriotti on 2025-12-30T15:16:01.787Z: Actualizing ROJ: DOAS delivered to QAE yard on 10/2 - technically have it just not delivered to the site from QAE yard until I can confirm set date / allucent_notes: 2025-10-28 16:10 - User: Jason Johnston - Date Added: 2025-10-28 16:10 - Note: Working on crane sequencing for equipment. / 2025-11-04 15:11 - User: John Capriotti - Date Added: 2025-11-04 15:11 - Note: Need to determine when we are setting this, it is s
- QTS-34031: allucent_notes_20251209_203830: Jason Johnston on 2025-11-11 17:11: John owes me 11/11 update / John Capriotti on 2025-12-02 12:15: To be delivered 12/3 / allucent_notes_20251202_153722: Jason Johnston on 2025-11-11 17:11: John owes me 11/11 update / John Capriotti on 2025-12-02 12:15: To be delivered 12/3 / allucent_notes_20251118_192630: Jason Johnston on 2025-11-11 17:11: John owes me 11/11 update / allucent_notes_20251111_182405: Jason Johnston on 2025-11-11 17:11: John owes me 11/11 / update / allucent_notes: 2025-11-11 17:11 - User: Jason Johnston - Date Added: 2025-11-11 17:11 - Note: John owes me 11/11 update / 2025-12-02 12:15 - User: John Capriotti - Date Added: 2025-12-02 12:15 - Note: To be delivered 12/3
- QTS-34041: allucent_notes_20251209_203830: Jason Johnston on 2025-11-11 17:11: John owes 11/11 update / John Capriotti on 2025-12-02 12:15: To be delivered 12/3 / allucent_notes_20251202_153722: Jason Johnston on 2025-11-11 17:11: John owes 11/11 update / John Capriotti on 2025-12-02 12:15: To be delivered 12/3 / allucent_notes_20251118_192630: Jason Johnston on 2025-11-11 17:11: John owes 11/11 update / allucent_notes_20251111_182405: Jason Johnston on 2025-11-11 17:11: John owes 11/11 update / allucent_notes: 2025-11-11 17:11 - User: Jason Johnston - Date Added: 2025-11-11 17:11 - Note: John owes 11/11 update / 2025-12-02 12:15 - User: John Capriotti - Date Added: 2025-12-02 12:15 - Note: To be delivered 12/3
- QTS-34051: allucent_notes_20251209_203830: Jason Johnston on 2025-11-11 17:11: John owes 11/11 update / John Capriotti on 2025-12-02 12:16: To be delivered 12/4 / allucent_notes_20251202_153722: Jason Johnston on 2025-11-11 17:11: John owes 11/11 update / John Capriotti on 2025-12-02 12:16: To be delivered 12/4 / allucent_notes_20251118_192630: Jason Johnston on 2025-11-11 17:11: John owes 11/11 update / allucent_notes_20251111_182405: Jason Johnston on 2025-11-11 17:11: John owes 11/11 update / allucent_notes: 2025-11-11 17:11 - User: Jason Johnston - Date Added: 2025-11-11 17:11 - Note: John owes 11/11 update / 2025-12-02 12:16 - User: John Capriotti - Date Added: 2025-12-02 12:16 - Note: To be delivered 12/4
- QTS-34061: allucent_notes_20251209_203830: Jason Johnston on 2025-11-11 17:11: John owes 11/11 update / John Capriotti on 2025-12-02 12:16: To be delivered 12/4 / allucent_notes_20251202_153722: Jason Johnston on 2025-11-11 17:11: John owes 11/11 update / John Capriotti on 2025-12-02 12:16: To be delivered 12/4 / allucent_notes_20251118_192630: Jason Johnston on 2025-11-11 17:11: John owes 11/11 update / allucent_notes_20251111_182405: Jason Johnston on 2025-11-11 17:11: John owes 11/11 update / allucent_notes: 2025-11-11 17:11 - User: Jason Johnston - Date Added: 2025-11-11 17:11 - Note: John owes 11/11 update / 2025-12-02 12:16 - User: John Capriotti - Date Added: 2025-12-02 12:16 - Note: To be delivered 12/4
- QTS-34071: allucent_notes_20251209_203830: Jason Johnston on 2025-11-11 17:11: John owes 11/11 update / John Capriotti on 2025-12-02 12:16: To be delivered 12/4 / allucent_notes_20251202_153722: Jason Johnston on 2025-11-11 17:11: John owes 11/11 update / John Capriotti on 2025-12-02 12:16: To be delivered 12/4 / allucent_notes_20251118_192630: Jason Johnston on 2025-11-11 17:11: John owes 11/11 update / allucent_notes_20251111_182405: Jason Johnston on 2025-11-11 17:11: John owes 11/11 update / allucent_notes: 2025-11-11 17:11 - User: Jason Johnston - Date Added: 2025-11-11 17:11 - Note: John owes 11/11 update / 2025-12-02 12:16 - User: John Capriotti - Date Added: 2025-12-02 12:16 - Note: To be delivered 12/4
- QTS-34081: allucent_notes_20251209_203830: Jason Johnston on 2025-11-11 17:11: John owes 11/11 update / John Capriotti on 2025-12-02 12:16: To be delivered 12/4 / allucent_notes_20251202_153722: Jason Johnston on 2025-11-11 17:11: John owes 11/11 update / John Capriotti on 2025-12-02 12:16: To be delivered 12/4 / allucent_notes_20251118_192630: Jason Johnston on 2025-11-11 17:11: John owes 11/11 update / allucent_notes_20251111_182405: Jason Johnston on 2025-11-11 17:11: John owes 11/11 update / allucent_notes: 2025-11-11 17:11 - User: Jason Johnston - Date Added: 2025-11-11 17:11 - Note: John owes 11/11 update / 2025-12-02 12:16 - User: John Capriotti - Date Added: 2025-12-02 12:16 - Note: To be delivered 12/4
- QTS-34091: allucent_notes_20251209_203830: Jason Johnston on 2025-11-11 17:11: John owes 11/11 update / John Capriotti on 2025-12-02 12:16: To be delivered 12/4 / allucent_notes_20251202_153722: Jason Johnston on 2025-11-11 17:11: John owes 11/11 update / John Capriotti on 2025-12-02 12:16: To be delivered 12/4 / allucent_notes_20251118_192630: Jason Johnston on 2025-11-11 17:11: John owes 11/11 update / allucent_notes_20251111_182405: Jason Johnston on 2025-11-11 17:11: John owes 11/11 update / allucent_notes: 2025-11-11 17:11 - User: Jason Johnston - Date Added: 2025-11-11 17:11 - Note: John owes 11/11 update / 2025-12-02 12:16 - User: John Capriotti - Date Added: 2025-12-02 12:16 - Note: To be delivered 12/4
- QTS-34101: allucent_notes_20251209_203830: Jason Johnston on 2025-11-11 17:11: John owes 11/11 update / John Capriotti on 2025-12-02 12:17: To be delivered 12/4 / allucent_notes_20251202_153722: Jason Johnston on 2025-11-11 17:11: John owes 11/11 update / John Capriotti on 2025-12-02 12:17: To be delivered 12/4 / allucent_notes_20251118_192630: Jason Johnston on 2025-11-11 17:11: John owes 11/11 update / allucent_notes_20251111_182405: Jason Johnston on 2025-11-11 17:11: John owes 11/11 update / allucent_notes: 2025-11-11 17:11 - User: Jason Johnston - Date Added: 2025-11-11 17:11 - Note: John owes 11/11 update / 2025-12-02 12:17 - User: John Capriotti - Date Added: 2025-12-02 12:17 - Note: To be delivered 12/4
- QTS-34111: allucent_notes_20251209_203830: Jason Johnston on 2025-11-11 17:11: John owes 11/11 update / John Capriotti on 2025-12-02 12:17: To be delivered 12/5 / allucent_notes_20251202_153722: Jason Johnston on 2025-11-11 17:11: John owes 11/11 update / John Capriotti on 2025-12-02 12:17: To be delivered 12/5 / allucent_notes_20251118_192630: Jason Johnston on 2025-11-11 17:11: John owes 11/11 update / allucent_notes_20251111_182405: Jason Johnston on 2025-11-11 17:11: John owes 11/11 update / allucent_notes: 2025-11-11 17:11 - User: Jason Johnston - Date Added: 2025-11-11 17:11 - Note: John owes 11/11 update / 2025-12-02 12:17 - User: John Capriotti - Date Added: 2025-12-02 12:17 - Note: To be delivered 12/5
- QTS-34121: allucent_notes_20251209_203830: Jason Johnston on 2025-11-11 17:11: John owes 11/11 update / John Capriotti on 2025-12-02 12:17: To be delivered 12/5 / allucent_notes_20251202_153722: Jason Johnston on 2025-11-11 17:11: John owes 11/11 update / John Capriotti on 2025-12-02 12:17: To be delivered 12/5 / allucent_notes_20251118_192630: Jason Johnston on 2025-11-11 17:11: John owes 11/11 update / allucent_notes_20251111_182405: Jason Johnston on 2025-11-11 17:11: John owes 11/11 update / allucent_notes: 2025-11-11 17:11 - User: Jason Johnston - Date Added: 2025-11-11 17:11 - Note: John owes 11/11 update / 2025-12-02 12:17 - User: John Capriotti - Date Added: 2025-12-02 12:17 - Note: To be delivered 12/5
- QTS-34131: allucent_notes_20251209_203830: Jason Johnston on 2025-11-11 17:11: John owes 11/11 update / John Capriotti on 2025-12-02 12:17: To be delivered 12/5 / allucent_notes_20251202_153722: Jason Johnston on 2025-11-11 17:11: John owes 11/11 update / John Capriotti on 2025-12-02 12:17: To be delivered 12/5 / allucent_notes_20251118_192630: Jason Johnston on 2025-11-11 17:11: John owes 11/11 update / allucent_notes_20251111_182405: Jason Johnston on 2025-11-11 17:11: John owes 11/11 update / allucent_notes: 2025-11-11 17:11 - User: Jason Johnston - Date Added: 2025-11-11 17:11 - Note: John owes 11/11 update / 2025-12-02 12:17 - User: John Capriotti - Date Added: 2025-12-02 12:17 - Note: To be delivered 12/5
- QTS-34141: allucent_notes_20251209_203830: Jason Johnston on 2025-11-11 17:11: John owes 11/11 update / John Capriotti on 2025-12-02 12:17: To be delivered 12/5 / allucent_notes_20251202_153722: Jason Johnston on 2025-11-11 17:11: John owes 11/11 update / John Capriotti on 2025-12-02 12:17: To be delivered 12/5 / allucent_notes_20251118_192630: Jason Johnston on 2025-11-11 17:11: John owes 11/11 update / allucent_notes_20251111_182405: Jason Johnston on 2025-11-11 17:11: John owes 11/11 update / allucent_notes: 2025-11-11 17:11 - User: Jason Johnston - Date Added: 2025-11-11 17:11 - Note: John owes 11/11 update / 2025-12-02 12:17 - User: John Capriotti - Date Added: 2025-12-02 12:17 - Note: To be delivered 12/5
- QTS-34151: allucent_notes_20251209_203830: Jason Johnston on 2025-11-11 17:11: John owes 11/11 update / John Capriotti on 2025-12-02 12:17: To be delivered 12/5 / allucent_notes_20251202_153722: Jason Johnston on 2025-11-11 17:11: John owes 11/11 update / John Capriotti on 2025-12-02 12:17: To be delivered 12/5 / allucent_notes_20251118_192630: Jason Johnston on 2025-11-11 17:11: John owes 11/11 update / allucent_notes_20251111_182405: Jason Johnston on 2025-11-11 17:11: John owes 11/11 update / allucent_notes: 2025-11-11 17:11 - User: Jason Johnston - Date Added: 2025-11-11 17:11 - Note: John owes 11/11 update / 2025-12-02 12:17 - User: John Capriotti - Date Added: 2025-12-02 12:17 - Note: To be delivered 12/5
- QTS-34161: allucent_notes_20251209_203830: Jason Johnston on 2025-11-11 17:11: John owes 11/11 update / John Capriotti on 2025-12-02 12:17: To be delivered 12/5 / allucent_notes_20251202_153722: Jason Johnston on 2025-11-11 17:11: John owes 11/11 update / John Capriotti on 2025-12-02 12:17: To be delivered 12/5 / allucent_notes_20251118_192630: Jason Johnston on 2025-11-11 17:11: John owes 11/11 update / allucent_notes_20251111_182405: Jason Johnston on 2025-11-11 17:11: John owes 11/11 update / allucent_notes: 2025-11-11 17:11 - User: Jason Johnston - Date Added: 2025-11-11 17:11 - Note: John owes 11/11 update / 2025-12-02 12:17 - User: John Capriotti - Date Added: 2025-12-02 12:17 - Note: To be delivered 12/5

| ID | WBS | Activity | Duration | Start | Finish | Predecessors | Complete | Planned start | Planned finish | Allucent CSI Group | Project Section | Layton Discipline | Baseline | Project Section-1 | Precon Phase | Contract |
| --- | --- | --- | --- | --- | --- | --- | --- | --- | --- | --- | --- | --- | --- | --- | --- | --- |
|  | 1 | **A21 Lineup** |  | 2025-07-07 | 2026-02-02 |  |  |  |  |  |  |  |  |  |  |  |
| QTS-20691 |  | DH 2100 / A21 Lineup // Chiller #1RT40-A21 | 20d | 2025-07-07 A | 2025-08-07 A | QTS-1371 | 100% | 2025-07-07 | 2025-08-01 | 01ADMIN | Preconstruction | Precon | GMP | Preconstruction | OFCI Procurement | BAB |
| QTS-31441 |  | DH 2100 / A21 Lineup // 600A MOD #A21-03 (CRAH Support) | 7d | 2025-07-21 A | 2025-07-29 A | QTS-1371 | 100% |  |  | 01ADMIN | Preconstruction | Precon | GMP | Preconstruction | OFCI Procurement | BAB |
| QTS-25011 |  | DH 2100 / A21 Lineup // 225A MOD #A21-02 (Liquid to Chip Support) | 20d | 2025-09-15 A | 2025-09-16 A | QTS-1371 | 100% | 2025-09-15 | 2025-10-10 | 01ADMIN | Preconstruction | Precon | GMP | Preconstruction | OFCI Procurement | BAB |
| QTS-23841 |  | DH 2100 / A21 Lineup // UPS Container #A21 | 20d | 2025-09-19 A | 2025-10-27 A | QTS-1371 | 100% | 2025-09-19 | 2025-10-16 | 01ADMIN | Preconstruction | Precon | GMP | Preconstruction | OFCI Procurement | BAB |
| QTS-24201 |  | DH 2100 / A21 Lineup // 2500KVA Padmount XFMR #A21 | 20d | 2025-10-01 A | 2025-10-20 A | QTS-1371 | 100% | 2025-10-01 | 2025-10-28 | 01ADMIN | Preconstruction | Precon | GMP | Preconstruction | OFCI Procurement | BAB |
| QTS-24431 |  | DH 2100 / A21 Lineup // Assembly - Tank #GEN-A21 | 20d | 2025-10-06 A | 2025-11-10 A | QTS-1371 | 100% | 2025-10-06 | 2025-10-31 | 01ADMIN | Preconstruction | Precon |  | Preconstruction | OFCI Procurement | BAB |
| QTS-24441 |  | DH 2100 / A21 Lineup // Assembly - Engine #GEN-A21 | 20d | 2025-10-06 A | 2025-11-10 A | QTS-1371 | 100% | 2025-10-06 | 2025-10-31 | 01ADMIN | Preconstruction | Precon |  | Preconstruction | OFCI Procurement | BAB |
| QTS-24451 |  | DH 2100 / A21 Lineup // Assembly - SCR #GEN-A21 | 20d | 2025-10-06 A | 2026-02-02 A | QTS-1371 | 100% | 2025-10-06 | 2025-10-31 | 01ADMIN | Preconstruction | Precon |  | Preconstruction | OFCI Procurement | BAB |
| QTS-24461 |  | DH 2100 / A21 Lineup // Assembly - Housing #GEN-A21 | 20d | 2025-10-06 A | 2025-11-10 A | QTS-1371 | 100% | 2025-10-06 | 2025-10-31 | 01ADMIN | Preconstruction | Precon |  | Preconstruction | OFCI Procurement | BAB |
| QTS-32751 |  | DH 2100 / A21 Lineup // Skid #A21 | 20d | 2025-10-16 A | 2025-11-26 A | QTS-1371 | 100% | 2025-10-16 | 2025-11-12 | 01ADMIN | Preconstruction | Precon | GMP | Preconstruction | OFCI Procurement | BAB |
|  | 2 | **B21 Lineup** |  | 2025-07-07 | 2026-02-02 |  |  |  |  |  |  |  |  |  |  |  |
| QTS-36161 |  | DH 2100 / B21 Lineup // Chiller #1RT40-B21 | 20d | 2025-07-07 A | 2025-08-07 A | QTS-1371 | 100% | 2025-07-07 | 2025-08-01 | 01ADMIN | Preconstruction | Precon | GMP | Preconstruction | OFCI Procurement | BAB |
| QTS-36211 |  | DH 2100 / B21 Lineup // 600A MOD #B21-03 (CRAH Support) | 20d | 2025-07-21 A | 2025-07-29 A | QTS-1371 | 100% | 2025-09-15 | 2025-10-10 | 01ADMIN | Preconstruction | Precon | GMP | Preconstruction | OFCI Procurement | BAB |
| QTS-36201 |  | DH 2100 / B21 Lineup // 225A MOD #B21-02 (Liquid to Chip Support) | 20d | 2025-09-15 A | 2025-09-16 A | QTS-1371 | 100% | 2025-09-15 | 2025-10-10 | 01ADMIN | Preconstruction | Precon | GMP | Preconstruction | OFCI Procurement | BAB |
| QTS-36171 |  | DH 2100 / B21 Lineup // UPS Container #B21 | 20d | 2025-09-19 A | 2025-10-28 A | QTS-1371 | 100% | 2025-09-19 | 2025-10-16 | 01ADMIN | Preconstruction | Precon | GMP | Preconstruction | OFCI Procurement | BAB |
| QTS-36181 |  | DH 2100 / B21 Lineup // 2500KVA Padmount XFMR #B21 | 20d | 2025-10-01 A | 2025-10-20 A | QTS-1371 | 100% | 2025-10-01 | 2025-10-28 | 01ADMIN | Preconstruction | Precon | GMP | Preconstruction | OFCI Procurement | BAB |
| QTS-39411 |  | DH 2100 / B21 Lineup // Assembly - Tank #GEN-B21 | 20d | 2025-10-07 A | 2025-11-11 A | QTS-1371 | 100% | 2025-10-07 | 2025-11-03 | 01ADMIN | Preconstruction | Precon |  | Preconstruction | OFCI Procurement | BAB |
| QTS-39421 |  | DH 2100 / B21 Lineup // Assembly - Engine #GEN-B21 | 20d | 2025-10-07 A | 2025-11-11 A | QTS-1371 | 100% | 2025-10-07 | 2025-11-03 | 01ADMIN | Preconstruction | Precon |  | Preconstruction | OFCI Procurement | BAB |
| QTS-39431 |  | DH 2100 / B21 Lineup // Assembly - SCR #GEN-B21 | 20d | 2025-10-07 A | 2026-02-02 A | QTS-1371 | 100% | 2025-10-07 | 2025-11-03 | 01ADMIN | Preconstruction | Precon |  | Preconstruction | OFCI Procurement | BAB |
| QTS-39441 |  | DH 2100 / B21 Lineup // Assembly - Housing #GEN-B21 | 20d | 2025-10-07 A | 2025-11-11 A | QTS-1371 | 100% | 2025-10-07 | 2025-11-03 | 01ADMIN | Preconstruction | Precon |  | Preconstruction | OFCI Procurement | BAB |
| QTS-36221 |  | DH 2100 / B21 Lineup // Skid #B21 | 20d | 2025-10-22 A | 2025-11-26 A | QTS-1371 | 100% | 2025-10-22 | 2025-11-18 | 01ADMIN | Preconstruction | Precon | GMP | Preconstruction | OFCI Procurement | BAB |
|  | 3 | **C21 Lineup** |  | 2025-07-07 | 2025-11-26 |  |  |  |  |  |  |  |  |  |  |  |
| QTS-36231 |  | DH 2100 / C21 Lineup // Chiller #1RT40-C21 | 20d | 2025-07-07 A | 2025-08-07 A | QTS-1371 | 100% | 2025-07-07 | 2025-08-01 | 01ADMIN | Preconstruction | Precon | GMP | Preconstruction | OFCI Procurement | BAB |
| QTS-36281 |  | DH 2100 / C21 Lineup // 600A MOD #C21-03 (CRAH Support) | 20d | 2025-07-21 A | 2025-07-29 A | QTS-1371 | 100% | 2025-09-15 | 2025-10-10 | 01ADMIN | Preconstruction | Precon | GMP | Preconstruction | OFCI Procurement | BAB |
| QTS-36271 |  | DH 2100 / C21 Lineup // 225A MOD #C21-02 (Liquid to Chip Support) | 20d | 2025-09-15 A | 2025-09-16 A | QTS-1371 | 100% | 2025-09-15 | 2025-10-10 | 01ADMIN | Preconstruction | Precon | GMP | Preconstruction | OFCI Procurement | BAB |
| QTS-36241 |  | DH 2100 / C21 Lineup // UPS Container #C21 | 20d | 2025-09-19 A | 2025-10-28 A | QTS-1371 | 100% | 2025-09-19 | 2025-10-16 | 01ADMIN | Preconstruction | Precon | GMP | Preconstruction | OFCI Procurement | BAB |
| QTS-36251 |  | DH 2100 / C21 Lineup // 2500KVA Padmount XFMR #C21 | 20d | 2025-10-01 A | 2025-10-20 A | QTS-1371 | 100% | 2025-10-01 | 2025-10-28 | 01ADMIN | Preconstruction | Precon | GMP | Preconstruction | OFCI Procurement | BAB |
| QTS-39501 |  | DH 2100 / C21 Lineup // Assembly - Tank #GEN-C21 | 20d | 2025-10-08 A | 2025-11-11 A | QTS-1371 | 100% | 2025-10-08 | 2025-11-04 | 01ADMIN | Preconstruction | Precon |  | Preconstruction | OFCI Procurement | BAB |
| QTS-39511 |  | DH 2100 / C21 Lineup // Assembly - Engine #GEN-C21 | 20d | 2025-10-08 A | 2025-11-13 A | QTS-1371 | 100% | 2025-10-08 | 2025-11-04 | 01ADMIN | Preconstruction | Precon |  | Preconstruction | OFCI Procurement | BAB |
| QTS-39521 |  | DH 2100 / C21 Lineup // Assembly - SER #GEN-C21 | 20d | 2025-10-08 A | 2025-11-11 A | QTS-1371 | 100% | 2025-10-08 | 2025-11-04 | 01ADMIN | Preconstruction | Precon |  | Preconstruction | OFCI Procurement | BAB |
| QTS-39531 |  | DH 2100 / C21 Lineup // Assembly - Housing #GEN-C21 | 20d | 2025-10-08 A | 2025-11-11 A | QTS-1371 | 100% | 2025-10-08 | 2025-11-04 | 01ADMIN | Preconstruction | Precon |  | Preconstruction | OFCI Procurement | BAB |
| QTS-36291 |  | DH 2100 / C21 Lineup // Skid #C21 | 20d | 2025-10-28 A | 2025-11-26 A | QTS-1371 | 100% | 2025-10-28 | 2025-11-24 | 01ADMIN | Preconstruction | Precon | GMP | Preconstruction | OFCI Procurement | BAB |

Notes:
- QTS-20691: allucent_notes: John Capriotti on 2025-08-12 15:08: Chiller received by Belaire/taken out of QAE Yard on 8/7 to set. / allucent_notes: 2025-08-12 15:08 - User: John Capriotti - Date Added: 2025-08-12 15:08 - Note: Chiller received by Belaire/taken out of QAE Yard on 8/7 to set.
- QTS-23841: allucent_notes_20251027_224008: John Capriotti on 2025-10-27 18:10: Set today 10/27 / allucent_notes: 2025-10-27 18:10 - User: John Capriotti - Date Added: 2025-10-27 18:10 - Note: Set today 10/27
- QTS-24201: allucent_notes_20251028_163138: John Capriotti on 2025-10-28 15:10: Received and set XFMR A21 on 10/21. / allucent_notes: 2025-10-28 15:10 - User: John Capriotti - Date Added: 2025-10-28 15:10 - Note: Received and set XFMR A21 on 10/21.
- QTS-24431: allucent_notes_20251118_192630: John Capriotti on 2025-11-04 14:11: Plan is to receive and set this on 11/10 / allucent_notes_20251111_182405: John Capriotti on 2025-11-04 14:11: Plan is to receive and set this on 11/10 / allucent_notes_20251104_160200: John Capriotti on 2025-11-04 14:11: Plan is to receive and set this on 11/10 / allucent_notes: 2025-11-04 14:11 - User: John Capriotti - Date Added: 2025-11-04 14:11 - Note: Plan is to receive and set this on 11/10
- QTS-24441: allucent_notes_20251118_192630: John Capriotti on 2025-11-04 14:11: Plan is to receive and set this on 11/10 / allucent_notes_20251111_182405: John Capriotti on 2025-11-04 14:11: Plan is to receive and set this on 11/10 / allucent_notes_20251104_160200: John Capriotti on 2025-11-04 14:11: Plan is to receive and set this on 11/10 / allucent_notes: 2025-11-04 14:11 - User: John Capriotti - Date Added: 2025-11-04 14:11 - Note: Plan is to receive and set this on 11/10
- QTS-24451: allucent_notes_20251216_165335: John Capriotti on 2025-11-04 14:11: Plan is to receive and set this on 11/10 / Jason Johnston on 2025-11-11 17:11: John owes 11/11 update / John Capriotti on 2025-12-09 12:39: Pending confirmation on timing from Belaire on this. Followed up on 12/9. / Jason Johnston on 2025-12-16 15:16: not yet / allucent_notes_20251209_203830: John Capriotti on 2025-11-04 14:11: Plan is to receive and set this on 11/10 / Jason Johnston on 2025-11-11 17:11: John owes 11/11 update / John Capriotti on 2025-12-09 12:39: Pending confirmation on timing from Belaire on this. Followed up on 12/9. / allucent_notes_20251202_153722: John Capriotti on 2025-11-04 14:11: Plan is to receive and set this on 11/10 / Jason Johnston on 2025-11-11 17:11: John owes 11/11 update / allucent_notes_20251118_192630: John Capriotti on 2025-11-04 14:11: Plan is to receive and set this on 11/10 / Jason Johnston on 2025-11-11 17:11: John owes 11/11 update / allucent_notes_20251111_182405: John Capriotti on 2025-11-04 14:11: Plan is to receive and set this on 11/10 / Jason Johnston on 2025-11-11 17:11: John owes 11/11 update / allucent_notes_20251104_160200: John Capriotti on 2025-11-04 14:11: Plan is to receive and set this on 11/10 / allucent_notes_20251230_164549: John Capriotti on 2025-11-04 14:11: Plan is to receive and set this on 11/10 / Jason Johnston on 2025-11-11 17:11: John owes 11/11 update / John Capriotti on 2025-12-09 12:39: Pending confirmation on timing from Belaire on this. Followed up on 12/9. / Jason Johnston on 2025-12-16 15:16: not yet / John Capriotti on 2025-12-30 10:37: SCRs will be delivered when we are ready to set. The Mfg/Vendor has these located in their yard in Texas, but we are not going to ship all of these to site to store and then mobilize a separate crane and additional trucks to bring to the building. That would be a decent cost and significantly more coordination, with no added benefit. / Ultimately, I, John Capriotti (OFCI), need an update from the Subs/Supers as to when we intend to set them so I can schedule the delivery to support those set dates. / **I will press for updated dates on these, moving out as I work on getting estimated set dates. / allucent_notes: 2025-11-04 14:11 - User: John Capriotti - Date Added: 2025-11-04 14:11 - Note: Plan is to receive and set this on 11/10 / 2025-11-11 17:11 - User: Jason Johnston - Date Added: 2025-11-11 17:11 - Note: John owes 11/11 update / 2025-12-09 12:39 - User: Jo
- QTS-24461: allucent_notes_20251118_192630: John Capriotti on 2025-11-04 14:11: Plan is to receive and set this on 11/10 / allucent_notes_20251111_182405: John Capriotti on 2025-11-04 14:11: Plan is to receive and set this on 11/10 / allucent_notes_20251104_160200: John Capriotti on 2025-11-04 14:11: Plan is to receive and set this on 11/10 / allucent_notes: 2025-11-04 14:11 - User: John Capriotti - Date Added: 2025-11-04 14:11 - Note: Plan is to receive and set this on 11/10
- QTS-36161: allucent_notes: John Capriotti on 2025-08-12 15:08: Chiller received by Belaire/taken out of QAE Yard on 8/7 to set. / allucent_notes: 2025-08-12 15:08 - User: John Capriotti - Date Added: 2025-08-12 15:08 - Note: Chiller received by Belaire/taken out of QAE Yard on 8/7 to set.
- QTS-36171: allucent_notes_20251028_163138: John Capriotti on 2025-10-27 18:10: Received on-site 10/27, planning to set 10/28 / Jason Johnston on 2025-10-27 22:10: No update from John Capriotti / allucent_notes_20251027_224008: John Capriotti on 2025-10-27 18:10: Received on-site 10/27, planning to set 10/28 / Jason Johnston on 2025-10-27 22:10: No update from John Capriotti / allucent_notes: 2025-10-27 18:10 - User: John Capriotti - Date Added: 2025-10-27 18:10 - Note: Received on-site 10/27, planning to set 10/28 / 2025-10-27 22:10 - User: Jason Johnston - Date Added: 2025-10-27 22:10 - Note: No update from John Capriotti
- QTS-36181: allucent_notes_20251028_163138: John Capriotti on 2025-10-28 15:10: Received and set on 10/20. / allucent_notes: 2025-10-28 15:10 - User: John Capriotti - Date Added: 2025-10-28 15:10 - Note: Received and set on 10/20.
- QTS-39411: allucent_notes_20251118_192630: John Capriotti on 2025-11-04 14:11: Plan is to receive and set this on 11/11 / John Capriotti on 2025-11-11 12:11: Received on 11/11 / allucent_notes_20251111_182405: John Capriotti on 2025-11-04 14:11: Plan is to receive and set this on 11/11 / John Capriotti on 2025-11-11 12:11: Received on 11/11 / allucent_notes_20251104_160200: John Capriotti on 2025-11-04 14:11: Plan is to receive and set this on 11/11 / allucent_notes: 2025-11-04 14:11 - User: John Capriotti - Date Added: 2025-11-04 14:11 - Note: Plan is to receive and set this on 11/11 / 2025-11-11 12:11 - User: John Capriotti - Date Added: 2025-11-11 12:11 - Note: Received on 11/11
- QTS-39421: allucent_notes_20251118_192630: John Capriotti on 2025-11-04 14:11: Plan is to receive and set this on 11/11 / allucent_notes_20251111_182405: John Capriotti on 2025-11-04 14:11: Plan is to receive and set this on 11/11 / allucent_notes_20251104_160200: John Capriotti on 2025-11-04 14:11: Plan is to receive and set this on 11/11 / allucent_notes: 2025-11-04 14:11 - User: John Capriotti - Date Added: 2025-11-04 14:11 - Note: Plan is to receive and set this on 11/11
- QTS-39431: allucent_notes_20251216_165335: John Capriotti on 2025-11-04 14:11: Plan is to receive and set this on 11/11 / Jason Johnston on 2025-11-11 17:11: John owes 11/11 update / John Capriotti on 2025-12-09 12:39: Pending confirmation on timing from Belaire on this. Followed up on 12/9. / John Capriotti on 2025-12-09 12:40: Pending confirmation on timing from Belaire on this. Followed up on 12/9. / Jason Johnston on 2025-12-16 15:16: not yet / allucent_notes_20251209_203830: John Capriotti on 2025-11-04 14:11: Plan is to receive and set this on 11/11 / Jason Johnston on 2025-11-11 17:11: John owes 11/11 update / John Capriotti on 2025-12-09 12:39: Pending confirmation on timing from Belaire on this. Followed up on 12/9. / John Capriotti on 2025-12-09 12:40: Pending confirmation on timing from Belaire on this. Followed up on 12/9. / allucent_notes_20251202_153722: John Capriotti on 2025-11-04 14:11: Plan is to receive and set this on 11/11 / Jason Johnston on 2025-11-11 17:11: John owes 11/11 update / allucent_notes_20251118_192630: John Capriotti on 2025-11-04 14:11: Plan is to receive and set this on 11/11 / Jason Johnston on 2025-11-11 17:11: John owes 11/11 update / allucent_notes_20251111_182405: John Capriotti on 2025-11-04 14:11: Plan is to receive and set this on 11/11 / Jason Johnston on 2025-11-11 17:11: John owes 11/11 update / allucent_notes_20251104_160200: John Capriotti on 2025-11-04 14:11: Plan is to receive and set this on 11/11 / allucent_notes_20251230_164549: John Capriotti on 2025-11-04 14:11: Plan is to receive and set this on 11/11 / Jason Johnston on 2025-11-11 17:11: John owes 11/11 update / John Capriotti on 2025-12-09 12:39: Pending confirmation on timing from Belaire on this. Followed up on 12/9. / John Capriotti on 2025-12-09 12:40: Pending confirmation on timing from Belaire on this. Followed up on 12/9. / Jason Johnston on 2025-12-16 15:16: not yet / John Capriotti on 2025-12-30 10:37: SCRs will be delivered when we are ready to set. The Mfg/Vendor has these located in their yard in Texas, but we are not going to ship all of these to site to store and then mobilize a separate crane and additional trucks to bring to the building. That would be a decent cost and significantly more coordination, with no added benefit. / Ultimately, I, John Capriotti (OFCI), need an update from the Subs/Supers as to when we intend to set them so I can schedule the delivery to support those set dates. / **I will press for updated dates on these, moving out as I work on getting estimated set dates. / allucent_notes: 2025-11-04 14:11 - User: John Capriotti - Date Added: 2025-11-04 14:11 - Note: Plan is to receive and set this on 11/11 / 2025-11-11 17:11 - User: Jason Johnston - Date Added: 2025-11-11 17:11 - Note: John owes 11/11 update / 2025-12-09 12:39 - User: Jo
- QTS-39441: allucent_notes_20251118_192630: John Capriotti on 2025-11-04 14:11: Plan is to receive and set this on 11/11 / allucent_notes_20251111_182405: John Capriotti on 2025-11-04 14:11: Plan is to receive and set this on 11/11 / allucent_notes_20251104_160200: John Capriotti on 2025-11-04 14:11: Plan is to receive and set this on 11/11 / allucent_notes: 2025-11-04 14:11 - User: John Capriotti - Date Added: 2025-11-04 14:11 - Note: Plan is to receive and set this on 11/11
- QTS-36231: allucent_notes: John Capriotti on 2025-08-12 15:08: Chiller received by Belaire/taken out of QAE Yard on 8/7 to set. / allucent_notes: 2025-08-12 15:08 - User: John Capriotti - Date Added: 2025-08-12 15:08 - Note: Chiller received by Belaire/taken out of QAE Yard on 8/7 to set.
- QTS-36241: allucent_notes_20251028_163138: Jason Johnston on 2025-10-27 22:10: No update from John Capriotti / allucent_notes_20251027_224008: Jason Johnston on 2025-10-27 22:10: No update from John Capriotti / allucent_notes: 2025-10-27 22:10 - User: Jason Johnston - Date Added: 2025-10-27 22:10 - Note: No update from John Capriotti
- QTS-36251: allucent_notes_20251028_163138: John Capriotti on 2025-10-28 15:10: Received and set on 10/20. / allucent_notes: 2025-10-28 15:10 - User: John Capriotti - Date Added: 2025-10-28 15:10 - Note: Received and set on 10/20.
- QTS-39501: allucent_notes_20251118_192630: John Capriotti on 2025-11-04 14:11: Plan is to receive and set this on 11/11 / allucent_notes_20251111_182405: John Capriotti on 2025-11-04 14:11: Plan is to receive and set this on 11/11 / allucent_notes_20251104_160200: John Capriotti on 2025-11-04 14:11: Plan is to receive and set this on 11/11 / allucent_notes: 2025-11-04 14:11 - User: John Capriotti - Date Added: 2025-11-04 14:11 - Note: Plan is to receive and set this on 11/11
- QTS-39511: allucent_notes_20251118_192630: John Capriotti on 2025-11-04 14:11: Plan is to receive and set this on 11/11 / Jason Johnston on 2025-11-11 17:11: John owes 11/11 update / allucent_notes_20251111_182405: John Capriotti on 2025-11-04 14:11: Plan is to receive and set this on 11/11 / Jason Johnston on 2025-11-11 17:11: John owes 11/11 update / allucent_notes_20251104_160200: John Capriotti on 2025-11-04 14:11: Plan is to receive and set this on 11/11 / allucent_notes: 2025-11-04 14:11 - User: John Capriotti - Date Added: 2025-11-04 14:11 - Note: Plan is to receive and set this on 11/11 / 2025-11-11 17:11 - User: Jason Johnston - Date Added: 2025-11-11 17:11 - Note: John owes 11/11 update
- QTS-39521: allucent_notes_20251118_192630: John Capriotti on 2025-11-04 14:11: Plan is to receive and set this on 11/11 / allucent_notes_20251111_182405: John Capriotti on 2025-11-04 14:11: Plan is to receive and set this on 11/11 / allucent_notes_20251104_160200: John Capriotti on 2025-11-04 14:11: Plan is to receive and set this on 11/11 / allucent_notes: 2025-11-04 14:11 - User: John Capriotti - Date Added: 2025-11-04 14:11 - Note: Plan is to receive and set this on 11/11
- QTS-39531: allucent_notes_20251118_192630: John Capriotti on 2025-11-04 14:11: Plan is to receive and set this on 11/11 / allucent_notes_20251111_182405: John Capriotti on 2025-11-04 14:11: Plan is to receive and set this on 11/11 / allucent_notes_20251104_160200: John Capriotti on 2025-11-04 14:11: Plan is to receive and set this on 11/11 / allucent_notes: 2025-11-04 14:11 - User: John Capriotti - Date Added: 2025-11-04 14:11 - Note: Plan is to receive and set this on 11/11

| ID | WBS | Activity | Duration | Start | Finish | Predecessors | Complete | Planned start | Planned finish | Allucent CSI Group | Project Section | Layton Discipline | Baseline | Project Section-1 | Precon Phase | Contract |
| --- | --- | --- | --- | --- | --- | --- | --- | --- | --- | --- | --- | --- | --- | --- | --- | --- |
|  | 4 | **D21 Lineup** |  | 2025-07-07 | 2026-02-02 |  |  |  |  |  |  |  |  |  |  |  |
| QTS-36301 |  | DH 2100 / D21 Lineup // Chiller #1RT40-D21 | 20d | 2025-07-07 A | 2025-08-11 A | QTS-1371 | 100% | 2025-07-07 | 2025-08-01 | 01ADMIN | Preconstruction | Precon | GMP | Preconstruction | OFCI Procurement | BAB |
| QTS-36351 |  | DH 2100 / D21 Lineup // 600A MOD #D21-03 (CRAH Support) | 20d | 2025-07-21 A | 2025-07-29 A | QTS-1371 | 100% | 2025-09-15 | 2025-10-10 | 01ADMIN | Preconstruction | Precon | GMP | Preconstruction | OFCI Procurement | BAB |
| QTS-36341 |  | DH 2100 / D21 Lineup // 225A MOD #D21-02 (Liquid to Chip Support) | 20d | 2025-09-15 A | 2025-09-16 A | QTS-1371 | 100% | 2025-09-15 | 2025-10-10 | 01ADMIN | Preconstruction | Precon | GMP | Preconstruction | OFCI Procurement | BAB |
| QTS-36311 |  | DH 2100 / D21 Lineup // UPS Container #D21 | 20d | 2025-09-19 A | 2025-10-29 A | QTS-1371 | 100% | 2025-09-19 | 2025-10-16 | 01ADMIN | Preconstruction | Precon | GMP | Preconstruction | OFCI Procurement | BAB |
| QTS-36321 |  | DH 2100 / D21 Lineup // 2500KVA Padmount XFMR #D21 | 20d | 2025-10-01 A | 2025-10-21 A | QTS-1371 | 100% | 2025-10-01 | 2025-10-28 | 01ADMIN | Preconstruction | Precon | GMP | Preconstruction | OFCI Procurement | BAB |
| QTS-39541 |  | DH 2100 / D21 Lineup // Assembly - Tank #GEN-D21 | 20d | 2025-10-09 A | 2025-11-17 A | QTS-1371 | 100% | 2025-10-09 | 2025-11-05 | 01ADMIN | Preconstruction | Precon |  | Preconstruction | OFCI Procurement | BAB |
| QTS-39551 |  | DH 2100 / D21 Lineup // Assembly - Engine #GEN-D21 | 20d | 2025-10-09 A | 2025-11-17 A | QTS-1371 | 100% | 2025-10-09 | 2025-11-05 | 01ADMIN | Preconstruction | Precon |  | Preconstruction | OFCI Procurement | BAB |
| QTS-39561 |  | DH 2100 / D21 Lineup // Assembly - SCR #GEN-D21 | 20d | 2025-10-09 A | 2026-02-02 A | QTS-1371 | 100% | 2025-10-09 | 2025-11-05 | 01ADMIN | Preconstruction | Precon |  | Preconstruction | OFCI Procurement | BAB |
| QTS-39571 |  | DH 2100 / D21 Lineup // Assembly - Housing #GEN-D21 | 20d | 2025-10-09 A | 2025-11-17 A | QTS-1371 | 100% | 2025-10-09 | 2025-11-05 | 01ADMIN | Preconstruction | Precon |  | Preconstruction | OFCI Procurement | BAB |
| QTS-36361 |  | DH 2100 / D21 Lineup // Skid #D21 | 20d | 2025-10-30 A | 2025-11-26 A | QTS-1371 | 100% |  |  | 01ADMIN | Preconstruction | Precon | GMP | Preconstruction | OFCI Procurement | BAB |
|  | 5 | **E21 Lineup** |  | 2025-07-07 | 2026-02-02 |  |  |  |  |  |  |  |  |  |  |  |
| QTS-36371 |  | DH 2100 / E21 Lineup // Chiller #1RT40-E21 | 20d | 2025-07-07 A | 2025-08-11 A | QTS-1371 | 100% | 2025-07-07 | 2025-08-01 | 01ADMIN | Preconstruction | Precon | GMP | Preconstruction | OFCI Procurement | BAB |
| QTS-36421 |  | DH 2100 / E21 Lineup // 600A MOD #E21-03 (CRAH Support) | 20d | 2025-07-21 A | 2025-07-29 A | QTS-1371 | 100% | 2025-09-15 | 2025-10-10 | 01ADMIN | Preconstruction | Precon | GMP | Preconstruction | OFCI Procurement | BAB |
| QTS-36411 |  | DH 2100 / E21 Lineup // 225A MOD #E21-02 (Liquid to Chip Support) | 20d | 2025-09-15 A | 2025-09-16 A | QTS-1371 | 100% | 2025-09-15 | 2025-10-10 | 01ADMIN | Preconstruction | Precon | GMP | Preconstruction | OFCI Procurement | BAB |
| QTS-36381 |  | DH 2100 / E21 Lineup // UPS Container #E21 | 20d | 2025-09-19 A | 2025-11-05 A | QTS-1371 | 100% | 2025-09-19 | 2025-10-16 | 01ADMIN | Preconstruction | Precon | GMP | Preconstruction | OFCI Procurement | BAB |
| QTS-36391 |  | DH 2100 / E21 Lineup // 2500KVA Padmount XFMR #E21 | 20d | 2025-10-01 A | 2025-10-21 A | QTS-1371 | 100% | 2025-10-01 | 2025-10-28 | 01ADMIN | Preconstruction | Precon | GMP | Preconstruction | OFCI Procurement | BAB |
| QTS-39581 |  | DH 2100 / E21 Lineup // Assembly - Tank #GEN-E21 | 20d | 2025-10-10 A | 2025-11-17 A | QTS-1371 | 100% | 2025-10-10 | 2025-11-06 | 01ADMIN | Preconstruction | Precon |  | Preconstruction | OFCI Procurement | BAB |
| QTS-39591 |  | DH 2100 / E21 Lineup // Assembly - Engine #GEN-E21 | 20d | 2025-10-10 A | 2025-11-17 A | QTS-1371 | 100% | 2025-10-10 | 2025-11-06 | 01ADMIN | Preconstruction | Precon |  | Preconstruction | OFCI Procurement | BAB |
| QTS-39601 |  | DH 2100 / E21 Lineup // Assembly - SCR #GEN-E21 | 20d | 2025-10-10 A | 2026-02-02 A | QTS-1371 | 100% | 2025-10-10 | 2025-11-06 | 01ADMIN | Preconstruction | Precon |  | Preconstruction | OFCI Procurement | BAB |
| QTS-39611 |  | DH 2100 / E21 Lineup // Assembly - Housing #GEN-E21 | 20d | 2025-10-10 A | 2025-11-17 A | QTS-1371 | 100% | 2025-10-10 | 2025-11-06 | 01ADMIN | Preconstruction | Precon |  | Preconstruction | OFCI Procurement | BAB |
| QTS-36431 |  | DH 2100 / E21 Lineup // Skid #E21 | 20d | 2025-11-03 A | 2025-11-26 A | QTS-1371 | 100% | 2025-11-03 | 2025-12-02 | 01ADMIN | Preconstruction | Precon | GMP | Preconstruction | OFCI Procurement | BAB |
|  | 6 | **F21 Lineup** |  | 2025-07-07 | 2026-02-02 |  |  |  |  |  |  |  |  |  |  |  |
| QTS-36441 |  | DH 2100 / F21 Lineup // Chiller #1RT40-F21 | 20d | 2025-07-07 A | 2025-08-11 A | QTS-1371 | 100% | 2025-07-07 | 2025-08-01 | 01ADMIN | Preconstruction | Precon | GMP | Preconstruction | OFCI Procurement | BAB |
| QTS-36491 |  | DH 2100 / F21 Lineup // 600A MOD #F21-03 (CRAH Support) | 20d | 2025-07-21 A | 2025-07-29 A | QTS-1371 | 100% | 2025-09-15 | 2025-10-10 | 01ADMIN | Preconstruction | Precon | GMP | Preconstruction | OFCI Procurement | BAB |
| QTS-36481 |  | DH 2100 / F21 Lineup // 225A MOD #F21-02 (Liquid to Chip Support) | 20d | 2025-09-15 A | 2025-09-16 A | QTS-1371 | 100% | 2025-09-15 | 2025-10-10 | 01ADMIN | Preconstruction | Precon | GMP | Preconstruction | OFCI Procurement | BAB |
| QTS-36451 |  | DH 2100 / F21 Lineup // UPS Container #F21 | 20d | 2025-09-19 A | 2025-11-05 A | QTS-1371 | 100% | 2025-09-19 | 2025-10-16 | 01ADMIN | Preconstruction | Precon | GMP | Preconstruction | OFCI Procurement | BAB |
| QTS-36461 |  | DH 2100 / F21 Lineup // 2500KVA Padmount XFMR #F21 | 20d | 2025-10-01 A | 2025-10-21 A | QTS-1371 | 100% | 2025-10-01 | 2025-10-28 | 01ADMIN | Preconstruction | Precon | GMP | Preconstruction | OFCI Procurement | BAB |
| QTS-39621 |  | DH 2100 / F21 Lineup // Assembly - Tank #GEN-F21 | 20d | 2025-10-13 A | 2025-11-20 A | QTS-1371 | 100% | 2025-10-13 | 2025-11-07 | 01ADMIN | Preconstruction | Precon |  | Preconstruction | OFCI Procurement | BAB |
| QTS-39631 |  | DH 2100 / F21 Lineup // Assembly - Engine #GEN-F21 | 20d | 2025-10-13 A | 2025-11-20 A | QTS-1371 | 100% | 2025-10-13 | 2025-11-07 | 01ADMIN | Preconstruction | Precon |  | Preconstruction | OFCI Procurement | BAB |
| QTS-39641 |  | DH 2100 / F21 Lineup // Assembly - SCR #GEN-F21 | 20d | 2025-10-13 A | 2026-02-02 A | QTS-1371 | 100% | 2025-10-13 | 2025-11-07 | 01ADMIN | Preconstruction | Precon |  | Preconstruction | OFCI Procurement | BAB |
| QTS-39651 |  | DH 2100 / F21 Lineup // Assembly - Housing #GEN-F21 | 20d | 2025-10-13 A | 2025-11-20 A | QTS-1371 | 100% | 2025-10-13 | 2025-11-07 | 01ADMIN | Preconstruction | Precon |  | Preconstruction | OFCI Procurement | BAB |
| QTS-36501 |  | DH 2100 / F21 Lineup // Skid #F21 | 20d | 2025-10-15 A | 2025-11-26 A | QTS-1371 | 100% | 2025-10-15 | 2025-11-11 | 01ADMIN | Preconstruction | Precon | GMP | Preconstruction | OFCI Procurement | BAB |

Notes:
- QTS-36301: allucent_notes: John Capriotti on 2025-08-12 15:08: Chiller received by Belaire/taken out of QAE Yard on 8/11 to set. / allucent_notes: 2025-08-12 15:08 - User: John Capriotti - Date Added: 2025-08-12 15:08 - Note: Chiller received by Belaire/taken out of QAE Yard on 8/11 to set.
- QTS-36311: allucent_notes_20251104_160200: Jason Johnston on 2025-10-27 22:10: No update from John Capriotti / John Capriotti on 2025-10-28 15:10: Set to receive and set this on 10/29. / allucent_notes_20251028_163138: Jason Johnston on 2025-10-27 22:10: No update from John Capriotti / John Capriotti on 2025-10-28 15:10: Set to receive and set this on 10/29. / allucent_notes_20251027_224008: Jason Johnston on 2025-10-27 22:10: No update from John Capriotti / allucent_notes: 2025-10-27 22:10 - User: Jason Johnston - Date Added: 2025-10-27 22:10 - Note: No update from John Capriotti / 2025-10-28 15:10 - User: John Capriotti - Date Added: 2025-10-28 15:10 - Note: Set to receive and set this on 10/29.
- QTS-36321: allucent_notes_20251028_163138: John Capriotti on 2025-10-28 15:10: Received and set on 10/21. / allucent_notes: 2025-10-28 15:10 - User: John Capriotti - Date Added: 2025-10-28 15:10 - Note: Received and set on 10/21.
- QTS-39541: allucent_notes_20251118_192630: John Capriotti on 2025-11-11 12:11: Set to receive on 11/13 / allucent_notes_20251111_182405: John Capriotti on 2025-11-11 12:11: Set to receive on 11/13 / allucent_notes: 2025-11-11 12:11 - User: John Capriotti - Date Added: 2025-11-11 12:11 - Note: Set to receive on 11/13
- QTS-39551: allucent_notes_20251118_192630: John Capriotti on 2025-11-11 12:11: Set to receive on 11/13 / allucent_notes_20251111_182405: John Capriotti on 2025-11-11 12:11: Set to receive on 11/13 / allucent_notes: 2025-11-11 12:11 - User: John Capriotti - Date Added: 2025-11-11 12:11 - Note: Set to receive on 11/13
- QTS-39561: allucent_notes_20251216_165335: Jason Johnston on 2025-11-11 17:11: John owes 11/11 update / John Capriotti on 2025-12-09 12:40: Pending confirmation on timing from Belaire on this. Followed up on 12/9. / Jason Johnston on 2025-12-16 15:16: not yet / allucent_notes_20251209_203830: Jason Johnston on 2025-11-11 17:11: John owes 11/11 update / John Capriotti on 2025-12-09 12:40: Pending confirmation on timing from Belaire on this. Followed up on 12/9. / allucent_notes_20251202_153722: Jason Johnston on 2025-11-11 17:11: John owes 11/11 update / allucent_notes_20251118_192630: Jason Johnston on 2025-11-11 17:11: John owes 11/11 update / allucent_notes_20251111_182405: Jason Johnston on 2025-11-11 17:11: John owes 11/11 update / allucent_notes_20251230_164549: Jason Johnston on 2025-11-11 17:11: John owes 11/11 update / John Capriotti on 2025-12-09 12:40: Pending confirmation on timing from Belaire on this. Followed up on 12/9. / Jason Johnston on 2025-12-16 15:16: not yet / John Capriotti on 2025-12-30 10:37: SCRs will be delivered when we are ready to set. The Mfg/Vendor has these located in their yard in Texas, but we are not going to ship all of these to site to store and then mobilize a separate crane and additional trucks to bring to the building. That would be a decent cost and significantly more coordination, with no added benefit. / Ultimately, I, John Capriotti (OFCI), need an update from the Subs/Supers as to when we intend to set them so I can schedule the delivery to support those set dates. / **I will press for updated dates on these, moving out as I work on getting estimated set dates. / allucent_notes: 2025-11-11 17:11 - User: Jason Johnston - Date Added: 2025-11-11 17:11 - Note: John owes 11/11 update / 2025-12-09 12:40 - User: John Capriotti - Date Added: 2025-12-09 12:40 - Note: Pending confirmation on timing from Belaire on this. Followed up on 12
- QTS-39571: allucent_notes_20251118_192630: John Capriotti on 2025-11-11 12:11: Set to receive on 11/13 / allucent_notes_20251111_182405: John Capriotti on 2025-11-11 12:11: Set to receive on 11/13 / allucent_notes: 2025-11-11 12:11 - User: John Capriotti - Date Added: 2025-11-11 12:11 - Note: Set to receive on 11/13
- QTS-36371: allucent_notes: John Capriotti on 2025-08-12 15:08: Chiller received by Belaire/taken out of QAE Yard on 8/11 to set. / allucent_notes: 2025-08-12 15:08 - User: John Capriotti - Date Added: 2025-08-12 15:08 - Note: Chiller received by Belaire/taken out of QAE Yard on 8/11 to set.
- QTS-36381: allucent_notes_20251118_192630: Jason Johnston on 2025-10-27 22:10: No update from John Capriotti / John Capriotti on 2025-10-28 15:10: Per Vendor/Fibrebond they confirmed delivery for 11/5. Unable to bring in early do to logistics, permitting, etc. Will set when it comes in. / allucent_notes_20251111_182405: Jason Johnston on 2025-10-27 22:10: No update from John Capriotti / John Capriotti on 2025-10-28 15:10: Per Vendor/Fibrebond they confirmed delivery for 11/5. Unable to bring in early do to logistics, permitting, etc. Will set when it comes in. / allucent_notes_20251104_160200: Jason Johnston on 2025-10-27 22:10: No update from John Capriotti / John Capriotti on 2025-10-28 15:10: Per Vendor/Fibrebond they confirmed delivery for 11/5. Unable to bring in early do to logistics, permitting, etc. Will set when it comes in. / allucent_notes_20251028_163138: Jason Johnston on 2025-10-27 22:10: No update from John Capriotti / John Capriotti on 2025-10-28 15:10: Per Vendor/Fibrebond they confirmed delivery for 11/5. Unable to bring in early do to logistics, permitting, etc. Will set when it comes in. / allucent_notes_20251027_224008: Jason Johnston on 2025-10-27 22:10: No update from John Capriotti / allucent_notes: 2025-10-27 22:10 - User: Jason Johnston - Date Added: 2025-10-27 22:10 - Note: No update from John Capriotti / 2025-10-28 15:10 - User: John Capriotti - Date Added: 2025-10-28 15:10 - Note: Per Vendor/Fibrebond they confirmed delivery for 11/5. Unable to
- QTS-36391: allucent_notes_20251028_163138: John Capriotti on 2025-10-28 15:10: Received and set on 10/21. / allucent_notes: 2025-10-28 15:10 - User: John Capriotti - Date Added: 2025-10-28 15:10 - Note: Received and set on 10/21.
- QTS-39581: allucent_notes_20251118_192630: John Capriotti on 2025-11-11 12:11: Set to receive on 11/14 / allucent_notes_20251111_182405: John Capriotti on 2025-11-11 12:11: Set to receive on 11/14 / allucent_notes: 2025-11-11 12:11 - User: John Capriotti - Date Added: 2025-11-11 12:11 - Note: Set to receive on 11/14
- QTS-39591: allucent_notes_20251118_192630: John Capriotti on 2025-11-11 12:11: Set to receive on 11/14 / allucent_notes_20251111_182405: John Capriotti on 2025-11-11 12:11: Set to receive on 11/14 / allucent_notes: 2025-11-11 12:11 - User: John Capriotti - Date Added: 2025-11-11 12:11 - Note: Set to receive on 11/14
- QTS-39601: allucent_notes_20251216_165335: Jason Johnston on 2025-11-11 17:11: John owes 11/11 update / John Capriotti on 2025-12-09 12:40: Pending confirmation on timing from Belaire on this. Followed up on 12/9. / Jason Johnston on 2025-12-16 15:16: not yet / allucent_notes_20251209_203830: Jason Johnston on 2025-11-11 17:11: John owes 11/11 update / John Capriotti on 2025-12-09 12:40: Pending confirmation on timing from Belaire on this. Followed up on 12/9. / allucent_notes_20251202_153722: Jason Johnston on 2025-11-11 17:11: John owes 11/11 update / allucent_notes_20251118_192630: Jason Johnston on 2025-11-11 17:11: John owes 11/11 update / allucent_notes_20251111_182405: Jason Johnston on 2025-11-11 17:11: John owes 11/11 update / allucent_notes_20251230_164549: Jason Johnston on 2025-11-11 17:11: John owes 11/11 update / John Capriotti on 2025-12-09 12:40: Pending confirmation on timing from Belaire on this. Followed up on 12/9. / Jason Johnston on 2025-12-16 15:16: not yet / John Capriotti on 2025-12-30 10:37: SCRs will be delivered when we are ready to set. The Mfg/Vendor has these located in their yard in Texas, but we are not going to ship all of these to site to store and then mobilize a separate crane and additional trucks to bring to the building. That would be a decent cost and significantly more coordination, with no added benefit. / Ultimately, I, John Capriotti (OFCI), need an update from the Subs/Supers as to when we intend to set them so I can schedule the delivery to support those set dates. / **I will press for updated dates on these, moving out as I work on getting estimated set dates. / allucent_notes: 2025-11-11 17:11 - User: Jason Johnston - Date Added: 2025-11-11 17:11 - Note: John owes 11/11 update / 2025-12-09 12:40 - User: John Capriotti - Date Added: 2025-12-09 12:40 - Note: Pending confirmation on timing from Belaire on this. Followed up on 12
- QTS-39611: allucent_notes_20251118_192630: John Capriotti on 2025-11-11 12:11: Set to receive on 11/14 / allucent_notes_20251111_182405: John Capriotti on 2025-11-11 12:11: Set to receive on 11/14 / allucent_notes: 2025-11-11 12:11 - User: John Capriotti - Date Added: 2025-11-11 12:11 - Note: Set to receive on 11/14
- QTS-36441: allucent_notes: John Capriotti on 2025-08-12 15:08: Chiller received by Belaire/taken out of QAE Yard on 8/11 to set. / allucent_notes: 2025-08-12 15:08 - User: John Capriotti - Date Added: 2025-08-12 15:08 - Note: Chiller received by Belaire/taken out of QAE Yard on 8/11 to set.
- QTS-36451: allucent_notes_20251118_192630: Jason Johnston on 2025-10-27 22:10: No update from John Capriotti / John Capriotti on 2025-10-28 15:10: Per Vendor/Fibrebond they confirmed delivery for 11/5. Unable to bring in early do to logistics, permitting, etc. Will set when it comes in. / allucent_notes_20251111_182405: Jason Johnston on 2025-10-27 22:10: No update from John Capriotti / John Capriotti on 2025-10-28 15:10: Per Vendor/Fibrebond they confirmed delivery for 11/5. Unable to bring in early do to logistics, permitting, etc. Will set when it comes in. / allucent_notes_20251104_160200: Jason Johnston on 2025-10-27 22:10: No update from John Capriotti / John Capriotti on 2025-10-28 15:10: Per Vendor/Fibrebond they confirmed delivery for 11/5. Unable to bring in early do to logistics, permitting, etc. Will set when it comes in. / allucent_notes_20251028_163138: Jason Johnston on 2025-10-27 22:10: No update from John Capriotti / John Capriotti on 2025-10-28 15:10: Per Vendor/Fibrebond they confirmed delivery for 11/5. Unable to bring in early do to logistics, permitting, etc. Will set when it comes in. / allucent_notes_20251027_224008: Jason Johnston on 2025-10-27 22:10: No update from John Capriotti / allucent_notes: 2025-10-27 22:10 - User: Jason Johnston - Date Added: 2025-10-27 22:10 - Note: No update from John Capriotti / 2025-10-28 15:10 - User: John Capriotti - Date Added: 2025-10-28 15:10 - Note: Per Vendor/Fibrebond they confirmed delivery for 11/5. Unable to
- QTS-36461: allucent_notes_20251028_163138: John Capriotti on 2025-10-28 15:10: Received and set on 10/21. / allucent_notes: 2025-10-28 15:10 - User: John Capriotti - Date Added: 2025-10-28 15:10 - Note: Received and set on 10/21.
- QTS-39621: allucent_notes_20251202_153722: John Capriotti on 2025-11-11 12:11: Set to receive on 11/14 / John Capriotti on 2025-11-18T18:31:52.018Z: To be delivered and set 11/20, some logistics changes and timing, but will set on 11/20 / allucent_notes_20251118_192630: John Capriotti on 2025-11-11 12:11: Set to receive on 11/14 / John Capriotti on 2025-11-18T18:31:52.018Z: To be delivered and set 11/20, some logistics changes and timing, but will set on 11/20 / allucent_notes_20251111_182405: John Capriotti on 2025-11-11 12:11: Set to receive on 11/14 / allucent_notes: 2025-11-11 12:11 - User: John Capriotti - Date Added: 2025-11-11 12:11 - Note: Set to receive on 11/14 / 2025-11-18T18:31:52.018Z - User: John Capriotti - Date Added: 2025-11-18T18:31:52.018Z - Note: To be delivered and set 11/20, some logistics changes
- QTS-39631: allucent_notes_20251202_153722: John Capriotti on 2025-11-11 12:11: Set to receive on 11/14 / John Capriotti on 2025-11-18T18:31:59.056Z: To be delivered and set 11/20, some logistics changes and timing, but will set on 11/20 / allucent_notes_20251118_192630: John Capriotti on 2025-11-11 12:11: Set to receive on 11/14 / John Capriotti on 2025-11-18T18:31:59.056Z: To be delivered and set 11/20, some logistics changes and timing, but will set on 11/20 / allucent_notes_20251111_182405: John Capriotti on 2025-11-11 12:11: Set to receive on 11/14 / allucent_notes: 2025-11-11 12:11 - User: John Capriotti - Date Added: 2025-11-11 12:11 - Note: Set to receive on 11/14 / 2025-11-18T18:31:59.056Z - User: John Capriotti - Date Added: 2025-11-18T18:31:59.056Z - Note: To be delivered and set 11/20, some logistics changes
- QTS-39641: allucent_notes_20251216_165335: Jason Johnston on 2025-11-11 17:11: John owes 11/11 update / John Capriotti on 2025-12-09 12:40: Pending confirmation on timing from Belaire on this. Followed up on 12/9. / Jason Johnston on 2025-12-16 15:16: not yet / allucent_notes_20251209_203830: Jason Johnston on 2025-11-11 17:11: John owes 11/11 update / John Capriotti on 2025-12-09 12:40: Pending confirmation on timing from Belaire on this. Followed up on 12/9. / allucent_notes_20251202_153722: Jason Johnston on 2025-11-11 17:11: John owes 11/11 update / allucent_notes_20251118_192630: Jason Johnston on 2025-11-11 17:11: John owes 11/11 update / allucent_notes_20251111_182405: Jason Johnston on 2025-11-11 17:11: John owes 11/11 update / allucent_notes_20251230_164549: Jason Johnston on 2025-11-11 17:11: John owes 11/11 update / John Capriotti on 2025-12-09 12:40: Pending confirmation on timing from Belaire on this. Followed up on 12/9. / Jason Johnston on 2025-12-16 15:16: not yet / John Capriotti on 2025-12-30 10:37: SCRs will be delivered when we are ready to set. The Mfg/Vendor has these located in their yard in Texas, but we are not going to ship all of these to site to store and then mobilize a separate crane and additional trucks to bring to the building. That would be a decent cost and significantly more coordination, with no added benefit. / Ultimately, I, John Capriotti (OFCI), need an update from the Subs/Supers as to when we intend to set them so I can schedule the delivery to support those set dates. / **I will press for updated dates on these, moving out as I work on getting estimated set dates. / allucent_notes: 2025-11-11 17:11 - User: Jason Johnston - Date Added: 2025-11-11 17:11 - Note: John owes 11/11 update / 2025-12-09 12:40 - User: John Capriotti - Date Added: 2025-12-09 12:40 - Note: Pending confirmation on timing from Belaire on this. Followed up on 12
- QTS-39651: allucent_notes_20251202_153722: John Capriotti on 2025-11-11 12:11: Set to receive on 11/14 / John Capriotti on 2025-11-18T18:32:04.379Z: To be delivered and set 11/20, some logistics changes and timing, but will set on 11/20 / allucent_notes_20251118_192630: John Capriotti on 2025-11-11 12:11: Set to receive on 11/14 / John Capriotti on 2025-11-18T18:32:04.379Z: To be delivered and set 11/20, some logistics changes and timing, but will set on 11/20 / allucent_notes_20251111_182405: John Capriotti on 2025-11-11 12:11: Set to receive on 11/14 / allucent_notes: 2025-11-11 12:11 - User: John Capriotti - Date Added: 2025-11-11 12:11 - Note: Set to receive on 11/14 / 2025-11-18T18:32:04.379Z - User: John Capriotti - Date Added: 2025-11-18T18:32:04.379Z - Note: To be delivered and set 11/20, some logistics changes
- QTS-36501: allucent_notes_20251202_153722: Jason Johnston on 2025-10-27 22:10: No update from John Capriotti / allucent_notes_20251028_163138: Jason Johnston on 2025-10-27 22:10: No update from John Capriotti / allucent_notes_20251027_224008: Jason Johnston on 2025-10-27 22:10: No update from John Capriotti / allucent_notes: 2025-10-27 22:10 - User: Jason Johnston - Date Added: 2025-10-27 22:10 - Note: No update from John Capriotti

| ID | WBS | Activity | Duration | Start | Finish | Predecessors | Complete | Planned start | Planned finish | Allucent CSI Group | Project Section | Layton Discipline | Baseline | Project Section-1 | Precon Phase | Contract |
| --- | --- | --- | --- | --- | --- | --- | --- | --- | --- | --- | --- | --- | --- | --- | --- | --- |
|  | 9 | **R21 Lineup** |  | 2025-07-07 | 2026-02-02 |  |  |  |  |  |  |  |  |  |  |  |
| QTS-20751 |  | DH 2100 / R21 Lineup // Chiller #1RT40-R21 | 20d | 2025-07-07 A | 2025-08-11 A | QTS-1371 | 100% | 2025-07-07 | 2025-08-01 | 01ADMIN | Preconstruction | Precon | GMP | Preconstruction | OFCI Procurement | BAB |
| QTS-31681 |  | DH 2100 / R21 Lineup // 600A MOD #R21-03 (CRAH Support) | 20d | 2025-07-21 A | 2025-07-29 A | QTS-1371 | 100% | 2025-09-15 | 2025-10-10 | 01ADMIN | Preconstruction | Precon | GMP | Preconstruction | OFCI Procurement | BAB |
| QTS-31781 |  | DH 2100 / R21 Lineup // 225A MOD #R21-02 | 20d | 2025-09-15 A | 2025-09-16 A | QTS-1371 | 100% | 2025-09-15 | 2025-10-10 | 01ADMIN | Preconstruction | Precon | GMP | Preconstruction | OFCI Procurement | BAB |
| QTS-23901 |  | DH 2100 / R21 Lineup // UPS Container #R21 | 20d | 2025-09-19 A | 2025-11-06 A | QTS-1371 | 100% | 2025-09-19 | 2025-10-16 | 01ADMIN | Preconstruction | Precon | GMP | Preconstruction | OFCI Procurement | BAB |
| QTS-24261 |  | DH 2100 / R21 Lineup // 2500KVA Padmount XFMR #R21 | 20d | 2025-10-01 A | 2025-10-21 A | QTS-1371 | 100% | 2025-10-01 | 2025-10-28 | 01ADMIN | Preconstruction | Precon | GMP | Preconstruction | OFCI Procurement | BAB |
| QTS-39661 |  | DH 2100 / R21 Lineup // Assembly - Tank #GEN-R21 | 20d | 2025-10-14 A | 2025-11-11 A | QTS-1371 | 100% | 2025-10-14 | 2025-11-10 | 01ADMIN | Preconstruction | Precon |  | Preconstruction | OFCI Procurement | BAB |
| QTS-39671 |  | DH 2100 / R21 Lineup // Assembly - Engine #GEN-R21 | 20d | 2025-10-14 A | 2025-11-11 A | QTS-1371 | 100% | 2025-10-14 | 2025-11-10 | 01ADMIN | Preconstruction | Precon |  | Preconstruction | OFCI Procurement | BAB |
| QTS-39681 |  | DH 2100 / R21 Lineup // Assembly - SCR #GEN-R21 | 20d | 2025-10-14 A | 2026-02-02 A | QTS-1371 | 100% | 2025-10-14 | 2025-11-10 | 01ADMIN | Preconstruction | Precon |  | Preconstruction | OFCI Procurement | BAB |
| QTS-39691 |  | DH 2100 / R21 Lineup // Assembly - Housing #GEN-R21 | 20d | 2025-10-14 A | 2025-11-11 A | QTS-1371 | 100% | 2025-10-14 | 2025-11-10 | 01ADMIN | Preconstruction | Precon |  | Preconstruction | OFCI Procurement | BAB |
|  | 2 | **Data Hall 1100 (Need By Dates)** |  | 2025-07-14 | 2026-02-02 |  |  |  |  |  |  |  |  |  |  |  |
| QTS-34531 |  | DH 1100 / CRAH #29 (Electrical Gallery) | 20d | 2025-09-09 A | 2025-12-15 A | QTS-1371 | 100% | 2025-09-09 | 2025-10-06 | 01ADMIN | Preconstruction | Precon | GMP | Preconstruction | OFCI Procurement | BAB |
| QTS-34541 |  | DH 1100 / CRAH #30 (Electrical Gallery) | 20d | 2025-09-09 A | 2025-12-15 A | QTS-1371 | 100% | 2025-09-09 | 2025-10-06 | 01ADMIN | Preconstruction | Precon | GMP | Preconstruction | OFCI Procurement | BAB |
| QTS-34551 |  | DH 1100 / CRAH #31 (Electrical Gallery) | 20d | 2025-09-09 A | 2025-12-15 A | QTS-1371 | 100% | 2025-09-09 | 2025-10-06 | 01ADMIN | Preconstruction | Precon | GMP | Preconstruction | OFCI Procurement | BAB |
| QTS-34561 |  | DH 1100 / CRAH #32 (Electrical Gallery) | 20d | 2025-09-09 A | 2025-12-15 A | QTS-1371 | 100% | 2025-09-09 | 2025-10-06 | 01ADMIN | Preconstruction | Precon | GMP | Preconstruction | OFCI Procurement | BAB |
| QTS-34251 |  | DH 1100 / CRAH #01 | 20d | 2025-09-18 A | 2025-11-18 A | QTS-1371 | 100% | 2025-09-18 | 2025-10-15 | 01ADMIN | Preconstruction | Precon | GMP | Preconstruction | OFCI Procurement | BAB |
| QTS-34261 |  | DH 1100 / CRAH #02 | 20d | 2025-09-18 A | 2025-11-18 A | QTS-1371 | 100% | 2025-09-18 | 2025-10-15 | 01ADMIN | Preconstruction | Precon | GMP | Preconstruction | OFCI Procurement | BAB |
| QTS-34271 |  | DH 1100 / CRAH #03 | 20d | 2025-09-18 A | 2025-11-21 A | QTS-1371 | 100% | 2025-09-18 | 2025-10-15 | 01ADMIN | Preconstruction | Precon | GMP | Preconstruction | OFCI Procurement | BAB |
| QTS-34281 |  | DH 1100 / CRAH #04 | 20d | 2025-09-18 A | 2025-11-21 A | QTS-1371 | 100% | 2025-09-18 | 2025-10-15 | 01ADMIN | Preconstruction | Precon | GMP | Preconstruction | OFCI Procurement | BAB |
| QTS-34291 |  | DH 1100 / CRAH #05 | 20d | 2025-09-18 A | 2025-11-21 A | QTS-1371 | 100% | 2025-09-18 | 2025-10-15 | 01ADMIN | Preconstruction | Precon | GMP | Preconstruction | OFCI Procurement | BAB |
| QTS-34301 |  | DH 1100 / CRAH #06 | 20d | 2025-09-18 A | 2025-11-21 A | QTS-1371 | 100% | 2025-09-18 | 2025-10-15 | 01ADMIN | Preconstruction | Precon | GMP | Preconstruction | OFCI Procurement | BAB |
| QTS-34311 |  | DH 1100 / CRAH #07 | 20d | 2025-09-18 A | 2025-11-21 A | QTS-1371 | 100% | 2025-09-18 | 2025-10-15 | 01ADMIN | Preconstruction | Precon | GMP | Preconstruction | OFCI Procurement | BAB |
| QTS-34321 |  | DH 1100 / CRAH #08 | 20d | 2025-09-18 A | 2025-11-21 A | QTS-1371 | 100% | 2025-09-18 | 2025-10-15 | 01ADMIN | Preconstruction | Precon | GMP | Preconstruction | OFCI Procurement | BAB |
| QTS-34331 |  | DH 1100 / CRAH #09 | 20d | 2025-09-18 A | 2025-11-24 A | QTS-1371 | 100% | 2025-09-18 | 2025-10-15 | 01ADMIN | Preconstruction | Precon | GMP | Preconstruction | OFCI Procurement | BAB |
| QTS-34341 |  | DH 1100 / CRAH #10 | 20d | 2025-09-18 A | 2025-11-24 A | QTS-1371 | 100% | 2025-09-18 | 2025-10-15 | 01ADMIN | Preconstruction | Precon | GMP | Preconstruction | OFCI Procurement | BAB |
| QTS-34351 |  | DH 1100 / CRAH #11 | 20d | 2025-09-18 A | 2025-11-24 A | QTS-1371 | 100% | 2025-09-18 | 2025-10-15 | 01ADMIN | Preconstruction | Precon | GMP | Preconstruction | OFCI Procurement | BAB |
| QTS-34361 |  | DH 1100 / CRAH #12 | 20d | 2025-09-18 A | 2025-11-24 A | QTS-1371 | 100% | 2025-09-18 | 2025-10-15 | 01ADMIN | Preconstruction | Precon | GMP | Preconstruction | OFCI Procurement | BAB |
| QTS-34371 |  | DH 1100 / CRAH #13 | 20d | 2025-09-18 A | 2025-11-24 A | QTS-1371 | 100% | 2025-09-18 | 2025-10-15 | 01ADMIN | Preconstruction | Precon | GMP | Preconstruction | OFCI Procurement | BAB |
| QTS-34381 |  | DH 1100 / CRAH #14 | 20d | 2025-09-18 A | 2025-11-24 A | QTS-1371 | 100% | 2025-09-18 | 2025-10-15 | 01ADMIN | Preconstruction | Precon | GMP | Preconstruction | OFCI Procurement | BAB |
| QTS-22261 |  | DH 1100 / DOAS #01 | 20d | 2025-10-01 A | 2025-12-23 A | QTS-1371 | 100% | 2025-10-01 | 2025-10-28 | 01ADMIN | Preconstruction | Precon | GMP | Preconstruction | OFCI Procurement | BAB |
| QTS-25381 |  | DH 1100 / DOAS #02 | 20d | 2025-10-01 A | 2025-12-23 A | QTS-1371 | 100% | 2025-10-01 | 2025-10-28 | 01ADMIN | Preconstruction | Precon | GMP | Preconstruction | OFCI Procurement | BAB |
| QTS-34391 |  | DH 1100 / CRAH #15 | 20d | 2025-10-02 A | 2025-11-25 A | QTS-1371 | 100% | 2025-10-02 | 2025-10-29 | 01ADMIN | Preconstruction | Precon | GMP | Preconstruction | OFCI Procurement | BAB |
| QTS-34401 |  | DH 1100 / CRAH #16 | 20d | 2025-10-02 A | 2025-11-25 A | QTS-1371 | 100% | 2025-10-02 | 2025-10-29 | 01ADMIN | Preconstruction | Precon | GMP | Preconstruction | OFCI Procurement | BAB |
| QTS-34411 |  | DH 1100 / CRAH #17 | 20d | 2025-10-02 A | 2025-11-25 A | QTS-1371 | 100% | 2025-10-02 | 2025-10-29 | 01ADMIN | Preconstruction | Precon | GMP | Preconstruction | OFCI Procurement | BAB |
| QTS-34421 |  | DH 1100 / CRAH #18 | 20d | 2025-10-02 A | 2025-11-25 A | QTS-1371 | 100% | 2025-10-02 | 2025-10-29 | 01ADMIN | Preconstruction | Precon | GMP | Preconstruction | OFCI Procurement | BAB |
| QTS-34431 |  | DH 1100 / CRAH #19 | 20d | 2025-10-02 A | 2025-11-25 A | QTS-1371 | 100% | 2025-10-02 | 2025-10-29 | 01ADMIN | Preconstruction | Precon | GMP | Preconstruction | OFCI Procurement | BAB |
| QTS-34441 |  | DH 1100 / CRAH #20 | 20d | 2025-10-02 A | 2025-11-25 A | QTS-1371 | 100% | 2025-10-02 | 2025-10-29 | 01ADMIN | Preconstruction | Precon | GMP | Preconstruction | OFCI Procurement | BAB |
| QTS-34451 |  | DH 1100 / CRAH #21 | 20d | 2025-10-02 A | 2025-11-26 A | QTS-1371 | 100% | 2025-10-02 | 2025-10-29 | 01ADMIN | Preconstruction | Precon | GMP | Preconstruction | OFCI Procurement | BAB |
| QTS-34461 |  | DH 1100 / CRAH #22 | 20d | 2025-10-02 A | 2025-11-26 A | QTS-1371 | 100% | 2025-10-02 | 2025-10-29 | 01ADMIN | Preconstruction | Precon | GMP | Preconstruction | OFCI Procurement | BAB |
| QTS-34471 |  | DH 1100 / CRAH #23 | 20d | 2025-10-02 A | 2025-11-26 A | QTS-1371 | 100% | 2025-10-02 | 2025-10-29 | 01ADMIN | Preconstruction | Precon | GMP | Preconstruction | OFCI Procurement | BAB |
| QTS-34481 |  | DH 1100 / CRAH #24 | 20d | 2025-10-02 A | 2025-11-26 A | QTS-1371 | 100% | 2025-10-02 | 2025-10-29 | 01ADMIN | Preconstruction | Precon | GMP | Preconstruction | OFCI Procurement | BAB |
| QTS-34491 |  | DH 1100 / CRAH #25 | 20d | 2025-10-02 A | 2025-11-26 A | QTS-1371 | 100% | 2025-10-02 | 2025-10-29 | 01ADMIN | Preconstruction | Precon | GMP | Preconstruction | OFCI Procurement | BAB |
| QTS-34501 |  | DH 1100 / CRAH #26 | 20d | 2025-10-02 A | 2025-11-26 A | QTS-1371 | 100% | 2025-10-02 | 2025-10-29 | 01ADMIN | Preconstruction | Precon | GMP | Preconstruction | OFCI Procurement | BAB |
| QTS-34511 |  | DH 1100 / CRAH #27 | 20d | 2025-10-02 A | 2025-12-01 A | QTS-1371 | 100% | 2025-10-02 | 2025-10-29 | 01ADMIN | Preconstruction | Precon | GMP | Preconstruction | OFCI Procurement | BAB |
| QTS-34521 |  | DH 1100 / CRAH #28 | 20d | 2025-10-02 A | 2025-12-01 A | QTS-1371 | 100% | 2025-10-02 | 2025-10-29 | 01ADMIN | Preconstruction | Precon | GMP | Preconstruction | OFCI Procurement | BAB |

Notes:
- QTS-20751: allucent_notes: John Capriotti on 2025-08-12 15:08: Chiller received by Belaire/taken out of QAE Yard on 8/11 to set. / allucent_notes: 2025-08-12 15:08 - User: John Capriotti - Date Added: 2025-08-12 15:08 - Note: Chiller received by Belaire/taken out of QAE Yard on 8/11 to set.
- QTS-23901: allucent_notes_20251118_192630: John Capriotti on 2025-10-27 19:10: Currently setting PODs / John Capriotti on 2025-11-04 14:11: Receiving and setting on 11/6 / allucent_notes_20251111_182405: John Capriotti on 2025-10-27 19:10: Currently setting PODs / John Capriotti on 2025-11-04 14:11: Receiving and setting on 11/6 / allucent_notes_20251104_160200: John Capriotti on 2025-10-27 19:10: Currently setting PODs / John Capriotti on 2025-11-04 14:11: Receiving and setting on 11/6 / allucent_notes_20251028_163138: John Capriotti on 2025-10-27 19:10: Currently setting PODs / allucent_notes_20251027_224008: John Capriotti on 2025-10-27 19:10: Currently setting PODs / allucent_notes: 2025-10-27 19:10 - User: John Capriotti - Date Added: 2025-10-27 19:10 - Note: Currently setting PODs / 2025-11-04 14:11 - User: John Capriotti - Date Added: 2025-11-04 14:11 - Note: Receiving and setting on 11/6
- QTS-24261: allucent_notes_20251028_163138: John Capriotti on 2025-10-28 15:10: Received and set on 10/21. / allucent_notes: 2025-10-28 15:10 - User: John Capriotti - Date Added: 2025-10-28 15:10 - Note: Received and set on 10/21.
- QTS-39661: allucent_notes_20251118_192630: John Capriotti on 2025-11-11 12:11: Set to receive 11/17 / allucent_notes_20251111_182405: John Capriotti on 2025-11-11 12:11: Set to receive 11/17 / allucent_notes: 2025-11-11 12:11 - User: John Capriotti - Date Added: 2025-11-11 12:11 - Note: Set to receive 11/17
- QTS-39671: allucent_notes_20251118_192630: John Capriotti on 2025-11-11 12:11: Set to receive 11/17 / allucent_notes_20251111_182405: John Capriotti on 2025-11-11 12:11: Set to receive 11/17 / allucent_notes: 2025-11-11 12:11 - User: John Capriotti - Date Added: 2025-11-11 12:11 - Note: Set to receive 11/17
- QTS-39681: allucent_notes_20251216_165335: Jason Johnston on 2025-11-11 17:11: John owes 11/11 update / John Capriotti on 2025-12-09 12:40: Pending confirmation on timing from Belaire on this. Followed up on 12/9. / Jason Johnston on 2025-12-16 15:16: not yet / allucent_notes_20251209_203830: Jason Johnston on 2025-11-11 17:11: John owes 11/11 update / John Capriotti on 2025-12-09 12:40: Pending confirmation on timing from Belaire on this. Followed up on 12/9. / allucent_notes_20251202_153722: Jason Johnston on 2025-11-11 17:11: John owes 11/11 update / allucent_notes_20251118_192630: Jason Johnston on 2025-11-11 17:11: John owes 11/11 update / allucent_notes_20251111_182405: Jason Johnston on 2025-11-11 17:11: John owes 11/11 update / allucent_notes_20251230_164549: Jason Johnston on 2025-11-11 17:11: John owes 11/11 update / John Capriotti on 2025-12-09 12:40: Pending confirmation on timing from Belaire on this. Followed up on 12/9. / Jason Johnston on 2025-12-16 15:16: not yet / John Capriotti on 2025-12-30 10:37: SCRs will be delivered when we are ready to set. The Mfg/Vendor has these located in their yard in Texas, but we are not going to ship all of these to site to store and then mobilize a separate crane and additional trucks to bring to the building. That would be a decent cost and significantly more coordination, with no added benefit. / Ultimately, I, John Capriotti (OFCI), need an update from the Subs/Supers as to when we intend to set them so I can schedule the delivery to support those set dates. / **I will press for updated dates on these, moving out as I work on getting estimated set dates. / allucent_notes: 2025-11-11 17:11 - User: Jason Johnston - Date Added: 2025-11-11 17:11 - Note: John owes 11/11 update / 2025-12-09 12:40 - User: John Capriotti - Date Added: 2025-12-09 12:40 - Note: Pending confirmation on timing from Belaire on this. Followed up on 12
- QTS-39691: allucent_notes_20251118_192630: John Capriotti on 2025-11-11 12:11: Set to receive 11/17 / allucent_notes_20251111_182405: John Capriotti on 2025-11-11 12:11: Set to receive 11/17 / allucent_notes: 2025-11-11 12:11 - User: John Capriotti - Date Added: 2025-11-11 12:11 - Note: Set to receive 11/17
- QTS-34531: allucent_notes_20251216_165335: John Capriotti on 2025-10-07 13:10: Need to confirm dry-in status/completion date before bringing in these CRAH units, pushing a week until I can get confirmed status. / John Capriotti on 2025-10-21 14:10: Tentatively planning to received and bring in these CRAHs, 11/3. / John Capriotti on 2025-11-04 14:11: From my understanding we are waiting on a few walls to be finished, meeting tomorrow with Belaire to discuss when and how many to bring in each day. / Jason Johnston on 2025-12-02 11:50: Not delivered yet / John Capriotti on 2025-12-09 12:29: Delivery scheduled for 12/15 / allucent_notes_20251209_203830: John Capriotti on 2025-10-07 13:10: Need to confirm dry-in status/completion date before bringing in these CRAH units, pushing a week until I can get confirmed status. / John Capriotti on 2025-10-21 14:10: Tentatively planning to received and bring in these CRAHs, 11/3. / John Capriotti on 2025-11-04 14:11: From my understanding we are waiting on a few walls to be finished, meeting tomorrow with Belaire to discuss when and how many to bring in each day. / Jason Johnston on 2025-12-02 11:50: Not delivered yet / John Capriotti on 2025-12-09 12:29: Delivery scheduled for 12/15 / allucent_notes_20251202_153722: John Capriotti on 2025-10-07 13:10: Need to confirm dry-in status/completion date before bringing in these CRAH units, pushing a week until I can get confirmed status. / John Capriotti on 2025-10-21 14:10: Tentatively planning to received and bring in these CRAHs, 11/3. / John Capriotti on 2025-11-04 14:11: From my understanding we are waiting on a few walls to be finished, meeting tomorrow with Belaire to discuss when and how many to bring in each day. / Jason Johnston on 2025-12-02 11:50: Not delivered yet / allucent_notes_20251118_192630: John Capriotti on 2025-10-07 13:10: Need to confirm dry-in status/completion date before bringing in these CRAH units, pushing a week until I can get confirmed status. / John Capriotti on 2025-10-21 14:10: Tentatively planning to received and bring in these CRAHs, 11/3. / John Capriotti on 2025-11-04 14:11: From my understanding we are waiting on a few walls to be finished, meeting tomorrow with Belaire to discuss when and how many to bring in each day. / allucent_notes_20251111_182405: John Capriotti on 2025-10-07 13:10: Need to confirm dry-in status/completion date before bringing in these CRAH units, pushing a week until I can get confirmed status. / John Capriotti on 2025-10-21 14:10: Tentatively planning to received and bring in these CRAHs, 11/3. / John Capriotti on 2025-11-04 14:11: From my understanding we are waiting on a few walls to be finished, meeting tomorrow with Belaire to discuss when and how many to bring in each day. / allucent_notes_20251104_160200: John Capriotti on 2025-10-07 13:10: Need to confirm dry-in status/completion date before bringing in these CRAH units, pushing a week until I can get confirmed status. / John Capriotti on 2025-10-21 14:10: Tentatively planning to received and bring in these CRAHs, 11/3. / John Capriotti on 2025-11-04 14:11: From my understanding we are waiting on a few walls to be finished, meeting tomorrow with Belaire to discuss when and how many to bring in each day. / allucent_notes_20251028_163138: John Capriotti on 2025-10-07 13:10: Need to confirm dry-in status/completion date before bringing in these CRAH units, pushing a week until I can get confirmed status. / John Capriotti on 2025-10-21 14:10: Tentatively planning to received and bring in these CRAHs, 11/3. / allucent_notes_20251027_224008: John Capriotti on 2025-10-07 13:10: Need to confirm dry-in status/completion date before bringing in these CRAH units, pushing a week until I can get confirmed status. / John Capriotti on 2025-10-21 14:10: Tentatively planning to received and bring in these CRAHs, 11/3. / allucent_notes_20251021_145627: John Capriotti on 2025-10-07 13:10: Need to confirm dry-in status/completion date before bringing in these CRAH units, pushing a week until I can get confirmed status. / John Capriotti on 2025-10-21 14:10: Tentatively planning to received and bring in these CRAHs, 11/3. / allucent_notes_20251014_152335: John Capriotti on 2025-10-07 13:10: Need to confirm dry-in status/completion date before bringing in these CRAH units, pushing a week until I can get confirmed status. / allucent_notes: 2025-10-07 13:10 - User: John Capriotti - Date Added: 2025-10-07 13:10 - Note: Need to confirm dry-in status/completion date before bringing in these CRAH units, pushing a week until I can get confirmed status. / 2025-10-21 14:10 - User: John Capriotti -
- QTS-34541: allucent_notes_20251216_165335: John Capriotti on 2025-10-07 13:10: Need to confirm dry-in status/completion date before bringing in these CRAH units, pushing a week until I can get confirmed status. / John Capriotti on 2025-10-21 14:10: Tentatively planning to received and bring in these CRAHs, 11/3. / John Capriotti on 2025-11-04 14:11: From my understanding we are waiting on a few walls to be finished, meeting tomorrow with Belaire to discuss when and how many to bring in each day. / Jason Johnston on 2025-12-02 11:50: Not delivered yet / John Capriotti on 2025-12-09 12:29: Delivery scheduled for 12/15 / allucent_notes_20251209_203830: John Capriotti on 2025-10-07 13:10: Need to confirm dry-in status/completion date before bringing in these CRAH units, pushing a week until I can get confirmed status. / John Capriotti on 2025-10-21 14:10: Tentatively planning to received and bring in these CRAHs, 11/3. / John Capriotti on 2025-11-04 14:11: From my understanding we are waiting on a few walls to be finished, meeting tomorrow with Belaire to discuss when and how many to bring in each day. / Jason Johnston on 2025-12-02 11:50: Not delivered yet / John Capriotti on 2025-12-09 12:29: Delivery scheduled for 12/15 / allucent_notes_20251202_153722: John Capriotti on 2025-10-07 13:10: Need to confirm dry-in status/completion date before bringing in these CRAH units, pushing a week until I can get confirmed status. / John Capriotti on 2025-10-21 14:10: Tentatively planning to received and bring in these CRAHs, 11/3. / John Capriotti on 2025-11-04 14:11: From my understanding we are waiting on a few walls to be finished, meeting tomorrow with Belaire to discuss when and how many to bring in each day. / Jason Johnston on 2025-12-02 11:50: Not delivered yet / allucent_notes_20251118_192630: John Capriotti on 2025-10-07 13:10: Need to confirm dry-in status/completion date before bringing in these CRAH units, pushing a week until I can get confirmed status. / John Capriotti on 2025-10-21 14:10: Tentatively planning to received and bring in these CRAHs, 11/3. / John Capriotti on 2025-11-04 14:11: From my understanding we are waiting on a few walls to be finished, meeting tomorrow with Belaire to discuss when and how many to bring in each day. / allucent_notes_20251111_182405: John Capriotti on 2025-10-07 13:10: Need to confirm dry-in status/completion date before bringing in these CRAH units, pushing a week until I can get confirmed status. / John Capriotti on 2025-10-21 14:10: Tentatively planning to received and bring in these CRAHs, 11/3. / John Capriotti on 2025-11-04 14:11: From my understanding we are waiting on a few walls to be finished, meeting tomorrow with Belaire to discuss when and how many to bring in each day. / allucent_notes_20251104_160200: John Capriotti on 2025-10-07 13:10: Need to confirm dry-in status/completion date before bringing in these CRAH units, pushing a week until I can get confirmed status. / John Capriotti on 2025-10-21 14:10: Tentatively planning to received and bring in these CRAHs, 11/3. / John Capriotti on 2025-11-04 14:11: From my understanding we are waiting on a few walls to be finished, meeting tomorrow with Belaire to discuss when and how many to bring in each day. / allucent_notes_20251028_163138: John Capriotti on 2025-10-07 13:10: Need to confirm dry-in status/completion date before bringing in these CRAH units, pushing a week until I can get confirmed status. / John Capriotti on 2025-10-21 14:10: Tentatively planning to received and bring in these CRAHs, 11/3. / allucent_notes_20251027_224008: John Capriotti on 2025-10-07 13:10: Need to confirm dry-in status/completion date before bringing in these CRAH units, pushing a week until I can get confirmed status. / John Capriotti on 2025-10-21 14:10: Tentatively planning to received and bring in these CRAHs, 11/3. / allucent_notes_20251021_145627: John Capriotti on 2025-10-07 13:10: Need to confirm dry-in status/completion date before bringing in these CRAH units, pushing a week until I can get confirmed status. / John Capriotti on 2025-10-21 14:10: Tentatively planning to received and bring in these CRAHs, 11/3. / allucent_notes_20251014_152335: John Capriotti on 2025-10-07 13:10: Need to confirm dry-in status/completion date before bringing in these CRAH units, pushing a week until I can get confirmed status. / allucent_notes: 2025-10-07 13:10 - User: John Capriotti - Date Added: 2025-10-07 13:10 - Note: Need to confirm dry-in status/completion date before bringing in these CRAH units, pushing a week until I can get confirmed status. / 2025-10-21 14:10 - User: John Capriotti -
- QTS-34551: allucent_notes_20251216_165335: John Capriotti on 2025-10-07 13:10: Need to confirm dry-in status/completion date before bringing in these CRAH units, pushing a week until I can get confirmed status. / John Capriotti on 2025-10-21 14:10: Tentatively planning to received and bring in these CRAHs, 11/3. / John Capriotti on 2025-11-04 14:11: From my understanding we are waiting on a few walls to be finished, meeting tomorrow with Belaire to discuss when and how many to bring in each day. / Jason Johnston on 2025-12-02 11:50: Not delivered yet / John Capriotti on 2025-12-09 12:30: Delivery scheduled for 12/15 / allucent_notes_20251209_203830: John Capriotti on 2025-10-07 13:10: Need to confirm dry-in status/completion date before bringing in these CRAH units, pushing a week until I can get confirmed status. / John Capriotti on 2025-10-21 14:10: Tentatively planning to received and bring in these CRAHs, 11/3. / John Capriotti on 2025-11-04 14:11: From my understanding we are waiting on a few walls to be finished, meeting tomorrow with Belaire to discuss when and how many to bring in each day. / Jason Johnston on 2025-12-02 11:50: Not delivered yet / John Capriotti on 2025-12-09 12:30: Delivery scheduled for 12/15 / allucent_notes_20251202_153722: John Capriotti on 2025-10-07 13:10: Need to confirm dry-in status/completion date before bringing in these CRAH units, pushing a week until I can get confirmed status. / John Capriotti on 2025-10-21 14:10: Tentatively planning to received and bring in these CRAHs, 11/3. / John Capriotti on 2025-11-04 14:11: From my understanding we are waiting on a few walls to be finished, meeting tomorrow with Belaire to discuss when and how many to bring in each day. / Jason Johnston on 2025-12-02 11:50: Not delivered yet / allucent_notes_20251118_192630: John Capriotti on 2025-10-07 13:10: Need to confirm dry-in status/completion date before bringing in these CRAH units, pushing a week until I can get confirmed status. / John Capriotti on 2025-10-21 14:10: Tentatively planning to received and bring in these CRAHs, 11/3. / John Capriotti on 2025-11-04 14:11: From my understanding we are waiting on a few walls to be finished, meeting tomorrow with Belaire to discuss when and how many to bring in each day. / allucent_notes_20251111_182405: John Capriotti on 2025-10-07 13:10: Need to confirm dry-in status/completion date before bringing in these CRAH units, pushing a week until I can get confirmed status. / John Capriotti on 2025-10-21 14:10: Tentatively planning to received and bring in these CRAHs, 11/3. / John Capriotti on 2025-11-04 14:11: From my understanding we are waiting on a few walls to be finished, meeting tomorrow with Belaire to discuss when and how many to bring in each day. / allucent_notes_20251104_160200: John Capriotti on 2025-10-07 13:10: Need to confirm dry-in status/completion date before bringing in these CRAH units, pushing a week until I can get confirmed status. / John Capriotti on 2025-10-21 14:10: Tentatively planning to received and bring in these CRAHs, 11/3. / John Capriotti on 2025-11-04 14:11: From my understanding we are waiting on a few walls to be finished, meeting tomorrow with Belaire to discuss when and how many to bring in each day. / allucent_notes_20251028_163138: John Capriotti on 2025-10-07 13:10: Need to confirm dry-in status/completion date before bringing in these CRAH units, pushing a week until I can get confirmed status. / John Capriotti on 2025-10-21 14:10: Tentatively planning to received and bring in these CRAHs, 11/3. / allucent_notes_20251027_224008: John Capriotti on 2025-10-07 13:10: Need to confirm dry-in status/completion date before bringing in these CRAH units, pushing a week until I can get confirmed status. / John Capriotti on 2025-10-21 14:10: Tentatively planning to received and bring in these CRAHs, 11/3. / allucent_notes_20251021_145627: John Capriotti on 2025-10-07 13:10: Need to confirm dry-in status/completion date before bringing in these CRAH units, pushing a week until I can get confirmed status. / John Capriotti on 2025-10-21 14:10: Tentatively planning to received and bring in these CRAHs, 11/3. / allucent_notes_20251014_152335: John Capriotti on 2025-10-07 13:10: Need to confirm dry-in status/completion date before bringing in these CRAH units, pushing a week until I can get confirmed status. / allucent_notes: 2025-10-07 13:10 - User: John Capriotti - Date Added: 2025-10-07 13:10 - Note: Need to confirm dry-in status/completion date before bringing in these CRAH units, pushing a week until I can get confirmed status. / 2025-10-21 14:10 - User: John Capriotti -
- QTS-34561: allucent_notes_20251216_165335: John Capriotti on 2025-10-07 13:10: Need to confirm dry-in status/completion date before bringing in these CRAH units, pushing a week until I can get confirmed status. / John Capriotti on 2025-10-21 14:10: Tentatively planning to received and bring in these CRAHs, 11/3. / John Capriotti on 2025-11-04 14:11: From my understanding we are waiting on a few walls to be finished, meeting tomorrow with Belaire to discuss when and how many to bring in each day. / Jason Johnston on 2025-12-02 11:50: Not delivered yet / John Capriotti on 2025-12-09 12:30: Delivery scheduled for 12/15 / allucent_notes_20251209_203830: John Capriotti on 2025-10-07 13:10: Need to confirm dry-in status/completion date before bringing in these CRAH units, pushing a week until I can get confirmed status. / John Capriotti on 2025-10-21 14:10: Tentatively planning to received and bring in these CRAHs, 11/3. / John Capriotti on 2025-11-04 14:11: From my understanding we are waiting on a few walls to be finished, meeting tomorrow with Belaire to discuss when and how many to bring in each day. / Jason Johnston on 2025-12-02 11:50: Not delivered yet / John Capriotti on 2025-12-09 12:30: Delivery scheduled for 12/15 / allucent_notes_20251202_153722: John Capriotti on 2025-10-07 13:10: Need to confirm dry-in status/completion date before bringing in these CRAH units, pushing a week until I can get confirmed status. / John Capriotti on 2025-10-21 14:10: Tentatively planning to received and bring in these CRAHs, 11/3. / John Capriotti on 2025-11-04 14:11: From my understanding we are waiting on a few walls to be finished, meeting tomorrow with Belaire to discuss when and how many to bring in each day. / Jason Johnston on 2025-12-02 11:50: Not delivered yet / allucent_notes_20251118_192630: John Capriotti on 2025-10-07 13:10: Need to confirm dry-in status/completion date before bringing in these CRAH units, pushing a week until I can get confirmed status. / John Capriotti on 2025-10-21 14:10: Tentatively planning to received and bring in these CRAHs, 11/3. / John Capriotti on 2025-11-04 14:11: From my understanding we are waiting on a few walls to be finished, meeting tomorrow with Belaire to discuss when and how many to bring in each day. / allucent_notes_20251111_182405: John Capriotti on 2025-10-07 13:10: Need to confirm dry-in status/completion date before bringing in these CRAH units, pushing a week until I can get confirmed status. / John Capriotti on 2025-10-21 14:10: Tentatively planning to received and bring in these CRAHs, 11/3. / John Capriotti on 2025-11-04 14:11: From my understanding we are waiting on a few walls to be finished, meeting tomorrow with Belaire to discuss when and how many to bring in each day. / allucent_notes_20251104_160200: John Capriotti on 2025-10-07 13:10: Need to confirm dry-in status/completion date before bringing in these CRAH units, pushing a week until I can get confirmed status. / John Capriotti on 2025-10-21 14:10: Tentatively planning to received and bring in these CRAHs, 11/3. / John Capriotti on 2025-11-04 14:11: From my understanding we are waiting on a few walls to be finished, meeting tomorrow with Belaire to discuss when and how many to bring in each day. / allucent_notes_20251028_163138: John Capriotti on 2025-10-07 13:10: Need to confirm dry-in status/completion date before bringing in these CRAH units, pushing a week until I can get confirmed status. / John Capriotti on 2025-10-21 14:10: Tentatively planning to received and bring in these CRAHs, 11/3. / allucent_notes_20251027_224008: John Capriotti on 2025-10-07 13:10: Need to confirm dry-in status/completion date before bringing in these CRAH units, pushing a week until I can get confirmed status. / John Capriotti on 2025-10-21 14:10: Tentatively planning to received and bring in these CRAHs, 11/3. / allucent_notes_20251021_145627: John Capriotti on 2025-10-07 13:10: Need to confirm dry-in status/completion date before bringing in these CRAH units, pushing a week until I can get confirmed status. / John Capriotti on 2025-10-21 14:10: Tentatively planning to received and bring in these CRAHs, 11/3. / allucent_notes_20251014_152335: John Capriotti on 2025-10-07 13:10: Need to confirm dry-in status/completion date before bringing in these CRAH units, pushing a week until I can get confirmed status. / allucent_notes: 2025-10-07 13:10 - User: John Capriotti - Date Added: 2025-10-07 13:10 - Note: Need to confirm dry-in status/completion date before bringing in these CRAH units, pushing a week until I can get confirmed status. / 2025-10-21 14:10 - User: John Capriotti -
- QTS-34251: allucent_notes_20251202_153722: John Capriotti on 2025-10-07 13:10: Need to confirm dry-in status/completion date before bringing in these CRAH units, pushing a week until I can get confirmed status. / John Capriotti on 2025-10-21 14:10: Planning to set these in roughly two weeks working to get the deliveries set-up with QTS. / John Capriotti on 2025-11-04 14:11: From my understanding we are waiting on a few walls to be finished, meeting tomorrow with Belaire to discuss when and how many to bring in each day. / Jason Johnston on 2025-12-02 11:44: First delivery day / Jason Johnston on 2025-12-02 11:45: Delivery / allucent_notes_20251118_192630: John Capriotti on 2025-10-07 13:10: Need to confirm dry-in status/completion date before bringing in these CRAH units, pushing a week until I can get confirmed status. / John Capriotti on 2025-10-21 14:10: Planning to set these in roughly two weeks working to get the deliveries set-up with QTS. / John Capriotti on 2025-11-04 14:11: From my understanding we are waiting on a few walls to be finished, meeting tomorrow with Belaire to discuss when and how many to bring in each day. / allucent_notes_20251111_182405: John Capriotti on 2025-10-07 13:10: Need to confirm dry-in status/completion date before bringing in these CRAH units, pushing a week until I can get confirmed status. / John Capriotti on 2025-10-21 14:10: Planning to set these in roughly two weeks working to get the deliveries set-up with QTS. / John Capriotti on 2025-11-04 14:11: From my understanding we are waiting on a few walls to be finished, meeting tomorrow with Belaire to discuss when and how many to bring in each day. / allucent_notes_20251104_160200: John Capriotti on 2025-10-07 13:10: Need to confirm dry-in status/completion date before bringing in these CRAH units, pushing a week until I can get confirmed status. / John Capriotti on 2025-10-21 14:10: Planning to set these in roughly two weeks working to get the deliveries set-up with QTS. / John Capriotti on 2025-11-04 14:11: From my understanding we are waiting on a few walls to be finished, meeting tomorrow with Belaire to discuss when and how many to bring in each day. / allucent_notes_20251028_163138: John Capriotti on 2025-10-07 13:10: Need to confirm dry-in status/completion date before bringing in these CRAH units, pushing a week until I can get confirmed status. / John Capriotti on 2025-10-21 14:10: Planning to set these in roughly two weeks working to get the deliveries set-up with QTS. / allucent_notes_20251027_224008: John Capriotti on 2025-10-07 13:10: Need to confirm dry-in status/completion date before bringing in these CRAH units, pushing a week until I can get confirmed status. / John Capriotti on 2025-10-21 14:10: Planning to set these in roughly two weeks working to get the deliveries set-up with QTS. / allucent_notes_20251021_145627: John Capriotti on 2025-10-07 13:10: Need to confirm dry-in status/completion date before bringing in these CRAH units, pushing a week until I can get confirmed status. / John Capriotti on 2025-10-21 14:10: Planning to set these in roughly two weeks working to get the deliveries set-up with QTS. / allucent_notes_20251014_152335: John Capriotti on 2025-10-07 13:10: Need to confirm dry-in status/completion date before bringing in these CRAH units, pushing a week until I can get confirmed status. / allucent_notes: 2025-10-07 13:10 - User: John Capriotti - Date Added: 2025-10-07 13:10 - Note: Need to confirm dry-in status/completion date before bringing in these CRAH units, pushing a week until I can get confirmed status. / 2025-10-21 14:10 - User: John Capriotti -
- QTS-34261: allucent_notes_20251202_153722: John Capriotti on 2025-10-07 13:10: Need to confirm dry-in status/completion date before bringing in these CRAH units, pushing a week until I can get confirmed status. / John Capriotti on 2025-10-21 14:10: Planning to set these in roughly two weeks working to get the deliveries set-up with QTS. / John Capriotti on 2025-11-04 15:11: From my understanding we are waiting on a few walls to be finished, meeting tomorrow with Belaire to discuss when and how many to bring in each day. / Jason Johnston on 2025-12-02 11:44: First delivery day / Jason Johnston on 2025-12-02 11:45: Delivery / allucent_notes_20251118_192630: John Capriotti on 2025-10-07 13:10: Need to confirm dry-in status/completion date before bringing in these CRAH units, pushing a week until I can get confirmed status. / John Capriotti on 2025-10-21 14:10: Planning to set these in roughly two weeks working to get the deliveries set-up with QTS. / John Capriotti on 2025-11-04 15:11: From my understanding we are waiting on a few walls to be finished, meeting tomorrow with Belaire to discuss when and how many to bring in each day. / allucent_notes_20251111_182405: John Capriotti on 2025-10-07 13:10: Need to confirm dry-in status/completion date before bringing in these CRAH units, pushing a week until I can get confirmed status. / John Capriotti on 2025-10-21 14:10: Planning to set these in roughly two weeks working to get the deliveries set-up with QTS. / John Capriotti on 2025-11-04 15:11: From my understanding we are waiting on a few walls to be finished, meeting tomorrow with Belaire to discuss when and how many to bring in each day. / allucent_notes_20251104_160200: John Capriotti on 2025-10-07 13:10: Need to confirm dry-in status/completion date before bringing in these CRAH units, pushing a week until I can get confirmed status. / John Capriotti on 2025-10-21 14:10: Planning to set these in roughly two weeks working to get the deliveries set-up with QTS. / John Capriotti on 2025-11-04 15:11: From my understanding we are waiting on a few walls to be finished, meeting tomorrow with Belaire to discuss when and how many to bring in each day. / allucent_notes_20251028_163138: John Capriotti on 2025-10-07 13:10: Need to confirm dry-in status/completion date before bringing in these CRAH units, pushing a week until I can get confirmed status. / John Capriotti on 2025-10-21 14:10: Planning to set these in roughly two weeks working to get the deliveries set-up with QTS. / allucent_notes_20251027_224008: John Capriotti on 2025-10-07 13:10: Need to confirm dry-in status/completion date before bringing in these CRAH units, pushing a week until I can get confirmed status. / John Capriotti on 2025-10-21 14:10: Planning to set these in roughly two weeks working to get the deliveries set-up with QTS. / allucent_notes_20251021_145627: John Capriotti on 2025-10-07 13:10: Need to confirm dry-in status/completion date before bringing in these CRAH units, pushing a week until I can get confirmed status. / John Capriotti on 2025-10-21 14:10: Planning to set these in roughly two weeks working to get the deliveries set-up with QTS. / allucent_notes_20251014_152335: John Capriotti on 2025-10-07 13:10: Need to confirm dry-in status/completion date before bringing in these CRAH units, pushing a week until I can get confirmed status. / allucent_notes: 2025-10-07 13:10 - User: John Capriotti - Date Added: 2025-10-07 13:10 - Note: Need to confirm dry-in status/completion date before bringing in these CRAH units, pushing a week until I can get confirmed status. / 2025-10-21 14:10 - User: John Capriotti -
- QTS-34271: allucent_notes_20251202_153722: John Capriotti on 2025-10-07 13:10: Need to confirm dry-in status/completion date before bringing in these CRAH units, pushing a week until I can get confirmed status. / John Capriotti on 2025-10-21 14:10: Planning to set these in roughly two weeks working to get the deliveries set-up with QTS. / John Capriotti on 2025-11-04 15:11: From my understanding we are waiting on a few walls to be finished, meeting tomorrow with Belaire to discuss when and how many to bring in each day. / Jason Johnston on 2025-12-02 11:44: Delivery / Jason Johnston on 2025-12-02 11:45: Delivery / allucent_notes_20251118_192630: John Capriotti on 2025-10-07 13:10: Need to confirm dry-in status/completion date before bringing in these CRAH units, pushing a week until I can get confirmed status. / John Capriotti on 2025-10-21 14:10: Planning to set these in roughly two weeks working to get the deliveries set-up with QTS. / John Capriotti on 2025-11-04 15:11: From my understanding we are waiting on a few walls to be finished, meeting tomorrow with Belaire to discuss when and how many to bring in each day. / allucent_notes_20251111_182405: John Capriotti on 2025-10-07 13:10: Need to confirm dry-in status/completion date before bringing in these CRAH units, pushing a week until I can get confirmed status. / John Capriotti on 2025-10-21 14:10: Planning to set these in roughly two weeks working to get the deliveries set-up with QTS. / John Capriotti on 2025-11-04 15:11: From my understanding we are waiting on a few walls to be finished, meeting tomorrow with Belaire to discuss when and how many to bring in each day. / allucent_notes_20251104_160200: John Capriotti on 2025-10-07 13:10: Need to confirm dry-in status/completion date before bringing in these CRAH units, pushing a week until I can get confirmed status. / John Capriotti on 2025-10-21 14:10: Planning to set these in roughly two weeks working to get the deliveries set-up with QTS. / John Capriotti on 2025-11-04 15:11: From my understanding we are waiting on a few walls to be finished, meeting tomorrow with Belaire to discuss when and how many to bring in each day. / allucent_notes_20251028_163138: John Capriotti on 2025-10-07 13:10: Need to confirm dry-in status/completion date before bringing in these CRAH units, pushing a week until I can get confirmed status. / John Capriotti on 2025-10-21 14:10: Planning to set these in roughly two weeks working to get the deliveries set-up with QTS. / allucent_notes_20251027_224008: John Capriotti on 2025-10-07 13:10: Need to confirm dry-in status/completion date before bringing in these CRAH units, pushing a week until I can get confirmed status. / John Capriotti on 2025-10-21 14:10: Planning to set these in roughly two weeks working to get the deliveries set-up with QTS. / allucent_notes_20251021_145627: John Capriotti on 2025-10-07 13:10: Need to confirm dry-in status/completion date before bringing in these CRAH units, pushing a week until I can get confirmed status. / John Capriotti on 2025-10-21 14:10: Planning to set these in roughly two weeks working to get the deliveries set-up with QTS. / allucent_notes_20251014_152335: John Capriotti on 2025-10-07 13:10: Need to confirm dry-in status/completion date before bringing in these CRAH units, pushing a week until I can get confirmed status. / allucent_notes: 2025-10-07 13:10 - User: John Capriotti - Date Added: 2025-10-07 13:10 - Note: Need to confirm dry-in status/completion date before bringing in these CRAH units, pushing a week until I can get confirmed status. / 2025-10-21 14:10 - User: John Capriotti -
- QTS-34281: allucent_notes_20251202_153722: John Capriotti on 2025-10-07 13:10: Need to confirm dry-in status/completion date before bringing in these CRAH units, pushing a week until I can get confirmed status. / John Capriotti on 2025-10-21 14:10: Planning to set these in roughly two weeks working to get the deliveries set-up with QTS. / John Capriotti on 2025-10-21 14:10: Planning to set these in roughly two weeks working to get the deliveries set-up with QTS. / John Capriotti on 2025-11-04 15:11: From my understanding we are waiting on a few walls to be finished, meeting tomorrow with Belaire to discuss when and how many to bring in each day. / Jason Johnston on 2025-12-02 11:44: Delivery / Jason Johnston on 2025-12-02 11:46: Delivery / allucent_notes_20251118_192630: John Capriotti on 2025-10-07 13:10: Need to confirm dry-in status/completion date before bringing in these CRAH units, pushing a week until I can get confirmed status. / John Capriotti on 2025-10-21 14:10: Planning to set these in roughly two weeks working to get the deliveries set-up with QTS. / John Capriotti on 2025-10-21 14:10: Planning to set these in roughly two weeks working to get the deliveries set-up with QTS. / John Capriotti on 2025-11-04 15:11: From my understanding we are waiting on a few walls to be finished, meeting tomorrow with Belaire to discuss when and how many to bring in each day. / allucent_notes_20251111_182405: John Capriotti on 2025-10-07 13:10: Need to confirm dry-in status/completion date before bringing in these CRAH units, pushing a week until I can get confirmed status. / John Capriotti on 2025-10-21 14:10: Planning to set these in roughly two weeks working to get the deliveries set-up with QTS. / John Capriotti on 2025-10-21 14:10: Planning to set these in roughly two weeks working to get the deliveries set-up with QTS. / John Capriotti on 2025-11-04 15:11: From my understanding we are waiting on a few walls to be finished, meeting tomorrow with Belaire to discuss when and how many to bring in each day. / allucent_notes_20251104_160200: John Capriotti on 2025-10-07 13:10: Need to confirm dry-in status/completion date before bringing in these CRAH units, pushing a week until I can get confirmed status. / John Capriotti on 2025-10-21 14:10: Planning to set these in roughly two weeks working to get the deliveries set-up with QTS. / John Capriotti on 2025-10-21 14:10: Planning to set these in roughly two weeks working to get the deliveries set-up with QTS. / John Capriotti on 2025-11-04 15:11: From my understanding we are waiting on a few walls to be finished, meeting tomorrow with Belaire to discuss when and how many to bring in each day. / allucent_notes_20251028_163138: John Capriotti on 2025-10-07 13:10: Need to confirm dry-in status/completion date before bringing in these CRAH units, pushing a week until I can get confirmed status. / John Capriotti on 2025-10-21 14:10: Planning to set these in roughly two weeks working to get the deliveries set-up with QTS. / John Capriotti on 2025-10-21 14:10: Planning to set these in roughly two weeks working to get the deliveries set-up with QTS. / allucent_notes_20251027_224008: John Capriotti on 2025-10-07 13:10: Need to confirm dry-in status/completion date before bringing in these CRAH units, pushing a week until I can get confirmed status. / John Capriotti on 2025-10-21 14:10: Planning to set these in roughly two weeks working to get the deliveries set-up with QTS. / John Capriotti on 2025-10-21 14:10: Planning to set these in roughly two weeks working to get the deliveries set-up with QTS. / allucent_notes_20251021_145627: John Capriotti on 2025-10-07 13:10: Need to confirm dry-in status/completion date before bringing in these CRAH units, pushing a week until I can get confirmed status. / John Capriotti on 2025-10-21 14:10: Planning to set these in roughly two weeks working to get the deliveries set-up with QTS. / John Capriotti on 2025-10-21 14:10: Planning to set these in roughly two weeks working to get the deliveries set-up with QTS. / allucent_notes_20251014_152335: John Capriotti on 2025-10-07 13:10: Need to confirm dry-in status/completion date before bringing in these CRAH units, pushing a week until I can get confirmed status. / allucent_notes: 2025-10-07 13:10 - User: John Capriotti - Date Added: 2025-10-07 13:10 - Note: Need to confirm dry-in status/completion date before bringing in these CRAH units, pushing a week until I can get confirmed status. / 2025-10-21 14:10 - User: John Capriotti -
- QTS-34291: allucent_notes_20251202_153722: John Capriotti on 2025-10-07 13:10: Need to confirm dry-in status/completion date before bringing in these CRAH units, pushing a week until I can get confirmed status. / John Capriotti on 2025-10-21 14:10: Planning to set these in roughly two weeks working to get the deliveries set-up with QTS. / John Capriotti on 2025-11-04 15:11: From my understanding we are waiting on a few walls to be finished, meeting tomorrow with Belaire to discuss when and how many to bring in each day. / Jason Johnston on 2025-12-02 11:46: Delivery / allucent_notes_20251118_192630: John Capriotti on 2025-10-07 13:10: Need to confirm dry-in status/completion date before bringing in these CRAH units, pushing a week until I can get confirmed status. / John Capriotti on 2025-10-21 14:10: Planning to set these in roughly two weeks working to get the deliveries set-up with QTS. / John Capriotti on 2025-11-04 15:11: From my understanding we are waiting on a few walls to be finished, meeting tomorrow with Belaire to discuss when and how many to bring in each day. / allucent_notes_20251111_182405: John Capriotti on 2025-10-07 13:10: Need to confirm dry-in status/completion date before bringing in these CRAH units, pushing a week until I can get confirmed status. / John Capriotti on 2025-10-21 14:10: Planning to set these in roughly two weeks working to get the deliveries set-up with QTS. / John Capriotti on 2025-11-04 15:11: From my understanding we are waiting on a few walls to be finished, meeting tomorrow with Belaire to discuss when and how many to bring in each day. / allucent_notes_20251104_160200: John Capriotti on 2025-10-07 13:10: Need to confirm dry-in status/completion date before bringing in these CRAH units, pushing a week until I can get confirmed status. / John Capriotti on 2025-10-21 14:10: Planning to set these in roughly two weeks working to get the deliveries set-up with QTS. / John Capriotti on 2025-11-04 15:11: From my understanding we are waiting on a few walls to be finished, meeting tomorrow with Belaire to discuss when and how many to bring in each day. / allucent_notes_20251028_163138: John Capriotti on 2025-10-07 13:10: Need to confirm dry-in status/completion date before bringing in these CRAH units, pushing a week until I can get confirmed status. / John Capriotti on 2025-10-21 14:10: Planning to set these in roughly two weeks working to get the deliveries set-up with QTS. / allucent_notes_20251027_224008: John Capriotti on 2025-10-07 13:10: Need to confirm dry-in status/completion date before bringing in these CRAH units, pushing a week until I can get confirmed status. / John Capriotti on 2025-10-21 14:10: Planning to set these in roughly two weeks working to get the deliveries set-up with QTS. / allucent_notes_20251021_145627: John Capriotti on 2025-10-07 13:10: Need to confirm dry-in status/completion date before bringing in these CRAH units, pushing a week until I can get confirmed status. / John Capriotti on 2025-10-21 14:10: Planning to set these in roughly two weeks working to get the deliveries set-up with QTS. / allucent_notes_20251014_152335: John Capriotti on 2025-10-07 13:10: Need to confirm dry-in status/completion date before bringing in these CRAH units, pushing a week until I can get confirmed status. / allucent_notes: 2025-10-07 13:10 - User: John Capriotti - Date Added: 2025-10-07 13:10 - Note: Need to confirm dry-in status/completion date before bringing in these CRAH units, pushing a week until I can get confirmed status. / 2025-10-21 14:10 - User: John Capriotti -
- QTS-34301: allucent_notes_20251202_153722: John Capriotti on 2025-10-07 13:10: Need to confirm dry-in status/completion date before bringing in these CRAH units, pushing a week until I can get confirmed status. / John Capriotti on 2025-10-21 14:10: Planning to set these in roughly two weeks working to get the deliveries set-up with QTS. / John Capriotti on 2025-11-04 15:11: From my understanding we are waiting on a few walls to be finished, meeting tomorrow with Belaire to discuss when and how many to bring in each day. / Jason Johnston on 2025-12-02 11:46: Delivery / allucent_notes_20251118_192630: John Capriotti on 2025-10-07 13:10: Need to confirm dry-in status/completion date before bringing in these CRAH units, pushing a week until I can get confirmed status. / John Capriotti on 2025-10-21 14:10: Planning to set these in roughly two weeks working to get the deliveries set-up with QTS. / John Capriotti on 2025-11-04 15:11: From my understanding we are waiting on a few walls to be finished, meeting tomorrow with Belaire to discuss when and how many to bring in each day. / allucent_notes_20251111_182405: John Capriotti on 2025-10-07 13:10: Need to confirm dry-in status/completion date before bringing in these CRAH units, pushing a week until I can get confirmed status. / John Capriotti on 2025-10-21 14:10: Planning to set these in roughly two weeks working to get the deliveries set-up with QTS. / John Capriotti on 2025-11-04 15:11: From my understanding we are waiting on a few walls to be finished, meeting tomorrow with Belaire to discuss when and how many to bring in each day. / allucent_notes_20251104_160200: John Capriotti on 2025-10-07 13:10: Need to confirm dry-in status/completion date before bringing in these CRAH units, pushing a week until I can get confirmed status. / John Capriotti on 2025-10-21 14:10: Planning to set these in roughly two weeks working to get the deliveries set-up with QTS. / John Capriotti on 2025-11-04 15:11: From my understanding we are waiting on a few walls to be finished, meeting tomorrow with Belaire to discuss when and how many to bring in each day. / allucent_notes_20251028_163138: John Capriotti on 2025-10-07 13:10: Need to confirm dry-in status/completion date before bringing in these CRAH units, pushing a week until I can get confirmed status. / John Capriotti on 2025-10-21 14:10: Planning to set these in roughly two weeks working to get the deliveries set-up with QTS. / allucent_notes_20251027_224008: John Capriotti on 2025-10-07 13:10: Need to confirm dry-in status/completion date before bringing in these CRAH units, pushing a week until I can get confirmed status. / John Capriotti on 2025-10-21 14:10: Planning to set these in roughly two weeks working to get the deliveries set-up with QTS. / allucent_notes_20251021_145627: John Capriotti on 2025-10-07 13:10: Need to confirm dry-in status/completion date before bringing in these CRAH units, pushing a week until I can get confirmed status. / John Capriotti on 2025-10-21 14:10: Planning to set these in roughly two weeks working to get the deliveries set-up with QTS. / allucent_notes_20251014_152335: John Capriotti on 2025-10-07 13:10: Need to confirm dry-in status/completion date before bringing in these CRAH units, pushing a week until I can get confirmed status. / allucent_notes: 2025-10-07 13:10 - User: John Capriotti - Date Added: 2025-10-07 13:10 - Note: Need to confirm dry-in status/completion date before bringing in these CRAH units, pushing a week until I can get confirmed status. / 2025-10-21 14:10 - User: John Capriotti -
- QTS-34311: allucent_notes_20251202_153722: John Capriotti on 2025-10-07 13:10: Need to confirm dry-in status/completion date before bringing in these CRAH units, pushing a week until I can get confirmed status / John Capriotti on 2025-10-21 14:10: Planning to set these in roughly two weeks working to get the deliveries set-up with QTS. / John Capriotti on 2025-11-04 15:11: From my understanding we are waiting on a few walls to be finished, meeting tomorrow with Belaire to discuss when and how many to bring in each day. / Jason Johnston on 2025-12-02 11:46: Delivery / allucent_notes_20251118_192630: John Capriotti on 2025-10-07 13:10: Need to confirm dry-in status/completion date before bringing in these CRAH units, pushing a week until I can get confirmed status / John Capriotti on 2025-10-21 14:10: Planning to set these in roughly two weeks working to get the deliveries set-up with QTS. / John Capriotti on 2025-11-04 15:11: From my understanding we are waiting on a few walls to be finished, meeting tomorrow with Belaire to discuss when and how many to bring in each day. / allucent_notes_20251111_182405: John Capriotti on 2025-10-07 13:10: Need to confirm dry-in status/completion date before bringing in these CRAH units, pushing a week until I can get confirmed status / John Capriotti on 2025-10-21 14:10: Planning to set these in roughly two weeks working to get the deliveries set-up with QTS. / John Capriotti on 2025-11-04 15:11: From my understanding we are waiting on a few walls to be finished, meeting tomorrow with Belaire to discuss when and how many to bring in each day. / allucent_notes_20251104_160200: John Capriotti on 2025-10-07 13:10: Need to confirm dry-in status/completion date before bringing in these CRAH units, pushing a week until I can get confirmed status / John Capriotti on 2025-10-21 14:10: Planning to set these in roughly two weeks working to get the deliveries set-up with QTS. / John Capriotti on 2025-11-04 15:11: From my understanding we are waiting on a few walls to be finished, meeting tomorrow with Belaire to discuss when and how many to bring in each day. / allucent_notes_20251028_163138: John Capriotti on 2025-10-07 13:10: Need to confirm dry-in status/completion date before bringing in these CRAH units, pushing a week until I can get confirmed status / John Capriotti on 2025-10-21 14:10: Planning to set these in roughly two weeks working to get the deliveries set-up with QTS. / allucent_notes_20251027_224008: John Capriotti on 2025-10-07 13:10: Need to confirm dry-in status/completion date before bringing in these CRAH units, pushing a week until I can get confirmed status / John Capriotti on 2025-10-21 14:10: Planning to set these in roughly two weeks working to get the deliveries set-up with QTS. / allucent_notes_20251021_145627: John Capriotti on 2025-10-07 13:10: Need to confirm dry-in status/completion date before bringing in these CRAH units, pushing a week until I can get confirmed status / John Capriotti on 2025-10-21 14:10: Planning to set these in roughly two weeks working to get the deliveries set-up with QTS. / allucent_notes_20251014_152335: John Capriotti on 2025-10-07 13:10: Need to confirm dry-in status/completion date before bringing in these CRAH units, pushing a week until I can get confirmed status / allucent_notes: 2025-10-07 13:10 - User: John Capriotti - Date Added: 2025-10-07 13:10 - Note: Need to confirm dry-in status/completion date before bringing in these CRAH units, pushing a week until I can get confirmed status / 2025-10-21 14:10 - User: John Capriotti -
- QTS-34321: allucent_notes_20251202_153722: John Capriotti on 2025-10-07 13:10: Need to confirm dry-in status/completion date before bringing in these CRAH units, pushing a week until I can get confirmed status. / John Capriotti on 2025-10-21 14:10: Planning to set these in roughly two weeks working to get the deliveries set-up with QTS. / John Capriotti on 2025-11-04 15:11: From my understanding we are waiting on a few walls to be finished, meeting tomorrow with Belaire to discuss when and how many to bring in each day. / Jason Johnston on 2025-12-02 11:46: Delivery / allucent_notes_20251118_192630: John Capriotti on 2025-10-07 13:10: Need to confirm dry-in status/completion date before bringing in these CRAH units, pushing a week until I can get confirmed status. / John Capriotti on 2025-10-21 14:10: Planning to set these in roughly two weeks working to get the deliveries set-up with QTS. / John Capriotti on 2025-11-04 15:11: From my understanding we are waiting on a few walls to be finished, meeting tomorrow with Belaire to discuss when and how many to bring in each day. / allucent_notes_20251111_182405: John Capriotti on 2025-10-07 13:10: Need to confirm dry-in status/completion date before bringing in these CRAH units, pushing a week until I can get confirmed status. / John Capriotti on 2025-10-21 14:10: Planning to set these in roughly two weeks working to get the deliveries set-up with QTS. / John Capriotti on 2025-11-04 15:11: From my understanding we are waiting on a few walls to be finished, meeting tomorrow with Belaire to discuss when and how many to bring in each day. / allucent_notes_20251104_160200: John Capriotti on 2025-10-07 13:10: Need to confirm dry-in status/completion date before bringing in these CRAH units, pushing a week until I can get confirmed status. / John Capriotti on 2025-10-21 14:10: Planning to set these in roughly two weeks working to get the deliveries set-up with QTS. / John Capriotti on 2025-11-04 15:11: From my understanding we are waiting on a few walls to be finished, meeting tomorrow with Belaire to discuss when and how many to bring in each day. / allucent_notes_20251028_163138: John Capriotti on 2025-10-07 13:10: Need to confirm dry-in status/completion date before bringing in these CRAH units, pushing a week until I can get confirmed status. / John Capriotti on 2025-10-21 14:10: Planning to set these in roughly two weeks working to get the deliveries set-up with QTS. / allucent_notes_20251027_224008: John Capriotti on 2025-10-07 13:10: Need to confirm dry-in status/completion date before bringing in these CRAH units, pushing a week until I can get confirmed status. / John Capriotti on 2025-10-21 14:10: Planning to set these in roughly two weeks working to get the deliveries set-up with QTS. / allucent_notes_20251021_145627: John Capriotti on 2025-10-07 13:10: Need to confirm dry-in status/completion date before bringing in these CRAH units, pushing a week until I can get confirmed status. / John Capriotti on 2025-10-21 14:10: Planning to set these in roughly two weeks working to get the deliveries set-up with QTS. / allucent_notes_20251014_152335: John Capriotti on 2025-10-07 13:10: Need to confirm dry-in status/completion date before bringing in these CRAH units, pushing a week until I can get confirmed status. / allucent_notes: 2025-10-07 13:10 - User: John Capriotti - Date Added: 2025-10-07 13:10 - Note: Need to confirm dry-in status/completion date before bringing in these CRAH units, pushing a week until I can get confirmed status. / 2025-10-21 14:10 - User: John Capriotti -
- QTS-34331: allucent_notes_20251202_153722: John Capriotti on 2025-10-07 13:10: Need to confirm dry-in status/completion date before bringing in these CRAH units, pushing a week until I can get confirmed status / John Capriotti on 2025-10-21 14:10: Planning to set these in roughly two weeks working to get the deliveries set-up with QTS. / John Capriotti on 2025-11-04 15:11: From my understanding we are waiting on a few walls to be finished, meeting tomorrow with Belaire to discuss when and how many to bring in each day. / Jason Johnston on 2025-12-02 11:46: Delivery / allucent_notes_20251118_192630: John Capriotti on 2025-10-07 13:10: Need to confirm dry-in status/completion date before bringing in these CRAH units, pushing a week until I can get confirmed status / John Capriotti on 2025-10-21 14:10: Planning to set these in roughly two weeks working to get the deliveries set-up with QTS. / John Capriotti on 2025-11-04 15:11: From my understanding we are waiting on a few walls to be finished, meeting tomorrow with Belaire to discuss when and how many to bring in each day. / allucent_notes_20251111_182405: John Capriotti on 2025-10-07 13:10: Need to confirm dry-in status/completion date before bringing in these CRAH units, pushing a week until I can get confirmed status / John Capriotti on 2025-10-21 14:10: Planning to set these in roughly two weeks working to get the deliveries set-up with QTS. / John Capriotti on 2025-11-04 15:11: From my understanding we are waiting on a few walls to be finished, meeting tomorrow with Belaire to discuss when and how many to bring in each day. / allucent_notes_20251104_160200: John Capriotti on 2025-10-07 13:10: Need to confirm dry-in status/completion date before bringing in these CRAH units, pushing a week until I can get confirmed status / John Capriotti on 2025-10-21 14:10: Planning to set these in roughly two weeks working to get the deliveries set-up with QTS. / John Capriotti on 2025-11-04 15:11: From my understanding we are waiting on a few walls to be finished, meeting tomorrow with Belaire to discuss when and how many to bring in each day. / allucent_notes_20251028_163138: John Capriotti on 2025-10-07 13:10: Need to confirm dry-in status/completion date before bringing in these CRAH units, pushing a week until I can get confirmed status / John Capriotti on 2025-10-21 14:10: Planning to set these in roughly two weeks working to get the deliveries set-up with QTS. / allucent_notes_20251027_224008: John Capriotti on 2025-10-07 13:10: Need to confirm dry-in status/completion date before bringing in these CRAH units, pushing a week until I can get confirmed status / John Capriotti on 2025-10-21 14:10: Planning to set these in roughly two weeks working to get the deliveries set-up with QTS. / allucent_notes_20251021_145627: John Capriotti on 2025-10-07 13:10: Need to confirm dry-in status/completion date before bringing in these CRAH units, pushing a week until I can get confirmed status / John Capriotti on 2025-10-21 14:10: Planning to set these in roughly two weeks working to get the deliveries set-up with QTS. / allucent_notes_20251014_152335: John Capriotti on 2025-10-07 13:10: Need to confirm dry-in status/completion date before bringing in these CRAH units, pushing a week until I can get confirmed status / allucent_notes: 2025-10-07 13:10 - User: John Capriotti - Date Added: 2025-10-07 13:10 - Note: Need to confirm dry-in status/completion date before bringing in these CRAH units, pushing a week until I can get confirmed status / 2025-10-21 14:10 - User: John Capriotti -
- QTS-34341: allucent_notes_20251202_153722: John Capriotti on 2025-10-07 13:10: Need to confirm dry-in status/completion date before bringing in these CRAH units, pushing a week until I can get confirmed status. / John Capriotti on 2025-10-21 14:10: Planning to set these in roughly two weeks working to get the deliveries set-up with QTS. / John Capriotti on 2025-11-04 15:11: From my understanding we are waiting on a few walls to be finished, meeting tomorrow with Belaire to discuss when and how many to bring in each day. / Jason Johnston on 2025-12-02 11:46: Delivery / allucent_notes_20251118_192630: John Capriotti on 2025-10-07 13:10: Need to confirm dry-in status/completion date before bringing in these CRAH units, pushing a week until I can get confirmed status. / John Capriotti on 2025-10-21 14:10: Planning to set these in roughly two weeks working to get the deliveries set-up with QTS. / John Capriotti on 2025-11-04 15:11: From my understanding we are waiting on a few walls to be finished, meeting tomorrow with Belaire to discuss when and how many to bring in each day. / allucent_notes_20251111_182405: John Capriotti on 2025-10-07 13:10: Need to confirm dry-in status/completion date before bringing in these CRAH units, pushing a week until I can get confirmed status. / John Capriotti on 2025-10-21 14:10: Planning to set these in roughly two weeks working to get the deliveries set-up with QTS. / John Capriotti on 2025-11-04 15:11: From my understanding we are waiting on a few walls to be finished, meeting tomorrow with Belaire to discuss when and how many to bring in each day. / allucent_notes_20251104_160200: John Capriotti on 2025-10-07 13:10: Need to confirm dry-in status/completion date before bringing in these CRAH units, pushing a week until I can get confirmed status. / John Capriotti on 2025-10-21 14:10: Planning to set these in roughly two weeks working to get the deliveries set-up with QTS. / John Capriotti on 2025-11-04 15:11: From my understanding we are waiting on a few walls to be finished, meeting tomorrow with Belaire to discuss when and how many to bring in each day. / allucent_notes_20251028_163138: John Capriotti on 2025-10-07 13:10: Need to confirm dry-in status/completion date before bringing in these CRAH units, pushing a week until I can get confirmed status. / John Capriotti on 2025-10-21 14:10: Planning to set these in roughly two weeks working to get the deliveries set-up with QTS. / allucent_notes_20251027_224008: John Capriotti on 2025-10-07 13:10: Need to confirm dry-in status/completion date before bringing in these CRAH units, pushing a week until I can get confirmed status. / John Capriotti on 2025-10-21 14:10: Planning to set these in roughly two weeks working to get the deliveries set-up with QTS. / allucent_notes_20251021_145627: John Capriotti on 2025-10-07 13:10: Need to confirm dry-in status/completion date before bringing in these CRAH units, pushing a week until I can get confirmed status. / John Capriotti on 2025-10-21 14:10: Planning to set these in roughly two weeks working to get the deliveries set-up with QTS. / allucent_notes_20251014_152335: John Capriotti on 2025-10-07 13:10: Need to confirm dry-in status/completion date before bringing in these CRAH units, pushing a week until I can get confirmed status. / allucent_notes: 2025-10-07 13:10 - User: John Capriotti - Date Added: 2025-10-07 13:10 - Note: Need to confirm dry-in status/completion date before bringing in these CRAH units, pushing a week until I can get confirmed status. / 2025-10-21 14:10 - User: John Capriotti -
- QTS-34351: allucent_notes_20251202_153722: John Capriotti on 2025-10-07 13:10: Need to confirm dry-in status/completion date before bringing in these CRAH units, pushing a week until I can get confirmed status. / John Capriotti on 2025-10-21 14:10: Planning to set these in roughly two weeks working to get the deliveries set-up with QTS. / John Capriotti on 2025-11-04 15:11: From my understanding we are waiting on a few walls to be finished, meeting tomorrow with Belaire to discuss when and how many to bring in each day. / Jason Johnston on 2025-12-02 11:46: Delivery / allucent_notes_20251118_192630: John Capriotti on 2025-10-07 13:10: Need to confirm dry-in status/completion date before bringing in these CRAH units, pushing a week until I can get confirmed status. / John Capriotti on 2025-10-21 14:10: Planning to set these in roughly two weeks working to get the deliveries set-up with QTS. / John Capriotti on 2025-11-04 15:11: From my understanding we are waiting on a few walls to be finished, meeting tomorrow with Belaire to discuss when and how many to bring in each day. / allucent_notes_20251111_182405: John Capriotti on 2025-10-07 13:10: Need to confirm dry-in status/completion date before bringing in these CRAH units, pushing a week until I can get confirmed status. / John Capriotti on 2025-10-21 14:10: Planning to set these in roughly two weeks working to get the deliveries set-up with QTS. / John Capriotti on 2025-11-04 15:11: From my understanding we are waiting on a few walls to be finished, meeting tomorrow with Belaire to discuss when and how many to bring in each day. / allucent_notes_20251104_160200: John Capriotti on 2025-10-07 13:10: Need to confirm dry-in status/completion date before bringing in these CRAH units, pushing a week until I can get confirmed status. / John Capriotti on 2025-10-21 14:10: Planning to set these in roughly two weeks working to get the deliveries set-up with QTS. / John Capriotti on 2025-11-04 15:11: From my understanding we are waiting on a few walls to be finished, meeting tomorrow with Belaire to discuss when and how many to bring in each day. / allucent_notes_20251028_163138: John Capriotti on 2025-10-07 13:10: Need to confirm dry-in status/completion date before bringing in these CRAH units, pushing a week until I can get confirmed status. / John Capriotti on 2025-10-21 14:10: Planning to set these in roughly two weeks working to get the deliveries set-up with QTS. / allucent_notes_20251027_224008: John Capriotti on 2025-10-07 13:10: Need to confirm dry-in status/completion date before bringing in these CRAH units, pushing a week until I can get confirmed status. / John Capriotti on 2025-10-21 14:10: Planning to set these in roughly two weeks working to get the deliveries set-up with QTS. / allucent_notes_20251021_145627: John Capriotti on 2025-10-07 13:10: Need to confirm dry-in status/completion date before bringing in these CRAH units, pushing a week until I can get confirmed status. / John Capriotti on 2025-10-21 14:10: Planning to set these in roughly two weeks working to get the deliveries set-up with QTS. / allucent_notes_20251014_152335: John Capriotti on 2025-10-07 13:10: Need to confirm dry-in status/completion date before bringing in these CRAH units, pushing a week until I can get confirmed status. / allucent_notes: 2025-10-07 13:10 - User: John Capriotti - Date Added: 2025-10-07 13:10 - Note: Need to confirm dry-in status/completion date before bringing in these CRAH units, pushing a week until I can get confirmed status. / 2025-10-21 14:10 - User: John Capriotti -
- QTS-34361: allucent_notes_20251202_153722: John Capriotti on 2025-10-07 13:10: Need to confirm dry-in status/completion date before bringing in these CRAH units, pushing a week until I can get confirmed status. / John Capriotti on 2025-10-21 14:10: Planning to set these in roughly two weeks working to get the deliveries set-up with QTS. / John Capriotti on 2025-11-04 15:11: From my understanding we are waiting on a few walls to be finished, meeting tomorrow with Belaire to discuss when and how many to bring in each day. / Jason Johnston on 2025-12-02 11:46: Delivery / allucent_notes_20251118_192630: John Capriotti on 2025-10-07 13:10: Need to confirm dry-in status/completion date before bringing in these CRAH units, pushing a week until I can get confirmed status. / John Capriotti on 2025-10-21 14:10: Planning to set these in roughly two weeks working to get the deliveries set-up with QTS. / John Capriotti on 2025-11-04 15:11: From my understanding we are waiting on a few walls to be finished, meeting tomorrow with Belaire to discuss when and how many to bring in each day. / allucent_notes_20251111_182405: John Capriotti on 2025-10-07 13:10: Need to confirm dry-in status/completion date before bringing in these CRAH units, pushing a week until I can get confirmed status. / John Capriotti on 2025-10-21 14:10: Planning to set these in roughly two weeks working to get the deliveries set-up with QTS. / John Capriotti on 2025-11-04 15:11: From my understanding we are waiting on a few walls to be finished, meeting tomorrow with Belaire to discuss when and how many to bring in each day. / allucent_notes_20251104_160200: John Capriotti on 2025-10-07 13:10: Need to confirm dry-in status/completion date before bringing in these CRAH units, pushing a week until I can get confirmed status. / John Capriotti on 2025-10-21 14:10: Planning to set these in roughly two weeks working to get the deliveries set-up with QTS. / John Capriotti on 2025-11-04 15:11: From my understanding we are waiting on a few walls to be finished, meeting tomorrow with Belaire to discuss when and how many to bring in each day. / allucent_notes_20251028_163138: John Capriotti on 2025-10-07 13:10: Need to confirm dry-in status/completion date before bringing in these CRAH units, pushing a week until I can get confirmed status. / John Capriotti on 2025-10-21 14:10: Planning to set these in roughly two weeks working to get the deliveries set-up with QTS. / allucent_notes_20251027_224008: John Capriotti on 2025-10-07 13:10: Need to confirm dry-in status/completion date before bringing in these CRAH units, pushing a week until I can get confirmed status. / John Capriotti on 2025-10-21 14:10: Planning to set these in roughly two weeks working to get the deliveries set-up with QTS. / allucent_notes_20251021_145627: John Capriotti on 2025-10-07 13:10: Need to confirm dry-in status/completion date before bringing in these CRAH units, pushing a week until I can get confirmed status. / John Capriotti on 2025-10-21 14:10: Planning to set these in roughly two weeks working to get the deliveries set-up with QTS. / allucent_notes_20251014_152335: John Capriotti on 2025-10-07 13:10: Need to confirm dry-in status/completion date before bringing in these CRAH units, pushing a week until I can get confirmed status. / allucent_notes: 2025-10-07 13:10 - User: John Capriotti - Date Added: 2025-10-07 13:10 - Note: Need to confirm dry-in status/completion date before bringing in these CRAH units, pushing a week until I can get confirmed status. / 2025-10-21 14:10 - User: John Capriotti -
- QTS-34371: allucent_notes_20251202_153722: John Capriotti on 2025-10-07 13:10: Need to confirm dry-in status/completion date before bringing in these CRAH units, pushing a week until I can get confirmed status. / John Capriotti on 2025-10-21 14:10: Planning to set these in roughly two weeks working to get the deliveries set-up with QTS. / John Capriotti on 2025-11-04 15:11: From my understanding we are waiting on a few walls to be finished, meeting tomorrow with Belaire to discuss when and how many to bring in each day. / Jason Johnston on 2025-12-02 11:47: Delivery / allucent_notes_20251118_192630: John Capriotti on 2025-10-07 13:10: Need to confirm dry-in status/completion date before bringing in these CRAH units, pushing a week until I can get confirmed status. / John Capriotti on 2025-10-21 14:10: Planning to set these in roughly two weeks working to get the deliveries set-up with QTS. / John Capriotti on 2025-11-04 15:11: From my understanding we are waiting on a few walls to be finished, meeting tomorrow with Belaire to discuss when and how many to bring in each day. / allucent_notes_20251111_182405: John Capriotti on 2025-10-07 13:10: Need to confirm dry-in status/completion date before bringing in these CRAH units, pushing a week until I can get confirmed status. / John Capriotti on 2025-10-21 14:10: Planning to set these in roughly two weeks working to get the deliveries set-up with QTS. / John Capriotti on 2025-11-04 15:11: From my understanding we are waiting on a few walls to be finished, meeting tomorrow with Belaire to discuss when and how many to bring in each day. / allucent_notes_20251104_160200: John Capriotti on 2025-10-07 13:10: Need to confirm dry-in status/completion date before bringing in these CRAH units, pushing a week until I can get confirmed status. / John Capriotti on 2025-10-21 14:10: Planning to set these in roughly two weeks working to get the deliveries set-up with QTS. / John Capriotti on 2025-11-04 15:11: From my understanding we are waiting on a few walls to be finished, meeting tomorrow with Belaire to discuss when and how many to bring in each day. / allucent_notes_20251028_163138: John Capriotti on 2025-10-07 13:10: Need to confirm dry-in status/completion date before bringing in these CRAH units, pushing a week until I can get confirmed status. / John Capriotti on 2025-10-21 14:10: Planning to set these in roughly two weeks working to get the deliveries set-up with QTS. / allucent_notes_20251027_224008: John Capriotti on 2025-10-07 13:10: Need to confirm dry-in status/completion date before bringing in these CRAH units, pushing a week until I can get confirmed status. / John Capriotti on 2025-10-21 14:10: Planning to set these in roughly two weeks working to get the deliveries set-up with QTS. / allucent_notes_20251021_145627: John Capriotti on 2025-10-07 13:10: Need to confirm dry-in status/completion date before bringing in these CRAH units, pushing a week until I can get confirmed status. / John Capriotti on 2025-10-21 14:10: Planning to set these in roughly two weeks working to get the deliveries set-up with QTS. / allucent_notes_20251014_152335: John Capriotti on 2025-10-07 13:10: Need to confirm dry-in status/completion date before bringing in these CRAH units, pushing a week until I can get confirmed status. / allucent_notes: 2025-10-07 13:10 - User: John Capriotti - Date Added: 2025-10-07 13:10 - Note: Need to confirm dry-in status/completion date before bringing in these CRAH units, pushing a week until I can get confirmed status. / 2025-10-21 14:10 - User: John Capriotti -
- QTS-34381: allucent_notes_20251202_153722: John Capriotti on 2025-10-07 13:10: Need to confirm dry-in status/completion date before bringing in these CRAH units, pushing a week until I can get confirmed status. / John Capriotti on 2025-10-21 14:10: Planning to set these in roughly two weeks working to get the deliveries set-up with QTS. / John Capriotti on 2025-11-04 15:11: From my understanding we are waiting on a few walls to be finished, meeting tomorrow with Belaire to discuss when and how many to bring in each day. / Jason Johnston on 2025-12-02 11:47: Delivery / allucent_notes_20251118_192630: John Capriotti on 2025-10-07 13:10: Need to confirm dry-in status/completion date before bringing in these CRAH units, pushing a week until I can get confirmed status. / John Capriotti on 2025-10-21 14:10: Planning to set these in roughly two weeks working to get the deliveries set-up with QTS. / John Capriotti on 2025-11-04 15:11: From my understanding we are waiting on a few walls to be finished, meeting tomorrow with Belaire to discuss when and how many to bring in each day. / allucent_notes_20251111_182405: John Capriotti on 2025-10-07 13:10: Need to confirm dry-in status/completion date before bringing in these CRAH units, pushing a week until I can get confirmed status. / John Capriotti on 2025-10-21 14:10: Planning to set these in roughly two weeks working to get the deliveries set-up with QTS. / John Capriotti on 2025-11-04 15:11: From my understanding we are waiting on a few walls to be finished, meeting tomorrow with Belaire to discuss when and how many to bring in each day. / allucent_notes_20251104_160200: John Capriotti on 2025-10-07 13:10: Need to confirm dry-in status/completion date before bringing in these CRAH units, pushing a week until I can get confirmed status. / John Capriotti on 2025-10-21 14:10: Planning to set these in roughly two weeks working to get the deliveries set-up with QTS. / John Capriotti on 2025-11-04 15:11: From my understanding we are waiting on a few walls to be finished, meeting tomorrow with Belaire to discuss when and how many to bring in each day. / allucent_notes_20251028_163138: John Capriotti on 2025-10-07 13:10: Need to confirm dry-in status/completion date before bringing in these CRAH units, pushing a week until I can get confirmed status. / John Capriotti on 2025-10-21 14:10: Planning to set these in roughly two weeks working to get the deliveries set-up with QTS. / allucent_notes_20251027_224008: John Capriotti on 2025-10-07 13:10: Need to confirm dry-in status/completion date before bringing in these CRAH units, pushing a week until I can get confirmed status. / John Capriotti on 2025-10-21 14:10: Planning to set these in roughly two weeks working to get the deliveries set-up with QTS. / allucent_notes_20251021_145627: John Capriotti on 2025-10-07 13:10: Need to confirm dry-in status/completion date before bringing in these CRAH units, pushing a week until I can get confirmed status. / John Capriotti on 2025-10-21 14:10: Planning to set these in roughly two weeks working to get the deliveries set-up with QTS. / allucent_notes_20251014_152335: John Capriotti on 2025-10-07 13:10: Need to confirm dry-in status/completion date before bringing in these CRAH units, pushing a week until I can get confirmed status. / allucent_notes: 2025-10-07 13:10 - User: John Capriotti - Date Added: 2025-10-07 13:10 - Note: Need to confirm dry-in status/completion date before bringing in these CRAH units, pushing a week until I can get confirmed status. / 2025-10-21 14:10 - User: John Capriotti -
- QTS-22261: allucent_notes_20251216_165335: Jason Johnston on 2025-10-28 16:10: Working on crane sequencing for equipment. / John Capriotti on 2025-11-04 15:11: From my understanding we are waiting on a few walls to be finished, meeting tomorrow with Belaire to discuss when and how many to bring in each day. / Jason Johnston on 2025-12-16 15:17: not yet / allucent_notes_20251209_203830: Jason Johnston on 2025-10-28 16:10: Working on crane sequencing for equipment. / John Capriotti on 2025-11-04 15:11: From my understanding we are waiting on a few walls to be finished, meeting tomorrow with Belaire to discuss when and how many to bring in each day. / allucent_notes_20251202_153722: Jason Johnston on 2025-10-28 16:10: Working on crane sequencing for equipment. / John Capriotti on 2025-11-04 15:11: From my understanding we are waiting on a few walls to be finished, meeting tomorrow with Belaire to discuss when and how many to bring in each day. / allucent_notes_20251118_192630: Jason Johnston on 2025-10-28 16:10: Working on crane sequencing for equipment. / John Capriotti on 2025-11-04 15:11: From my understanding we are waiting on a few walls to be finished, meeting tomorrow with Belaire to discuss when and how many to bring in each day. / allucent_notes_20251111_182405: Jason Johnston on 2025-10-28 16:10: Working on crane sequencing for equipment. / John Capriotti on 2025-11-04 15:11: From my understanding we are waiting on a few walls to be finished, meeting tomorrow with Belaire to discuss when and how many to bring in each day. / allucent_notes_20251104_160200: Jason Johnston on 2025-10-28 16:10: Working on crane sequencing for equipment. / John Capriotti on 2025-11-04 15:11: From my understanding we are waiting on a few walls to be finished, meeting tomorrow with Belaire to discuss when and how many to bring in each day. / allucent_notes_20251028_163138: Jason Johnston on 2025-10-28 16:10: Working on crane sequencing for equipment. / allucent_notes_20251230_164549: Jason Johnston on 2025-10-28 16:10: Working on crane sequencing for equipment. / John Capriotti on 2025-11-04 15:11: From my understanding we are waiting on a few walls to be finished, meeting tomorrow with Belaire to discuss when and how many to bring in each day. / Jason Johnston on 2025-12-16 15:17: not yet / John Capriotti on 2025-12-30T15:16:21.751Z: Actualizing ROJ: DOAS delivered to QAE yard on 10/2 - technically have it just not delivered to the site from QAE yard until I can confirm set date / allucent_notes: 2025-10-28 16:10 - User: Jason Johnston - Date Added: 2025-10-28 16:10 - Note: Working on crane sequencing for equipment. / 2025-11-04 15:11 - User: John Capriotti - Date Added: 2025-11-04 15:11 - Note: From my understanding we are waiting on a few walls
- QTS-25381: allucent_notes_20251216_165335: Jason Johnston on 2025-10-28 16:10: Working on crane sequencing for equipment. / John Capriotti on 2025-11-04 15:11: From my understanding we are waiting on a few walls to be finished, meeting tomorrow with Belaire to discuss when and how many to bring in each day. / Jason Johnston on 2025-12-16 15:17: not yet / allucent_notes_20251209_203830: Jason Johnston on 2025-10-28 16:10: Working on crane sequencing for equipment. / John Capriotti on 2025-11-04 15:11: From my understanding we are waiting on a few walls to be finished, meeting tomorrow with Belaire to discuss when and how many to bring in each day. / allucent_notes_20251202_153722: Jason Johnston on 2025-10-28 16:10: Working on crane sequencing for equipment. / John Capriotti on 2025-11-04 15:11: From my understanding we are waiting on a few walls to be finished, meeting tomorrow with Belaire to discuss when and how many to bring in each day. / allucent_notes_20251118_192630: Jason Johnston on 2025-10-28 16:10: Working on crane sequencing for equipment. / John Capriotti on 2025-11-04 15:11: From my understanding we are waiting on a few walls to be finished, meeting tomorrow with Belaire to discuss when and how many to bring in each day. / allucent_notes_20251111_182405: Jason Johnston on 2025-10-28 16:10: Working on crane sequencing for equipment. / John Capriotti on 2025-11-04 15:11: From my understanding we are waiting on a few walls to be finished, meeting tomorrow with Belaire to discuss when and how many to bring in each day. / allucent_notes_20251104_160200: Jason Johnston on 2025-10-28 16:10: Working on crane sequencing for equipment. / John Capriotti on 2025-11-04 15:11: From my understanding we are waiting on a few walls to be finished, meeting tomorrow with Belaire to discuss when and how many to bring in each day. / allucent_notes_20251028_163138: Jason Johnston on 2025-10-28 16:10: Working on crane sequencing for equipment. / allucent_notes_20251230_164549: Jason Johnston on 2025-10-28 16:10: Working on crane sequencing for equipment. / John Capriotti on 2025-11-04 15:11: From my understanding we are waiting on a few walls to be finished, meeting tomorrow with Belaire to discuss when and how many to bring in each day. / Jason Johnston on 2025-12-16 15:17: not yet / John Capriotti on 2025-12-30T15:16:27.512Z: Actualizing ROJ: DOAS delivered to QAE yard on 10/2 - technically have it just not delivered to the site from QAE yard until I can confirm set date / allucent_notes: 2025-10-28 16:10 - User: Jason Johnston - Date Added: 2025-10-28 16:10 - Note: Working on crane sequencing for equipment. / 2025-11-04 15:11 - User: John Capriotti - Date Added: 2025-11-04 15:11 - Note: From my understanding we are waiting on a few walls
- QTS-34391: allucent_notes_20251202_153722: John Capriotti on 2025-11-04 15:11: From my understanding we are waiting on a few walls to be finished, meeting tomorrow with Belaire to discuss when and how many to bring in each day. / Jason Johnston on 2025-12-02 11:47: Delivery / allucent_notes_20251118_192630: John Capriotti on 2025-11-04 15:11: From my understanding we are waiting on a few walls to be finished, meeting tomorrow with Belaire to discuss when and how many to bring in each day. / allucent_notes_20251111_182405: John Capriotti on 2025-11-04 15:11: From my understanding we are waiting on a few walls to be finished, meeting tomorrow with Belaire to discuss when and how many to bring in each day. / allucent_notes_20251104_160200: John Capriotti on 2025-11-04 15:11: From my understanding we are waiting on a few walls to be finished, meeting tomorrow with Belaire to discuss when and how many to bring in each day. / allucent_notes: 2025-11-04 15:11 - User: John Capriotti - Date Added: 2025-11-04 15:11 - Note: From my understanding we are waiting on a few walls to be finished, meeting tomorrow with Belaire to discuss when and how many to bring in each day. / 2025-12-02 11:47 - User:
- QTS-34401: allucent_notes_20251202_153722: John Capriotti on 2025-11-04 15:11: From my understanding we are waiting on a few walls to be finished, meeting tomorrow with Belaire to discuss when and how many to bring in each day. / Jason Johnston on 2025-12-02 11:47: Delivery / allucent_notes_20251118_192630: John Capriotti on 2025-11-04 15:11: From my understanding we are waiting on a few walls to be finished, meeting tomorrow with Belaire to discuss when and how many to bring in each day. / allucent_notes_20251111_182405: John Capriotti on 2025-11-04 15:11: From my understanding we are waiting on a few walls to be finished, meeting tomorrow with Belaire to discuss when and how many to bring in each day. / allucent_notes_20251104_160200: John Capriotti on 2025-11-04 15:11: From my understanding we are waiting on a few walls to be finished, meeting tomorrow with Belaire to discuss when and how many to bring in each day. / allucent_notes: 2025-11-04 15:11 - User: John Capriotti - Date Added: 2025-11-04 15:11 - Note: From my understanding we are waiting on a few walls to be finished, meeting tomorrow with Belaire to discuss when and how many to bring in each day. / 2025-12-02 11:47 - User:
- QTS-34411: allucent_notes_20251202_153722: John Capriotti on 2025-11-04 15:11: From my understanding we are waiting on a few walls to be finished, meeting tomorrow with Belaire to discuss when and how many to bring in each day. / Jason Johnston on 2025-12-02 11:47: Delivery / allucent_notes_20251118_192630: John Capriotti on 2025-11-04 15:11: From my understanding we are waiting on a few walls to be finished, meeting tomorrow with Belaire to discuss when and how many to bring in each day. / allucent_notes_20251111_182405: John Capriotti on 2025-11-04 15:11: From my understanding we are waiting on a few walls to be finished, meeting tomorrow with Belaire to discuss when and how many to bring in each day. / allucent_notes_20251104_160200: John Capriotti on 2025-11-04 15:11: From my understanding we are waiting on a few walls to be finished, meeting tomorrow with Belaire to discuss when and how many to bring in each day. / allucent_notes: 2025-11-04 15:11 - User: John Capriotti - Date Added: 2025-11-04 15:11 - Note: From my understanding we are waiting on a few walls to be finished, meeting tomorrow with Belaire to discuss when and how many to bring in each day. / 2025-12-02 11:47 - User:
- QTS-34421: allucent_notes_20251202_153722: John Capriotti on 2025-11-04 15:11: From my understanding we are waiting on a few walls to be finished, meeting tomorrow with Belaire to discuss when and how many to bring in each day. / Jason Johnston on 2025-12-02 11:47: Delivery / allucent_notes_20251118_192630: John Capriotti on 2025-11-04 15:11: From my understanding we are waiting on a few walls to be finished, meeting tomorrow with Belaire to discuss when and how many to bring in each day. / allucent_notes_20251111_182405: John Capriotti on 2025-11-04 15:11: From my understanding we are waiting on a few walls to be finished, meeting tomorrow with Belaire to discuss when and how many to bring in each day. / allucent_notes_20251104_160200: John Capriotti on 2025-11-04 15:11: From my understanding we are waiting on a few walls to be finished, meeting tomorrow with Belaire to discuss when and how many to bring in each day. / allucent_notes: 2025-11-04 15:11 - User: John Capriotti - Date Added: 2025-11-04 15:11 - Note: From my understanding we are waiting on a few walls to be finished, meeting tomorrow with Belaire to discuss when and how many to bring in each day. / 2025-12-02 11:47 - User:
- QTS-34431: allucent_notes_20251202_153722: Jason Johnston on 2025-11-04 15:11: Checking if in warehouse / Jason Johnston on 2025-12-02 11:47: Delivery / allucent_notes_20251118_192630: Jason Johnston on 2025-11-04 15:11: Checking if in warehouse / allucent_notes_20251111_182405: Jason Johnston on 2025-11-04 15:11: Checking if in warehouse / allucent_notes_20251104_160200: Jason Johnston on 2025-11-04 15:11: Checking if in warehouse / allucent_notes: 2025-11-04 15:11 - User: Jason Johnston - Date Added: 2025-11-04 15:11 - Note: Checking if in warehouse / 2025-12-02 11:47 - User: Jason Johnston - Date Added: 2025-12-02 11:47 - Note: Delivery
- QTS-34441: allucent_notes_20251202_153722: Jason Johnston on 2025-11-04 15:11: Checking if in warehouse / Jason Johnston on 2025-12-02 11:47: Delivery / allucent_notes_20251118_192630: Jason Johnston on 2025-11-04 15:11: Checking if in warehouse / allucent_notes_20251111_182405: Jason Johnston on 2025-11-04 15:11: Checking if in warehouse / allucent_notes_20251104_160200: Jason Johnston on 2025-11-04 15:11: Checking if in warehouse / allucent_notes: 2025-11-04 15:11 - User: Jason Johnston - Date Added: 2025-11-04 15:11 - Note: Checking if in warehouse / 2025-12-02 11:47 - User: Jason Johnston - Date Added: 2025-12-02 11:47 - Note: Delivery
- QTS-34451: allucent_notes_20251202_153722: Jason Johnston on 2025-11-04 15:11: Checking if in warehouse / Jason Johnston on 2025-12-02 11:48: Delivery / allucent_notes_20251118_192630: Jason Johnston on 2025-11-04 15:11: Checking if in warehouse / allucent_notes_20251111_182405: Jason Johnston on 2025-11-04 15:11: Checking if in warehouse / allucent_notes_20251104_160200: Jason Johnston on 2025-11-04 15:11: Checking if in warehouse / allucent_notes: 2025-11-04 15:11 - User: Jason Johnston - Date Added: 2025-11-04 15:11 - Note: Checking if in warehouse / 2025-12-02 11:48 - User: Jason Johnston - Date Added: 2025-12-02 11:48 - Note: Delivery
- QTS-34461: allucent_notes_20251202_153722: Jason Johnston on 2025-11-04T22:46:06.328Z: remove actual / Jason Johnston on 2025-12-02 11:48: Delivery / allucent_notes_20251118_192630: Jason Johnston on 2025-11-04T22:46:06.328Z: remove actual / allucent_notes_20251111_182405: Jason Johnston on 2025-11-04T22:46:06.328Z: remove actual / allucent_notes_20251104_160200: Jason Johnston on 2025-11-04T22:46:06.328Z: remove actual / allucent_notes: 2025-11-04T22:46:06.328Z - User: Jason Johnston - Date Added: 2025-11-04T22:46:06.328Z - Note: remove actual / 2025-12-02 11:48 - User: Jason Johnston - Date Added: 2025-12-02 11:48 - Note: Delivery
- QTS-34471: allucent_notes_20251202_153722: Jason Johnston on 2025-11-04T22:46:11.324Z: remove actual / Jason Johnston on 2025-12-02 11:48: Delivery / allucent_notes_20251118_192630: Jason Johnston on 2025-11-04T22:46:11.324Z: remove actual / allucent_notes_20251111_182405: Jason Johnston on 2025-11-04T22:46:11.324Z: remove actual / allucent_notes_20251104_160200: Jason Johnston on 2025-11-04T22:46:11.324Z: remove actual / allucent_notes: 2025-11-04T22:46:11.324Z - User: Jason Johnston - Date Added: 2025-11-04T22:46:11.324Z - Note: remove actual / 2025-12-02 11:48 - User: Jason Johnston - Date Added: 2025-12-02 11:48 - Note: Delivery
- QTS-34481: allucent_notes_20251202_153722: Jason Johnston on 2025-11-04T22:46:15.553Z: remove actual / Jason Johnston on 2025-12-02 11:48: Delivery / allucent_notes_20251118_192630: Jason Johnston on 2025-11-04T22:46:15.553Z: remove actual / allucent_notes_20251111_182405: Jason Johnston on 2025-11-04T22:46:15.553Z: remove actual / allucent_notes_20251104_160200: Jason Johnston on 2025-11-04T22:46:15.553Z: remove actual / allucent_notes: 2025-11-04T22:46:15.553Z - User: Jason Johnston - Date Added: 2025-11-04T22:46:15.553Z - Note: remove actual / 2025-12-02 11:48 - User: Jason Johnston - Date Added: 2025-12-02 11:48 - Note: Delivery
- QTS-34491: allucent_notes_20251202_153722: Jason Johnston on 2025-11-04T22:46:19.566Z: remove actual / Jason Johnston on 2025-12-02 11:48: Delivery / allucent_notes_20251118_192630: Jason Johnston on 2025-11-04T22:46:19.566Z: remove actual / allucent_notes_20251111_182405: Jason Johnston on 2025-11-04T22:46:19.566Z: remove actual / allucent_notes_20251104_160200: Jason Johnston on 2025-11-04T22:46:19.566Z: remove actual / allucent_notes: 2025-11-04T22:46:19.566Z - User: Jason Johnston - Date Added: 2025-11-04T22:46:19.566Z - Note: remove actual / 2025-12-02 11:48 - User: Jason Johnston - Date Added: 2025-12-02 11:48 - Note: Delivery
- QTS-34501: allucent_notes_20251202_153722: Jason Johnston on 2025-11-04T22:46:23.773Z: remove actual / Jason Johnston on 2025-12-02 11:48: Delivery / allucent_notes_20251118_192630: Jason Johnston on 2025-11-04T22:46:23.773Z: remove actual / allucent_notes_20251111_182405: Jason Johnston on 2025-11-04T22:46:23.773Z: remove actual / allucent_notes_20251104_160200: Jason Johnston on 2025-11-04T22:46:23.773Z: remove actual / allucent_notes: 2025-11-04T22:46:23.773Z - User: Jason Johnston - Date Added: 2025-11-04T22:46:23.773Z - Note: remove actual / 2025-12-02 11:48 - User: Jason Johnston - Date Added: 2025-12-02 11:48 - Note: Delivery
- QTS-34511: allucent_notes_20251202_153722: Jason Johnston on 2025-11-04 15:11: Checking if in warehouse / Jason Johnston on 2025-12-02 11:49: Not delivered yet / John Capriotti on 2025-12-02 12:18: Delivered 12/1 / allucent_notes_20251118_192630: Jason Johnston on 2025-11-04 15:11: Checking if in warehouse / allucent_notes_20251111_182405: Jason Johnston on 2025-11-04 15:11: Checking if in warehouse / allucent_notes_20251104_160200: Jason Johnston on 2025-11-04 15:11: Checking if in warehouse / allucent_notes: 2025-11-04 15:11 - User: Jason Johnston - Date Added: 2025-11-04 15:11 - Note: Checking if in warehouse / 2025-12-02 11:49 - User: Jason Johnston - Date Added: 2025-12-02 11:49 - Note: Not delivered yet / 2025-12-02 12:18 - User: John Capriotti - Date A
- QTS-34521: allucent_notes_20251202_153722: Jason Johnston on 2025-11-04 15:11: Checking if in warehouse / Jason Johnston on 2025-12-02 11:49: Not delivered yet / John Capriotti on 2025-12-02 12:19: Delivered 12/1 / allucent_notes_20251118_192630: Jason Johnston on 2025-11-04 15:11: Checking if in warehouse / allucent_notes_20251111_182405: Jason Johnston on 2025-11-04 15:11: Checking if in warehouse / allucent_notes_20251104_160200: Jason Johnston on 2025-11-04 15:11: Checking if in warehouse / allucent_notes: 2025-11-04 15:11 - User: Jason Johnston - Date Added: 2025-11-04 15:11 - Note: Checking if in warehouse / 2025-12-02 11:49 - User: Jason Johnston - Date Added: 2025-12-02 11:49 - Note: Not delivered yet / 2025-12-02 12:19 - User: John Capriotti - Date A

| ID | WBS | Activity | Duration | Start | Finish | Predecessors | Complete | Planned start | Planned finish | Allucent CSI Group | Project Section | Layton Discipline | Baseline | Project Section-1 | Precon Phase | Contract |
| --- | --- | --- | --- | --- | --- | --- | --- | --- | --- | --- | --- | --- | --- | --- | --- | --- |
|  | 1 | **A11 Lineup** |  | 2025-07-14 | 2026-02-02 |  |  |  |  |  |  |  |  |  |  |  |
| QTS-35331 |  | DH 1100 / A11 Lineup // Chiller #1RT40-A11 | 20d | 2025-07-14 A | 2025-08-11 A | QTS-1371 | 100% | 2025-07-14 | 2025-08-08 | 01ADMIN | Preconstruction | Precon | GMP | Preconstruction | OFCI Procurement | BAB |
| QTS-31501 |  | DH 1100 / A11 Lineup // 600A MOD #A11-03 (CRAH Support) | 7d | 2025-07-21 A | 2025-07-29 A | QTS-1371 | 100% |  |  |  | Preconstruction | Precon | GMP | Preconstruction | OFCI Procurement | BAB |
| QTS-31261 |  | DH 1100 / A11 Lineup // 225A MOD #A11-02 (Liquid to Chip Support) | 2d | 2025-09-15 A | 2025-09-16 A | QTS-1371 | 100% |  |  |  | Preconstruction | Precon | GMP | Preconstruction | OFCI Procurement | BAB |
| QTS-33681 |  | DH 1100 / A11 Lineup // UPS Container #A11 | 20d | 2025-09-19 A | 2025-10-28 A | QTS-1371 | 100% | 2025-09-19 | 2025-10-16 | 01ADMIN | Preconstruction | Precon | GMP | Preconstruction | OFCI Procurement | BAB |
| QTS-35781 |  | DH 1100 / A11 Lineup // 2500KVA Padmount XFMR #A11 | 20d | 2025-10-06 A | 2025-10-21 A | QTS-1371 | 100% | 2025-10-06 | 2025-10-31 | 01ADMIN | Preconstruction | Precon | GMP | Preconstruction | OFCI Procurement | BAB |
| QTS-32991 |  | DH 1100 / A11 Lineup // Skid #A11 | 20d | 2025-10-07 A | 2025-11-03 A | QTS-1371 | 100% |  |  | 01ADMIN | Preconstruction | Precon | GMP | Preconstruction | OFCI Procurement | BAB |
| QTS-39781 |  | DH 1100 / A11 Lineup // Assembly - Tank #GEN-A11 | 20d | 2025-10-09 A | 2025-11-10 A | QTS-1371 | 100% | 2025-10-09 | 2025-11-05 | 01ADMIN | Preconstruction | Precon |  | Preconstruction | OFCI Procurement | BAB |
| QTS-39791 |  | DH 1100 / A11 Lineup // Assembly - Engine #GEN-A11 | 20d | 2025-10-09 A | 2025-11-10 A | QTS-1371 | 100% | 2025-10-09 | 2025-11-05 | 01ADMIN | Preconstruction | Precon |  | Preconstruction | OFCI Procurement | BAB |
| QTS-39801 |  | DH 1100 / A11 Lineup // Assembly - SCR #GEN-A11 | 20d | 2025-10-09 A | 2026-02-02 A | QTS-1371 | 100% | 2025-10-09 | 2025-11-05 | 01ADMIN | Preconstruction | Precon |  | Preconstruction | OFCI Procurement | BAB |
| QTS-39811 |  | DH 1100 / A11 Lineup // Assembly - Housing #GEN-A11 | 20d | 2025-10-09 A | 2025-11-10 A | QTS-1371 | 100% | 2025-10-09 | 2025-11-05 | 01ADMIN | Preconstruction | Precon |  | Preconstruction | OFCI Procurement | BAB |
|  | 2 | **B11 Lineup** |  | 2025-07-14 | 2026-02-02 |  |  |  |  |  |  |  |  |  |  |  |
| QTS-35341 |  | DH 1100 / B11 Lineup // Chiller #1RT40-B11 | 20d | 2025-07-14 A | 2025-08-11 A | QTS-1371 | 100% | 2025-07-14 | 2025-08-08 | 01ADMIN | Preconstruction | Precon | GMP | Preconstruction | OFCI Procurement | BAB |
| QTS-31511 |  | DH 1100 / B11 Lineup // 600A MOD #B11-01 (CRAH Suport) | 7d | 2025-07-21 A | 2025-07-29 A | QTS-1371 | 100% |  |  |  | Preconstruction | Precon | GMP | Preconstruction | OFCI Procurement | BAB |
| QTS-31271 |  | DH 1100 / B11 Lineup // 225A MOD #B11-02 (Liquid to Chip Support) | 2d | 2025-09-15 A | 2025-09-16 A | QTS-1371 | 100% |  |  |  | Preconstruction | Precon | GMP | Preconstruction | OFCI Procurement | BAB |
| QTS-33691 |  | DH 1100 / B11 Lineup // UPS Container #B11 | 20d | 2025-09-19 A | 2025-10-28 A | QTS-1371 | 100% | 2025-09-19 | 2025-10-16 | 01ADMIN | Preconstruction | Precon | GMP | Preconstruction | OFCI Procurement | BAB |
| QTS-35791 |  | DH 1100 / B11 Lineup // 2500KVA Padmount XFMR #B11 | 20d | 2025-10-06 A | 2025-10-20 A | QTS-1371 | 100% | 2025-10-06 | 2025-10-31 | 01ADMIN | Preconstruction | Precon | GMP | Preconstruction | OFCI Procurement | BAB |
| QTS-39821 |  | DH 1100 / B11 Lineup // Assembly - Tank #GEN-B11 | 20d | 2025-10-10 A | 2025-11-11 A | QTS-1371 | 100% | 2025-10-10 | 2025-11-06 | 01ADMIN | Preconstruction | Precon |  | Preconstruction | OFCI Procurement | BAB |
| QTS-39831 |  | DH 1100 / B11 Lineup // Assembly - Engine #GEN-B11 | 20d | 2025-10-10 A | 2025-11-11 A | QTS-1371 | 100% | 2025-10-10 | 2025-11-06 | 01ADMIN | Preconstruction | Precon |  | Preconstruction | OFCI Procurement | BAB |
| QTS-39841 |  | DH 1100 / B11 Lineup // Assembly - SCR #GEN-B11 | 20d | 2025-10-10 A | 2026-02-02 A | QTS-1371 | 100% | 2025-10-10 | 2025-11-06 | 01ADMIN | Preconstruction | Precon |  | Preconstruction | OFCI Procurement | BAB |
| QTS-39851 |  | DH 1100 / B11 Lineup // Assembly - Housing #GEN-B11 | 20d | 2025-10-10 A | 2025-11-11 A | QTS-1371 | 100% | 2025-10-10 | 2025-11-06 | 01ADMIN | Preconstruction | Precon |  | Preconstruction | OFCI Procurement | BAB |
| QTS-33031 |  | DH 1100 / B11 Lineup // Skid #B11 | 20d | 2025-10-22 A | 2025-11-18 A | QTS-1371 | 100% |  |  | 01ADMIN | Preconstruction | Precon | GMP | Preconstruction | OFCI Procurement | BAB |
|  | 3 | **C11 Lineup** |  | 2025-07-14 | 2026-02-02 |  |  |  |  |  |  |  |  |  |  |  |
| QTS-35351 |  | DH 1100 / C11 Lineup // Chiller #1RT40-C11 | 20d | 2025-07-14 A | 2025-08-11 A | QTS-1371 | 100% | 2025-07-14 | 2025-08-08 | 01ADMIN | Preconstruction | Precon | GMP | Preconstruction | OFCI Procurement | BAB |
| QTS-31521 |  | DH 1100 / C11 Lineup // 600A MOD #C11-03 (CRAH Support) | 7d | 2025-07-21 A | 2025-07-29 A | QTS-1371 | 100% |  |  |  | Preconstruction | Precon | GMP | Preconstruction | OFCI Procurement | BAB |
| QTS-31281 |  | DH 1100 / C11 Lineup // 225A MOD #C11-02 (Liquid to Chip Support) | 2d | 2025-09-15 A | 2025-09-16 A | QTS-1371 | 100% |  |  |  | Preconstruction | Precon | GMP | Preconstruction | OFCI Procurement | BAB |
| QTS-33701 |  | DH 1100 / C11 Lineup // UPS Container #C11 | 20d | 2025-09-19 A | 2025-10-29 A | QTS-1371 | 100% | 2025-09-19 | 2025-10-16 | 01ADMIN | Preconstruction | Precon | GMP | Preconstruction | OFCI Procurement | BAB |
| QTS-35801 |  | DH 1100 / C11 Lineup // 2500KVA Padmount XFMR #C11 | 20d | 2025-10-06 A | 2025-10-20 A | QTS-1371 | 100% | 2025-10-06 | 2025-10-31 | 01ADMIN | Preconstruction | Precon | GMP | Preconstruction | OFCI Procurement | BAB |
| QTS-39861 |  | DH 1100 / C11 Lineup // Assembly - Tank #GEN-C11 | 20d | 2025-10-13 A | 2025-11-13 A | QTS-1371 | 100% | 2025-10-13 | 2025-11-07 | 01ADMIN | Preconstruction | Precon |  | Preconstruction | OFCI Procurement | BAB |
| QTS-39871 |  | DH 1100 / C11 Lineup // Assembly - Engine #GEN-C11 | 20d | 2025-10-13 A | 2025-11-13 A | QTS-1371 | 100% | 2025-10-13 | 2025-11-07 | 01ADMIN | Preconstruction | Precon |  | Preconstruction | OFCI Procurement | BAB |
| QTS-39881 |  | DH 1100 / C11 Lineup // Assembly - SCR #GEN-C11 | 20d | 2025-10-13 A | 2026-02-02 A | QTS-1371 | 100% | 2025-10-13 | 2025-11-07 | 01ADMIN | Preconstruction | Precon |  | Preconstruction | OFCI Procurement | BAB |
| QTS-39891 |  | DH 1100 / C11 Lineup // Assembly - Housing #GEN-C11 | 20d | 2025-10-13 A | 2025-11-13 A | QTS-1371 | 100% | 2025-10-13 | 2025-11-07 | 01ADMIN | Preconstruction | Precon |  | Preconstruction | OFCI Procurement | BAB |
| QTS-33071 |  | DH 1100 / C11 Lineup // Skid #C11 | 20d | 2025-10-28 A | 2025-11-26 A | QTS-1371 | 100% | 2025-10-28 | 2025-11-24 | 01ADMIN | Preconstruction | Precon | GMP | Preconstruction | OFCI Procurement | BAB |

Notes:
- QTS-35331: allucent_notes: John Capriotti on 2025-08-12 15:08: Chiller received by Belaire/taken out of QAE Yard on 8/11 to set. / allucent_notes: 2025-08-12 15:08 - User: John Capriotti - Date Added: 2025-08-12 15:08 - Note: Chiller received by Belaire/taken out of QAE Yard on 8/11 to set.
- QTS-33681: allucent_notes_20251028_163138: John Capriotti on 2025-10-27 18:10: Received on-site 10/27, planning to set 10/28 / Jason Johnston on 2025-10-27 22:10: No update from John Capriotti / allucent_notes_20251027_224008: John Capriotti on 2025-10-27 18:10: Received on-site 10/27, planning to set 10/28 / Jason Johnston on 2025-10-27 22:10: No update from John Capriotti / allucent_notes: 2025-10-27 18:10 - User: John Capriotti - Date Added: 2025-10-27 18:10 - Note: Received on-site 10/27, planning to set 10/28 / 2025-10-27 22:10 - User: Jason Johnston - Date Added: 2025-10-27 22:10 - Note: No update from John Capriotti
- QTS-35781: allucent_notes_20251028_163138: John Capriotti on 2025-10-28 15:10: Received and set on 10/20. / allucent_notes: 2025-10-28 15:10 - User: John Capriotti - Date Added: 2025-10-28 15:10 - Note: Received and set on 10/20.
- QTS-39781: allucent_notes_20251118_192630: John Capriotti on 2025-11-11 12:11: Received on 11/10 / allucent_notes_20251111_182405: John Capriotti on 2025-11-11 12:11: Received on 11/10 / allucent_notes: 2025-11-11 12:11 - User: John Capriotti - Date Added: 2025-11-11 12:11 - Note: Received on 11/10
- QTS-39791: allucent_notes_20251118_192630: John Capriotti on 2025-11-11 12:11: Received on 11/10 / John Capriotti on 2025-11-11 12:11: Received on 11/10 / allucent_notes_20251111_182405: John Capriotti on 2025-11-11 12:11: Received on 11/10 / John Capriotti on 2025-11-11 12:11: Received on 11/10 / allucent_notes: 2025-11-11 12:11 - User: John Capriotti - Date Added: 2025-11-11 12:11 - Note: Received on 11/10 / 2025-11-11 12:11 - User: John Capriotti - Date Added: 2025-11-11 12:11 - Note: Received on 11/10
- QTS-39801: allucent_notes_20251216_165335: Jason Johnston on 2025-11-11 18:11: John owes 11/11 update / John Capriotti on 2025-12-09 12:40: Pending confirmation on timing from Belaire on this. Followed up on 12/9. / Jason Johnston on 2025-12-16 15:17: not yet / allucent_notes_20251209_203830: Jason Johnston on 2025-11-11 18:11: John owes 11/11 update / John Capriotti on 2025-12-09 12:40: Pending confirmation on timing from Belaire on this. Followed up on 12/9. / allucent_notes_20251202_153722: Jason Johnston on 2025-11-11 18:11: John owes 11/11 update / allucent_notes_20251118_192630: Jason Johnston on 2025-11-11 18:11: John owes 11/11 update / allucent_notes_20251111_182405: Jason Johnston on 2025-11-11 18:11: John owes 11/11 update / allucent_notes_20251230_164549: Jason Johnston on 2025-11-11 18:11: John owes 11/11 update / John Capriotti on 2025-12-09 12:40: Pending confirmation on timing from Belaire on this. Followed up on 12/9. / Jason Johnston on 2025-12-16 15:17: not yet / John Capriotti on 2025-12-30 10:38: SCRs will be delivered when we are ready to set. The Mfg/Vendor has these located in their yard in Texas, but we are not going to ship all of these to site to store and then mobilize a separate crane and additional trucks to bring to the building. That would be a decent cost and significantly more coordination, with no added benefit. / Ultimately, I, John Capriotti (OFCI), need an update from the Subs/Supers as to when we intend to set them so I can schedule the delivery to support those set dates. / **I will press for updated dates on these, moving out as I work on getting estimated set dates. / allucent_notes: 2025-11-11 18:11 - User: Jason Johnston - Date Added: 2025-11-11 18:11 - Note: John owes 11/11 update / 2025-12-09 12:40 - User: John Capriotti - Date Added: 2025-12-09 12:40 - Note: Pending confirmation on timing from Belaire on this. Followed up on 12
- QTS-39811: allucent_notes_20251118_192630: John Capriotti on 2025-11-11 12:11: Received on 11/10 / John Capriotti on 2025-11-11 12:11: Received on 11/10 / allucent_notes_20251111_182405: John Capriotti on 2025-11-11 12:11: Received on 11/10 / John Capriotti on 2025-11-11 12:11: Received on 11/10 / allucent_notes: 2025-11-11 12:11 - User: John Capriotti - Date Added: 2025-11-11 12:11 - Note: Received on 11/10 / 2025-11-11 12:11 - User: John Capriotti - Date Added: 2025-11-11 12:11 - Note: Received on 11/10
- QTS-35341: allucent_notes: John Capriotti on 2025-08-12 15:08: Chiller received by Belaire/taken out of QAE Yard on 8/11 to set. / allucent_notes: 2025-08-12 15:08 - User: John Capriotti - Date Added: 2025-08-12 15:08 - Note: Chiller received by Belaire/taken out of QAE Yard on 8/11 to set.
- QTS-33691: allucent_notes_20251028_163138: John Capriotti on 2025-10-27 18:10: Received on-site 10/27, planning to set 10/28 / John Capriotti on 2025-10-27 19:10: Currently setting PODs / John Capriotti on 2025-10-28 15:10: Received and set on 10/28 / allucent_notes_20251027_224008: John Capriotti on 2025-10-27 18:10: Received on-site 10/27, planning to set 10/28 / John Capriotti on 2025-10-27 19:10: Currently setting PODs / allucent_notes: 2025-10-27 18:10 - User: John Capriotti - Date Added: 2025-10-27 18:10 - Note: Received on-site 10/27, planning to set 10/28 / 2025-10-27 19:10 - User: John Capriotti - Date Added: 2025-10-27 19:10 - Note: Currently setting PODs / 2025-10-28 15:10 - Use
- QTS-35791: allucent_notes_20251028_163138: John Capriotti on 2025-10-28 15:10: Received and set on 10/20. / allucent_notes: 2025-10-28 15:10 - User: John Capriotti - Date Added: 2025-10-28 15:10 - Note: Received and set on 10/20.
- QTS-39821: allucent_notes_20251118_192630: John Capriotti on 2025-11-11 12:11: Received 11/11 / allucent_notes_20251111_182405: John Capriotti on 2025-11-11 12:11: Received 11/11 / allucent_notes: 2025-11-11 12:11 - User: John Capriotti - Date Added: 2025-11-11 12:11 - Note: Received 11/11
- QTS-39831: allucent_notes_20251118_192630: John Capriotti on 2025-11-11 12:11: Received 11/11 / allucent_notes_20251111_182405: John Capriotti on 2025-11-11 12:11: Received 11/11 / allucent_notes: 2025-11-11 12:11 - User: John Capriotti - Date Added: 2025-11-11 12:11 - Note: Received 11/11
- QTS-39841: allucent_notes_20251216_165335: Jason Johnston on 2025-11-11 18:11: John owes 11/11 update / John Capriotti on 2025-12-09 12:40: Pending confirmation on timing from Belaire on this. Followed up on 12/9. / Jason Johnston on 2025-12-16 15:17: not yet / allucent_notes_20251209_203830: Jason Johnston on 2025-11-11 18:11: John owes 11/11 update / John Capriotti on 2025-12-09 12:40: Pending confirmation on timing from Belaire on this. Followed up on 12/9. / allucent_notes_20251202_153722: Jason Johnston on 2025-11-11 18:11: John owes 11/11 update / allucent_notes_20251118_192630: Jason Johnston on 2025-11-11 18:11: John owes 11/11 update / allucent_notes_20251111_182405: Jason Johnston on 2025-11-11 18:11: John owes 11/11 update / allucent_notes_20251230_164549: Jason Johnston on 2025-11-11 18:11: John owes 11/11 update / John Capriotti on 2025-12-09 12:40: Pending confirmation on timing from Belaire on this. Followed up on 12/9. / Jason Johnston on 2025-12-16 15:17: not yet / John Capriotti on 2025-12-30 10:38: SCRs will be delivered when we are ready to set. The Mfg/Vendor has these located in their yard in Texas, but we are not going to ship all of these to site to store and then mobilize a separate crane and additional trucks to bring to the building. That would be a decent cost and significantly more coordination, with no added benefit. / Ultimately, I, John Capriotti (OFCI), need an update from the Subs/Supers as to when we intend to set them so I can schedule the delivery to support those set dates. / **I will press for updated dates on these, moving out as I work on getting estimated set dates. / allucent_notes: 2025-11-11 18:11 - User: Jason Johnston - Date Added: 2025-11-11 18:11 - Note: John owes 11/11 update / 2025-12-09 12:40 - User: John Capriotti - Date Added: 2025-12-09 12:40 - Note: Pending confirmation on timing from Belaire on this. Followed up on 12
- QTS-39851: allucent_notes_20251118_192630: John Capriotti on 2025-11-11 12:11: Received 11/11 / allucent_notes_20251111_182405: John Capriotti on 2025-11-11 12:11: Received 11/11 / allucent_notes: 2025-11-11 12:11 - User: John Capriotti - Date Added: 2025-11-11 12:11 - Note: Received 11/11
- QTS-35351: allucent_notes: John Capriotti on 2025-08-12 15:08: Chiller received by Belaire/taken out of QAE Yard on 8/11 to set. / allucent_notes: 2025-08-12 15:08 - User: John Capriotti - Date Added: 2025-08-12 15:08 - Note: Chiller received by Belaire/taken out of QAE Yard on 8/11 to set.
- QTS-33701: allucent_notes_20251104_160200: John Capriotti on 2025-10-27 19:10: Currently setting PODs / John Capriotti on 2025-10-28 15:10: Delivery set for 10/29. / allucent_notes_20251028_163138: John Capriotti on 2025-10-27 19:10: Currently setting PODs / John Capriotti on 2025-10-28 15:10: Delivery set for 10/29. / allucent_notes_20251027_224008: John Capriotti on 2025-10-27 19:10: Currently setting PODs / allucent_notes: 2025-10-27 19:10 - User: John Capriotti - Date Added: 2025-10-27 19:10 - Note: Currently setting PODs / 2025-10-28 15:10 - User: John Capriotti - Date Added: 2025-10-28 15:10 - Note: Delivery set for 10/29.
- QTS-35801: allucent_notes_20251028_163138: John Capriotti on 2025-10-28 15:10: Received and set on 10/20. / allucent_notes: 2025-10-28 15:10 - User: John Capriotti - Date Added: 2025-10-28 15:10 - Note: Received and set on 10/20.
- QTS-39861: allucent_notes_20251118_192630: John Capriotti on 2025-11-11 12:11: Set to receive 11/13 / allucent_notes_20251111_182405: John Capriotti on 2025-11-11 12:11: Set to receive 11/13 / allucent_notes: 2025-11-11 12:11 - User: John Capriotti - Date Added: 2025-11-11 12:11 - Note: Set to receive 11/13
- QTS-39871: allucent_notes_20251118_192630: John Capriotti on 2025-11-11 12:11: Set to receive 11/13 / allucent_notes_20251111_182405: John Capriotti on 2025-11-11 12:11: Set to receive 11/13 / allucent_notes: 2025-11-11 12:11 - User: John Capriotti - Date Added: 2025-11-11 12:11 - Note: Set to receive 11/13
- QTS-39881: allucent_notes_20251216_165335: Jason Johnston on 2025-11-11 18:11: John owes 11/11 update / John Capriotti on 2025-12-09 12:41: Pending confirmation on timing from Belaire on this. Followed up on 12/9. / Jason Johnston on 2025-12-16 15:17: not yet / allucent_notes_20251209_203830: Jason Johnston on 2025-11-11 18:11: John owes 11/11 update / John Capriotti on 2025-12-09 12:41: Pending confirmation on timing from Belaire on this. Followed up on 12/9. / allucent_notes_20251202_153722: Jason Johnston on 2025-11-11 18:11: John owes 11/11 update / allucent_notes_20251118_192630: Jason Johnston on 2025-11-11 18:11: John owes 11/11 update / allucent_notes_20251111_182405: Jason Johnston on 2025-11-11 18:11: John owes 11/11 update / allucent_notes_20251230_164549: Jason Johnston on 2025-11-11 18:11: John owes 11/11 update / John Capriotti on 2025-12-09 12:41: Pending confirmation on timing from Belaire on this. Followed up on 12/9. / Jason Johnston on 2025-12-16 15:17: not yet / John Capriotti on 2025-12-30 10:38: SCRs will be delivered when we are ready to set. The Mfg/Vendor has these located in their yard in Texas, but we are not going to ship all of these to site to store and then mobilize a separate crane and additional trucks to bring to the building. That would be a decent cost and significantly more coordination, with no added benefit. / Ultimately, I, John Capriotti (OFCI), need an update from the Subs/Supers as to when we intend to set them so I can schedule the delivery to support those set dates. / **I will press for updated dates on these, moving out as I work on getting estimated set dates. / allucent_notes: 2025-11-11 18:11 - User: Jason Johnston - Date Added: 2025-11-11 18:11 - Note: John owes 11/11 update / 2025-12-09 12:41 - User: John Capriotti - Date Added: 2025-12-09 12:41 - Note: Pending confirmation on timing from Belaire on this. Followed up on 12
- QTS-39891: allucent_notes_20251118_192630: John Capriotti on 2025-11-11 12:11: Set to receive 11/13 / allucent_notes_20251111_182405: John Capriotti on 2025-11-11 12:11: Set to receive 11/13 / allucent_notes: 2025-11-11 12:11 - User: John Capriotti - Date Added: 2025-11-11 12:11 - Note: Set to receive 11/13

| ID | WBS | Activity | Duration | Start | Finish | Predecessors | Complete | Planned start | Planned finish | Allucent CSI Group | Project Section | Layton Discipline | Baseline | Project Section-1 | Precon Phase | Contract |
| --- | --- | --- | --- | --- | --- | --- | --- | --- | --- | --- | --- | --- | --- | --- | --- | --- |
|  | 4 | **D11 Lineup** |  | 2025-07-14 | 2026-02-02 |  |  |  |  |  |  |  |  |  |  |  |
| QTS-35361 |  | DH 1100 / D11 Lineup // Chiller #1RT40-D11 | 20d | 2025-07-14 A | 2025-08-11 A | QTS-1371 | 100% | 2025-07-14 | 2025-08-08 | 01ADMIN | Preconstruction | Precon | GMP | Preconstruction | OFCI Procurement | BAB |
| QTS-31531 |  | DH 1100 / D11 Lineup // 600A MOD #D11-03 (CRAH Support) | 7d | 2025-07-21 A | 2025-07-29 A | QTS-1371 | 100% |  |  |  | Preconstruction | Precon | GMP | Preconstruction | OFCI Procurement | BAB |
| QTS-31291 |  | DH 1100 / D11 Lineup // 225A MOD #D11-02 (Liquid to Chip Support) | 2d | 2025-09-15 A | 2025-09-16 A | QTS-1371 | 100% |  |  |  | Preconstruction | Precon | GMP | Preconstruction | OFCI Procurement | BAB |
| QTS-33711 |  | DH 1100 / D11 Lineup // UPS Container #D11 | 20d | 2025-09-19 A | 2025-10-30 A | QTS-1371 | 100% | 2025-09-19 | 2025-10-16 | 01ADMIN | Preconstruction | Precon | GMP | Preconstruction | OFCI Procurement | BAB |
| QTS-35811 |  | DH 1100 / D11 Lineup // 2500KVA Padmount XFMR #D11 | 20d | 2025-10-06 A | 2025-10-21 A | QTS-1371 | 100% | 2025-10-06 | 2025-10-31 | 01ADMIN | Preconstruction | Precon | GMP | Preconstruction | OFCI Procurement | BAB |
| QTS-40381 |  | DH 1100 / D11 Lineup // Assembly - Tank #GEN-D11 | 20d | 2025-10-14 A | 2025-11-17 A | QTS-1371 | 100% | 2025-10-14 | 2025-11-10 | 01ADMIN | Preconstruction | Precon |  | Preconstruction | OFCI Procurement | BAB |
| QTS-40391 |  | DH 1100 / D11 Lineup // Assembly - Engine #GEN-D11 | 20d | 2025-10-14 A | 2025-11-17 A | QTS-1371 | 100% | 2025-10-14 | 2025-11-10 | 01ADMIN | Preconstruction | Precon |  | Preconstruction | OFCI Procurement | BAB |
| QTS-40401 |  | DH 1100 / D11 Lineup // Assembly - SCR #GEN-D11 | 20d | 2025-10-14 A | 2026-02-02 A | QTS-1371 | 100% | 2025-10-14 | 2025-11-10 | 01ADMIN | Preconstruction | Precon |  | Preconstruction | OFCI Procurement | BAB |
| QTS-40411 |  | DH 1100 / D11 Lineup // Assembly - Housing #GEN-D11 | 20d | 2025-10-14 A | 2025-11-17 A | QTS-1371 | 100% | 2025-10-14 | 2025-11-10 | 01ADMIN | Preconstruction | Precon |  | Preconstruction | OFCI Procurement | BAB |
| QTS-33111 |  | DH 1100 / D11 Lineup // Skid #D11 | 20d | 2025-10-30 A | 2025-11-26 A | QTS-1371 | 100% |  |  | 01ADMIN | Preconstruction | Precon | GMP | Preconstruction | OFCI Procurement | BAB |
|  | 5 | **E11 Lineup** |  | 2025-07-14 | 2026-02-02 |  |  |  |  |  |  |  |  |  |  |  |
| QTS-35371 |  | DH 1100 / E11 Lineup // Chiller #1RT40-E11 | 20d | 2025-07-14 A | 2025-08-11 A | QTS-1371 | 100% | 2025-07-14 | 2025-08-08 | 01ADMIN | Preconstruction | Precon | GMP | Preconstruction | OFCI Procurement | BAB |
| QTS-31541 |  | DH 1100 / E11 Lineup // 600A MOD #E11-03 (CRAH Support) | 7d | 2025-07-21 A | 2025-07-29 A | QTS-1371 | 100% |  |  |  | Preconstruction | Precon | GMP | Preconstruction | OFCI Procurement | BAB |
| QTS-31301 |  | DH 1100 / E11 Lineup // 225A MOD #E11-02 (Liquid to Chip Support) | 2d | 2025-09-15 A | 2025-09-16 A | QTS-1371 | 100% |  |  |  | Preconstruction | Precon | GMP | Preconstruction | OFCI Procurement | BAB |
| QTS-33721 |  | DH 1100 / E11 Lineup // UPS Container #E11 | 20d | 2025-09-19 A | 2025-11-05 A | QTS-1371 | 100% | 2025-09-19 | 2025-10-16 | 01ADMIN | Preconstruction | Precon | GMP | Preconstruction | OFCI Procurement | BAB |
| QTS-35821 |  | DH 1100 / E11 Lineup // 2500KVA Padmount XFMR #E11 | 20d | 2025-10-06 A | 2025-10-21 A | QTS-1371 | 100% | 2025-10-06 | 2025-10-31 | 01ADMIN | Preconstruction | Precon | GMP | Preconstruction | OFCI Procurement | BAB |
| QTS-33151 |  | DH 1100 / E11 Lineup // Skid #E11 | 20d | 2025-10-15 A | 2025-11-03 A | QTS-1371 | 100% | 2025-10-15 | 2025-11-11 | 01ADMIN | Preconstruction | Precon | GMP | Preconstruction | OFCI Procurement | BAB |
| QTS-40581 |  | DH 1100 / E11 Lineup // Assembly - Tank #GEN-E11 | 20d | 2025-10-15 A | 2025-11-20 A | QTS-1371 | 100% | 2025-10-15 | 2025-11-11 | 01ADMIN | Preconstruction | Precon |  | Preconstruction | OFCI Procurement | BAB |
| QTS-40591 |  | DH 1100 / E11 Lineup // Assembly - Engine #GEN-E11 | 20d | 2025-10-15 A | 2025-11-20 A | QTS-1371 | 100% | 2025-10-15 | 2025-11-11 | 01ADMIN | Preconstruction | Precon |  | Preconstruction | OFCI Procurement | BAB |
| QTS-40601 |  | DH 1100 / E11 Lineup // Assembly - SCR #GEN-E11 | 20d | 2025-10-15 A | 2026-02-02 A | QTS-1371 | 100% | 2025-10-15 | 2025-11-11 | 01ADMIN | Preconstruction | Precon |  | Preconstruction | OFCI Procurement | BAB |
| QTS-40611 |  | DH 1100 / E11 Lineup // Assembly - Housing #GEN-E11 | 20d | 2025-10-15 A | 2025-11-20 A | QTS-1371 | 100% | 2025-10-15 | 2025-11-11 | 01ADMIN | Preconstruction | Precon |  | Preconstruction | OFCI Procurement | BAB |
|  | 6 | **F11 Lineup** |  | 2025-07-14 | 2026-02-02 |  |  |  |  |  |  |  |  |  |  |  |
| QTS-35381 |  | DH 1100 / F11 Lineup // Chiller #1RT40-F11 | 20d | 2025-07-14 A | 2025-08-11 A | QTS-1371 | 100% | 2025-07-14 | 2025-08-08 | 01ADMIN | Preconstruction | Precon | GMP | Preconstruction | OFCI Procurement | BAB |
| QTS-31551 |  | DH 1100 / F11 Lineup // 600A MOD #F11-03 (CRAH Support) | 7d | 2025-07-21 A | 2025-07-29 A | QTS-1371 | 100% |  |  |  | Preconstruction | Precon | GMP | Preconstruction | OFCI Procurement | BAB |
| QTS-31311 |  | DH 1100 / F11 Lineup // 225A MOD #F11-02 (Liquid to Chip Support) | 2d | 2025-09-15 A | 2025-09-16 A | QTS-1371 | 100% |  |  |  | Preconstruction | Precon | GMP | Preconstruction | OFCI Procurement | BAB |
| QTS-33731 |  | DH 1100 / F11 Lineup // UPS Container #F11 | 20d | 2025-09-19 A | 2025-11-06 A | QTS-1371 | 100% | 2025-09-19 | 2025-10-16 | 01ADMIN | Preconstruction | Precon | GMP | Preconstruction | OFCI Procurement | BAB |
| QTS-35831 |  | DH 1100 / F11 Lineup // 2500KVA Padmount XFMR #F11 | 20d | 2025-10-06 A | 2025-10-21 A | QTS-1371 | 100% | 2025-10-06 | 2025-10-31 | 01ADMIN | Preconstruction | Precon | GMP | Preconstruction | OFCI Procurement | BAB |
| QTS-33191 |  | DH 1100 / F11 Lineup // Skid #F11 | 20d | 2025-10-15 A | 2025-11-03 A | QTS-1371 | 100% | 2025-10-15 | 2025-11-11 | 01ADMIN | Preconstruction | Precon | GMP | Preconstruction | OFCI Procurement | BAB |
| QTS-40781 |  | DH 1100 / F11 Lineup // Assembly - Tank #GEN-F11 | 20d | 2025-10-16 A | 2025-11-17 A | QTS-1371 | 100% | 2025-10-16 | 2025-11-12 | 01ADMIN | Preconstruction | Precon |  | Preconstruction | OFCI Procurement | BAB |
| QTS-40791 |  | DH 1100 / F11 Lineup // Assembly - Engine #GEN-F11 | 20d | 2025-10-16 A | 2025-11-17 A | QTS-1371 | 100% | 2025-10-16 | 2025-11-12 | 01ADMIN | Preconstruction | Precon |  | Preconstruction | OFCI Procurement | BAB |
| QTS-40801 |  | DH 1100 / F11 Lineup // Assembly - SCR #GEN-F11 | 20d | 2025-10-16 A | 2026-02-02 A | QTS-1371 | 100% | 2025-10-16 | 2025-11-12 | 01ADMIN | Preconstruction | Precon |  | Preconstruction | OFCI Procurement | BAB |
| QTS-40811 |  | DH 1100 / F11 Lineup // Assembly - Housing #GEN-F11 | 20d | 2025-10-16 A | 2025-11-17 A | QTS-1371 | 100% | 2025-10-16 | 2025-11-12 | 01ADMIN | Preconstruction | Precon |  | Preconstruction | OFCI Procurement | BAB |

Notes:
- QTS-35361: allucent_notes: John Capriotti on 2025-08-12 15:08: Chiller received by Belaire/taken out of QAE Yard on 8/11 to set. / allucent_notes: 2025-08-12 15:08 - User: John Capriotti - Date Added: 2025-08-12 15:08 - Note: Chiller received by Belaire/taken out of QAE Yard on 8/11 to set.
- QTS-33711: allucent_notes_20251104_160200: Jason Johnston on 2025-10-27 22:10: No update from John Capriotti / John Capriotti on 2025-10-28 15:10: Delivery set for 10/30. / allucent_notes_20251028_163138: Jason Johnston on 2025-10-27 22:10: No update from John Capriotti / John Capriotti on 2025-10-28 15:10: Delivery set for 10/30. / allucent_notes_20251027_224008: Jason Johnston on 2025-10-27 22:10: No update from John Capriotti / allucent_notes: 2025-10-27 22:10 - User: Jason Johnston - Date Added: 2025-10-27 22:10 - Note: No update from John Capriotti / 2025-10-28 15:10 - User: John Capriotti - Date Added: 2025-10-28 15:10 - Note: Delivery set for 10/30.
- QTS-35811: allucent_notes_20251028_163138: John Capriotti on 2025-10-28 15:10: Received and set on 10/21.. / allucent_notes: 2025-10-28 15:10 - User: John Capriotti - Date Added: 2025-10-28 15:10 - Note: Received and set on 10/21..
- QTS-40381: allucent_notes_20251118_192630: John Capriotti on 2025-11-11 13:11: Set to receive 11/13 / allucent_notes_20251111_182405: John Capriotti on 2025-11-11 13:11: Set to receive 11/13 / allucent_notes: 2025-11-11 13:11 - User: John Capriotti - Date Added: 2025-11-11 13:11 - Note: Set to receive 11/13
- QTS-40391: allucent_notes_20251118_192630: John Capriotti on 2025-11-11 13:11: Set to receive 11/13 / allucent_notes_20251111_182405: John Capriotti on 2025-11-11 13:11: Set to receive 11/13 / allucent_notes: 2025-11-11 13:11 - User: John Capriotti - Date Added: 2025-11-11 13:11 - Note: Set to receive 11/13
- QTS-40401: allucent_notes_20251216_165335: Jason Johnston on 2025-11-11 18:11: John owes 11/11 update / John Capriotti on 2025-12-09 12:41: Pending confirmation on timing from Belaire on this. Followed up on 12/9. / Jason Johnston on 2025-12-16 15:17: not yet / allucent_notes_20251209_203830: Jason Johnston on 2025-11-11 18:11: John owes 11/11 update / John Capriotti on 2025-12-09 12:41: Pending confirmation on timing from Belaire on this. Followed up on 12/9. / allucent_notes_20251202_153722: Jason Johnston on 2025-11-11 18:11: John owes 11/11 update / allucent_notes_20251118_192630: Jason Johnston on 2025-11-11 18:11: John owes 11/11 update / allucent_notes_20251111_182405: Jason Johnston on 2025-11-11 18:11: John owes 11/11 update / allucent_notes_20251230_164549: Jason Johnston on 2025-11-11 18:11: John owes 11/11 update / John Capriotti on 2025-12-09 12:41: Pending confirmation on timing from Belaire on this. Followed up on 12/9. / Jason Johnston on 2025-12-16 15:17: not yet / John Capriotti on 2025-12-30 10:38: SCRs will be delivered when we are ready to set. The Mfg/Vendor has these located in their yard in Texas, but we are not going to ship all of these to site to store and then mobilize a separate crane and additional trucks to bring to the building. That would be a decent cost and significantly more coordination, with no added benefit. / Ultimately, I, John Capriotti (OFCI), need an update from the Subs/Supers as to when we intend to set them so I can schedule the delivery to support those set dates. / **I will press for updated dates on these, moving out as I work on getting estimated set dates. / allucent_notes: 2025-11-11 18:11 - User: Jason Johnston - Date Added: 2025-11-11 18:11 - Note: John owes 11/11 update / 2025-12-09 12:41 - User: John Capriotti - Date Added: 2025-12-09 12:41 - Note: Pending confirmation on timing from Belaire on this. Followed up on 12
- QTS-40411: allucent_notes_20251118_192630: John Capriotti on 2025-11-11 13:11: Set to receive 11/13 / allucent_notes_20251111_182405: John Capriotti on 2025-11-11 13:11: Set to receive 11/13 / allucent_notes: 2025-11-11 13:11 - User: John Capriotti - Date Added: 2025-11-11 13:11 - Note: Set to receive 11/13
- QTS-35371: allucent_notes: John Capriotti on 2025-08-12 15:08: Chiller received by Belaire/taken out of QAE Yard on 8/11 to set. / allucent_notes: 2025-08-12 15:08 - User: John Capriotti - Date Added: 2025-08-12 15:08 - Note: Chiller received by Belaire/taken out of QAE Yard on 8/11 to set.
- QTS-33721: allucent_notes_20251118_192630: Jason Johnston on 2025-10-27 22:10: No update from John Capriotti / John Capriotti on 2025-10-28 15:10: Per Vendor/Fibrebond they confirmed delivery for 11/5. Unable to bring in early do to logistics, permitting, etc. Will set when it comes in. / allucent_notes_20251111_182405: Jason Johnston on 2025-10-27 22:10: No update from John Capriotti / John Capriotti on 2025-10-28 15:10: Per Vendor/Fibrebond they confirmed delivery for 11/5. Unable to bring in early do to logistics, permitting, etc. Will set when it comes in. / allucent_notes_20251104_160200: Jason Johnston on 2025-10-27 22:10: No update from John Capriotti / John Capriotti on 2025-10-28 15:10: Per Vendor/Fibrebond they confirmed delivery for 11/5. Unable to bring in early do to logistics, permitting, etc. Will set when it comes in. / allucent_notes_20251028_163138: Jason Johnston on 2025-10-27 22:10: No update from John Capriotti / John Capriotti on 2025-10-28 15:10: Per Vendor/Fibrebond they confirmed delivery for 11/5. Unable to bring in early do to logistics, permitting, etc. Will set when it comes in. / allucent_notes_20251027_224008: Jason Johnston on 2025-10-27 22:10: No update from John Capriotti / allucent_notes: 2025-10-27 22:10 - User: Jason Johnston - Date Added: 2025-10-27 22:10 - Note: No update from John Capriotti / 2025-10-28 15:10 - User: John Capriotti - Date Added: 2025-10-28 15:10 - Note: Per Vendor/Fibrebond they confirmed delivery for 11/5. Unable to
- QTS-35821: allucent_notes_20251028_163138: John Capriotti on 2025-10-28 15:10: Received and set on 10/21. / allucent_notes: 2025-10-28 15:10 - User: John Capriotti - Date Added: 2025-10-28 15:10 - Note: Received and set on 10/21.
- QTS-40581: allucent_notes_20251202_153722: John Capriotti on 2025-11-11 13:11: Set to receive 11/14. / allucent_notes_20251118_192630: John Capriotti on 2025-11-11 13:11: Set to receive 11/14. / allucent_notes_20251111_182405: John Capriotti on 2025-11-11 13:11: Set to receive 11/14. / allucent_notes: 2025-11-11 13:11 - User: John Capriotti - Date Added: 2025-11-11 13:11 - Note: Set to receive 11/14.
- QTS-40591: allucent_notes_20251202_153722: John Capriotti on 2025-11-11 13:11: Set to receive 11/14. / allucent_notes_20251118_192630: John Capriotti on 2025-11-11 13:11: Set to receive 11/14. / allucent_notes_20251111_182405: John Capriotti on 2025-11-11 13:11: Set to receive 11/14. / allucent_notes: 2025-11-11 13:11 - User: John Capriotti - Date Added: 2025-11-11 13:11 - Note: Set to receive 11/14.
- QTS-40601: allucent_notes_20251216_165335: Jason Johnston on 2025-11-11 17:11: John owes 11/11 update / John Capriotti on 2025-12-09 12:41: Pending confirmation on timing from Belaire on this. Followed up on 12/9. / Jason Johnston on 2025-12-16 15:17: not yet / allucent_notes_20251209_203830: Jason Johnston on 2025-11-11 17:11: John owes 11/11 update / John Capriotti on 2025-12-09 12:41: Pending confirmation on timing from Belaire on this. Followed up on 12/9. / allucent_notes_20251202_153722: Jason Johnston on 2025-11-11 17:11: John owes 11/11 update / allucent_notes_20251118_192630: Jason Johnston on 2025-11-11 17:11: John owes 11/11 update / allucent_notes_20251111_182405: Jason Johnston on 2025-11-11 17:11: John owes 11/11 update / allucent_notes_20251230_164549: Jason Johnston on 2025-11-11 17:11: John owes 11/11 update / John Capriotti on 2025-12-09 12:41: Pending confirmation on timing from Belaire on this. Followed up on 12/9. / Jason Johnston on 2025-12-16 15:17: not yet / John Capriotti on 2025-12-30 10:38: SCRs will be delivered when we are ready to set. The Mfg/Vendor has these located in their yard in Texas, but we are not going to ship all of these to site to store and then mobilize a separate crane and additional trucks to bring to the building. That would be a decent cost and significantly more coordination, with no added benefit. / Ultimately, I, John Capriotti (OFCI), need an update from the Subs/Supers as to when we intend to set them so I can schedule the delivery to support those set dates. / **I will press for updated dates on these, moving out as I work on getting estimated set dates. / allucent_notes: 2025-11-11 17:11 - User: Jason Johnston - Date Added: 2025-11-11 17:11 - Note: John owes 11/11 update / 2025-12-09 12:41 - User: John Capriotti - Date Added: 2025-12-09 12:41 - Note: Pending confirmation on timing from Belaire on this. Followed up on 12
- QTS-40611: allucent_notes_20251202_153722: John Capriotti on 2025-11-11 13:11: Set to receive 11/14. / allucent_notes_20251118_192630: John Capriotti on 2025-11-11 13:11: Set to receive 11/14. / allucent_notes_20251111_182405: John Capriotti on 2025-11-11 13:11: Set to receive 11/14. / allucent_notes: 2025-11-11 13:11 - User: John Capriotti - Date Added: 2025-11-11 13:11 - Note: Set to receive 11/14.
- QTS-35381: allucent_notes: John Capriotti on 2025-08-12 15:08: Chiller received by Belaire/taken out of QAE Yard on 8/11 to set. / allucent_notes: 2025-08-12 15:08 - User: John Capriotti - Date Added: 2025-08-12 15:08 - Note: Chiller received by Belaire/taken out of QAE Yard on 8/11 to set.
- QTS-33731: allucent_notes_20251118_192630: Jason Johnston on 2025-10-27 22:10: No update from John Capriotti / John Capriotti on 2025-10-28 15:10: Per Vendor/Fibrebond they confirmed delivery for 11/6. Unable to bring in early do to logistics, permitting, etc. Will set when it comes in. / Jason Johnston on 2025-11-11 17:11: John owes 11/11 update / allucent_notes_20251111_182405: Jason Johnston on 2025-10-27 22:10: No update from John Capriotti / John Capriotti on 2025-10-28 15:10: Per Vendor/Fibrebond they confirmed delivery for 11/6. Unable to bring in early do to logistics, permitting, etc. Will set when it comes in. / Jason Johnston on 2025-11-11 17:11: John owes 11/11 update / allucent_notes_20251104_160200: Jason Johnston on 2025-10-27 22:10: No update from John Capriotti / John Capriotti on 2025-10-28 15:10: Per Vendor/Fibrebond they confirmed delivery for 11/6. Unable to bring in early do to logistics, permitting, etc. Will set when it comes in. / allucent_notes_20251028_163138: Jason Johnston on 2025-10-27 22:10: No update from John Capriotti / John Capriotti on 2025-10-28 15:10: Per Vendor/Fibrebond they confirmed delivery for 11/6. Unable to bring in early do to logistics, permitting, etc. Will set when it comes in. / allucent_notes_20251027_224008: Jason Johnston on 2025-10-27 22:10: No update from John Capriotti / allucent_notes: 2025-10-27 22:10 - User: Jason Johnston - Date Added: 2025-10-27 22:10 - Note: No update from John Capriotti / 2025-10-28 15:10 - User: John Capriotti - Date Added: 2025-10-28 15:10 - Note: Per Vendor/Fibrebond they confirmed delivery for 11/6. Unable to
- QTS-35831: allucent_notes_20251028_163138: John Capriotti on 2025-10-28 15:10: Received and set on 10/21. / allucent_notes: 2025-10-28 15:10 - User: John Capriotti - Date Added: 2025-10-28 15:10 - Note: Received and set on 10/21.
- QTS-40801: allucent_notes_20251216_165335: John Capriotti on 2025-12-09 12:41: Pending confirmation on timing from Belaire on this. Followed up on 12/9. / Jason Johnston on 2025-12-16 15:17: not yet / allucent_notes_20251209_203830: John Capriotti on 2025-12-09 12:41: Pending confirmation on timing from Belaire on this. Followed up on 12/9. / allucent_notes_20251230_164549: John Capriotti on 2025-12-09 12:41: Pending confirmation on timing from Belaire on this. Followed up on 12/9. / Jason Johnston on 2025-12-16 15:17: not yet / John Capriotti on 2025-12-30 10:38: SCRs will be delivered when we are ready to set. The Mfg/Vendor has these located in their yard in Texas, but we are not going to ship all of these to site to store and then mobilize a separate crane and additional trucks to bring to the building. That would be a decent cost and significantly more coordination, with no added benefit. / Ultimately, I, John Capriotti (OFCI), need an update from the Subs/Supers as to when we intend to set them so I can schedule the delivery to support those set dates. / **I will press for updated dates on these, moving out as I work on getting estimated set dates. / allucent_notes: 2025-12-09 12:41 - User: John Capriotti - Date Added: 2025-12-09 12:41 - Note: Pending confirmation on timing from Belaire on this. Followed up on 12/9. / 2025-12-16 15:17 - User: Jason Johnston - Date Added: 2025-12-16 15:17 - Note: not yet / 2025-12-3

| ID | WBS | Activity | Duration | Start | Finish | Predecessors | Complete | Planned start | Planned finish | Allucent CSI Group | Project Section | Layton Discipline | Baseline | Project Section-1 | Precon Phase | Contract |
| --- | --- | --- | --- | --- | --- | --- | --- | --- | --- | --- | --- | --- | --- | --- | --- | --- |
|  | 9 | **R11 Lineup** |  | 2025-07-14 | 2026-02-02 |  |  |  |  |  |  |  |  |  |  |  |
| QTS-35391 |  | DH 1100 / R11 Lineup // Chiller #1RT40-R11 | 20d | 2025-07-14 A | 2025-08-12 A | QTS-1371 | 100% | 2025-07-14 | 2025-08-08 | 01ADMIN | Preconstruction | Precon | GMP | Preconstruction | OFCI Procurement | BAB |
| QTS-31691 |  | DH 1100 / R11 Lineup // 600A MOD #R11-03 (CRAH Support) | 7d | 2025-07-21 A | 2025-07-29 A | QTS-1371 | 100% |  |  |  | Preconstruction | Precon | GMP | Preconstruction | OFCI Procurement | BAB |
| QTS-31761 |  | DH 1100 / R11 Lineup // 225A MOD #R11-02 | 2d | 2025-09-15 A | 2025-09-16 A | QTS-1371 | 100% |  |  |  | Preconstruction | Precon | GMP | Preconstruction | OFCI Procurement | BAB |
| QTS-33741 |  | DH 1100 / R11 Lineup // UPS Container #R11 | 20d | 2025-09-19 A | 2025-10-27 A | QTS-1371 | 100% | 2025-09-19 | 2025-10-16 | 01ADMIN | Preconstruction | Precon | GMP | Preconstruction | OFCI Procurement | BAB |
| QTS-35841 |  | DH 1100 / R11 Lineup // 2500KVA Padmount XFMR #R11 | 20d | 2025-10-06 A | 2025-10-21 A | QTS-1371 | 100% | 2025-10-06 | 2025-10-31 | 01ADMIN | Preconstruction | Precon | GMP | Preconstruction | OFCI Procurement | BAB |
| QTS-40981 |  | DH 1100 / R11 Lineup // Assembly - Tank #GEN-R11 | 20d | 2025-10-17 A | 2025-11-10 A | QTS-1371 | 100% | 2025-10-17 | 2025-11-13 | 01ADMIN | Preconstruction | Precon |  | Preconstruction | OFCI Procurement | BAB |
| QTS-40991 |  | DH 1100 / R11 Lineup // Assembly - Engine #GEN-R11 | 20d | 2025-10-17 A | 2025-11-10 A | QTS-1371 | 100% | 2025-10-17 | 2025-11-13 | 01ADMIN | Preconstruction | Precon |  | Preconstruction | OFCI Procurement | BAB |
| QTS-41001 |  | DH 1100 / R11 Lineup // Assembly - SCR #GEN-R11 | 20d | 2025-10-17 A | 2026-02-02 A | QTS-1371 | 100% | 2025-10-17 | 2025-11-13 | 01ADMIN | Preconstruction | Precon |  | Preconstruction | OFCI Procurement | BAB |
| QTS-41011 |  | DH 1100 / R11 Lineup // Assembly - Housing #GEN-R11 | 20d | 2025-10-17 A | 2025-11-10 A | QTS-1371 | 100% | 2025-10-17 | 2025-11-13 | 01ADMIN | Preconstruction | Precon |  | Preconstruction | OFCI Procurement | BAB |
|  | 3 | **Data Hall 2200 (Need By Dates)** |  | 2025-08-07 | 2026-03-30 |  |  |  |  |  |  |  |  |  |  |  |
| QTS-34891 |  | DH 2200 / CRAH #29 (Electrical Gallery) | 20d | 2025-10-08 A | 2026-02-10 A | QTS-1371 | 100% | 2025-10-08 | 2025-11-04 | 01ADMIN | Preconstruction | Precon | GMP | Preconstruction | OFCI Procurement | BAB |
| QTS-34901 |  | DH 2200 / CRAH #30 (Electrical Gallery) | 20d | 2025-10-08 A | 2026-02-10 A | QTS-1371 | 100% | 2025-10-08 | 2025-11-04 | 01ADMIN | Preconstruction | Precon | GMP | Preconstruction | OFCI Procurement | BAB |
| QTS-34911 |  | DH 2200 / CRAH #31 (Electrical Gallery) | 20d | 2025-10-08 A | 2026-02-10 A | QTS-1371 | 100% | 2025-10-08 | 2025-11-04 | 01ADMIN | Preconstruction | Precon | GMP | Preconstruction | OFCI Procurement | BAB |
| QTS-34921 |  | DH 2200 / CRAH #32 (Electrical Gallery) | 20d | 2025-10-08 A | 2026-02-10 A | QTS-1371 | 100% | 2025-10-08 | 2025-11-04 | 01ADMIN | Preconstruction | Precon | GMP | Preconstruction | OFCI Procurement | BAB |
| QTS-34611 |  | DH 2200 / CRAH #01 | 20d | 2025-10-24 A | 2026-01-27 A | QTS-1371 | 100% | 2025-10-24 | 2025-11-20 | 01ADMIN | Preconstruction | Precon | GMP | Preconstruction | OFCI Procurement | BAB |
| QTS-34621 |  | DH 2200 / CRAH #02 | 20d | 2025-10-24 A | 2026-01-27 A | QTS-1371 | 100% | 2025-10-24 | 2025-11-20 | 01ADMIN | Preconstruction | Precon | GMP | Preconstruction | OFCI Procurement | BAB |
| QTS-34631 |  | DH 2200 / CRAH #03 | 20d | 2025-10-24 A | 2026-01-27 A | QTS-1371 | 100% | 2025-10-24 | 2025-11-20 | 01ADMIN | Preconstruction | Precon | GMP | Preconstruction | OFCI Procurement | BAB |
| QTS-34641 |  | DH 2200 / CRAH #04 | 20d | 2025-10-24 A | 2026-01-27 A | QTS-1371 | 100% | 2025-10-24 | 2025-11-20 | 01ADMIN | Preconstruction | Precon | GMP | Preconstruction | OFCI Procurement | BAB |
| QTS-34651 |  | DH 2200 / CRAH #05 | 20d | 2025-10-24 A | 2026-01-27 A | QTS-1371 | 100% | 2025-10-24 | 2025-11-20 | 01ADMIN | Preconstruction | Precon | GMP | Preconstruction | OFCI Procurement | BAB |
| QTS-34661 |  | DH 2200 / CRAH #06 | 20d | 2025-10-24 A | 2026-01-27 A | QTS-1371 | 100% | 2025-10-24 | 2025-11-20 | 01ADMIN | Preconstruction | Precon | GMP | Preconstruction | OFCI Procurement | BAB |
| QTS-34671 |  | DH 2200 / CRAH #07 | 20d | 2025-10-24 A | 2026-01-27 A | QTS-1371 | 100% | 2025-10-24 | 2025-11-20 | 01ADMIN | Preconstruction | Precon | GMP | Preconstruction | OFCI Procurement | BAB |
| QTS-34681 |  | DH 2200 / CRAH #08 | 20d | 2025-10-24 A | 2026-01-27 A | QTS-1371 | 100% | 2025-10-24 | 2025-11-20 | 01ADMIN | Preconstruction | Precon | GMP | Preconstruction | OFCI Procurement | BAB |
| QTS-34691 |  | DH 2200 / CRAH #09 | 20d | 2025-10-24 A | 2026-01-27 A | QTS-1371 | 100% | 2025-10-24 | 2025-11-20 | 01ADMIN | Preconstruction | Precon | GMP | Preconstruction | OFCI Procurement | BAB |
| QTS-34701 |  | DH 2200 / CRAH #10 | 20d | 2025-10-24 A | 2026-01-27 A | QTS-1371 | 100% | 2025-10-24 | 2025-11-20 | 01ADMIN | Preconstruction | Precon | GMP | Preconstruction | OFCI Procurement | BAB |
| QTS-34711 |  | DH 2200 / CRAH #11 | 20d | 2025-10-24 A | 2026-01-27 A | QTS-1371 | 100% | 2025-10-24 | 2025-11-20 | 01ADMIN | Preconstruction | Precon | GMP | Preconstruction | OFCI Procurement | BAB |
| QTS-34721 |  | DH 2200 / CRAH #12 | 20d | 2025-10-24 A | 2026-01-27 A | QTS-1371 | 100% | 2025-10-24 | 2025-11-20 | 01ADMIN | Preconstruction | Precon | GMP | Preconstruction | OFCI Procurement | BAB |
| QTS-34731 |  | DH 2200 / CRAH #13 | 20d | 2025-10-24 A | 2026-01-27 A | QTS-1371 | 100% | 2025-10-24 | 2025-11-20 | 01ADMIN | Preconstruction | Precon | GMP | Preconstruction | OFCI Procurement | BAB |
| QTS-34741 |  | DH 2200 / CRAH #14 | 20d | 2025-10-24 A | 2026-01-27 A | QTS-1371 | 100% | 2025-10-24 | 2025-11-20 | 01ADMIN | Preconstruction | Precon | GMP | Preconstruction | OFCI Procurement | BAB |
| QTS-23441 |  | DH 2200 / DOAS #01 | 20d | 2025-11-04 A | 2026-01-09 A | QTS-1371 | 100% | 2025-11-03 | 2025-12-02 | 01ADMIN | Preconstruction | Precon | GMP | Preconstruction | OFCI Procurement | BAB |
| QTS-23451 |  | DH 2200 / DOAS #02 | 20d | 2025-11-04 A | 2026-01-09 A | QTS-1371 | 100% | 2025-11-03 | 2025-12-02 | 01ADMIN | Preconstruction | Precon | GMP | Preconstruction | OFCI Procurement | BAB |
| QTS-34751 |  | DH 2200 / CRAH #15 | 20d | 2025-11-04 A | 2026-02-12 A | QTS-1371 | 100% | 2025-11-04 | 2025-12-03 | 01ADMIN | Preconstruction | Precon | GMP | Preconstruction | OFCI Procurement | BAB |
| QTS-34761 |  | DH 2200 / CRAH #16 | 20d | 2025-11-04 A | 2026-02-12 A | QTS-1371 | 100% | 2025-11-04 | 2025-12-03 | 01ADMIN | Preconstruction | Precon | GMP | Preconstruction | OFCI Procurement | BAB |
| QTS-34771 |  | DH 2200 / CRAH #17 | 20d | 2025-11-04 A | 2026-02-12 A | QTS-1371 | 100% | 2025-11-04 | 2025-12-03 | 01ADMIN | Preconstruction | Precon | GMP | Preconstruction | OFCI Procurement | BAB |
| QTS-34781 |  | DH 2200 / CRAH #18 | 20d | 2025-11-04 A | 2026-02-12 A | QTS-1371 | 100% | 2025-11-04 | 2025-12-03 | 01ADMIN | Preconstruction | Precon | GMP | Preconstruction | OFCI Procurement | BAB |
| QTS-34791 |  | DH 2200 / CRAH #19 | 20d | 2025-11-04 A | 2026-02-12 A | QTS-1371 | 100% | 2025-11-04 | 2025-12-03 | 01ADMIN | Preconstruction | Precon | GMP | Preconstruction | OFCI Procurement | BAB |
| QTS-34801 |  | DH 2200 / CRAH #20 | 20d | 2025-11-04 A | 2026-02-12 A | QTS-1371 | 100% | 2025-11-04 | 2025-12-03 | 01ADMIN | Preconstruction | Precon | GMP | Preconstruction | OFCI Procurement | BAB |
| QTS-34811 |  | DH 2200 / CRAH #21 | 20d | 2025-11-04 A | 2026-02-12 A | QTS-1371 | 100% | 2025-11-04 | 2025-12-03 | 01ADMIN | Preconstruction | Precon | GMP | Preconstruction | OFCI Procurement | BAB |
| QTS-34821 |  | DH 2200 / CRAH #22 | 20d | 2025-11-04 A | 2026-02-12 A | QTS-1371 | 100% | 2025-11-04 | 2025-12-03 | 01ADMIN | Preconstruction | Precon | GMP | Preconstruction | OFCI Procurement | BAB |
| QTS-34831 |  | DH 2200 / CRAH #23 | 20d | 2025-11-04 A | 2026-02-12 A | QTS-1371 | 100% | 2025-11-04 | 2025-12-03 | 01ADMIN | Preconstruction | Precon | GMP | Preconstruction | OFCI Procurement | BAB |
| QTS-34841 |  | DH 2200 / CRAH #24 | 20d | 2025-11-04 A | 2026-02-12 A | QTS-1371 | 100% | 2025-11-04 | 2025-12-03 | 01ADMIN | Preconstruction | Precon | GMP | Preconstruction | OFCI Procurement | BAB |
| QTS-34851 |  | DH 2200 / CRAH #25 | 20d | 2025-11-04 A | 2026-02-12 A | QTS-1371 | 100% | 2025-11-04 | 2025-12-03 | 01ADMIN | Preconstruction | Precon | GMP | Preconstruction | OFCI Procurement | BAB |
| QTS-34861 |  | DH 2200 / CRAH #26 | 20d | 2025-11-04 A | 2026-02-12 A | QTS-1371 | 100% | 2025-11-04 | 2025-12-03 | 01ADMIN | Preconstruction | Precon | GMP | Preconstruction | OFCI Procurement | BAB |
| QTS-34871 |  | DH 2200 / CRAH #27 | 20d | 2025-11-04 A | 2026-02-12 A | QTS-1371 | 100% | 2025-11-04 | 2025-12-03 | 01ADMIN | Preconstruction | Precon | GMP | Preconstruction | OFCI Procurement | BAB |
| QTS-34881 |  | DH 2200 / CRAH #28 | 20d | 2025-11-04 A | 2026-02-12 A | QTS-1371 | 100% | 2025-11-04 | 2025-12-03 | 01ADMIN | Preconstruction | Precon | GMP | Preconstruction | OFCI Procurement | BAB |

Notes:
- QTS-35391: allucent_notes: John Capriotti on 2025-08-12 15:08: Chiller received by Belaire/taken out of QAE Yard on 8/12 to set. / allucent_notes: 2025-08-12 15:08 - User: John Capriotti - Date Added: 2025-08-12 15:08 - Note: Chiller received by Belaire/taken out of QAE Yard on 8/12 to set.
- QTS-33741: allucent_notes_20251027_224008: John Capriotti on 2025-10-27 18:10: Set today 10/27 / allucent_notes: 2025-10-27 18:10 - User: John Capriotti - Date Added: 2025-10-27 18:10 - Note: Set today 10/27
- QTS-35841: allucent_notes_20251028_163138: John Capriotti on 2025-10-28 15:10: Received and set on 10/21. / allucent_notes: 2025-10-28 15:10 - User: John Capriotti - Date Added: 2025-10-28 15:10 - Note: Received and set on 10/21.
- QTS-40981: allucent_notes_20251118_192630: John Capriotti on 2025-11-11 12:11: Received on 11/10 / allucent_notes_20251111_182405: John Capriotti on 2025-11-11 12:11: Received on 11/10 / allucent_notes: 2025-11-11 12:11 - User: John Capriotti - Date Added: 2025-11-11 12:11 - Note: Received on 11/10
- QTS-40991: allucent_notes_20251118_192630: John Capriotti on 2025-11-11 12:11: Received on 11/10 / allucent_notes_20251111_182405: John Capriotti on 2025-11-11 12:11: Received on 11/10 / allucent_notes: 2025-11-11 12:11 - User: John Capriotti - Date Added: 2025-11-11 12:11 - Note: Received on 11/10
- QTS-41001: allucent_notes_20251216_165335: John Capriotti on 2025-12-09 12:41: Pending confirmation on timing from Belaire on this. Followed up on 12/9. / Jason Johnston on 2025-12-16 15:17: not yet / allucent_notes_20251209_203830: John Capriotti on 2025-12-09 12:41: Pending confirmation on timing from Belaire on this. Followed up on 12/9. / allucent_notes_20251230_164549: John Capriotti on 2025-12-09 12:41: Pending confirmation on timing from Belaire on this. Followed up on 12/9. / Jason Johnston on 2025-12-16 15:17: not yet / John Capriotti on 2025-12-30 10:38: SCRs will be delivered when we are ready to set. The Mfg/Vendor has these located in their yard in Texas, but we are not going to ship all of these to site to store and then mobilize a separate crane and additional trucks to bring to the building. That would be a decent cost and significantly more coordination, with no added benefit. / Ultimately, I, John Capriotti (OFCI), need an update from the Subs/Supers as to when we intend to set them so I can schedule the delivery to support those set dates. / **I will press for updated dates on these, moving out as I work on getting estimated set dates. / allucent_notes: 2025-12-09 12:41 - User: John Capriotti - Date Added: 2025-12-09 12:41 - Note: Pending confirmation on timing from Belaire on this. Followed up on 12/9. / 2025-12-16 15:17 - User: Jason Johnston - Date Added: 2025-12-16 15:17 - Note: not yet / 2025-12-3
- QTS-41011: allucent_notes_20251118_192630: John Capriotti on 2025-11-11 12:11: Received on 11/10 / allucent_notes_20251111_182405: John Capriotti on 2025-11-11 12:11: Received on 11/10 / allucent_notes: 2025-11-11 12:11 - User: John Capriotti - Date Added: 2025-11-11 12:11 - Note: Received on 11/10
- QTS-34891: allucent_notes_20251216_165335: Jason Johnston on 2025-11-04T22:46:33.898Z: remove actual / allucent_notes_20251209_203830: Jason Johnston on 2025-11-04T22:46:33.898Z: remove actual / allucent_notes_20251202_153722: Jason Johnston on 2025-11-04T22:46:33.898Z: remove actual / allucent_notes_20251104_160200: Jason Johnston on 2025-11-04T22:46:33.898Z: remove actual / allucent_notes_20251230_164549: Jason Johnston on 2025-11-04T22:46:33.898Z: remove actual / John Capriotti on 2025-12-30 10:46: CRAH Units are available in QTS warehouse, but will be delivered when we are going to set them. **I will press for updated dates on these, moving out as I work on getting estimated set dates. / Ultimately, I, John Capriotti (OFCI), need an update from the Subs/Supers as to when we intend to set them so I can schedule the delivery to support those set dates. / allucent_notes: 2025-11-04T22:46:33.898Z - User: Jason Johnston - Date Added: 2025-11-04T22:46:33.898Z - Note: remove actual / 2025-12-30 10:46 - User: John Capriotti - Date Added: 2025-12-30 10:46 - Note: CRAH Units are available in QTS warehouse, but will be delivered
- QTS-34901: allucent_notes_20251216_165335: Jason Johnston on 2025-11-04T22:46:38.773Z: remove actual / allucent_notes_20251209_203830: Jason Johnston on 2025-11-04T22:46:38.773Z: remove actual / allucent_notes_20251202_153722: Jason Johnston on 2025-11-04T22:46:38.773Z: remove actual / allucent_notes_20251104_160200: Jason Johnston on 2025-11-04T22:46:38.773Z: remove actual / allucent_notes_20251230_164549: Jason Johnston on 2025-11-04T22:46:38.773Z: remove actual / John Capriotti on 2025-12-30 10:46: CRAH Units are available in QTS warehouse, but will be delivered when we are going to set them. **I will press for updated dates on these, moving out as I work on getting estimated set dates. / Ultimately, I, John Capriotti (OFCI), need an update from the Subs/Supers as to when we intend to set them so I can schedule the delivery to support those set dates. / allucent_notes: 2025-11-04T22:46:38.773Z - User: Jason Johnston - Date Added: 2025-11-04T22:46:38.773Z - Note: remove actual / 2025-12-30 10:46 - User: John Capriotti - Date Added: 2025-12-30 10:46 - Note: CRAH Units are available in QTS warehouse, but will be delivered
- QTS-34911: allucent_notes_20251216_165335: Jason Johnston on 2025-11-04T22:46:43.813Z: remove actual / allucent_notes_20251209_203830: Jason Johnston on 2025-11-04T22:46:43.813Z: remove actual / allucent_notes_20251202_153722: Jason Johnston on 2025-11-04T22:46:43.813Z: remove actual / allucent_notes_20251104_160200: Jason Johnston on 2025-11-04T22:46:43.813Z: remove actual / allucent_notes_20251230_164549: Jason Johnston on 2025-11-04T22:46:43.813Z: remove actual / John Capriotti on 2025-12-30 10:46: CRAH Units are available in QTS warehouse, but will be delivered when we are going to set them. **I will press for updated dates on these, moving out as I work on getting estimated set dates. / Ultimately, I, John Capriotti (OFCI), need an update from the Subs/Supers as to when we intend to set them so I can schedule the delivery to support those set dates. / allucent_notes: 2025-11-04T22:46:43.813Z - User: Jason Johnston - Date Added: 2025-11-04T22:46:43.813Z - Note: remove actual / 2025-12-30 10:46 - User: John Capriotti - Date Added: 2025-12-30 10:46 - Note: CRAH Units are available in QTS warehouse, but will be delivered
- QTS-34921: allucent_notes_20251216_165335: Jason Johnston on 2025-11-04 15:11: Checking if in warehouse / allucent_notes_20251209_203830: Jason Johnston on 2025-11-04 15:11: Checking if in warehouse / allucent_notes_20251202_153722: Jason Johnston on 2025-11-04 15:11: Checking if in warehouse / allucent_notes_20251118_192630: Jason Johnston on 2025-11-04 15:11: Checking if in warehouse / allucent_notes_20251111_182405: Jason Johnston on 2025-11-04 15:11: Checking if in warehouse / allucent_notes_20251104_160200: Jason Johnston on 2025-11-04 15:11: Checking if in warehouse / allucent_notes_20251230_164549: Jason Johnston on 2025-11-04 15:11: Checking if in warehouse / John Capriotti on 2025-12-30 10:46: CRAH Units are available in QTS warehouse, but will be delivered when we are going to set them. **I will press for updated dates on these, moving out as I work on getting estimated set dates. / Ultimately, I, John Capriotti (OFCI), need an update from the Subs/Supers as to when we intend to set them so I can schedule the delivery to support those set dates. / allucent_notes: 2025-11-04 15:11 - User: Jason Johnston - Date Added: 2025-11-04 15:11 - Note: Checking if in warehouse / 2025-12-30 10:46 - User: John Capriotti - Date Added: 2025-12-30 10:46 - Note: CRAH Units are available in QTS warehouse, but will be delivered when
- QTS-34611: allucent_notes_20251230_164549: John Capriotti on 2025-12-30 10:47: CRAH Units are available in QTS warehouse, but will be delivered when we are going to set them. **I will press for updated dates on these, moving out as I work on getting estimated set dates. / Ultimately, I, John Capriotti (OFCI), need an update from the Subs/Supers as to when we intend to set them so I can schedule the delivery to support those set dates. / allucent_notes: 2025-12-30 10:47 - User: John Capriotti - Date Added: 2025-12-30 10:47 - Note: CRAH Units are available in QTS warehouse, but will be delivered when we are going to set them. **I will press for updated dates on these, moving out as I work on getting estim
- QTS-34621: allucent_notes_20251230_164549: John Capriotti on 2025-12-30 10:47: CRAH Units are available in QTS warehouse, but will be delivered when we are going to set them. **I will press for updated dates on these, moving out as I work on getting estimated set dates. / Ultimately, I, John Capriotti (OFCI), need an update from the Subs/Supers as to when we intend to set them so I can schedule the delivery to support those set dates. / allucent_notes: 2025-12-30 10:47 - User: John Capriotti - Date Added: 2025-12-30 10:47 - Note: CRAH Units are available in QTS warehouse, but will be delivered when we are going to set them. **I will press for updated dates on these, moving out as I work on getting estim
- QTS-34631: allucent_notes_20251230_164549: John Capriotti on 2025-12-30 10:47: CRAH Units are available in QTS warehouse, but will be delivered when we are going to set them. **I will press for updated dates on these, moving out as I work on getting estimated set dates. / Ultimately, I, John Capriotti (OFCI), need an update from the Subs/Supers as to when we intend to set them so I can schedule the delivery to support those set dates. / allucent_notes: 2025-12-30 10:47 - User: John Capriotti - Date Added: 2025-12-30 10:47 - Note: CRAH Units are available in QTS warehouse, but will be delivered when we are going to set them. **I will press for updated dates on these, moving out as I work on getting estim
- QTS-34641: allucent_notes_20251230_164549: John Capriotti on 2025-12-30 10:47: CRAH Units are available in QTS warehouse, but will be delivered when we are going to set them. **I will press for updated dates on these, moving out as I work on getting estimated set dates. / Ultimately, I, John Capriotti (OFCI), need an update from the Subs/Supers as to when we intend to set them so I can schedule the delivery to support those set dates. / allucent_notes: 2025-12-30 10:47 - User: John Capriotti - Date Added: 2025-12-30 10:47 - Note: CRAH Units are available in QTS warehouse, but will be delivered when we are going to set them. **I will press for updated dates on these, moving out as I work on getting estim
- QTS-34651: allucent_notes_20251230_164549: John Capriotti on 2025-12-30 10:47: CRAH Units are available in QTS warehouse, but will be delivered when we are going to set them. **I will press for updated dates on these, moving out as I work on getting estimated set dates. / Ultimately, I, John Capriotti (OFCI), need an update from the Subs/Supers as to when we intend to set them so I can schedule the delivery to support those set dates. / allucent_notes: 2025-12-30 10:47 - User: John Capriotti - Date Added: 2025-12-30 10:47 - Note: CRAH Units are available in QTS warehouse, but will be delivered when we are going to set them. **I will press for updated dates on these, moving out as I work on getting estim
- QTS-34661: allucent_notes_20251230_164549: John Capriotti on 2025-12-30 10:47: CRAH Units are available in QTS warehouse, but will be delivered when we are going to set them. **I will press for updated dates on these, moving out as I work on getting estimated set dates. / Ultimately, I, John Capriotti (OFCI), need an update from the Subs/Supers as to when we intend to set them so I can schedule the delivery to support those set dates. / allucent_notes: 2025-12-30 10:47 - User: John Capriotti - Date Added: 2025-12-30 10:47 - Note: CRAH Units are available in QTS warehouse, but will be delivered when we are going to set them. **I will press for updated dates on these, moving out as I work on getting estim
- QTS-34671: allucent_notes_20251230_164549: John Capriotti on 2025-12-30 10:47: CRAH Units are available in QTS warehouse, but will be delivered when we are going to set them. **I will press for updated dates on these, moving out as I work on getting estimated set dates. / Ultimately, I, John Capriotti (OFCI), need an update from the Subs/Supers as to when we intend to set them so I can schedule the delivery to support those set dates. / allucent_notes: 2025-12-30 10:47 - User: John Capriotti - Date Added: 2025-12-30 10:47 - Note: CRAH Units are available in QTS warehouse, but will be delivered when we are going to set them. **I will press for updated dates on these, moving out as I work on getting estim
- QTS-34681: allucent_notes_20251230_164549: John Capriotti on 2025-12-30 10:47: CRAH Units are available in QTS warehouse, but will be delivered when we are going to set them. **I will press for updated dates on these, moving out as I work on getting estimated set dates. / Ultimately, I, John Capriotti (OFCI), need an update from the Subs/Supers as to when we intend to set them so I can schedule the delivery to support those set dates. / allucent_notes: 2025-12-30 10:47 - User: John Capriotti - Date Added: 2025-12-30 10:47 - Note: CRAH Units are available in QTS warehouse, but will be delivered when we are going to set them. **I will press for updated dates on these, moving out as I work on getting estim
- QTS-34691: allucent_notes_20251230_164549: John Capriotti on 2025-12-30 10:47: CRAH Units are available in QTS warehouse, but will be delivered when we are going to set them. **I will press for updated dates on these, moving out as I work on getting estimated set dates. / Ultimately, I, John Capriotti (OFCI), need an update from the Subs/Supers as to when we intend to set them so I can schedule the delivery to support those set dates. / allucent_notes: 2025-12-30 10:47 - User: John Capriotti - Date Added: 2025-12-30 10:47 - Note: CRAH Units are available in QTS warehouse, but will be delivered when we are going to set them. **I will press for updated dates on these, moving out as I work on getting estim
- QTS-34701: allucent_notes_20251230_164549: John Capriotti on 2025-12-30 10:47: CRAH Units are available in QTS warehouse, but will be delivered when we are going to set them. **I will press for updated dates on these, moving out as I work on getting estimated set dates. / Ultimately, I, John Capriotti (OFCI), need an update from the Subs/Supers as to when we intend to set them so I can schedule the delivery to support those set dates. / allucent_notes: 2025-12-30 10:47 - User: John Capriotti - Date Added: 2025-12-30 10:47 - Note: CRAH Units are available in QTS warehouse, but will be delivered when we are going to set them. **I will press for updated dates on these, moving out as I work on getting estim
- QTS-34711: allucent_notes_20251230_164549: John Capriotti on 2025-12-30 10:47: CRAH Units are available in QTS warehouse, but will be delivered when we are going to set them. **I will press for updated dates on these, moving out as I work on getting estimated set dates. / Ultimately, I, John Capriotti (OFCI), need an update from the Subs/Supers as to when we intend to set them so I can schedule the delivery to support those set dates. / allucent_notes: 2025-12-30 10:47 - User: John Capriotti - Date Added: 2025-12-30 10:47 - Note: CRAH Units are available in QTS warehouse, but will be delivered when we are going to set them. **I will press for updated dates on these, moving out as I work on getting estim
- QTS-34721: allucent_notes_20251230_164549: John Capriotti on 2025-12-30 10:47: CRAH Units are available in QTS warehouse, but will be delivered when we are going to set them. **I will press for updated dates on these, moving out as I work on getting estimated set dates. / Ultimately, I, John Capriotti (OFCI), need an update from the Subs/Supers as to when we intend to set them so I can schedule the delivery to support those set dates. / allucent_notes: 2025-12-30 10:47 - User: John Capriotti - Date Added: 2025-12-30 10:47 - Note: CRAH Units are available in QTS warehouse, but will be delivered when we are going to set them. **I will press for updated dates on these, moving out as I work on getting estim
- QTS-34731: allucent_notes_20251230_164549: John Capriotti on 2025-12-30 10:47: CRAH Units are available in QTS warehouse, but will be delivered when we are going to set them. **I will press for updated dates on these, moving out as I work on getting estimated set dates. / Ultimately, I, John Capriotti (OFCI), need an update from the Subs/Supers as to when we intend to set them so I can schedule the delivery to support those set dates. / allucent_notes: 2025-12-30 10:47 - User: John Capriotti - Date Added: 2025-12-30 10:47 - Note: CRAH Units are available in QTS warehouse, but will be delivered when we are going to set them. **I will press for updated dates on these, moving out as I work on getting estim
- QTS-34741: allucent_notes_20251230_164549: John Capriotti on 2025-12-30 10:47: CRAH Units are available in QTS warehouse, but will be delivered when we are going to set them. **I will press for updated dates on these, moving out as I work on getting estimated set dates. / Ultimately, I, John Capriotti (OFCI), need an update from the Subs/Supers as to when we intend to set them so I can schedule the delivery to support those set dates. / allucent_notes: 2025-12-30 10:47 - User: John Capriotti - Date Added: 2025-12-30 10:47 - Note: CRAH Units are available in QTS warehouse, but will be delivered when we are going to set them. **I will press for updated dates on these, moving out as I work on getting estim
- QTS-23441: allucent_notes_20251230_164549: John Capriotti on 2025-12-30T15:31:11.818Z: Actualizing ROJ: DOAS delivered to QAE yard on 10/2 - technically have it just not delivered to the site from QAE yard until I can confirm set date / allucent_notes: 2025-12-30T15:31:11.818Z - User: John Capriotti - Date Added: 2025-12-30T15:31:11.818Z - Note: Actualizing ROJ: DOAS delivered to QAE yard on 10/2 - technically have it just not delivered to the site from QAE yard until I can confirm set date
- QTS-23451: allucent_notes_20251230_164549: John Capriotti on 2025-12-30T15:31:18.257Z: Actualizing ROJ: DOAS delivered to QAE yard on 10/2 - technically have it just not delivered to the site from QAE yard until I can confirm set date / allucent_notes: 2025-12-30T15:31:18.257Z - User: John Capriotti - Date Added: 2025-12-30T15:31:18.257Z - Note: Actualizing ROJ: DOAS delivered to QAE yard on 10/2 - technically have it just not delivered to the site from QAE yard until I can confirm set date
- QTS-34751: allucent_notes_20251230_164549: John Capriotti on 2025-12-30 10:48: CRAH Units are available in QTS warehouse, but will be delivered when we are going to set them. **I will press for updated dates on these, moving out as I work on getting estimated set dates. / Ultimately, I, John Capriotti (OFCI), need an update from the Subs/Supers as to when we intend to set them so I can schedule the delivery to support those set dates. / allucent_notes: 2025-12-30 10:48 - User: John Capriotti - Date Added: 2025-12-30 10:48 - Note: CRAH Units are available in QTS warehouse, but will be delivered when we are going to set them. **I will press for updated dates on these, moving out as I work on getting estim
- QTS-34761: allucent_notes_20251230_164549: John Capriotti on 2025-12-30 10:48: CRAH Units are available in QTS warehouse, but will be delivered when we are going to set them. **I will press for updated dates on these, moving out as I work on getting estimated set dates. / Ultimately, I, John Capriotti (OFCI), need an update from the Subs/Supers as to when we intend to set them so I can schedule the delivery to support those set dates. / allucent_notes: 2025-12-30 10:48 - User: John Capriotti - Date Added: 2025-12-30 10:48 - Note: CRAH Units are available in QTS warehouse, but will be delivered when we are going to set them. **I will press for updated dates on these, moving out as I work on getting estim
- QTS-34771: allucent_notes_20251230_164549: John Capriotti on 2025-12-30 10:48: CRAH Units are available in QTS warehouse, but will be delivered when we are going to set them. **I will press for updated dates on these, moving out as I work on getting estimated set dates. / Ultimately, I, John Capriotti (OFCI), need an update from the Subs/Supers as to when we intend to set them so I can schedule the delivery to support those set dates. / allucent_notes: 2025-12-30 10:48 - User: John Capriotti - Date Added: 2025-12-30 10:48 - Note: CRAH Units are available in QTS warehouse, but will be delivered when we are going to set them. **I will press for updated dates on these, moving out as I work on getting estim
- QTS-34781: allucent_notes_20251230_164549: John Capriotti on 2025-12-30 10:48: CRAH Units are available in QTS warehouse, but will be delivered when we are going to set them. **I will press for updated dates on these, moving out as I work on getting estimated set dates. / Ultimately, I, John Capriotti (OFCI), need an update from the Subs/Supers as to when we intend to set them so I can schedule the delivery to support those set dates. / allucent_notes: 2025-12-30 10:48 - User: John Capriotti - Date Added: 2025-12-30 10:48 - Note: CRAH Units are available in QTS warehouse, but will be delivered when we are going to set them. **I will press for updated dates on these, moving out as I work on getting estim
- QTS-34791: allucent_notes_20251230_164549: John Capriotti on 2025-12-30 10:48: CRAH Units are available in QTS warehouse, but will be delivered when we are going to set them. **I will press for updated dates on these, moving out as I work on getting estimated set dates. / Ultimately, I, John Capriotti (OFCI), need an update from the Subs/Supers as to when we intend to set them so I can schedule the delivery to support those set dates. / allucent_notes: 2025-12-30 10:48 - User: John Capriotti - Date Added: 2025-12-30 10:48 - Note: CRAH Units are available in QTS warehouse, but will be delivered when we are going to set them. **I will press for updated dates on these, moving out as I work on getting estim
- QTS-34801: allucent_notes_20251230_164549: John Capriotti on 2025-12-30 10:48: CRAH Units are available in QTS warehouse, but will be delivered when we are going to set them. **I will press for updated dates on these, moving out as I work on getting estimated set dates. / Ultimately, I, John Capriotti (OFCI), need an update from the Subs/Supers as to when we intend to set them so I can schedule the delivery to support those set dates. / allucent_notes: 2025-12-30 10:48 - User: John Capriotti - Date Added: 2025-12-30 10:48 - Note: CRAH Units are available in QTS warehouse, but will be delivered when we are going to set them. **I will press for updated dates on these, moving out as I work on getting estim
- QTS-34811: allucent_notes_20251230_164549: John Capriotti on 2025-12-30 10:48: CRAH Units are available in QTS warehouse, but will be delivered when we are going to set them. **I will press for updated dates on these, moving out as I work on getting estimated set dates. / Ultimately, I, John Capriotti (OFCI), need an update from the Subs/Supers as to when we intend to set them so I can schedule the delivery to support those set dates. / allucent_notes: 2025-12-30 10:48 - User: John Capriotti - Date Added: 2025-12-30 10:48 - Note: CRAH Units are available in QTS warehouse, but will be delivered when we are going to set them. **I will press for updated dates on these, moving out as I work on getting estim
- QTS-34821: allucent_notes_20251230_164549: John Capriotti on 2025-12-30 10:48: CRAH Units are available in QTS warehouse, but will be delivered when we are going to set them. **I will press for updated dates on these, moving out as I work on getting estimated set dates. / Ultimately, I, John Capriotti (OFCI), need an update from the Subs/Supers as to when we intend to set them so I can schedule the delivery to support those set dates. / allucent_notes: 2025-12-30 10:48 - User: John Capriotti - Date Added: 2025-12-30 10:48 - Note: CRAH Units are available in QTS warehouse, but will be delivered when we are going to set them. **I will press for updated dates on these, moving out as I work on getting estim
- QTS-34831: allucent_notes_20251230_164549: John Capriotti on 2025-12-30 10:48: CRAH Units are available in QTS warehouse, but will be delivered when we are going to set them. **I will press for updated dates on these, moving out as I work on getting estimated set dates. / Ultimately, I, John Capriotti (OFCI), need an update from the Subs/Supers as to when we intend to set them so I can schedule the delivery to support those set dates. / allucent_notes: 2025-12-30 10:48 - User: John Capriotti - Date Added: 2025-12-30 10:48 - Note: CRAH Units are available in QTS warehouse, but will be delivered when we are going to set them. **I will press for updated dates on these, moving out as I work on getting estim
- QTS-34841: allucent_notes_20251230_164549: John Capriotti on 2025-12-30 10:48: CRAH Units are available in QTS warehouse, but will be delivered when we are going to set them. **I will press for updated dates on these, moving out as I work on getting estimated set dates. / Ultimately, I, John Capriotti (OFCI), need an update from the Subs/Supers as to when we intend to set them so I can schedule the delivery to support those set dates. / allucent_notes: 2025-12-30 10:48 - User: John Capriotti - Date Added: 2025-12-30 10:48 - Note: CRAH Units are available in QTS warehouse, but will be delivered when we are going to set them. **I will press for updated dates on these, moving out as I work on getting estim
- QTS-34851: allucent_notes_20251230_164549: John Capriotti on 2025-12-30 10:48: CRAH Units are available in QTS warehouse, but will be delivered when we are going to set them. **I will press for updated dates on these, moving out as I work on getting estimated set dates. / Ultimately, I, John Capriotti (OFCI), need an update from the Subs/Supers as to when we intend to set them so I can schedule the delivery to support those set dates. / allucent_notes: 2025-12-30 10:48 - User: John Capriotti - Date Added: 2025-12-30 10:48 - Note: CRAH Units are available in QTS warehouse, but will be delivered when we are going to set them. **I will press for updated dates on these, moving out as I work on getting estim
- QTS-34861: allucent_notes_20251230_164549: John Capriotti on 2025-12-30 10:48: CRAH Units are available in QTS warehouse, but will be delivered when we are going to set them. **I will press for updated dates on these, moving out as I work on getting estimated set dates. / Ultimately, I, John Capriotti (OFCI), need an update from the Subs/Supers as to when we intend to set them so I can schedule the delivery to support those set dates. / allucent_notes: 2025-12-30 10:48 - User: John Capriotti - Date Added: 2025-12-30 10:48 - Note: CRAH Units are available in QTS warehouse, but will be delivered when we are going to set them. **I will press for updated dates on these, moving out as I work on getting estim
- QTS-34871: allucent_notes_20251230_164549: John Capriotti on 2025-12-30 10:48: CRAH Units are available in QTS warehouse, but will be delivered when we are going to set them. **I will press for updated dates on these, moving out as I work on getting estimated set dates. / Ultimately, I, John Capriotti (OFCI), need an update from the Subs/Supers as to when we intend to set them so I can schedule the delivery to support those set dates. / allucent_notes: 2025-12-30 10:48 - User: John Capriotti - Date Added: 2025-12-30 10:48 - Note: CRAH Units are available in QTS warehouse, but will be delivered when we are going to set them. **I will press for updated dates on these, moving out as I work on getting estim
- QTS-34881: allucent_notes_20251230_164549: John Capriotti on 2025-12-30 10:48: CRAH Units are available in QTS warehouse, but will be delivered when we are going to set them. **I will press for updated dates on these, moving out as I work on getting estimated set dates. / Ultimately, I, John Capriotti (OFCI), need an update from the Subs/Supers as to when we intend to set them so I can schedule the delivery to support those set dates. / allucent_notes: 2025-12-30 10:48 - User: John Capriotti - Date Added: 2025-12-30 10:48 - Note: CRAH Units are available in QTS warehouse, but will be delivered when we are going to set them. **I will press for updated dates on these, moving out as I work on getting estim

| ID | WBS | Activity | Duration | Start | Finish | Predecessors | Complete | Planned start | Planned finish | Allucent CSI Group | Project Section | Layton Discipline | Baseline | Project Section-1 | Precon Phase | Contract |
| --- | --- | --- | --- | --- | --- | --- | --- | --- | --- | --- | --- | --- | --- | --- | --- | --- |
|  | 1 | **A22 Lineup** |  | 2025-08-07 | 2026-03-30 |  |  |  |  |  |  |  |  |  |  |  |
| QTS-35401 |  | DH 2200 / A22 Lineup // Chiller #1RT40-A22 | 20d | 2025-08-07 A | 2025-08-08 A | QTS-1371 | 100% | 2025-08-07 | 2025-09-04 | 01ADMIN | Preconstruction | Precon | GMP | Preconstruction | OFCI Procurement | BAB |
| QTS-33231 |  | DH 2200 / A22 Lineup // Skid #A22 | 20d | 2025-10-27 A | 2025-12-11 A | QTS-1371 | 100% | 2025-10-27 | 2025-11-21 | 01ADMIN | Preconstruction | Precon | GMP | Preconstruction | OFCI Procurement | BAB |
| QTS-31321 |  | DH 2200 / A22 Lineup // 225A MOD #A22-02 (Liquid to Chip Support) | 20d | 2025-11-04 A | 2025-12-03 A | QTS-1371 | 100% |  |  | 01ADMIN | Preconstruction | Precon | GMP | Preconstruction | OFCI Procurement | BAB |
| QTS-31561 |  | DH 2200 / A22 Lineup // 600A MOD #A22-03 (CRAH Support) | 20d | 2025-11-04 A | 2025-12-03 A | QTS-1371 | 100% |  |  | 01ADMIN | Preconstruction | Precon | GMP | Preconstruction | OFCI Procurement | BAB |
| QTS-35921 |  | DH 2200 / A22 Lineup // 2500KVA Padmount XFMR #A22 | 20d | 2025-11-21 A | 2025-11-21 A | QTS-1371 | 100% | 2025-11-21 | 2025-12-22 | 01ADMIN | Preconstruction | Precon | GMP | Preconstruction | OFCI Procurement | BAB |
| QTS-40221 |  | DH 2200 / A22 Lineup // Assembly - Tank #GEN-A22 | 12d | 2025-12-03 A | 2025-12-09 A | QTS-1371 | 100% | 2025-12-15 | 2026-01-06 | 01ADMIN | Preconstruction | Precon |  | Preconstruction | OFCI Procurement | BAB |
| QTS-40231 |  | DH 2200 / A22 Lineup // Assembly - Engine #GEN-A22 | 20d | 2025-12-03 A | 2025-12-11 A | QTS-1371 | 100% | 2025-12-03 | 2026-01-06 | 01ADMIN | Preconstruction | Precon |  | Preconstruction | OFCI Procurement | BAB |
| QTS-40241 |  | DH 2200 / A22 Lineup // Assembly - SCR #GEN-A22 | 20d | 2025-12-03 A | 2026-03-30 A | QTS-1371 | 100% | 2025-12-03 | 2026-01-06 | 01ADMIN | Preconstruction | Precon |  | Preconstruction | OFCI Procurement | BAB |
| QTS-40251 |  | DH 2200 / A22 Lineup // Assembly - Housing #GEN-A22 | 20d | 2025-12-03 A | 2025-12-12 A | QTS-1371 | 100% | 2025-12-03 | 2026-01-06 | 01ADMIN | Preconstruction | Precon |  | Preconstruction | OFCI Procurement | BAB |
|  | 2 | **B22 Lineup** |  | 2025-08-07 | 2026-03-30 |  |  |  |  |  |  |  |  |  |  |  |
| QTS-35411 |  | DH 2200 / B22 Lineup // Chiller #1RT40-B22 | 4d | 2025-08-07 A | 2025-08-08 A | QTS-1371 | 100% | 2025-08-07 | 2025-08-12 | 01ADMIN | Preconstruction | Precon | GMP | Preconstruction | OFCI Procurement | BAB |
| QTS-33271 |  | DH 2200 / B22 Lineup // Skid #B22 | 20d | 2025-10-31 A | 2025-12-11 A | QTS-1371 | 100% | 2025-10-31 | 2025-12-01 | 01ADMIN | Preconstruction | Precon | GMP | Preconstruction | OFCI Procurement | BAB |
| QTS-31331 |  | DH 2200 / B22 Lineup // 225A MOD #B22-02 (Liquid to Chip Support) | 20d | 2025-11-04 A | 2025-12-03 A | QTS-1371 | 100% |  |  | 01ADMIN | Preconstruction | Precon | GMP | Preconstruction | OFCI Procurement | BAB |
| QTS-31571 |  | DH 2200 / B22 Lineup // 600A MOD #B22-03 (CRAH Support) | 20d | 2025-11-04 A | 2025-12-03 A | QTS-1371 | 100% |  |  | 01ADMIN | Preconstruction | Precon | GMP | Preconstruction | OFCI Procurement | BAB |
| QTS-35931 |  | DH 2200 / B22 Lineup // 2500KVA Padmount XFMR #B22 | 20d | 2025-11-21 A | 2025-11-21 A | QTS-1371 | 100% | 2025-11-21 | 2025-12-22 | 01ADMIN | Preconstruction | Precon | GMP | Preconstruction | OFCI Procurement | BAB |
| QTS-40081 |  | DH 2200 / B22 Lineup // Assembly - SCR #GEN-B22 | 20d | 2025-12-03 A | 2026-03-30 A | QTS-1371 | 100% | 2025-12-03 | 2026-01-06 | 01ADMIN | Preconstruction | Precon |  | Preconstruction | OFCI Procurement | BAB |
| QTS-40061 |  | DH 2200 / B22 Lineup // Assembly - Tank #GEN-B22 | 20d | 2025-12-04 A | 2025-12-09 A | QTS-1371 | 100% | 2025-12-04 | 2026-01-07 | 01ADMIN | Preconstruction | Precon |  | Preconstruction | OFCI Procurement | BAB |
| QTS-40071 |  | DH 2200 / B22 Lineup // Assembly - Engine #GEN-B22 | 20d | 2025-12-04 A | 2025-12-11 A | QTS-1371 | 100% | 2025-12-04 | 2026-01-07 | 01ADMIN | Preconstruction | Precon |  | Preconstruction | OFCI Procurement | BAB |
| QTS-40091 |  | DH 2200 / B22 Lineup // Assembly - Housing #GEN-B22 | 20d | 2025-12-04 A | 2025-12-12 A | QTS-1371 | 100% | 2025-12-04 | 2026-01-07 | 01ADMIN | Preconstruction | Precon |  | Preconstruction | OFCI Procurement | BAB |
|  | 3 | **C22 Lineup** |  | 2025-08-07 | 2026-03-30 |  |  |  |  |  |  |  |  |  |  |  |
| QTS-35421 |  | DH 2200 / C22 Lineup // Chiller #1RT40-C22 | 20d | 2025-08-07 A | 2025-08-08 A | QTS-1371 | 100% | 2025-08-07 | 2025-09-04 | 01ADMIN | Preconstruction | Precon | GMP | Preconstruction | OFCI Procurement | BAB |
| QTS-31341 |  | DH 2200 / C22 Lineup // 225A MOD #C22-02 (Liquid to Chip Support) | 20d | 2025-11-04 A | 2025-12-03 A | QTS-1371 | 100% |  |  | 01ADMIN | Preconstruction | Precon | GMP | Preconstruction | OFCI Procurement | BAB |
| QTS-31581 |  | DH 2200 / C22 Lineup // 600A MOD #C22-03 (CRAH Support) | 20d | 2025-11-04 A | 2025-12-03 A | QTS-1371 | 100% |  |  | 01ADMIN | Preconstruction | Precon | GMP | Preconstruction | OFCI Procurement | BAB |
| QTS-33311 |  | DH 2200 / C22 Lineup // Skid #C22 | 20d | 2025-11-10 A | 2025-12-11 A | QTS-1371 | 100% | 2025-11-10 | 2025-12-09 | 01ADMIN | Preconstruction | Precon | GMP | Preconstruction | OFCI Procurement | BAB |
| QTS-35941 |  | DH 2200 / C22 Lineup // 2500KVA Padmount XFMR #C22 | 20d | 2025-11-21 A | 2025-11-21 A | QTS-1371 | 100% | 2025-11-21 | 2025-12-22 | 01ADMIN | Preconstruction | Precon | GMP | Preconstruction | OFCI Procurement | BAB |
| QTS-39901 |  | DH 2200 / C22 Lineup // Assembly - Tank #GEN-C22 | 20d | 2025-12-02 A | 2025-12-09 A | QTS-1371 | 100% | 2025-12-02 | 2026-01-05 | 01ADMIN | Preconstruction | Precon |  | Preconstruction | OFCI Procurement | BAB |
| QTS-39911 |  | DH 2200 / C22 Lineup // Assembly - Engine #GEN-C22 | 20d | 2025-12-02 A | 2025-12-11 A | QTS-1371 | 100% | 2025-12-02 | 2026-01-05 | 01ADMIN | Preconstruction | Precon |  | Preconstruction | OFCI Procurement | BAB |
| QTS-39921 |  | DH 2200 / C22 Lineup // Assembly - SCR #GEN-C22 | 20d | 2025-12-02 A | 2026-03-30 A | QTS-1371 | 100% | 2025-12-02 | 2026-01-05 | 01ADMIN | Preconstruction | Precon |  | Preconstruction | OFCI Procurement | BAB |
| QTS-39931 |  | DH 2200 / C22 Lineup // Assembly - Housing #GEN-C22 | 20d | 2025-12-02 A | 2025-12-12 A | QTS-1371 | 100% | 2025-12-02 | 2026-01-05 | 01ADMIN | Preconstruction | Precon |  | Preconstruction | OFCI Procurement | BAB |

Notes:
- QTS-35401: allucent_notes: John Capriotti on 2025-08-12 16:08: Chiller received from QAE yard and set on / 8/12/2025.
- QTS-35921: allucent_notes_20251202_153722: John Capriotti on 2025-12-02 12:24: Received and Set on 11/21 / allucent_notes: 2025-12-02 12:24 - User: John Capriotti - Date Added: 2025-12-02 12:24 - Note: Received and Set on 11/21
- QTS-40221: allucent_notes_20251216_165335: John Capriotti on 2025-12-02 12:41: Requesting delivery 12/8/ Moved in due to PODs deliveries being pushed out. Will essentially set GENs first. / allucent_notes_20251209_203830: John Capriotti on 2025-12-02 12:41: Requesting delivery 12/8/ Moved in due to PODs deliveries being pushed out. Will essentially set GENs first. / allucent_notes_20251202_153722: John Capriotti on 2025-12-02 12:41: Requesting delivery 12/8/ Moved in due to PODs deliveries being pushed out. Will essentially set GENs first. / allucent_notes: 2025-12-02 12:41 - User: John Capriotti - Date Added: 2025-12-02 12:41 - Note: Requesting delivery 12/8/ Moved in due to PODs deliveries being pushed out. Will essentially set GENs first.
- QTS-40241: allucent_notes_20251230_164549: John Capriotti on 2025-12-30 10:41: SCRs will be delivered when we are ready to set. The Mfg/Vendor has these located in their yard in Texas, but we are not going to ship all of these to site to store and then mobilize a separate crane and additional trucks to bring to the building. That would be a decent cost and significantly more coordination, with no added benefit. / Ultimately, I, John Capriotti (OFCI), need an update from the Subs/Supers as to when we intend to set them so I can schedule the delivery to support those set dates. / **I will press for updated dates on these, moving out as I work on getting estimated set dates. / allucent_notes: 2025-12-30 10:41 - User: John Capriotti - Date Added: 2025-12-30 10:41 - Note: SCRs will be delivered when we are ready to set. The Mfg/Vendor has these located in their yard in Texas, but we are not going to ship all of these to site to store and then mo
- QTS-35411: allucent_notes: John Capriotti on 2025-08-12 15:08: Chiller received by Belaire/taken out of QAE Yard on 8/12 to set. / allucent_notes: 2025-08-12 15:08 - User: John Capriotti - Date Added: 2025-08-12 15:08 - Note: Chiller received by Belaire/taken out of QAE Yard on 8/12 to set.
- QTS-35931: allucent_notes_20251202_153722: John Capriotti on 2025-12-02 12:25: Received and Set on 11/21 / allucent_notes: 2025-12-02 12:25 - User: John Capriotti - Date Added: 2025-12-02 12:25 - Note: Received and Set on 11/21
- QTS-40081: allucent_notes_20251230_164549: John Capriotti on 2025-12-30 10:41: SCRs will be delivered when we are ready to set. The Mfg/Vendor has these located in their yard in Texas, but we are not going to ship all of these to site to store and then mobilize a separate crane and additional trucks to bring to the building. That would be a decent cost and significantly more coordination, with no added benefit. / Ultimately, I, John Capriotti (OFCI), need an update from the Subs/Supers as to when we intend to set them so I can schedule the delivery to support those set dates. / **I will press for updated dates on these, moving out as I work on getting estimated set dates. / allucent_notes: 2025-12-30 10:41 - User: John Capriotti - Date Added: 2025-12-30 10:41 - Note: SCRs will be delivered when we are ready to set. The Mfg/Vendor has these located in their yard in Texas, but we are not going to ship all of these to site to store and then mo
- QTS-35941: allucent_notes_20251202_153722: John Capriotti on 2025-12-02 12:25: Received and Set on 11/21 / allucent_notes: 2025-12-02 12:25 - User: John Capriotti - Date Added: 2025-12-02 12:25 - Note: Received and Set on 11/21
- QTS-39921: allucent_notes_20251230_164549: John Capriotti on 2025-12-30 10:41: SCRs will be delivered when we are ready to set. The Mfg/Vendor has these located in their yard in Texas, but we are not going to ship all of these to site to store and then mobilize a separate crane and additional trucks to bring to the building. That would be a decent cost and significantly more coordination, with no added benefit. / Ultimately, I, John Capriotti (OFCI), need an update from the Subs/Supers as to when we intend to set them so I can schedule the delivery to support those set dates. / **I will press for updated dates on these, moving out as I work on getting estimated set dates. / allucent_notes: 2025-12-30 10:41 - User: John Capriotti - Date Added: 2025-12-30 10:41 - Note: SCRs will be delivered when we are ready to set. The Mfg/Vendor has these located in their yard in Texas, but we are not going to ship all of these to site to store and then mo

| ID | WBS | Activity | Duration | Start | Finish | Predecessors | Complete | Planned start | Planned finish | Allucent CSI Group | Project Section | Layton Discipline | Baseline | Project Section-1 | Precon Phase | Contract |
| --- | --- | --- | --- | --- | --- | --- | --- | --- | --- | --- | --- | --- | --- | --- | --- | --- |
|  | 4 | **D22 Lineup** |  | 2025-08-07 | 2026-03-30 |  |  |  |  |  |  |  |  |  |  |  |
| QTS-35431 |  | DH 2200 / D22 Lineup // Chiller #1RT40-D22 | 20d | 2025-08-07 A | 2025-08-08 A | QTS-1371 | 100% | 2025-08-07 | 2025-09-04 | 01ADMIN | Preconstruction | Precon | GMP | Preconstruction | OFCI Procurement | BAB |
| QTS-31351 |  | DH 2200 / D22 Lineup // 225A MOD #D22-02 (Liquid to Chip Support) | 20d | 2025-11-04 A | 2025-12-03 A | QTS-1371 | 100% |  |  | 01ADMIN | Preconstruction | Precon | GMP | Preconstruction | OFCI Procurement | BAB |
| QTS-31591 |  | DH 2200 / D22 Lineup // 600A MOD #D22-03 (CRAH Support) | 20d | 2025-11-04 A | 2025-12-03 A | QTS-1371 | 100% |  |  | 01ADMIN | Preconstruction | Precon | GMP | Preconstruction | OFCI Procurement | BAB |
| QTS-33351 |  | DH 2200 / D22 Lineup // Skid #D22 | 20d | 2025-11-14 A | 2025-12-18 A | QTS-1371 | 100% | 2025-11-14 | 2025-12-15 | 01ADMIN | Preconstruction | Precon | GMP | Preconstruction | OFCI Procurement | BAB |
| QTS-35951 |  | DH 2200 / D22 Lineup // 2500KVA Padmount XFMR #D22 | 20d | 2025-11-21 A | 2025-11-21 A | QTS-1371 | 100% | 2025-11-21 | 2025-12-22 | 01ADMIN | Preconstruction | Precon | GMP | Preconstruction | OFCI Procurement | BAB |
| QTS-40441 |  | DH 2200 / D22 Lineup // Assembly - SCR #GEN-D22 | 20d | 2025-12-03 A | 2026-03-30 A | QTS-1371 | 100% | 2025-12-03 | 2026-01-06 | 01ADMIN | Preconstruction | Precon |  | Preconstruction | OFCI Procurement | BAB |
| QTS-40421 |  | DH 2200 / D22 Lineup // Assembly - Tank #GEN-D22 | 20d | 2025-12-08 A | 2025-12-15 A | QTS-1371 | 100% | 2025-12-08 | 2026-01-09 | 01ADMIN | Preconstruction | Precon |  | Preconstruction | OFCI Procurement | BAB |
| QTS-40431 |  | DH 2200 / D22 Lineup // Assembly - Engine #GEN-D22 | 20d | 2025-12-08 A | 2025-12-16 A | QTS-1371 | 100% | 2025-12-08 | 2026-01-09 | 01ADMIN | Preconstruction | Precon |  | Preconstruction | OFCI Procurement | BAB |
| QTS-40451 |  | DH 2200 / D22 Lineup // Assembly - Housing #GEN-D22 | 20d | 2025-12-08 A | 2025-12-18 A | QTS-1371 | 100% | 2025-12-08 | 2026-01-09 | 01ADMIN | Preconstruction | Precon |  | Preconstruction | OFCI Procurement | BAB |
|  | 5 | **E22 Lineup** |  | 2025-08-07 | 2026-03-30 |  |  |  |  |  |  |  |  |  |  |  |
| QTS-35441 |  | DH 2200 / E22 Lineup // Chiller #1RT40-E22 | 20d | 2025-08-07 A | 2025-08-08 A | QTS-1371 | 100% | 2025-08-07 | 2025-09-04 | 01ADMIN | Preconstruction | Precon | GMP | Preconstruction | OFCI Procurement | BAB |
| QTS-31361 |  | DH 2200 / E22 Lineup // 225A MOD #E22-02 (Liquid to Chip Support) | 20d | 2025-11-04 A | 2025-12-03 A | QTS-1371 | 100% |  |  | 01ADMIN | Preconstruction | Precon | GMP | Preconstruction | OFCI Procurement | BAB |
| QTS-31601 |  | DH 2200 / E22 Lineup // 600A MOD #E22-03 (CRAH Support) | 20d | 2025-11-04 A | 2025-12-03 A | QTS-1371 | 100% |  |  | 01ADMIN | Preconstruction | Precon | GMP | Preconstruction | OFCI Procurement | BAB |
| QTS-35961 |  | DH 2200 / E22 Lineup // 2500KVA Padmount XFMR #E22 | 20d | 2025-11-21 A | 2025-11-21 A | QTS-1371 | 100% | 2025-11-21 | 2025-12-22 | 01ADMIN | Preconstruction | Precon | GMP | Preconstruction | OFCI Procurement | BAB |
| QTS-40641 |  | DH 2200 / E22 Lineup // Assembly - SCR #GEN-E22 | 20d | 2025-12-03 A | 2026-03-30 A | QTS-1371 | 100% | 2025-12-03 | 2026-01-06 | 01ADMIN | Preconstruction | Precon |  | Preconstruction | OFCI Procurement | BAB |
| QTS-40621 |  | DH 2200 / E22 Lineup // Assembly - Tank #GEN-E22 | 20d | 2025-12-09 A | 2025-12-15 A | QTS-1371 | 100% | 2025-12-09 | 2026-01-12 | 01ADMIN | Preconstruction | Precon |  | Preconstruction | OFCI Procurement | BAB |
| QTS-40631 |  | DH 2200 / E22 Lineup // Assembly - Engine #GEN-E22 | 20d | 2025-12-09 A | 2025-12-16 A | QTS-1371 | 100% | 2025-12-09 | 2026-01-12 | 01ADMIN | Preconstruction | Precon |  | Preconstruction | OFCI Procurement | BAB |
| QTS-40651 |  | DH 2200 / E22 Lineup // Assembly - Housing #GEN-E22 | 20d | 2025-12-09 A | 2025-12-18 A | QTS-1371 | 100% | 2025-12-09 | 2026-01-12 | 01ADMIN | Preconstruction | Precon |  | Preconstruction | OFCI Procurement | BAB |
| QTS-33391 |  | DH 2200 / E22 Lineup // Skid #E22 | 20d | 2026-01-14 A | 2026-01-14 A | QTS-1371 | 100% | 2026-01-14 | 2026-02-11 | 01ADMIN | Preconstruction | Precon | GMP | Preconstruction | OFCI Procurement | BAB |
|  | 6 | **F22 Lineup** |  | 2025-08-07 | 2026-03-30 |  |  |  |  |  |  |  |  |  |  |  |
| QTS-35451 |  | DH 2200 / F22 Lineup // Chiller #1RT40-F22 | 20d | 2025-08-07 A | 2025-08-08 A | QTS-1371 | 100% | 2025-08-07 | 2025-09-04 | 01ADMIN | Preconstruction | Precon | GMP | Preconstruction | OFCI Procurement | BAB |
| QTS-31371 |  | DH 2200 / F22 Lineup // 225A MOD #F22-02 (Liquid to Chip Support) | 20d | 2025-11-04 A | 2025-12-03 A | QTS-1371 | 100% |  |  | 01ADMIN | Preconstruction | Precon | GMP | Preconstruction | OFCI Procurement | BAB |
| QTS-31611 |  | DH 2200 / F22 Lineup // 600A MOD #F22-03 (CRAH Support) | 20d | 2025-11-04 A | 2025-12-03 A | QTS-1371 | 100% |  |  | 01ADMIN | Preconstruction | Precon | GMP | Preconstruction | OFCI Procurement | BAB |
| QTS-35971 |  | DH 2200 / F22 Lineup // 2500KVA Padmount XFMR #F22 | 20d | 2025-11-21 A | 2025-11-21 A | QTS-1371 | 100% | 2025-11-21 | 2025-12-22 | 01ADMIN | Preconstruction | Precon | GMP | Preconstruction | OFCI Procurement | BAB |
| QTS-40841 |  | DH 2200 / F22 Lineup // Assembly - SCR #GEN-F22 | 20d | 2025-12-03 A | 2026-03-30 A | QTS-1371 | 100% | 2025-12-03 | 2026-01-06 | 01ADMIN | Preconstruction | Precon |  | Preconstruction | OFCI Procurement | BAB |
| QTS-40821 |  | DH 2200 / F22 Lineup // Assembly - Tank #GEN-F22 | 20d | 2025-12-10 A | 2025-12-15 A | QTS-1371 | 100% | 2025-12-10 | 2026-01-13 | 01ADMIN | Preconstruction | Precon |  | Preconstruction | OFCI Procurement | BAB |
| QTS-40831 |  | DH 2200 / F22 Lineup // Assembly - Engine #GEN-F22 | 20d | 2025-12-10 A | 2025-12-16 A | QTS-1371 | 100% | 2025-12-10 | 2026-01-13 | 01ADMIN | Preconstruction | Precon |  | Preconstruction | OFCI Procurement | BAB |
| QTS-40851 |  | DH 2200 / F22 Lineup // Assembly - Housing #GEN-F22 | 20d | 2025-12-10 A | 2025-12-18 A | QTS-1371 | 100% | 2025-12-10 | 2026-01-13 | 01ADMIN | Preconstruction | Precon |  | Preconstruction | OFCI Procurement | BAB |
| QTS-33431 |  | DH 2200 / F22 Lineup // Skid #F22 | 20d | 2026-01-14 A | 2026-01-14 A | QTS-1371 | 100% | 2026-01-30 | 2026-02-26 | 01ADMIN | Preconstruction | Precon | GMP | Preconstruction | OFCI Procurement | BAB |

Notes:
- QTS-35951: allucent_notes_20251202_153722: John Capriotti on 2025-12-02 12:25: Received and Set on 11/21 / allucent_notes: 2025-12-02 12:25 - User: John Capriotti - Date Added: 2025-12-02 12:25 - Note: Received and Set on 11/21
- QTS-40441: allucent_notes_20251230_164549: John Capriotti on 2025-12-30 10:41: SCRs will be delivered when we are ready to set. The Mfg/Vendor has these located in their yard in Texas, but we are not going to ship all of these to site to store and then mobilize a separate crane and additional trucks to bring to the building. That would be a decent cost and significantly more coordination, with no added benefit. / Ultimately, I, John Capriotti (OFCI), need an update from the Subs/Supers as to when we intend to set them so I can schedule the delivery to support those set dates. / **I will press for updated dates on these, moving out as I work on getting estimated set dates. / allucent_notes: 2025-12-30 10:41 - User: John Capriotti - Date Added: 2025-12-30 10:41 - Note: SCRs will be delivered when we are ready to set. The Mfg/Vendor has these located in their yard in Texas, but we are not going to ship all of these to site to store and then mo
- QTS-35961: allucent_notes_20251202_153722: John Capriotti on 2025-12-02 12:25: Received and Set on 11/21 / allucent_notes: 2025-12-02 12:25 - User: John Capriotti - Date Added: 2025-12-02 12:25 - Note: Received and Set on 11/21
- QTS-40641: allucent_notes_20251230_164549: John Capriotti on 2025-12-30 10:42: SCRs will be delivered when we are ready to set. The Mfg/Vendor has these located in their yard in Texas, but we are not going to ship all of these to site to store and then mobilize a separate crane and additional trucks to bring to the building. That would be a decent cost and significantly more coordination, with no added benefit. / Ultimately, I, John Capriotti (OFCI), need an update from the Subs/Supers as to when we intend to set them so I can schedule the delivery to support those set dates. / **I will press for updated dates on these, moving out as I work on getting estimated set dates. / allucent_notes: 2025-12-30 10:42 - User: John Capriotti - Date Added: 2025-12-30 10:42 - Note: SCRs will be delivered when we are ready to set. The Mfg/Vendor has these located in their yard in Texas, but we are not going to ship all of these to site to store and then mo
- QTS-35971: allucent_notes_20251202_153722: John Capriotti on 2025-12-02 12:26: Received and Set on 11/22 / allucent_notes: 2025-12-02 12:26 - User: John Capriotti - Date Added: 2025-12-02 12:26 - Note: Received and Set on 11/22
- QTS-40841: allucent_notes_20251230_164549: John Capriotti on 2025-12-30 10:42: SCRs will be delivered when we are ready to set. The Mfg/Vendor has these located in their yard in Texas, but we are not going to ship all of these to site to store and then mobilize a separate crane and additional trucks to bring to the building. That would be a decent cost and significantly more coordination, with no added benefit. / Ultimately, I, John Capriotti (OFCI), need an update from the Subs/Supers as to when we intend to set them so I can schedule the delivery to support those set dates. / **I will press for updated dates on these, moving out as I work on getting estimated set dates. / allucent_notes: 2025-12-30 10:42 - User: John Capriotti - Date Added: 2025-12-30 10:42 - Note: SCRs will be delivered when we are ready to set. The Mfg/Vendor has these located in their yard in Texas, but we are not going to ship all of these to site to store and then mo

| ID | WBS | Activity | Duration | Start | Finish | Predecessors | Complete | Planned start | Planned finish | Allucent CSI Group | Project Section | Layton Discipline | Baseline | Project Section-1 | Precon Phase | Contract |
| --- | --- | --- | --- | --- | --- | --- | --- | --- | --- | --- | --- | --- | --- | --- | --- | --- |
|  | 9 | **R22 Lineup** |  | 2025-08-07 | 2026-03-30 |  |  |  |  |  |  |  |  |  |  |  |
| QTS-35461 |  | DH 2200 / R22 Lineup // Chiller #1RT40-R22 | 20d | 2025-08-07 A | 2025-08-08 A | QTS-1371 | 100% | 2025-08-07 | 2025-09-04 | 01ADMIN | Preconstruction | Precon | GMP | Preconstruction | OFCI Procurement | BAB |
| QTS-31701 |  | DH 2200 / R22 Lineup // 600A MOD #R22-03 (CRAH Support) | 20d | 2025-11-04 A | 2025-12-03 A | QTS-1371 | 100% |  |  | 01ADMIN | Preconstruction | Precon | GMP | Preconstruction | OFCI Procurement | BAB |
| QTS-31791 |  | DH 2200 / R22 Lineup // 225A MOD #R22-02 | 20d | 2025-11-04 A | 2025-12-03 A | QTS-1371 | 100% |  |  | 01ADMIN | Preconstruction | Precon | GMP | Preconstruction | OFCI Procurement | BAB |
| QTS-35981 |  | DH 2200 / R22 Lineup // 2500KVA Padmount XFMR #R22 | 20d | 2025-11-21 A | 2025-11-21 A | QTS-1371 | 100% | 2025-11-21 | 2025-12-22 | 01ADMIN | Preconstruction | Precon | GMP | Preconstruction | OFCI Procurement | BAB |
| QTS-41041 |  | DH 2200 / R22 Lineup // Assembly - SCR #GEN-R22 | 20d | 2025-12-03 A | 2026-03-30 A | QTS-1371 | 100% | 2025-12-03 | 2026-01-06 | 01ADMIN | Preconstruction | Precon |  | Preconstruction | OFCI Procurement | BAB |
| QTS-41021 |  | DH 2200 / R22 Lineup // Assembly - Tank #GEN-R22 | 20d | 2025-12-11 A | 2025-12-15 A | QTS-1371 | 100% | 2025-12-11 | 2026-01-14 | 01ADMIN | Preconstruction | Precon |  | Preconstruction | OFCI Procurement | BAB |
| QTS-41031 |  | DH 2200 / R22 Lineup // Assembly - Engine #GEN-R22 | 20d | 2025-12-11 A | 2025-12-16 A | QTS-1371 | 100% | 2025-12-11 | 2026-01-14 | 01ADMIN | Preconstruction | Precon |  | Preconstruction | OFCI Procurement | BAB |
| QTS-41051 |  | DH 2200 / R22 Lineup // Assembly - Housing #GEN-R22 | 20d | 2025-12-11 A | 2025-12-18 A | QTS-1371 | 100% | 2025-12-11 | 2026-01-14 | 01ADMIN | Preconstruction | Precon |  | Preconstruction | OFCI Procurement | BAB |
|  | 4 | **Data Hall 1200 (Need By Dates)** |  | 2025-08-07 | 2026-03-30 |  |  |  |  |  |  |  |  |  |  |  |
| QTS-35251 |  | DH 1200 / CRAH #29 (Electrical Gallery) | 20d | 2025-10-20 A | 2025-11-14 A | QTS-1371 | 100% |  |  | 01ADMIN | Preconstruction | Precon | GMP | Preconstruction | OFCI Procurement | BAB |
| QTS-35261 |  | DH 1200 / CRAH #30 (Electrical Gallery) | 20d | 2025-10-20 A | 2025-11-14 A | QTS-1371 | 100% |  |  | 01ADMIN | Preconstruction | Precon | GMP | Preconstruction | OFCI Procurement | BAB |
| QTS-35271 |  | DH 1200 / CRAH #31 (Electrical Gallery) | 20d | 2025-10-20 A | 2025-11-14 A | QTS-1371 | 100% |  |  | 01ADMIN | Preconstruction | Precon | GMP | Preconstruction | OFCI Procurement | BAB |
| QTS-35281 |  | DH 1200 / CRAH #32 (Electrical Gallery) | 20d | 2025-10-20 A | 2025-11-14 A | QTS-1371 | 100% |  |  | 01ADMIN | Preconstruction | Precon | GMP | Preconstruction | OFCI Procurement | BAB |
| QTS-34971 |  | DH 1200 / CRAH #01 | 20d | 2025-11-04 A | 2026-01-19 A | QTS-1371 | 100% | 2025-11-04 | 2025-12-03 | 01ADMIN | Preconstruction | Precon | GMP | Preconstruction | OFCI Procurement | BAB |
| QTS-34981 |  | DH 1200 / CRAH #02 | 20d | 2025-11-04 A | 2026-01-19 A | QTS-1371 | 100% | 2025-11-04 | 2025-12-03 | 01ADMIN | Preconstruction | Precon | GMP | Preconstruction | OFCI Procurement | BAB |
| QTS-34991 |  | DH 1200 / CRAH #03 | 20d | 2025-11-04 A | 2026-01-19 A | QTS-1371 | 100% | 2025-11-04 | 2025-12-03 | 01ADMIN | Preconstruction | Precon | GMP | Preconstruction | OFCI Procurement | BAB |
| QTS-35001 |  | DH 1200 / CRAH #04 | 20d | 2025-11-04 A | 2026-01-19 A | QTS-1371 | 100% | 2025-11-04 | 2025-12-03 | 01ADMIN | Preconstruction | Precon | GMP | Preconstruction | OFCI Procurement | BAB |
| QTS-35011 |  | DH 1200 / CRAH #05 | 20d | 2025-11-04 A | 2026-01-19 A | QTS-1371 | 100% | 2025-11-04 | 2025-12-03 | 01ADMIN | Preconstruction | Precon | GMP | Preconstruction | OFCI Procurement | BAB |
| QTS-35021 |  | DH 1200 / CRAH #06 | 20d | 2025-11-04 A | 2026-01-19 A | QTS-1371 | 100% | 2025-11-04 | 2025-12-03 | 01ADMIN | Preconstruction | Precon | GMP | Preconstruction | OFCI Procurement | BAB |
| QTS-35031 |  | DH 1200 / CRAH #07 | 20d | 2025-11-04 A | 2026-01-19 A | QTS-1371 | 100% | 2025-11-04 | 2025-12-03 | 01ADMIN | Preconstruction | Precon | GMP | Preconstruction | OFCI Procurement | BAB |
| QTS-35041 |  | DH 1200 / CRAH #08 | 20d | 2025-11-04 A | 2026-01-19 A | QTS-1371 | 100% | 2025-11-04 | 2025-12-03 | 01ADMIN | Preconstruction | Precon | GMP | Preconstruction | OFCI Procurement | BAB |
| QTS-35051 |  | DH 1200 / CRAH #09 | 20d | 2025-11-04 A | 2026-01-19 A | QTS-1371 | 100% | 2025-11-04 | 2025-12-03 | 01ADMIN | Preconstruction | Precon | GMP | Preconstruction | OFCI Procurement | BAB |
| QTS-35061 |  | DH 1200 / CRAH #10 | 20d | 2025-11-04 A | 2026-01-19 A | QTS-1371 | 100% | 2025-11-04 | 2025-12-03 | 01ADMIN | Preconstruction | Precon | GMP | Preconstruction | OFCI Procurement | BAB |
| QTS-35071 |  | DH 1200 / CRAH #11 | 20d | 2025-11-04 A | 2026-01-19 A | QTS-1371 | 100% | 2025-11-04 | 2025-12-03 | 01ADMIN | Preconstruction | Precon | GMP | Preconstruction | OFCI Procurement | BAB |
| QTS-35081 |  | DH 1200 / CRAH #12 | 20d | 2025-11-04 A | 2026-01-19 A | QTS-1371 | 100% | 2025-11-04 | 2025-12-03 | 01ADMIN | Preconstruction | Precon | GMP | Preconstruction | OFCI Procurement | BAB |
| QTS-35091 |  | DH 1200 / CRAH #13 | 20d | 2025-11-04 A | 2026-01-19 A | QTS-1371 | 100% | 2025-11-04 | 2025-12-03 | 01ADMIN | Preconstruction | Precon | GMP | Preconstruction | OFCI Procurement | BAB |
| QTS-35101 |  | DH 1200 / CRAH #14 | 20d | 2025-11-04 A | 2026-01-19 A | QTS-1371 | 100% | 2025-11-04 | 2025-12-03 | 01ADMIN | Preconstruction | Precon | GMP | Preconstruction | OFCI Procurement | BAB |
| QTS-23421 |  | DH 1200 / DOAS #01 | 20d | 2025-11-05 A | 2025-12-18 A | QTS-1371 | 100% | 2025-11-05 | 2025-12-04 | 01ADMIN | Preconstruction | Precon | GMP | Preconstruction | OFCI Procurement | BAB |
| QTS-23431 |  | DH 1200 / DOAS #02 | 20d | 2025-11-05 A | 2025-12-18 A | QTS-1371 | 100% | 2025-11-05 | 2025-12-04 | 01ADMIN | Preconstruction | Precon | GMP | Preconstruction | OFCI Procurement | BAB |
| QTS-35111 |  | DH 1200 / CRAH #15 | 20d | 2025-12-29 A | 2026-01-15 A | QTS-1371 | 100% | 2025-12-29 | 2026-01-28 | 01ADMIN | Preconstruction | Precon | GMP | Preconstruction | OFCI Procurement | BAB |
| QTS-35121 |  | DH 1200 / CRAH #16 | 20d | 2025-12-29 A | 2026-01-15 A | QTS-1371 | 100% | 2025-12-29 | 2026-01-28 | 01ADMIN | Preconstruction | Precon | GMP | Preconstruction | OFCI Procurement | BAB |
| QTS-35131 |  | DH 1200 / CRAH #17 | 20d | 2025-12-29 A | 2026-01-15 A | QTS-1371 | 100% | 2025-12-29 | 2026-01-28 | 01ADMIN | Preconstruction | Precon | GMP | Preconstruction | OFCI Procurement | BAB |
| QTS-35141 |  | DH 1200 / CRAH #18 | 20d | 2025-12-29 A | 2026-01-15 A | QTS-1371 | 100% | 2025-12-29 | 2026-01-28 | 01ADMIN | Preconstruction | Precon | GMP | Preconstruction | OFCI Procurement | BAB |
| QTS-35151 |  | DH 1200 / CRAH #19 | 20d | 2025-12-29 A | 2026-01-15 A | QTS-1371 | 100% | 2025-12-29 | 2026-01-28 | 01ADMIN | Preconstruction | Precon | GMP | Preconstruction | OFCI Procurement | BAB |
| QTS-35161 |  | DH 1200 / CRAH #20 | 20d | 2025-12-29 A | 2026-01-15 A | QTS-1371 | 100% | 2025-12-29 | 2026-01-28 | 01ADMIN | Preconstruction | Precon | GMP | Preconstruction | OFCI Procurement | BAB |
| QTS-35171 |  | DH 1200 / CRAH #21 | 20d | 2025-12-29 A | 2026-01-15 A | QTS-1371 | 100% | 2025-12-29 | 2026-01-28 | 01ADMIN | Preconstruction | Precon | GMP | Preconstruction | OFCI Procurement | BAB |
| QTS-35181 |  | DH 1200 / CRAH #22 | 20d | 2025-12-29 A | 2026-01-15 A | QTS-1371 | 100% | 2025-12-29 | 2026-01-28 | 01ADMIN | Preconstruction | Precon | GMP | Preconstruction | OFCI Procurement | BAB |
| QTS-35191 |  | DH 1200 / CRAH #23 | 20d | 2025-12-29 A | 2026-01-15 A | QTS-1371 | 100% | 2025-12-29 | 2026-01-28 | 01ADMIN | Preconstruction | Precon | GMP | Preconstruction | OFCI Procurement | BAB |
| QTS-35201 |  | DH 1200 / CRAH #24 | 20d | 2025-12-29 A | 2026-01-15 A | QTS-1371 | 100% | 2025-12-29 | 2026-01-28 | 01ADMIN | Preconstruction | Precon | GMP | Preconstruction | OFCI Procurement | BAB |
| QTS-35211 |  | DH 1200 / CRAH #25 | 20d | 2025-12-29 A | 2026-01-15 A | QTS-1371 | 100% | 2025-12-29 | 2026-01-28 | 01ADMIN | Preconstruction | Precon | GMP | Preconstruction | OFCI Procurement | BAB |
| QTS-35221 |  | DH 1200 / CRAH #26 | 20d | 2025-12-29 A | 2026-01-15 A | QTS-1371 | 100% | 2025-12-29 | 2026-01-28 | 01ADMIN | Preconstruction | Precon | GMP | Preconstruction | OFCI Procurement | BAB |
| QTS-35231 |  | DH 1200 / CRAH #27 | 20d | 2025-12-29 A | 2026-01-15 A | QTS-1371 | 100% | 2025-12-29 | 2026-01-28 | 01ADMIN | Preconstruction | Precon | GMP | Preconstruction | OFCI Procurement | BAB |
| QTS-35241 |  | DH 1200 / CRAH #28 | 20d | 2025-12-29 A | 2026-01-15 A | QTS-1371 | 100% | 2025-12-29 | 2026-01-28 | 01ADMIN | Preconstruction | Precon | GMP | Preconstruction | OFCI Procurement | BAB |

Notes:
- QTS-35981: allucent_notes_20251202_153722: John Capriotti on 2025-12-02 12:26: Received and Set on 11/22 / allucent_notes: 2025-12-02 12:26 - User: John Capriotti - Date Added: 2025-12-02 12:26 - Note: Received and Set on 11/22
- QTS-41041: allucent_notes_20251230_164549: John Capriotti on 2025-12-30 10:42: SCRs will be delivered when we are ready to set. The Mfg/Vendor has these located in their yard in Texas, but we are not going to ship all of these to site to store and then mobilize a separate crane and additional trucks to bring to the building. That would be a decent cost and significantly more coordination, with no added benefit. / Ultimately, I, John Capriotti (OFCI), need an update from the Subs/Supers as to when we intend to set them so I can schedule the delivery to support those set dates. / **I will press for updated dates on these, moving out as I work on getting estimated set dates. / allucent_notes: 2025-12-30 10:42 - User: John Capriotti - Date Added: 2025-12-30 10:42 - Note: SCRs will be delivered when we are ready to set. The Mfg/Vendor has these located in their yard in Texas, but we are not going to ship all of these to site to store and then mo
- QTS-34971: allucent_notes_20251230_164549: John Capriotti on 2025-12-30 10:49: CRAH Units are available in QTS warehouse, but will be delivered when we are going to set them. **I will press for updated dates on these, moving out as I work on getting estimated set dates. / Ultimately, I, John Capriotti (OFCI), need an update from the Subs/Supers as to when we intend to set them so I can schedule the delivery to support those set dates. / allucent_notes: 2025-12-30 10:49 - User: John Capriotti - Date Added: 2025-12-30 10:49 - Note: CRAH Units are available in QTS warehouse, but will be delivered when we are going to set them. **I will press for updated dates on these, moving out as I work on getting estim
- QTS-34981: allucent_notes_20251230_164549: John Capriotti on 2025-12-30 10:49: CRAH Units are available in QTS warehouse, but will be delivered when we are going to set them. **I will press for updated dates on these, moving out as I work on getting estimated set dates. / Ultimately, I, John Capriotti (OFCI), need an update from the Subs/Supers as to when we intend to set them so I can schedule the delivery to support those set dates. / allucent_notes: 2025-12-30 10:49 - User: John Capriotti - Date Added: 2025-12-30 10:49 - Note: CRAH Units are available in QTS warehouse, but will be delivered when we are going to set them. **I will press for updated dates on these, moving out as I work on getting estim
- QTS-34991: allucent_notes_20251230_164549: John Capriotti on 2025-12-30 10:49: CRAH Units are available in QTS warehouse, but will be delivered when we are going to set them. **I will press for updated dates on these, moving out as I work on getting estimated set dates. / Ultimately, I, John Capriotti (OFCI), need an update from the Subs/Supers as to when we intend to set them so I can schedule the delivery to support those set dates. / allucent_notes: 2025-12-30 10:49 - User: John Capriotti - Date Added: 2025-12-30 10:49 - Note: CRAH Units are available in QTS warehouse, but will be delivered when we are going to set them. **I will press for updated dates on these, moving out as I work on getting estim
- QTS-35001: allucent_notes_20251230_164549: John Capriotti on 2025-12-30 10:49: CRAH Units are available in QTS warehouse, but will be delivered when we are going to set them. **I will press for updated dates on these, moving out as I work on getting estimated set dates. / Ultimately, I, John Capriotti (OFCI), need an update from the Subs/Supers as to when we intend to set them so I can schedule the delivery to support those set dates. / allucent_notes: 2025-12-30 10:49 - User: John Capriotti - Date Added: 2025-12-30 10:49 - Note: CRAH Units are available in QTS warehouse, but will be delivered when we are going to set them. **I will press for updated dates on these, moving out as I work on getting estim
- QTS-35011: allucent_notes_20251230_164549: John Capriotti on 2025-12-30 10:49: CRAH Units are available in QTS warehouse, but will be delivered when we are going to set them. **I will press for updated dates on these, moving out as I work on getting estimated set dates. / Ultimately, I, John Capriotti (OFCI), need an update from the Subs/Supers as to when we intend to set them so I can schedule the delivery to support those set dates. / allucent_notes: 2025-12-30 10:49 - User: John Capriotti - Date Added: 2025-12-30 10:49 - Note: CRAH Units are available in QTS warehouse, but will be delivered when we are going to set them. **I will press for updated dates on these, moving out as I work on getting estim
- QTS-35021: allucent_notes_20251230_164549: John Capriotti on 2025-12-30 10:49: CRAH Units are available in QTS warehouse, but will be delivered when we are going to set them. **I will press for updated dates on these, moving out as I work on getting estimated set dates. / Ultimately, I, John Capriotti (OFCI), need an update from the Subs/Supers as to when we intend to set them so I can schedule the delivery to support those set dates. / allucent_notes: 2025-12-30 10:49 - User: John Capriotti - Date Added: 2025-12-30 10:49 - Note: CRAH Units are available in QTS warehouse, but will be delivered when we are going to set them. **I will press for updated dates on these, moving out as I work on getting estim
- QTS-35031: allucent_notes_20251230_164549: John Capriotti on 2025-12-30 10:49: CRAH Units are available in QTS warehouse, but will be delivered when we are going to set them. **I will press for updated dates on these, moving out as I work on getting estimated set dates. / Ultimately, I, John Capriotti (OFCI), need an update from the Subs/Supers as to when we intend to set them so I can schedule the delivery to support those set dates. / allucent_notes: 2025-12-30 10:49 - User: John Capriotti - Date Added: 2025-12-30 10:49 - Note: CRAH Units are available in QTS warehouse, but will be delivered when we are going to set them. **I will press for updated dates on these, moving out as I work on getting estim
- QTS-35041: allucent_notes_20251230_164549: John Capriotti on 2025-12-30 10:49: CRAH Units are available in QTS warehouse, but will be delivered when we are going to set them. **I will press for updated dates on these, moving out as I work on getting estimated set dates. / Ultimately, I, John Capriotti (OFCI), need an update from the Subs/Supers as to when we intend to set them so I can schedule the delivery to support those set dates. / allucent_notes: 2025-12-30 10:49 - User: John Capriotti - Date Added: 2025-12-30 10:49 - Note: CRAH Units are available in QTS warehouse, but will be delivered when we are going to set them. **I will press for updated dates on these, moving out as I work on getting estim
- QTS-35051: allucent_notes_20251230_164549: John Capriotti on 2025-12-30 10:49: CRAH Units are available in QTS warehouse, but will be delivered when we are going to set them. **I will press for updated dates on these, moving out as I work on getting estimated set dates. / Ultimately, I, John Capriotti (OFCI), need an update from the Subs/Supers as to when we intend to set them so I can schedule the delivery to support those set dates. / allucent_notes: 2025-12-30 10:49 - User: John Capriotti - Date Added: 2025-12-30 10:49 - Note: CRAH Units are available in QTS warehouse, but will be delivered when we are going to set them. **I will press for updated dates on these, moving out as I work on getting estim
- QTS-35061: allucent_notes_20251230_164549: John Capriotti on 2025-12-30 10:49: CRAH Units are available in QTS warehouse, but will be delivered when we are going to set them. **I will press for updated dates on these, moving out as I work on getting estimated set dates. / Ultimately, I, John Capriotti (OFCI), need an update from the Subs/Supers as to when we intend to set them so I can schedule the delivery to support those set dates. / allucent_notes: 2025-12-30 10:49 - User: John Capriotti - Date Added: 2025-12-30 10:49 - Note: CRAH Units are available in QTS warehouse, but will be delivered when we are going to set them. **I will press for updated dates on these, moving out as I work on getting estim
- QTS-35071: allucent_notes_20251230_164549: John Capriotti on 2025-12-30 10:49: CRAH Units are available in QTS warehouse, but will be delivered when we are going to set them. **I will press for updated dates on these, moving out as I work on getting estimated set dates. / Ultimately, I, John Capriotti (OFCI), need an update from the Subs/Supers as to when we intend to set them so I can schedule the delivery to support those set dates. / allucent_notes: 2025-12-30 10:49 - User: John Capriotti - Date Added: 2025-12-30 10:49 - Note: CRAH Units are available in QTS warehouse, but will be delivered when we are going to set them. **I will press for updated dates on these, moving out as I work on getting estim
- QTS-35081: allucent_notes_20251230_164549: John Capriotti on 2025-12-30 10:49: CRAH Units are available in QTS warehouse, but will be delivered when we are going to set them. **I will press for updated dates on these, moving out as I work on getting estimated set dates. / Ultimately, I, John Capriotti (OFCI), need an update from the Subs/Supers as to when we intend to set them so I can schedule the delivery to support those set dates. / allucent_notes: 2025-12-30 10:49 - User: John Capriotti - Date Added: 2025-12-30 10:49 - Note: CRAH Units are available in QTS warehouse, but will be delivered when we are going to set them. **I will press for updated dates on these, moving out as I work on getting estim
- QTS-35091: allucent_notes_20251230_164549: John Capriotti on 2025-12-30 10:49: CRAH Units are available in QTS warehouse, but will be delivered when we are going to set them. **I will press for updated dates on these, moving out as I work on getting estimated set dates. / Ultimately, I, John Capriotti (OFCI), need an update from the Subs/Supers as to when we intend to set them so I can schedule the delivery to support those set dates. / allucent_notes: 2025-12-30 10:49 - User: John Capriotti - Date Added: 2025-12-30 10:49 - Note: CRAH Units are available in QTS warehouse, but will be delivered when we are going to set them. **I will press for updated dates on these, moving out as I work on getting estim
- QTS-35101: allucent_notes_20251230_164549: John Capriotti on 2025-12-30 10:50: CRAH Units are available in QTS warehouse, but will be delivered when we are going to set them. **I will press for updated dates on these, moving out as I work on getting estimated set dates. / Ultimately, I, John Capriotti (OFCI), need an update from the Subs/Supers as to when we intend to set them so I can schedule the delivery to support those set dates. / allucent_notes: 2025-12-30 10:50 - User: John Capriotti - Date Added: 2025-12-30 10:50 - Note: CRAH Units are available in QTS warehouse, but will be delivered when we are going to set them. **I will press for updated dates on these, moving out as I work on getting estim
- QTS-23421: allucent_notes_20251230_164549: John Capriotti on 2025-12-30T15:17:34.792Z: Actualizing ROJ: DOAS delivered to QAE yard on 10/2 - technically have it just not delivered to the site from QAE yard until I can confirm set date / allucent_notes: 2025-12-30T15:17:34.792Z - User: John Capriotti - Date Added: 2025-12-30T15:17:34.792Z - Note: Actualizing ROJ: DOAS delivered to QAE yard on 10/2 - technically have it just not delivered to the site from QAE yard until I can confirm set date
- QTS-23431: allucent_notes_20251230_164549: John Capriotti on 2025-12-30T15:17:40.594Z: Actualizing ROJ: DOAS delivered to QAE yard on 10/2 - technically have it just not delivered to the site from QAE yard until I can confirm set date / allucent_notes: 2025-12-30T15:17:40.594Z - User: John Capriotti - Date Added: 2025-12-30T15:17:40.594Z - Note: Actualizing ROJ: DOAS delivered to QAE yard on 10/2 - technically have it just not delivered to the site from QAE yard until I can confirm set date

| ID | WBS | Activity | Duration | Start | Finish | Predecessors | Complete | Planned start | Planned finish | Allucent CSI Group | Project Section | Layton Discipline | Baseline | Project Section-1 | Precon Phase | Contract |
| --- | --- | --- | --- | --- | --- | --- | --- | --- | --- | --- | --- | --- | --- | --- | --- | --- |
|  | 1 | **A12 Lineup** |  | 2025-08-07 | 2026-03-30 |  |  |  |  |  |  |  |  |  |  |  |
| QTS-35471 |  | DH 1200 / A12 Lineup // Chiller #1RT40-A12 | 20d | 2025-08-07 A | 2025-08-11 A | QTS-1371 | 100% | 2025-08-14 | 2025-09-11 | 01ADMIN | Preconstruction | Precon | GMP | Preconstruction | OFCI Procurement | BAB |
| QTS-33471 |  | DH 1200 / A12 Lineup // Skid #A12 | 20d | 2025-10-29 A | 2025-12-11 A | QTS-1371 | 100% | 2025-10-29 | 2025-11-25 | 01ADMIN | Preconstruction | Precon | GMP | Preconstruction | OFCI Procurement | BAB |
| QTS-35851 |  | DH 1200 / A12 Lineup // 2500KVA Padmount XFMR #A12 | 20d | 2025-11-05 A | 2025-11-21 A | QTS-1371 | 100% | 2025-11-05 | 2025-12-04 | 01ADMIN | Preconstruction | Precon | GMP | Preconstruction | OFCI Procurement | BAB |
| QTS-40261 |  | DH 1200 / A12 Lineup // Assembly - Tank #GEN-A12 | 20d | 2025-11-21 A | 2025-12-09 A | QTS-1371 | 100% | 2025-11-21 | 2025-12-22 | 01ADMIN | Preconstruction | Precon |  | Preconstruction | OFCI Procurement | BAB |
| QTS-40271 |  | DH 1200 / A12 Lineup // Assembly - Engine #GEN-A12 | 20d | 2025-11-21 A | 2025-12-11 A | QTS-1371 | 100% | 2025-11-21 | 2025-12-22 | 01ADMIN | Preconstruction | Precon |  | Preconstruction | OFCI Procurement | BAB |
| QTS-40281 |  | DH 1200 / A12 Lineup // Assembly - SCR #GEN-A12 | 20d | 2025-11-21 A | 2026-03-30 A | QTS-1371 | 100% | 2025-11-21 | 2025-12-22 | 01ADMIN | Preconstruction | Precon |  | Preconstruction | OFCI Procurement | BAB |
| QTS-40291 |  | DH 1200 / A12 Lineup // Assembly - Housing #GEN-A12 | 20d | 2025-11-21 A | 2025-12-12 A | QTS-1371 | 100% | 2025-11-21 | 2025-12-22 | 01ADMIN | Preconstruction | Precon |  | Preconstruction | OFCI Procurement | BAB |
| QTS-31381 |  | DH 1200 / A12 Lineup // 225A MOD #A12-02 (Liquid to Chip Support) | 20d | 2025-12-29 A | 2026-01-12 A | QTS-1371 | 100% | 2025-12-29 | 2026-01-28 | 01ADMIN | Preconstruction | Precon | GMP | Preconstruction | OFCI Procurement | BAB |
| QTS-31621 |  | DH 1200 / A12 Lineup // 600A MOD #A12-03 (CRAH Support) | 20d | 2025-12-29 A | 2026-01-12 A | QTS-1371 | 100% | 2025-12-29 | 2026-01-28 | 01ADMIN | Preconstruction | Precon | GMP | Preconstruction | OFCI Procurement | BAB |
|  | 2 | **B12 Lineup** |  | 2025-08-07 | 2026-03-30 |  |  |  |  |  |  |  |  |  |  |  |
| QTS-35481 |  | DH 1200 / B12 Lineup // Chiller #1RT40-B12 | 20d | 2025-08-07 A | 2025-08-11 A | QTS-1371 | 100% | 2025-08-14 | 2025-09-11 | 01ADMIN | Preconstruction | Precon | GMP | Preconstruction | OFCI Procurement | BAB |
| QTS-33511 |  | DH 1200 / B12 Lineup // Skid #B12 | 20d | 2025-11-04 A | 2025-12-11 A | QTS-1371 | 100% | 2025-11-04 | 2025-12-03 | 01ADMIN | Preconstruction | Precon | GMP | Preconstruction | OFCI Procurement | BAB |
| QTS-35861 |  | DH 1200 / B12 Lineup // 2500KVA Padmount XFMR #B12 | 20d | 2025-11-05 A | 2025-11-21 A | QTS-1371 | 100% | 2025-11-05 | 2025-12-04 | 01ADMIN | Preconstruction | Precon | GMP | Preconstruction | OFCI Procurement | BAB |
| QTS-40101 |  | DH 1200 / B12 Lineup // Assembly - Tank #GEN-B12 | 20d | 2025-11-26 A | 2025-12-09 A | QTS-1371 | 100% | 2025-11-26 | 2025-12-30 | 01ADMIN | Preconstruction | Precon |  | Preconstruction | OFCI Procurement | BAB |
| QTS-40111 |  | DH 1200 / B12 Lineup // Assembly - Engine #GEN-B12 | 20d | 2025-11-26 A | 2025-12-11 A | QTS-1371 | 100% | 2025-11-26 | 2025-12-30 | 01ADMIN | Preconstruction | Precon |  | Preconstruction | OFCI Procurement | BAB |
| QTS-40121 |  | DH 1200 / B12 Lineup // Assembly - SCR #GEN-B12 | 20d | 2025-11-26 A | 2026-03-30 A | QTS-1371 | 100% | 2025-11-26 | 2025-12-30 | 01ADMIN | Preconstruction | Precon |  | Preconstruction | OFCI Procurement | BAB |
| QTS-40131 |  | DH 1200 / B12 Lineup // Assembly - Housing #GEN-B12 | 20d | 2025-11-26 A | 2025-12-12 A | QTS-1371 | 100% | 2025-11-26 | 2025-12-30 | 01ADMIN | Preconstruction | Precon |  | Preconstruction | OFCI Procurement | BAB |
| QTS-31391 |  | DH 1200 / B12 Lineup // 225A MOD #B12-02 (Liquid to Chip Support) | 20d | 2025-12-29 A | 2026-01-12 A | QTS-1371 | 100% | 2025-12-29 | 2026-01-28 | 01ADMIN | Preconstruction | Precon | GMP | Preconstruction | OFCI Procurement | BAB |
| QTS-31631 |  | DH 1200 / B12 Lineup // 600A MOD #B12-03 (CRAH Support) | 20d | 2025-12-29 A | 2026-01-12 A | QTS-1371 | 100% | 2025-12-29 | 2026-01-28 | 01ADMIN | Preconstruction | Precon | GMP | Preconstruction | OFCI Procurement | BAB |
|  | 3 | **C12 Lineup** |  | 2025-08-07 | 2026-03-30 |  |  |  |  |  |  |  |  |  |  |  |
| QTS-35491 |  | DH 1200 / C12 Lineup // Chiller #1RT40-C12 | 20d | 2025-08-07 A | 2025-08-11 A | QTS-1371 | 100% | 2025-08-14 | 2025-09-11 | 01ADMIN | Preconstruction | Precon | GMP | Preconstruction | OFCI Procurement | BAB |
| QTS-35871 |  | DH 1200 / C12 Lineup // 2500KVA Padmount XFMR #C12 | 20d | 2025-11-05 A | 2025-11-21 A | QTS-1371 | 100% | 2025-11-05 | 2025-12-04 | 01ADMIN | Preconstruction | Precon | GMP | Preconstruction | OFCI Procurement | BAB |
| QTS-33551 |  | DH 1200 / C12 Lineup // Skid #C12 | 20d | 2025-11-10 A | 2025-12-11 A | QTS-1371 | 100% | 2025-11-10 | 2025-12-09 | 01ADMIN | Preconstruction | Precon | GMP | Preconstruction | OFCI Procurement | BAB |
| QTS-39941 |  | DH 1200 / C12 Lineup // Assembly - Tank #GEN-C12 | 20d | 2025-11-26 A | 2025-12-09 A | QTS-1371 | 100% | 2025-11-26 | 2025-12-30 | 01ADMIN | Preconstruction | Precon |  | Preconstruction | OFCI Procurement | BAB |
| QTS-39951 |  | DH 1200 / C12 Lineup // Assembly - Engine #GEN-C12 | 20d | 2025-11-26 A | 2025-12-11 A | QTS-1371 | 100% | 2025-11-26 | 2025-12-30 | 01ADMIN | Preconstruction | Precon |  | Preconstruction | OFCI Procurement | BAB |
| QTS-39961 |  | DH 1200 / C12 Lineup // Assembly - SCR #GEN-C12 | 20d | 2025-11-26 A | 2026-03-30 A | QTS-1371 | 100% | 2025-11-26 | 2025-12-30 | 01ADMIN | Preconstruction | Precon |  | Preconstruction | OFCI Procurement | BAB |
| QTS-39971 |  | DH 1200 / C12 Lineup // Assembly - Housing #GEN-C12 | 20d | 2025-11-26 A | 2025-12-12 A | QTS-1371 | 100% | 2025-11-26 | 2025-12-30 | 01ADMIN | Preconstruction | Precon |  | Preconstruction | OFCI Procurement | BAB |
| QTS-31401 |  | DH 1200 / C12 Lineup // 225A MOD #C12-02 (Liquid to Chip Support) | 20d | 2025-12-29 A | 2026-01-12 A | QTS-1371 | 100% | 2025-12-29 | 2026-01-28 | 01ADMIN | Preconstruction | Precon | GMP | Preconstruction | OFCI Procurement | BAB |
| QTS-31641 |  | DH 1200 / C12 Lineup // 600A MOD #C12-03 (CRAH Support) | 20d | 2025-12-29 A | 2026-01-12 A | QTS-1371 | 100% | 2025-12-29 | 2026-01-28 | 01ADMIN | Preconstruction | Precon | GMP | Preconstruction | OFCI Procurement | BAB |

Notes:
- QTS-35851: allucent_notes_20251202_153722: John Capriotti on 2025-12-02 12:26: Received and Set on 11/21 / allucent_notes: 2025-12-02 12:26 - User: John Capriotti - Date Added: 2025-12-02 12:26 - Note: Received and Set on 11/21
- QTS-40281: allucent_notes_20251230_164549: John Capriotti on 2025-12-30 10:39: SCRs will be delivered when we are ready to set. The Mfg/Vendor has these located in their yard in Texas, but we are not going to ship all of these to site to store and then mobilize a separate crane and additional trucks to bring to the building. That would be a decent cost and significantly more coordination, with no added benefit. / Ultimately, I, John Capriotti (OFCI), need an update from the Subs/Supers as to when we intend to set them so I can schedule the delivery to support those set dates. / **I will press for updated dates on these, moving out as I work on getting estimated set dates. / allucent_notes: 2025-12-30 10:39 - User: John Capriotti - Date Added: 2025-12-30 10:39 - Note: SCRs will be delivered when we are ready to set. The Mfg/Vendor has these located in their yard in Texas, but we are not going to ship all of these to site to store and then mo
- QTS-35861: allucent_notes_20251202_153722: John Capriotti on 2025-12-02 12:26: Received and Set on 11/21 / allucent_notes: 2025-12-02 12:26 - User: John Capriotti - Date Added: 2025-12-02 12:26 - Note: Received and Set on 11/21
- QTS-40121: allucent_notes_20251230_164549: John Capriotti on 2025-12-30 10:39: SCRs will be delivered when we are ready to set. The Mfg/Vendor has these located in their yard in Texas, but we are not going to ship all of these to site to store and then mobilize a separate crane and additional trucks to bring to the building. That would be a decent cost and significantly more coordination, with no added benefit. / Ultimately, I, John Capriotti (OFCI), need an update from the Subs/Supers as to when we intend to set them so I can schedule the delivery to support those set dates. / **I will press for updated dates on these, moving out as I work on getting estimated set dates. / allucent_notes: 2025-12-30 10:39 - User: John Capriotti - Date Added: 2025-12-30 10:39 - Note: SCRs will be delivered when we are ready to set. The Mfg/Vendor has these located in their yard in Texas, but we are not going to ship all of these to site to store and then mo
- QTS-35871: allucent_notes_20251202_153722: John Capriotti on 2025-12-02 12:27: Received and Set on 11/21 / allucent_notes: 2025-12-02 12:27 - User: John Capriotti - Date Added: 2025-12-02 12:27 - Note: Received and Set on 11/21
- QTS-39961: allucent_notes_20251230_164549: John Capriotti on 2025-12-30 10:39: SCRs will be delivered when we are ready to set. The Mfg/Vendor has these located in their yard in Texas, but we are not going to ship all of these to site to store and then mobilize a separate crane and additional trucks to bring to the building. That would be a decent cost and significantly more coordination, with no added benefit. / Ultimately, I, John Capriotti (OFCI), need an update from the Subs/Supers as to when we intend to set them so I can schedule the delivery to support those set dates. / **I will press for updated dates on these, moving out as I work on getting estimated set dates. / allucent_notes: 2025-12-30 10:39 - User: John Capriotti - Date Added: 2025-12-30 10:39 - Note: SCRs will be delivered when we are ready to set. The Mfg/Vendor has these located in their yard in Texas, but we are not going to ship all of these to site to store and then mo

| ID | WBS | Activity | Duration | Start | Finish | Predecessors | Complete | Planned start | Planned finish | Allucent CSI Group | Project Section | Layton Discipline | Baseline | Project Section-1 | Precon Phase | Contract |
| --- | --- | --- | --- | --- | --- | --- | --- | --- | --- | --- | --- | --- | --- | --- | --- | --- |
|  | 4 | **D12 Lineup** |  | 2025-08-07 | 2026-03-30 |  |  |  |  |  |  |  |  |  |  |  |
| QTS-35501 |  | DH 1200 / D12 Lineup // Chiller #1RT40-D12 | 20d | 2025-08-07 A | 2025-08-11 A | QTS-1371 | 100% | 2025-08-14 | 2025-09-11 | 01ADMIN | Preconstruction | Precon | GMP | Preconstruction | OFCI Procurement | BAB |
| QTS-35881 |  | DH 1200 / D12 Lineup // 2500KVA Padmount XFMR #D12 | 20d | 2025-11-05 A | 2025-11-21 A | QTS-1371 | 100% | 2025-11-05 | 2025-12-04 | 01ADMIN | Preconstruction | Precon | GMP | Preconstruction | OFCI Procurement | BAB |
| QTS-33591 |  | DH 1200 / D12 Lineup // Skid #D12 | 20d | 2025-11-14 A | 2025-12-15 A | QTS-1371 | 100% |  |  | 01ADMIN | Preconstruction | Precon | GMP | Preconstruction | OFCI Procurement | BAB |
| QTS-40461 |  | DH 1200 / D12 Lineup // Assembly - Tank #GEN-D12 | 20d | 2025-12-01 A | 2025-12-15 A | QTS-1371 | 100% | 2025-12-01 | 2025-12-31 | 01ADMIN | Preconstruction | Precon |  | Preconstruction | OFCI Procurement | BAB |
| QTS-40471 |  | DH 1200 / D12 Lineup // Assembly - Engine #GEN-D12 | 20d | 2025-12-01 A | 2025-12-16 A | QTS-1371 | 100% | 2025-12-01 | 2025-12-31 | 01ADMIN | Preconstruction | Precon |  | Preconstruction | OFCI Procurement | BAB |
| QTS-40481 |  | DH 1200 / D12 Lineup // Assembly - SCR #GEN-D12 | 20d | 2025-12-01 A | 2026-03-30 A | QTS-1371 | 100% | 2025-12-01 | 2025-12-31 | 01ADMIN | Preconstruction | Precon |  | Preconstruction | OFCI Procurement | BAB |
| QTS-40491 |  | DH 1200 / D12 Lineup // Assembly - Housing #GEN-D12 | 20d | 2025-12-01 A | 2025-12-18 A | QTS-1371 | 100% | 2025-12-01 | 2025-12-31 | 01ADMIN | Preconstruction | Precon |  | Preconstruction | OFCI Procurement | BAB |
| QTS-31411 |  | DH 1200 / D12 Lineup // 225A MOD #D12-02 (Liquid to Chip Support) | 20d | 2025-12-29 A | 2026-01-12 A | QTS-1371 | 100% | 2025-12-29 | 2026-01-28 | 01ADMIN | Preconstruction | Precon | GMP | Preconstruction | OFCI Procurement | BAB |
| QTS-31651 |  | DH 1200 / D12 Lineup // 600A MOD #D12-03 (CRAH Support) | 20d | 2025-12-29 A | 2026-01-12 A | QTS-1371 | 100% | 2025-12-29 | 2026-01-28 | 01ADMIN | Preconstruction | Precon | GMP | Preconstruction | OFCI Procurement | BAB |
|  | 5 | **E12 Lineup** |  | 2025-08-07 | 2026-03-30 |  |  |  |  |  |  |  |  |  |  |  |
| QTS-35511 |  | DH 1200 / E12 Lineup // Chiller #1RT40-E12 | 20d | 2025-08-07 A | 2025-08-11 A | QTS-1371 | 100% | 2025-08-14 | 2025-09-11 | 01ADMIN | Preconstruction | Precon | GMP | Preconstruction | OFCI Procurement | BAB |
| QTS-35891 |  | DH 1200 / E12 Lineup // 2500KVA Padmount XFMR #E12 | 20d | 2025-11-05 A | 2025-11-22 A | QTS-1371 | 100% | 2025-11-05 | 2025-12-04 | 01ADMIN | Preconstruction | Precon | GMP | Preconstruction | OFCI Procurement | BAB |
| QTS-33631 |  | DH 1200 / E12 Lineup // Skid #E12 | 20d | 2025-11-18 A | 2025-12-17 A | QTS-1371 | 100% |  |  | 01ADMIN | Preconstruction | Precon | GMP | Preconstruction | OFCI Procurement | BAB |
| QTS-40661 |  | DH 1200 / E12 Lineup // Assembly - Tank #GEN-E12 | 20d | 2025-12-01 A | 2025-12-15 A | QTS-1371 | 100% | 2025-12-01 | 2025-12-31 | 01ADMIN | Preconstruction | Precon |  | Preconstruction | OFCI Procurement | BAB |
| QTS-40671 |  | DH 1200 / E12 Lineup // Assembly - Engine #GEN-E12 | 20d | 2025-12-01 A | 2025-12-16 A | QTS-1371 | 100% | 2025-12-01 | 2025-12-31 | 01ADMIN | Preconstruction | Precon |  | Preconstruction | OFCI Procurement | BAB |
| QTS-40681 |  | DH 1200 / E12 Lineup // Assembly - SCR #GEN-E12 | 20d | 2025-12-01 A | 2026-03-30 A | QTS-1371 | 100% | 2025-12-01 | 2025-12-31 | 01ADMIN | Preconstruction | Precon |  | Preconstruction | OFCI Procurement | BAB |
| QTS-40691 |  | DH 1200 / E12 Lineup // Assembly - Housing #GEN-E12 | 20d | 2025-12-01 A | 2025-12-18 A | QTS-1371 | 100% | 2025-12-01 | 2025-12-31 | 01ADMIN | Preconstruction | Precon |  | Preconstruction | OFCI Procurement | BAB |
| QTS-31421 |  | DH 1200 / E12 Lineup // 225A MOD #E12-02 (Liquid to Chip Support) | 20d | 2025-12-29 A | 2026-01-12 A | QTS-1371 | 100% | 2025-12-29 | 2026-01-28 | 01ADMIN | Preconstruction | Precon | GMP | Preconstruction | OFCI Procurement | BAB |
| QTS-31661 |  | DH 1200 / E12 Lineup // 600A MOD #E12-03 (CRAH Support) | 20d | 2025-12-29 A | 2026-01-12 A | QTS-1371 | 100% | 2025-12-29 | 2026-01-28 | 01ADMIN | Preconstruction | Precon | GMP | Preconstruction | OFCI Procurement | BAB |
|  | 6 | **F12 Lineup** |  | 2025-08-07 | 2026-03-30 |  |  |  |  |  |  |  |  |  |  |  |
| QTS-35521 |  | DH 1200 / F12 Lineup // Chiller #1RT40-F12 | 20d | 2025-08-07 A | 2025-08-11 A | QTS-1371 | 100% | 2025-08-14 | 2025-09-11 | 01ADMIN | Preconstruction | Precon | GMP | Preconstruction | OFCI Procurement | BAB |
| QTS-35901 |  | DH 1200 / F12 Lineup // 2500KVA Padmount XFMR #F12 | 20d | 2025-11-05 A | 2025-11-22 A | QTS-1371 | 100% | 2025-11-05 | 2025-12-04 | 01ADMIN | Preconstruction | Precon | GMP | Preconstruction | OFCI Procurement | BAB |
| QTS-40881 |  | DH 1200 / F12 Lineup // Assembly - SCR #GEN-F12 | 20d | 2025-12-03 A | 2026-03-30 A | QTS-1371 | 100% | 2025-12-03 | 2026-01-06 | 01ADMIN | Preconstruction | Precon |  | Preconstruction | OFCI Procurement | BAB |
| QTS-40861 |  | DH 1200 / F12 Lineup // Assembly - Tank #GEN-F12 | 20d | 2025-12-05 A | 2025-12-15 A | QTS-1371 | 100% | 2025-12-05 | 2026-01-08 | 01ADMIN | Preconstruction | Precon |  | Preconstruction | OFCI Procurement | BAB |
| QTS-40871 |  | DH 1200 / F12 Lineup // Assembly - Engine #GEN-F12 | 20d | 2025-12-05 A | 2025-12-16 A | QTS-1371 | 100% | 2025-12-05 | 2026-01-08 | 01ADMIN | Preconstruction | Precon |  | Preconstruction | OFCI Procurement | BAB |
| QTS-40891 |  | DH 1200 / F12 Lineup // Assembly - Housing #GEN-F12 | 20d | 2025-12-05 A | 2025-12-18 A | QTS-1371 | 100% | 2025-12-05 | 2026-01-08 | 01ADMIN | Preconstruction | Precon |  | Preconstruction | OFCI Procurement | BAB |
| QTS-31431 |  | DH 1200 / F12 Lineup // 225A MOD #F12-02 (Liquid to Chip Support) | 20d | 2025-12-29 A | 2026-01-12 A | QTS-1371 | 100% | 2025-12-29 | 2026-01-28 | 01ADMIN | Preconstruction | Precon | GMP | Preconstruction | OFCI Procurement | BAB |
| QTS-31671 |  | DH 1200 / F12 Lineup // 600A MOD #F12-03 (CRAH Support) | 20d | 2025-12-29 A | 2026-01-12 A | QTS-1371 | 100% | 2025-12-29 | 2026-01-28 | 01ADMIN | Preconstruction | Precon | GMP | Preconstruction | OFCI Procurement | BAB |
| QTS-33671 |  | DH 1200 / F12 Lineup // Skid #F12 | 20d | 2026-01-07 A | 2026-01-12 A | QTS-1371 | 100% | 2026-01-07 | 2026-02-04 | 01ADMIN | Preconstruction | Precon | GMP | Preconstruction | OFCI Procurement | BAB |

Notes:
- QTS-35881: allucent_notes_20251202_153722: John Capriotti on 2025-12-02 12:27: Received and Set on 11/21 / allucent_notes: 2025-12-02 12:27 - User: John Capriotti - Date Added: 2025-12-02 12:27 - Note: Received and Set on 11/21
- QTS-40481: allucent_notes_20251230_164549: John Capriotti on 2025-12-30 10:39: SCRs will be delivered when we are ready to set. The Mfg/Vendor has these located in their yard in Texas, but we are not going to ship all of these to site to store and then mobilize a separate crane and additional trucks to bring to the building. That would be a decent cost and significantly more coordination, with no added benefit. / Ultimately, I, John Capriotti (OFCI), need an update from the Subs/Supers as to when we intend to set them so I can schedule the delivery to support those set dates. / **I will press for updated dates on these, moving out as I work on getting estimated set dates. / allucent_notes: 2025-12-30 10:39 - User: John Capriotti - Date Added: 2025-12-30 10:39 - Note: SCRs will be delivered when we are ready to set. The Mfg/Vendor has these located in their yard in Texas, but we are not going to ship all of these to site to store and then mo
- QTS-35891: allucent_notes_20251202_153722: John Capriotti on 2025-12-02 12:27: Received and Set on 11/22 / allucent_notes: 2025-12-02 12:27 - User: John Capriotti - Date Added: 2025-12-02 12:27 - Note: Received and Set on 11/22
- QTS-40681: allucent_notes_20251230_164549: John Capriotti on 2025-12-30 10:39: SCRs will be delivered when we are ready to set. The Mfg/Vendor has these located in their yard in Texas, but we are not going to ship all of these to site to store and then mobilize a separate crane and additional trucks to bring to the building. That would be a decent cost and significantly more coordination, with no added benefit. / Ultimately, I, John Capriotti (OFCI), need an update from the Subs/Supers as to when we intend to set them so I can schedule the delivery to support those set dates. / **I will press for updated dates on these, moving out as I work on getting estimated set dates. / allucent_notes: 2025-12-30 10:39 - User: John Capriotti - Date Added: 2025-12-30 10:39 - Note: SCRs will be delivered when we are ready to set. The Mfg/Vendor has these located in their yard in Texas, but we are not going to ship all of these to site to store and then mo
- QTS-35901: allucent_notes_20251202_153722: John Capriotti on 2025-12-02 12:27: Received and Set on 11/22 / allucent_notes: 2025-12-02 12:27 - User: John Capriotti - Date Added: 2025-12-02 12:27 - Note: Received and Set on 11/22
- QTS-40881: allucent_notes_20251230_164549: John Capriotti on 2025-12-30 10:40: SCRs will be delivered when we are ready to set. The Mfg/Vendor has these located in their yard in Texas, but we are not going to ship all of these to site to store and then mobilize a separate crane and additional trucks to bring to the building. That would be a decent cost and significantly more coordination, with no added benefit. / Ultimately, I, John Capriotti (OFCI), need an update from the Subs/Supers as to when we intend to set them so I can schedule the delivery to support those set dates. / **I will press for updated dates on these, moving out as I work on getting estimated set dates. / allucent_notes: 2025-12-30 10:40 - User: John Capriotti - Date Added: 2025-12-30 10:40 - Note: SCRs will be delivered when we are ready to set. The Mfg/Vendor has these located in their yard in Texas, but we are not going to ship all of these to site to store and then mo

| ID | WBS | Activity | Duration | Start | Finish | Predecessors | Complete | Planned start | Planned finish | Allucent CSI Group | Project Section | Layton Discipline | Baseline | Project Section-1 | Precon Phase | Contract | Fragnet | Owner Impact Analysis | Fragnet Responsible Party |
| --- | --- | --- | --- | --- | --- | --- | --- | --- | --- | --- | --- | --- | --- | --- | --- | --- | --- | --- | --- |
|  | 9 | **R12 Lineup** |  | 2025-08-07 | 2026-03-30 |  |  |  |  |  |  |  |  |  |  |  |  |  |  |
| QTS-35531 |  | DH 1200 / R12 Lineup // Chiller #1RT40-R12 | 20d | 2025-08-07 A | 2025-08-11 A | QTS-1371 | 100% | 2025-08-14 | 2025-09-11 | 01ADMIN | Preconstruction | Precon | GMP | Preconstruction | OFCI Procurement | BAB |  |  |  |
| QTS-35911 |  | DH 1200 / R12 Lineup // 2500KVA Padmount XFMR #R12 | 20d | 2025-11-05 A | 2025-11-21 A | QTS-1371 | 100% | 2025-11-05 | 2025-12-04 | 01ADMIN | Preconstruction | Precon | GMP | Preconstruction | OFCI Procurement | BAB |  |  |  |
| QTS-41081 |  | DH 1200 / R12 Lineup // Assembly - SCR #GEN-R12 | 20d | 2025-12-03 A | 2026-03-30 A | QTS-1371 | 100% | 2025-12-03 | 2026-01-06 | 01ADMIN | Preconstruction | Precon |  | Preconstruction | OFCI Procurement | BAB |  |  |  |
| QTS-41061 |  | DH 1200 / R12 Lineup // Assembly - Tank #GEN-R12 | 20d | 2025-12-08 A | 2025-12-09 A | QTS-1371 | 100% | 2025-12-08 | 2026-01-09 | 01ADMIN | Preconstruction | Precon |  | Preconstruction | OFCI Procurement | BAB |  |  |  |
| QTS-41071 |  | DH 1200 / R12 Lineup // Assembly - Engine #GEN-R12 | 20d | 2025-12-08 A | 2025-12-11 A | QTS-1371 | 100% | 2025-12-08 | 2026-01-09 | 01ADMIN | Preconstruction | Precon |  | Preconstruction | OFCI Procurement | BAB |  |  |  |
| QTS-41091 |  | DH 1200 / R12 Lineup // Assembly - Housing #GEN-R12 | 20d | 2025-12-08 A | 2025-12-12 A | QTS-1371 | 100% | 2025-12-08 | 2026-01-09 | 01ADMIN | Preconstruction | Precon |  | Preconstruction | OFCI Procurement | BAB |  |  |  |
| QTS-31711 |  | DH 1200 / R12 Lineup // 600A MOD #R12-03 (CRAH Support) | 20d | 2025-12-29 A | 2026-01-12 A | QTS-1371 | 100% | 2025-12-29 | 2026-01-28 | 01ADMIN | Preconstruction | Precon | GMP | Preconstruction | OFCI Procurement | BAB |  |  |  |
| QTS-31771 |  | DH 1200 / R12 Lineup // 225A MOD #R12-02 | 20d | 2025-12-29 A | 2026-01-12 A | QTS-1371 | 100% | 2025-12-29 | 2026-01-28 | 01ADMIN | Preconstruction | Precon | GMP | Preconstruction | OFCI Procurement | BAB |  |  |  |
|  | 10 | **Fragnet / Zone 2 // Pods** |  | 2025-10-16 | 2025-12-31 |  |  |  |  |  |  |  |  |  |  |  |  |  |  |
| QTS-120390 |  | Fragnet / QTS Requests Coordination Between Buildings 1,2,&9 for POD Delivery | 1d | 2025-10-16 A | 2025-10-16 A | QTS-1030 SS | 100% | 2025-11-06 | 2025-11-06 | 01ADMIN | Preconstruction | Precon | GMP | Preconstruction | OFCI Procurement | BAB | Fragnet | Y | Quality Technology Services |
| QTS-120400 |  | Fragnet / First Meeting with Vendor to Discuss 1,2,&9 for POD Delivery | 1d | 2025-10-17 A | 2025-10-28 A | QTS-120390 | 100% | 2025-11-06 | 2025-11-06 | 01ADMIN | Preconstruction | Precon | GMP | Preconstruction | OFCI Procurement | BAB | Fragnet | Y | Quality Technology Services |
| QTS-120410 |  | Fragnet / Received New Zone 2 POD Delivery Dates | 20d | 2025-10-29 A | 2025-11-05 A | QTS-120400 | 100% | 2025-11-06 | 2025-12-05 | 01ADMIN | Preconstruction | Precon | GMP | Preconstruction | OFCI Procurement | BAB | Fragnet | Y | Quality Technology Services |
| QTS-120340 |  | Fragnet / Zone 2 POD Delivery Delay | 20d | 2025-11-06 A | 2025-12-29 A | QTS-120410 | 100% | 2025-11-06 | 2025-12-05 | 01ADMIN | Preconstruction | Precon | GMP | Preconstruction | OFCI Procurement | BAB | Fragnet | Y | Quality Technology Services |
| QTS-33751 |  | Fragnet / DH 2200 / A22 Lineup // UPS Container #A22 | 20d | 2025-11-07 A | 2025-12-18 A | QTS-120340 FF+1d, QTS-1371 | 100% | 2025-11-07 | 2025-12-08 | 01ADMIN | Preconstruction | Precon | GMP | Preconstruction | OFCI Procurement | BAB | Fragnet | Y | Quality Technology Services |
| QTS-33761 |  | Fragnet / DH 2200 / B22 Lineup // UPS Container #B22 | 20d | 2025-11-07 A | 2025-12-19 A | QTS-120340 FF+1d, QTS-1371 | 100% | 2025-11-07 | 2025-12-08 | 01ADMIN | Preconstruction | Precon | GMP | Preconstruction | OFCI Procurement | BAB | Fragnet | Y | Quality Technology Services |
| QTS-33771 |  | Fragnet / DH 2200 / C22 Lineup // UPS Container #C22 | 20d | 2025-11-07 A | 2025-12-19 A | QTS-120340 FF+1d, QTS-1371 | 100% | 2025-11-07 | 2025-12-08 | 01ADMIN | Preconstruction | Precon | GMP | Preconstruction | OFCI Procurement | BAB | Fragnet | Y | Quality Technology Services |
| QTS-33781 |  | Fragnet / DH 2200 / D22 Lineup // UPS Container #D22 | 20d | 2025-11-07 A | 2025-12-19 A | QTS-120340 FF+1d, QTS-1371 | 100% | 2025-11-07 | 2025-12-08 | 01ADMIN | Preconstruction | Precon | GMP | Preconstruction | OFCI Procurement | BAB | Fragnet | Y | Quality Technology Services |
| QTS-33791 |  | Fragnet / DH 2200 / E22 Lineup // UPS Container #E22 | 20d | 2025-11-07 A | 2025-12-22 A | QTS-120340 FF+2d, QTS-1371 | 100% | 2025-11-07 | 2025-12-08 | 01ADMIN | Preconstruction | Precon | GMP | Preconstruction | OFCI Procurement | BAB | Fragnet | Y | Quality Technology Services |
| QTS-33801 |  | Fragnet / DH 2200 / F22 Lineup // UPS Container #F22 | 20d | 2025-11-07 A | 2025-12-23 A | QTS-120340 FF+2d, QTS-1371 | 100% | 2025-11-07 | 2025-12-08 | 01ADMIN | Preconstruction | Precon | GMP | Preconstruction | OFCI Procurement | BAB | Fragnet | Y | Quality Technology Services |
| QTS-33811 |  | Fragnet / DH 2200 / R22 Lineup // UPS Container #R22 | 20d | 2025-11-07 A | 2025-12-23 A | QTS-120340 FF+2d, QTS-1371 | 100% | 2025-11-07 | 2025-12-08 | 01ADMIN | Preconstruction | Precon | GMP | Preconstruction | OFCI Procurement | BAB | Fragnet | Y | Quality Technology Services |
| QTS-33821 |  | Fragnet / DH 1200 / A12 Lineup // UPS Container #A12 | 20d | 2025-11-07 A | 2025-12-19 A | QTS-120340 FF+1d, QTS-1371 | 100% | 2025-10-29 | 2025-11-25 | 01ADMIN | Preconstruction | Precon | GMP | Preconstruction | OFCI Procurement | BAB | Fragnet | Y | Quality Technology Services |
| QTS-33831 |  | Fragnet / DH 1200 / B12 Lineup // UPS Container #B12 | 20d | 2025-11-07 A | 2025-12-19 A | QTS-120340 FF+1d, QTS-1371 | 100% | 2025-10-29 | 2025-11-25 | 01ADMIN | Preconstruction | Precon | GMP | Preconstruction | OFCI Procurement | BAB | Fragnet | Y | Quality Technology Services |
| QTS-33841 |  | Fragnet / DH 1200 / C12 Lineup // UPS Container #C12 | 20d | 2025-11-07 A | 2025-12-19 A | QTS-120340 FF+1d, QTS-1371 | 100% | 2025-10-29 | 2025-11-25 | 01ADMIN | Preconstruction | Precon | GMP | Preconstruction | OFCI Procurement | BAB | Fragnet | Y | Quality Technology Services |
| QTS-33851 |  | Fragnet / DH 1200 / D12 Lineup // UPS Container #D12 | 20d | 2025-11-07 A | 2025-12-19 A | QTS-120340 FF+1d, QTS-1371 | 100% | 2025-10-29 | 2025-11-25 | 01ADMIN | Preconstruction | Precon | GMP | Preconstruction | OFCI Procurement | BAB | Fragnet | Y | Quality Technology Services |
| QTS-33861 |  | Fragnet / DH 1200 / E12 Lineup // UPS Container #E12 | 20d | 2025-11-07 A | 2025-12-22 A | QTS-120340 FF+2d, QTS-1371 | 100% | 2025-10-29 | 2025-11-25 | 01ADMIN | Preconstruction | Precon | GMP | Preconstruction | OFCI Procurement | BAB | Fragnet | Y | Quality Technology Services |
| QTS-33871 |  | Fragnet / DH 1200 / F12 Lineup // UPS Container #F12 | 20d | 2025-11-07 A | 2025-12-31 A | QTS-120340 FF+2d, QTS-1371 | 100% | 2025-10-29 | 2025-11-25 | 01ADMIN | Preconstruction | Precon | GMP | Preconstruction | OFCI Procurement | BAB | Fragnet | Y | Quality Technology Services |
| QTS-33881 |  | Fragnet / DH 1200 / R12 Lineup // UPS Container #R12 | 20d | 2025-11-07 A | 2025-12-17 A | QTS-120340 FF, QTS-1371 | 100% | 2025-10-29 | 2025-11-25 | 01ADMIN | Preconstruction | Precon | GMP | Preconstruction | OFCI Procurement | BAB | Fragnet | Y | Quality Technology Services |

Notes:
- QTS-35911: allucent_notes_20251202_153722: John Capriotti on 2025-12-02 12:28: Received and Set on 11/21 / allucent_notes: 2025-12-02 12:28 - User: John Capriotti - Date Added: 2025-12-02 12:28 - Note: Received and Set on 11/21
- QTS-41081: allucent_notes_20251230_164549: John Capriotti on 2025-12-30 10:41: SCRs will be delivered when we are ready to set. The Mfg/Vendor has these located in their yard in Texas, but we are not going to ship all of these to site to store and then mobilize a separate crane and additional trucks to bring to the building. That would be a decent cost and significantly more coordination, with no added benefit. / Ultimately, I, John Capriotti (OFCI), need an update from the Subs/Supers as to when we intend to set them so I can schedule the delivery to support those set dates. / **I will press for updated dates on these, moving out as I work on getting estimated set dates. / allucent_notes: 2025-12-30 10:41 - User: John Capriotti - Date Added: 2025-12-30 10:41 - Note: SCRs will be delivered when we are ready to set. The Mfg/Vendor has these located in their yard in Texas, but we are not going to ship all of these to site to store and then mo
- QTS-120390: allucent_notes_20251202_153722: John Capriotti on 2025-12-02 12:34: Fibrebond Delivery date is 12/18. Due to the coordination and/or the other building ROJ dates impacting DC1 ROJs, this has been pushed out. Fibrebond can only deliver so many a week and all building need by dates overlap. / John Capriotti on 2025-12-02 12:36: Fibrebond Delivery date is 12/19. Due to the coordination and/or the other building ROJ dates impacting DC1 ROJs, this has been pushed out. Fibrebond can only deliver so many a week and all building need by dates overlap. / Scheduler Notes: John Capriotti on 2025-12-02 12:34: Fibrebond Delivery date is 12/18. Due to / the coordination and/or the other building ROJ dates impacting DC1 ROJs, this / has been pushed out. Fibrebond can only deliver so many a week and all building / need by dates overlap. / John Capriotti on 2025-12-02 12:36: Fibrebond Delivery date is 12/19. Due to / the coordination and/or the other building ROJ dates impacting DC1 ROJs, this / has been pushed out. Fibrebond can only deliver so many a week and all building / need by dates overlap. / allucent_notes: 2025-12-02 12:34 - User: John Capriotti - Date Added: 2025-12-02 12:34 - Note: Fibrebond Delivery date is 12/18. Due to the coordination and/or the other building ROJ dates impacting DC1 ROJs, this has been pushed out. Fibrebond can only deliver so many a
- QTS-120400: allucent_notes_20251202_153722: John Capriotti on 2025-12-02 12:34: Fibrebond Delivery date is 12/18. Due to the coordination and/or the other building ROJ dates impacting DC1 ROJs, this has been pushed out. Fibrebond can only deliver so many a week and all building need by dates overlap. / John Capriotti on 2025-12-02 12:36: Fibrebond Delivery date is 12/19. Due to the coordination and/or the other building ROJ dates impacting DC1 ROJs, this has been pushed out. Fibrebond can only deliver so many a week and all building need by dates overlap. / allucent_notes: 2025-12-02 12:34 - User: John Capriotti - Date Added: 2025-12-02 12:34 - Note: Fibrebond Delivery date is 12/18. Due to the coordination and/or the other building ROJ dates impacting DC1 ROJs, this has been pushed out. Fibrebond can only deliver so many a
- QTS-120410: allucent_notes_20251202_153722: John Capriotti on 2025-12-02 12:34: Fibrebond Delivery date is 12/18. Due to the coordination and/or the other building ROJ dates impacting DC1 ROJs, this has been pushed out. Fibrebond can only deliver so many a week and all building need by dates overlap. / John Capriotti on 2025-12-02 12:36: Fibrebond Delivery date is 12/19. Due to the coordination and/or the other building ROJ dates impacting DC1 ROJs, this has been pushed out. Fibrebond can only deliver so many a week and all building need by dates overlap. / allucent_notes: 2025-12-02 12:34 - User: John Capriotti - Date Added: 2025-12-02 12:34 - Note: Fibrebond Delivery date is 12/18. Due to the coordination and/or the other building ROJ dates impacting DC1 ROJs, this has been pushed out. Fibrebond can only deliver so many a
- QTS-120340: allucent_notes_20251202_153722: John Capriotti on 2025-12-02 12:34: Fibrebond Delivery date is 12/18. Due to the coordination and/or the other building ROJ dates impacting DC1 ROJs, this has been pushed out. Fibrebond can only deliver so many a week and all building need by dates overlap. / John Capriotti on 2025-12-02 12:36: Fibrebond Delivery date is 12/19. Due to the coordination and/or the other building ROJ dates impacting DC1 ROJs, this has been pushed out. Fibrebond can only deliver so many a week and all building need by dates overlap. / allucent_notes_20251230_164549: John Capriotti on 2025-12-30 08:30: Pending delivery of last zone 2 POD (UPS Container #F12): ETA now 1/2/2026 (details below) / Per Trucking/Delivery Company: This POD is now tentatively set to be delivered on 1/2/2026. / Updates/History: / 12/30: Truck broke down/in shop for repair. (details below) / Per Trucking/Delivery Company Our driver Perry is experiencing a D-Rating issue with the truck this am and does not have power. He is currently in a shop, but this will not allow us to meet our police this am to get on site this afternoon. I truly apologize for this! The goal is to get out of the shop today and we are working on police scheduling for tomorrow. I am curious what the sites schedule is the rest of the week as we try to get Perry on site as quickly as possible, / I will follow up the moment we are out of the shop along with the police scheduling." / 12/22: Per Trucking/Delivery Company, Pod 53075 is broke down in TX / allucent_notes: 2025-12-30 08:30 - User: John Capriotti - Date Added: 2025-12-30 08:30 - Note: Pending delivery of last zone 2 POD (UPS Container #F12): ETA now 1/2/2026 (details below)Per Trucking/Delivery Company: This POD is now tentatively set to be delivered on 1/2
- QTS-33801: allucent_notes_20251230_164549: John Capriotti on 2025-12-30 08:28: POD did not arrive until late 12/23, set on 12/23. / allucent_notes: 2025-12-30 08:28 - User: John Capriotti - Date Added: 2025-12-30 08:28 - Note: POD did not arrive until late 12/23, set on 12/23.
- QTS-33811: allucent_notes_20251230_164549: John Capriotti on 2025-12-30 08:28: POD did not arrive until late 12/23, set on 12/23. / allucent_notes: 2025-12-30 08:28 - User: John Capriotti - Date Added: 2025-12-30 08:28 - Note: POD did not arrive until late 12/23, set on 12/23.
- QTS-33821: allucent_notes_20251216_165335: John Capriotti on 2025-12-02 12:34: Fibrebond Delivery date is 12/18. Due to the coordination and/or the other building ROJ dates impacting DC1 ROJs, this has been pushed out. Fibrebond can only deliver so many a week and all building need by dates overlap. / John Capriotti on 2025-12-02 12:36: Fibrebond Delivery date is 12/19. Due to the coordination and/or the other building ROJ dates impacting DC1 ROJs, this has been pushed out. Fibrebond can only deliver so many a week and all building need by dates overlap. / allucent_notes_20251209_203830: John Capriotti on 2025-12-02 12:34: Fibrebond Delivery date is 12/18. Due to the coordination and/or the other building ROJ dates impacting DC1 ROJs, this has been pushed out. Fibrebond can only deliver so many a week and all building need by dates overlap. / John Capriotti on 2025-12-02 12:36: Fibrebond Delivery date is 12/19. Due to the coordination and/or the other building ROJ dates impacting DC1 ROJs, this has been pushed out. Fibrebond can only deliver so many a week and all building need by dates overlap. / allucent_notes_20251202_153722: John Capriotti on 2025-12-02 12:34: Fibrebond Delivery date is 12/18. Due to the coordination and/or the other building ROJ dates impacting DC1 ROJs, this has been pushed out. Fibrebond can only deliver so many a week and all building need by dates overlap. / John Capriotti on 2025-12-02 12:36: Fibrebond Delivery date is 12/19. Due to the coordination and/or the other building ROJ dates impacting DC1 ROJs, this has been pushed out. Fibrebond can only deliver so many a week and all building need by dates overlap. / allucent_notes_20251230_164549: John Capriotti on 2025-12-02 12:34: Fibrebond Delivery date is 12/18. Due to the coordination and/or the other building ROJ dates impacting DC1 ROJs, this has been pushed out. Fibrebond can only deliver so many a week and all building need by dates overlap. / John Capriotti on 2025-12-02 12:36: Fibrebond Delivery date is 12/19. Due to the coordination and/or the other building ROJ dates impacting DC1 ROJs, this has been pushed out. Fibrebond can only deliver so many a week and all building need by dates overlap. / allucent_notes: 2025-12-02 12:34 - User: John Capriotti - Date Added: 2025-12-02 12:34 - Note: Fibrebond Delivery date is 12/18. Due to the coordination and/or the other building ROJ dates impacting DC1 ROJs, this has been pushed out. Fibrebond can only deliver so many a
- QTS-33831: allucent_notes_20251216_165335: John Capriotti on 2025-12-02 12:36: Fibrebond Delivery date is 12/19. Due to the coordination and/or the other building ROJ dates impacting DC1 ROJs, this has been pushed out. Fibrebond can only deliver so many a week and all building need by dates overlap. / allucent_notes_20251209_203830: John Capriotti on 2025-12-02 12:36: Fibrebond Delivery date is 12/19. Due to the coordination and/or the other building ROJ dates impacting DC1 ROJs, this has been pushed out. Fibrebond can only deliver so many a week and all building need by dates overlap. / allucent_notes_20251202_153722: John Capriotti on 2025-12-02 12:36: Fibrebond Delivery date is 12/19. Due to the coordination and/or the other building ROJ dates impacting DC1 ROJs, this has been pushed out. Fibrebond can only deliver so many a week and all building need by dates overlap. / allucent_notes_20251230_164549: John Capriotti on 2025-12-02 12:36: Fibrebond Delivery date is 12/19. Due to the coordination and/or the other building ROJ dates impacting DC1 ROJs, this has been pushed out. Fibrebond can only deliver so many a week and all building need by dates overlap. / allucent_notes: 2025-12-02 12:36 - User: John Capriotti - Date Added: 2025-12-02 12:36 - Note: Fibrebond Delivery date is 12/19. Due to the coordination and/or the other building ROJ dates impacting DC1 ROJs, this has been pushed out. Fibrebond can only deliver so many a
- QTS-33841: allucent_notes_20251216_165335: John Capriotti on 2025-12-02 12:36: Fibrebond Delivery date is 12/19. Due to the coordination and/or the other building ROJ dates impacting DC1 ROJs, this has been pushed out. Fibrebond can only deliver so many a week and all building need by dates overlap. / allucent_notes_20251209_203830: John Capriotti on 2025-12-02 12:36: Fibrebond Delivery date is 12/19. Due to the coordination and/or the other building ROJ dates impacting DC1 ROJs, this has been pushed out. Fibrebond can only deliver so many a week and all building need by dates overlap. / allucent_notes_20251202_153722: John Capriotti on 2025-12-02 12:36: Fibrebond Delivery date is 12/19. Due to the coordination and/or the other building ROJ dates impacting DC1 ROJs, this has been pushed out. Fibrebond can only deliver so many a week and all building need by dates overlap. / allucent_notes_20251230_164549: John Capriotti on 2025-12-02 12:36: Fibrebond Delivery date is 12/19. Due to the coordination and/or the other building ROJ dates impacting DC1 ROJs, this has been pushed out. Fibrebond can only deliver so many a week and all building need by dates overlap. / allucent_notes: 2025-12-02 12:36 - User: John Capriotti - Date Added: 2025-12-02 12:36 - Note: Fibrebond Delivery date is 12/19. Due to the coordination and/or the other building ROJ dates impacting DC1 ROJs, this has been pushed out. Fibrebond can only deliver so many a
- QTS-33851: allucent_notes_20251216_165335: John Capriotti on 2025-12-02 12:36: Fibrebond Delivery date is 12/19. Due to the coordination and/or the other building ROJ dates impacting DC1 ROJs, this has been pushed out. Fibrebond can only deliver so many a week and all building need by dates overlap. / allucent_notes_20251209_203830: John Capriotti on 2025-12-02 12:36: Fibrebond Delivery date is 12/19. Due to the coordination and/or the other building ROJ dates impacting DC1 ROJs, this has been pushed out. Fibrebond can only deliver so many a week and all building need by dates overlap. / allucent_notes_20251202_153722: John Capriotti on 2025-12-02 12:36: Fibrebond Delivery date is 12/19. Due to the coordination and/or the other building ROJ dates impacting DC1 ROJs, this has been pushed out. Fibrebond can only deliver so many a week and all building need by dates overlap. / allucent_notes_20251230_164549: John Capriotti on 2025-12-02 12:36: Fibrebond Delivery date is 12/19. Due to the coordination and/or the other building ROJ dates impacting DC1 ROJs, this has been pushed out. Fibrebond can only deliver so many a week and all building need by dates overlap. / allucent_notes: 2025-12-02 12:36 - User: John Capriotti - Date Added: 2025-12-02 12:36 - Note: Fibrebond Delivery date is 12/19. Due to the coordination and/or the other building ROJ dates impacting DC1 ROJs, this has been pushed out. Fibrebond can only deliver so many a
- QTS-33861: allucent_notes_20251216_165335: John Capriotti on 2025-12-02 12:37: Fibrebond Delivery date is 12/22. Due to the coordination and/or the other building ROJ dates impacting DC1 ROJs, this has been pushed out. Fibrebond can only deliver so many a week and all building need by dates overlap. / allucent_notes_20251209_203830: John Capriotti on 2025-12-02 12:37: Fibrebond Delivery date is 12/22. Due to the coordination and/or the other building ROJ dates impacting DC1 ROJs, this has been pushed out. Fibrebond can only deliver so many a week and all building need by dates overlap. / allucent_notes_20251202_153722: John Capriotti on 2025-12-02 12:37: Fibrebond Delivery date is 12/22. Due to the coordination and/or the other building ROJ dates impacting DC1 ROJs, this has been pushed out. Fibrebond can only deliver so many a week and all building need by dates overlap. / allucent_notes_20251230_164549: John Capriotti on 2025-12-02 12:37: Fibrebond Delivery date is 12/22. Due to the coordination and/or the other building ROJ dates impacting DC1 ROJs, this has been pushed out. Fibrebond can only deliver so many a week and all building need by dates overlap. / allucent_notes: 2025-12-02 12:37 - User: John Capriotti - Date Added: 2025-12-02 12:37 - Note: Fibrebond Delivery date is 12/22. Due to the coordination and/or the other building ROJ dates impacting DC1 ROJs, this has been pushed out. Fibrebond can only deliver so many a
- QTS-33871: allucent_notes_20251216_165335: John Capriotti on 2025-12-02 12:37: Fibrebond Delivery date is 12/22. Due to the coordination and/or the other building ROJ dates impacting DC1 ROJs, this has been pushed out. Fibrebond can only deliver so many a week and all building need by dates overlap. / allucent_notes_20251209_203830: John Capriotti on 2025-12-02 12:37: Fibrebond Delivery date is 12/22. Due to the coordination and/or the other building ROJ dates impacting DC1 ROJs, this has been pushed out. Fibrebond can only deliver so many a week and all building need by dates overlap. / allucent_notes_20251202_153722: John Capriotti on 2025-12-02 12:37: Fibrebond Delivery date is 12/22. Due to the coordination and/or the other building ROJ dates impacting DC1 ROJs, this has been pushed out. Fibrebond can only deliver so many a week and all building need by dates overlap. / allucent_notes_20251230_164549: John Capriotti on 2025-12-02 12:37: Fibrebond Delivery date is 12/22. Due to the coordination and/or the other building ROJ dates impacting DC1 ROJs, this has been pushed out. Fibrebond can only deliver so many a week and all building need by dates overlap. / John Capriotti on 2025-12-30 08:24: Per Trucking/Delivery Company: This POD is now tentatively set to be delivered on 1/2/2026. / Updates/History: / 12/30: Truck broke down/in shop for repair. (details below) / Per Trucking/Delivery Company Our driver Perry is experiencing a D-Rating issue with the truck this am and does not have power. He is currently in a shop, but this will not allow us to meet our police this am to get on site this afternoon. I truly apologize for this! The goal is to get out of the shop today and we are working on police scheduling for tomorrow. I am curious what the sites schedule is the rest of the week as we try to get Perry on site as quickly as possible, / I will follow up the moment we are out of the shop along with the police scheduling." / 12/22: Per Trucking/Delivery Company, Pod 53075 is broke down in TX currently. We thought he would be fixed by now but is waiting on a part now. New Delivery Date to be 12/20/2025. / John Capriotti on 2025-12-30 08:25: Per Trucking/Delivery Company: This POD is now tentatively set to be delivered on 1/2/2026. / Updates/History: / 12/30: Truck broke down/in shop for repair. (details below) / Per Trucking/Delivery Company Our driver Perry is experiencing a D-Rating issue with the truck this am and does not have power. He is currently in a shop, but this will not allow us to meet our police this am to get on site this afternoon. I truly apologize for this! The goal is to get out of the shop today and we are working on police scheduling for tomorrow. I am curious what the sites schedule is the rest of the week as we try to get Perry on site as quickly as possible, / I will follow up the moment we are out of the shop along with the police scheduling." / 12/22: Per Trucking/Delivery Company, Pod 53075 is broke down in TX / allucent_notes: 2025-12-02 12:37 - User: John Capriotti - Date Added: 2025-12-02 12:37 - Note: Fibrebond Delivery date is 12/22. Due to the coordination and/or the other building ROJ dates impacting DC1 ROJs, this has been pushed out. Fibrebond can only deliver so many a
- QTS-33881: allucent_notes_20251216_165335: John Capriotti on 2025-12-02 12:37: Fibrebond Delivery date is 12/18. Due to the coordination and/or the other building ROJ dates impacting DC1 ROJs, this has been pushed out. Fibrebond can only deliver so many a week and all building need by dates overlap. / allucent_notes_20251209_203830: John Capriotti on 2025-12-02 12:37: Fibrebond Delivery date is 12/18. Due to the coordination and/or the other building ROJ dates impacting DC1 ROJs, this has been pushed out. Fibrebond can only deliver so many a week and all building need by dates overlap. / allucent_notes_20251202_153722: John Capriotti on 2025-12-02 12:37: Fibrebond Delivery date is 12/18. Due to the coordination and/or the other building ROJ dates impacting DC1 ROJs, this has been pushed out. Fibrebond can only deliver so many a week and all building need by dates overlap. / allucent_notes_20251230_164549: John Capriotti on 2025-12-02 12:37: Fibrebond Delivery date is 12/18. Due to the coordination and/or the other building ROJ dates impacting DC1 ROJs, this has been pushed out. Fibrebond can only deliver so many a week and all building need by dates overlap. / allucent_notes: 2025-12-02 12:37 - User: John Capriotti - Date Added: 2025-12-02 12:37 - Note: Fibrebond Delivery date is 12/18. Due to the coordination and/or the other building ROJ dates impacting DC1 ROJs, this has been pushed out. Fibrebond can only deliver so many a

| ID | WBS | Activity | Duration | Start | Finish | Predecessors | Complete | Planned start | Planned finish | Allucent CSI Group | Project Section | Layton Discipline | Baseline | Project Section-1 | Precon Phase | Contract |
| --- | --- | --- | --- | --- | --- | --- | --- | --- | --- | --- | --- | --- | --- | --- | --- | --- |
|  | 7 | **Data Hall 2300 (Need By Dates)** |  | 2025-02-10 | 2026-05-28 |  |  |  |  |  |  |  |  |  |  |  |
| QTS-37261 |  | DH 2300 / DOAS #01 | 20d | 2025-10-14 A | 2025-12-30 A | QTS-1371 | 100% | 2025-10-14 | 2025-11-10 | 01ADMIN | Preconstruction | Precon | GMP | Preconstruction | OFCI Procurement | BAB |
| QTS-37271 |  | DH 2300 / DOAS #02 | 20d | 2025-10-14 A | 2025-12-30 A | QTS-1371 | 100% | 2025-10-14 | 2025-11-10 | 01ADMIN | Preconstruction | Precon | GMP | Preconstruction | OFCI Procurement | BAB |
| QTS-37061 |  | DH 2300 / CRAH #29 (Electrical Gallery) | 20d | 2025-10-23 A | 2026-02-10 A | QTS-1371 | 100% | 2025-10-23 | 2025-11-19 | 01ADMIN | Preconstruction | Precon | GMP | Preconstruction | OFCI Procurement | BAB |
| QTS-37071 |  | DH 2300 / CRAH #30 (Electrical Gallery) | 20d | 2025-10-23 A | 2026-02-10 A | QTS-1371 | 100% | 2025-10-23 | 2025-11-19 | 01ADMIN | Preconstruction | Precon | GMP | Preconstruction | OFCI Procurement | BAB |
| QTS-37081 |  | DH 2300 / CRAH #31 (Electrical Gallery) | 20d | 2025-10-23 A | 2026-02-10 A | QTS-1371 | 100% | 2025-10-23 | 2025-11-19 | 01ADMIN | Preconstruction | Precon | GMP | Preconstruction | OFCI Procurement | BAB |
| QTS-37091 |  | DH 2300 / CRAH #32 (Electrical Gallery) | 20d | 2025-10-23 A | 2026-02-10 A | QTS-1371 | 100% | 2025-10-23 | 2025-11-19 | 01ADMIN | Preconstruction | Precon | GMP | Preconstruction | OFCI Procurement | BAB |
| QTS-36781 |  | DH 2300 / CRAH #01 | 20d | 2025-11-04 A | 2026-02-10 A | QTS-1371 | 100% | 2025-11-04 | 2025-12-03 | 01ADMIN | Preconstruction | Precon | GMP | Preconstruction | OFCI Procurement | BAB |
| QTS-36791 |  | DH 2300 / CRAH #02 | 20d | 2025-11-04 A | 2026-02-10 A | QTS-1371 | 100% | 2025-11-04 | 2025-12-03 | 01ADMIN | Preconstruction | Precon | GMP | Preconstruction | OFCI Procurement | BAB |
| QTS-36801 |  | DH 2300 / CRAH #03 | 20d | 2025-11-04 A | 2026-02-10 A | QTS-1371 | 100% | 2025-11-04 | 2025-12-03 | 01ADMIN | Preconstruction | Precon | GMP | Preconstruction | OFCI Procurement | BAB |
| QTS-36811 |  | DH 2300 / CRAH #04 | 20d | 2025-11-04 A | 2026-02-10 A | QTS-1371 | 100% | 2025-11-04 | 2025-12-03 | 01ADMIN | Preconstruction | Precon | GMP | Preconstruction | OFCI Procurement | BAB |
| QTS-36821 |  | DH 2300 / CRAH #05 | 20d | 2025-11-04 A | 2026-02-10 A | QTS-1371 | 100% | 2025-11-04 | 2025-12-03 | 01ADMIN | Preconstruction | Precon | GMP | Preconstruction | OFCI Procurement | BAB |
| QTS-36831 |  | DH 2300 / CRAH #06 | 20d | 2025-11-04 A | 2026-02-10 A | QTS-1371 | 100% | 2025-11-04 | 2025-12-03 | 01ADMIN | Preconstruction | Precon | GMP | Preconstruction | OFCI Procurement | BAB |
| QTS-36841 |  | DH 2300 / CRAH #07 | 20d | 2025-11-04 A | 2026-02-10 A | QTS-1371 | 100% | 2025-11-04 | 2025-12-03 | 01ADMIN | Preconstruction | Precon | GMP | Preconstruction | OFCI Procurement | BAB |
| QTS-36851 |  | DH 2300 / CRAH #08 | 20d | 2025-11-04 A | 2026-02-10 A | QTS-1371 | 100% | 2025-11-04 | 2025-12-03 | 01ADMIN | Preconstruction | Precon | GMP | Preconstruction | OFCI Procurement | BAB |
| QTS-36861 |  | DH 2300 / CRAH #09 | 20d | 2025-11-04 A | 2026-02-10 A | QTS-1371 | 100% | 2025-11-04 | 2025-12-03 | 01ADMIN | Preconstruction | Precon | GMP | Preconstruction | OFCI Procurement | BAB |
| QTS-36871 |  | DH 2300 / CRAH #10 | 20d | 2025-11-04 A | 2026-02-10 A | QTS-1371 | 100% | 2025-11-04 | 2025-12-03 | 01ADMIN | Preconstruction | Precon | GMP | Preconstruction | OFCI Procurement | BAB |
| QTS-36881 |  | DH 2300 / CRAH #11 | 20d | 2025-11-04 A | 2026-02-10 A | QTS-1371 | 100% | 2025-11-04 | 2025-12-03 | 01ADMIN | Preconstruction | Precon | GMP | Preconstruction | OFCI Procurement | BAB |
| QTS-36891 |  | DH 2300 / CRAH #12 | 20d | 2025-11-04 A | 2026-02-10 A | QTS-1371 | 100% | 2025-11-04 | 2025-12-03 | 01ADMIN | Preconstruction | Precon | GMP | Preconstruction | OFCI Procurement | BAB |
| QTS-36901 |  | DH 2300 / CRAH #13 | 20d | 2025-11-04 A | 2026-02-10 A | QTS-1371 | 100% | 2025-11-04 | 2025-12-03 | 01ADMIN | Preconstruction | Precon | GMP | Preconstruction | OFCI Procurement | BAB |
| QTS-36911 |  | DH 2300 / CRAH #14 | 20d | 2025-11-04 A | 2026-02-10 A | QTS-1371 | 100% | 2025-11-04 | 2025-12-03 | 01ADMIN | Preconstruction | Precon | GMP | Preconstruction | OFCI Procurement | BAB |
| QTS-36921 |  | DH 2300 / CRAH #15 | 20d | 2026-03-10 A | 2026-03-10 A | QTS-1371 | 100% | 2026-03-11 | 2026-04-07 | 01ADMIN | Preconstruction | Precon | GMP | Preconstruction | OFCI Procurement | BAB |
| QTS-36931 |  | DH 2300 / CRAH #16 | 20d | 2026-03-10 A | 2026-03-10 A | QTS-1371 | 100% | 2026-03-10 | 2026-04-06 | 01ADMIN | Preconstruction | Precon | GMP | Preconstruction | OFCI Procurement | BAB |
| QTS-36941 |  | DH 2300 / CRAH #17 | 20d | 2026-03-10 A | 2026-03-10 A | QTS-1371 | 100% | 2026-03-10 | 2026-04-06 | 01ADMIN | Preconstruction | Precon | GMP | Preconstruction | OFCI Procurement | BAB |
| QTS-36951 |  | DH 2300 / CRAH #18 | 20d | 2026-03-10 A | 2026-03-10 A | QTS-1371 | 100% | 2026-03-10 | 2026-04-06 | 01ADMIN | Preconstruction | Precon | GMP | Preconstruction | OFCI Procurement | BAB |
| QTS-36961 |  | DH 2300 / CRAH #19 | 20d | 2026-03-10 A | 2026-03-10 A | QTS-1371 | 100% | 2026-03-10 | 2026-04-06 | 01ADMIN | Preconstruction | Precon | GMP | Preconstruction | OFCI Procurement | BAB |
| QTS-36971 |  | DH 2300 / CRAH #20 | 20d | 2026-03-10 A | 2026-03-10 A | QTS-1371 | 100% | 2026-03-10 | 2026-04-06 | 01ADMIN | Preconstruction | Precon | GMP | Preconstruction | OFCI Procurement | BAB |
| QTS-36981 |  | DH 2300 / CRAH #21 | 20d | 2026-03-10 A | 2026-03-10 A | QTS-1371 | 100% | 2026-03-10 | 2026-04-06 | 01ADMIN | Preconstruction | Precon | GMP | Preconstruction | OFCI Procurement | BAB |
| QTS-36991 |  | DH 2300 / CRAH #22 | 20d | 2026-03-10 A | 2026-03-10 A | QTS-1371 | 100% | 2026-03-10 | 2026-04-06 | 01ADMIN | Preconstruction | Precon | GMP | Preconstruction | OFCI Procurement | BAB |
| QTS-37001 |  | DH 2300 / CRAH #23 | 20d | 2026-03-10 A | 2026-03-10 A | QTS-1371 | 100% | 2026-03-10 | 2026-04-06 | 01ADMIN | Preconstruction | Precon | GMP | Preconstruction | OFCI Procurement | BAB |
| QTS-37011 |  | DH 2300 / CRAH #24 | 20d | 2026-03-10 A | 2026-03-10 A | QTS-1371 | 100% | 2026-03-10 | 2026-04-06 | 01ADMIN | Preconstruction | Precon | GMP | Preconstruction | OFCI Procurement | BAB |
| QTS-37021 |  | DH 2300 / CRAH #25 | 20d | 2026-03-10 A | 2026-03-10 A | QTS-1371 | 100% | 2026-03-10 | 2026-04-06 | 01ADMIN | Preconstruction | Precon | GMP | Preconstruction | OFCI Procurement | BAB |
| QTS-37031 |  | DH 2300 / CRAH #26 | 20d | 2026-03-10 A | 2026-03-10 A | QTS-1371 | 100% | 2026-03-10 | 2026-04-06 | 01ADMIN | Preconstruction | Precon | GMP | Preconstruction | OFCI Procurement | BAB |
| QTS-37041 |  | DH 2300 / CRAH #27 | 20d | 2026-03-10 A | 2026-03-10 A | QTS-1371 | 100% | 2026-03-10 | 2026-04-06 | 01ADMIN | Preconstruction | Precon | GMP | Preconstruction | OFCI Procurement | BAB |
| QTS-37051 |  | DH 2300 / CRAH #28 | 20d | 2026-03-10 A | 2026-03-10 A | QTS-1371 | 100% | 2026-03-10 | 2026-04-06 | 01ADMIN | Preconstruction | Precon | GMP | Preconstruction | OFCI Procurement | BAB |

Notes:
- QTS-37261: allucent_notes_20251216_165335: Jason Johnston on 2025-11-11 17:11: John owes 11/11 update / allucent_notes_20251209_203830: Jason Johnston on 2025-11-11 17:11: John owes 11/11 update / allucent_notes_20251202_153722: Jason Johnston on 2025-11-11 17:11: John owes 11/11 update / allucent_notes_20251118_192630: Jason Johnston on 2025-11-11 17:11: John owes 11/11 update / allucent_notes_20251111_182405: Jason Johnston on 2025-11-11 17:11: John owes 11/11 update / allucent_notes_20251230_164549: Jason Johnston on 2025-11-11 17:11: John owes 11/11 update / John Capriotti on 2025-12-30T15:31:24.348Z: Actualizing ROJ: DOAS delivered to QAE yard on 10/2 - technically have it just not delivered to the site from QAE yard until I can confirm set date / allucent_notes: 2025-11-11 17:11 - User: Jason Johnston - Date Added: 2025-11-11 17:11 - Note: John owes 11/11 update / 2025-12-30T15:31:24.348Z - User: John Capriotti - Date Added: 2025-12-30T15:31:24.348Z - Note: Actualizing ROJ: DOAS delivered to QAE yard on 10/2 - t
- QTS-37271: allucent_notes_20251216_165335: Jason Johnston on 2025-11-11 17:11: John owes 11/11 update / allucent_notes_20251209_203830: Jason Johnston on 2025-11-11 17:11: John owes 11/11 update / allucent_notes_20251202_153722: Jason Johnston on 2025-11-11 17:11: John owes 11/11 update / allucent_notes_20251118_192630: Jason Johnston on 2025-11-11 17:11: John owes 11/11 update / allucent_notes_20251111_182405: Jason Johnston on 2025-11-11 17:11: John owes 11/11 update / allucent_notes_20251230_164549: Jason Johnston on 2025-11-11 17:11: John owes 11/11 update / John Capriotti on 2025-12-30T15:31:30.446Z: Actualizing ROJ: DOAS delivered to QAE yard on 10/2 - technically have it just not delivered to the site from QAE yard until I can confirm set date / allucent_notes: 2025-11-11 17:11 - User: Jason Johnston - Date Added: 2025-11-11 17:11 - Note: John owes 11/11 update / 2025-12-30T15:31:30.446Z - User: John Capriotti - Date Added: 2025-12-30T15:31:30.446Z - Note: Actualizing ROJ: DOAS delivered to QAE yard on 10/2 - t
- QTS-37061: allucent_notes_20251230_164549: John Capriotti on 2025-12-30 10:50: CRAH Units are available in QTS warehouse, but will be delivered when we are going to set them. **I will press for updated dates on these, moving out as I work on getting estimated set dates. / Ultimately, I, John Capriotti (OFCI), need an update from the Subs/Supers as to when we intend to set them so I can schedule the delivery to support those set dates. / allucent_notes: 2025-12-30 10:50 - User: John Capriotti - Date Added: 2025-12-30 10:50 - Note: CRAH Units are available in QTS warehouse, but will be delivered when we are going to set them. **I will press for updated dates on these, moving out as I work on getting estim
- QTS-37071: allucent_notes_20251230_164549: John Capriotti on 2025-12-30 10:50: CRAH Units are available in QTS warehouse, but will be delivered when we are going to set them. **I will press for updated dates on these, moving out as I work on getting estimated set dates. / Ultimately, I, John Capriotti (OFCI), need an update from the Subs/Supers as to when we intend to set them so I can schedule the delivery to support those set dates. / allucent_notes: 2025-12-30 10:50 - User: John Capriotti - Date Added: 2025-12-30 10:50 - Note: CRAH Units are available in QTS warehouse, but will be delivered when we are going to set them. **I will press for updated dates on these, moving out as I work on getting estim
- QTS-37081: allucent_notes_20251230_164549: John Capriotti on 2025-12-30 10:50: CRAH Units are available in QTS warehouse, but will be delivered when we are going to set them. **I will press for updated dates on these, moving out as I work on getting estimated set dates. / Ultimately, I, John Capriotti (OFCI), need an update from the Subs/Supers as to when we intend to set them so I can schedule the delivery to support those set dates. / allucent_notes: 2025-12-30 10:50 - User: John Capriotti - Date Added: 2025-12-30 10:50 - Note: CRAH Units are available in QTS warehouse, but will be delivered when we are going to set them. **I will press for updated dates on these, moving out as I work on getting estim
- QTS-37091: allucent_notes_20251230_164549: John Capriotti on 2025-12-30 10:50: CRAH Units are available in QTS warehouse, but will be delivered when we are going to set them. **I will press for updated dates on these, moving out as I work on getting estimated set dates. / Ultimately, I, John Capriotti (OFCI), need an update from the Subs/Supers as to when we intend to set them so I can schedule the delivery to support those set dates. / allucent_notes: 2025-12-30 10:50 - User: John Capriotti - Date Added: 2025-12-30 10:50 - Note: CRAH Units are available in QTS warehouse, but will be delivered when we are going to set them. **I will press for updated dates on these, moving out as I work on getting estim
- QTS-36781: allucent_notes_20251230_164549: John Capriotti on 2025-12-30 10:50: CRAH Units are available in QTS warehouse, but will be delivered when we are going to set them. **I will press for updated dates on these, moving out as I work on getting estimated set dates. / Ultimately, I, John Capriotti (OFCI), need an update from the Subs/Supers as to when we intend to set them so I can schedule the delivery to support those set dates. / allucent_notes: 2025-12-30 10:50 - User: John Capriotti - Date Added: 2025-12-30 10:50 - Note: CRAH Units are available in QTS warehouse, but will be delivered when we are going to set them. **I will press for updated dates on these, moving out as I work on getting estim
- QTS-36791: allucent_notes_20251230_164549: John Capriotti on 2025-12-30 10:50: CRAH Units are available in QTS warehouse, but will be delivered when we are going to set them. **I will press for updated dates on these, moving out as I work on getting estimated set dates. / Ultimately, I, John Capriotti (OFCI), need an update from the Subs/Supers as to when we intend to set them so I can schedule the delivery to support those set dates. / allucent_notes: 2025-12-30 10:50 - User: John Capriotti - Date Added: 2025-12-30 10:50 - Note: CRAH Units are available in QTS warehouse, but will be delivered when we are going to set them. **I will press for updated dates on these, moving out as I work on getting estim
- QTS-36801: allucent_notes_20251230_164549: John Capriotti on 2025-12-30 10:50: CRAH Units are available in QTS warehouse, but will be delivered when we are going to set them. **I will press for updated dates on these, moving out as I work on getting estimated set dates. / Ultimately, I, John Capriotti (OFCI), need an update from the Subs/Supers as to when we intend to set them so I can schedule the delivery to support those set dates. / allucent_notes: 2025-12-30 10:50 - User: John Capriotti - Date Added: 2025-12-30 10:50 - Note: CRAH Units are available in QTS warehouse, but will be delivered when we are going to set them. **I will press for updated dates on these, moving out as I work on getting estim
- QTS-36811: allucent_notes_20251230_164549: John Capriotti on 2025-12-30 10:50: CRAH Units are available in QTS warehouse, but will be delivered when we are going to set them. **I will press for updated dates on these, moving out as I work on getting estimated set dates. / Ultimately, I, John Capriotti (OFCI), need an update from the Subs/Supers as to when we intend to set them so I can schedule the delivery to support those set dates. / allucent_notes: 2025-12-30 10:50 - User: John Capriotti - Date Added: 2025-12-30 10:50 - Note: CRAH Units are available in QTS warehouse, but will be delivered when we are going to set them. **I will press for updated dates on these, moving out as I work on getting estim
- QTS-36821: allucent_notes_20251230_164549: John Capriotti on 2025-12-30 10:51: CRAH Units are available in QTS warehouse, but will be delivered when we are going to set them. **I will press for updated dates on these, moving out as I work on getting estimated set dates. / Ultimately, I, John Capriotti (OFCI), need an update from the Subs/Supers as to when we intend to set them so I can schedule the delivery to support those set dates. / allucent_notes: 2025-12-30 10:51 - User: John Capriotti - Date Added: 2025-12-30 10:51 - Note: CRAH Units are available in QTS warehouse, but will be delivered when we are going to set them. **I will press for updated dates on these, moving out as I work on getting estim
- QTS-36831: allucent_notes_20251230_164549: John Capriotti on 2025-12-30 10:51: CRAH Units are available in QTS warehouse, but will be delivered when we are going to set them. **I will press for updated dates on these, moving out as I work on getting estimated set dates. / Ultimately, I, John Capriotti (OFCI), need an update from the Subs/Supers as to when we intend to set them so I can schedule the delivery to support those set dates. / allucent_notes: 2025-12-30 10:51 - User: John Capriotti - Date Added: 2025-12-30 10:51 - Note: CRAH Units are available in QTS warehouse, but will be delivered when we are going to set them. **I will press for updated dates on these, moving out as I work on getting estim
- QTS-36841: allucent_notes_20251230_164549: John Capriotti on 2025-12-30 10:51: CRAH Units are available in QTS warehouse, but will be delivered when we are going to set them. **I will press for updated dates on these, moving out as I work on getting estimated set dates. / Ultimately, I, John Capriotti (OFCI), need an update from the Subs/Supers as to when we intend to set them so I can schedule the delivery to support those set dates. / allucent_notes: 2025-12-30 10:51 - User: John Capriotti - Date Added: 2025-12-30 10:51 - Note: CRAH Units are available in QTS warehouse, but will be delivered when we are going to set them. **I will press for updated dates on these, moving out as I work on getting estim
- QTS-36851: allucent_notes_20251230_164549: John Capriotti on 2025-12-30 10:51: CRAH Units are available in QTS warehouse, but will be delivered when we are going to set them. **I will press for updated dates on these, moving out as I work on getting estimated set dates. / Ultimately, I, John Capriotti (OFCI), need an update from the Subs/Supers as to when we intend to set them so I can schedule the delivery to support those set dates. / allucent_notes: 2025-12-30 10:51 - User: John Capriotti - Date Added: 2025-12-30 10:51 - Note: CRAH Units are available in QTS warehouse, but will be delivered when we are going to set them. **I will press for updated dates on these, moving out as I work on getting estim
- QTS-36861: allucent_notes_20251230_164549: John Capriotti on 2025-12-30 10:51: CRAH Units are available in QTS warehouse, but will be delivered when we are going to set them. **I will press for updated dates on these, moving out as I work on getting estimated set dates. / Ultimately, I, John Capriotti (OFCI), need an update from the Subs/Supers as to when we intend to set them so I can schedule the delivery to support those set dates. / allucent_notes: 2025-12-30 10:51 - User: John Capriotti - Date Added: 2025-12-30 10:51 - Note: CRAH Units are available in QTS warehouse, but will be delivered when we are going to set them. **I will press for updated dates on these, moving out as I work on getting estim
- QTS-36871: allucent_notes_20251230_164549: John Capriotti on 2025-12-30 10:51: CRAH Units are available in QTS warehouse, but will be delivered when we are going to set them. **I will press for updated dates on these, moving out as I work on getting estimated set dates. / Ultimately, I, John Capriotti (OFCI), need an update from the Subs/Supers as to when we intend to set them so I can schedule the delivery to support those set dates. / allucent_notes: 2025-12-30 10:51 - User: John Capriotti - Date Added: 2025-12-30 10:51 - Note: CRAH Units are available in QTS warehouse, but will be delivered when we are going to set them. **I will press for updated dates on these, moving out as I work on getting estim
- QTS-36881: allucent_notes_20251230_164549: John Capriotti on 2025-12-30 10:51: CRAH Units are available in QTS warehouse, but will be delivered when we are going to set them. **I will press for updated dates on these, moving out as I work on getting estimated set dates. / Ultimately, I, John Capriotti (OFCI), need an update from the Subs/Supers as to when we intend to set them so I can schedule the delivery to support those set dates. / allucent_notes: 2025-12-30 10:51 - User: John Capriotti - Date Added: 2025-12-30 10:51 - Note: CRAH Units are available in QTS warehouse, but will be delivered when we are going to set them. **I will press for updated dates on these, moving out as I work on getting estim
- QTS-36891: allucent_notes_20251230_164549: John Capriotti on 2025-12-30 10:51: CRAH Units are available in QTS warehouse, but will be delivered when we are going to set them. **I will press for updated dates on these, moving out as I work on getting estimated set dates. / Ultimately, I, John Capriotti (OFCI), need an update from the Subs/Supers as to when we intend to set them so I can schedule the delivery to support those set dates. / allucent_notes: 2025-12-30 10:51 - User: John Capriotti - Date Added: 2025-12-30 10:51 - Note: CRAH Units are available in QTS warehouse, but will be delivered when we are going to set them. **I will press for updated dates on these, moving out as I work on getting estim
- QTS-36901: allucent_notes_20251230_164549: John Capriotti on 2025-12-30 10:51: CRAH Units are available in QTS warehouse, but will be delivered when we are going to set them. **I will press for updated dates on these, moving out as I work on getting estimated set dates. / Ultimately, I, John Capriotti (OFCI), need an update from the Subs/Supers as to when we intend to set them so I can schedule the delivery to support those set dates. / allucent_notes: 2025-12-30 10:51 - User: John Capriotti - Date Added: 2025-12-30 10:51 - Note: CRAH Units are available in QTS warehouse, but will be delivered when we are going to set them. **I will press for updated dates on these, moving out as I work on getting estim
- QTS-36911: allucent_notes_20251230_164549: John Capriotti on 2025-12-30 10:51: CRAH Units are available in QTS warehouse, but will be delivered when we are going to set them. **I will press for updated dates on these, moving out as I work on getting estimated set dates. / Ultimately, I, John Capriotti (OFCI), need an update from the Subs/Supers as to when we intend to set them so I can schedule the delivery to support those set dates. / allucent_notes: 2025-12-30 10:51 - User: John Capriotti - Date Added: 2025-12-30 10:51 - Note: CRAH Units are available in QTS warehouse, but will be delivered when we are going to set them. **I will press for updated dates on these, moving out as I work on getting estim

| ID | WBS | Activity | Duration | Start | Finish | Predecessors | Complete | Planned start | Planned finish | Allucent CSI Group | Project Section | Layton Discipline | Baseline | Project Section-1 | Precon Phase | Contract | Layton Super |
| --- | --- | --- | --- | --- | --- | --- | --- | --- | --- | --- | --- | --- | --- | --- | --- | --- | --- |
|  | 1 | **A23 Lineup** |  | 2025-02-10 | 2026-04-28 |  |  |  |  |  |  |  |  |  |  |  |  |
| QTS-37281 |  | DH 2300 / A23 Lineup // 2500KVA Padmount XFMR #A23 | 20d | 2025-02-10 A | 2025-10-28 A | QTS-1371 | 100% | 2025-12-15 | 2026-01-16 | 01ADMIN | Preconstruction | Precon | GMP | Preconstruction | OFCI Procurement | BAB |  |
| QTS-37121 |  | DH 2300 / A23 Lineup // Chiller #1RT40-A23 | 20d | 2025-08-28 A | 2025-09-04 A | QTS-1371 | 100% | 2025-08-28 | 2025-09-25 | 01ADMIN | Preconstruction | Precon | GMP | Preconstruction | OFCI Procurement | BAB |  |
| QTS-36651 |  | DH 2300 / A23 Lineup // Skid #A23 | 20d | 2025-10-29 A | 2025-12-18 A | QTS-1371 | 100% | 2025-10-29 | 2025-11-25 | 01ADMIN | Preconstruction | Precon | GMP | Preconstruction | OFCI Procurement | BAB |  |
| QTS-36511 |  | DH 2300 / A23 Lineup // 225A MOD #A23-02 (Liquid to Chip Support) | 5d | 2025-12-01 A | 2025-12-31 A | QTS-1371 | 100% | 2026-06-26 | 2026-07-02 | 01ADMIN | Preconstruction | Precon | GMP | Preconstruction | OFCI Procurement | BAB | German Leal |
| QTS-36571 |  | DH 2300 / A23 Lineup // 600A MOD #A23-03 (CRAH Support) | 5d | 2025-12-01 A | 2025-12-31 A | QTS-1371 | 100% | 2026-06-26 | 2026-07-02 | 01ADMIN | Preconstruction | Precon | GMP | Preconstruction | OFCI Procurement | BAB | German Leal |
| QTS-40321 |  | DH 2300 / A23 Lineup // Assembly - SCR #GEN-A23 | 20d | 2025-12-03 A | 2026-04-28 A | QTS-1371 | 100% | 2025-12-03 | 2026-01-06 | 01ADMIN | Preconstruction | Precon |  | Preconstruction | OFCI Procurement | BAB | German Leal |
| QTS-40301 |  | DH 2300 / A23 Lineup // Assembly - Tank #GEN-A23 | 20d | 2025-12-15 A | 2026-03-05 A | QTS-1371 | 100% | 2025-12-15 | 2026-01-16 | 01ADMIN | Preconstruction | Precon |  | Preconstruction | OFCI Procurement | BAB |  |
| QTS-40311 |  | DH 2300 / A23 Lineup // Assembly - Engine #GEN-A23 | 20d | 2025-12-15 A | 2026-03-05 A | QTS-1371 | 100% | 2025-12-15 | 2026-01-16 | 01ADMIN | Preconstruction | Precon |  | Preconstruction | OFCI Procurement | BAB |  |
| QTS-40331 |  | DH 2300 / A23 Lineup // Assembly - Housing #GEN-A23 | 20d | 2025-12-15 A | 2026-03-05 A | QTS-1371 | 100% | 2025-12-15 | 2026-01-16 | 01ADMIN | Preconstruction | Precon |  | Preconstruction | OFCI Procurement | BAB |  |
|  | 2 | **B23 Lineup** |  | 2025-08-28 | 2026-04-28 |  |  |  |  |  |  |  |  |  |  |  |  |
| QTS-37131 |  | DH 2300 / B23 Lineup // Chiller #1RT40-B23 | 20d | 2025-08-28 A | 2025-09-04 A | QTS-1371 | 100% | 2025-08-28 | 2025-09-25 | 01ADMIN | Preconstruction | Precon | GMP | Preconstruction | OFCI Procurement | BAB |  |
| QTS-36661 |  | DH 2300 / B23 Lineup // Skid #B23 | 20d | 2025-11-04 A | 2025-12-18 A | QTS-1371 | 100% | 2025-11-04 | 2025-12-03 | 01ADMIN | Preconstruction | Precon | GMP | Preconstruction | OFCI Procurement | BAB |  |
| QTS-36521 |  | DH 2300 / B23 Lineup // 225A MOD #B23-02 (Liquid to Chip Support) | 5d | 2025-12-01 A | 2025-12-31 A | QTS-1371 | 100% | 2026-06-26 | 2026-07-02 | 01ADMIN | Preconstruction | Precon | GMP | Preconstruction | OFCI Procurement | BAB | German Leal |
| QTS-36581 |  | DH 2300 / B23 Lineup // 600A MOD #B23-03 (CRAH Support) | 5d | 2025-12-01 A | 2025-12-31 A | QTS-1371 | 100% | 2026-06-26 | 2026-07-02 | 01ADMIN | Preconstruction | Precon | GMP | Preconstruction | OFCI Procurement | BAB | German Leal |
| QTS-40161 |  | DH 2300 / B23 Lineup // Assembly - SCR #GEN-B23 | 20d | 2025-12-03 A | 2026-04-28 A | QTS-1371 | 100% | 2025-12-03 | 2026-01-06 | 01ADMIN | Preconstruction | Precon |  | Preconstruction | OFCI Procurement | BAB | German Leal |
| QTS-37291 |  | DH 2300 / B23 Lineup // 2500KVA Padmount XFMR #B23 | 20d | 2025-12-10 A | 2025-12-29 A | QTS-1371 | 100% | 2025-12-10 | 2026-01-13 | 01ADMIN | Preconstruction | Precon | GMP | Preconstruction | OFCI Procurement | BAB |  |
| QTS-40141 |  | DH 2300 / B23 Lineup // Assembly - Tank #GEN-B23 | 20d | 2025-12-16 A | 2026-03-05 A | QTS-1371 | 100% | 2025-12-16 | 2026-01-20 | 01ADMIN | Preconstruction | Precon |  | Preconstruction | OFCI Procurement | BAB |  |
| QTS-40151 |  | DH 2300 / B23 Lineup // Assembly - Engine #GEN-B23 | 20d | 2025-12-16 A | 2026-03-05 A | QTS-1371 | 100% | 2025-12-16 | 2026-01-20 | 01ADMIN | Preconstruction | Precon |  | Preconstruction | OFCI Procurement | BAB |  |
| QTS-40171 |  | DH 2300 / B23 Lineup // Assembly - Housing #GEN-B23 | 20d | 2025-12-16 A | 2026-03-05 A | QTS-1371 | 100% | 2025-12-16 | 2026-01-20 | 01ADMIN | Preconstruction | Precon |  | Preconstruction | OFCI Procurement | BAB |  |
|  | 3 | **C23 Lineup** |  | 2025-08-28 | 2026-04-28 |  |  |  |  |  |  |  |  |  |  |  |  |
| QTS-37141 |  | DH 2300 / C23 Lineup // Chiller #1RT40-C23 | 20d | 2025-08-28 A | 2025-09-04 A | QTS-1371 | 100% | 2025-08-28 | 2025-09-25 | 01ADMIN | Preconstruction | Precon | GMP | Preconstruction | OFCI Procurement | BAB |  |
| QTS-36671 |  | DH 2300 / C23 Lineup // Skid #C23 | 20d | 2025-11-12 A | 2025-12-18 A | QTS-1371 | 100% | 2025-11-10 | 2025-12-09 | 01ADMIN | Preconstruction | Precon | GMP | Preconstruction | OFCI Procurement | BAB |  |
| QTS-36531 |  | DH 2300 / C23 Lineup // 225A MOD #C12-02 (Liquid to Chip Support) | 5d | 2025-12-01 A | 2025-12-31 A | QTS-1371 | 100% | 2026-06-26 | 2026-07-02 | 01ADMIN | Preconstruction | Precon | GMP | Preconstruction | OFCI Procurement | BAB | German Leal |
| QTS-36591 |  | DH 2300 / C23 Lineup // 600A MOD #C23-03 (CRAH Support) | 5d | 2025-12-01 A | 2025-12-31 A | QTS-1371 | 100% | 2026-06-26 | 2026-07-02 | 01ADMIN | Preconstruction | Precon | GMP | Preconstruction | OFCI Procurement | BAB | German Leal |
| QTS-40001 |  | DH 2300 / C23 Lineup // Assembly - SCR #GEN-C23 | 20d | 2025-12-03 A | 2026-04-28 A | QTS-1371 | 100% | 2025-12-03 | 2026-01-06 | 01ADMIN | Preconstruction | Precon |  | Preconstruction | OFCI Procurement | BAB | German Leal |
| QTS-37301 |  | DH 2300 / C23 Lineup // 2500KVA Padmount XFMR #C23 | 20d | 2025-12-10 A | 2026-01-05 A | QTS-1371 | 100% | 2025-12-10 | 2026-01-13 | 01ADMIN | Preconstruction | Precon | GMP | Preconstruction | OFCI Procurement | BAB |  |
| QTS-39991 |  | DH 2300 / C23 Lineup // Assembly - Engine #GEN-C23 | 20d | 2025-12-17 A | 2026-03-05 A | QTS-1371 | 100% | 2025-12-17 | 2026-01-21 | 01ADMIN | Preconstruction | Precon |  | Preconstruction | OFCI Procurement | BAB |  |
| QTS-40011 |  | DH 2300 / C23 Lineup // Assembly - Housing #GEN-C23 | 20d | 2025-12-17 A | 2026-03-05 A | QTS-1371 | 100% | 2025-12-17 | 2026-01-21 | 01ADMIN | Preconstruction | Precon |  | Preconstruction | OFCI Procurement | BAB |  |
| QTS-39981 |  | DH 2300 / C23 Lineup // Assembly - Tank #GEN-C23 | 20d | 2025-12-23 A | 2026-03-05 A | QTS-1371 | 100% | 2025-12-17 | 2026-01-21 | 01ADMIN | Preconstruction | Precon |  | Preconstruction | OFCI Procurement | BAB |  |

Notes:
- QTS-37281: allucent_notes_20251202_153722: John Capriotti on 2025-12-02 12:29: Received and set on 10/28 / John Capriotti on 2025-12-02 12:29: Received and set on 10/28 / allucent_notes: 2025-12-02 12:29 - User: John Capriotti - Date Added: 2025-12-02 12:29 - Note: Received and set on 10/28 / 2025-12-02 12:29 - User: John Capriotti - Date Added: 2025-12-02 12:29 - Note: Received and set on 10/28
- QTS-40321: allucent_notes_20251230_164549: John Capriotti on 2025-12-30 08:53: Due to coordination with DC2 and DC9 and constraints on how many deliveries the vendor can deliver each day/week, including Holiday gaps, these are the new dates. / Management is aware, meetings held between all buildings to coordinate and these are the dates I was informed we get for DC1 in order to satisfy the DC2 and DC9 dates. / allucent_notes: 2025-12-30 08:53 - User: John Capriotti - Date Added: 2025-12-30 08:53 - Note: Due to coordination with DC2 and DC9 and constraints on how many deliveries the vendor can deliver each day/week, including Holiday gaps, these are the new dates.Management is
- QTS-40301: allucent_notes_20251230_164549: John Capriotti on 2025-12-30 08:53: Due to coordination with DC2 and DC9 and constraints on how many deliveries the vendor can deliver each day/week, including Holiday gaps, these are the new dates. / Management is aware, meetings held between all buildings to coordinate and these are the dates I was informed we get for DC1 in order to satisfy the DC2 and DC9 dates. / allucent_notes: 2025-12-30 08:53 - User: John Capriotti - Date Added: 2025-12-30 08:53 - Note: Due to coordination with DC2 and DC9 and constraints on how many deliveries the vendor can deliver each day/week, including Holiday gaps, these are the new dates.Management is
- QTS-40311: allucent_notes_20251230_164549: John Capriotti on 2025-12-30 08:53: Due to coordination with DC2 and DC9 and constraints on how many deliveries the vendor can deliver each day/week, including Holiday gaps, these are the new dates. / Management is aware, meetings held between all buildings to coordinate and these are the dates I was informed we get for DC1 in order to satisfy the DC2 and DC9 dates. / allucent_notes: 2025-12-30 08:53 - User: John Capriotti - Date Added: 2025-12-30 08:53 - Note: Due to coordination with DC2 and DC9 and constraints on how many deliveries the vendor can deliver each day/week, including Holiday gaps, these are the new dates.Management is
- QTS-40331: allucent_notes_20251230_164549: John Capriotti on 2025-12-30 08:53: Due to coordination with DC2 and DC9 and constraints on how many deliveries the vendor can deliver each day/week, including Holiday gaps, these are the new dates. / Management is aware, meetings held between all buildings to coordinate and these are the dates I was informed we get for DC1 in order to satisfy the DC2 and DC9 dates. / allucent_notes: 2025-12-30 08:53 - User: John Capriotti - Date Added: 2025-12-30 08:53 - Note: Due to coordination with DC2 and DC9 and constraints on how many deliveries the vendor can deliver each day/week, including Holiday gaps, these are the new dates.Management is
- QTS-40161: allucent_notes_20251230_164549: John Capriotti on 2025-12-30 08:55: Due to coordination with DC2 and DC9 and constraints on how many deliveries the vendor can deliver each day/week, including Holiday gaps, these are the new dates. / Management is aware, meetings held between all buildings to coordinate and these are the dates I was informed we get for DC1 in order to satisfy the DC2 and DC9 dates. / allucent_notes: 2025-12-30 08:55 - User: John Capriotti - Date Added: 2025-12-30 08:55 - Note: Due to coordination with DC2 and DC9 and constraints on how many deliveries the vendor can deliver each day/week, including Holiday gaps, these are the new dates.Management is
- QTS-40141: allucent_notes_20251230_164549: John Capriotti on 2025-12-30 08:55: Due to coordination with DC2 and DC9 and constraints on how many deliveries the vendor can deliver each day/week, including Holiday gaps, these are the new dates. / Management is aware, meetings held between all buildings to coordinate and these are the dates I was informed we get for DC1 in order to satisfy the DC2 and DC9 dates. / allucent_notes: 2025-12-30 08:55 - User: John Capriotti - Date Added: 2025-12-30 08:55 - Note: Due to coordination with DC2 and DC9 and constraints on how many deliveries the vendor can deliver each day/week, including Holiday gaps, these are the new dates.Management is
- QTS-40151: allucent_notes_20251230_164549: John Capriotti on 2025-12-30 08:55: Due to coordination with DC2 and DC9 and constraints on how many deliveries the vendor can deliver each day/week, including Holiday gaps, these are the new dates. / Management is aware, meetings held between all buildings to coordinate and these are the dates I was informed we get for DC1 in order to satisfy the DC2 and DC9 dates. / allucent_notes: 2025-12-30 08:55 - User: John Capriotti - Date Added: 2025-12-30 08:55 - Note: Due to coordination with DC2 and DC9 and constraints on how many deliveries the vendor can deliver each day/week, including Holiday gaps, these are the new dates.Management is
- QTS-40171: allucent_notes_20251230_164549: John Capriotti on 2025-12-30 08:55: Due to coordination with DC2 and DC9 and constraints on how many deliveries the vendor can deliver each day/week, including Holiday gaps, these are the new dates. / Management is aware, meetings held between all buildings to coordinate and these are the dates I was informed we get for DC1 in order to satisfy the DC2 and DC9 dates. / allucent_notes: 2025-12-30 08:55 - User: John Capriotti - Date Added: 2025-12-30 08:55 - Note: Due to coordination with DC2 and DC9 and constraints on how many deliveries the vendor can deliver each day/week, including Holiday gaps, these are the new dates.Management is
- QTS-36671: allucent_notes_20251216_165335: Jason Johnston on 2025-11-11 17:11: John owes 11/11 update / allucent_notes_20251209_203830: Jason Johnston on 2025-11-11 17:11: John owes 11/11 update / allucent_notes_20251202_153722: Jason Johnston on 2025-11-11 17:11: John owes 11/11 update / allucent_notes_20251118_192630: Jason Johnston on 2025-11-11 17:11: John owes 11/11 update / allucent_notes_20251111_182405: Jason Johnston on 2025-11-11 17:11: John owes 11/11 update / allucent_notes_20251230_164549: Jason Johnston on 2025-11-11 17:11: John owes 11/11 update / allucent_notes: 2025-11-11 17:11 - User: Jason Johnston - Date Added: 2025-11-11 17:11 - Note: John owes 11/11 update
- QTS-40001: allucent_notes_20251230_164549: John Capriotti on 2025-12-30 09:49: Due to coordination with DC2 and DC9 and constraints on how many deliveries the vendor can deliver each day/week, including Holiday gaps, these are the new dates. / Management is aware, meetings held between all buildings to coordinate and these are the dates I was informed we get for DC1 in order to satisfy the DC2 and DC9 dates. / allucent_notes: 2025-12-30 09:49 - User: John Capriotti - Date Added: 2025-12-30 09:49 - Note: Due to coordination with DC2 and DC9 and constraints on how many deliveries the vendor can deliver each day/week, including Holiday gaps, these are the new dates.Management is
- QTS-37301: allucent_notes_20251230_164549: John Capriotti on 2025-12-30 08:35: Scheduled for delivery on 1/7/2026 with QTS, confirmed with OEG/Sub that they are ready and have crane scheduled to set. / allucent_notes: 2025-12-30 08:35 - User: John Capriotti - Date Added: 2025-12-30 08:35 - Note: Scheduled for delivery on 1/7/2026 with QTS, confirmed with OEG/Sub that they are ready and have crane scheduled to set.
- QTS-39991: allucent_notes_20251230_164549: John Capriotti on 2025-12-30 09:48: Due to coordination with DC2 and DC9 and constraints on how many deliveries the vendor can deliver each day/week, including Holiday gaps, these are the new dates. / Management is aware, meetings held between all buildings to coordinate and these are the dates I was informed we get for DC1 in order to satisfy the DC2 and DC9 dates. / allucent_notes: 2025-12-30 09:48 - User: John Capriotti - Date Added: 2025-12-30 09:48 - Note: Due to coordination with DC2 and DC9 and constraints on how many deliveries the vendor can deliver each day/week, including Holiday gaps, these are the new dates.Management is
- QTS-40011: allucent_notes_20251230_164549: John Capriotti on 2025-12-30 09:48: Due to coordination with DC2 and DC9 and constraints on how many deliveries the vendor can deliver each day/week, including Holiday gaps, these are the new dates. / Management is aware, meetings held between all buildings to coordinate and these are the dates I was informed we get for DC1 in order to satisfy the DC2 and DC9 dates. / allucent_notes: 2025-12-30 09:48 - User: John Capriotti - Date Added: 2025-12-30 09:48 - Note: Due to coordination with DC2 and DC9 and constraints on how many deliveries the vendor can deliver each day/week, including Holiday gaps, these are the new dates.Management is
- QTS-39981: allucent_notes_20251230_164549: John Capriotti on 2025-12-30 09:47: Due to coordination with DC2 and DC9 and constraints on how many deliveries the vendor can deliver each day/week, including Holiday gaps, these are the new dates. / Management is aware, meetings held between all buildings to coordinate and these are the dates I was informed we get for DC1 in order to satisfy the DC2 and DC9 dates. / John Capriotti on 2025-12-30 09:48: Due to coordination with DC2 and DC9 and constraints on how many deliveries the vendor can deliver each day/week, including Holiday gaps, these are the new dates. / Management is aware, meetings held between all buildings to coordinate and these are the dates I was informed we get for DC1 in order to satisfy the DC2 and DC9 dates. / allucent_notes: 2025-12-30 09:47 - User: John Capriotti - Date Added: 2025-12-30 09:47 - Note: Due to coordination with DC2 and DC9 and constraints on how many deliveries the vendor can deliver each day/week, including Holiday gaps, these are the new dates.Management is

| ID | WBS | Activity | Duration | Start | Finish | Predecessors | Complete | Planned start | Planned finish | Allucent CSI Group | Project Section | Layton Discipline | Baseline | Project Section-1 | Precon Phase | Contract | Layton Super |
| --- | --- | --- | --- | --- | --- | --- | --- | --- | --- | --- | --- | --- | --- | --- | --- | --- | --- |
|  | 4 | **D23 Lineup** |  | 2025-08-28 | 2026-04-28 |  |  |  |  |  |  |  |  |  |  |  |  |
| QTS-37151 |  | DH 2300 / D23 Lineup // Chiller #1RT40-D23 | 20d | 2025-08-28 A | 2025-09-05 A | QTS-1371 | 100% | 2025-08-28 | 2025-09-25 | 01ADMIN | Preconstruction | Precon | GMP | Preconstruction | OFCI Procurement | BAB |  |
| QTS-36681 |  | DH 2300 / D23 Lineup // Skid #D23 | 20d | 2025-11-14 A | 2025-12-18 A | QTS-1371 | 100% | 2025-11-14 | 2025-12-15 | 01ADMIN | Preconstruction | Precon | GMP | Preconstruction | OFCI Procurement | BAB |  |
| QTS-36541 |  | DH 2300 / D23 Lineup // 225A MOD #D23-02 (Liquid to Chip Support) | 5d | 2025-12-01 A | 2025-12-31 A | QTS-1371 | 100% | 2026-06-26 | 2026-07-02 | 01ADMIN | Preconstruction | Precon | GMP | Preconstruction | OFCI Procurement | BAB | German Leal |
| QTS-36601 |  | DH 2300 / D23 Lineup // 600A MOD #D23-03 (CRAH Support) | 5d | 2025-12-01 A | 2025-12-31 A | QTS-1371 | 100% | 2026-06-26 | 2026-07-02 | 01ADMIN | Preconstruction | Precon | GMP | Preconstruction | OFCI Procurement | BAB | German Leal |
| QTS-40521 |  | DH 2300 / D23 Lineup // Assembly - SCR #GEN-D23 | 20d | 2025-12-03 A | 2026-04-28 A | QTS-1371 | 100% | 2025-12-03 | 2026-01-06 | 01ADMIN | Preconstruction | Precon |  | Preconstruction | OFCI Procurement | BAB | German Leal |
| QTS-37311 |  | DH 2300 / D23 Lineup // 2500KVA Padmount XFMR #D23 | 20d | 2025-12-10 A | 2026-01-05 A | QTS-1371 | 100% | 2025-12-10 | 2026-01-13 | 01ADMIN | Preconstruction | Precon | GMP | Preconstruction | OFCI Procurement | BAB |  |
| QTS-40501 |  | DH 2300 / D23 Lineup // Assembly - Tank #GEN-D23 | 20d | 2025-12-18 A | 2026-03-05 A | QTS-1371 | 100% | 2025-12-18 | 2026-01-22 | 01ADMIN | Preconstruction | Precon |  | Preconstruction | OFCI Procurement | BAB |  |
| QTS-40511 |  | DH 2300 / D23 Lineup // Assembly - Engine #GEN-D23 | 20d | 2025-12-18 A | 2026-03-05 A | QTS-1371 | 100% | 2025-12-18 | 2026-01-22 | 01ADMIN | Preconstruction | Precon |  | Preconstruction | OFCI Procurement | BAB |  |
| QTS-40531 |  | DH 2300 / D23 Lineup // Assembly - Housing #GEN-D23 | 20d | 2025-12-18 A | 2026-03-05 A | QTS-1371 | 100% | 2025-12-18 | 2026-01-22 | 01ADMIN | Preconstruction | Precon |  | Preconstruction | OFCI Procurement | BAB |  |
|  | 5 | **E23 Lineup** |  | 2025-08-28 | 2026-05-28 |  |  |  |  |  |  |  |  |  |  |  |  |
| QTS-37161 |  | DH 2300 / E23 Lineup // Chiller #1RT40-E23 | 20d | 2025-08-28 A | 2025-09-05 A | QTS-1371 | 100% | 2025-08-28 | 2025-09-25 | 01ADMIN | Preconstruction | Precon | GMP | Preconstruction | OFCI Procurement | BAB |  |
| QTS-36551 |  | DH 2300 / E23 Lineup // 225A MOD #E23-02 (Liquid to Chip Support) | 5d | 2025-12-01 A | 2025-12-31 A | QTS-1371 | 100% | 2026-06-26 | 2026-07-02 | 01ADMIN | Preconstruction | Precon | GMP | Preconstruction | OFCI Procurement | BAB | German Leal |
| QTS-36611 |  | DH 2300 / E23 Lineup // 600A MOD #E23-03 (CRAH Support) | 5d | 2025-12-01 A | 2025-12-31 A | QTS-1371 | 100% | 2026-06-26 | 2026-07-02 | 01ADMIN | Preconstruction | Precon | GMP | Preconstruction | OFCI Procurement | BAB | German Leal |
| QTS-40721 |  | DH 2300 / E23 Lineup // Assembly - SCR #GEN-E23 | 20d | 2025-12-03 A | 2026-04-28 A | QTS-1371 | 100% | 2025-12-03 | 2026-01-06 | 01ADMIN | Preconstruction | Precon |  | Preconstruction | OFCI Procurement | BAB | German Leal |
| QTS-37321 |  | DH 2300 / E23 Lineup // 2500KVA Padmount XFMR #E23 | 20d | 2025-12-10 A | 2026-01-05 A | QTS-1371 | 100% | 2025-12-10 | 2026-01-13 | 01ADMIN | Preconstruction | Precon | GMP | Preconstruction | OFCI Procurement | BAB |  |
| QTS-40731 |  | DH 2300 / E23 Lineup // Assembly - Housing #GEN-E23 | 20d | 2025-12-18 A | 2026-03-05 A | QTS-1371 | 100% | 2025-12-19 | 2026-01-23 | 01ADMIN | Preconstruction | Precon |  | Preconstruction | OFCI Procurement | BAB |  |
| QTS-40711 |  | DH 2300 / E23 Lineup // Assembly - Engine #GEN-E23 | 20d | 2025-12-19 A | 2026-03-05 A | QTS-1371 | 100% | 2025-12-19 | 2026-01-23 | 01ADMIN | Preconstruction | Precon |  | Preconstruction | OFCI Procurement | BAB |  |
| QTS-40701 |  | DH 2300 / E23 Lineup // Assembly - Tank #GEN-E23 | 20d | 2025-12-22 A | 2026-03-05 A | QTS-1371 | 100% | 2025-12-19 | 2026-01-23 | 01ADMIN | Preconstruction | Precon |  | Preconstruction | OFCI Procurement | BAB |  |
| QTS-36691 |  | DH 2300 / E23 Lineup // Skid #E23 | 20d | 2026-04-30 A | 2026-05-28 A | QTS-1371 | 100% |  |  | 01ADMIN | Preconstruction | Precon | GMP | Preconstruction | OFCI Procurement | BAB |  |
|  | 6 | **F23 Lineup** |  | 2025-08-28 | 2026-04-28 |  |  |  |  |  |  |  |  |  |  |  |  |
| QTS-37171 |  | DH 2300 / F23 Lineup // Chiller #1RT40-F23 | 20d | 2025-08-28 A | 2025-09-05 A | QTS-1371 | 100% | 2025-08-28 | 2025-09-25 | 01ADMIN | Preconstruction | Precon | GMP | Preconstruction | OFCI Procurement | BAB |  |
| QTS-36561 |  | DH 2300 / F23 Lineup // 225A MOD #F23-02 (Liquid to Chip Support) | 5d | 2025-12-01 A | 2025-12-31 A | QTS-1371 | 100% | 2026-06-26 | 2026-07-02 | 01ADMIN | Preconstruction | Precon | GMP | Preconstruction | OFCI Procurement | BAB | German Leal |
| QTS-36621 |  | DH 2300 / F23 Lineup // 600A MOD #F23-03 (CRAH Support) | 5d | 2025-12-01 A | 2025-12-31 A | QTS-1371 | 100% | 2026-06-26 | 2026-07-02 | 01ADMIN | Preconstruction | Precon | GMP | Preconstruction | OFCI Procurement | BAB | German Leal |
| QTS-36701 |  | DH 2300 / F23 Lineup // Skid #F23 | 20d | 2025-12-01 A | 2025-12-31 A | QTS-1371 | 100% | 2026-06-24 | 2026-07-22 | 01ADMIN | Preconstruction | Precon | GMP | Preconstruction | OFCI Procurement | BAB | German Leal |
| QTS-40921 |  | DH 2300 / F23 Lineup // Assembly - SCR #GEN-F23 | 20d | 2025-12-03 A | 2026-04-28 A | QTS-1371 | 100% | 2025-12-03 | 2026-01-06 | 01ADMIN | Preconstruction | Precon |  | Preconstruction | OFCI Procurement | BAB | German Leal |
| QTS-37331 |  | DH 2300 / F23 Lineup // 2500KVA Padmount XFMR #F23 | 20d | 2025-12-10 A | 2025-12-29 A | QTS-1371 | 100% | 2025-12-10 | 2026-01-13 | 01ADMIN | Preconstruction | Precon | GMP | Preconstruction | OFCI Procurement | BAB |  |
| QTS-40901 |  | DH 2300 / F23 Lineup // Assembly - Tank #GEN-F23 | 20d | 2025-12-17 A | 2026-03-05 A | QTS-1371 | 100% | 2025-12-22 | 2026-01-26 | 01ADMIN | Preconstruction | Precon |  | Preconstruction | OFCI Procurement | BAB |  |
| QTS-40911 |  | DH 2300 / F23 Lineup // Assembly - Engine #GEN-F23 | 20d | 2025-12-17 A | 2026-03-05 A | QTS-1371 | 100% | 2025-12-22 | 2026-01-26 | 01ADMIN | Preconstruction | Precon |  | Preconstruction | OFCI Procurement | BAB |  |
| QTS-40931 |  | DH 2300 / F23 Lineup // Assembly - Housing #GEN-F23 | 20d | 2025-12-17 A | 2026-03-05 A | QTS-1371 | 100% | 2025-12-22 | 2026-01-26 | 01ADMIN | Preconstruction | Precon |  | Preconstruction | OFCI Procurement | BAB |  |

Notes:
- QTS-40521: allucent_notes_20251230_164549: John Capriotti on 2025-12-30 09:51: Due to coordination with DC2 and DC9 and constraints on how many deliveries the vendor can deliver each day/week, including Holiday gaps, these are the new dates. / Management is aware, meetings held between all buildings to coordinate and these are the dates I was informed we get for DC1 in order to satisfy the DC2 and DC9 dates. / allucent_notes: 2025-12-30 09:51 - User: John Capriotti - Date Added: 2025-12-30 09:51 - Note: Due to coordination with DC2 and DC9 and constraints on how many deliveries the vendor can deliver each day/week, including Holiday gaps, these are the new dates.Management is
- QTS-37311: allucent_notes_20251230_164549: John Capriotti on 2025-12-30 08:36: Scheduled for delivery on 1/7/2026 with QTS, confirmed with OEG/Sub that they are ready and have crane scheduled to set. / allucent_notes: 2025-12-30 08:36 - User: John Capriotti - Date Added: 2025-12-30 08:36 - Note: Scheduled for delivery on 1/7/2026 with QTS, confirmed with OEG/Sub that they are ready and have crane scheduled to set.
- QTS-40501: allucent_notes_20251230_164549: John Capriotti on 2025-12-30 09:51: Due to coordination with DC2 and DC9 and constraints on how many deliveries the vendor can deliver each day/week, including Holiday gaps, these are the new dates. / Management is aware, meetings held between all buildings to coordinate and these are the dates I was informed we get for DC1 in order to satisfy the DC2 and DC9 dates. / allucent_notes: 2025-12-30 09:51 - User: John Capriotti - Date Added: 2025-12-30 09:51 - Note: Due to coordination with DC2 and DC9 and constraints on how many deliveries the vendor can deliver each day/week, including Holiday gaps, these are the new dates.Management is
- QTS-40511: allucent_notes_20251230_164549: John Capriotti on 2025-12-30 09:51: Due to coordination with DC2 and DC9 and constraints on how many deliveries the vendor can deliver each day/week, including Holiday gaps, these are the new dates. / Management is aware, meetings held between all buildings to coordinate and these are the dates I was informed we get for DC1 in order to satisfy the DC2 and DC9 dates. / allucent_notes: 2025-12-30 09:51 - User: John Capriotti - Date Added: 2025-12-30 09:51 - Note: Due to coordination with DC2 and DC9 and constraints on how many deliveries the vendor can deliver each day/week, including Holiday gaps, these are the new dates.Management is
- QTS-40531: allucent_notes_20251230_164549: John Capriotti on 2025-12-30 09:51: Due to coordination with DC2 and DC9 and constraints on how many deliveries the vendor can deliver each day/week, including Holiday gaps, these are the new dates. / Management is aware, meetings held between all buildings to coordinate and these are the dates I was informed we get for DC1 in order to satisfy the DC2 and DC9 dates. / allucent_notes: 2025-12-30 09:51 - User: John Capriotti - Date Added: 2025-12-30 09:51 - Note: Due to coordination with DC2 and DC9 and constraints on how many deliveries the vendor can deliver each day/week, including Holiday gaps, these are the new dates.Management is
- QTS-40721: allucent_notes_20251230_164549: John Capriotti on 2025-12-30 09:55: Due to coordination with DC2 and DC9 and constraints on how many deliveries the vendor can deliver each day/week, including Holiday gaps, these are the new dates. / Management is aware, meetings held between all buildings to coordinate and these are the dates I was informed we get for DC1 in order to satisfy the DC2 and DC9 dates. / allucent_notes: 2025-12-30 09:55 - User: John Capriotti - Date Added: 2025-12-30 09:55 - Note: Due to coordination with DC2 and DC9 and constraints on how many deliveries the vendor can deliver each day/week, including Holiday gaps, these are the new dates.Management is
- QTS-37321: allucent_notes_20251230_164549: John Capriotti on 2025-12-30 08:36: Scheduled for delivery on 1/7/2026 with QTS, confirmed with OEG/Sub that they are ready and have crane scheduled to set. / allucent_notes: 2025-12-30 08:36 - User: John Capriotti - Date Added: 2025-12-30 08:36 - Note: Scheduled for delivery on 1/7/2026 with QTS, confirmed with OEG/Sub that they are ready and have crane scheduled to set.
- QTS-40731: allucent_notes_20251230_164549: John Capriotti on 2025-12-30 09:55: Due to coordination with DC2 and DC9 and constraints on how many deliveries the vendor can deliver each day/week, including Holiday gaps, these are the new dates. / Management is aware, meetings held between all buildings to coordinate and these are the dates I was informed we get for DC1 in order to satisfy the DC2 and DC9 dates. / allucent_notes: 2025-12-30 09:55 - User: John Capriotti - Date Added: 2025-12-30 09:55 - Note: Due to coordination with DC2 and DC9 and constraints on how many deliveries the vendor can deliver each day/week, including Holiday gaps, these are the new dates.Management is
- QTS-40711: allucent_notes_20251230_164549: John Capriotti on 2025-12-30 09:54: Due to coordination with DC2 and DC9 and constraints on how many deliveries the vendor can deliver each day/week, including Holiday gaps, these are the new dates. / Management is aware, meetings held between all buildings to coordinate and these are the dates I was informed we get for DC1 in order to satisfy the DC2 and DC9 dates. / allucent_notes: 2025-12-30 09:54 - User: John Capriotti - Date Added: 2025-12-30 09:54 - Note: Due to coordination with DC2 and DC9 and constraints on how many deliveries the vendor can deliver each day/week, including Holiday gaps, these are the new dates.Management is
- QTS-40701: allucent_notes_20251230_164549: John Capriotti on 2025-12-30 09:54: Due to coordination with DC2 and DC9 and constraints on how many deliveries the vendor can deliver each day/week, including Holiday gaps, these are the new dates. / Management is aware, meetings held between all buildings to coordinate and these are the dates I was informed we get for DC1 in order to satisfy the DC2 and DC9 dates. / allucent_notes: 2025-12-30 09:54 - User: John Capriotti - Date Added: 2025-12-30 09:54 - Note: Due to coordination with DC2 and DC9 and constraints on how many deliveries the vendor can deliver each day/week, including Holiday gaps, these are the new dates.Management is
- QTS-40921: allucent_notes_20251230_164549: John Capriotti on 2025-12-30 09:56: Due to coordination with DC2 and DC9 and constraints on how many deliveries the vendor can deliver each day/week, including Holiday gaps, these are the new dates. / Management is aware, meetings held between all buildings to coordinate and these are the dates I was informed we get for DC1 in order to satisfy the DC2 and DC9 dates. / allucent_notes: 2025-12-30 09:56 - User: John Capriotti - Date Added: 2025-12-30 09:56 - Note: Due to coordination with DC2 and DC9 and constraints on how many deliveries the vendor can deliver each day/week, including Holiday gaps, these are the new dates.Management is
- QTS-40901: allucent_notes_20251230_164549: John Capriotti on 2025-12-30 09:56: Due to coordination with DC2 and DC9 and constraints on how many deliveries the vendor can deliver each day/week, including Holiday gaps, these are the new dates. / Management is aware, meetings held between all buildings to coordinate and these are the dates I was informed we get for DC1 in order to satisfy the DC2 and DC9 dates. / allucent_notes: 2025-12-30 09:56 - User: John Capriotti - Date Added: 2025-12-30 09:56 - Note: Due to coordination with DC2 and DC9 and constraints on how many deliveries the vendor can deliver each day/week, including Holiday gaps, these are the new dates.Management is
- QTS-40911: allucent_notes_20251230_164549: John Capriotti on 2025-12-30 09:56: Due to coordination with DC2 and DC9 and constraints on how many deliveries the vendor can deliver each day/week, including Holiday gaps, these are the new dates. / Management is aware, meetings held between all buildings to coordinate and these are the dates I was informed we get for DC1 in order to satisfy the DC2 and DC9 dates. / allucent_notes: 2025-12-30 09:56 - User: John Capriotti - Date Added: 2025-12-30 09:56 - Note: Due to coordination with DC2 and DC9 and constraints on how many deliveries the vendor can deliver each day/week, including Holiday gaps, these are the new dates.Management is
- QTS-40931: allucent_notes_20251230_164549: John Capriotti on 2025-12-30 09:56: Due to coordination with DC2 and DC9 and constraints on how many deliveries the vendor can deliver each day/week, including Holiday gaps, these are the new dates. / Management is aware, meetings held between all buildings to coordinate and these are the dates I was informed we get for DC1 in order to satisfy the DC2 and DC9 dates. / allucent_notes: 2025-12-30 09:56 - User: John Capriotti - Date Added: 2025-12-30 09:56 - Note: Due to coordination with DC2 and DC9 and constraints on how many deliveries the vendor can deliver each day/week, including Holiday gaps, these are the new dates.Management is

| ID | WBS | Activity | Duration | Start | Finish | Predecessors | Complete | Planned start | Planned finish | Allucent CSI Group | Project Section | Layton Discipline | Baseline | Project Section-1 | Precon Phase | Contract | Layton Super |
| --- | --- | --- | --- | --- | --- | --- | --- | --- | --- | --- | --- | --- | --- | --- | --- | --- | --- |
|  | 9 | **R23 Lineup** |  | 2025-08-28 | 2026-04-28 |  |  |  |  |  |  |  |  |  |  |  |  |
| QTS-37181 |  | DH 2300 / R23 Lineup // Chiller #1RT40-R23 | 20d | 2025-08-28 A | 2025-09-05 A | QTS-1371 | 100% | 2025-08-28 | 2025-09-25 | 01ADMIN | Preconstruction | Precon | GMP | Preconstruction | OFCI Procurement | BAB |  |
| QTS-37341 |  | DH 2300 / R23 Lineup // 2500KVA Padmount XFMR #R23 | 20d | 2025-11-03 A | 2025-11-03 A | QTS-1371 | 100% | 2025-12-10 | 2026-01-13 | 01ADMIN | Preconstruction | Precon | GMP | Preconstruction | OFCI Procurement | BAB |  |
| QTS-36631 |  | DH 2300 / R23 Lineup // 600A MOD #R23-03 (CRAH Support) | 5d | 2025-12-01 A | 2025-12-31 A | QTS-1371 | 100% | 2026-06-26 | 2026-07-02 | 01ADMIN | Preconstruction | Precon | GMP | Preconstruction | OFCI Procurement | BAB | German Leal |
| QTS-36641 |  | DH 2300 / R23 Lineup // 225A MOD #R23-02 | 5d | 2025-12-01 A | 2025-12-31 A | QTS-1371 | 100% | 2026-06-26 | 2026-07-02 | 01ADMIN | Preconstruction | Precon | GMP | Preconstruction | OFCI Procurement | BAB | German Leal |
| QTS-41121 |  | DH 2300 / R23 Lineup // Assembly - SCR #GEN-R23 | 20d | 2025-12-03 A | 2026-04-28 A | QTS-1371 | 100% | 2025-12-03 | 2026-01-06 | 01ADMIN | Preconstruction | Precon |  | Preconstruction | OFCI Procurement | BAB | German Leal |
| QTS-41101 |  | DH 2300 / R23 Lineup // Assembly - Tank #GEN-R23 | 20d | 2025-12-17 A | 2026-03-05 A | QTS-1371 | 100% | 2025-12-23 | 2026-01-27 | 01ADMIN | Preconstruction | Precon |  | Preconstruction | OFCI Procurement | BAB |  |
| QTS-41111 |  | DH 2300 / R23 Lineup // Assembly - Engine #GEN-R23 | 20d | 2025-12-17 A | 2026-03-05 A | QTS-1371 | 100% | 2025-12-23 | 2026-01-27 | 01ADMIN | Preconstruction | Precon |  | Preconstruction | OFCI Procurement | BAB |  |
| QTS-41131 |  | DH 2300 / R23 Lineup // Assembly - Housing #GEN-R23 | 20d | 2025-12-17 A | 2026-03-05 A | QTS-1371 | 100% | 2025-12-23 | 2026-01-27 | 01ADMIN | Preconstruction | Precon |  | Preconstruction | OFCI Procurement | BAB |  |
|  | 8 | **Data Hall 1300 (Need By Dates)** |  | 2025-09-08 | 2026-07-08 |  |  |  |  |  |  |  |  |  |  |  |  |
| QTS-38101 |  | DH 1300 / DOAS #01 | 20d | 2025-10-14 A | 2025-12-30 A | QTS-1371 | 100% | 2025-10-14 | 2025-11-10 | 01ADMIN | Preconstruction | Precon | GMP | Preconstruction | OFCI Procurement | BAB |  |
| QTS-38111 |  | DH 1300 / DOAS #02 | 20d | 2025-10-14 A | 2025-12-30 A | QTS-1371 | 100% | 2025-10-14 | 2025-11-10 | 01ADMIN | Preconstruction | Precon | GMP | Preconstruction | OFCI Procurement | BAB |  |
| QTS-37901 |  | DH 1300 / EG CRAH #29 (Electrical Gallery) | 20d | 2025-12-18 A | 2026-07-08 A | QTS-1371 | 100% | 2025-12-18 | 2026-01-22 | 01ADMIN | Preconstruction | Precon | GMP | Preconstruction | OFCI Procurement | BAB | Mechanical |
| QTS-37911 |  | DH 1300 / EG CRAH #30 (Electrical Gallery) | 20d | 2025-12-18 A | 2026-07-08 A | QTS-1371 | 100% | 2025-12-18 | 2026-01-22 | 01ADMIN | Preconstruction | Precon | GMP | Preconstruction | OFCI Procurement | BAB | Mechanical |
| QTS-37921 |  | DH 1300 / EG CRAH #31 (Electrical Gallery) | 20d | 2025-12-18 A | 2026-07-08 A | QTS-1371 | 100% | 2025-12-18 | 2026-01-22 | 01ADMIN | Preconstruction | Precon | GMP | Preconstruction | OFCI Procurement | BAB | Mechanical |
| QTS-37931 |  | DH 1300 / EG CRAH #32 (Electrical Gallery) | 20d | 2025-12-18 A | 2026-07-08 A | QTS-1371 | 100% | 2025-12-18 | 2026-01-22 | 01ADMIN | Preconstruction | Precon | GMP | Preconstruction | OFCI Procurement | BAB | Mechanical |
| QTS-37621 |  | DH 1300 / CRAH #01 | 20d | 2026-01-07 A | 2026-03-10 A | QTS-1371 | 100% | 2026-01-07 | 2026-02-04 | 01ADMIN | Preconstruction | Precon | GMP | Preconstruction | OFCI Procurement | BAB |  |
| QTS-37631 |  | DH 1300 / CRAH #02 | 20d | 2026-01-07 A | 2026-03-10 A | QTS-1371 | 100% | 2026-01-07 | 2026-02-04 | 01ADMIN | Preconstruction | Precon | GMP | Preconstruction | OFCI Procurement | BAB |  |
| QTS-37641 |  | DH 1300 / CRAH #03 | 20d | 2026-01-07 A | 2026-03-10 A | QTS-1371 | 100% | 2026-01-07 | 2026-02-04 | 01ADMIN | Preconstruction | Precon | GMP | Preconstruction | OFCI Procurement | BAB |  |
| QTS-37651 |  | DH 1300 / CRAH #04 | 20d | 2026-01-07 A | 2026-03-10 A | QTS-1371 | 100% | 2026-01-07 | 2026-02-04 | 01ADMIN | Preconstruction | Precon | GMP | Preconstruction | OFCI Procurement | BAB |  |
| QTS-37661 |  | DH 1300 / CRAH #05 | 20d | 2026-01-07 A | 2026-03-10 A | QTS-1371 | 100% | 2026-01-07 | 2026-02-04 | 01ADMIN | Preconstruction | Precon | GMP | Preconstruction | OFCI Procurement | BAB |  |
| QTS-37671 |  | DH 1300 / CRAH #06 | 20d | 2026-01-07 A | 2026-03-10 A | QTS-1371 | 100% | 2026-01-07 | 2026-02-04 | 01ADMIN | Preconstruction | Precon | GMP | Preconstruction | OFCI Procurement | BAB |  |
| QTS-37681 |  | DH 1300 / CRAH #07 | 20d | 2026-01-07 A | 2026-03-10 A | QTS-1371 | 100% | 2026-01-07 | 2026-02-04 | 01ADMIN | Preconstruction | Precon | GMP | Preconstruction | OFCI Procurement | BAB |  |
| QTS-37691 |  | DH 1300 / CRAH #08 | 20d | 2026-01-07 A | 2026-03-10 A | QTS-1371 | 100% | 2026-01-07 | 2026-02-04 | 01ADMIN | Preconstruction | Precon | GMP | Preconstruction | OFCI Procurement | BAB |  |
| QTS-37701 |  | DH 1300 / CRAH #09 | 20d | 2026-01-07 A | 2026-03-10 A | QTS-1371 | 100% | 2026-01-07 | 2026-02-04 | 01ADMIN | Preconstruction | Precon | GMP | Preconstruction | OFCI Procurement | BAB |  |
| QTS-37711 |  | DH 1300 / CRAH #10 | 20d | 2026-01-07 A | 2026-03-10 A | QTS-1371 | 100% | 2026-01-07 | 2026-02-04 | 01ADMIN | Preconstruction | Precon | GMP | Preconstruction | OFCI Procurement | BAB |  |
| QTS-37721 |  | DH 1300 / CRAH #11 | 20d | 2026-01-07 A | 2026-03-10 A | QTS-1371 | 100% | 2026-01-07 | 2026-02-04 | 01ADMIN | Preconstruction | Precon | GMP | Preconstruction | OFCI Procurement | BAB |  |
| QTS-37731 |  | DH 1300 / CRAH #12 | 20d | 2026-01-07 A | 2026-03-10 A | QTS-1371 | 100% | 2026-01-07 | 2026-02-04 | 01ADMIN | Preconstruction | Precon | GMP | Preconstruction | OFCI Procurement | BAB |  |
| QTS-37741 |  | DH 1300 / CRAH #13 | 20d | 2026-01-07 A | 2026-03-10 A | QTS-1371 | 100% | 2026-01-07 | 2026-02-04 | 01ADMIN | Preconstruction | Precon | GMP | Preconstruction | OFCI Procurement | BAB |  |
| QTS-37751 |  | DH 1300 / CRAH #14 | 20d | 2026-01-07 A | 2026-03-10 A | QTS-1371 | 100% | 2026-01-07 | 2026-02-04 | 01ADMIN | Preconstruction | Precon | GMP | Preconstruction | OFCI Procurement | BAB |  |
| QTS-37761 |  | DH 1300 / CRAH #15 | 20d | 2026-03-10 A | 2026-03-10 A | QTS-1371 | 100% | 2026-03-10 | 2026-04-06 |  | Preconstruction | Precon | GMP | Preconstruction | OFCI Procurement | BAB |  |
| QTS-37771 |  | DH 1300 / CRAH #16 | 20d | 2026-03-10 A | 2026-03-10 A | QTS-1371 | 100% | 2026-03-10 | 2026-04-06 |  | Preconstruction | Precon | GMP | Preconstruction | OFCI Procurement | BAB |  |
| QTS-37781 |  | DH 1300 / CRAH #17 | 20d | 2026-03-10 A | 2026-03-10 A | QTS-1371 | 100% | 2026-03-10 | 2026-04-06 |  | Preconstruction | Precon | GMP | Preconstruction | OFCI Procurement | BAB |  |
| QTS-37791 |  | DH 1300 / CRAH #18 | 20d | 2026-03-10 A | 2026-03-10 A | QTS-1371 | 100% | 2026-03-10 | 2026-04-06 |  | Preconstruction | Precon | GMP | Preconstruction | OFCI Procurement | BAB |  |
| QTS-37801 |  | DH 1300 / CRAH #19 | 20d | 2026-03-10 A | 2026-03-10 A | QTS-1371 | 100% | 2026-03-10 | 2026-04-06 |  | Preconstruction | Precon | GMP | Preconstruction | OFCI Procurement | BAB |  |
| QTS-37811 |  | DH 1300 / CRAH #20 | 20d | 2026-03-10 A | 2026-03-10 A | QTS-1371 | 100% | 2026-03-10 | 2026-04-06 |  | Preconstruction | Precon | GMP | Preconstruction | OFCI Procurement | BAB |  |
| QTS-37821 |  | DH 1300 / CRAH #21 | 20d | 2026-03-10 A | 2026-03-10 A | QTS-1371 | 100% | 2026-03-10 | 2026-04-06 |  | Preconstruction | Precon | GMP | Preconstruction | OFCI Procurement | BAB |  |
| QTS-37831 |  | DH 1300 / CRAH #22 | 20d | 2026-03-10 A | 2026-03-10 A | QTS-1371 | 100% | 2026-03-10 | 2026-04-06 |  | Preconstruction | Precon | GMP | Preconstruction | OFCI Procurement | BAB |  |
| QTS-37841 |  | DH 1300 / CRAH #23 | 20d | 2026-03-10 A | 2026-03-10 A | QTS-1371 | 100% | 2026-03-10 | 2026-04-06 |  | Preconstruction | Precon | GMP | Preconstruction | OFCI Procurement | BAB |  |
| QTS-37851 |  | DH 1300 / CRAH #24 | 20d | 2026-03-10 A | 2026-03-10 A | QTS-1371 | 100% | 2026-03-10 | 2026-04-06 |  | Preconstruction | Precon | GMP | Preconstruction | OFCI Procurement | BAB |  |
| QTS-37861 |  | DH 1300 / CRAH #25 | 20d | 2026-03-10 A | 2026-03-10 A | QTS-1371 | 100% | 2026-03-10 | 2026-04-06 |  | Preconstruction | Precon | GMP | Preconstruction | OFCI Procurement | BAB |  |
| QTS-37871 |  | DH 1300 / CRAH #26 | 20d | 2026-03-10 A | 2026-03-10 A | QTS-1371 | 100% | 2026-03-10 | 2026-04-06 |  | Preconstruction | Precon | GMP | Preconstruction | OFCI Procurement | BAB |  |
| QTS-37881 |  | DH 1300 / CRAH #27 | 20d | 2026-03-10 A | 2026-03-10 A | QTS-1371 | 100% | 2026-03-10 | 2026-04-06 |  | Preconstruction | Precon | GMP | Preconstruction | OFCI Procurement | BAB |  |
| QTS-37891 |  | DH 1300 / CRAH #28 | 20d | 2026-03-10 A | 2026-03-10 A | QTS-1371 | 100% | 2026-03-10 | 2026-04-06 |  | Preconstruction | Precon | GMP | Preconstruction | OFCI Procurement | BAB |  |

Notes:
- QTS-41121: allucent_notes_20251230_164549: John Capriotti on 2025-12-30 09:57: Due to coordination with DC2 and DC9 and constraints on how many deliveries the vendor can deliver each day/week, including Holiday gaps, these are the new dates. / Management is aware, meetings held between all buildings to coordinate and these are the dates I was informed we get for DC1 in order to satisfy the DC2 and DC9 dates. / allucent_notes: 2025-12-30 09:57 - User: John Capriotti - Date Added: 2025-12-30 09:57 - Note: Due to coordination with DC2 and DC9 and constraints on how many deliveries the vendor can deliver each day/week, including Holiday gaps, these are the new dates.Management is
- QTS-41101: allucent_notes_20251230_164549: John Capriotti on 2025-12-30 09:57: Due to coordination with DC2 and DC9 and constraints on how many deliveries the vendor can deliver each day/week, including Holiday gaps, these are the new dates. / Management is aware, meetings held between all buildings to coordinate and these are the dates I was informed we get for DC1 in order to satisfy the DC2 and DC9 dates. / allucent_notes: 2025-12-30 09:57 - User: John Capriotti - Date Added: 2025-12-30 09:57 - Note: Due to coordination with DC2 and DC9 and constraints on how many deliveries the vendor can deliver each day/week, including Holiday gaps, these are the new dates.Management is
- QTS-41111: allucent_notes_20251230_164549: John Capriotti on 2025-12-30 09:57: Due to coordination with DC2 and DC9 and constraints on how many deliveries the vendor can deliver each day/week, including Holiday gaps, these are the new dates. / Management is aware, meetings held between all buildings to coordinate and these are the dates I was informed we get for DC1 in order to satisfy the DC2 and DC9 dates. / allucent_notes: 2025-12-30 09:57 - User: John Capriotti - Date Added: 2025-12-30 09:57 - Note: Due to coordination with DC2 and DC9 and constraints on how many deliveries the vendor can deliver each day/week, including Holiday gaps, these are the new dates.Management is
- QTS-41131: allucent_notes_20251230_164549: John Capriotti on 2025-12-30 09:57: Due to coordination with DC2 and DC9 and constraints on how many deliveries the vendor can deliver each day/week, including Holiday gaps, these are the new dates. / Management is aware, meetings held between all buildings to coordinate and these are the dates I was informed we get for DC1 in order to satisfy the DC2 and DC9 dates. / allucent_notes: 2025-12-30 09:57 - User: John Capriotti - Date Added: 2025-12-30 09:57 - Note: Due to coordination with DC2 and DC9 and constraints on how many deliveries the vendor can deliver each day/week, including Holiday gaps, these are the new dates.Management is
- QTS-38101: allucent_notes_20251216_165335: Jason Johnston on 2025-11-11 17:11: John owes 11/11 update / allucent_notes_20251209_203830: Jason Johnston on 2025-11-11 17:11: John owes 11/11 update / allucent_notes_20251202_153722: Jason Johnston on 2025-11-11 17:11: John owes 11/11 update / allucent_notes_20251118_192630: Jason Johnston on 2025-11-11 17:11: John owes 11/11 update / allucent_notes_20251111_182405: Jason Johnston on 2025-11-11 17:11: John owes 11/11 update / allucent_notes_20251230_164549: Jason Johnston on 2025-11-11 17:11: John owes 11/11 update / John Capriotti on 2025-12-30T15:31:35.548Z: Actualizing ROJ: DOAS delivered to QAE yard on 10/2 - technically have it just not delivered to the site from QAE yard until I can confirm set date / allucent_notes: 2025-11-11 17:11 - User: Jason Johnston - Date Added: 2025-11-11 17:11 - Note: John owes 11/11 update / 2025-12-30T15:31:35.548Z - User: John Capriotti - Date Added: 2025-12-30T15:31:35.548Z - Note: Actualizing ROJ: DOAS delivered to QAE yard on 10/2 - t
- QTS-38111: allucent_notes_20251216_165335: Jason Johnston on 2025-11-11 17:11: John owes 11/11 update / allucent_notes_20251209_203830: Jason Johnston on 2025-11-11 17:11: John owes 11/11 update / allucent_notes_20251202_153722: Jason Johnston on 2025-11-11 17:11: John owes 11/11 update / allucent_notes_20251118_192630: Jason Johnston on 2025-11-11 17:11: John owes 11/11 update / allucent_notes_20251111_182405: Jason Johnston on 2025-11-11 17:11: John owes 11/11 update / allucent_notes_20251230_164549: Jason Johnston on 2025-11-11 17:11: John owes 11/11 update / John Capriotti on 2025-12-30T15:31:42.967Z: Actualizing ROJ: DOAS delivered to QAE yard on 10/2 - technically have it just not delivered to the site from QAE yard until I can confirm set date / allucent_notes: 2025-11-11 17:11 - User: Jason Johnston - Date Added: 2025-11-11 17:11 - Note: John owes 11/11 update / 2025-12-30T15:31:42.967Z - User: John Capriotti - Date Added: 2025-12-30T15:31:42.967Z - Note: Actualizing ROJ: DOAS delivered to QAE yard on 10/2 - t

| ID | WBS | Activity | Duration | Start | Finish | Predecessors | Complete | Planned start | Planned finish | Allucent CSI Group | Project Section | Layton Discipline | Baseline | Project Section-1 | Precon Phase | Contract | Layton Super | Fragnet | Owner Impact Analysis | Fragnet Responsible Party |
| --- | --- | --- | --- | --- | --- | --- | --- | --- | --- | --- | --- | --- | --- | --- | --- | --- | --- | --- | --- | --- |
|  | 1 | **A13 Lineup** |  | 2025-09-08 | 2026-05-28 |  |  |  |  |  |  |  |  |  |  |  |  |  |  |  |
| QTS-37961 |  | DH 1300 / A13 Lineup // Chiller #1RT40-A13 | 20d | 2025-09-08 A | 2025-09-09 A | QTS-1371 | 100% | 2025-09-10 | 2025-10-07 | 01ADMIN | Preconstruction | Precon | GMP | Preconstruction | OFCI Procurement | BAB |  |  |  |  |
| QTS-38121 |  | DH 1300 / A13 Lineup // 2500KVA Padmount XFMR #A13 | 20d | 2025-12-03 A | 2025-12-29 A | QTS-1371 | 100% | 2025-12-03 | 2026-01-06 | 01ADMIN | Preconstruction | Precon | GMP | Preconstruction | OFCI Procurement | BAB |  |  |  |  |
| QTS-40361 |  | DH 1300 / A13 Lineup // Assembly - SCR #GEN-A13 | 20d | 2025-12-03 A | 2026-04-28 A | QTS-1371 | 100% | 2025-12-03 | 2026-01-06 | 01ADMIN | Preconstruction | Precon |  | Preconstruction | OFCI Procurement | BAB | German Leal |  |  |  |
| QTS-40351 |  | DH 1300 / A13 Lineup // Assembly - Engine #GEN-A13 | 20d | 2025-12-17 A | 2026-03-05 A | QTS-1371 | 100% | 2025-12-22 | 2026-01-26 | 01ADMIN | Preconstruction | Precon |  | Preconstruction | OFCI Procurement | BAB |  |  |  |  |
| QTS-37491 |  | DH 1300 / A13 Lineup // Skid #A13 | 20d | 2025-12-18 A | 2026-05-28 A | QTS-1371 | 100% | 2025-12-18 | 2026-01-22 | 01ADMIN | Preconstruction | Precon | GMP | Preconstruction | OFCI Procurement | BAB |  |  |  |  |
| QTS-40341 |  | DH 1300 / A13 Lineup // Assembly - Tank #GEN-A13 | 20d | 2025-12-22 A | 2026-03-05 A | QTS-1371 | 100% | 2025-12-22 | 2026-01-26 | 01ADMIN | Preconstruction | Precon |  | Preconstruction | OFCI Procurement | BAB |  |  |  |  |
| QTS-40371 |  | DH 1300 / A13 Lineup // Assembly - Housing #GEN-A13 | 20d | 2025-12-22 A | 2026-03-05 A | QTS-1371 | 100% | 2025-12-22 | 2026-01-26 | 01ADMIN | Preconstruction | Precon |  | Preconstruction | OFCI Procurement | BAB |  |  |  |  |
| QTS-37351 |  | DH 1300 / A13 Lineup // 1300A MOD #A13-02 (Liquid to Chip Support) | 20d | 2026-01-12 A | 2026-01-12 A | QTS-1371 | 100% | 2026-01-20 | 2026-02-16 | 01ADMIN | Preconstruction | Precon | GMP | Preconstruction | OFCI Procurement | BAB |  |  |  |  |
| QTS-37411 |  | DH 1300 / A13 Lineup // 600A MOD #A13-03 (CRAH Support) | 20d | 2026-01-12 A | 2026-01-12 A | QTS-1371 | 100% | 2026-01-20 | 2026-02-16 | 01ADMIN | Preconstruction | Precon | GMP | Preconstruction | OFCI Procurement | BAB |  |  |  |  |
|  | 2 | **B13 Lineup** |  | 2025-09-08 | 2026-04-28 |  |  |  |  |  |  |  |  |  |  |  |  |  |  |  |
| QTS-37971 |  | DH 1300 / B13 Lineup // Chiller #1RT40-B13 | 20d | 2025-09-08 A | 2025-09-09 A | QTS-1371 | 100% | 2025-09-10 | 2025-10-07 | 01ADMIN | Preconstruction | Precon | GMP | Preconstruction | OFCI Procurement | BAB |  |  |  |  |
| QTS-40211 |  | DH 1300 / B13 Lineup // Assembly - Housing #GEN-B13 | 20d | 2025-11-17 A | 2026-03-05 A | QTS-1371 | 100% | 2025-12-23 | 2026-01-27 | 01ADMIN | Preconstruction | Precon |  | Preconstruction | OFCI Procurement | BAB |  |  |  |  |
| QTS-40181 |  | DH 1300 / B13 Lineup // Assembly - Tank #GEN-B13 | 20d | 2025-11-19 A | 2026-03-05 A | QTS-1371 | 100% | 2025-12-23 | 2026-01-27 | 01ADMIN | Preconstruction | Precon |  | Preconstruction | OFCI Procurement | BAB |  |  |  |  |
| QTS-40191 |  | DH 1300 / B13 Lineup // Assembly - Engine #GEN-B13 | 20d | 2025-12-17 A | 2026-03-05 A | QTS-1371 | 100% | 2025-12-23 | 2026-01-27 | 01ADMIN | Preconstruction | Precon |  | Preconstruction | OFCI Procurement | BAB |  |  |  |  |
| QTS-37501 |  | DH 1300 / B13 Lineup // Skid #B13 | 20d | 2025-12-29 A | 2026-01-12 A | QTS-1371 | 100% | 2025-12-29 | 2026-01-28 | 01ADMIN | Preconstruction | Precon | GMP | Preconstruction | OFCI Procurement | BAB |  |  |  |  |
| QTS-37361 |  | DH 1300 / B13 Lineup // 1300A MOD #B13-02 (Liquid to Chip Support) | 20d | 2026-01-12 A | 2026-01-12 A | QTS-1371 | 100% | 2026-01-20 | 2026-02-16 | 01ADMIN | Preconstruction | Precon | GMP | Preconstruction | OFCI Procurement | BAB |  |  |  |  |
| QTS-37421 |  | DH 1300 / B13 Lineup // 600A MOD #B13-03 (CRAH Support) | 20d | 2026-01-12 A | 2026-01-12 A | QTS-1371 | 100% | 2026-01-20 | 2026-02-16 | 01ADMIN | Preconstruction | Precon | GMP | Preconstruction | OFCI Procurement | BAB |  |  |  |  |
|  | 2 | **Fragnet / OFCI Transformer Delay** |  | 2026-04-03 | 2026-04-21 |  |  |  |  |  |  |  |  |  |  |  |  |  |  |  |
| QTS-1009940 |  | Fragnet / DH 1300 / B13 Lineup // Incorrect Transformer Delivered to Site | 1d | 2026-04-03 A | 2026-04-03 A | QTS-1371 SS | 100% |  |  | 01ADMIN | Preconstruction | Precon | GMP | Preconstruction | OFCI Procurement | BAB |  | Fragnet | Y | Virginia Transformer Corporation |
| QTS-1009950 |  | Fragnet / DH 1300 / B13 Lineup // QTS to Deliver Correct Transformer to Site | 84d | 2026-04-06 A | 2026-04-21 A | QTS-1009940 | 100% | 2026-04-03 | 2026-07-31 | 01ADMIN | Preconstruction | Precon | GMP | Preconstruction | OFCI Procurement | BAB |  | Fragnet |  | Quality Technology Services |
|  | 1 | **Existing Scope** |  | 2025-12-03 | 2026-04-28 |  |  |  |  |  |  |  |  |  |  |  |  |  |  |  |
| QTS-38131 |  | DH 1300 / B13 Lineup // 2500KVA Padmount XFMR #B13 | 20d | 2025-12-03 A | 2026-02-23 A | QTS-1371 | 100% | 2025-12-03 | 2026-01-06 | 01ADMIN | Preconstruction | Precon | GMP | Preconstruction | OFCI Procurement | BAB |  |  |  |  |
| QTS-40201 |  | DH 1300 / B13 Lineup // Assembly - SCR #GEN-B13 | 20d | 2025-12-03 A | 2026-04-28 A | QTS-1371 | 100% | 2025-12-03 | 2026-01-06 | 01ADMIN | Preconstruction | Precon |  | Preconstruction | OFCI Procurement | BAB | German Leal |  |  |  |
| QTS-1010400 |  | DH 1300 / B13 Lineup // 2500KVA Padmount XFMR #B13 - Redelivery | 1d | 2026-04-22 A | 2026-04-22 A | QTS-1009950 | 100% |  |  | 01ADMIN | Preconstruction | Precon | GMP | Preconstruction | OFCI Procurement | BAB |  |  |  |  |

Notes:
- QTS-40361: allucent_notes_20251230_164549: John Capriotti on 2025-12-30 08:50: Due to coordination with DC2 and DC9 and constraints on how many deliveries the vendor can deliver each day/week, including Holiday gaps, these are the new dates. / Management is aware, meetings held between all buildings to coordinate and these are the dates I was informed we get for DC1 in order to satisfy the DC2 and DC9 dates. / allucent_notes: 2025-12-30 08:50 - User: John Capriotti - Date Added: 2025-12-30 08:50 - Note: Due to coordination with DC2 and DC9 and constraints on how many deliveries the vendor can deliver each day/week, including Holiday gaps, these are the new dates.Management is
- QTS-40351: allucent_notes_20251230_164549: John Capriotti on 2025-12-30 08:48: Due to coordination with DC2 and DC9 and constraints on how many deliveries the vendor can deliver each day/week, including Holiday gaps, these are the new dates. / Management is aware, meetings held between all buildings to coordinate and these are the dates I was informed we get for DC1 in order to satisfy the DC2 and DC9 dates. / allucent_notes: 2025-12-30 08:48 - User: John Capriotti - Date Added: 2025-12-30 08:48 - Note: Due to coordination with DC2 and DC9 and constraints on how many deliveries the vendor can deliver each day/week, including Holiday gaps, these are the new dates.Management is
- QTS-40341: allucent_notes_20251230_164549: John Capriotti on 2025-12-30 08:48: Due to coordination with DC2 and DC9 and constraints on how many deliveries the vendor can deliver each day/week, including Holiday gaps, these are the new dates. / Management is aware, meetings held between all buildings to coordinate and these are the dates I was informed we get for DC1 in order to satisfy the DC2 and DC9 dates. / allucent_notes: 2025-12-30 08:48 - User: John Capriotti - Date Added: 2025-12-30 08:48 - Note: Due to coordination with DC2 and DC9 and constraints on how many deliveries the vendor can deliver each day/week, including Holiday gaps, these are the new dates.Management is
- QTS-40371: allucent_notes_20251230_164549: John Capriotti on 2025-12-30 08:49: Due to coordination with DC2 and DC9 and constraints on how many deliveries the vendor can deliver each day/week, including Holiday gaps, these are the new dates. / Management is aware, meetings held between all buildings to coordinate and these are the dates I was informed we get for DC1 in order to satisfy the DC2 and DC9 dates. / allucent_notes: 2025-12-30 08:49 - User: John Capriotti - Date Added: 2025-12-30 08:49 - Note: Due to coordination with DC2 and DC9 and constraints on how many deliveries the vendor can deliver each day/week, including Holiday gaps, these are the new dates.Management is
- QTS-40211: allucent_notes_20251230_164549: John Capriotti on 2025-12-30 09:43: Due to coordination with DC2 and DC9 and constraints on how many deliveries the vendor can deliver each day/week, including Holiday gaps, these are the new dates. / Management is aware, meetings held between all buildings to coordinate and these are the dates I was informed we get for DC1 in order to satisfy the DC2 and DC9 dates. / allucent_notes: 2025-12-30 09:43 - User: John Capriotti - Date Added: 2025-12-30 09:43 - Note: Due to coordination with DC2 and DC9 and constraints on how many deliveries the vendor can deliver each day/week, including Holiday gaps, these are the new dates.Management is
- QTS-40181: allucent_notes_20251230_164549: John Capriotti on 2025-12-30 09:43: Due to coordination with DC2 and DC9 and constraints on how many deliveries the vendor can deliver each day/week, including Holiday gaps, these are the new dates. / Management is aware, meetings held between all buildings to coordinate and these are the dates I was informed we get for DC1 in order to satisfy the DC2 and DC9 dates. / allucent_notes: 2025-12-30 09:43 - User: John Capriotti - Date Added: 2025-12-30 09:43 - Note: Due to coordination with DC2 and DC9 and constraints on how many deliveries the vendor can deliver each day/week, including Holiday gaps, these are the new dates.Management is
- QTS-40191: allucent_notes_20251230_164549: John Capriotti on 2025-12-30 09:43: Due to coordination with DC2 and DC9 and constraints on how many deliveries the vendor can deliver each day/week, including Holiday gaps, these are the new dates. / Management is aware, meetings held between all buildings to coordinate and these are the dates I was informed we get for DC1 in order to satisfy the DC2 and DC9 dates. / allucent_notes: 2025-12-30 09:43 - User: John Capriotti - Date Added: 2025-12-30 09:43 - Note: Due to coordination with DC2 and DC9 and constraints on how many deliveries the vendor can deliver each day/week, including Holiday gaps, these are the new dates.Management is
- QTS-1009940: allucent_notes_20251230_164549: John Capriotti on 2025-12-30 08:36: Scheduled for delivery on 1/7/2026 with QTS, confirmed with OEG/Sub that they are ready and have crane scheduled to set. / Scheduler Notes: John Capriotti on 2025-12-30 08:36: Scheduled for delivery on 1/7/2026 with / QTS, confirmed with OEG/Sub that they are ready and have crane scheduled to / set. / allucent_notes: 2025-12-30 08:36 - User: John Capriotti - Date Added: 2025-12-30 08:36 - Note: Scheduled for delivery on 1/7/2026 with QTS, confirmed with OEG/Sub that they are ready and have crane scheduled to set.
- QTS-1009950: allucent_notes_20251230_164549: John Capriotti on 2025-12-30 08:36: Scheduled for delivery on 1/7/2026 with QTS, confirmed with OEG/Sub that they are ready and have crane scheduled to set. / allucent_notes: 2025-12-30 08:36 - User: John Capriotti - Date Added: 2025-12-30 08:36 - Note: Scheduled for delivery on 1/7/2026 with QTS, confirmed with OEG/Sub that they are ready and have crane scheduled to set.
- QTS-38131: allucent_notes_20251230_164549: John Capriotti on 2025-12-30 08:36: Scheduled for delivery on 1/7/2026 with QTS, confirmed with OEG/Sub that they are ready and have crane scheduled to set. / allucent_notes: 2025-12-30 08:36 - User: John Capriotti - Date Added: 2025-12-30 08:36 - Note: Scheduled for delivery on 1/7/2026 with QTS, confirmed with OEG/Sub that they are ready and have crane scheduled to set.
- QTS-40201: allucent_notes_20251230_164549: John Capriotti on 2025-12-30 09:43: Due to coordination with DC2 and DC9 and constraints on how many deliveries the vendor can deliver each day/week, including Holiday gaps, these are the new dates. / Management is aware, meetings held between all buildings to coordinate and these are the dates I was informed we get for DC1 in order to satisfy the DC2 and DC9 dates. / allucent_notes: 2025-12-30 09:43 - User: John Capriotti - Date Added: 2025-12-30 09:43 - Note: Due to coordination with DC2 and DC9 and constraints on how many deliveries the vendor can deliver each day/week, including Holiday gaps, these are the new dates.Management is
- QTS-1010400: allucent_notes: 2025-12-30 08:36 - User: John Capriotti - Date Added: 2025-12-30 08:36 - Note: Scheduled for delivery on 1/7/2026 with QTS, confirmed with OEG/Sub that they are ready and have crane scheduled to set.

| ID | WBS | Activity | Duration | Start | Finish | Predecessors | Complete | Planned start | Planned finish | Allucent CSI Group | Project Section | Layton Discipline | Baseline | Project Section-1 | Precon Phase | Contract | Layton Super |
| --- | --- | --- | --- | --- | --- | --- | --- | --- | --- | --- | --- | --- | --- | --- | --- | --- | --- |
|  | 3 | **C13 Lineup** |  | 2025-09-08 | 2026-04-28 |  |  |  |  |  |  |  |  |  |  |  |  |
| QTS-37981 |  | DH 1300 / C13 Lineup // Chiller #1RT40-C13 | 20d | 2025-09-08 A | 2025-09-09 A | QTS-1371 | 100% | 2025-09-10 | 2025-10-07 | 01ADMIN | Preconstruction | Precon | GMP | Preconstruction | OFCI Procurement | BAB |  |
| QTS-38141 |  | DH 1300 / C13 Lineup // 2500KVA Padmount XFMR #C13 | 20d | 2025-12-03 A | 2026-01-05 A | QTS-1371 | 100% | 2025-12-03 | 2026-01-06 | 01ADMIN | Preconstruction | Precon | GMP | Preconstruction | OFCI Procurement | BAB |  |
| QTS-40041 |  | DH 1300 / C13 Lineup // Assembly - SCR #GEN-C13 | 20d | 2025-12-03 A | 2026-04-28 A | QTS-1371 | 100% | 2025-12-03 | 2026-01-06 | 01ADMIN | Preconstruction | Precon |  | Preconstruction | OFCI Procurement | BAB | German Leal |
| QTS-40021 |  | DH 1300 / C13 Lineup // Assembly - Tank #GEN-C13 | 20d | 2025-12-29 A | 2026-03-05 A | QTS-1371 | 100% | 2025-12-29 | 2026-01-28 | 01ADMIN | Preconstruction | Precon |  | Preconstruction | OFCI Procurement | BAB |  |
| QTS-40031 |  | DH 1300 / C13 Lineup // Assembly - Engine #GEN-C13 | 20d | 2025-12-29 A | 2026-03-05 A | QTS-1371 | 100% | 2025-12-29 | 2026-01-28 | 01ADMIN | Preconstruction | Precon |  | Preconstruction | OFCI Procurement | BAB |  |
| QTS-40051 |  | DH 1300 / C13 Lineup // Assembly - Housing #GEN-C13 | 20d | 2025-12-29 A | 2026-03-05 A | QTS-1371 | 100% | 2025-12-29 | 2026-01-28 | 01ADMIN | Preconstruction | Precon |  | Preconstruction | OFCI Procurement | BAB |  |
| QTS-37371 |  | DH 1300 / C13 Lineup // 1300A MOD #C13-02 (Liquid to Chip Support) | 20d | 2026-01-12 A | 2026-01-12 A | QTS-1371 | 100% | 2026-01-20 | 2026-02-16 | 01ADMIN | Preconstruction | Precon | GMP | Preconstruction | OFCI Procurement | BAB |  |
| QTS-37431 |  | DH 1300 / C13 Lineup // 600A MOD #C13-03 (CRAH Support) | 20d | 2026-01-12 A | 2026-01-12 A | QTS-1371 | 100% | 2026-01-20 | 2026-02-16 | 01ADMIN | Preconstruction | Precon | GMP | Preconstruction | OFCI Procurement | BAB |  |
| QTS-37511 |  | DH 1300 / C13 Lineup // Skid #C13 | 20d | 2026-01-12 A | 2026-01-12 A | QTS-1371 | 100% | 2026-01-22 | 2026-02-18 | 01ADMIN | Preconstruction | Precon | GMP | Preconstruction | OFCI Procurement | BAB |  |
|  | 4 | **D13 Lineup** |  | 2025-09-08 | 2026-04-28 |  |  |  |  |  |  |  |  |  |  |  |  |
| QTS-37991 |  | DH 1300 / D13 Lineup // Chiller #1RT40-D13 | 20d | 2025-09-08 A | 2025-09-10 A | QTS-1371 | 100% | 2025-09-10 | 2025-10-07 | 01ADMIN | Preconstruction | Precon | GMP | Preconstruction | OFCI Procurement | BAB |  |
| QTS-38151 |  | DH 1300 / D13 Lineup // 2500KVA Padmount XFMR #D13 | 20d | 2025-12-03 A | 2026-01-05 A | QTS-1371 | 100% | 2025-12-03 | 2026-01-06 | 01ADMIN | Preconstruction | Precon | GMP | Preconstruction | OFCI Procurement | BAB |  |
| QTS-40561 |  | DH 1300 / D13 Lineup // Assembly - SCR #GEN-D13 | 20d | 2025-12-03 A | 2026-04-28 A | QTS-1371 | 100% | 2025-12-03 | 2026-01-06 | 01ADMIN | Preconstruction | Precon |  | Preconstruction | OFCI Procurement | BAB | German Leal |
| QTS-40541 |  | DH 1300 / D13 Lineup // Assembly - Tank #GEN-D13 | 20d | 2025-12-30 A | 2026-03-05 A | QTS-1371 | 100% | 2025-12-30 | 2026-01-29 | 01ADMIN | Preconstruction | Precon |  | Preconstruction | OFCI Procurement | BAB |  |
| QTS-40551 |  | DH 1300 / D13 Lineup // Assembly - Engine #GEN-D13 | 20d | 2025-12-30 A | 2026-03-05 A | QTS-1371 | 100% | 2025-12-30 | 2026-01-29 | 01ADMIN | Preconstruction | Precon |  | Preconstruction | OFCI Procurement | BAB |  |
| QTS-40571 |  | DH 1300 / D13 Lineup // Assembly - Housing #GEN-D13 | 20d | 2025-12-30 A | 2026-03-05 A | QTS-1371 | 100% | 2025-12-30 | 2026-01-29 | 01ADMIN | Preconstruction | Precon |  | Preconstruction | OFCI Procurement | BAB |  |
| QTS-37381 |  | DH 1300 / D13 Lineup // 1300A MOD #D13-02 (Liquid to Chip Support) | 20d | 2026-01-12 A | 2026-01-12 A | QTS-1371 | 100% | 2026-01-20 | 2026-02-16 | 01ADMIN | Preconstruction | Precon | GMP | Preconstruction | OFCI Procurement | BAB |  |
| QTS-37441 |  | DH 1300 / D13 Lineup // 600A MOD #D13-03 (CRAH Support) | 20d | 2026-01-12 A | 2026-01-12 A | QTS-1371 | 100% | 2026-01-20 | 2026-02-16 | 01ADMIN | Preconstruction | Precon | GMP | Preconstruction | OFCI Procurement | BAB |  |
| QTS-37521 |  | DH 1300 / D13 Lineup // Skid #D13 | 20d | 2026-01-12 A | 2026-01-12 A | QTS-1371 | 100% | 2026-01-27 | 2026-02-23 |  | Preconstruction | Precon | GMP | Preconstruction | OFCI Procurement | BAB |  |
|  | 5 | **E13 Lineup** |  | 2025-09-08 | 2026-04-28 |  |  |  |  |  |  |  |  |  |  |  |  |
| QTS-38001 |  | DH 1300 / E13 Lineup // Chiller #1RT40-E13 | 20d | 2025-09-08 A | 2025-09-10 A | QTS-1371 | 100% | 2025-09-10 | 2025-10-07 | 01ADMIN | Preconstruction | Precon | GMP | Preconstruction | OFCI Procurement | BAB |  |
| QTS-38161 |  | DH 1300 / E13 Lineup // 2500KVA Padmount XFMR #E13 | 20d | 2025-12-03 A | 2025-12-29 A | QTS-1371 | 100% | 2025-12-03 | 2026-01-06 | 01ADMIN | Preconstruction | Precon | GMP | Preconstruction | OFCI Procurement | BAB |  |
| QTS-40761 |  | DH 1300 / E13 Lineup // Assembly - SCR #GEN-E13 | 20d | 2025-12-03 A | 2026-04-28 A | QTS-1371 | 100% | 2025-12-03 | 2026-01-06 | 01ADMIN | Preconstruction | Precon |  | Preconstruction | OFCI Procurement | BAB | German Leal |
| QTS-40741 |  | DH 1300 / E13 Lineup // Assembly - Tank #GEN-E13 | 20d | 2025-12-17 A | 2026-03-05 A | QTS-1371 | 100% | 2025-12-31 | 2026-01-30 | 01ADMIN | Preconstruction | Precon |  | Preconstruction | OFCI Procurement | BAB |  |
| QTS-40751 |  | DH 1300 / E13 Lineup // Assembly - Engine #GEN-E13 | 20d | 2025-12-17 A | 2026-03-05 A | QTS-1371 | 100% | 2025-12-31 | 2026-01-30 | 01ADMIN | Preconstruction | Precon |  | Preconstruction | OFCI Procurement | BAB |  |
| QTS-40771 |  | DH 1300 / E13 Lineup // Assembly - Housing #GEN-E13 | 20d | 2025-12-17 A | 2026-03-05 A | QTS-1371 | 100% | 2025-12-31 | 2026-01-30 | 01ADMIN | Preconstruction | Precon |  | Preconstruction | OFCI Procurement | BAB |  |
| QTS-37391 |  | DH 1300 / E13 Lineup // 1300A MOD #E13-02 (Liquid to Chip Support) | 20d | 2026-01-12 A | 2026-01-12 A | QTS-1371 | 100% | 2026-01-20 | 2026-02-16 | 01ADMIN | Preconstruction | Precon | GMP | Preconstruction | OFCI Procurement | BAB |  |
| QTS-37451 |  | DH 1300 / E13 Lineup // 600A MOD #E13-03 (CRAH Support) | 20d | 2026-01-12 A | 2026-01-12 A | QTS-1371 | 100% | 2026-01-20 | 2026-02-16 | 01ADMIN | Preconstruction | Precon | GMP | Preconstruction | OFCI Procurement | BAB |  |
| QTS-37531 |  | DH 1300 / E13 Lineup // Skid #E13 | 20d | 2026-01-12 A | 2026-01-12 A | QTS-1371 | 100% | 2026-02-02 | 2026-02-27 |  | Preconstruction | Precon | GMP | Preconstruction | OFCI Procurement | BAB |  |

Notes:
- QTS-38141: allucent_notes_20251230_164549: John Capriotti on 2025-12-30 08:36: Scheduled for delivery on 1/7/2026 with QTS, confirmed with OEG/Sub that they are ready and have crane scheduled to set. / allucent_notes: 2025-12-30 08:36 - User: John Capriotti - Date Added: 2025-12-30 08:36 - Note: Scheduled for delivery on 1/7/2026 with QTS, confirmed with OEG/Sub that they are ready and have crane scheduled to set.
- QTS-40041: allucent_notes_20251230_164549: John Capriotti on 2025-12-30 09:46: Due to coordination with DC2 and DC9 and constraints on how many deliveries the vendor can deliver each day/week, including Holiday gaps, these are the new dates. / Management is aware, meetings held between all buildings to coordinate and these are the dates I was informed we get for DC1 in order to satisfy the DC2 and DC9 dates. / allucent_notes: 2025-12-30 09:46 - User: John Capriotti - Date Added: 2025-12-30 09:46 - Note: Due to coordination with DC2 and DC9 and constraints on how many deliveries the vendor can deliver each day/week, including Holiday gaps, these are the new dates.Management is
- QTS-40021: allucent_notes_20251230_164549: John Capriotti on 2025-12-30 09:44: Due to coordination with DC2 and DC9 and constraints on how many deliveries the vendor can deliver each day/week, including Holiday gaps, these are the new dates. / Management is aware, meetings held between all buildings to coordinate and these are the dates I was informed we get for DC1 in order to satisfy the DC2 and DC9 dates. / John Capriotti on 2025-12-30 09:44: Due to coordination with DC2 and DC9 and constraints on how many deliveries the vendor can deliver each day/week, including Holiday gaps, these are the new dates. / Management is aware, meetings held between all buildings to coordinate and these are the dates I was informed we get for DC1 in order to satisfy the DC2 and DC9 dates. / John Capriotti on 2025-12-30 09:45: Due to coordination with DC2 and DC9 and constraints on how many deliveries the vendor can deliver each day/week, including Holiday gaps, these are the new dates. / Management is aware, meetings held between all buildings to coordinate and these are the dates I was informed we get for DC1 in order to satisfy the DC2 and DC9 dates. / John Capriotti on 2025-12-30 09:46: Due to coordination with DC2 and DC9 and constraints on how many deliveries the vendor can deliver each day/week, including Holiday gaps, these are the new dates. / Management is aware, meetings held between all buildings to coordinate and these are the dates I was informed we get for DC1 in order to satisfy the DC2 and DC9 dates. / allucent_notes: 2025-12-30 09:44 - User: John Capriotti - Date Added: 2025-12-30 09:44 - Note: Due to coordination with DC2 and DC9 and constraints on how many deliveries the vendor can deliver each day/week, including Holiday gaps, these are the new dates.Management is
- QTS-40031: allucent_notes_20251230_164549: John Capriotti on 2025-12-30 09:45: Due to coordination with DC2 and DC9 and constraints on how many deliveries the vendor can deliver each day/week, including Holiday gaps, these are the new dates. / Management is aware, meetings held between all buildings to coordinate and these are the dates I was informed we get for DC1 in order to satisfy the DC2 and DC9 dates. / John Capriotti on 2025-12-30 09:46: Due to coordination with DC2 and DC9 and constraints on how many deliveries the vendor can deliver each day/week, including Holiday gaps, these are the new dates. / Management is aware, meetings held between all buildings to coordinate and these are the dates I was informed we get for DC1 in order to satisfy the DC2 and DC9 dates. / allucent_notes: 2025-12-30 09:45 - User: John Capriotti - Date Added: 2025-12-30 09:45 - Note: Due to coordination with DC2 and DC9 and constraints on how many deliveries the vendor can deliver each day/week, including Holiday gaps, these are the new dates.Management is
- QTS-40051: allucent_notes_20251230_164549: John Capriotti on 2025-12-30 09:46: Due to coordination with DC2 and DC9 and constraints on how many deliveries the vendor can deliver each day/week, including Holiday gaps, these are the new dates. / Management is aware, meetings held between all buildings to coordinate and these are the dates I was informed we get for DC1 in order to satisfy the DC2 and DC9 dates. / allucent_notes: 2025-12-30 09:46 - User: John Capriotti - Date Added: 2025-12-30 09:46 - Note: Due to coordination with DC2 and DC9 and constraints on how many deliveries the vendor can deliver each day/week, including Holiday gaps, these are the new dates.Management is
- QTS-38151: allucent_notes_20251230_164549: John Capriotti on 2025-12-30 08:36: Scheduled for delivery on 1/7/2026 with QTS, confirmed with OEG/Sub that they are ready and have crane scheduled to set. / allucent_notes: 2025-12-30 08:36 - User: John Capriotti - Date Added: 2025-12-30 08:36 - Note: Scheduled for delivery on 1/7/2026 with QTS, confirmed with OEG/Sub that they are ready and have crane scheduled to set.
- QTS-40561: allucent_notes_20251230_164549: John Capriotti on 2025-12-30 09:50: Due to coordination with DC2 and DC9 and constraints on how many deliveries the vendor can deliver each day/week, including Holiday gaps, these are the new dates. / Management is aware, meetings held between all buildings to coordinate and these are the dates I was informed we get for DC1 in order to satisfy the DC2 and DC9 dates. / allucent_notes: 2025-12-30 09:50 - User: John Capriotti - Date Added: 2025-12-30 09:50 - Note: Due to coordination with DC2 and DC9 and constraints on how many deliveries the vendor can deliver each day/week, including Holiday gaps, these are the new dates.Management is
- QTS-40541: allucent_notes_20251230_164549: John Capriotti on 2025-12-30 09:49: Due to coordination with DC2 and DC9 and constraints on how many deliveries the vendor can deliver each day/week, including Holiday gaps, these are the new dates. / Management is aware, meetings held between all buildings to coordinate and these are the dates I was informed we get for DC1 in order to satisfy the DC2 and DC9 dates. / allucent_notes: 2025-12-30 09:49 - User: John Capriotti - Date Added: 2025-12-30 09:49 - Note: Due to coordination with DC2 and DC9 and constraints on how many deliveries the vendor can deliver each day/week, including Holiday gaps, these are the new dates.Management is
- QTS-40551: allucent_notes_20251230_164549: John Capriotti on 2025-12-30 09:49: Due to coordination with DC2 and DC9 and constraints on how many deliveries the vendor can deliver each day/week, including Holiday gaps, these are the new dates. / Management is aware, meetings held between all buildings to coordinate and these are the dates I was informed we get for DC1 in order to satisfy the DC2 and DC9 dates. / allucent_notes: 2025-12-30 09:49 - User: John Capriotti - Date Added: 2025-12-30 09:49 - Note: Due to coordination with DC2 and DC9 and constraints on how many deliveries the vendor can deliver each day/week, including Holiday gaps, these are the new dates.Management is
- QTS-40571: allucent_notes_20251230_164549: John Capriotti on 2025-12-30 09:50: Due to coordination with DC2 and DC9 and constraints on how many deliveries the vendor can deliver each day/week, including Holiday gaps, these are the new dates. / Management is aware, meetings held between all buildings to coordinate and these are the dates I was informed we get for DC1 in order to satisfy the DC2 and DC9 dates. / allucent_notes: 2025-12-30 09:50 - User: John Capriotti - Date Added: 2025-12-30 09:50 - Note: Due to coordination with DC2 and DC9 and constraints on how many deliveries the vendor can deliver each day/week, including Holiday gaps, these are the new dates.Management is
- QTS-40761: allucent_notes_20251230_164549: John Capriotti on 2025-12-30 09:52: Due to coordination with DC2 and DC9 and constraints on how many deliveries the vendor can deliver each day/week, including Holiday gaps, these are the new dates. / Management is aware, meetings held between all buildings to coordinate and these are the dates I was informed we get for DC1 in order to satisfy the DC2 and DC9 dates. / allucent_notes: 2025-12-30 09:52 - User: John Capriotti - Date Added: 2025-12-30 09:52 - Note: Due to coordination with DC2 and DC9 and constraints on how many deliveries the vendor can deliver each day/week, including Holiday gaps, these are the new dates.Management is
- QTS-40741: allucent_notes_20251230_164549: John Capriotti on 2025-12-30 09:52: Due to coordination with DC2 and DC9 and constraints on how many deliveries the vendor can deliver each day/week, including Holiday gaps, these are the new dates. / Management is aware, meetings held between all buildings to coordinate and these are the dates I was informed we get for DC1 in order to satisfy the DC2 and DC9 dates. / allucent_notes: 2025-12-30 09:52 - User: John Capriotti - Date Added: 2025-12-30 09:52 - Note: Due to coordination with DC2 and DC9 and constraints on how many deliveries the vendor can deliver each day/week, including Holiday gaps, these are the new dates.Management is
- QTS-40751: allucent_notes_20251230_164549: John Capriotti on 2025-12-30 09:52: Due to coordination with DC2 and DC9 and constraints on how many deliveries the vendor can deliver each day/week, including Holiday gaps, these are the new dates. / Management is aware, meetings held between all buildings to coordinate and these are the dates I was informed we get for DC1 in order to satisfy the DC2 and DC9 dates. / allucent_notes: 2025-12-30 09:52 - User: John Capriotti - Date Added: 2025-12-30 09:52 - Note: Due to coordination with DC2 and DC9 and constraints on how many deliveries the vendor can deliver each day/week, including Holiday gaps, these are the new dates.Management is
- QTS-40771: allucent_notes_20251230_164549: John Capriotti on 2025-12-30 09:52: Due to coordination with DC2 and DC9 and constraints on how many deliveries the vendor can deliver each day/week, including Holiday gaps, these are the new dates. / Management is aware, meetings held between all buildings to coordinate and these are the dates I was informed we get for DC1 in order to satisfy the DC2 and DC9 dates. / allucent_notes: 2025-12-30 09:52 - User: John Capriotti - Date Added: 2025-12-30 09:52 - Note: Due to coordination with DC2 and DC9 and constraints on how many deliveries the vendor can deliver each day/week, including Holiday gaps, these are the new dates.Management is

| ID | WBS | Activity | Duration | Start | Finish | Predecessors | Complete | Planned start | Planned finish | Allucent CSI Group | Project Section | Layton Discipline | Baseline | Project Section-1 | Precon Phase | Contract | Layton Super | Fragnet | Owner Impact Analysis | Fragnet Responsible Party |
| --- | --- | --- | --- | --- | --- | --- | --- | --- | --- | --- | --- | --- | --- | --- | --- | --- | --- | --- | --- | --- |
|  | 6 | **F13 Lineup** |  | 2025-09-08 | 2026-04-28 |  |  |  |  |  |  |  |  |  |  |  |  |  |  |  |
| QTS-38011 |  | DH 1300 / F13 Lineup // Chiller #1RT40-F13 | 20d | 2025-09-08 A | 2025-09-10 A | QTS-1371 | 100% | 2025-09-10 | 2025-10-07 | 01ADMIN | Preconstruction | Precon | GMP | Preconstruction | OFCI Procurement | BAB |  |  |  |  |
| QTS-38171 |  | DH 1300 / F13 Lineup // 2500KVA Padmount XFMR #F13 | 20d | 2025-11-03 A | 2025-11-03 A | QTS-1371 | 100% | 2025-12-03 | 2026-01-06 | 01ADMIN | Preconstruction | Precon | GMP | Preconstruction | OFCI Procurement | BAB |  |  |  |  |
| QTS-40951 |  | DH 1300 / F13 Lineup // Assembly - Engine #GEN-F13 | 20d | 2025-11-18 A | 2026-03-05 A | QTS-1371 | 100% | 2026-01-05 | 2026-02-02 | 01ADMIN | Preconstruction | Precon |  | Preconstruction | OFCI Procurement | BAB |  |  |  |  |
| QTS-40961 |  | DH 1300 / F13 Lineup // Assembly - SCR #GEN-F13 | 20d | 2025-12-03 A | 2026-04-28 A | QTS-1371 | 100% | 2025-12-03 | 2026-01-06 | 01ADMIN | Preconstruction | Precon |  | Preconstruction | OFCI Procurement | BAB | German Leal |  |  |  |
| QTS-40941 |  | DH 1300 / F13 Lineup // Assembly - Tank #GEN-F13 | 20d | 2025-12-17 A | 2026-03-05 A | QTS-1371 | 100% | 2026-01-05 | 2026-02-02 | 01ADMIN | Preconstruction | Precon |  | Preconstruction | OFCI Procurement | BAB |  |  |  |  |
| QTS-40971 |  | DH 1300 / F13 Lineup // Assembly - Housing #GEN-F13 | 20d | 2025-12-17 A | 2026-03-05 A | QTS-1371 | 100% | 2026-01-05 | 2026-02-02 | 01ADMIN | Preconstruction | Precon |  | Preconstruction | OFCI Procurement | BAB |  |  |  |  |
| QTS-37401 |  | DH 1300 / F13 Lineup // 1300A MOD #F13-02 (Liquid to Chip Support) | 20d | 2026-01-12 A | 2026-01-12 A | QTS-1371 | 100% | 2026-01-20 | 2026-02-16 | 01ADMIN | Preconstruction | Precon | GMP | Preconstruction | OFCI Procurement | BAB |  |  |  |  |
| QTS-37461 |  | DH 1300 / F13 Lineup // 600A MOD #F13-03 (CRAH Support) | 20d | 2026-01-12 A | 2026-01-12 A | QTS-1371 | 100% | 2026-01-20 | 2026-02-16 | 01ADMIN | Preconstruction | Precon | GMP | Preconstruction | OFCI Procurement | BAB |  |  |  |  |
| QTS-37541 |  | DH 1300 / F13 Lineup // Skid #F13 | 20d | 2026-01-12 A | 2026-01-12 A | QTS-1371 | 100% | 2026-02-05 | 2026-03-04 |  | Preconstruction | Precon | GMP | Preconstruction | OFCI Procurement | BAB |  |  |  |  |
|  | 9 | **R13 Lineup** |  | 2025-09-08 | 2026-04-28 |  |  |  |  |  |  |  |  |  |  |  |  |  |  |  |
| QTS-38021 |  | DH 1300 / R13 Lineup // Chiller #1RT40-R13 | 20d | 2025-09-08 A | 2025-09-10 A | QTS-1371 | 100% | 2025-09-10 | 2025-10-07 | 01ADMIN | Preconstruction | Precon | GMP | Preconstruction | OFCI Procurement | BAB |  |  |  |  |
| QTS-38181 |  | DH 1300 / R13 Lineup // 2500KVA Padmount XFMR #R13 | 20d | 2025-11-03 A | 2025-11-03 A | QTS-1371 | 100% | 2025-12-03 | 2026-01-06 | 01ADMIN | Preconstruction | Precon | GMP | Preconstruction | OFCI Procurement | BAB |  |  |  |  |
| QTS-41171 |  | DH 1300 / R13 Lineup // Assembly - Housing #GEN-R13 | 20d | 2025-11-24 A | 2026-03-05 A | QTS-1371 | 100% | 2026-01-06 | 2026-02-03 | 01ADMIN | Preconstruction | Precon |  | Preconstruction | OFCI Procurement | BAB |  |  |  |  |
| QTS-41161 |  | DH 1300 / R13 Lineup // Assembly - SCR #GEN-R13 | 20d | 2025-12-03 A | 2026-04-28 A | QTS-1371 | 100% | 2025-12-03 | 2026-01-06 | 01ADMIN | Preconstruction | Precon |  | Preconstruction | OFCI Procurement | BAB | German Leal |  |  |  |
| QTS-41141 |  | DH 1300 / R13 Lineup // Assembly - Tank #GEN-R13 | 20d | 2025-12-17 A | 2026-03-05 A | QTS-1371 | 100% | 2026-01-06 | 2026-02-03 | 01ADMIN | Preconstruction | Precon |  | Preconstruction | OFCI Procurement | BAB |  |  |  |  |
| QTS-41151 |  | DH 1300 / R13 Lineup // Assembly - Engine #GEN-R13 | 20d | 2025-12-17 A | 2026-03-05 A | QTS-1371 | 100% | 2026-01-06 | 2026-02-03 | 01ADMIN | Preconstruction | Precon |  | Preconstruction | OFCI Procurement | BAB |  |  |  |  |
| QTS-37471 |  | DH 1300 / R13 Lineup // 600A MOD #R13-03 (CRAH Support) | 20d | 2026-01-12 A | 2026-01-12 A | QTS-1371 | 100% | 2026-01-20 | 2026-02-16 | 01ADMIN | Preconstruction | Precon | GMP | Preconstruction | OFCI Procurement | BAB |  |  |  |  |
| QTS-37481 |  | DH 1300 / R13 Lineup // 1300A MOD #R13-02 | 20d | 2026-01-12 A | 2026-01-12 A | QTS-1371 | 100% | 2026-01-20 | 2026-02-16 | 01ADMIN | Preconstruction | Precon | GMP | Preconstruction | OFCI Procurement | BAB |  |  |  |  |
|  | 11 | **Fragnet / Zone 3 // Pods** |  | 2025-11-06 | 2026-02-17 |  |  |  |  |  |  |  |  |  |  |  |  |  |  |  |
| QTS-120380 |  | Fragnet / Zone 3 POD Delivery Delay | 20d | 2025-11-06 A | 2026-02-10 A | QTS-120410 | 100% | 2025-11-06 | 2025-12-05 | 01ADMIN | Preconstruction | Precon | GMP | Preconstruction | OFCI Procurement | BAB |  | Fragnet | Y | Quality Technology Services |
| QTS-36711 |  | Fragnet / DH 2300 / A23 Lineup // UPS Container #A23 | 20d | 2026-01-14 A | 2026-02-16 A | QTS-120380 FF, QTS-1371 | 100% | 2026-01-21 | 2026-02-17 | 01ADMIN | Preconstruction | Precon | GMP | Preconstruction | OFCI Procurement | BAB |  | Fragnet | Y | Quality Technology Services |
| QTS-36721 |  | Fragnet / DH 2300 / B23 Lineup // UPS Container #B23 | 20d | 2026-01-14 A | 2026-02-16 A | QTS-120380 FF+1d, QTS-1371 | 100% | 2026-01-21 | 2026-02-17 | 01ADMIN | Preconstruction | Precon | GMP | Preconstruction | OFCI Procurement | BAB |  | Fragnet | Y | Quality Technology Services |
| QTS-36731 |  | Fragnet / DH 2300 / C23 Lineup // UPS Container #C23 | 20d | 2026-01-14 A | 2026-02-16 A | QTS-120380 FF+1d, QTS-1371 | 100% | 2026-01-21 | 2026-02-17 |  | Preconstruction | Precon | GMP | Preconstruction | OFCI Procurement | BAB |  | Fragnet | Y | Quality Technology Services |
| QTS-36741 |  | Fragnet / DH 2300 / D23 Lineup // UPS Container #D23 | 20d | 2026-01-14 A | 2026-02-16 A | QTS-120380 FF+1d, QTS-1371 | 100% | 2026-01-21 | 2026-02-17 |  | Preconstruction | Precon | GMP | Preconstruction | OFCI Procurement | BAB |  | Fragnet | Y | Quality Technology Services |
| QTS-36751 |  | Fragnet / DH 2300 / E23 Lineup // UPS Container #E23 | 20d | 2026-01-14 A | 2026-02-16 A | QTS-120380 FF+1d, QTS-1371 | 100% | 2026-01-21 | 2026-02-17 |  | Preconstruction | Precon | GMP | Preconstruction | OFCI Procurement | BAB |  | Fragnet | Y | Quality Technology Services |
| QTS-36761 |  | Fragnet / DH 2300 / F23 Lineup // UPS Container #F23 | 20d | 2026-01-14 A | 2026-02-16 A | QTS-120380 FF+2d, QTS-1371 | 100% | 2026-01-21 | 2026-02-17 |  | Preconstruction | Precon | GMP | Preconstruction | OFCI Procurement | BAB |  | Fragnet | Y | Quality Technology Services |
| QTS-36771 |  | Fragnet / DH 2300 / R23 Lineup // UPS Container #R23 | 20d | 2026-01-14 A | 2026-02-16 A | QTS-120380 FF+2d, QTS-1371 | 100% | 2026-01-21 | 2026-02-17 |  | Preconstruction | Precon | GMP | Preconstruction | OFCI Procurement | BAB |  | Fragnet | Y | Quality Technology Services |
| QTS-37551 |  | Fragnet / DH 1300 / A13 Lineup // UPS Container #A13 | 20d | 2026-01-14 A | 2026-02-17 A | QTS-120380 FF, QTS-1371 | 100% | 2026-01-21 | 2026-02-17 | 01ADMIN | Preconstruction | Precon | GMP | Preconstruction | OFCI Procurement | BAB |  | Fragnet | Y | Quality Technology Services |
| QTS-37561 |  | Fragnet / DH 1300 / B13 Lineup // UPS Container #B13 | 20d | 2026-01-14 A | 2026-02-17 A | QTS-120380 FF+2d, QTS-1371 | 100% | 2026-01-21 | 2026-02-17 | 01ADMIN | Preconstruction | Precon | GMP | Preconstruction | OFCI Procurement | BAB |  | Fragnet | Y | Quality Technology Services |
| QTS-37571 |  | Fragnet / DH 1300 / C13 Lineup // UPS Container #C13 | 20d | 2026-01-14 A | 2026-02-17 A | QTS-120380 FF+2d, QTS-1371 | 100% | 2026-01-21 | 2026-02-17 | 01ADMIN | Preconstruction | Precon | GMP | Preconstruction | OFCI Procurement | BAB |  | Fragnet | Y | Quality Technology Services |
| QTS-37581 |  | Fragnet / DH 1300 / D13 Lineup // UPS Container #D13 | 20d | 2026-01-14 A | 2026-02-17 A | QTS-120380 FF+1d, QTS-1371 | 100% | 2026-01-21 | 2026-02-17 |  | Preconstruction | Precon | GMP | Preconstruction | OFCI Procurement | BAB |  | Fragnet | Y | Quality Technology Services |
| QTS-37591 |  | Fragnet / DH 1300 / E13 Lineup // UPS Container #E13 | 20d | 2026-01-14 A | 2026-02-17 A | QTS-120380 FF+1d, QTS-1371 | 100% | 2026-01-21 | 2026-02-17 |  | Preconstruction | Precon | GMP | Preconstruction | OFCI Procurement | BAB |  | Fragnet | Y | Quality Technology Services |
| QTS-37601 |  | Fragnet / DH 1300 / F13 Lineup // UPS Container #F13 | 20d | 2026-01-14 A | 2026-02-17 A | QTS-120380 FF+2d, QTS-1371 | 100% | 2026-01-21 | 2026-02-17 |  | Preconstruction | Precon | GMP | Preconstruction | OFCI Procurement | BAB |  | Fragnet | Y | Quality Technology Services |
| QTS-37611 |  | Fragnet / DH 1300 / R13 Lineup // UPS Container #R13 | 20d | 2026-01-14 A | 2026-02-17 A | QTS-120380 FF, QTS-1371 | 100% | 2026-01-21 | 2026-02-17 | 01ADMIN | Preconstruction | Precon | GMP | Preconstruction | OFCI Procurement | BAB |  | Fragnet | Y | Quality Technology Services |

Notes:
- QTS-40951: allucent_notes_20251230_164549: John Capriotti on 2025-12-30 09:53: Due to coordination with DC2 and DC9 and constraints on how many deliveries the vendor can deliver each day/week, including Holiday gaps, these are the new dates. / Management is aware, meetings held between all buildings to coordinate and these are the dates I was informed we get for DC1 in order to satisfy the DC2 and DC9 dates. / allucent_notes: 2025-12-30 09:53 - User: John Capriotti - Date Added: 2025-12-30 09:53 - Note: Due to coordination with DC2 and DC9 and constraints on how many deliveries the vendor can deliver each day/week, including Holiday gaps, these are the new dates.Management is
- QTS-40961: allucent_notes_20251230_164549: John Capriotti on 2025-12-30 09:53: Due to coordination with DC2 and DC9 and constraints on how many deliveries the vendor can deliver each day/week, including Holiday gaps, these are the new dates. / Management is aware, meetings held between all buildings to coordinate and these are the dates I was informed we get for DC1 in order to satisfy the DC2 and DC9 dates. / allucent_notes: 2025-12-30 09:53 - User: John Capriotti - Date Added: 2025-12-30 09:53 - Note: Due to coordination with DC2 and DC9 and constraints on how many deliveries the vendor can deliver each day/week, including Holiday gaps, these are the new dates.Management is
- QTS-40941: allucent_notes_20251230_164549: John Capriotti on 2025-12-30 09:53: Due to coordination with DC2 and DC9 and constraints on how many deliveries the vendor can deliver each day/week, including Holiday gaps, these are the new dates. / Management is aware, meetings held between all buildings to coordinate and these are the dates I was informed we get for DC1 in order to satisfy the DC2 and DC9 dates. / allucent_notes: 2025-12-30 09:53 - User: John Capriotti - Date Added: 2025-12-30 09:53 - Note: Due to coordination with DC2 and DC9 and constraints on how many deliveries the vendor can deliver each day/week, including Holiday gaps, these are the new dates.Management is
- QTS-40971: allucent_notes_20251230_164549: John Capriotti on 2025-12-30 09:53: Due to coordination with DC2 and DC9 and constraints on how many deliveries the vendor can deliver each day/week, including Holiday gaps, these are the new dates. / Management is aware, meetings held between all buildings to coordinate and these are the dates I was informed we get for DC1 in order to satisfy the DC2 and DC9 dates. / allucent_notes: 2025-12-30 09:53 - User: John Capriotti - Date Added: 2025-12-30 09:53 - Note: Due to coordination with DC2 and DC9 and constraints on how many deliveries the vendor can deliver each day/week, including Holiday gaps, these are the new dates.Management is
- QTS-41171: allucent_notes_20251230_164549: John Capriotti on 2025-12-30 08:51: Due to coordination with DC2 and DC9 and constraints on how many deliveries the vendor can deliver each day/week, including Holiday gaps, these are the new dates. / Management is aware, meetings held between all buildings to coordinate and these are the dates I was informed we get for DC1 in order to satisfy the DC2 and DC9 dates. / allucent_notes: 2025-12-30 08:51 - User: John Capriotti - Date Added: 2025-12-30 08:51 - Note: Due to coordination with DC2 and DC9 and constraints on how many deliveries the vendor can deliver each day/week, including Holiday gaps, these are the new dates.Management is
- QTS-41161: allucent_notes_20251230_164549: John Capriotti on 2025-12-30 08:52: Due to coordination with DC2 and DC9 and constraints on how many deliveries the vendor can deliver each day/week, including Holiday gaps, these are the new dates. / Management is aware, meetings held between all buildings to coordinate and these are the dates I was informed we get for DC1 in order to satisfy the DC2 and DC9 dates. / allucent_notes: 2025-12-30 08:52 - User: John Capriotti - Date Added: 2025-12-30 08:52 - Note: Due to coordination with DC2 and DC9 and constraints on how many deliveries the vendor can deliver each day/week, including Holiday gaps, these are the new dates.Management is
- QTS-41141: allucent_notes_20251230_164549: John Capriotti on 2025-12-30 08:50: Due to coordination with DC2 and DC9 and constraints on how many deliveries the vendor can deliver each day/week, including Holiday gaps, these are the new dates. / Management is aware, meetings held between all buildings to coordinate and these are the dates I was informed we get for DC1 in order to satisfy the DC2 and DC9 dates. / allucent_notes: 2025-12-30 08:50 - User: John Capriotti - Date Added: 2025-12-30 08:50 - Note: Due to coordination with DC2 and DC9 and constraints on how many deliveries the vendor can deliver each day/week, including Holiday gaps, these are the new dates.Management is
- QTS-41151: allucent_notes_20251230_164549: John Capriotti on 2025-12-30 08:51: Due to coordination with DC2 and DC9 and constraints on how many deliveries the vendor can deliver each day/week, including Holiday gaps, these are the new dates. / Management is aware, meetings held between all buildings to coordinate and these are the dates I was informed we get for DC1 in order to satisfy the DC2 and DC9 dates. / allucent_notes: 2025-12-30 08:51 - User: John Capriotti - Date Added: 2025-12-30 08:51 - Note: Due to coordination with DC2 and DC9 and constraints on how many deliveries the vendor can deliver each day/week, including Holiday gaps, these are the new dates.Management is
- QTS-120380: allucent_notes_20251202_153722: John Capriotti on 2025-12-02 12:34: Fibrebond Delivery date is 12/18. Due to the coordination and/or the other building ROJ dates impacting DC1 ROJs, this has been pushed out. Fibrebond can only deliver so many a week and all building need by dates overlap. / John Capriotti on 2025-12-02 12:36: Fibrebond Delivery date is 12/19. Due to the coordination and/or the other building ROJ dates impacting DC1 ROJs, this has been pushed out. Fibrebond can only deliver so many a week and all building need by dates overlap. / Scheduler Notes: John Capriotti on 2025-12-02 12:34: Fibrebond Delivery date is 12/18. Due to / the coordination and/or the other building ROJ dates impacting DC1 ROJs, this / has been pushed out. Fibrebond can only deliver so many a week and all building / need by dates overlap. / John Capriotti on 2025-12-02 12:36: Fibrebond Delivery date is 12/19. Due to / the coordination and/or the other building ROJ dates impacting DC1 ROJs, this / has been pushed out. Fibrebond can only deliver so many a week and all building / need by dates overlap. / allucent_notes: 2025-12-02 12:34 - User: John Capriotti - Date Added: 2025-12-02 12:34 - Note: Fibrebond Delivery date is 12/18. Due to the coordination and/or the other building ROJ dates impacting DC1 ROJs, this has been pushed out. Fibrebond can only deliver so many a

| ID | WBS | Activity | Type | Duration | Start | Finish | Predecessors | Complete | Planned start | Planned finish | Calendar | Allucent CSI Group | Project Section | Layton Discipline | Baseline | Project Section-1 | Precon Phase | Contract | Fragnet | Owner Impact Analysis | Fragnet Responsible Party | Layton Super |
| --- | --- | --- | --- | --- | --- | --- | --- | --- | --- | --- | --- | --- | --- | --- | --- | --- | --- | --- | --- | --- | --- | --- |
|  | 9 | **MVGs** |  |  | 2025-09-08 | 2025-12-29 |  |  |  |  |  |  |  |  |  |  |  |  |  |  |  |  |
| QTS-99300 |  | Zone 1 / DC1-MVG-A1 |  | 20d | 2025-09-08 A | 2025-10-20 A | QTS-1371 SS | 100% | 2025-09-08 | 2025-10-03 |  | 01ADMIN | Preconstruction | Precon | GMP | Preconstruction | OFCI Procurement | BAB |  |  |  |  |
| QTS-99310 |  | Zone 1 / DC1-MVG-B1 |  | 20d | 2025-09-09 A | 2025-10-21 A | QTS-1371 SS | 100% | 2025-09-09 | 2025-10-06 |  | 01ADMIN | Preconstruction | Precon | GMP | Preconstruction | OFCI Procurement | BAB |  |  |  |  |
| QTS-99340 |  | Zone 3 / DC1-MVG-A2 |  | 20d | 2025-10-27 A | 2025-10-27 A | QTS-1371 SS | 100% | 2025-12-10 | 2026-01-13 |  | 01ADMIN | Preconstruction | Precon | GMP | Preconstruction | OFCI Procurement | BAB |  |  |  |  |
| QTS-99350 |  | Zone 3 / DC1-MVG-C2/G1 |  | 20d | 2025-10-27 A | 2025-10-27 A | QTS-1371 SS | 100% | 2025-12-11 | 2026-01-14 |  | 01ADMIN | Preconstruction | Precon | GMP | Preconstruction | OFCI Procurement | BAB |  |  |  |  |
| QTS-99320 |  | Zone 2 / DC1-MVG-C1 |  | 20d | 2025-10-31 A | 2025-12-29 A | QTS-1371 SS | 100% | 2025-10-31 | 2025-12-01 |  | 01ADMIN | Preconstruction | Precon | GMP | Preconstruction | OFCI Procurement | BAB |  |  |  |  |
| QTS-99330 |  | Zone 2 / DC1-MVG-D1 |  | 20d | 2025-11-03 A | 2025-12-29 A | QTS-1371 SS | 100% | 2025-11-03 | 2025-12-02 |  | 01ADMIN | Preconstruction | Precon | GMP | Preconstruction | OFCI Procurement | BAB |  |  |  |  |
|  | 12 | **Fragnet / Generator Neutral Bus Kits** |  |  | 2025-12-15 | 2026-06-24 |  |  |  |  |  |  |  |  |  |  |  |  |  |  |  |  |
| QTS-1004490 |  | Fragnet / Deliver Zone 2100, 1100, & 2200 Generator Neutral Bus Kits (21) |  | 20d | 2025-12-15 A | 2026-03-18 A | QTS-1371 SS | 100% | 2025-10-31 | 2025-12-01 |  | 01ADMIN | Preconstruction | Precon | GMP | Preconstruction | OFCI Procurement | BAB | Fragnet | Y | Holt/CAT |  |
| QTS-1009180 |  | Fragnet / Deliver Zone 1200, 2300, &1300 Generator Neutral Bus Kits (21) |  | 20d | 2025-12-15 A | 2026-03-18 A | QTS-1371 SS | 100% | 2025-10-31 | 2025-12-01 |  | 01ADMIN | Preconstruction | Precon | GMP | Preconstruction | OFCI Procurement | BAB | Fragnet | Y | Holt/CAT |  |
| QTS-1009200 |  | Fragnet / Vendor Mobilize to Site to Install Generator Neutral Bus Kits |  | 4d | 2026-03-19 A | 2026-03-19 A | QTS-1009180 | 100% | 2026-03-19 | 2026-03-24 |  | 01ADMIN | Preconstruction | Precon | GMP | Preconstruction | OFCI Procurement | BAB | Fragnet | Y | Holt/CAT | Oscar Armenta |
| QTS-1009190 |  | Fragnet / Install Zone 1200, 2300, &1300 Generator Neutral Bus Kits (21) |  | 5d | 2026-03-20 A | 2026-06-24 A | QTS-1009200 | 100% | 2026-07-15 | 2026-07-21 |  | 01ADMIN | Preconstruction | Precon | GMP | Preconstruction | OFCI Procurement | BAB | Fragnet | Y | Holt/CAT | Oscar Armenta |
|  | 45 | **Fragnet / Window Shade** |  |  | 2026-05-06 | 2026-05-13 |  |  |  |  |  |  |  |  |  |  |  |  |  |  |  |  |
| A1000 |  | RFI #1002: Roller Window Shades Power & Control Requirements |  | 5d | 2026-05-06 A | 2026-05-12 A | QTS-1371 | 100% |  |  | **GLOBAL - 5 Day Workweek w/ Basic Holidays |  |  | Procurement |  |  |  | BAB | Fragnet |  | AZ Custom Designs |  |
| A1010 |  | Window Shades Material Released |  | 1d | 2026-05-13 A | 2026-05-13 A | A1000 | 100% |  |  | **GLOBAL - 5 Day Workweek w/ Basic Holidays |  |  | Procurement |  |  |  | BAB | Fragnet |  | AZ Custom Designs |  |
|  | 14 | **BIM** |  |  | 2025-01-28 | 2025-10-14 |  |  |  |  |  |  |  |  |  |  |  |  |  |  |  |  |
|  | 1 | **Under Slab Coordination** |  |  | 2025-01-28 | 2025-07-11 |  |  |  |  |  |  |  |  |  |  |  |  |  |  |  |  |
| QTS-10993 |  | Model Preparation (Underslab BIM) |  | 4d | 2025-01-28 A | 2025-01-31 A | QTS-1381 | 100% |  |  |  |  |  | Precon |  | Preconstruction | BIM | BAB |  |  |  |  |
| QTS-10997 |  | Coordination (Underslab BIM) |  | 25d | 2025-02-03 A | 2025-04-25 A | QTS-10993 | 100% | 2025-02-03 | 2025-03-07 |  |  |  | Precon |  | Preconstruction | BIM | BAB |  |  |  |  |
| QTS-10994 |  | Sign-Off (Underslab BIM) | milestone | 0d | 2025-04-25 A | 2025-04-25 A | QTS-10997 FF | 100% |  |  |  |  |  | Precon |  | Preconstruction | BIM | BAB |  |  |  |  |
| QTS-10995 |  | Submit Shop Drawings (Underslab BIM) |  | 5d | 2025-04-28 A | 2025-07-02 A | QTS-10994 | 100% | 2025-04-28 | 2025-05-02 |  | 01ADMIN | Preconstruction | Precon |  | Preconstruction | BIM | BAB |  |  |  |  |
| QTS-10996 |  | Shop Drawings Review (Underslab BIM) |  | 5d | 2025-07-03 A | 2025-07-10 A | QTS-10995 | 100% | 2025-06-26 | 2025-07-02 |  | 01ADMIN | Preconstruction | Precon |  | Preconstruction | BIM | BAB |  |  |  |  |
| QTS-10998 |  | First MEP Install Date (Underslab BIM) (DUE BY 3/27/25) |  | 1d | 2025-07-11 A | 2025-07-11 A | QTS-10996 | 100% |  |  |  | 01ADMIN | Preconstruction | Precon |  | Preconstruction | BIM | BAB |  |  |  |  |
|  | 2 | **Site Coordination** |  |  | 2025-01-28 | 2025-07-15 |  |  |  |  |  |  |  |  |  |  |  |  |  |  |  |  |
| QTS-38691 |  | Model Preparation (Site BIM) |  | 4d | 2025-01-28 A | 2025-01-31 A | QTS-9711 | 100% |  |  |  |  |  | Precon |  | Preconstruction | BIM | BAB |  |  |  |  |
| QTS-38701 |  | Coordination (Site BIM) |  | 25d | 2025-02-03 A | 2025-04-29 A | QTS-38691 | 100% | 2025-02-03 | 2025-03-07 |  |  |  | Precon |  | Preconstruction | BIM | BAB |  |  |  |  |
| QTS-38711 |  | Sign-Off (Site BIM) | milestone | 0d | 2025-04-29 A | 2025-04-29 A | QTS-38701 FF | 100% |  |  |  |  |  | Precon |  | Preconstruction | BIM | BAB |  |  |  |  |
| QTS-38721 |  | Submit Shop Drawings (Site BIM) |  | 5d | 2025-04-30 A | 2025-05-08 A | QTS-38711 | 100% | 2025-04-30 | 2025-05-06 |  |  |  | Precon |  | Preconstruction | BIM | BAB |  |  |  |  |
| QTS-38731 |  | Shop Drawings Review (Site BIM) |  | 5d | 2025-05-09 A | 2025-07-14 A | QTS-38721 | 100% | 2025-05-09 | 2025-05-15 |  | 01ADMIN | Preconstruction | Precon |  | Preconstruction | BIM | BAB |  |  |  |  |
| QTS-38741 |  | First MEP Install Date (Site BIM) (DUE BY 3/27/25) |  | 1d | 2025-07-15 A | 2025-07-15 A | QTS-10998, QTS-38731 | 100% |  |  |  | 01ADMIN | Preconstruction | Precon |  | Preconstruction | BIM | BAB |  |  |  |  |

Notes:
- QTS-99300: allucent_notes_20251021_145627: John Capriotti on 2025-10-07 13:10: Plan is to set this first MVG with FOH XFMR on 10/16 / John Capriotti on 2025-10-21 14:10: Received on 10/20 / allucent_notes_20251014_152335: John Capriotti on 2025-10-07 13:10: Plan is to set this first MVG with FOH XFMR on 10/16 / allucent_notes: 2025-10-07 13:10 - User: John Capriotti - Date Added: 2025-10-07 13:10 - Note: Plan is to set this first MVG with FOH XFMR on 10/16 / 2025-10-21 14:10 - User: John Capriotti - Date Added: 2025-10-21 14:10 - Note: Received on 10/20
- QTS-99310: allucent_notes_20251021_145627: John Capriotti on 2025-10-14 13:10: Delivery set for 10/21. / allucent_notes_20251014_152335: John Capriotti on 2025-10-14 13:10: Delivery set for 10/21. / allucent_notes: 2025-10-14 13:10 - User: John Capriotti - Date Added: 2025-10-14 13:10 - Note: Delivery set for 10/21.
- QTS-99320: allucent_notes_20251216_165335: John Capriotti on 2025-12-02 12:42: Need to confirm when Pads will be complete and OEG can get crane/fork to set. / John Capriotti on 2025-12-16 13:56: From my recent updates we are looking at possibly setting these on 12/22 so will request these for 12/22. Confirming with OEG and Suntec now. / allucent_notes_20251209_203830: John Capriotti on 2025-12-02 12:42: Need to confirm when Pads will be complete and OEG can get crane/fork to set. / allucent_notes_20251202_153722: John Capriotti on 2025-12-02 12:42: Need to confirm when Pads will be complete and OEG can get crane/fork to set. / allucent_notes_20251230_164549: John Capriotti on 2025-12-02 12:42: Need to confirm when Pads will be complete and OEG can get crane/fork to set. / John Capriotti on 2025-12-16 13:56: From my recent updates we are looking at possibly setting these on 12/22 so will request these for 12/22. Confirming with OEG and Suntec now. / John Capriotti on 2025-12-30 09:58: Received and set on 12/29 / allucent_notes: 2025-12-02 12:42 - User: John Capriotti - Date Added: 2025-12-02 12:42 - Note: Need to confirm when Pads will be complete and OEG can get crane/fork to set. / 2025-12-16 13:56 - User: John Capriotti - Date Added: 2025-12-16 13:56 - Note: From my recent u
- QTS-99330: allucent_notes_20251216_165335: John Capriotti on 2025-12-02 12:42: Need to confirm when Pads will be complete and OEG can get crane/fork to set. / John Capriotti on 2025-12-16 13:56: From my recent updates we are looking at possibly setting these on 12/22 so will request these for 12/22. Confirming with OEG and Suntec now. / allucent_notes_20251209_203830: John Capriotti on 2025-12-02 12:42: Need to confirm when Pads will be complete and OEG can get crane/fork to set. / allucent_notes_20251202_153722: John Capriotti on 2025-12-02 12:42: Need to confirm when Pads will be complete and OEG can get crane/fork to set. / allucent_notes_20251230_164549: John Capriotti on 2025-12-02 12:42: Need to confirm when Pads will be complete and OEG can get crane/fork to set. / John Capriotti on 2025-12-16 13:56: From my recent updates we are looking at possibly setting these on 12/22 so will request these for 12/22. Confirming with OEG and Suntec now. / John Capriotti on 2025-12-30 09:58: Received and set on 12/29 / allucent_notes: 2025-12-02 12:42 - User: John Capriotti - Date Added: 2025-12-02 12:42 - Note: Need to confirm when Pads will be complete and OEG can get crane/fork to set. / 2025-12-16 13:56 - User: John Capriotti - Date Added: 2025-12-16 13:56 - Note: From my recent u
- QTS-1004490: allucent_notes_20251216_165335: John Capriotti on 2025-12-02 12:42: Need to confirm when Pads will be complete and OEG can get crane/fork to set. / John Capriotti on 2025-12-16 13:56: From my recent updates we are looking at possibly setting these on 12/22 so will request these for 12/22. Confirming with OEG and Suntec now. / allucent_notes_20251209_203830: John Capriotti on 2025-12-02 12:42: Need to confirm when Pads will be complete and OEG can get crane/fork to set. / allucent_notes_20251202_153722: John Capriotti on 2025-12-02 12:42: Need to confirm when Pads will be complete and OEG can get crane/fork to set. / allucent_notes_20251230_164549: John Capriotti on 2025-12-02 12:42: Need to confirm when Pads will be complete and OEG can get crane/fork to set. / John Capriotti on 2025-12-16 13:56: From my recent updates we are looking at possibly setting these on 12/22 so will request these for 12/22. Confirming with OEG and Suntec now. / John Capriotti on 2025-12-30 09:58: Received and set on 12/29 / Scheduler Notes: John Capriotti on 2025-12-02 12:42: Need to confirm when Pads will be / complete and OEG can get crane/fork to set. / John Capriotti on 2025-12-16 13:56: From my recent updates we are looking at / possibly setting these on 12/22 so will request these for 12/22. Confirming with / OEG and Suntec now. / John Capriotti on 2025-12-30 09:58: Received and set on / 12/29 / allucent_notes: 2025-12-02 12:42 - User: John Capriotti - Date Added: 2025-12-02 12:42 - Note: Need to confirm when Pads will be complete and OEG can get crane/fork to set. / 2025-12-16 13:56 - User: John Capriotti - Date Added: 2025-12-16 13:56 - Note: From my recent u
- QTS-1009180: allucent_notes_20251216_165335: John Capriotti on 2025-12-02 12:42: Need to confirm when Pads will be complete and OEG can get crane/fork to set. / John Capriotti on 2025-12-16 13:56: From my recent updates we are looking at possibly setting these on 12/22 so will request these for 12/22. Confirming with OEG and Suntec now. / allucent_notes_20251209_203830: John Capriotti on 2025-12-02 12:42: Need to confirm when Pads will be complete and OEG can get crane/fork to set. / allucent_notes_20251202_153722: John Capriotti on 2025-12-02 12:42: Need to confirm when Pads will be complete and OEG can get crane/fork to set. / allucent_notes_20251230_164549: John Capriotti on 2025-12-02 12:42: Need to confirm when Pads will be complete and OEG can get crane/fork to set. / John Capriotti on 2025-12-16 13:56: From my recent updates we are looking at possibly setting these on 12/22 so will request these for 12/22. Confirming with OEG and Suntec now. / John Capriotti on 2025-12-30 09:58: Received and set on 12/29 / allucent_notes: 2025-12-02 12:42 - User: John Capriotti - Date Added: 2025-12-02 12:42 - Note: Need to confirm when Pads will be complete and OEG can get crane/fork to set. / 2025-12-16 13:56 - User: John Capriotti - Date Added: 2025-12-16 13:56 - Note: From my recent u
- QTS-1009200: allucent_notes_20251216_165335: John Capriotti on 2025-12-02 12:42: Need to confirm when Pads will be complete and OEG can get crane/fork to set. / John Capriotti on 2025-12-16 13:56: From my recent updates we are looking at possibly setting these on 12/22 so will request these for 12/22. Confirming with OEG and Suntec now. / allucent_notes_20251209_203830: John Capriotti on 2025-12-02 12:42: Need to confirm when Pads will be complete and OEG can get crane/fork to set. / allucent_notes_20251202_153722: John Capriotti on 2025-12-02 12:42: Need to confirm when Pads will be complete and OEG can get crane/fork to set. / allucent_notes_20251230_164549: John Capriotti on 2025-12-02 12:42: Need to confirm when Pads will be complete and OEG can get crane/fork to set. / John Capriotti on 2025-12-16 13:56: From my recent updates we are looking at possibly setting these on 12/22 so will request these for 12/22. Confirming with OEG and Suntec now. / John Capriotti on 2025-12-30 09:58: Received and set on 12/29 / allucent_notes: 2025-12-02 12:42 - User: John Capriotti - Date Added: 2025-12-02 12:42 - Note: Need to confirm when Pads will be complete and OEG can get crane/fork to set. / 2025-12-16 13:56 - User: John Capriotti - Date Added: 2025-12-16 13:56 - Note: From my recent u
- QTS-1009190: allucent_notes_20251216_165335: John Capriotti on 2025-12-02 12:42: Need to confirm when Pads will be complete and OEG can get crane/fork to set. / John Capriotti on 2025-12-16 13:56: From my recent updates we are looking at possibly setting these on 12/22 so will request these for 12/22. Confirming with OEG and Suntec now. / allucent_notes_20251209_203830: John Capriotti on 2025-12-02 12:42: Need to confirm when Pads will be complete and OEG can get crane/fork to set. / allucent_notes_20251202_153722: John Capriotti on 2025-12-02 12:42: Need to confirm when Pads will be complete and OEG can get crane/fork to set. / allucent_notes_20251230_164549: John Capriotti on 2025-12-02 12:42: Need to confirm when Pads will be complete and OEG can get crane/fork to set. / John Capriotti on 2025-12-16 13:56: From my recent updates we are looking at possibly setting these on 12/22 so will request these for 12/22. Confirming with OEG and Suntec now. / John Capriotti on 2025-12-30 09:58: Received and set on 12/29 / allucent_notes: 2025-12-02 12:42 - User: John Capriotti - Date Added: 2025-12-02 12:42 - Note: Need to confirm when Pads will be complete and OEG can get crane/fork to set. / 2025-12-16 13:56 - User: John Capriotti - Date Added: 2025-12-16 13:56 - Note: From my recent u
- A1000: Scheduler Notes: RFI #1002: Roller Window Shades Power & Control / Requirements

| ID | WBS | Activity | Type | Duration | Start | Finish | Predecessors | Complete | Planned start | Planned finish | Layton Discipline | Project Section-1 | Precon Phase | Contract | Allucent CSI Group | Project Section |
| --- | --- | --- | --- | --- | --- | --- | --- | --- | --- | --- | --- | --- | --- | --- | --- | --- |
|  | 3 | **Panel Penetrations Coordination** |  |  | 2025-03-31 | 2025-08-08 |  |  |  |  |  |  |  |  |  |  |
| QTS-38751 |  | Model Preparation (Panel Penetrations BIM) |  | 10d | 2025-03-31 A | 2025-04-25 A | QTS-38691 SS, QTS-9711 | 100% | 2025-03-31 | 2025-04-11 | Precon | Preconstruction | BIM | BAB |  |  |
| QTS-38761 |  | Coordination (Panel Penetrations BIM) |  | 10d | 2025-04-23 A | 2025-07-02 A | QTS-38751 | 100% | 2025-04-23 | 2025-05-06 | Precon | Preconstruction | BIM | BAB | 01ADMIN | Preconstruction |
| QTS-38771 |  | Sign-Off (Panel Penetrations BIM) | milestone | 0d | 2025-07-02 A | 2025-07-02 A | QTS-38761 FF | 100% | 2025-06-27 | 2025-06-27 | Precon | Preconstruction | BIM | BAB | 01ADMIN | Preconstruction |
| QTS-38781 |  | Submit Shop Drawings (Panel Penetrations BIM) |  | 5d | 2025-07-03 A | 2025-07-10 A | QTS-38771 | 100% | 2025-06-30 | 2025-07-07 | Precon | Preconstruction | BIM | BAB | 01ADMIN | Preconstruction |
| QTS-38791 |  | Shop Drawings Review (Panel Penetrations BIM) |  | 15d | 2025-07-11 A | 2025-08-07 A | QTS-38781 | 100% | 2025-07-11 | 2025-07-31 | Precon | Preconstruction | BIM | BAB | 01ADMIN | Preconstruction |
| QTS-38801 |  | First MEP Install Date (Panel Penetrations BIM) |  | 1d | 2025-08-08 A | 2025-08-08 A | QTS-38791 | 100% |  |  | Precon | Preconstruction | BIM | BAB | 01ADMIN | Preconstruction |
|  | 4 | **SOMD Penetrations Coordination** |  |  | 2025-03-03 | 2025-08-01 |  |  |  |  |  |  |  |  |  |  |
| QTS-38811 |  | Model Preparation (SOMD Penetrations BIM) |  | 10d | 2025-03-03 A | 2025-03-14 A | QTS-9711 | 100% |  |  | Precon | Preconstruction | BIM | BAB |  |  |
| QTS-38821 |  | Coordination (SOMD Penetrations BIM) |  | 15d | 2025-03-17 A | 2025-05-12 A | QTS-38811 | 100% | 2025-03-17 | 2025-04-04 | Precon | Preconstruction | BIM | BAB |  |  |
| QTS-38831 |  | Sign-Off (SOMD Penetrations BIM) | milestone | 0d | 2025-05-12 A | 2025-05-12 A | QTS-38821 FF | 100% |  |  | Precon | Preconstruction | BIM | BAB |  |  |
| QTS-38841 |  | Submit Shop Drawings (SOMD Penetrations BIM) |  | 5d | 2025-05-13 A | 2025-07-02 A | QTS-38831 | 100% | 2025-05-13 | 2025-05-19 | Precon | Preconstruction | BIM | BAB | 01ADMIN | Preconstruction |
| QTS-38851 |  | Shop Drawings Review (SOMD Penetrations BIM) |  | 15d | 2025-07-03 A | 2025-07-31 A | QTS-38841 | 100% | 2025-06-26 | 2025-07-17 | Precon | Preconstruction | BIM | BAB | 01ADMIN | Preconstruction |
| QTS-38861 |  | First MEP Install Date (SOMD Penetrations BIM) (DUE BY 6/2/25) |  | 1d | 2025-08-01 A | 2025-08-01 A | QTS-38851 | 100% |  |  | Precon | Preconstruction | BIM | BAB | 01ADMIN | Preconstruction |
|  | 5 | **Roof Coordination** |  |  | 2025-03-31 | 2025-08-01 |  |  |  |  |  |  |  |  |  |  |
| QTS-38871 |  | Model Preparation (Roof BIM) |  | 10d | 2025-03-31 A | 2025-04-14 A | QTS-9711 | 100% | 2025-03-31 | 2025-04-11 | Precon | Preconstruction | BIM | BAB |  |  |
| QTS-38881 |  | Coordination (Roof BIM) |  | 14d | 2025-04-15 A | 2025-06-17 A | QTS-38871 | 100% | 2025-04-15 | 2025-05-02 | Precon | Preconstruction | BIM | BAB | 01ADMIN | Preconstruction |
| QTS-38891 |  | Sign-Off (Roof BIM) | milestone | 0d | 2025-06-17 A | 2025-06-17 A | QTS-38881 FF | 100% | 2025-06-25 | 2025-06-25 | Precon | Preconstruction | BIM | BAB | 01ADMIN | Preconstruction |
| QTS-38901 |  | Submit Shop Drawings (Roof BIM) |  | 11d | 2025-06-18 A | 2025-07-02 A | QTS-38891 | 100% | 2025-06-26 | 2025-07-11 | Precon | Preconstruction | BIM | BAB | 01ADMIN | Preconstruction |
| QTS-38911 |  | Shop Drawings Review (Roof BIM) |  | 15d | 2025-07-03 A | 2025-07-31 A | QTS-38901 | 100% | 2025-06-30 | 2025-07-21 | Precon | Preconstruction | BIM | BAB | 01ADMIN | Preconstruction |
| QTS-38921 |  | First MEP Install Date (Roof BIM) |  | 1d | 2025-08-01 A | 2025-08-01 A | QTS-38911 | 100% |  |  | Precon | Preconstruction | BIM | BAB | 01ADMIN | Preconstruction |
|  | 6 | **Level 2 Corridors** |  |  | 2025-04-14 | 2025-08-01 |  |  |  |  |  |  |  |  |  |  |
| QTS-38931 |  | Model Preparation (Level 2 Corridors BIM) |  | 10d | 2025-04-14 A | 2025-05-07 A | QTS-38871 | 100% | 2025-04-14 | 2025-04-25 | Precon | Preconstruction | BIM | BAB |  |  |
| QTS-38941 |  | Coordination (Level 2 Corridors BIM) |  | 15d | 2025-05-08 A | 2025-06-18 A | QTS-38881 SS, QTS-38931 | 100% | 2025-05-08 | 2025-05-29 | Precon | Preconstruction | BIM | BAB | 01ADMIN | Preconstruction |
| QTS-38951 |  | Sign-Off (Level 2 Corridors BIM) | milestone | 0d | 2025-06-18 A | 2025-06-18 A | QTS-38941 FF | 100% | 2025-06-25 | 2025-06-25 | Precon | Preconstruction | BIM | BAB | 01ADMIN | Preconstruction |
| QTS-38961 |  | Submit Shop Drawings (Level 2 Corridors BIM) |  | 10d | 2025-06-19 A | 2025-07-02 A | QTS-38951 | 100% | 2025-06-26 | 2025-07-10 | Precon | Preconstruction | BIM | BAB | 01ADMIN | Preconstruction |
| QTS-38971 |  | Shop Drawings Review (Level 2 Corridors BIM) |  | 15d | 2025-07-03 A | 2025-07-31 A | QTS-38961 | 100% | 2025-07-03 | 2025-07-24 | Precon | Preconstruction | BIM | BAB | 01ADMIN | Preconstruction |
| QTS-38981 |  | First MEP Install Date (Level 2 Corridors BIM) |  | 1d | 2025-08-01 A | 2025-08-01 A | QTS-38971 | 100% |  |  | Precon | Preconstruction | BIM | BAB | 01ADMIN | Preconstruction |

| ID | WBS | Activity | Type | Duration | Start | Finish | Predecessors | Complete | Planned start | Planned finish | Allucent CSI Group | Project Section | Layton Discipline | Project Section-1 | Precon Phase | Contract |
| --- | --- | --- | --- | --- | --- | --- | --- | --- | --- | --- | --- | --- | --- | --- | --- | --- |
|  | 7 | **Level 1 Corridors** |  |  | 2025-05-14 | 2025-08-28 |  |  |  |  |  |  |  |  |  |  |
| QTS-38991 |  | Model Preparation (Level 1 Corridors BIM) |  | 10d | 2025-05-14 A | 2025-06-16 A | QTS-38931, QTS-9711 | 100% | 2025-05-14 | 2025-05-28 | 01ADMIN | Preconstruction | Precon | Preconstruction | BIM | BAB |
| QTS-39001 |  | Coordination (Level 1 Corridors BIM) |  | 18d | 2025-06-17 A | 2025-07-11 A | QTS-38941, QTS-38991 | 100% | 2025-06-26 | 2025-07-22 | 01ADMIN | Preconstruction | Precon | Preconstruction | BIM | BAB |
| QTS-39011 |  | Sign-Off (Level 1 Corridors BIM) | milestone | 0d | 2025-07-11 A | 2025-07-11 A | QTS-39001 FF | 100% |  |  | 01ADMIN | Preconstruction | Precon | Preconstruction | BIM | BAB |
| QTS-39021 |  | Submit Shop Drawings (Level 1 Corridors BIM) |  | 5d | 2025-07-14 A | 2025-08-01 A | QTS-39011 | 100% | 2025-07-14 | 2025-07-18 | 01ADMIN | Preconstruction | Precon | Preconstruction | BIM | BAB |
| QTS-39031 |  | Shop Drawings Review (Level 1 Corridors BIM) |  | 15d | 2025-08-04 A | 2025-08-19 A | QTS-39021 | 100% | 2025-08-04 | 2025-08-22 | 01ADMIN | Preconstruction | Precon | Preconstruction | BIM | BAB |
| QTS-39041 |  | First MEP Install Date (Level 1 Corridors BIM) |  | 1d | 2025-08-20 A | 2025-08-28 A | QTS-39031 | 100% | 2025-08-20 | 2025-08-20 | 01ADMIN | Preconstruction | Precon | Preconstruction | BIM | BAB |
|  | 8 | **Level 2 DH 2100** |  |  | 2025-06-26 | 2025-08-28 |  |  |  |  |  |  |  |  |  |  |
| QTS-39051 |  | Model Preparation (DH 2100 BIM) |  | 10d | 2025-06-26 A | 2025-07-10 A | QTS-38991, QTS-9711 | 100% |  |  | 01ADMIN | Preconstruction | Precon | Preconstruction | BIM | BAB |
| QTS-39061 |  | Coordination (DH 2100 BIM) |  | 15d | 2025-07-11 A | 2025-08-07 A | QTS-39001 SS, QTS-39051 | 100% | 2025-07-11 | 2025-07-31 | 01ADMIN | Preconstruction | Precon | Preconstruction | BIM | BAB |
| QTS-39081 |  | Submit Shop Drawings (DH 2100 BIM) |  | 5d | 2025-08-08 A | 2025-08-14 A | QTS-39071 FF | 100% |  |  | 01ADMIN | Preconstruction | Precon | Preconstruction | BIM | BAB |
| QTS-39091 |  | Shop Drawings Review (DH 2100 BIM) |  | 15d | 2025-08-13 A | 2025-08-13 A | QTS-39081 | 100% | 2025-08-15 | 2025-09-05 | 01ADMIN | Preconstruction | Precon | Preconstruction | BIM | BAB |
| QTS-39071 |  | Sign-Off (DH 2100 BIM) | milestone | 0d | 2025-08-13 A | 2025-08-13 A | QTS-39061 FF | 100% |  |  | 01ADMIN | Preconstruction | Precon | Preconstruction | BIM | BAB |
| QTS-39101 |  | First MEP Install Date (DH 2100 BIM) |  | 1d | 2025-08-20 A | 2025-08-28 A | QTS-39091 | 100% | 2025-08-20 | 2025-08-20 | 01ADMIN | Preconstruction | Precon | Preconstruction | BIM | BAB |
|  | 9 | **Level 1 DH 1100** |  |  | 2025-07-11 | 2025-10-14 |  |  |  |  |  |  |  |  |  |  |
| QTS-39111 |  | Model Preparation (DH 1100 BIM) |  | 10d | 2025-07-11 A | 2025-08-08 A | QTS-39051, QTS-9711 | 100% | 2025-07-11 | 2025-07-24 | 01ADMIN | Preconstruction | Precon | Preconstruction | BIM | BAB |
| QTS-39121 |  | Coordination (DH 1100 BIM) |  | 15d | 2025-08-11 A | 2025-08-29 A | QTS-39061, QTS-39111 | 100% |  |  | 01ADMIN | Preconstruction | Precon | Preconstruction | BIM | BAB |
| QTS-39131 |  | Sign-Off (DH 1100 BIM) | milestone | 0d | 2025-08-29 A | 2025-08-29 A | QTS-39121 FF | 100% |  |  | 01ADMIN | Preconstruction | Precon | Preconstruction | BIM | BAB |
| QTS-39141 |  | Submit Shop Drawings (DH 1100 BIM) |  | 5d | 2025-09-02 A | 2025-09-08 A | QTS-39131 | 100% |  |  | 01ADMIN | Preconstruction | Precon | Preconstruction | BIM | BAB |
| QTS-39151 |  | Shop Drawings Review (DH 1100 BIM) |  | 15d | 2025-10-01 A | 2025-10-13 A | QTS-39141 | 100% | 2025-10-01 | 2025-10-21 | 01ADMIN | Preconstruction | Precon | Preconstruction | BIM | BAB |
| QTS-39161 |  | First MEP Install Date (DH 1100 BIM) |  | 1d | 2025-10-14 A | 2025-10-14 A | QTS-39151 | 100% | 2025-10-22 | 2025-10-22 | 01ADMIN | Preconstruction | Precon | Preconstruction | BIM | BAB |
|  | 10 | **Level 2 FOH/BOH** |  |  | 2025-08-11 | 2025-10-14 |  |  |  |  |  |  |  |  |  |  |
| QTS-39171 |  | Model Preparation (Level 2 FOH/BOH BIM) |  | 10d | 2025-08-11 A | 2025-08-13 A | QTS-39111, QTS-9711 | 100% | 2025-08-11 | 2025-08-22 | 01ADMIN | Preconstruction | Precon | Preconstruction | BIM | BAB |
| QTS-39181 |  | Coordination (Level 2 FOH/BOH BIM) |  | 15d | 2025-08-11 A | 2025-08-13 A | QTS-39121 SS, QTS-39171 SS | 100% | 2025-09-02 | 2025-09-22 | 01ADMIN | Preconstruction | Precon | Preconstruction | BIM | BAB |
| QTS-39201 |  | Submit Shop Drawings (Level 2 FOH/BOH BIM) |  | 5d | 2025-08-21 A | 2025-10-10 A | QTS-39191 FF | 100% | 2025-09-02 | 2025-09-08 | 01ADMIN | Preconstruction | Precon | Preconstruction | BIM | BAB |
| QTS-39191 |  | Sign-Off (Level 2 FOH/BOH BIM) | milestone | 0d | 2025-10-01 A | 2025-10-01 A | QTS-39181 FF | 100% |  |  | 01ADMIN | Preconstruction | Precon | Preconstruction | BIM | BAB |
| QTS-39211 |  | Shop Drawings Review (Level 2 FOH/BOH BIM) |  | 15d | 2025-10-09 A | 2025-10-13 A | QTS-39201 | 100% | 2025-10-27 | 2025-11-14 | 01ADMIN | Preconstruction | Precon | Preconstruction | BIM | BAB |
| QTS-39221 |  | First MEP Install Date (Level 2 FOH/BOH BIM) |  | 1d | 2025-10-14 A | 2025-10-14 A | QTS-39211 SS+5d | 100% | 2025-11-03 | 2025-11-03 | 01ADMIN | Preconstruction | Precon | Preconstruction | BIM | BAB |

Notes:
- QTS-39031: allucent_notes: John Capriotti on 2025-08-19 15:08: Adjusting to 8/19, confirmed all are complete. / allucent_notes: 2025-08-19 15:08 - User: John Capriotti - Date Added: 2025-08-19 15:08 - Note: Adjusting to 8/19, confirmed all are complete.
- QTS-39041: allucent_notes: Jason Johnston on 2025-08-27 07:08: No comment / allucent_notes: 2025-08-27 07:08 - User: Jason Johnston - Date Added: 2025-08-27 07:08 - Note: No comment
- QTS-39091: allucent_notes: John Capriotti on 2025-08-19 15:08: Confirmed Level 2 Sign-off sent out on 8/13/2025. / John Capriotti on 2025-08-19 15:08: Confirmed Level 2 Sign-off sent out on 8/13/2025. / allucent_notes: 2025-08-19 15:08 - User: John Capriotti - Date Added: 2025-08-19 15:08 - Note: Confirmed Level 2 Sign-off sent out on 8/13/2025. / 2025-08-19 15:08 - User: John Capriotti - Date Added: 2025-08-19 15:08 - Note: Confirmed Level 2 Sign-off sent out on 8/13
- QTS-39071: allucent_notes: Jason Johnston on 2025-08-12 18:08: Need response from team / allucent_notes: 2025-08-12 18:08 - User: Jason Johnston - Date Added: 2025-08-12 18:08 - Note: Need response from team
- QTS-39101: allucent_notes: Jason Johnston on 2025-08-27 07:08: No comment / allucent_notes: 2025-08-27 07:08 - User: Jason Johnston - Date Added: 2025-08-27 07:08 - Note: No comment
- QTS-39171: allucent_notes: John Capriotti on 2025-08-19 15:08: Confirmed Level 2 FOH/BOH Sign-off sent out on 8/13/2025. / allucent_notes: 2025-08-19 15:08 - User: John Capriotti - Date Added: 2025-08-19 15:08 - Note: Confirmed Level 2 FOH/BOH Sign-off sent out on 8/13/2025.
- QTS-39181: allucent_notes: John Capriotti on 2025-08-19 15:08: Coordination started when the model was being prepared. / John Capriotti on 2025-08-19 15:08: Confirmed Level 2 FOH/BOH Sign-off sent out on 8/13/2025. / allucent_notes: 2025-08-19 15:08 - User: John Capriotti - Date Added: 2025-08-19 15:08 - Note: Coordination started when the model was being prepared. / 2025-08-19 15:08 - User: John Capriotti - Date Added: 2025-08-19 15:08 - Note: Confirmed Level 2 FOH/BOH Sign-off sen
- QTS-39201: allucent_notes_20251027_224008: Jason Johnston on 2025-08-27 07:08: No comment / Chris Perales on 2025-09-02 12:09: New clashes after integrating TFO scope need to be rectified. Trying to get these coordinated this week / allucent_notes_20251021_145627: Jason Johnston on 2025-08-27 07:08: No comment / Chris Perales on 2025-09-02 12:09: New clashes after integrating TFO scope need to be rectified. Trying to get these coordinated this week / allucent_notes_20251014_152335: Jason Johnston on 2025-08-27 07:08: No comment / Chris Perales on 2025-09-02 12:09: New clashes after integrating TFO scope need to be rectified. Trying to get these coordinated this week / allucent_notes: Jason Johnston on 2025-08-27 07:08: No comment / allucent_notes: 2025-08-27 07:08 - User: Jason Johnston - Date Added: 2025-08-27 07:08 - Note: No comment / 2025-09-02 12:09 - User: Chris Perales - Date Added: 2025-09-02 12:09 - Note: New clashes after integrating TFO scope need to be rectified. Trying to get these co
- QTS-39191: allucent_notes: Jason Johnston on 2025-08-27 07:08: No comment / allucent_notes: 2025-08-27 07:08 - User: Jason Johnston - Date Added: 2025-08-27 07:08 - Note: No comment / 2025-09-02 12:09 - User: Chris Perales - Date Added: 2025-09-02 12:09 - Note: Tied to re-coordination of BIM due to TFO

| ID | WBS | Activity | Type | Duration | Start | Finish | Predecessors | Complete | Planned start | Planned finish | Allucent CSI Group | Project Section | Layton Discipline | Project Section-1 | Precon Phase | Contract |
| --- | --- | --- | --- | --- | --- | --- | --- | --- | --- | --- | --- | --- | --- | --- | --- | --- |
|  | 11 | **Level 1 FOH/BOH** |  |  | 2025-08-14 | 2025-10-14 |  |  |  |  |  |  |  |  |  |  |
| QTS-39231 |  | Model Preparation (Level 1 FOH/BOH BIM) |  | 10d | 2025-08-14 A | 2025-08-14 A | QTS-39171, QTS-9711 | 100% | 2025-08-25 | 2025-09-08 | 01ADMIN | Preconstruction | Precon | Preconstruction | BIM | BAB |
| QTS-39241 |  | Coordination (Level 1 FOH/BOH BIM) |  | 15d | 2025-08-20 A | 2025-08-22 A | QTS-39181, QTS-39231 | 100% | 2025-09-02 | 2025-09-22 | 01ADMIN | Preconstruction | Precon | Preconstruction | BIM | BAB |
| QTS-39251 |  | Sign-Off (Level 1 FOH/BOH BIM) | milestone | 0d | 2025-08-22 A | 2025-08-22 A | QTS-39241 FF | 100% |  |  | 01ADMIN | Preconstruction | Precon | Preconstruction | BIM | BAB |
| QTS-39261 |  | Submit Shop Drawings (Level 1 FOH/BOH BIM) |  | 5d | 2025-10-06 A | 2025-10-08 A | QTS-39251 | 100% | 2025-10-01 | 2025-10-07 | 01ADMIN | Preconstruction | Precon | Preconstruction | BIM | BAB |
| QTS-39271 |  | Shop Drawings Review (Level 1 FOH/BOH BIM) |  | 15d | 2025-10-09 A | 2025-10-13 A | QTS-39261 | 100% | 2025-10-08 | 2025-10-28 | 01ADMIN | Preconstruction | Precon | Preconstruction | BIM | BAB |
| QTS-39281 |  | First MEP Install Date (Level 1 FOH/BOH BIM) |  | 1d | 2025-10-14 A | 2025-10-14 A | QTS-39271 | 100% | 2025-10-29 | 2025-10-29 | 01ADMIN | Preconstruction | Precon | Preconstruction | BIM | BAB |
|  | 12 | **Level 2 DH 2200** |  |  | 2025-08-20 | 2025-10-14 |  |  |  |  |  |  |  |  |  |  |
| QTS-39291 |  | Model Preparation (Level 2 DH 2200 BIM) |  | 10d | 2025-08-20 A | 2025-09-24 A | QTS-39231, QTS-9711 | 100% | 2025-08-20 | 2025-09-03 | 01ADMIN | Preconstruction | Precon | Preconstruction | BIM | BAB |
| QTS-39301 |  | Coordination (Level 2 DH 2200 BIM) |  | 8d | 2025-09-25 A | 2025-10-03 A | QTS-39241, QTS-39291 | 100% | 2025-10-01 | 2025-10-10 | 01ADMIN | Preconstruction | Precon | Preconstruction | BIM | BAB |
| QTS-39311 |  | Sign-Off (Level 2 DH 2200 BIM) | milestone | 0d | 2025-10-03 A | 2025-10-03 A | QTS-39301 FF | 100% | 2025-10-10 | 2025-10-10 | 01ADMIN | Preconstruction | Precon | Preconstruction | BIM | BAB |
| QTS-39321 |  | Submit Shop Drawings (Level 2 DH 2200 BIM) |  | 5d | 2025-10-06 A | 2025-10-08 A | QTS-39311 | 100% | 2025-10-13 | 2025-10-17 | 01ADMIN | Preconstruction | Precon | Preconstruction | BIM | BAB |
| QTS-39331 |  | Shop Drawings Review (Level 2 DH 2200 BIM) |  | 8d | 2025-10-09 A | 2025-10-13 A | QTS-39321 | 100% | 2025-10-20 | 2025-10-29 | 01ADMIN | Preconstruction | Precon | Preconstruction | BIM | BAB |
| QTS-39341 |  | First MEP Install Date (Level 2 DH 2200 BIM) |  | 1d | 2025-10-14 A | 2025-10-14 A | QTS-39331 | 100% | 2025-10-30 | 2025-10-30 | 01ADMIN | Preconstruction | Precon | Preconstruction | BIM | BAB |
|  | 14 | **Level 2 DH 2300** |  |  | 2025-08-20 | 2025-10-14 |  |  |  |  |  |  |  |  |  |  |
| QTS-41961 |  | Model Preparation (Level 2 DH 2300 BIM) |  | 10d | 2025-08-20 A | 2025-09-24 A | QTS-39291 | 100% | 2025-10-01 | 2025-10-14 | 01ADMIN | Preconstruction | Precon | Preconstruction | BIM | BAB |
| QTS-41971 |  | Coordination (Level 2 DH 2300 BIM) |  | 5d | 2025-09-25 A | 2025-10-03 A | QTS-39301 SS, QTS-41961 | 100% | 2025-10-15 | 2025-10-21 | 01ADMIN | Preconstruction | Precon | Preconstruction | BIM | BAB |
| QTS-41981 |  | Sign-Off (Level 2 DH 2300 BIM) | milestone | 0d | 2025-10-03 A | 2025-10-03 A | QTS-41971 FF | 100% | 2025-10-21 | 2025-10-21 | 01ADMIN | Preconstruction | Precon | Preconstruction | BIM | BAB |
| QTS-41991 |  | Submit Shop Drawings (Level 2 DH 2300 BIM) |  | 5d | 2025-10-06 A | 2025-10-08 A | QTS-41981 | 100% | 2025-10-22 | 2025-10-28 | 01ADMIN | Preconstruction | Precon | Preconstruction | BIM | BAB |
| QTS-42001 |  | Shop Drawings Review (Level 2 DH 2300 BIM) |  | 10d | 2025-10-09 A | 2025-10-13 A | QTS-41991 | 100% | 2025-10-29 | 2025-11-11 | 01ADMIN | Preconstruction | Precon | Preconstruction | BIM | BAB |
| QTS-42011 |  | First MEP Install Date (Level 2 DH 2300 BIM) |  | 1d | 2025-10-14 A | 2025-10-14 A | QTS-42001 | 100% | 2025-11-12 | 2025-11-12 | 01ADMIN | Preconstruction | Precon | Preconstruction | BIM | BAB |
|  | 13 | **Level 1 DH 1200** |  |  | 2025-08-20 | 2025-10-14 |  |  |  |  |  |  |  |  |  |  |
| QTS-39351 |  | Model Preparation (Level 1 DH 1200 BIM) |  | 10d | 2025-08-20 A | 2025-09-24 A | QTS-41961, QTS-9711 | 100% | 2025-10-15 | 2025-10-28 | 01ADMIN | Preconstruction | Precon | Preconstruction | BIM | BAB |
| QTS-39361 |  | Coordination (Level 1 DH 1200 BIM) |  | 5d | 2025-09-25 A | 2025-10-03 A | QTS-41971, QTS-39351 | 100% | 2025-10-29 | 2025-11-04 | 01ADMIN | Preconstruction | Precon | Preconstruction | BIM | BAB |
| QTS-39371 |  | Sign-Off (Level 1 DH 1200 BIM) | milestone | 0d | 2025-10-03 A | 2025-10-03 A | QTS-39361 FF | 100% | 2025-11-04 | 2025-11-04 | 01ADMIN | Preconstruction | Precon | Preconstruction | BIM | BAB |
| QTS-39381 |  | Submit Shop Drawings (Level 1 DH 1200 BIM) |  | 5d | 2025-10-06 A | 2025-10-08 A | QTS-39371 | 100% | 2025-11-05 | 2025-11-11 | 01ADMIN | Preconstruction | Precon | Preconstruction | BIM | BAB |
| QTS-39391 |  | Shop Drawings Review (Level 1 DH 1200 BIM) |  | 10d | 2025-10-09 A | 2025-10-13 A | QTS-39381 | 100% | 2025-11-12 | 2025-11-25 | 01ADMIN | Preconstruction | Precon | Preconstruction | BIM | BAB |
| QTS-39401 |  | First MEP Install Date |  | 1d | 2025-10-14 A | 2025-10-14 A | QTS-39391 | 100% | 2025-11-26 | 2025-11-26 |  | Preconstruction | Precon | Preconstruction | BIM | BAB |

Notes:
- QTS-39231: allucent_notes: John Capriotti on 2025-08-19 15:08: Confirmed Level 2 FOH/BOH Sign-off sent out on 8/13/2025. / allucent_notes: 2025-08-19 15:08 - User: John Capriotti - Date Added: 2025-08-19 15:08 - Note: Confirmed Level 2 FOH/BOH Sign-off sent out on 8/13/2025.
- QTS-39241: allucent_notes: John Capriotti on 2025-08-26 16:08: Sign off was completed 8/22. / John Capriotti on 2025-08-26 16:08: Signed off on 8/22. / allucent_notes: 2025-08-26 16:08 - User: John Capriotti - Date Added: 2025-08-26 16:08 - Note: Sign off was completed 8/22. / 2025-08-26 16:08 - User: John Capriotti - Date Added: 2025-08-26 16:08 - Note: Signed off on 8/22.
- QTS-39251: allucent_notes: Jason Johnston on 2025-09-02 16:09: Still in progress / allucent_notes: 2025-09-02 16:09 - User: Jason Johnston - Date Added: 2025-09-02 16:09 - Note: Still in progress

| ID | WBS | Activity | Type | Duration | Start | Finish | Predecessors | Complete | Remaining | Planned start | Planned finish | Total float | Free float | Calendar | Allucent CSI Group | Project Section | Layton Discipline | Project Section-1 | Precon Phase | Contract | Fragnet | Fragnet Responsible Party | TFO-CONST ONLY | Layton Super |
| --- | --- | --- | --- | --- | --- | --- | --- | --- | --- | --- | --- | --- | --- | --- | --- | --- | --- | --- | --- | --- | --- | --- | --- | --- |
|  | 15 | **Level 1 DH 1300** |  |  | 2025-08-20 | 2025-10-14 |  |  |  |  |  |  |  |  |  |  |  |  |  |  |  |  |  |  |
| QTS-42021 |  | Model Preparation (Level 1 DH 1300 BIM) |  | 10d | 2025-08-20 A | 2025-09-24 A | QTS-39351 | 100% |  | 2025-10-29 | 2025-11-11 |  |  |  | 01ADMIN | Preconstruction | Precon | Preconstruction | BIM | BAB |  |  |  |  |
| QTS-42031 |  | Coordination (Level 1 DH 1300 BIM) |  | 10d | 2025-09-25 A | 2025-10-03 A | QTS-39361 SS, QTS-42021 | 100% |  | 2025-11-12 | 2025-11-25 |  |  |  | 01ADMIN | Preconstruction | Precon | Preconstruction | BIM | BAB |  |  |  |  |
| QTS-42041 |  | Sign-Off (Level 1 DH 1300 BIM) | milestone | 0d | 2025-10-03 A | 2025-10-03 A | QTS-42031 FF | 100% |  | 2025-11-25 | 2025-11-25 |  |  |  |  | Preconstruction | Precon | Preconstruction | BIM | BAB |  |  |  |  |
| QTS-42051 |  | Submit Shop Drawings (Level 1 DH 1300 BIM) |  | 5d | 2025-10-06 A | 2025-10-08 A | QTS-42041 | 100% |  | 2025-11-26 | 2025-12-04 |  |  |  |  | Preconstruction | Precon | Preconstruction | BIM | BAB |  |  |  |  |
| QTS-42061 |  | Shop Drawings Review (Level 1 DH 1300 BIM) |  | 10d | 2025-10-09 A | 2025-10-13 A | QTS-42051 | 100% |  | 2025-12-05 | 2025-12-18 |  |  |  |  | Preconstruction | Precon | Preconstruction | BIM | BAB |  |  |  |  |
| QTS-42071 |  | First MEP Install Date |  | 1d | 2025-10-14 A | 2025-10-14 A | QTS-42061 | 100% |  | 2025-12-19 | 2025-12-19 |  |  |  |  | Preconstruction | Precon | Preconstruction | BIM | BAB |  |  |  |  |
|  | 36 | **TFO Preconstruction** |  |  | 2025-09-03 | 2026-08-27 |  |  |  |  |  |  |  |  |  |  |  |  |  |  |  |  |  |  |
|  | 4 | **Preconstruction** |  |  | 2025-09-03 | 2026-08-27 |  |  |  |  |  |  |  |  |  |  |  |  |  |  |  |  |  |  |
|  | 45 | **Fragnet / TFO Window Shade** |  |  | 2026-05-06 | 2026-07-28 |  |  |  |  |  |  |  |  |  |  |  |  |  |  |  |  |  |  |
| A1030 |  | RFI #157 Request for Specifications on Diamond Plate Wainscoting at Loading Dock |  | 5d | 2026-05-06 A | 2026-05-13 A | A1000 | 100% |  | 2026-05-06 | 2026-05-12 |  |  | **GLOBAL - 5 Day Workweek w/ Basic Holidays |  |  | Procurement |  |  | TFO | Fragnet | AZ Custom Designs | TFO CONST |  |
| A1020 |  | Window Shade Delivery |  | 35d | 2026-06-02 A | 2026-07-28 A | A1010 SS, A1060 | 100% |  | 2026-06-02 | 2026-07-21 |  |  | **GLOBAL - 5 Day Workweek w/ Basic Holidays |  |  | Precon |  |  | BAB | Fragnet | AZ Custom Designs |  | Jake Shimmin |
| A1060 |  | Field Verification |  | 5d | 2026-06-02 A | 2026-06-02 A | A1030 | 100% |  | 2026-05-06 | 2026-05-12 |  |  | **GLOBAL - 5 Day Workweek w/ Basic Holidays |  |  | Procurement |  |  | TFO | Fragnet | AZ Custom Designs | TFO CONST |  |
| A1040 |  | TFO Scope // Window Shade Materials Released |  | 1d | 2026-06-03 A | 2026-06-04 A | A1060 | 100% |  | 2026-05-13 | 2026-05-13 |  |  | **GLOBAL - 5 Day Workweek w/ Basic Holidays |  |  | Precon |  |  | TFO | Fragnet | AZ Custom Designs | TFO CONST | Andrew Melis |
|  | 1 | **Procurement & Submittals** |  |  | 2025-09-03 | 2026-08-27 |  |  |  |  |  |  |  |  |  |  |  |  |  |  |  |  |  |  |
|  | 1 | **CFCI** |  |  | 2025-09-03 | 2026-08-27 |  |  |  |  |  |  |  |  |  |  |  |  |  |  |  |  |  |  |
| QTS - 1020 |  | TFO Scope // Submittals & Approval - HACs |  | 30d | 2025-09-03 A | 2025-10-14 A | QTS-1371 SS | 100% |  |  |  |  |  |  |  |  | Precon |  |  | TFO |  |  | TFO CONST |  |
| QTS - 2590 |  | TFO Scope // Submittals & Procurement - Stainless Steel |  | 30d | 2025-09-03 A | 2025-11-05 A | QTS-1371 SS | 100% |  | 2025-09-03 | 2025-10-14 |  |  |  |  |  | Precon |  |  | TFO |  |  | TFO CONST |  |
| QTS - 1980 |  | TFO Scope // Structural Steel Procurement |  | 5d | 2025-09-08 A | 2025-09-12 A | QTS-1371 SS | 100% |  |  |  |  |  | **GLOBAL - 5 Day Workweek w/ Basic Holidays |  |  | Precon |  |  | TFO |  |  | TFO CONST |  |
| QTS - 2620 |  | TFO Scope // Procure Grating |  | 30d | 2025-10-08 A | 2026-07-17 A | QTS-1371 SS | 100% |  | 2025-10-08 | 2025-11-18 |  |  |  | 01ADMIN |  | Precon |  |  | TFO |  |  | TFO CONST | Electrical |
| QTS - 2610 |  | TFO Scope // DH 2100 Fabricate Stainless Steel |  | 20d | 2025-11-06 A | 2025-12-05 A | QTS-1371, QTS-1371 SS | 100% |  | 2025-11-24 | 2025-12-23 |  |  |  |  |  | Precon |  |  | TFO |  |  | TFO CONST |  |
| QTS - 24731 |  | TFO Scope // DH 1100 Fabricate Stainless Steel |  | 20d | 2025-12-03 A | 2025-12-08 A | QTS-1371 SS | 100% |  | 2025-12-03 | 2026-01-06 |  |  |  | 01ADMIN |  | Precon |  |  | TFO |  |  | TFO CONST |  |
| QTS - 24741 |  | TFO Scope // DH 2200 Fabricate Stainless Steel |  | 20d | 2025-12-03 A | 2026-01-27 A | QTS-1371 SS | 100% |  | 2025-12-03 | 2026-01-06 |  |  |  | 01ADMIN |  | Precon |  |  | TFO |  |  | TFO CONST |  |
| QTS - 24851 |  | TFO Scope // Zone 1 MC Cable |  | 20d | 2025-12-03 A | 2026-01-23 A | QTS-1371 SS | 100% |  | 2025-12-03 | 2026-01-06 |  |  |  | 01ADMIN |  | Precon |  |  | TFO |  |  | TFO CONST |  |
| QTS - 25871 |  | TFO Scope // Procure DH 2100 Liquid Cooled Controls |  | 70d | 2026-03-04 A | 2026-07-22 A | QTS-1371 SS | 100% |  | 2026-03-04 | 2026-06-10 |  |  |  | 01ADMIN |  | Precon |  |  | TFO |  |  | TFO CONST | Electrical |
| QTS - 25881 |  | TFO Scope // Procure DH 1100 Liquid Cooled Controls |  | 60d | 2026-03-04 A | 2026-07-22 A | QTS-1371 SS | 100% |  | 2026-03-04 | 2026-05-27 |  |  |  | 01ADMIN |  | Precon |  |  | TFO |  |  | TFO CONST | Electrical |
| QTS - 25901 |  | TFO Scope // Procure DH 1200 Liquid Cooled Controls |  | 80d | 2026-03-04 A | 2026-08-21 | QTS-1371 SS | 96% | 3d | 2026-03-04 | 2026-06-24 | -59d | 0d |  | 01ADMIN |  | Precon |  |  | TFO |  |  |  | Electrical |
| QTS - 26001 |  | TFO Scope // Procure Interior Store Front - Flex Space - North Wall |  | 9d | 2026-03-09 A | 2026-05-29 A | QTS-1371 SS | 100% |  | 2026-03-09 | 2026-03-19 |  |  |  | 01ADMIN |  | Precon |  |  | TFO |  |  | TFO CONST |  |
| QTS - 25891 |  | TFO Scope // Procure DH 2200 Liquid Cooled Controls |  | 80d | 2026-04-22 A | 2026-08-21 | QTS-1371 SS | 96% | 3d | 2026-04-22 | 2026-08-13 | -59d | 0d |  | 01ADMIN |  | Precon |  |  | TFO |  |  |  | Electrical |
| QTS - 25911 |  | TFO Scope // Procure DH 2300 Liquid Cooled Controls |  | 80d | 2026-04-22 A | 2026-08-27 | QTS-1371 SS | 91% | 7d | 2026-04-22 | 2026-08-13 | -7d | 42d |  | 01ADMIN |  | Precon |  |  | TFO |  |  |  | Electrical |
| QTS - 25921 |  | TFO Scope // Procure DH 1300 Liquid Cooled Controls |  | 80d | 2026-04-22 A | 2026-08-27 | QTS-1371 SS | 91% | 7d | 2026-04-22 | 2026-08-13 | -19d | 0d |  | 01ADMIN |  | Precon |  |  | TFO |  |  |  | Electrical |

Notes:
- A1030: Scheduler Notes: RFI 157 - Request for Specifications on Diamond Plate Wainscoting at / Loading Dock

| ID | WBS | Activity | Duration | Start | Finish | Predecessors | Complete | Remaining | Planned start | Planned finish | Total float | Free float | Allucent CSI Group | Layton Discipline | Fragnet | Owner Impact Analysis | Layton Super | Fragnet Responsible Party | TFO-CONST ONLY | Contract | Trade Partner | Delay Notice 07-26 |
| --- | --- | --- | --- | --- | --- | --- | --- | --- | --- | --- | --- | --- | --- | --- | --- | --- | --- | --- | --- | --- | --- | --- |
|  | 1 | **Fragnet / Stainless Steel Delivery Impact** |  | 2025-12-03 | 2026-08-19 |  |  |  |  |  |  |  |  |  |  |  |  |  |  |  |  |  |
| QTS - 24751 |  | TFO Scope // DH 1200 Fabricate Stainless Steel | 20d | 2025-12-03 A | 2026-07-01 A | QTS-1371 SS | 100% |  | 2025-12-03 | 2026-01-06 |  |  | 01ADMIN | Precon | Fragnet | Y | Dave Wiltberger | Bel-Aire Mechanical. LLC | TFO CONST | TFO | Bel-Aire | Delay 07-26 |
| QTS - 24771 |  | TFO Scope // DH 1300 Fabricate Stainless Steel | 20d | 2025-12-03 A | 2026-08-19 | QTS-1371 SS | 95% | 1d | 2025-12-03 | 2026-01-06 | -67d | 4d | 01ADMIN | Precon | Fragnet | Y | Dave Wiltberger | Bel-Aire Mechanical. LLC |  | TFO | Bel-Aire | Delay 07-26 |
| QTS - 26051 |  | TFO Scope // DH 2200 Fabricate Stainless Steel | 20d | 2025-12-03 A | 2026-07-01 A | QTS-1371 SS | 100% |  | 2025-12-03 | 2026-01-06 |  |  | 01ADMIN | Precon | Fragnet | Y | Dave Wiltberger | Bel-Aire Mechanical. LLC | TFO CONST | TFO |  | Delay 07-26 |
| QTS - 26061 |  | TFO Scope // Notice of Delayed Stainless Steel Delivery | 1d | 2026-03-11 A | 2026-03-11 A | QTS-1371 SS | 100% |  | 2025-12-03 | 2025-12-03 |  |  | 01ADMIN | Precon | Fragnet | Y |  | Bel-Aire Mechanical. LLC | TFO CONST | TFO |  | Delay 07-26 |
| QTS - 24761 |  | TFO Scope // DH 2300 Fabricate Stainless Steel | 20d | 2026-03-12 A | 2026-08-19 | QTS-1371 SS, QTS - 26061 | 95% | 1d | 2026-03-18 | 2026-04-14 | -80d | 0d | 01ADMIN | Precon | Fragnet | Y | Dave Wiltberger | Bel-Aire Mechanical. LLC |  | TFO | Bel-Aire | Delay 07-26 |
|  | 3 | **Fragnet / Millwork, Appliances, Quartz Procurement** |  | 2026-04-22 | 2026-08-12 |  |  |  |  |  |  |  |  |  |  |  |  |  |  |  |  |  |
|  | 2 | **TFO / Millwork** |  | 2026-04-22 | 2026-07-28 |  |  |  |  |  |  |  |  |  |  |  |  |  |  |  |  |  |
| QTS - 26241 |  | TFO Scope // ISEC Awarded TFO Contract | 10d | 2026-04-22 A | 2026-05-15 A | QTS-1371 | 100% |  | 2026-04-22 | 2026-05-05 |  |  | 01ADMIN | Precon | Fragnet |  |  | ISEC Inc. | TFO CONST | TFO |  |  |
| QTS - 26211 |  | TFO Scope // Submittals & Shop Drawings Submission - Mill Work | 15d | 2026-05-18 A | 2026-05-19 A | QTS-1371, QTS - 26241 | 100% |  | 2026-05-18 | 2026-06-08 |  |  | 01ADMIN | Precon | Fragnet |  |  | ISEC Inc. | TFO CONST | TFO |  |  |
| QTS - 26221 |  | TFO Scope // Submittals & Shop Drawings Review and Approval - Mill Work | 10d | 2026-05-20 A | 2026-06-19 A | QTS - 26211 | 100% |  | 2026-05-20 | 2026-06-03 |  |  | 01ADMIN | Precon | Fragnet |  | Akash Patel | ISEC Inc. | TFO CONST | TFO |  |  |
| QTS - 26181 |  | TFO Scope // Procure Mill Work - Break Room #0229 | 15d | 2026-06-22 A | 2026-07-28 A | QTS - 26221 | 100% |  | 2026-07-17 | 2026-08-06 |  |  | 01ADMIN | Precon | Fragnet |  | Akash Patel | ISEC Inc. | TFO CONST | TFO | ISEC |  |
| QTS - 26191 |  | TFO Scope // Procure Mill Work - Wellness Room #0231 | 15d | 2026-06-22 A | 2026-07-28 A | QTS - 26221 | 100% |  | 2026-07-17 | 2026-08-06 |  |  | 01ADMIN | Precon | Fragnet |  | Akash Patel | ISEC Inc. | TFO CONST | TFO | ISEC |  |
| QTS - 26201 |  | TFO Scope // Procure Mill Work - Window Sills | 30d | 2026-06-22 A | 2026-07-28 A | QTS - 26221 | 100% |  | 2026-07-17 | 2026-08-27 |  |  | 01ADMIN | Precon | Fragnet |  | Akash Patel | ISEC Inc. | TFO CONST | TFO | ISEC |  |
|  | 1 | **TFO / Appliances** |  | 2026-04-27 | 2026-07-03 |  |  |  |  |  |  |  |  |  |  |  |  |  |  |  |  |  |
| QTS - 26431 |  | TFO Scope // Submittals & Shop Drawings Submission - Appliances | 15d | 2026-04-27 A | 2026-05-14 A | QTS - 26241 | 100% |  | 2026-04-27 | 2026-05-15 |  |  | 01ADMIN | Precon | Fragnet |  |  | ISEC Inc. | TFO CONST | TFO |  |  |
| QTS - 26441 |  | TFO Scope // Submittals & Shop Drawings Review and Approval - Appliances | 10d | 2026-05-15 A | 2026-06-19 A | QTS - 26431 | 100% |  | 2026-05-15 | 2026-05-29 |  |  | 01ADMIN | Precon | Fragnet |  | Akash Patel | ISEC Inc. | TFO CONST | TFO |  |  |
| QTS - 26451 |  | TFO Scope // Procure Appliances - Break Room #0229 | 10d | 2026-06-22 A | 2026-07-03 A | QTS - 26441, QTS - 26441 FF | 100% |  | 2026-07-17 | 2026-07-30 |  |  | 01ADMIN | Precon | Fragnet |  | Akash Patel | ISEC Inc. | TFO CONST | TFO |  |  |
| QTS - 26461 |  | TFO Scope // Procure Appliances - Wellness Room #0231 | 10d | 2026-06-22 A | 2026-07-03 A | QTS - 26441 | 100% |  | 2026-07-17 | 2026-07-30 |  |  | 01ADMIN | Precon | Fragnet |  | Akash Patel | ISEC Inc. | TFO CONST | TFO |  |  |
|  | 3 | **TFO / Quartz and Solid Surface** |  | 2026-04-27 | 2026-08-12 |  |  |  |  |  |  |  |  |  |  |  |  |  |  |  |  |  |
| QTS - 26471 |  | TFO Scope // Submittals & Shop Drawings Review and Approval - Quartz | 10d | 2026-04-27 A | 2026-06-19 A | QTS - 26241 SS | 100% |  | 2026-04-27 | 2026-05-08 |  |  | 01ADMIN | Precon | Fragnet |  | Akash Patel | ISEC Inc. | TFO CONST | TFO |  |  |
| QTS - 26481 |  | TFO Scope // Procure Quartz - Break Room #0229 | 30d | 2026-06-22 A | 2026-08-12 A | QTS - 26471 | 100% |  | 2026-08-05 | 2026-09-16 |  |  | 01ADMIN | Precon | Fragnet |  | Akash Patel | ISEC Inc. |  | TFO | ISEC |  |
| QTS - 26491 |  | TFO Scope // Procure Quartz - Wellness Room #0231 | 30d | 2026-06-22 A | 2026-08-12 A | QTS - 26471 | 100% |  | 2026-08-05 | 2026-09-16 |  |  | 01ADMIN | Precon | Fragnet |  | Akash Patel | ISEC Inc. |  | TFO | ISEC |  |
|  | 2 | **OFCI** |  | 2025-10-29 | 2026-07-08 |  |  |  |  |  |  |  |  |  |  |  |  |  |  |  |  |  |
| QTS - 2600 |  | TFO Scope // Zone 1 QCool Procurement | 20d | 2025-10-29 A | 2025-12-23 A | QTS-1371 SS | 100% |  | 2025-10-29 | 2025-11-25 |  |  | 01ADMIN | Precon |  |  |  |  | TFO CONST | TFO |  |  |
| QTS - 7540 |  | TFO Scope // Zone 2 QCool Procurement | 41d | 2025-11-05 A | 2026-01-13 A | QTS-1371 SS | 100% |  | 2025-11-05 | 2026-01-09 |  |  | 01ADMIN | Precon |  |  |  |  | TFO CONST | TFO |  |  |
| QTS - 7550 |  | TFO Scope // Zone 3 QCool Procurement | 62d | 2025-11-05 A | 2026-04-01 A | QTS-1371 SS | 100% |  | 2025-11-05 | 2026-02-10 |  |  | 01ADMIN | Precon |  |  |  |  | TFO CONST | TFO |  |  |
| QTS - 1040 |  | TFO Scope // CDU - Zone 1 | 20d | 2025-11-17 A | 2025-12-12 A | QTS-1371 SS | 100% |  | 2025-11-17 | 2025-12-16 |  |  | 01ADMIN | Precon |  |  |  |  | TFO CONST | TFO |  |  |
| QTS - 1030 |  | TFO Scope // RPP | 20d | 2025-12-31 A | 2026-02-27 A | QTS-1371 SS | 100% |  | 2025-12-31 | 2026-01-30 |  |  | 01ADMIN | Precon |  |  |  |  | TFO CONST | TFO |  |  |
| QTS - 26121 |  | TFO Scope // CDU - Zone 2 | 20d | 2026-04-01 A | 2026-04-01 A | QTS-1371 SS | 100% |  | 2026-04-01 | 2026-04-28 |  |  | 01ADMIN | Precon |  |  |  |  | TFO CONST | TFO |  |  |
| QTS - 26171 |  | TFO Scope // Liquid Cooled Load Banks Available On Site | 20d | 2026-04-01 A | 2026-07-08 A | QTS-1371, QTS - 25871 SS | 100% |  | 2026-04-01 | 2026-04-28 |  |  | 01ADMIN | Precon |  |  | Dave Wiltberger |  | TFO CONST | TFO |  |  |
| QTS - 26131 |  | TFO Scope // CDU - Zone 3 | 20d | 2026-06-02 A | 2026-07-08 A | QTS-1371 SS | 100% |  | 2026-06-02 | 2026-06-29 |  |  | 01ADMIN | Precon |  |  | Oscar Armenta |  | TFO CONST | TFO |  |  |

Notes:
- QTS - 24751: Scheduler Notes: Delayed Stainless Steel Delivery
- QTS - 26241: Scheduler Notes: TFO Scope // ISEC Awarded TFO Contract
- QTS - 26431: Scheduler Notes: TFO Scope // Submittals & Shop Drawings Submission / Procurement - Appliances
- QTS - 26471: Scheduler Notes: TFO Scope // Submittals & Shop Drawings Review and Approval / Procurement - Quartz
- QTS - 2600: allucent_notes_20251216_165335: Jason Johnston on 2025-12-16 15:18: no update / allucent_notes_20251230_164549: Jason Johnston on 2025-12-16 15:18: no update / allucent_notes: 2025-12-16 15:18 - User: Jason Johnston - Date Added: 2025-12-16 15:18 - Note: no update
- QTS - 1040: allucent_notes_20251216_165335: Jason Johnston on 2025-12-16 15:18: no update / allucent_notes_20251230_164549: Jason Johnston on 2025-12-16 15:18: no update / Jason Johnston on 2025-12-30 16:36: No update / allucent_notes: 2025-12-16 15:18 - User: Jason Johnston - Date Added: 2025-12-16 15:18 - Note: no update / 2025-12-30 16:36 - User: Jason Johnston - Date Added: 2025-12-30 16:36 - Note: No update
- QTS - 26121: allucent_notes_20251216_165335: Jason Johnston on 2025-12-16 15:18: no update / allucent_notes_20251230_164549: Jason Johnston on 2025-12-16 15:18: no update / Jason Johnston on 2025-12-30 16:36: No update / allucent_notes: 2025-12-16 15:18 - User: Jason Johnston - Date Added: 2025-12-16 15:18 - Note: no update / 2025-12-30 16:36 - User: Jason Johnston - Date Added: 2025-12-30 16:36 - Note: No update
- QTS - 26171: allucent_notes_20251216_165335: Jason Johnston on 2025-12-16 15:18: no update / allucent_notes_20251230_164549: Jason Johnston on 2025-12-16 15:18: no update / Jason Johnston on 2025-12-30 16:36: No update / allucent_notes: 2025-12-16 15:18 - User: Jason Johnston - Date Added: 2025-12-16 15:18 - Note: no update / 2025-12-30 16:36 - User: Jason Johnston - Date Added: 2025-12-30 16:36 - Note: No update
- QTS - 26131: allucent_notes_20251216_165335: Jason Johnston on 2025-12-16 15:18: no update / allucent_notes_20251230_164549: Jason Johnston on 2025-12-16 15:18: no update / Jason Johnston on 2025-12-30 16:36: No update / allucent_notes: 2025-12-16 15:18 - User: Jason Johnston - Date Added: 2025-12-16 15:18 - Note: no update / 2025-12-30 16:36 - User: Jason Johnston - Date Added: 2025-12-30 16:36 - Note: No update

| ID | WBS | Activity | Duration | Start | Finish | Predecessors | Complete | Planned start | Planned finish | Layton Discipline | Fragnet | Fragnet Responsible Party | TFO-CONST ONLY | Contract | Layton Super | Notes | Allucent CSI Group | Project Section | Baseline | Phase-1 | Phase-1-1 | Project Section-1 | Level |
| --- | --- | --- | --- | --- | --- | --- | --- | --- | --- | --- | --- | --- | --- | --- | --- | --- | --- | --- | --- | --- | --- | --- | --- |
|  | 1 | **Fragnet / Additional Procurement for RPP Whips** |  | 2025-11-06 | 2026-07-08 |  |  |  |  |  |  |  |  |  |  |  |  |  |  |  |  |  |  |
| QTS - 24781 |  | Fragnet / TFO Scope // Received Equipment for RPP Whips | 1d | 2025-11-06 A | 2025-11-06 A | QTS-1030 SS | 100% |  |  | Precon | Fragnet | Quality Technology Services | TFO CONST | TFO |  |  |  |  |  |  |  |  |  |
| QTS - 24801 |  | Fragnet / TFO Scope // Identify Issue with Equipment for RPP Whips | 10d | 2025-11-07 A | 2025-11-20 A | QTS - 24781 | 100% |  |  | Precon | Fragnet | Quality Technology Services | TFO CONST | TFO |  |  |  |  |  |  |  |  |  |
| QTS - 24811 |  | Fragnet / TFO Scope // QTS Notifies Layton Sourcing for Whips Has Begun | 18d | 2025-11-21 A | 2025-12-18 A | QTS - 24801 | 100% |  |  | Precon | Fragnet | Quality Technology Services | TFO CONST | TFO |  |  |  |  |  |  |  |  |  |
| QTS - 24821 |  | Fragnet / TFO Scope // QTS Notifies Layton Procurement for Whips Has Begun | 10d | 2025-12-19 A | 2026-02-09 A | QTS - 24811 | 100% | 2025-12-19 | 2026-01-08 | Precon | Fragnet | Quality Technology Services | TFO CONST | TFO |  |  |  |  |  |  |  |  |  |
| QTS - 24791 |  | Fragnet / TFO Scope // Procure Connectors for RPP Whips Zone 1 | 75d | 2026-02-10 A | 2026-05-22 A | QTS - 24821 | 100% | 2026-02-11 | 2026-05-27 | Precon | Fragnet | Quality Technology Services | TFO CONST | TFO | Oscar Armenta |  |  |  |  |  |  |  |  |
| QTS - 25691 |  | Fragnet / TFO Scope // Procure Connectors for RPP Whips Zone 2 & Zone 3 | 75d | 2026-02-10 A | 2026-07-08 A | QTS - 24821 | 100% | 2026-02-11 | 2026-05-27 | Precon | Fragnet | Quality Technology Services | TFO CONST | TFO | Oscar Armenta |  |  |  |  |  |  |  |  |
|  | 2 | **BIM TFO Scope** |  | 2025-10-15 | 2026-02-24 |  |  |  |  |  |  |  |  |  |  |  |  |  |  |  |  |  |  |
| QTS - 2240 |  | TFO Scope // DH 2100 BIM | 15d | 2025-10-15 A | 2025-12-03 A | QTS - 1020 FF | 100% | 2025-10-15 | 2025-11-04 | Precon |  |  | TFO CONST | TFO |  | 11/20 |  |  |  |  |  |  |  |
| QTS - 2250 |  | TFO Scope // DH 1100 BIM | 15d | 2025-10-22 A | 2025-12-03 A | QTS - 2240 SS+5d | 100% | 2025-10-22 | 2025-11-11 | Precon |  |  | TFO CONST | TFO |  | 12/15 |  |  |  |  |  |  |  |
| QTS - 10190 |  | TFO Scope // DH 2200 BIM | 15d | 2025-10-29 A | 2026-01-21 A | QTS - 2250 SS+5d | 100% | 2025-10-29 | 2025-11-18 | Precon |  |  | TFO CONST | TFO |  | 1/7/26 | 01ADMIN |  |  |  |  |  |  |
| QTS - 10200 |  | TFO Scope // DH 1200 BIM | 15d | 2026-01-26 A | 2026-02-13 A | QTS - 10190 SS+5d | 100% |  |  | Precon |  |  | TFO CONST | TFO |  |  | 01ADMIN |  |  |  |  |  |  |
| QTS - 10210 |  | TFO Scope // DH 2300 BIM | 15d | 2026-02-02 A | 2026-02-20 A | QTS - 10200 SS+5d | 100% |  |  | Precon |  |  | TFO CONST | TFO |  |  | 01ADMIN |  |  |  |  |  |  |
| QTS - 10220 |  | TFO Scope // DH 1300 BIM | 15d | 2026-02-10 A | 2026-02-24 A | QTS - 10210 SS+5d | 100% | 2026-02-10 | 2026-03-02 | Precon |  |  | TFO CONST | TFO |  |  | 01ADMIN |  |  |  |  |  |  |
|  | 3 | **Construction** |  | 2025-01-15 | 2026-11-19 |  |  |  |  |  |  |  |  |  |  |  |  |  |  |  |  |  |  |
|  | 1 | **Earthwork & Foundations** |  | 2025-01-15 | 2025-11-14 |  |  |  |  |  |  |  |  |  |  |  |  |  |  |  |  |  |  |
| QTS-1201 |  | Mobilize | 5d | 2025-01-15 A | 2025-01-22 A | QTS-1030 SS | 100% |  |  | Earth + Found |  |  |  | BAB |  |  |  | Construction | IGMP |  |  |  |  |
| QTS-3101 |  | Survey Building Corners & Line of Disturbance | 1d | 2025-01-22 A | 2025-01-22 A | QTS-1201 FF | 100% |  |  | Earth + Found |  |  |  | BAB |  |  |  | Construction | IGMP |  |  |  |  |
|  | 1 | **Zone 1 Building Pad / Gridlines 1-21** |  | 2025-01-23 | 2025-11-12 |  |  |  |  |  |  |  |  |  |  |  |  |  |  |  |  |  |  |
| QTS-3191 |  | Zone 1 Building Pad / Gridlines H to D.5 // Condition Existing Bldg. Pad & Import Soil (Includes Roll Test) | 5d | 2025-01-23 A | 2025-02-07 A | QTS-1201, QTS-1171, QTS-3101 | 100% | 2025-01-23 | 2025-01-29 | Earth + Found |  |  |  | BAB |  |  |  | Construction | IGMP | Phase 1 |  |  |  |
| QTS-3301 |  | Zone 1 Building Pad / Gridlines 1-21 // Mobilize Rammed Aggregate Piers Subcontractor | 3d | 2025-02-12 A | 2025-02-14 A | QTS-10922, QTS-3191, QTS-1151 FF | 100% |  |  | Earth + Found |  |  |  | BAB |  |  |  |  | IGMP |  | Phase 1 | Construction |  |
| QTS-7301 |  | Zone 1 Building Pad / Gridlines 1-21 // Install Rammed Aggregate Piers (Building) | 6d | 2025-02-17 A | 2025-02-24 A | QTS-4421, QTS-3301 | 100% | 2025-02-12 | 2025-02-19 | Earth + Found |  |  |  | BAB |  |  |  | Construction | IGMP | Phase 1 |  |  |  |
| QTS-4331 |  | Zone 1 Building Pad / Gridlines 1-21 // Fine Grade Pad | 2d | 2025-03-12 A | 2025-03-13 A | QTS-12821, QTS-7301, QTS-3191 FF+2d, QTS-3191 SS+2d | 100% |  |  | Earth + Found |  |  |  | BAB |  |  |  | Construction | IGMP | Phase 1 |  |  |  |
| QTS-10841 |  | Zone 1 Building Pad / Gridlines 1-21 // Mobilize Equipment | 2d | 2025-03-12 A | 2025-03-14 A | QTS-7301 | 100% |  |  | Earth + Found |  |  |  | BAB |  |  |  |  | IGMP |  | Phase 1 | Construction |  |
| QTS-4721 |  | Zone 1 Building Pad / Gridlines 1-21 // Survey & Certify Pad | 1d | 2025-03-14 A | 2025-03-14 A | QTS-4331 FF, QTS-4331 SS+2d | 100% |  |  | Earth + Found |  |  |  | BAB |  |  |  | Construction | IGMP | Phase 1 |  |  |  |
| QTS-10851 |  | Zone 1 Building Pad / Gridlines 1-21 // Layout Footings & Grade Beams | 1d | 2025-03-17 A | 2025-03-17 A | QTS-1031, QTS-4721, QTS-1131, QTS-7301 | 100% |  |  | Earth + Found |  |  |  | BAB |  |  |  |  | IGMP |  | Phase 1 | Construction |  |
| QTS-11391 |  | Zone 1 Building Pad / Gridlines 1-21 // Excavate & Form Footings & Grade Beams | 10d | 2025-03-17 A | 2025-03-28 A | QTS-8671 SS, QTS-7301, QTS-10841, QTS-10851 SS | 100% | 2025-03-17 | 2025-03-31 | Earth + Found |  |  |  | BAB |  |  |  | Construction | IGMP | Phase 1 |  |  |  |
| QTS-12071 |  | Zone 1 Building Pad / Gridlines 1-21 // Reinforce Footings & Grade Beams | 7d | 2025-03-31 A | 2025-04-08 A | QTS-11391, QTS-11401 FF, QTS-6241, QTS-4451 | 100% |  |  | Earth + Found |  |  |  | BAB |  |  |  | Construction | IGMP | Phase 1 |  |  |  |
| QTS-14901 |  | Zone 1 Building Pad / Gridlines 1-21 // Form, Reinforce, & Pour Freight Elevator Pits | 10d | 2025-03-31 A | 2025-04-23 A | QTS-1411, QTS-12071 SS, QTS-11391 | 100% | 2025-03-31 | 2025-04-11 | Earth + Found |  |  |  | BAB |  |  |  |  | IGMP |  | Phase 1 | Construction |  |
| QTS-12621 |  | Zone 1 Building Pad / Gridlines 1-21 // Install MEP Sleeves | 5d | 2025-04-01 A | 2025-04-04 A | QTS-11391 SS+7d, QTS-7301 | 100% | 2025-04-01 | 2025-04-08 | Earth + Found |  |  |  | BAB |  |  |  | Construction | IGMP | Phase 1 |  |  |  |
| QTS-42321 |  | Zone 1 Building Pad / Gridlines 1-21 // Excavate, Install, & Backfill Telecom Ductbank | 5d | 2025-04-01 A | 2025-04-04 A | QTS-11391 SS+5d | 100% | 2025-04-01 | 2025-04-08 | Earth + Found |  |  |  | BAB |  |  |  |  | IGMP |  | Phase 2 | Construction |  |
| QTS-42331 |  | Zone 1 Building Pad / Gridlines 1-21 // Excavate, Install, & Backfill Telecom Ductbank | 5d | 2025-04-07 A | 2025-05-20 A | QTS-42321 | 100% | 2025-04-07 | 2025-04-11 | Core & Shell |  |  |  | BAB |  |  |  |  | IGMP |  | Phase 2 | Construction |  |
| QTS-12771 |  | Zone 1 Building Pad / Gridlines 1-21 // Pour Footings & Grade Beams | 8d | 2025-04-09 A | 2025-04-23 A | QTS-7871, QTS-12071, QTS-3241, QTS-12761 | 100% | 2025-04-09 | 2025-04-18 | Earth + Found |  |  |  | BAB |  |  |  | Construction | IGMP | Phase 1 |  |  |  |
| QTS-41931 |  | Zone 1 Building Pad / Gridlines 1-21 // Form, Reinforce, & Pour Cast in Place Walls & Grade Beam Tie In | 10d | 2025-04-23 A | 2025-06-12 A | QTS-14901 | 100% | 2025-04-23 | 2025-05-06 | Core & Shell |  |  |  | BAB |  |  |  |  | IGMP |  | Phase 1 | Construction |  |
| QTS-14001 |  | Zone 1 Building Pad / Gridlines 10-21 // Install Sanitary Underground | 10d | 2025-06-13 A | 2025-07-02 A | QTS-19051, QTS-10831, QTS-12771, QTS-9851, QTS-12621 FF | 100% | 2025-06-13 | 2025-06-26 | Mechanical |  |  |  | BAB |  |  | 01ADMIN | Construction | IGMP | Phase 1 |  |  | Underground |
| QTS-15031 |  | Zone 1 Building Pad / Gridlines 10-21 // Install Underground Electrical | 7d | 2025-07-02 A | 2025-07-11 A | QTS-41931 FF, QTS-12771, QTS-14001 FF+5d, QTS-14001 SS+5d, QTS-1421, QTS-12621 FF, QTS-42591 | 100% | 2025-06-27 | 2025-07-08 | Electrical |  |  |  | BAB |  |  | 01ADMIN | Construction | IGMP | Phase 1 |  |  | Underground |
| QTS-44791 |  | Zone 1 Building Pad / Gridlines 1-10 // Install Sanitary Underground - FOH - North | 10d | 2025-07-07 A | 2025-07-22 A | QTS-19621 | 100% | 2025-07-01 | 2025-07-15 | Mechanical |  |  |  | BAB |  |  | 01ADMIN | Construction | IGMP |  | Phase 1 | Construction | Underground |
| QTS-44801 |  | Zone 1 Building Pad / Gridlines 1-10 // Install Underground Electrical - FOH - North | 7d | 2025-07-21 A | 2025-08-15 A | QTS-44791 FF+5d, QTS-44791 SS+5d | 100% | 2025-07-17 | 2025-07-25 | Electrical |  |  |  | BAB |  |  | 01ADMIN | Construction | IGMP |  | Phase 1 | Construction | Underground |
| QTS-46961 |  | Zone 1 Building Pad / Gridlines 1-10 // Install Sanitary Underground - FOH - South | 10d | 2025-07-23 A | 2025-08-26 A | QTS-44801 SS | 100% | 2025-07-23 | 2025-08-05 | Mechanical |  |  |  | BAB |  |  | 01ADMIN | Construction | IGMP |  | Phase 1 | Construction | Underground |
| QTS-16641 |  | Zone 1 Building Pad / Gridlines 1-21 // Waterproof Foundations | 5d | 2025-08-11 A | 2025-08-15 A | QTS-19811, QTS-12771 SS, QTS-10081 | 100% | 2025-08-08 | 2025-08-14 | Core & Shell |  |  |  | BAB |  |  | 01ADMIN | Construction | IGMP |  | Phase 1 | Construction |  |
| QTS-99140 |  | Zone 1 Building Pad / Gridlines 1-10 // Waterproof Foundations | 5d | 2025-08-21 A | 2025-11-12 A | QTS-16641 | 100% | 2025-08-21 | 2025-08-27 | Core & Shell |  |  |  | BAB |  |  | 01ADMIN | Construction | IGMP |  | Phase 1 | Construction |  |
| QTS-46971 |  | Zone 1 Building Pad / Gridlines 1-10 // Install Underground Electrical - FOH - South | 7d | 2025-08-27 A | 2025-09-05 A | QTS-46961 FF+7d, QTS-46961 SS+7d | 100% |  |  | Electrical |  |  |  | BAB |  |  | 01ADMIN | Construction | IGMP |  | Phase 1 | Construction | Underground |
| QTS-99290 |  | Zone 1 Building Pad / Gridlines 10-21 // Waterproof Foundations - South | 2d | 2025-10-07 A | 2025-10-08 A | QTS-16641 | 100% |  |  | Core & Shell |  |  |  | BAB |  |  | 01ADMIN | Construction | IGMP |  | Phase 1 | Construction |  |

Notes:
- QTS - 24781: Scheduler Notes: Fragnet / TFO Scope // Identify Issue with Equipment for RPP Whips / Procurement
- QTS - 10190: allucent_notes_20251216_165335: Jason Johnston on 2025-12-09 15:18: Need to confirm who is responsible for updating this / Jason Johnston on 2025-12-16 15:18: no update / allucent_notes_20251209_203830: Jason Johnston on 2025-12-09 15:18: Need to confirm who is responsible for updating this / allucent_notes_20251230_164549: Jason Johnston on 2025-12-09 15:18: Need to confirm who is responsible for updating this / Jason Johnston on 2025-12-16 15:18: no update / Jason Johnston on 2025-12-30 16:36: No update / allucent_notes: 2025-12-09 15:18 - User: Jason Johnston - Date Added: 2025-12-09 15:18 - Note: Need to confirm who is responsible for updating this / 2025-12-16 15:18 - User: Jason Johnston - Date Added: 2025-12-16 15:18 - Note: no update / 2025-12-30 16:36 - User: Jas
- QTS - 10200: allucent_notes_20251216_165335: Jason Johnston on 2025-12-09 15:18: Need to confirm who is responsible for updating this / Jason Johnston on 2025-12-16 15:18: no update / allucent_notes_20251209_203830: Jason Johnston on 2025-12-09 15:18: Need to confirm who is responsible for updating this / allucent_notes_20251230_164549: Jason Johnston on 2025-12-09 15:18: Need to confirm who is responsible for updating this / Jason Johnston on 2025-12-16 15:18: no update / Jason Johnston on 2025-12-30 16:36: No update / allucent_notes: 2025-12-09 15:18 - User: Jason Johnston - Date Added: 2025-12-09 15:18 - Note: Need to confirm who is responsible for updating this / 2025-12-16 15:18 - User: Jason Johnston - Date Added: 2025-12-16 15:18 - Note: no update / 2025-12-30 16:36 - User: Jas
- QTS-11391: allucent_notes: Adam Evarts on 2024-08-21 10:08: test / Sean Waisner on 2024-08-21 09:08: Awaiting Elevator Shop drawings
- QTS-46961: allucent_notes: David Wiltberger on 2025-08-05T10:59:21.984Z: impacted by OEG and REI turnover in FOH. Turn over is 8/5/2025 / allucent_notes: 2025-08-05T10:59:21.984Z - User: David Wiltberger - Date Added: 2025-08-05T10:59:21.984Z - Note: impacted by OEG and REI turnover in FOH. Turn over is 8/5/2025 / 2025-08-19 09:08 - User: David Wiltberger - Date Added: 2025-08-19 09:08 - Note: Front of
- QTS-16641: allucent_notes: Jason Johnston on 2025-08-12 13:08: tilt panels delayed start / allucent_notes: 2025-08-12 13:08 - User: Jason Johnston - Date Added: 2025-08-12 13:08 - Note: tilt panels delayed start
- QTS-99140: allucent_notes_20251118_192630: Jason Johnston on 2025-08-19 13:08: Need to get survey out to mark grade height for water proofers. - Ron / Jason Johnston on 2025-08-26 15:08: Other subcontractor was impeding access to area of front of house. / Jason Johnston on 2025-09-02 15:09: Man power issues. / Jason Johnston on 2025-09-30 12:09: Workers were reallocated to ensure gen yard was completely finished / Jason Johnston on 2025-10-07 13:10: water proofers were behind due to man power issues. painters painted over remaining section for water proofing delaying finish of water proofers. / Jason Johnston on 2025-10-14 14:10: Will return to this on the back end / Jason Johnston on 2025-10-27 13:10: Area restricted because of building access path / Jason Johnston on 2025-11-11 14:11: Halfway done. will be done 11/12. / allucent_notes_20251111_182405: Jason Johnston on 2025-08-19 13:08: Need to get survey out to mark grade height for water proofers. - Ron / Jason Johnston on 2025-08-26 15:08: Other subcontractor was impeding access to area of front of house. / Jason Johnston on 2025-09-02 15:09: Man power issues. / Jason Johnston on 2025-09-30 12:09: Workers were reallocated to ensure gen yard was completely finished / Jason Johnston on 2025-10-07 13:10: water proofers were behind due to man power issues. painters painted over remaining section for water proofing delaying finish of water proofers. / Jason Johnston on 2025-10-14 14:10: Will return to this on the back end / Jason Johnston on 2025-10-27 13:10: Area restricted because of building access path / Jason Johnston on 2025-11-11 14:11: Halfway done. will be done 11/12. / allucent_notes_20251104_160200: Jason Johnston on 2025-08-19 13:08: Need to get survey out to mark grade height for water proofers. - Ron / Jason Johnston on 2025-08-26 15:08: Other subcontractor was impeding access to area of front of house. / Jason Johnston on 2025-09-02 15:09: Man power issues. / Jason Johnston on 2025-09-30 12:09: Workers were reallocated to ensure gen yard was completely finished / Jason Johnston on 2025-10-07 13:10: water proofers were behind due to man power issues. painters painted over remaining section for water proofing delaying finish of water proofers. / Jason Johnston on 2025-10-14 14:10: Will return to this on the back end / Jason Johnston on 2025-10-27 13:10: Area restricted because of building access path / allucent_notes_20251028_163138: Jason Johnston on 2025-08-19 13:08: Need to get survey out to mark grade height for water proofers. - Ron / Jason Johnston on 2025-08-26 15:08: Other subcontractor was impeding access to area of front of house. / Jason Johnston on 2025-09-02 15:09: Man power issues. / Jason Johnston on 2025-09-30 12:09: Workers were reallocated to ensure gen yard was completely finished / Jason Johnston on 2025-10-07 13:10: water proofers were behind due to man power issues. painters painted over remaining section for water proofing delaying finish of water proofers. / Jason Johnston on 2025-10-14 14:10: Will return to this on the back end / Jason Johnston on 2025-10-27 13:10: Area restricted because of building access path / allucent_notes_20251027_224008: Jason Johnston on 2025-08-19 13:08: Need to get survey out to mark grade height for water proofers. - Ron / Jason Johnston on 2025-08-26 15:08: Other subcontractor was impeding access to area of front of house. / Jason Johnston on 2025-09-02 15:09: Man power issues. / Jason Johnston on 2025-09-30 12:09: Workers were reallocated to ensure gen yard was completely finished / Jason Johnston on 2025-10-07 13:10: water proofers were behind due to man power issues. painters painted over remaining section for water proofing delaying finish of water proofers. / Jason Johnston on 2025-10-14 14:10: Will return to this on the back end / Jason Johnston on 2025-10-27 13:10: Area restricted because of building access path / allucent_notes_20251021_145627: Jason Johnston on 2025-08-19 13:08: Need to get survey out to mark grade height for water proofers. - Ron / Jason Johnston on 2025-08-26 15:08: Other subcontractor was impeding access to area of front of house. / Jason Johnston on 2025-09-02 15:09: Man power issues. / Jason Johnston on 2025-09-30 12:09: Workers were reallocated to ensure gen yard was completely finished / Jason Johnston on 2025-10-07 13:10: water proofers were behind due to man power issues. painters painted over remaining section for water proofing delaying finish of water proofers. / Jason Johnston on 2025-10-14 14:10: Will return to this on the back end / allucent_notes_20251014_152335: Jason Johnston on 2025-08-19 13:08: Need to get survey out to mark grade height for water proofers. - Ron / Jason Johnston on 2025-08-26 15:08: Other subcontractor was impeding access to area of front of house. / Jason Johnston on 2025-09-02 15:09: Man power issues. / Jason Johnston on 2025-09-30 12:09: Workers were reallocated to ensure gen yard was completely finished / Jason Johnston on 2025-10-07 13:10: water proofers were behind due to man power issues. painters painted over remaining section for water proofing delaying finish of water proofers. / Jason Johnston on 2025-10-14 14:10: Will return to this on the back end / allucent_notes: Jason Johnston on 2025-08-19 13:08: Need to get survey out to mark grade height for water proofers. - Ron / allucent_notes: 2025-08-19 13:08 - User: Jason Johnston - Date Added: 2025-08-19 13:08 - Note: Need to get survey out to mark grade height for water proofers. - Ron / 2025-08-26 15:08 - User: Jason Johnston - Date Added: 2025-08-26 15:08 - Note: Other subcontractor was
- QTS-99290: allucent_notes_20251014_152335: Jason Johnston on 2025-10-14 14:10: Breaking tie to FOH / allucent_notes: Jason Johnston on 2025-08-19 13:08: Need to get survey out to mark grade height for water proofers. - Ron / allucent_notes: 2025-10-14 14:10 - User: Jason Johnston - Date Added: 2025-10-14 14:10 - Note: Breaking tie to FOH

| ID | WBS | Activity | Duration | Start | Finish | Predecessors | Complete | Planned start | Planned finish | Project Section | Phase-1 | Layton Discipline | Baseline | Contract | Phase-1-1 | Project Section-1 | Allucent CSI Group | Level |
| --- | --- | --- | --- | --- | --- | --- | --- | --- | --- | --- | --- | --- | --- | --- | --- | --- | --- | --- |
|  | 2 | **Zone 2 Building Pad / Gridlines 21-30** |  | 2025-01-31 | 2025-10-29 |  |  |  |  |  |  |  |  |  |  |  |  |  |
| QTS-4421 |  | Zone 2 Building Pad / Gridlines 21-30 // Condition Existing Bldg. Pad & Import Soil (Includes Roll Test) | 5d | 2025-01-31 A | 2025-02-06 A | QTS-3191 SS, QTS-3191 | 100% |  |  | Construction | Phase 2 | Earth + Found | IGMP | BAB |  |  |  |  |
| QTS-10831 |  | Zone 2 Building Pad / Gridlines 21-30 // Install Rammed Aggregate Piers (Building) | 5d | 2025-02-25 A | 2025-03-03 A | QTS-7301 | 100% |  |  | Construction | Phase 2 | Earth + Found | IGMP | BAB |  |  |  |  |
| QTS-41891 |  | Zone 2 Building Pad / Gridlines 21-30 // Fine Grade Pad | 2d | 2025-03-12 A | 2025-03-13 A | QTS-12821 | 100% |  |  |  |  | Earth + Found | IGMP | BAB | Phase 2 | Construction |  |  |
| QTS-41901 |  | Zone 2 Building Pad / Gridlines 21-30 // Survey & Certify Pad | 1d | 2025-03-14 A | 2025-03-14 A | QTS-41891 FF, QTS-41891 SS+2d | 100% |  |  |  |  | Earth + Found | IGMP | BAB | Phase 2 | Construction |  |  |
| QTS-14851 |  | Zone 2 Building Pad / Gridlines 21-30 // Form, Reinforce, & Pour Freight Elevator Pit | 10d | 2025-03-31 A | 2025-04-23 A | QTS-14901 SS | 100% | 2025-03-31 | 2025-04-11 | Construction | Phase 2 | Earth + Found | IGMP | BAB |  |  |  |  |
| QTS-15411 |  | Zone 2 Building Pad / Gridlines 21-30 // Excavate, Install, & Backfill Telecom Ductbank | 5d | 2025-04-14 A | 2025-04-18 A | QTS-10831 | 100% |  |  |  |  | Earth + Found | IGMP | BAB | Phase 2 | Construction |  |  |
| QTS-12801 |  | Zone 2 Building Pad / Gridlines 21-30 // Layout Footings & Grade Beams | 1d | 2025-04-21 A | 2025-04-21 A | QTS-12771 SS+8d, QTS-10831 | 100% |  |  |  |  | Earth + Found | IGMP | BAB | Phase 2 | Construction |  |  |
| QTS-12881 |  | Zone 2 Building Pad / Gridlines 21-30 // Excavate & Form Footings & Grade Beams | 6d | 2025-04-21 A | 2025-04-28 A | QTS-3251, QTS-41901, QTS-11391, QTS-10831, QTS-12801 SS | 100% |  |  | Construction | Phase 2 | Earth + Found | IGMP | BAB |  |  |  |  |
| QTS-41941 |  | Zone 2 Building Pad / Gridlines 21-30 // Form, Reinforce, & Pour Cast in Place Walls & Grade Beam Tie In | 10d | 2025-04-23 A | 2025-06-12 A | QTS-42331 SS, QTS-14851, QTS-14851 FF+5d | 100% | 2025-04-23 | 2025-05-06 |  |  | Core & Shell | IGMP | BAB | Phase 2 | Construction |  |  |
| QTS-13291 |  | Zone 2 Building Pad / Gridlines 21-30 // Reinforce Footings & Grade Beams | 4d | 2025-04-29 A | 2025-05-02 A | QTS-12881, QTS-12071 SS | 100% |  |  | Construction | Phase 2 | Earth + Found | IGMP | BAB |  |  |  |  |
| QTS-13981 |  | Zone 2 Building Pad / Gridlines 21-30 // Pour Footings & Grade Beams | 6d | 2025-05-05 A | 2025-05-12 A | QTS-13291 | 100% |  |  | Construction | Phase 2 | Core & Shell | IGMP | BAB |  |  |  |  |
| QTS-15831 |  | Zone 2 Building Pad / Gridlines 21-30 // Excavate, Install, & Backfill Telecom Ductbank | 5d | 2025-06-04 A | 2025-06-10 A | QTS-15411 | 100% |  |  |  |  | Core & Shell | IGMP | BAB | Phase 2 | Construction |  |  |
| QTS-13241 |  | Zone 2 Building Pad / Gridlines 21-30 // Install MEP Sleeves | 5d | 2025-07-07 A | 2025-07-11 A | QTS-12621 SS, QTS-12881 SS+2d, QTS-10831 | 100% |  |  | Construction | Phase 2 | Mechanical | IGMP | BAB |  |  | 01ADMIN |  |
| QTS-15791 |  | Zone 2 Building Pad / Gridlines 21-30 // Install Sanitary Underground | 5d | 2025-08-11 A | 2025-08-27 A | QTS-42601, QTS-38741, QTS-13241, QTS-21081, QTS-41941, QTS-12881, QTS-14001, QTS-13981 | 100% | 2025-08-11 | 2025-08-15 | Construction | Phase 2 | Mechanical | IGMP | BAB |  |  | 01ADMIN | Underground |
| QTS-16771 |  | Zone 2 Building Pad / Gridlines 21-30 // Install Underground Electrical | 4d | 2025-08-15 A | 2025-09-08 A | QTS-38741, QTS-15831, QTS-15031, QTS-15791 FF+3d, QTS-15791 SS+3d | 100% | 2025-08-15 | 2025-08-20 | Construction | Phase 2 | Electrical | IGMP | BAB |  |  | 01ADMIN | Underground |
| QTS-17261 |  | Zone 2 Building Pad / Gridlines 21-30 // Waterproof Foundations - North | 5d | 2025-09-16 A | 2025-09-24 A | QTS-21521 SS, QTS-13981, QTS-13241, QTS-16641 | 100% | 2025-09-16 | 2025-09-22 | Construction |  | Core & Shell | IGMP | BAB | Phase 2 | Construction | 01ADMIN |  |
| QTS-99460 |  | Zone 2 Building Pad / Gridlines 21-30 // Waterproof Foundations - South | 2d | 2025-10-22 A | 2025-10-29 A | QTS-99290 | 100% | 2025-10-22 | 2025-10-23 | Construction |  | Core & Shell | IGMP | BAB | Phase 2 | Construction | 01ADMIN |  |
|  | 5 | **Zone 3 Building Pad / Gridlines 30-41** |  | 2025-02-07 | 2025-11-14 |  |  |  |  |  |  |  |  |  |  |  |  |  |
| QTS-6301 |  | Zone 3 Building Pad / Gridlines 30-41 // Condition Existing Bldg. Pad & Import Soil (Includes Roll Test) | 5d | 2025-02-07 A | 2025-02-13 A | QTS-4421 | 100% |  |  |  |  | Core & Shell | IGMP | BAB | Phase 3 | Construction |  |  |
| QTS-12821 |  | Zone 3 Building Pad / Gridlines 30-41 // Install Rammed Aggregate Piers (Building) | 6d | 2025-03-04 A | 2025-03-11 A | QTS-6301, QTS-10831 | 100% |  |  |  |  | Core & Shell | IGMP | BAB | Phase 3 | Construction |  |  |
| QTS-41911 |  | Zone 3 Building Pad / Gridlines 30-41 // Fine Grade Pad | 2d | 2025-03-12 A | 2025-03-13 A | QTS-12821 | 100% |  |  |  |  | Core & Shell | IGMP | BAB | Phase 3 | Construction |  |  |
| QTS-41921 |  | Zone 3 Building Pad / Gridlines 30-41 // Survey & Certify Pad | 1d | 2025-03-14 A | 2025-03-14 A | QTS-41911 FF, QTS-41911 SS+2d | 100% |  |  |  |  | Core & Shell | IGMP | BAB | Phase 3 | Construction |  |  |
| QTS-14461 |  | Zone 3 Building Pad / Gridlines 30-41 // Layout Footings & Grade Beams | 1d | 2025-05-19 A | 2025-05-19 A | QTS-12821 | 100% |  |  |  |  | Core & Shell | IGMP | BAB | Phase 3 | Construction |  |  |
| QTS-14631 |  | Zone 3 Building Pad / Gridlines 30-41 // Excavate & Form Footings & Grade Beams | 10d | 2025-05-20 A | 2025-06-03 A | QTS-13981, QTS-12881, QTS-41921, QTS-12821, QTS-14461 | 100% |  |  |  |  | Core & Shell | IGMP | BAB | Phase 3 | Construction |  |  |
| QTS-15241 |  | Zone 3 Building Pad / Gridlines 30-41 // Reinforce Footings & Grade Beams | 7d | 2025-05-28 A | 2025-06-05 A | QTS-14631 | 100% |  |  |  |  | Core & Shell | IGMP | BAB | Phase 3 | Construction |  |  |
| QTS-16661 |  | Zone 3 Building Pad / Gridlines 30-41 // Form, Reinforce, & Pour Freight Elevator Pit | 10d | 2025-06-04 A | 2025-06-17 A | QTS-15241 SS+4d, QTS-14631 | 100% |  |  |  |  | Core & Shell | IGMP | BAB | Phase 3 | Construction |  |  |
| QTS-15721 |  | Zone 3 Building Pad / Gridlines 30-41 // Pour Footings & Grade Beams | 7d | 2025-06-06 A | 2025-06-16 A | QTS-15241 | 100% |  |  |  |  | Core & Shell | IGMP | BAB | Phase 3 | Construction |  |  |
| QTS-16191 |  | Zone 3 Building Pad / Gridlines 30-41 // Excavate, Install, & Backfill Telecom Ductbank | 5d | 2025-06-11 A | 2025-06-17 A | QTS-15831, QTS-10831 | 100% |  |  |  |  | Core & Shell | IGMP | BAB | Phase 3 | Construction |  |  |
| QTS-16761 |  | Zone 3 Building Pad / Gridlines 30-41 // Excavate, Install, & Backfill Telecom Ductbank | 5d | 2025-06-11 A | 2025-06-17 A | QTS-16191 | 100% |  |  |  |  | Core & Shell | IGMP | BAB | Phase 3 | Construction |  |  |
| QTS-41951 |  | Zone 3 Building Pad / Gridlines 30-41 // Form, Reinforce, & Pour Cast in Place Walls & Grade Beam Tie In | 9d | 2025-06-11 A | 2025-06-25 A | QTS-16661 SS | 100% | 2025-06-11 | 2025-06-23 | Construction |  | Core & Shell | IGMP | BAB | Phase 3 | Construction | 01ADMIN |  |
| QTS-15081 |  | Zone 3 Building Pad / Gridlines 30-41 // Install MEP Sleeves | 5d | 2025-07-07 A | 2025-07-11 A | QTS-14631 SS+2d, QTS-12821 | 100% |  |  | Construction |  | Mechanical | IGMP | BAB | Phase 3 | Construction | 01ADMIN |  |
| QTS-16671 |  | Zone 3 Building Pad / Gridlines 38-41 // Install Sanitary Underground | 9d | 2025-09-24 A | 2025-10-08 A | QTS-42611, QTS-38741, QTS-15081, QTS-41951, QTS-14631, QTS-15721 | 100% | 2025-09-24 | 2025-10-06 | Construction |  | Mechanical | IGMP | BAB | Phase 3 | Construction | 01ADMIN | Underground |
| QTS-18061 |  | Zone 3 Building Pad / Gridlines 30-41 // Waterproof Foundations - North | 2d | 2025-09-25 A | 2025-10-02 A | QTS-15721, QTS-15081, QTS-17261 | 100% | 2025-09-25 | 2025-09-26 | Construction |  | Core & Shell | IGMP | BAB | Phase 3 | Construction | 01ADMIN |  |
| QTS-17341 |  | Zone 3 Building Pad / Gridlines 38-41 // Install Underground Electrical | 8d | 2025-10-09 A | 2025-10-24 A | QTS-7311, QTS-38741, QTS-16761, QTS-16671 | 100% | 2025-10-09 | 2025-10-20 | Construction |  | Electrical | IGMP | BAB | Phase 3 | Construction | 01ADMIN | Underground |
| QTS-99480 |  | Zone 3 Building Pad / Gridlines 30-41 // Waterproof Foundations - South | 2d | 2025-11-03 A | 2025-11-04 A | QTS-99460 | 100% |  |  | Construction |  | Core & Shell | IGMP | BAB | Phase 3 | Construction | 01ADMIN |  |
| QTS-99470 |  | Zone 3 Building Pad / Gridlines 30-41 // Waterproof Foundations - East | 2d | 2025-11-13 A | 2025-11-14 A | QTS-99480, QTS-99140, QTS-99460, QTS-18061 | 100% | 2025-11-06 | 2025-11-07 | Construction |  | Core & Shell | IGMP | BAB | Phase 3 | Construction | 01ADMIN |  |

Notes:
- QTS-15791: allucent_notes: David Wiltberger on 2025-08-05 04:08: Bel-Aire impact. only 1 plumbing team working in FOH / allucent_notes: 2025-08-05 04:08 - User: David Wiltberger - Date Added: 2025-08-05 04:08 - Note: Bel-Aire impact. only 1 plumbing team working in FOH / 2025-08-19 09:08 - User: David Wiltberger - Date Added: 2025-08-19 09:08 - Note: Pushed due to delays from front of ho
- QTS-16771: allucent_notes: Jason Johnston on 2025-09-02 15:09: Delayed due to access to zone 3 for underground. / allucent_notes: 2025-09-02 15:09 - User: Jason Johnston - Date Added: 2025-09-02 15:09 - Note: Delayed due to access to zone 3 for underground.
- QTS-99460: allucent_notes_20251104_160200: Jason Johnston on 2025-10-14 14:10: Rain delayed start / Jason Johnston on 2025-10-21 12:10: Needed area cleaned before this could start. / Jason Johnston on 2025-10-27 13:10: Prep for water proofers was sub standard so the work could not be completed. / allucent_notes_20251028_163138: Jason Johnston on 2025-10-14 14:10: Rain delayed start / Jason Johnston on 2025-10-21 12:10: Needed area cleaned before this could start. / Jason Johnston on 2025-10-27 13:10: Prep for water proofers was sub standard so the work could not be completed. / allucent_notes_20251027_224008: Jason Johnston on 2025-10-14 14:10: Rain delayed start / Jason Johnston on 2025-10-21 12:10: Needed area cleaned before this could start. / Jason Johnston on 2025-10-27 13:10: Prep for water proofers was sub standard so the work could not be completed. / allucent_notes_20251021_145627: Jason Johnston on 2025-10-14 14:10: Rain delayed start / Jason Johnston on 2025-10-21 12:10: Needed area cleaned before this could start. / allucent_notes_20251014_152335: Jason Johnston on 2025-10-14 14:10: Rain delayed start / allucent_notes: 2025-10-14 14:10 - User: Jason Johnston - Date Added: 2025-10-14 14:10 - Note: Rain delayed start / 2025-10-21 12:10 - User: Jason Johnston - Date Added: 2025-10-21 12:10 - Note: Needed area cleaned before this could start. / 2025-10-27 13:10 - User: Ja
- QTS-16671: allucent_notes_20251014_152335: David Wiltberger on 2025-09-09 13:09: Zone not turned over until 9/7 / David Wiltberger on 2025-09-09 14:09: impacted by Late Zone 3 turnover and waiting for BAM to complete tasks / David Wiltberger on 2025-10-07 15:10: Need to backfill / allucent_notes: 2025-09-09 13:09 - User: David Wiltberger - Date Added: 2025-09-09 13:09 - Note: Zone not turned over until 9/7 / 2025-09-09 14:09 - User: David Wiltberger - Date Added: 2025-09-09 14:09 - Note: impacted by Late Zone 3 turnover and waiting for BAM to com
- QTS-17341: allucent_notes_20251027_224008: Scott Masterson on 2025-10-21 11:10: Rain delays created issues with digging and back filling. The south portion has been released to SUntec. The small northern portion is all that requires this date extention. / allucent_notes_20251021_145627: Scott Masterson on 2025-10-21 11:10: Rain delays created issues with digging and back filling. The south portion has been released to SUntec. The small northern portion is all that requires this date extention. / allucent_notes: 2025-10-21 11:10 - User: Scott Masterson - Date Added: 2025-10-21 11:10 - Note: Rain delays created issues with digging and back filling. The south portion has been released to SUntec. The small northern portion is all that requires this date extention.
- QTS-99470: allucent_notes_20251118_192630: Jason Johnston on 2025-11-03 14:11: Change tie to after FOH water proofing. / allucent_notes_20251111_182405: Jason Johnston on 2025-11-03 14:11: Change tie to after FOH water proofing. / allucent_notes_20251104_160200: Jason Johnston on 2025-11-03 14:11: Change tie to after FOH water proofing. / allucent_notes: 2025-11-03 14:11 - User: Jason Johnston - Date Added: 2025-11-03 14:11 - Note: Change tie to after FOH water proofing.

| ID | WBS | Activity | Duration | Start | Finish | Predecessors | Complete | Planned start | Planned finish | Layton Discipline | Baseline | Phase-1-1 | Project Section-1 | Contract | Project Section | Phase-1 | Allucent CSI Group | Location |
| --- | --- | --- | --- | --- | --- | --- | --- | --- | --- | --- | --- | --- | --- | --- | --- | --- | --- | --- |
|  | 3 | **Gen Yard** |  |  |  |  |  |  |  |  |  |  |  |  |  |  |  |  |
|  | 3 | **Structure & Shell** |  | 2025-04-22 | 2026-02-02 |  |  |  |  |  |  |  |  |  |  |  |  |  |
|  | 3 | **Zone 1 / Gridlines 1-21 (Steel/SOMD/SOG/Tilt)** |  | 2025-04-22 | 2025-10-01 |  |  |  |  |  |  |  |  |  |  |  |  |  |
|  | 2 | **Zone 1 / Structural Steel** |  | 2025-04-22 | 2025-10-01 |  |  |  |  |  |  |  |  |  |  |  |  |  |
| QTS-43381 |  | Zone 1 / Staging and Layout Steel | 6d | 2025-04-22 A | 2025-04-29 A | QTS-43001 | 100% |  |  | Core & Shell | IGMP | Phase 1 | Construction | BAB |  |  |  |  |
| QTS-16911 |  | Zone 1 / Gridlines 10-11 // Erect Steel | 4d | 2025-04-30 A | 2025-05-05 A | QTS-43381, QTS-1121, QTS-12771, QTS-15371 | 100% |  |  | Core & Shell | IGMP |  |  | BAB | Construction | Phase 1 |  |  |
| QTS-17621 |  | Zone 1 / Gridlines 11-13 // Erect Steel | 3d | 2025-05-06 A | 2025-05-08 A | QTS-19471 SS, QTS-16911 | 100% |  |  | Core & Shell | IGMP |  |  | BAB | Construction | Phase 1 |  |  |
| QTS-17631 |  | Zone 1 / Gridlines 10-11 // Install Decking & Studs | 4d | 2025-05-06 A | 2025-05-09 A | QTS-43171, QTS-16911 | 100% |  |  | Core & Shell | IGMP |  |  | BAB | Construction | Phase 1 |  |  |
| QTS-18351 |  | Zone 1 / Gridlines 13-15 // Erect Steel | 3d | 2025-05-09 A | 2025-05-13 A | QTS-17621 | 100% |  |  | Core & Shell | IGMP |  |  | BAB | Construction | Phase 1 |  |  |
| QTS-18361 |  | Zone 1 / Gridlines 11-13 // Install Decking & Studs | 3d | 2025-05-12 A | 2025-05-14 A | QTS-17621, QTS-17631 FF+3d | 100% |  |  | Core & Shell | IGMP |  |  | BAB | Construction | Phase 1 |  |  |
| QTS-18491 |  | Zone 1 / Gridlines 15-17 // Erect Steel | 3d | 2025-05-14 A | 2025-05-16 A | QTS-18351 | 100% |  |  | Core & Shell | IGMP |  |  | BAB | Construction | Phase 1 |  |  |
| QTS-18501 |  | Zone 1 / Gridlines 13-15 // Install Decking & Studs | 3d | 2025-05-15 A | 2025-05-19 A | QTS-18351, QTS-18361 | 100% |  |  | Core & Shell | IGMP |  |  | BAB | Construction | Phase 1 |  |  |
| QTS-18761 |  | Zone 1 / Gridlines 17-19 // Erect Steel | 3d | 2025-05-19 A | 2025-05-22 A | QTS-18491 | 100% | 2025-05-19 | 2025-05-21 | Core & Shell | IGMP |  |  | BAB | Construction | Phase 1 |  |  |
| QTS-18791 |  | Zone 1 / Gridlines 15-17 // Install Decking & Studs | 3d | 2025-05-20 A | 2025-05-23 A | QTS-18491, QTS-18501 FF+3d | 100% | 2025-05-20 | 2025-05-22 | Core & Shell | IGMP | Phase 1 | Construction | BAB |  |  |  |  |
| QTS-18911 |  | Zone 1 / Gridlines 19-21 // Erect Steel | 5d | 2025-05-23 A | 2025-05-30 A | QTS-43211, QTS-18761 | 100% |  |  | Core & Shell | IGMP | Phase 1 | Construction | BAB |  |  |  |  |
| QTS-18871 |  | Zone 1 / Gridlines 17-19 // Install Decking & Studs | 3d | 2025-05-27 A | 2025-05-29 A | QTS-18761, QTS-18791 FF+3d | 100% |  |  | Core & Shell | IGMP |  |  | BAB | Construction | Phase 1 |  |  |
| QTS-19051 |  | Zone 1 / Gridlines 19-21 // Install Decking & Studs | 4d | 2025-06-02 A | 2025-06-05 A | QTS-18871 FF+3d, QTS-18911 | 100% |  |  | Core & Shell | IGMP | Phase 1 | Construction | BAB |  |  |  |  |
| QTS-42591 |  | Zone 1 / Gridlines 10-21 // Detailing and Bracing | 10d | 2025-06-06 A | 2025-06-19 A | QTS-19051 | 100% |  |  | Core & Shell | IGMP | Phase 1 | Construction | BAB |  |  |  |  |
| QTS-49351 |  | Zone 1 / Gridlines 10-21 // Stair 705 Erect/Detail | 5d | 2025-07-07 A | 2025-07-07 A | QTS-46821, QTS-49221 | 100% | 2025-07-16 | 2025-07-22 | Core & Shell | IGMP | Phase 1 | Construction | BAB | Construction |  | 01ADMIN |  |
| QTS-50811 |  | Zone 1 / Gridlines 10-21 // Stair 705 Erect/Detail | 5d | 2025-09-24 A | 2025-09-30 A | QTS-44781, QTS-49351 | 100% |  |  | Core & Shell | IGMP | Phase 1 | Construction | BAB | Construction |  | 01ADMIN |  |
|  | 1 | **Zone 1 / FOH Structural Steel** |  | 2025-05-14 | 2025-10-01 |  |  |  |  |  |  |  |  |  |  |  |  |  |
| QTS-18801 |  | Zone 1 / Gridlines 1-10 // Perimeter/Roof Erect - Sequence 40-3,340-341 | 8d | 2025-05-14 A | 2025-06-03 A | QTS-43421, QTS-18351 | 100% | 2025-05-14 | 2025-05-23 | Core & Shell | IGMP | Phase 1 | Construction | BAB |  |  |  | FOH |
| QTS-19061 |  | Zone 1 / Gridlines 1-10 // Perimeter/Roof Detail - Sequence 40-3 | 10d | 2025-05-16 A | 2025-05-30 A | QTS-43171, QTS-18801 SS+2d | 100% |  |  | Core & Shell | IGMP | Phase 1 | Construction | BAB |  |  |  | FOH |
| QTS-42621 |  | Zone 1 / Gridlines 1-10 // Mezzanine Erect - Sequence 240-241 | 10d | 2025-05-30 A | 2025-06-12 A | QTS-18801 | 100% |  |  | Core & Shell | IGMP | Phase 1 | Construction | BAB |  |  |  | FOH |
| QTS-42631 |  | Zone 1 / Gridlines 1-10 // Perimeter/Roof Detail - Sequence 340-341 | 10d | 2025-06-02 A | 2025-06-16 A | QTS-19061 | 100% | 2025-06-02 | 2025-06-13 | Core & Shell | IGMP | Phase 1 | Construction | BAB |  |  |  | FOH |
| QTS-19071 |  | Zone 1 / Gridlines 1-10 // Mezzanine Detail - Sequence 240 | 10d | 2025-06-04 A | 2025-06-17 A | QTS-42621, QTS-18801 | 100% |  |  | Core & Shell | IGMP | Phase 1 | Construction | BAB | Construction |  |  | FOH |
| QTS-42641 |  | Zone 1 / Gridlines 1-10 // Stair 702 Erect/Detail | 4d | 2025-06-13 A | 2025-10-01 A | QTS-99150 FF+1d, QTS-19811 FF+3d, QTS-19071 SS | 100% | 2025-06-13 | 2025-06-18 | Core & Shell | IGMP | Phase 1 | Construction | BAB | Construction |  | 01ADMIN |  |
| QTS-19621 |  | Zone 1 / Gridlines 1-10 // Mezzanine Detail - Sequence 241 | 9d | 2025-06-18 A | 2025-06-30 A | QTS-42631, QTS-19071 | 100% |  |  | Core & Shell | IGMP | Phase 1 | Construction | BAB | Construction |  | 01ADMIN | FOH |
| QTS-46831 |  | Zone 1 / Gridlines 1-10 // Stud Welding | 6d | 2025-06-23 A | 2025-06-30 A | QTS-19621 FF | 100% |  |  | Core & Shell | IGMP | Phase 1 | Construction | BAB | Construction |  | 01ADMIN |  |
| QTS-46821 |  | Zone 1 / Gridlines 1-10 // Stair 703 Erect/Detail | 4d | 2025-06-30 A | 2025-07-03 A | QTS-42631 | 100% | 2025-07-09 | 2025-07-14 | Core & Shell | IGMP | Phase 1 | Construction | BAB | Construction |  | 01ADMIN |  |
| QTS-46841 |  | Zone 1 / Gridlines 1-10 // Eyebrow Steel | 10d | 2025-08-27 A | 2025-09-08 A | QTS-22981 SS, QTS-19811, QTS-19821 | 100% | 2025-08-25 | 2025-09-08 | Core & Shell | IGMP | Phase 1 | Construction | BAB | Construction |  | 01ADMIN |  |

Notes:
- QTS-42641: allucent_notes: Jason Johnston on 2025-07-08T20:06:04.119Z: 07/08/25 - Cannot erect stair case until tilt panel is erected. / allucent_notes: 2025-07-08T20:06:04.119Z - User: Jason Johnston - Date Added: 2025-07-08T20:06:04.119Z - Note: 07/08/25 - Cannot erect stair case until tilt panel is erected.
- QTS-46841: allucent_notes: Jason Johnston on 2025-08-19 13:08: Subcontractor man power issues. Sub is getting a supplemental man power. That is expected on site 8-25. - Ron / allucent_notes: 2025-08-19 13:08 - User: Jason Johnston - Date Added: 2025-08-19 13:08 - Note: Subcontractor man power issues. Sub is getting a supplemental man power. That is expected on site 8-25. - Ron / 2025-08-26 15:08 - User: Jason Johnston - Date Added: 2025-08-2

| ID | WBS | Activity | Duration | Start | Finish | Predecessors | Complete | Planned start | Planned finish | Allucent CSI Group | Project Section | Phase-1 | Layton Discipline | Baseline | Contract | Phase-1-1 | Project Section-1 | Location | Level |
| --- | --- | --- | --- | --- | --- | --- | --- | --- | --- | --- | --- | --- | --- | --- | --- | --- | --- | --- | --- |
|  | 8 | **Zone 1 / Slab On Metal Deck** |  | 2025-06-23 | 2025-07-23 |  |  |  |  |  |  |  |  |  |  |  |  |  |  |
| QTS-18941 |  | Zone 1 / Gridlines 10-13 // MEP Penetrations SOMD | 5d | 2025-06-23 A | 2025-07-02 A | QTS-19051, QTS-42591 | 100% | 2025-06-23 | 2025-06-27 | 01ADMIN | Construction | Phase 1 | Mechanical | IGMP | BAB |  |  |  |  |
| QTS-19021 |  | Zone 1 / Gridlines 10-13 // Prep, Form, & Pour SOMD | 3d | 2025-07-03 A | 2025-07-08 A | QTS-18941, QTS-17631 | 100% | 2025-06-30 | 2025-07-02 | 01ADMIN | Construction | Phase 1 | Core & Shell | IGMP | BAB |  |  |  |  |
| QTS-19311 |  | Zone 1 / Gridlines 13-16 // MEP Penetrations SOMD | 4d | 2025-07-03 A | 2025-07-09 A | QTS-18941, QTS-19051, QTS-18501 | 100% | 2025-06-30 | 2025-07-03 | 01ADMIN | Construction |  | Mechanical | IGMP | BAB | Phase 1 | Construction |  |  |
| QTS-19521 |  | Zone 1 / Gridlines 13-16 // Prep, Form, & Pour SOMD | 2d | 2025-07-10 A | 2025-07-15 A | QTS-19021 FF+2d, QTS-19311, QTS-18501 | 100% | 2025-07-10 | 2025-07-11 | 01ADMIN | Construction | Phase 1 | Core & Shell | IGMP | BAB |  |  |  |  |
| QTS-46911 |  | Zone 1 / Gridlines 16-21 // MEP Penetrations SOMD | 2d | 2025-07-10 A | 2025-07-15 A | QTS-19311 | 100% | 2025-07-10 | 2025-07-11 | 01ADMIN | Construction |  | Mechanical | IGMP | BAB | Phase 1 | Construction |  |  |
| QTS-46921 |  | Zone 1 / Gridlines 16-21 // Prep, Form, & Pour SOMD | 2d | 2025-07-16 A | 2025-07-17 A | QTS-19521 FF+2d, QTS-46911 | 100% |  |  | 01ADMIN | Construction | Phase 1 | Core & Shell | IGMP | BAB |  | Construction |  |  |
|  | 1 | **Zone 1 / FOH Slab on Metal Deck** |  | 2025-07-15 | 2025-07-23 |  |  |  |  |  |  |  |  |  |  |  |  |  |  |
| QTS-20671 |  | Zone 1 / Gridlines L-X // Prep, Form, & Pour SOMD | 5d | 2025-07-15 A | 2025-07-21 A | QTS-46831, QTS-46921 FF, QTS-20521 FF | 100% |  |  | 01ADMIN | Construction |  | Core & Shell | IGMP | BAB | Phase 1 | Construction | FOH | Level 2 |
| QTS-20521 |  | Zone 1 / Gridlines L-X // MEP Penetrations SOMD | 5d | 2025-07-16 A | 2025-07-16 A | QTS-46911, QTS-19621 | 100% | 2025-07-10 | 2025-07-16 | 01ADMIN | Construction |  | Mechanical | IGMP | BAB | Phase 1 | Construction | FOH | Level 2 |
| QTS-46931 |  | Zone 1 / Gridlines A-L // MEP Penetrations SOMD | 2d | 2025-07-16 A | 2025-07-16 A | QTS-20521 FF | 100% | 2025-07-15 | 2025-07-16 | 01ADMIN | Construction |  | Mechanical | IGMP | BAB | Phase 1 | Construction | FOH | Level 2 |
| QTS-46941 |  | Zone 1 / Gridlines A-L // Prep, Form, & Pour SOMD | 5d | 2025-07-17 A | 2025-07-23 A | QTS-20671 FF+2d, QTS-46931 | 100% |  |  | 01ADMIN | Construction |  | Core & Shell | IGMP | BAB | Phase 1 | Construction | FOH | Level 2 |
|  | 3 | **Zone 1 / Slab On Grade** |  | 2025-08-04 | 2025-09-22 |  |  |  |  |  |  |  |  |  |  |  |  |  |  |
| QTS-19261 |  | Zone 1 / Gridlines 10-13 // Prep, Form, & Pour SOG | 8d | 2025-08-04 A | 2025-08-11 A | QTS-19811 FF+5d, QTS-46941, QTS-46921 | 100% | 2025-08-04 | 2025-08-13 | 01ADMIN | Construction | Phase 1 | Core & Shell | IGMP | BAB |  |  |  | Level 1 |
| QTS-19531 |  | Zone 1 / Gridlines 13-17 // Prep, Form, & Pour SOG | 8d | 2025-08-08 A | 2025-08-18 A | QTS-19261 FF+2d, QTS-19261 SS+2d | 100% | 2025-08-12 | 2025-08-21 | 01ADMIN | Construction | Phase 1 | Core & Shell | IGMP | BAB |  |  |  | Level 1 |
| QTS-19631 |  | Zone 1 / Gridlines 17-21 // Prep, Form, & Pour SOG | 8d | 2025-08-13 A | 2025-08-21 A | QTS-19531 FF+3d, QTS-19531 SS+3d | 100% | 2025-08-15 | 2025-08-26 | 01ADMIN | Construction | Phase 1 | Core & Shell | IGMP | BAB |  |  |  | Level 1 |
| QTS-99030 |  | Zone 1 / Gridlines 17-21 // Cure SOG | 8d | 2025-08-22 A | 2025-09-03 A | QTS-19631 | 100% |  |  | 01ADMIN | Construction | Phase 1 | Core & Shell | IGMP | BAB |  |  |  | Level 1 |
|  | 1 | **Zone 1 / FOH Slab On Grade** |  | 2025-08-27 | 2025-09-22 |  |  |  |  |  |  |  |  |  |  |  |  |  |  |
| QTS-21391 |  | Zone 1 / Gridlines 1-10 // Prep, Form, & Pour SOG - North | 2d | 2025-08-27 A | 2025-09-15 A | QTS-46941, QTS-19631, QTS-20671, QTS-44801 | 100% | 2025-08-22 | 2025-08-25 | 01ADMIN | Construction |  | Core & Shell | IGMP | BAB | Phase 1 | Construction | FOH | Level 1 |
| QTS-44781 |  | Zone 1 / Gridlines 1-10 // Prep, Form, & Pour SOG - South | 5d | 2025-09-04 A | 2025-09-12 A | QTS-46971 FF+3d, QTS-21391 FF | 100% | 2025-09-04 | 2025-09-10 | 01ADMIN | Construction |  | Core & Shell | IGMP | BAB | Phase 1 | Construction | FOH | Level 1 |
| QTS-99150 |  | Zone 1 / Gridlines 1-10 // Cure SOG - North | 5d | 2025-09-16 A | 2025-09-22 A | QTS-21391 | 100% |  |  | 01ADMIN | Construction |  | Core & Shell | IGMP | BAB | Phase 1 | Construction | FOH | Level 1 |
|  | 1 | **Zone 1 / Tilt Panel Casting** |  | 2025-06-03 | 2025-08-12 |  |  |  |  |  |  |  |  |  |  |  |  |  |  |
| QTS-14041 |  | Zone 1 / Mobilization to Clear & Grade for Waste Slabs | 5d | 2025-06-03 A | 2025-06-05 A | QTS-18801, QTS-1131, QTS-12771, QTS-7301, QTS-4421 SS, QTS-4421 | 100% | 2025-05-08 | 2025-05-14 |  |  |  | Core & Shell | IGMP | BAB | Phase 1 | Construction |  |  |
| QTS-15041 |  | Zone 1 / Prep & Place Waste Slabs | 6d | 2025-06-06 A | 2025-06-09 A | QTS-4421 SS, QTS-4421, QTS-10831 SS, QTS-12771 FF, QTS-14041 | 100% | 2025-06-06 | 2025-06-13 |  | Construction | Phase 1 | Core & Shell | IGMP | BAB |  |  |  |  |
| QTS-16781 |  | Zone 1 / Panel Embeds, Jamb Steel & Ledgers | 1d | 2025-06-10 A | 2025-06-10 A | QTS-16011, QTS-15041 | 100% |  |  |  | Construction | Phase 1 | Core & Shell | IGMP | BAB |  |  |  |  |
| QTS-16011 |  | Zone 1 / Panel Embeds, Jamb Steel & Ledgers Shake Out | 5d | 2025-06-11 A | 2025-06-11 A | QTS-15041 | 100% | 2025-06-10 | 2025-06-16 |  | Construction | Phase 1 | Core & Shell | IGMP | BAB |  |  |  |  |
| QTS-16921 |  | Zone 1 / Layout, Form, Reinforce, & Pour Tilt Panels | 10d | 2025-06-12 A | 2025-07-18 A | QTS-16781, QTS-12491, QTS-14071 FF, QTS-16781 FF+1d, QTS-13611 | 100% | 2025-06-12 | 2025-06-25 | 01ADMIN | Construction | Phase 1 | Core & Shell | IGMP | BAB |  |  |  |  |
| QTS-19811 |  | Zone 1 / Erect Cast Panels | 10d | 2025-07-21 A | 2025-08-12 A | QTS-42591, QTS-19051, QTS-19621, QTS-16921 | 100% | 2025-07-21 | 2025-08-01 | 01ADMIN | Construction |  | Core & Shell | IGMP | BAB | Phase 1 | Construction |  |  |

Notes:
- QTS-20671: Scheduler's Notes: 7/17/25 / Team swapped zone 1 SOG with FOH SOMD
- QTS-19261: allucent_notes: Jason Johnston on 2025-08-19 13:08: Pour was complete ahead of schedule / Scheduler's Notes: 7/17/25 / Team swapped zone 1 SOG with FOH SOMD
- QTS-19531: allucent_notes: Jason Johnston on 2025-08-19 13:08: Pour was completed ahead of schedule.
- QTS-19631: allucent_notes: Jason Johnston on 2025-08-19 14:08: Pour schedule moved up. / allucent_notes: 2025-08-19 14:08 - User: Jason Johnston - Date Added: 2025-08-19 14:08 - Note: Pour schedule moved up.
- QTS-99030: Scheduler's Notes: 8/1/25 / Activity added to provide for cure time before lifts and other heavy / equipment can be on SOG.
- QTS-21391: allucent_notes: Jason Johnston on 2025-08-12 13:08: Pulled in date based on input from trade partner / allucent_notes: 2025-08-12 13:08 - User: Jason Johnston - Date Added: 2025-08-12 13:08 - Note: Pulled in date based on input from trade partner / 2025-08-26 15:08 - User: Jason Johnston - Date Added: 2025-08-26 15:08 - Note: Need to get better answer from Suntec
- QTS-19811: allucent_notes: Jason Johnston on 2025-08-12 14:08: Logistical delays with MEP in FOH backfill caused no tilt panels to erect 8/7 & 8/8 / allucent_notes: 2025-08-12 14:08 - User: Jason Johnston - Date Added: 2025-08-12 14:08 - Note: Logistical delays with MEP in FOH backfill caused no tilt panels to erect 8/7 & 8/8

| ID | WBS | Activity | Duration | Start | Finish | Predecessors | Complete | Planned start | Planned finish | Layton Discipline | Baseline | Phase-1-1 | Project Section-1 | Contract | Allucent CSI Group | Project Section | Level |
| --- | --- | --- | --- | --- | --- | --- | --- | --- | --- | --- | --- | --- | --- | --- | --- | --- | --- |
|  | 5 | **Zone 2 / Gridlines 21-30 (Steel/SOMD/SOG/Tilt)** |  | 2025-06-11 | 2025-10-07 |  |  |  |  |  |  |  |  |  |  |  |  |
|  | 2 | **Zone 2 / Structural Steel** |  | 2025-06-11 | 2025-07-30 |  |  |  |  |  |  |  |  |  |  |  |  |
| QTS-19081 |  | Zone 2 / Gridlines 21-30 // Perimeter - Sequence 20-21 | 9d | 2025-06-11 A | 2025-06-23 A | QTS-13471, QTS-43421, QTS-43001, QTS-13981, QTS-18911, QTS-42591 SS+3d | 100% |  |  | Core & Shell | IGMP | Phase 2 | Construction | BAB |  |  |  |
| QTS-19301 |  | Zone 2 / Gridlines 21-30 // Dunnage - Sequence 521-524 | 9d | 2025-06-16 A | 2025-06-26 A | QTS-19081 SS+3d | 100% |  |  | Core & Shell | IGMP | Phase 2 | Construction | BAB | 01ADMIN | Construction |  |
| QTS-19581 |  | Zone 2 / Gridlines 21-30 // Dunnage/Perimeter Detail - Sequence 521-523 | 9d | 2025-06-18 A | 2025-06-30 A | QTS-19301 SS+2d | 100% |  |  | Core & Shell | IGMP | Phase 2 | Construction | BAB | 01ADMIN | Construction |  |
| QTS-19291 |  | Zone 2 / Gridlines 21-30 // Perimeter - Sequence 320 | 9d | 2025-06-24 A | 2025-07-07 A | QTS-19081 | 100% |  |  | Core & Shell | IGMP | Phase 2 | Construction | BAB | 01ADMIN | Construction |  |
| QTS-19571 |  | Zone 2 / Gridlines 21-30 // Dunnage - Sequence 524-527 | 8d | 2025-06-27 A | 2025-07-09 A | QTS-19291 FF+2d, QTS-19301 | 100% |  |  | Core & Shell | IGMP | Phase 2 | Construction | BAB | 01ADMIN | Construction |  |
| QTS-19831 |  | Zone 2 / Gridlines 21-30 // Dunnage/Perimeter Detail - Sequence 523-525 | 8d | 2025-07-01 A | 2025-07-11 A | QTS-19291 FF+2d, QTS-19581 | 100% |  |  | Core & Shell | IGMP | Phase 2 | Construction | BAB | 01ADMIN | Construction |  |
| QTS-19821 |  | Zone 2 / Gridlines 21-30 // High Roof Erection - Sequence 321-327 | 7d | 2025-07-10 A | 2025-07-18 A | QTS-19571 | 100% |  |  | Core & Shell | IGMP | Phase 2 | Construction | BAB | 01ADMIN | Construction |  |
| QTS-20181 |  | Zone 2 / Gridlines 21-30 // High Roof Detail - Sequence 321-324 | 7d | 2025-07-14 A | 2025-07-22 A | QTS-19821 SS+2d | 100% |  |  | Core & Shell | IGMP | Phase 2 | Construction | BAB | 01ADMIN | Construction |  |
| QTS-20191 |  | Zone 2 / Gridlines 21-30 // Dunnage/Perimeter Detail - Sequence 525-527 | 8d | 2025-07-14 A | 2025-07-23 A | QTS-19831 | 100% |  |  | Core & Shell | IGMP | Phase 2 | Construction | BAB | 01ADMIN | Construction |  |
| QTS-20561 |  | Zone 2 / Gridlines 21-30 // Mezzanine Erection - Sequence 221-227 | 5d | 2025-07-21 A | 2025-07-25 A | QTS-19821 | 100% |  |  | Core & Shell | IGMP | Phase 2 | Construction | BAB | 01ADMIN | Construction |  |
| QTS-20551 |  | Zone 2 / Gridlines 21-30 // High Roof Detail - Sequence 324-327 | 6d | 2025-07-23 A | 2025-07-30 A | QTS-20181 | 100% |  |  | Core & Shell | IGMP | Phase 2 | Construction | BAB | 01ADMIN | Construction |  |
| QTS-21081 |  | Zone 2 / Gridlines 21-30 // Mezzanine Detail - Sequence 221-227 | 6d | 2025-07-23 A | 2025-07-30 A | QTS-20561 SS+2d | 100% |  |  | Core & Shell | IGMP | Phase 2 | Construction | BAB | 01ADMIN | Construction |  |
| QTS-42601 |  | Zone 2 / Gridlines 21-30 // Stud Welding | 4d | 2025-07-25 A | 2025-07-30 A | QTS-20191 FF, QTS-21081 FF | 100% |  |  | Core & Shell | IGMP | Phase 2 | Construction | BAB | 01ADMIN | Construction |  |
|  | 3 | **Zone 2 / Slab On Metal Deck (SOMD)** |  | 2025-08-04 | 2025-08-18 |  |  |  |  |  |  |  |  |  |  |  |  |
| QTS-20981 |  | Zone 2 / Gridlines 21-24 // MEP Penetrations SOMD | 5d | 2025-08-04 A | 2025-08-08 A | QTS-42601, QTS-38861, QTS-20551 | 100% |  |  | Mechanical | IGMP | Phase 2 | Construction | BAB | 01ADMIN | Construction | Level 2 |
| QTS-21171 |  | Zone 2 / Gridlines 21-24 // Prep, Form, & Pour SOMD | 5d | 2025-08-04 A | 2025-08-12 A | QTS-20981 FF+2d | 100% | 2025-08-11 | 2025-08-15 | Core & Shell | IGMP | Phase 2 | Construction | BAB | 01ADMIN | Construction | Level 2 |
| QTS-21181 |  | Zone 2 / Gridlines 24-27 // MEP Penetrations SOMD | 5d | 2025-08-11 A | 2025-08-15 A | QTS-38861, QTS-20981 | 100% |  |  | Mechanical | IGMP | Phase 2 | Construction | BAB | 01ADMIN | Construction | Level 2 |
| QTS-21401 |  | Zone 2 / Gridlines 24-27 // Prep, Form, & Pour SOMD | 5d | 2025-08-11 A | 2025-08-15 A | QTS-21181, QTS-21171 FF+2d, QTS-21171 SS+2d | 100% | 2025-08-18 | 2025-08-22 | Core & Shell | IGMP | Phase 2 | Construction | BAB | 01ADMIN | Construction | Level 2 |
| QTS-21511 |  | Zone 2 / Gridlines 27-30 // MEP Penetrations SOMD | 5d | 2025-08-12 A | 2025-08-18 A | QTS-38861, QTS-21081, QTS-21181 SS | 100% | 2025-08-18 | 2025-08-22 | Mechanical | IGMP | Phase 2 | Construction | BAB | 01ADMIN | Construction | Level 2 |
| QTS-21711 |  | Zone 2 / Gridlines 27-30 // Prep, Form & Pour SOMD | 5d | 2025-08-15 A | 2025-08-18 A | QTS-21511, QTS-21401 FF+2d, QTS-21401 SS+2d | 100% | 2025-08-20 | 2025-08-26 | Core & Shell | IGMP | Phase 2 | Construction | BAB | 01ADMIN | Construction | Level 2 |
|  | 4 | **Zone 2 / Slab On Grade (SOG)** |  | 2025-09-11 | 2025-10-07 |  |  |  |  |  |  |  |  |  |  |  |  |
| QTS-21641 |  | Zone 2 / Gridlines 21-30 // Prep, Form, & Pour SOG - North | 8d | 2025-09-11 A | 2025-09-24 A | QTS-99190, QTS-21521, QTS-15791, QTS-14851, QTS-16771 | 100% | 2025-09-11 | 2025-09-22 | Core & Shell | IGMP | Phase 2 | Construction | BAB | 01ADMIN | Construction | Level 1 |
| QTS-21771 |  | Zone 2 / Gridlines 21-30 // Prep, Form, & Pour SOG - South | 8d | 2025-09-16 A | 2025-09-30 A | QTS-21641 FF+3d, QTS-21641 SS+3d | 100% | 2025-09-16 | 2025-09-25 | Core & Shell | IGMP | Phase 2 | Construction | BAB | 01ADMIN | Construction | Level 1 |
| QTS-22021 |  | Zone 2 / Gridlines 21-30 // Cure SOG | 5d | 2025-10-01 A | 2025-10-07 A | QTS-21711, QTS-21771 FF+3d, QTS-21771 SS+3d | 100% |  |  | Core & Shell | IGMP | Phase 2 | Construction | BAB | 01ADMIN | Construction | Level 1 |

Notes:
- QTS-21171: allucent_notes: David Wiltberger on 2025-08-06 03:08: Suntech pulling in Start date / allucent_notes: 2025-08-06 03:08 - User: David Wiltberger - Date Added: 2025-08-06 03:08 - Note: Suntech pulling in Start date
- QTS-21401: allucent_notes: David Wiltberger on 2025-08-06 03:08: Suntech pulling in dates / allucent_notes: 2025-08-06 03:08 - User: David Wiltberger - Date Added: 2025-08-06 03:08 - Note: Suntech pulling in dates / 2025-08-19 14:08 - User: Jason Johnston - Date Added: 2025-08-19 14:08 - Note: Pour schedule moved up
- QTS-21511: allucent_notes: David Wiltberger on 2025-08-12 08:08: Started 2 and 3 the same time / allucent_notes: 2025-08-12 08:08 - User: David Wiltberger - Date Added: 2025-08-12 08:08 - Note: Started 2 and 3 the same time
- QTS-21711: allucent_notes: David Wiltberger on 2025-08-06 03:08: Suntech pulling in date / allucent_notes: 2025-08-06 03:08 - User: David Wiltberger - Date Added: 2025-08-06 03:08 - Note: Suntech pulling in date / 2025-08-19 14:08 - User: Jason Johnston - Date Added: 2025-08-19 14:08 - Note: Pour schedule moved up / 2025-08-19 14:08 - User: Jason Johnston -

| ID | WBS | Activity | Duration | Start | Finish | Predecessors | Complete | Planned start | Planned finish | Allucent CSI Group | Project Section | Layton Discipline | Baseline | Phase-1-1 | Project Section-1 | Contract |
| --- | --- | --- | --- | --- | --- | --- | --- | --- | --- | --- | --- | --- | --- | --- | --- | --- |
|  | 1 | **Zone 2 / Tilt Panel Casting** |  | 2025-07-21 | 2025-09-10 |  |  |  |  |  |  |  |  |  |  |  |
| QTS-16031 |  | Zone 2 / Gridline 21-30 // Prep & Place Waste Slabs | 6d | 2025-07-21 A | 2025-07-28 A | QTS-19821, QTS-15041 | 100% |  |  | 01ADMIN | Construction | Core & Shell | IGMP | Phase 2 | Construction | BAB |
| QTS-16961 |  | Zone 2 / Gridline 21-30 // Panel Embeds, Jamb Steel & Ledgers Shake Out | 5d | 2025-07-29 A | 2025-08-04 A | QTS-16031 | 100% |  |  | 01ADMIN | Construction | Core & Shell | IGMP | Phase 2 | Construction | BAB |
| QTS-17911 |  | Zone 2 / Gridline 21-30 // Layout, Form, Reinforce, & Pour North Tilt Panels | 10d | 2025-08-01 A | 2025-08-12 A | QTS-16921, QTS-17661 FF+1d | 100% | 2025-08-01 | 2025-08-14 | 01ADMIN | Construction | Core & Shell | IGMP | Phase 2 | Construction | BAB |
| QTS-17661 |  | Zone 2 / Gridline 21-30 // Panel Embeds, Jamb Steel & Ledgers | 1d | 2025-08-05 A | 2025-08-05 A | QTS-16961, QTS-16031 | 100% |  |  | 01ADMIN | Construction | Core & Shell | IGMP | Phase 2 | Construction | BAB |
| QTS-99160 |  | Zone 2 / Gridline 21-30 // Cure North Tilt Panels | 5d | 2025-08-13 A | 2025-08-19 A | QTS-17911 | 100% |  |  | 01ADMIN | Construction | Core & Shell | IGMP | Phase 2 | Construction | BAB |
| QTS-99170 |  | Zone 2 / Gridline 21-30 // Layout, Form, Reinforce, & Pour South Tilt Panels | 10d | 2025-08-13 A | 2025-08-25 A | QTS-16031 | 100% | 2025-08-13 | 2025-08-26 | 01ADMIN | Construction | Core & Shell | IGMP | Phase 2 | Construction | BAB |
| QTS-21521 |  | Zone 2 / Gridline 21-30 // Erect North Cast Panels | 5d | 2025-08-21 A | 2025-08-26 A | QTS-99160, QTS-42601, QTS-19811, QTS-20561, QTS-17911 | 100% | 2025-08-20 | 2025-08-26 | 01ADMIN | Construction | Core & Shell | IGMP | Phase 2 | Construction | BAB |
| QTS-99180 |  | Zone 2 / Gridline 21-30 // Cure South Tilt Panels | 3d | 2025-08-26 A | 2025-08-28 A | QTS-99170 | 100% |  |  | 01ADMIN | Construction | Core & Shell | IGMP | Phase 2 | Construction | BAB |
| QTS-99190 |  | Zone 2 / Gridline 21-30 // Erect South Cast Panels | 5d | 2025-09-04 A | 2025-09-10 A | QTS-99180, QTS-99170 | 100% |  |  | 01ADMIN | Construction | Core & Shell | IGMP | Phase 2 | Construction | BAB |
|  | 4 | **Zone 3 / Gridlines 30-41 (Steel/SOMD/SOG/Tilt)** |  | 2025-07-10 | 2025-11-05 |  |  |  |  |  |  |  |  |  |  |  |
|  | 2 | **Zone 3 / Structural Steel** |  | 2025-07-10 | 2025-09-03 |  |  |  |  |  |  |  |  |  |  |  |
| QTS-21091 |  | Zone 3 / Gridlines 30-41 // Perimeter - Sequence 30-31 | 9d | 2025-07-10 A | 2025-07-22 A | QTS-19821 SS, QTS-43131, QTS-43211, QTS-14861, QTS-13471 | 100% |  |  | 01ADMIN | Construction | Core & Shell | IGMP | Phase 3 | Construction | BAB |
| QTS-21541 |  | Zone 3 / Gridlines 30-41 // Dunnage - Sequence 530-533 | 9d | 2025-07-14 A | 2025-07-24 A | QTS-21091 SS+2d | 100% |  |  | 01ADMIN | Construction | Core & Shell | IGMP | Phase 3 | Construction | BAB |
| QTS-21791 |  | Zone 3 / Gridlines 30-41 // Dunnage/Perimeter Detail - Sequence 530-532 | 9d | 2025-07-16 A | 2025-07-28 A | QTS-21541 SS+2d | 100% |  |  | 01ADMIN | Construction | Core & Shell | IGMP | Phase 3 | Construction | BAB |
| QTS-21531 |  | Zone 3 / Gridlines 30-41 // Perimeter - Sequence 31-32 | 8d | 2025-07-23 A | 2025-08-01 A | QTS-21091 | 100% |  |  | 01ADMIN | Construction | Core & Shell | IGMP | Phase 3 | Construction | BAB |
| QTS-21781 |  | Zone 3 / Gridlines 30-41 // Dunnage - Sequence 533-536 | 8d | 2025-07-25 A | 2025-08-05 A | QTS-21541 | 100% |  |  | 01ADMIN | Construction | Core & Shell | IGMP | Phase 3 | Construction | BAB |
| QTS-22051 |  | Zone 3 / Gridlines 30-41 // Dunnage/Perimeter Detail - Sequence 532-534 | 8d | 2025-07-29 A | 2025-08-07 A | QTS-21791 | 100% |  |  | 01ADMIN | Construction | Core & Shell | IGMP | Phase 3 | Construction | BAB |
| QTS-22351 |  | Zone 3 / Gridlines 30-41 // High Roof Erection - Sequence 330-337 | 10d | 2025-08-06 A | 2025-08-19 A | QTS-21781 | 100% |  |  | 01ADMIN | Construction | Core & Shell | IGMP | Phase 3 | Construction | BAB |
| QTS-22361 |  | Zone 3 / Gridlines 30-41 // Penthouse/Stair 710 Erection - Sequence 537 | 5d | 2025-08-06 A | 2025-08-12 A | QTS-49341, QTS-21781 | 100% |  |  | 01ADMIN | Construction | Core & Shell | IGMP | Phase 3 | Construction | BAB |
| QTS-22061 |  | Zone 3 / Gridlines 30-41 // Dunnage/Perimeter Detail - Sequence 534-536 | 8d | 2025-08-08 A | 2025-08-19 A | QTS-43251, QTS-22051 | 100% |  |  | 01ADMIN | Construction | Core & Shell | IGMP | Phase 3 | Construction | BAB |
| QTS-22621 |  | Zone 3 / Gridlines 30-41 // Penthouse/Stair 710 Detail - Sequence 537 | 7d | 2025-08-11 A | 2025-08-19 A | QTS-22361 SS+3d, QTS-16931 FF | 100% |  |  | 01ADMIN | Construction | Core & Shell | IGMP | Phase 3 | Construction | BAB |
| QTS-22611 |  | Zone 3 / Gridlines 30-41 // Mezzanine Erection - Sequence 230-236 | 6d | 2025-08-20 A | 2025-08-27 A | QTS-22351 | 100% |  |  | 01ADMIN | Construction | Core & Shell | IGMP | Phase 3 | Construction | BAB |
| QTS-22981 |  | Zone 3 / Gridlines 30-41 // Mezzanine Detail - Sequence 230-236 | 6d | 2025-08-25 A | 2025-09-02 A | QTS-22611 SS+3d, QTS-22621 | 100% |  |  | 01ADMIN | Construction | Core & Shell | IGMP | Phase 3 | Construction | BAB |
| QTS-42611 |  | Zone 3 / Gridlines 30-41 // Stud Welding | 5d | 2025-08-26 A | 2025-09-02 A | QTS-22061, QTS-22981 FF | 100% |  |  | 01ADMIN | Construction | Core & Shell | IGMP | Phase 3 | Construction | BAB |
| QTS-46811 |  | Zone 3 / Gridlines 30-41 // Stair 709 Erect & Detail | 4d | 2025-08-28 A | 2025-09-03 A | QTS-49301, QTS-22611 | 100% |  |  | 01ADMIN | Construction | Core & Shell | IGMP | Phase 3 | Construction | BAB |

Notes:
- QTS-99170: allucent_notes: Jason Johnston on 2025-08-19 14:08: Pour date moved up. / allucent_notes: 2025-08-19 14:08 - User: Jason Johnston - Date Added: 2025-08-19 14:08 - Note: Pour date moved up.
- QTS-21521: allucent_notes: Jason Johnston on 2025-08-26 15:08: One day delay in start no change to finish / Jason Johnston on 2025-08-26 15:08: Completed on time. / allucent_notes: 2025-08-26 15:08 - User: Jason Johnston - Date Added: 2025-08-26 15:08 - Note: One day delay in start no change to finish / 2025-08-26 15:08 - User: Jason Johnston - Date Added: 2025-08-26 15:08 - Note: Completed on time.
- QTS-99190: allucent_notes: Jason Johnston on 2025-09-02 15:09: Dirt ramps need to be removed before tilting can begin. / allucent_notes: 2025-09-02 15:09 - User: Jason Johnston - Date Added: 2025-09-02 15:09 - Note: Dirt ramps need to be removed before tilting can begin.

| ID | WBS | Activity | Duration | Start | Finish | Predecessors | Complete | Planned start | Planned finish | Allucent CSI Group | Project Section | Layton Discipline | Baseline | Phase-1-1 | Project Section-1 | Contract |
| --- | --- | --- | --- | --- | --- | --- | --- | --- | --- | --- | --- | --- | --- | --- | --- | --- |
|  | 3 | **Zone 3 / Slab On Metal Deck (SOMD)** |  | 2025-08-27 | 2025-09-11 |  |  |  |  |  |  |  |  |  |  |  |
| QTS-22891 |  | Zone 3 / Gridlines 30-33 // MEP Penetrations SOMD | 2d | 2025-08-27 A | 2025-09-03 A | QTS-42611 SS+1d, QTS-38861 | 100% | 2025-08-27 | 2025-08-28 | 01ADMIN | Construction | Mechanical | IGMP | Phase 3 | Construction | BAB |
| QTS-23021 |  | Zone 3 / Gridlines 30-33 // Prep, Form, & Pour SOMD | 5d | 2025-09-02 A | 2025-09-05 A | QTS-22891 FF | 100% | 2025-09-02 | 2025-09-08 | 01ADMIN | Construction | Core & Shell | IGMP | Phase 3 | Construction | BAB |
| QTS-23031 |  | Zone 3 / Gridlines 33-37 // MEP Penetrations SOMD | 2d | 2025-09-04 A | 2025-09-05 A | QTS-42611, QTS-38861, QTS-22891 | 100% |  |  | 01ADMIN | Construction | Mechanical | IGMP | Phase 3 | Construction | BAB |
| QTS-23111 |  | Zone 3 / Gridlines 33-37 // Prep, Form, & Pour SOMD | 5d | 2025-09-04 A | 2025-09-10 A | QTS-23031 FF, QTS-23021 FF+3d | 100% |  |  | 01ADMIN | Construction | Core & Shell | IGMP | Phase 3 | Construction | BAB |
| QTS-23381 |  | Zone 3 / Gridlines 37-41 // Prep, Form & Pour SOMD | 5d | 2025-09-05 A | 2025-09-11 A | QTS-23251 FF, QTS-23111 FF+1d | 100% |  |  | 01ADMIN | Construction | Core & Shell | IGMP | Phase 3 | Construction | BAB |
| QTS-23251 |  | Zone 3 / Gridlines 37-41 // MEP Penetrations SOMD | 2d | 2025-09-08 A | 2025-09-09 A | QTS-38861, QTS-22981, QTS-23031 | 100% |  |  | 01ADMIN | Construction | Mechanical | IGMP | Phase 3 | Construction | BAB |
|  | 4 | **Zone 3 / Slab On Grade (SOG)** |  | 2025-10-02 | 2025-11-05 |  |  |  |  |  |  |  |  |  |  |  |
| QTS-23551 |  | Zone 3 / Gridlines 30-37 // Prep, Form, & Pour SOG - North | 8d | 2025-10-02 A | 2025-10-14 A | QTS-99210, QTS-99200, QTS-23111 | 100% | 2025-10-02 | 2025-10-13 | 01ADMIN | Construction | Core & Shell | IGMP | Phase 3 | Construction | BAB |
| QTS-23741 |  | Zone 3 / Gridlines 30-37 // Prep, Form, & Pour SOG - South | 8d | 2025-10-07 A | 2025-10-20 A | QTS-1035, QTS-23551 FF+3d, QTS-23551 SS+3d | 100% | 2025-10-07 | 2025-10-16 | 01ADMIN | Construction | Core & Shell | IGMP | Phase 3 | Construction | BAB |
| QTS-23281 |  | Zone 3 / Gridlines 37-41 // Prep, Form, & Pour SOG - BOH - South | 8d | 2025-10-21 A | 2025-10-28 A | QTS-19031 FF, QTS-23741 FF+3d, QTS-23741 SS+3d, QTS-23261, QTS-16671, QTS-16661, QTS-17341 FF | 100% | 2025-10-21 | 2025-10-30 | 01ADMIN | Construction | Core & Shell | IGMP | Phase 3 | Construction | BAB |
| QTS-99490 |  | Zone 3 / Gridlines 30-37 // Cure SOG | 5d | 2025-10-21 A | 2025-10-27 A | QTS-23741 | 100% |  |  | 01ADMIN | Construction | Core & Shell | IGMP | Phase 3 | Construction | BAB |
| QTS-99870 |  | Zone 3 / Gridlines 37-41 // Prep, Form, & Pour SOG - BOH - North | 5d | 2025-10-27 A | 2025-11-03 A | QTS-23281 FF+3d, QTS-23741 | 100% | 2025-10-27 | 2025-10-31 | 01ADMIN | Construction | Core & Shell | IGMP | Phase 3 | Construction | BAB |
| QTS-99500 |  | Zone 3 / Gridlines 37-41 // Cure BOH SOG | 5d | 2025-10-30 A | 2025-11-05 A | QTS-99870 FF+2d, QTS-23281 | 100% | 2025-10-29 | 2025-11-04 | 01ADMIN | Construction | Core & Shell | IGMP | Phase 3 | Construction | BAB |
|  | 6 | **Zone 3 / Tilt Panel Casting** |  | 2025-08-04 | 2025-10-01 |  |  |  |  |  |  |  |  |  |  |  |
| QTS-16971 |  | Zone 3 / Gridlines 30-41 // Prep & Place Waste Slabs - North | 6d | 2025-08-04 A | 2025-08-25 A | QTS-21531, QTS-16031 | 100% | 2025-08-04 | 2025-08-11 | 01ADMIN | Construction | Core & Shell | IGMP | Phase 3 | Construction | BAB |
| QTS-18481 |  | Zone 3 / Gridlines 30-41 // Layout, Form, Reinforce, & Pour Tilt Panels - North | 5d | 2025-08-26 A | 2025-09-05 A | QTS-16971, QTS-38801, QTS-17911 | 100% | 2025-08-21 | 2025-08-27 | 01ADMIN | Construction | Core & Shell | IGMP | Phase 3 | Construction | BAB |
| QTS-99220 |  | Zone 3 / Gridlines 30-41 // Prep & Place Waste Slabs - South | 6d | 2025-08-26 A | 2025-09-03 A | QTS-16971 | 100% | 2025-08-21 | 2025-08-28 | 01ADMIN | Construction | Core & Shell | IGMP | Phase 3 | Construction | BAB |
| QTS-99240 |  | Zone 3 / Gridlines 30-41 // Prep & Place Waste Slabs - East | 6d | 2025-08-27 A | 2025-08-29 A | QTS-18481 SS | 100% | 2025-08-27 | 2025-09-04 | 01ADMIN | Construction | Core & Shell | IGMP | Phase 3 | Construction | BAB |
| QTS-99250 |  | Zone 3 / Gridlines 30-41 // Layout, Form, Reinforce, & Pour Tilt Panels - East | 5d | 2025-09-02 A | 2025-09-12 A | QTS-99240 | 100% | 2025-09-02 | 2025-09-08 | 01ADMIN | Construction | Core & Shell | IGMP | Phase 3 | Construction | BAB |
| QTS-99230 |  | Zone 3 / Gridlines 30-41 // Layout, Form, Reinforce, & Pour Tilt Panels - South | 5d | 2025-09-04 A | 2025-09-10 A | QTS-99220 | 100% |  |  | 01ADMIN | Construction | Core & Shell | IGMP | Phase 3 | Construction | BAB |
| QTS-99260 |  | Zone 3 / Gridlines 30-41 // Cure Tilt Panels - North | 5d | 2025-09-08 A | 2025-09-12 A | QTS-18481 | 100% |  |  | 01ADMIN | Construction | Core & Shell | IGMP | Phase 3 | Construction | BAB |
| QTS-99270 |  | Zone 3 / Gridlines 30-41 // Cure - South | 5d | 2025-09-11 A | 2025-09-17 A | QTS-99230 | 100% |  |  | 01ADMIN | Construction | Core & Shell | IGMP | Phase 3 | Construction | BAB |
| QTS-99200 |  | Zone 3 / Gridlines 30-41 // Erect Cast Panels - North | 4d | 2025-09-15 A | 2025-09-22 A | QTS-23111, QTS-99190, QTS-99260 | 100% | 2025-09-15 | 2025-09-18 | 01ADMIN | Construction | Core & Shell | IGMP | Phase 3 | Construction | BAB |
| QTS-99280 |  | Zone 3 / Gridlines 30-41 // Cure - East | 4d | 2025-09-15 A | 2025-09-18 A | QTS-99250 | 100% |  |  | 01ADMIN | Construction | Core & Shell | IGMP | Phase 3 | Construction | BAB |
| QTS-23261 |  | Zone 3 / Gridlines 30-41 // Erect Cast Panels - East | 3d | 2025-09-23 A | 2025-09-25 A | QTS-99200, QTS-99280, QTS-46811, QTS-42611, QTS-21521, QTS-15071 FF, QTS-22981 | 100% |  |  | 01ADMIN | Construction | Core & Shell | IGMP | Phase 3 | Construction | BAB |
| QTS-99210 |  | Zone 3 / Gridlines 30-41 // Erect Cast Panels - South | 4d | 2025-09-26 A | 2025-10-01 A | QTS-23261, QTS-99270 | 100% |  |  |  | Construction | Core & Shell | IGMP | Phase 3 | Construction | BAB |

Notes:
- QTS-22891: allucent_notes: David Wiltberger on 2025-09-02 10:09: ZOne not released until 9-3-25 / allucent_notes: 2025-09-02 10:09 - User: David Wiltberger - Date Added: 2025-09-02 10:09 - Note: ZOne not released until 9-3-25
- QTS-23551: allucent_notes_20251014_152335: Jason Johnston on 2025-10-14 14:10: Rain Delay / allucent_notes: 2025-10-14 14:10 - User: Jason Johnston - Date Added: 2025-10-14 14:10 - Note: Rain Delay
- QTS-23741: allucent_notes_20251021_145627: Jason Johnston on 2025-10-14 14:10: Rain delay and concrete availability / allucent_notes_20251014_152335: Jason Johnston on 2025-10-14 14:10: Rain delay and concrete availability / allucent_notes: 2025-10-14 14:10 - User: Jason Johnston - Date Added: 2025-10-14 14:10 - Note: Rain delay and concrete availability
- QTS-23281: allucent_notes_20251028_163138: Jason Johnston on 2025-10-21 13:10: switching pours from north to south / Jason Johnston on 2025-10-21 13:10: switching pours from north to south / allucent_notes_20251027_224008: Jason Johnston on 2025-10-21 13:10: switching pours from north to south / Jason Johnston on 2025-10-21 13:10: switching pours from north to south / allucent_notes_20251021_145627: Jason Johnston on 2025-10-21 13:10: switching pours from north to south / Jason Johnston on 2025-10-21 13:10: switching pours from north to south / allucent_notes: 2025-10-21 13:10 - User: Jason Johnston - Date Added: 2025-10-21 13:10 - Note: switching pours from north to south / 2025-10-21 13:10 - User: Jason Johnston - Date Added: 2025-10-21 13:10 - Note: switching pours from north to south
- QTS-99870: allucent_notes_20251104_160200: Jason Johnston on 2025-10-21 13:10: switching pours from north to south / Jason Johnston on 2025-10-21 13:10: switching pours from north to south / Jason Johnston on 2025-11-03 14:11: Moving pour to 11/3. / allucent_notes_20251028_163138: Jason Johnston on 2025-10-21 13:10: switching pours from north to south / Jason Johnston on 2025-10-21 13:10: switching pours from north to south / allucent_notes_20251027_224008: Jason Johnston on 2025-10-21 13:10: switching pours from north to south / Jason Johnston on 2025-10-21 13:10: switching pours from north to south / allucent_notes_20251021_145627: Jason Johnston on 2025-10-21 13:10: switching pours from north to south / Jason Johnston on 2025-10-21 13:10: switching pours from north to south / allucent_notes: 2025-10-21 13:10 - User: Jason Johnston - Date Added: 2025-10-21 13:10 - Note: switching pours from north to south / 2025-10-21 13:10 - User: Jason Johnston - Date Added: 2025-10-21 13:10 - Note: switching pours from north to south / 2025-11-03 14:11 -
- QTS-99500: allucent_notes_20251118_192630: Zack Goertz on 2025-11-05 10:11: Pour sequence got divided into 2. South was poured first. Suntec needed to do 2 pours so they could get their equipment in. / allucent_notes_20251111_182405: Zack Goertz on 2025-11-05 10:11: Pour sequence got divided into 2. South was poured first. Suntec needed to do 2 pours so they could get their equipment in. / allucent_notes: 2025-11-05 10:11 - User: Zack Goertz - Date Added: 2025-11-05 10:11 - Note: Pour sequence got divided into 2. South was poured first. Suntec needed to do 2 pours so they could get their equipment in.
- QTS-16971: allucent_notes: Jason Johnston on 2025-08-12 14:08: Pushing to allow time for single crane mob for zone 2 and zone 3 / allucent_notes: 2025-08-12 14:08 - User: Jason Johnston - Date Added: 2025-08-12 14:08 - Note: Pushing to allow time for single crane mob for zone 2 and zone 3 / 2025-08-26 15:08 - User: Jason Johnston - Date Added: 2025-08-26 15:08 - Note: Delay in pour
- QTS-18481: allucent_notes: Jason Johnston on 2025-09-02 15:09: delay in pour / allucent_notes: 2025-09-02 15:09 - User: Jason Johnston - Date Added: 2025-09-02 15:09 - Note: delay in pour
- QTS-99220: allucent_notes: Jason Johnston on 2025-08-12 14:08: Pushing to allow time for single crane mob for zone 2 and zone 3 / allucent_notes: 2025-08-12 14:08 - User: Jason Johnston - Date Added: 2025-08-12 14:08 - Note: Pushing to allow time for single crane mob for zone 2 and zone 3
- QTS-99240: allucent_notes: Jason Johnston on 2025-08-12 14:08: Pushing to allow time for single crane mob for zone 2 and zone 3 / allucent_notes: 2025-08-12 14:08 - User: Jason Johnston - Date Added: 2025-08-12 14:08 - Note: Pushing to allow time for single crane mob for zone 2 and zone 3

| ID | WBS | Activity | Duration | Start | Finish | Predecessors | Complete | Planned start | Planned finish | Total float | Free float | Allucent CSI Group | Project Section | Layton Discipline | Baseline | Phase-1-1 | Project Section-1 | Contract | Location | Level | Notes | Layton Super | Trade Partner |
| --- | --- | --- | --- | --- | --- | --- | --- | --- | --- | --- | --- | --- | --- | --- | --- | --- | --- | --- | --- | --- | --- | --- | --- |
|  | 1 | **External Stairs** |  | 2025-08-27 | 2026-02-02 |  |  |  |  |  |  |  |  |  |  |  |  |  |  |  |  |  |  |
| QTS-46851 |  | Stair 706 Erect & Detail | 7d | 2025-08-27 A | 2025-09-18 A | QTS-21521, QTS-49181, QTS-22361, QTS-43331 | 100% | 2025-08-27 | 2025-09-05 |  |  | 01ADMIN | Construction | Core & Shell | IGMP | Phase 3 | Construction | BAB |  |  |  |  |  |
| QTS-46861 |  | Stair 708 Erect & Detail | 6d | 2025-09-17 A | 2025-09-22 A | QTS-49101, QTS-46851 | 100% | 2025-09-24 | 2025-10-01 |  |  |  | Construction | Core & Shell | IGMP | Phase 3 | Construction | BAB |  |  |  |  |  |
| QTS-46871 |  | Stair 711 Erect & Detail | 7d | 2025-09-26 A | 2025-10-28 A | QTS-23261, QTS-49261, QTS-46861 | 100% | 2025-09-26 | 2025-10-06 |  |  | 01ADMIN | Construction | Core & Shell | IGMP | Phase 3 | Construction | BAB |  |  |  |  |  |
| QTS-46881 |  | Stair 707 Erect & Detail | 9d | 2025-11-24 A | 2026-01-26 A | QTS-46871, QTS-23261, QTS-49141 | 100% | 2025-11-19 | 2025-12-03 |  |  | 01ADMIN | Construction | Core & Shell | IGMP | Phase 3 | Construction | BAB |  |  |  |  |  |
| QTS-46891 |  | Stair 704 Erect & Detail | 5d | 2026-01-15 A | 2026-02-02 A | QTS-46881 FF, QTS-21521, QTS-49061, QTS-46871, QTS-49391 | 100% | 2026-01-15 | 2026-01-22 |  |  | 01ADMIN | Construction | Core & Shell | IGMP | Phase 3 | Construction | BAB |  |  |  |  |  |
|  | 6 | **Exterior Finishes** |  | 2025-07-22 | 2026-10-27 |  |  |  |  |  |  |  |  |  |  |  |  |  |  |  |  |  |  |
|  | 5 | **Roof Top Units** |  | 2025-07-22 | 2026-08-19 |  |  |  |  |  |  |  |  |  |  |  |  |  |  |  |  |  |  |
| QTS-19101 |  | Set FOH RTU 01 Curbs | 9d | 2025-07-22 A | 2025-07-25 A | QTS-19621, QTS-19071, QTS-19121 | 100% | 2025-08-04 | 2025-08-14 |  |  | 01ADMIN | Construction | Mechanical | DC | Phase 1 | Construction | BAB | FOH | Roof |  |  |  |
| QTS-36101 |  | Set FOH RTU 02 Curbs | 9d | 2025-07-22 A | 2025-07-25 A | QTS-19101 SS, QTS-19071 | 100% | 2025-07-22 | 2025-08-01 |  |  |  | Construction | Mechanical | DC | Phase 1 | Construction | BAB | FOH | Roof |  |  |  |
|  | 1 | **Supplemental Steel Install** |  | 2025-08-04 | 2025-09-04 |  |  |  |  |  |  |  |  |  |  |  |  |  |  |  |  |  |  |
| QTS-50791 |  | Install Supplemental Steel For RTU Penetrations | 10d | 2025-08-04 A | 2025-09-04 A | QTS-50801, QTS-19101 | 100% | 2025-08-04 | 2025-08-15 |  |  | 01ADMIN | Construction | Mechanical | DC | Phase 1 | Construction | BAB | FOH | Roof |  |  |  |
|  | 2 | **Remaining Scope** |  | 2025-08-18 | 2026-08-19 |  |  |  |  |  |  |  |  |  |  |  |  |  |  |  |  |  |  |
| QTS-50781 |  | Set FOH RTU 01 & 02 Penetrations | 5d | 2025-08-18 A | 2025-08-22 A | QTS-50791 SS | 100% |  |  |  |  | 01ADMIN | Construction | Mechanical | DC | Phase 1 | Construction | BAB | FOH | Roof |  |  |  |
| QTS-19111 |  | Set BOH RTU 03 Curbs & Penetrations | 10d | 2025-10-08 A | 2025-10-21 A | QTS-23261, QTS-22981, QTS-22621, QTS-19121 | 100% |  |  |  |  | 01ADMIN | Construction | Mechanical | DC | Phase 1 | Construction | BAB | BOH | Roof |  |  |  |
| QTS-36111 |  | Set FOH RTU 02 | 2d | 2025-10-28 A | 2025-10-28 A | QTS-36091, QTS-36101 | 100% | 2025-10-28 | 2025-10-29 |  |  | 01ADMIN | Construction | Mechanical | DC | Phase 1 | Construction | BAB | FOH | Roof |  |  |  |
| QTS-38421 |  | Set FOH RTU 01 | 2d | 2025-10-28 A | 2025-10-28 A | QTS-50781, QTS-25371, QTS-19101 | 100% | 2025-10-29 | 2025-10-30 |  |  | 01ADMIN | Construction | Mechanical | DC | Phase 1 | Construction | BAB | FOH | Roof |  |  |  |
| QTS-101600 |  | Set Condensers | 1d | 2025-10-29 A | 2025-10-29 A | QTS-38421 | 100% |  |  |  |  | 01ADMIN | Construction | Mechanical | DC | Phase 1 | Construction | BAB | FOH | Roof |  |  |  |
| QTS-101620 |  | Install Piping for Condensors | 4d | 2025-10-30 A | 2025-12-02 A | QTS-101600 | 100% | 2025-10-30 | 2025-11-04 |  |  | 01ADMIN | Construction | Mechanical | DC | Phase 1 | Construction | BAB | FOH | Roof |  |  |  |
| QTS-48911 |  | Rough In Plumbing from to FOH RTU 01 | 1d | 2025-12-05 A | 2025-12-05 A | QTS-101620, QTS-38421 | 100% |  |  |  |  | 01ADMIN | Construction | Mechanical | DC | Phase 1 | Construction | BAB | FOH | Roof |  |  |  |
| QTS-48951 |  | Rough In Plumbing from to FOH RTU 02 | 1d | 2025-12-05 A | 2025-12-05 A | QTS-101620, QTS-36111 | 100% |  |  |  |  | 01ADMIN | Construction | Mechanical | DC | Phase 1 | Construction | BAB | FOH | Roof |  |  |  |
| QTS-48921 |  | Rough In Power from to FOH RTU 01 | 3d | 2025-12-23 A | 2025-12-30 A | QTS-48911 | 100% |  |  |  |  | 01ADMIN | Construction | Mechanical | DC | Phase 1 | Construction | BAB | FOH | Roof |  |  |  |
| QTS-48961 |  | Rough In Power from to FOH RTU 02 | 3d | 2025-12-23 A | 2025-12-30 A | QTS-48951 | 100% |  |  |  |  | 01ADMIN | Construction | Mechanical | DC | Phase 1 | Construction | BAB | FOH | Roof |  |  |  |
| QTS-48931 |  | Rough In Controls from to FOH RTU 01 | 1d | 2025-12-30 A | 2025-12-30 A | QTS-48921 FF | 100% |  |  |  |  | 01ADMIN | Construction | Mechanical | DC | Phase 1 | Construction | BAB | FOH | Roof |  |  |  |
| QTS-48971 |  | Rough In Controls from to FOH RTU 02 | 1d | 2025-12-30 A | 2025-12-30 A | QTS-48961 FF | 100% |  |  |  |  | 01ADMIN | Construction | Mechanical | DC | Phase 1 | Construction | BAB | FOH | Roof |  |  |  |
| QTS-38431 |  | Set BOH RTU 03 | 2d | 2026-01-14 A | 2026-01-15 A | QTS-2071, QTS-23461, QTS-19111, QTS-2201 | 100% |  |  |  |  | 01ADMIN | Construction | Mechanical | DC | Phase 1 | Construction | BAB | BOH | Roof |  |  |  |
| QTS-49001 |  | Rough In Power from to BOH RTU 03 | 3d | 2026-02-12 A | 2026-03-25 A | QTS-38431 | 100% | 2026-02-12 | 2026-02-16 |  |  | 01ADMIN | Construction | Electrical | DC | Phase 1 | Construction | BAB | BOH | Roof |  |  |  |
| QTS-49011 |  | Rough In Controls from to BOH RTU 03 | 1d | 2026-02-16 A | 2026-02-16 A | QTS-38431 | 100% |  |  |  |  | 01ADMIN | Construction | Mechanical | DC | Phase 1 | Construction | BAB | BOH | Roof |  |  |  |
| QTS-48941 |  | Pre Energization Inspection FOH RTU 01 | 1d | 2026-03-09 A | 2026-03-26 A | QTS-48931 | 100% | 2026-03-09 | 2026-03-09 |  |  | 01ADMIN | Construction | Commissioning | DC | Phase 1 | Construction | BAB | FOH | Roof | 1/20/26: Dave is not sure if there is power to RTUs |  |  |
| QTS-48981 |  | Pre Energization Inspection FOH RTU 02 | 1d | 2026-03-09 A | 2026-03-26 A | QTS-48971 | 100% | 2026-03-09 | 2026-03-09 |  |  | 01ADMIN | Construction | Commissioning | DC | Phase 1 | Construction | BAB | FOH | Roof | 1/20/26: Dave is not sure if there is power to RTUs |  |  |
| QTS-48991 |  | Rough In Plumbing from to BOH RTU 03 | 1d | 2026-03-09 A | 2026-03-26 A | QTS-38431 | 100% | 2026-03-09 | 2026-03-09 |  |  | 01ADMIN | Construction | Mechanical | DC | Phase 1 | Construction | BAB | BOH | Roof | 1/20/26: BAM has not started yet. |  |  |
| QTS-1007170 |  | Rough In Controls from to BOH RTU 03 | 2d | 2026-04-22 A | 2026-04-23 A | QTS-38431 | 100% |  |  |  |  | 01ADMIN | Construction | Mechanical | DC | Phase 1 | Construction | BAB | BOH | Roof | Replacing QTS-49011 due to accidental start |  |  |
| QTS-49021 |  | Pre Energization Inspection BOH RTU 03 | 1d | 2026-08-19 | 2026-08-19 | QTS-49011, QTS-1007170 |  |  |  | -69d | 0d | 01ADMIN | Construction | Commissioning | DC | Phase 1 | Construction | BAB | BOH | Roof | Open CX issues - waiting on ETA from CX team | Mechanical | Bel-Aire |

Notes:
- QTS-46871: allucent_notes_20251028_163138: Jason Johnston on 2025-10-07 12:10: Waiting for pad for south side stairs to be poured / Jason Johnston on 2025-10-21 13:10: Waiting to complete until after gen yard work is done in area / allucent_notes_20251027_224008: Jason Johnston on 2025-10-07 12:10: Waiting for pad for south side stairs to be poured / Jason Johnston on 2025-10-21 13:10: Waiting to complete until after gen yard work is done in area / allucent_notes_20251021_145627: Jason Johnston on 2025-10-07 12:10: Waiting for pad for south side stairs to be poured / Jason Johnston on 2025-10-21 13:10: Waiting to complete until after gen yard work is done in area / allucent_notes_20251014_152335: Jason Johnston on 2025-10-07 12:10: Waiting for pad for south side stairs to be poured / allucent_notes: 2025-10-07 12:10 - User: Jason Johnston - Date Added: 2025-10-07 12:10 - Note: Waiting for pad for south side stairs to be poured / 2025-10-21 13:10 - User: Jason Johnston - Date Added: 2025-10-21 13:10 - Note: Waiting to complete until after gen yard wo
- QTS-46881: allucent_notes_20251216_165335: Jason Johnston on 2025-11-11 14:11: No update. Effected by RFI over conflicting shop drawings. / Jason Johnston on 2025-11-18T21:06:27.628Z: Tie to TES tanks zone 3 set / Jason Johnston on 2025-11-24 13:11: Rain delay / Chris Waddell on 2025-12-09T21:06:46.927Z: Suntec installed anchor bolts by drill and epoxy today / Chris Waddell on 2025-12-09 14:10: Suntec needs to pour pedestals for stairs to sit on before they can finish. / Ron Carroll on 2025-12-15T21:17:12.856Z: Pending possible RFI / Ron Carroll on 2025-12-15 14:18: Pending possible RFI / allucent_notes_20251209_203830: Jason Johnston on 2025-11-11 14:11: No update. Effected by RFI over conflicting shop drawings. / Jason Johnston on 2025-11-18T21:06:27.628Z: Tie to TES tanks zone 3 set / Jason Johnston on 2025-11-24 13:11: Rain delay / Chris Waddell on 2025-12-09T21:06:46.927Z: Suntec installed anchor bolts by drill and epoxy today / Chris Waddell on 2025-12-09 14:10: Suntec needs to pour pedestals for stairs to sit on before they can finish. / allucent_notes_20251202_153722: Jason Johnston on 2025-11-11 14:11: No update. Effected by RFI over conflicting shop drawings. / Jason Johnston on 2025-11-18T21:06:27.628Z: Tie to TES tanks zone 3 set / Jason Johnston on 2025-11-24 13:11: Rain delay / allucent_notes_20251118_192630: Jason Johnston on 2025-11-11 14:11: No update. Effected by RFI over conflicting shop drawings. / Jason Johnston on 2025-11-18T21:06:27.628Z: Tie to TES tanks zone 3 set / allucent_notes_20251111_182405: Jason Johnston on 2025-11-11 14:11: No update. Effected by RFI over conflicting shop drawings. / allucent_notes_20251230_164549: Jason Johnston on 2025-11-11 14:11: No update. Effected by RFI over conflicting shop drawings. / Jason Johnston on 2025-11-18T21:06:27.628Z: Tie to TES tanks zone 3 set / Jason Johnston on 2025-11-24 13:11: Rain delay / Chris Waddell on 2025-12-09T21:06:46.927Z: Suntec installed anchor bolts by drill and epoxy today / Chris Waddell on 2025-12-09 14:10: Suntec needs to pour pedestals for stairs to sit on before they can finish. / Ron Carroll on 2025-12-15T21:17:12.856Z: Pending possible RFI / Ron Carroll on 2025-12-15 14:18: Pending possible RFI / Andrew Melis on 2025-12-30 12:46: work in progress / allucent_notes: 2025-11-11 14:11 - User: Jason Johnston - Date Added: 2025-11-11 14:11 - Note: No update. Effected by RFI over conflicting shop drawings. / 2025-11-18T21:06:27.628Z - User: Jason Johnston - Date Added: 2025-11-18T21:06:27.628Z - Note: Tie to TES tanks zo
- QTS-46891: allucent_notes_20251216_165335: Jason Johnston on 2025-10-28 14:10: OEG install telecom duct bank in area. set to be complete 10/31. / Jason Johnston on 2025-11-03 14:11: Change tie between 704 and 707 / Ron Carroll on 2025-12-15T21:17:34.791Z: Pending possible RFI / allucent_notes_20251209_203830: Jason Johnston on 2025-10-28 14:10: OEG install telecom duct bank in area. set to be complete 10/31. / Jason Johnston on 2025-11-03 14:11: Change tie between 704 and 707 / allucent_notes_20251202_153722: Jason Johnston on 2025-10-28 14:10: OEG install telecom duct bank in area. set to be complete 10/31. / Jason Johnston on 2025-11-03 14:11: Change tie between 704 and 707 / allucent_notes_20251118_192630: Jason Johnston on 2025-10-28 14:10: OEG install telecom duct bank in area. set to be complete 10/31. / Jason Johnston on 2025-11-03 14:11: Change tie between 704 and 707 / allucent_notes_20251111_182405: Jason Johnston on 2025-10-28 14:10: OEG install telecom duct bank in area. set to be complete 10/31. / Jason Johnston on 2025-11-03 14:11: Change tie between 704 and 707 / allucent_notes_20251104_160200: Jason Johnston on 2025-10-28 14:10: OEG install telecom duct bank in area. set to be complete 10/31. / Jason Johnston on 2025-11-03 14:11: Change tie between 704 and 707 / allucent_notes_20251028_163138: Jason Johnston on 2025-10-28 14:10: OEG install telecom duct bank in area. set to be complete 10/31. / allucent_notes_20251230_164549: Jason Johnston on 2025-10-28 14:10: OEG install telecom duct bank in area. set to be complete 10/31. / Jason Johnston on 2025-11-03 14:11: Change tie between 704 and 707 / Ron Carroll on 2025-12-15T21:17:34.791Z: Pending possible RFI / allucent_notes: 2025-10-28 14:10 - User: Jason Johnston - Date Added: 2025-10-28 14:10 - Note: OEG install telecom duct bank in area. set to be complete 10/31. / 2025-11-03 14:11 - User: Jason Johnston - Date Added: 2025-11-03 14:11 - Note: Change tie between 704 and 70
- QTS-50791: allucent_notes: David Wiltberger on 2025-08-19 09:08: Extended schedule due to manpower / allucent_notes: 2025-08-19 09:08 - User: David Wiltberger - Date Added: 2025-08-19 09:08 - Note: Extended schedule due to manpower / 2025-08-26 06:08 - User: David Wiltberger - Date Added: 2025-08-26 06:08 - Note: still installing due to manpower constraints
- QTS-19111: allucent_notes_20251021_145627: David Wiltberger on 2025-09-30 09:09: Structural steel is in wrong location Needs BZI attention / allucent_notes_20251014_152335: David Wiltberger on 2025-09-30 09:09: Structural steel is in wrong location Needs BZI attention / allucent_notes: 2025-09-30 09:09 - User: David Wiltberger - Date Added: 2025-09-30 09:09 - Note: Structural steel is in wrong location Needs BZI attention
- QTS-36111: allucent_notes_20251028_163138: David Wiltberger on 2025-10-21 13:10: Crane scheduled 3 weeks prior for 10/27.to ensure curb wrap was completed from progressive / Joseph Gyurko on 2025-10-28T20:36:31.838Z: Curb was wrapped and unit has been installed. / Jason Johnston on 2025-10-28 14:10: Set 10/28 / allucent_notes_20251027_224008: David Wiltberger on 2025-10-21 13:10: Crane scheduled 3 weeks prior for 10/27.to ensure curb wrap was completed from progressive / allucent_notes_20251021_145627: David Wiltberger on 2025-10-21 13:10: Crane scheduled 3 weeks prior for 10/27.to ensure curb wrap was completed from progressive / allucent_notes: 2025-10-21 13:10 - User: David Wiltberger - Date Added: 2025-10-21 13:10 - Note: Crane scheduled 3 weeks prior for 10/27.to ensure curb wrap was completed from progressive / 2025-10-28T20:36:31.838Z - User: Joseph Gyurko - Date Added: 2025-10-28T20:36:31
- QTS-38421: allucent_notes_20251028_163138: David Wiltberger on 2025-10-21 13:10: to ensure curbs are wrapped prior to install Crane was scheduled 3 weeks ago to do the lift on 10/27 / Joseph Gyurko on 2025-10-28T20:36:54.629Z: null / Joseph Gyurko on 2025-10-28T20:37:29.070Z: Curb was wrapped and unit has been installed. / Scott Masterson on 2025-10-28 14:10: Set the RTUs for FOH complete!!! / Jason Johnston on 2025-10-28 14:10: Set 10/28 / allucent_notes_20251027_224008: David Wiltberger on 2025-10-21 13:10: to ensure curbs are wrapped prior to install Crane was scheduled 3 weeks ago to do the lift on 10/27 / allucent_notes_20251021_145627: David Wiltberger on 2025-10-21 13:10: to ensure curbs are wrapped prior to install Crane was scheduled 3 weeks ago to do the lift on 10/27 / allucent_notes: 2025-10-21 13:10 - User: David Wiltberger - Date Added: 2025-10-21 13:10 - Note: to ensure curbs are wrapped prior to install Crane was scheduled 3 weeks ago to do the lift on 10/27 / 2025-10-28T20:36:54.629Z - User: Joseph Gyurko - Date Added: 2025-10-2
- QTS-101620: allucent_notes_20251202_153722: David Wiltberger on 2025-11-04 14:11: Roof access impacted sequence / Jason Johnston on 2025-11-11 14:11: BAM off for veterans day. / David Wiltberger on 2025-11-17 16:11: slow Bam / David Wiltberger on 2025-12-01 09:19: did not complete to schedule / allucent_notes_20251118_192630: David Wiltberger on 2025-11-04 14:11: Roof access impacted sequence / Jason Johnston on 2025-11-11 14:11: BAM off for veterans day. / David Wiltberger on 2025-11-17 16:11: slow Bam / allucent_notes_20251111_182405: David Wiltberger on 2025-11-04 14:11: Roof access impacted sequence / Jason Johnston on 2025-11-11 14:11: BAM off for veterans day. / allucent_notes_20251104_160200: David Wiltberger on 2025-11-04 14:11: Roof access impacted sequence / allucent_notes: 2025-11-04 14:11 - User: David Wiltberger - Date Added: 2025-11-04 14:11 - Note: Roof access impacted sequence / 2025-11-11 14:11 - User: Jason Johnston - Date Added: 2025-11-11 14:11 - Note: BAM off for veterans day. / 2025-11-17 16:11 - User: David Wi
- QTS-48911: allucent_notes_20251209_203830: Jason Johnston on 2025-11-03 14:11: BAM impact. / David Wiltberger on 2025-11-04 14:11: Roof access impacted schedule / Jason Johnston on 2025-11-11 14:11: BAM off for veterans day. / David Wiltberger on 2025-11-17 16:11: out of sequence / David Wiltberger on 2025-12-01 09:48: Was not reflected in BAM recovery schedule until12/5 / allucent_notes_20251202_153722: Jason Johnston on 2025-11-03 14:11: BAM impact. / David Wiltberger on 2025-11-04 14:11: Roof access impacted schedule / Jason Johnston on 2025-11-11 14:11: BAM off for veterans day. / David Wiltberger on 2025-11-17 16:11: out of sequence / David Wiltberger on 2025-12-01 09:48: Was not reflected in BAM recovery schedule until12/5 / allucent_notes_20251118_192630: Jason Johnston on 2025-11-03 14:11: BAM impact. / David Wiltberger on 2025-11-04 14:11: Roof access impacted schedule / Jason Johnston on 2025-11-11 14:11: BAM off for veterans day. / David Wiltberger on 2025-11-17 16:11: out of sequence / allucent_notes_20251111_182405: Jason Johnston on 2025-11-03 14:11: BAM impact. / David Wiltberger on 2025-11-04 14:11: Roof access impacted schedule / Jason Johnston on 2025-11-11 14:11: BAM off for veterans day. / allucent_notes_20251104_160200: Jason Johnston on 2025-11-03 14:11: BAM impact. / David Wiltberger on 2025-11-04 14:11: Roof access impacted schedule / allucent_notes: 2025-11-03 14:11 - User: Jason Johnston - Date Added: 2025-11-03 14:11 - Note: BAM impact. / 2025-11-04 14:11 - User: David Wiltberger - Date Added: 2025-11-04 14:11 - Note: Roof access impacted schedule / 2025-11-11 14:11 - User: Jason Johnston - Date
- QTS-48951: allucent_notes_20251209_203830: Jason Johnston on 2025-11-03 14:11: BAM impact. / David Wiltberger on 2025-11-04 14:11: Roof access impacted schedule / Jason Johnston on 2025-11-11 14:11: BAM off for veterans day. / David Wiltberger on 2025-11-17 16:11: out of sequence / David Wiltberger on 2025-12-01 09:47: Was not reflected in BAM recovery schedule until12/5 / allucent_notes_20251202_153722: Jason Johnston on 2025-11-03 14:11: BAM impact. / David Wiltberger on 2025-11-04 14:11: Roof access impacted schedule / Jason Johnston on 2025-11-11 14:11: BAM off for veterans day. / David Wiltberger on 2025-11-17 16:11: out of sequence / David Wiltberger on 2025-12-01 09:47: Was not reflected in BAM recovery schedule until12/5 / allucent_notes_20251118_192630: Jason Johnston on 2025-11-03 14:11: BAM impact. / David Wiltberger on 2025-11-04 14:11: Roof access impacted schedule / Jason Johnston on 2025-11-11 14:11: BAM off for veterans day. / David Wiltberger on 2025-11-17 16:11: out of sequence / allucent_notes_20251111_182405: Jason Johnston on 2025-11-03 14:11: BAM impact. / David Wiltberger on 2025-11-04 14:11: Roof access impacted schedule / Jason Johnston on 2025-11-11 14:11: BAM off for veterans day. / allucent_notes_20251104_160200: Jason Johnston on 2025-11-03 14:11: BAM impact. / David Wiltberger on 2025-11-04 14:11: Roof access impacted schedule / allucent_notes: 2025-11-03 14:11 - User: Jason Johnston - Date Added: 2025-11-03 14:11 - Note: BAM impact. / 2025-11-04 14:11 - User: David Wiltberger - Date Added: 2025-11-04 14:11 - Note: Roof access impacted schedule / 2025-11-11 14:11 - User: Jason Johnston - Date
- QTS-48921: allucent_notes_20251216_165335: Jason Johnston on 2025-12-09 20:34: Need update from team / Scott Masterson on 2025-12-16 16:27: Dave added these descriptions and Scott Needs to set dates for this activities. / allucent_notes_20251209_203830: Jason Johnston on 2025-12-09 20:34: Need update from team / allucent_notes_20251230_164549: Jason Johnston on 2025-12-09 20:34: Need update from team / Scott Masterson on 2025-12-16 16:27: Dave added these descriptions and Scott Needs to set dates for this activities. / allucent_notes: 2025-12-09 20:34 - User: Jason Johnston - Date Added: 2025-12-09 20:34 - Note: Need update from team / 2025-12-16 16:27 - User: Scott Masterson - Date Added: 2025-12-16 16:27 - Note: Dave added these descriptions and Scott Needs to set dates for this act
- QTS-48961: allucent_notes_20251216_165335: Jason Johnston on 2025-12-09 20:34: Need update from team / Scott Masterson on 2025-12-16 16:28: Dave added these descriptions and Scott Needs to set dates for this activities. / allucent_notes_20251209_203830: Jason Johnston on 2025-12-09 20:34: Need update from team / allucent_notes_20251230_164549: Jason Johnston on 2025-12-09 20:34: Need update from team / Scott Masterson on 2025-12-16 16:28: Dave added these descriptions and Scott Needs to set dates for this activities. / allucent_notes: 2025-12-09 20:34 - User: Jason Johnston - Date Added: 2025-12-09 20:34 - Note: Need update from team / 2025-12-16 16:28 - User: Scott Masterson - Date Added: 2025-12-16 16:28 - Note: Dave added these descriptions and Scott Needs to set dates for this act
- QTS-38431: allucent_notes_20251104_160200: Jason Johnston on 2025-11-03 14:11: Tie to BOH DOAS units. / allucent_notes: 2025-11-03 14:11 - User: Jason Johnston - Date Added: 2025-11-03 14:11 - Note: Tie to BOH DOAS units.
- QTS-48941: Scheduler Notes: 1/20/26: Dave is not sure if there is power to RTUs
- QTS-48981: Scheduler Notes: 1/20/26: Dave is not sure if there is power to RTUs
- QTS-48991: Scheduler Notes: 1/20/26: BAM has not started yet.
- QTS-1007170: Scheduler Notes: Replacing QTS-49011 due to accidental start

| ID | WBS | Activity | Duration | Start | Finish | Predecessors | Complete | Planned start | Planned finish | Total float | Free float | Allucent CSI Group | Project Section | Phase-1 | Layton Discipline | Baseline | Level | Contract | Phase-1-1 | Project Section-1 | Layton Super | Update Notes | Location | Fragnet | Fragnet Responsible Party | Owner Impact Analysis |
| --- | --- | --- | --- | --- | --- | --- | --- | --- | --- | --- | --- | --- | --- | --- | --- | --- | --- | --- | --- | --- | --- | --- | --- | --- | --- | --- |
|  | 4 | **Roofing** |  | 2025-08-27 | 2026-09-09 |  |  |  |  |  |  |  |  |  |  |  |  |  |  |  |  |  |  |  |  |  |
| QTS-20771 |  | FOH / Gridlines 1-10 // Install Vapor Barrier | 5d | 2025-08-27 A | 2025-09-03 A | QTS-36101, QTS-19141, QTS-19811, QTS-19101 | 100% |  |  |  |  | 01ADMIN | Construction | Phase 1 | Core & Shell | IGMP | Roof | BAB |  |  |  |  |  |  |  |  |
| QTS-42651 |  | Zone 1 / Gridlines 10-21 // Install Vapor Barrier | 8d | 2025-09-04 A | 2025-09-15 A | QTS-20771 | 100% |  |  |  |  | 01ADMIN | Construction |  | Core & Shell | IGMP | Roof | BAB | Phase 1 | Construction |  |  |  |  |  |  |
| QTS-22151 |  | Zone 2 / Gridlines 21-30 // Install Vapor Barrier | 7d | 2025-09-16 A | 2025-09-24 A | QTS-42651, QTS-21521 | 100% |  |  |  |  | 01ADMIN | Construction | Phase 2 | Core & Shell | IGMP | Roof | BAB |  |  |  |  |  |  |  |  |
| QTS-23911 |  | Zone 3 / Gridlines 30-41 // Install Vapor Barrier | 8d | 2025-09-25 A | 2025-10-06 A | QTS-23261 SS, QTS-22151 | 100% |  |  |  |  |  | Construction | Phase 3 | Core & Shell | IGMP | Roof | BAB |  |  |  |  |  |  |  |  |
| QTS-42661 |  | Zone 1 / Gridlines 10-21 // Install Roofing System | 11d | 2025-09-30 A | 2025-10-17 A | QTS-23911 SS+2d, QTS-42651 | 100% | 2025-09-30 | 2025-10-14 |  |  | 01ADMIN | Construction |  | Core & Shell | IGMP | Roof | BAB | Phase 1 | Construction |  |  |  |  |  |  |
| QTS-21651 |  | FOH / Gridlines 1-10 // Install Roofing System | 8d | 2025-10-20 A | 2025-10-29 A | QTS-42661, QTS-23911, QTS-38921, QTS-18911, QTS-18881 | 100% |  |  |  |  | 01ADMIN | Construction | Phase 1 | Core & Shell | IGMP | Roof | BAB |  |  |  |  |  |  |  |  |
| QTS-42671 |  | Zone 3 / Gridlines 30-36 // Install Roofing System | 6d | 2025-10-31 A | 2025-11-07 A | QTS-21651, QTS-23911 | 100% | 2025-10-30 | 2025-11-06 |  |  | 01ADMIN | Construction |  | Core & Shell | IGMP | Roof | BAB | Phase 3 | Construction |  |  |  |  |  |  |
| QTS-22861 |  | Zone 2 / Gridlines 21-30 // Install Roofing System | 7d | 2025-11-10 A | 2025-12-05 A | QTS-42671, QTS-21651, QTS-42661, QTS-38921, QTS-18881, QTS-22151 SS+10d | 100% | 2025-11-10 | 2025-11-18 |  |  | 01ADMIN | Construction | Phase 2 | Core & Shell | IGMP | Roof | BAB |  |  |  |  |  |  |  |  |
| QTS-24581 |  | Zone 3 / Gridlines 36-41 // Install Roofing System | 5d | 2025-12-12 A | 2025-12-17 A | QTS-99730 SS+1d, QTS-22861, QTS-42671, QTS-38921, QTS-18881, QTS-20881 FF, QTS-20771 | 100% | 2025-12-12 | 2025-12-18 |  |  | 01ADMIN | Construction | Phase 3 | Core & Shell | IGMP | Roof | BAB |  |  |  |  |  |  |  |  |
| QTS-28991 |  | Roofing // Contractor Punch List | 3d | 2026-09-04 | 2026-09-09 | QTS-24581 FF, QTS-22861, QTS-24581, QTS-99860, QTS-101570, QTS-1012450, QTS-1013690 |  |  |  | -5d | 51d | 01ADMIN | Construction |  | Build Out | IGMP | Roof | BAB |  |  | Mechanical |  |  |  |  |  |
|  | 6 | **Penthouse** |  | 2025-10-17 | 2026-09-02 |  |  |  |  |  |  |  |  |  |  |  |  |  |  |  |  |  |  |  |  |  |
| QTS-99700 |  | Penthouse // Install Scaffolding | 2d | 2025-10-17 A | 2025-10-27 A | QTS-1371 SS | 100% | 2025-10-17 | 2025-10-20 |  |  | 01ADMIN | Construction |  | Core & Shell | IGMP | Roof | BAB |  |  |  |  |  |  |  |  |
| QTS-99710 |  | Penthouse // Install Framing | 5d | 2025-10-28 A | 2025-11-03 A | QTS-99700 | 100% |  |  |  |  | 01ADMIN | Construction |  | Core & Shell | IGMP | Roof | BAB |  |  |  |  |  |  |  |  |
| QTS-99720 |  | Penthouse // Install Exterior Sheathing | 5d | 2025-11-04 A | 2025-11-14 A | QTS-99710 | 100% | 2025-11-04 | 2025-11-10 |  |  | 01ADMIN | Construction |  | Core & Shell | IGMP | Roof | BAB |  |  |  |  |  |  |  |  |
| QTS-99780 |  | Penthouse // Install In Wall MEPs | 5d | 2025-11-19 A | 2025-11-25 A | QTS-99720 | 100% |  |  |  |  | 01ADMIN | Construction |  | Build Out | IGMP | Roof | BAB |  |  |  |  |  |  |  |  |
|  | 7 | **Fragnet / RFI #1081 Coping Cap Extensions** |  | 2026-06-10 | 2026-08-25 |  |  |  |  |  |  |  |  |  |  |  |  |  |  |  |  |  |  |  |  |  |
| QTS-1012450 |  | Fragnet // RFI #1081: Coping Cap Extensions | 10d | 2026-06-10 A | 2026-07-21 A | QTS-99850 | 100% | 2026-06-03 | 2026-06-16 |  |  |  | Construction |  | Build Out | IGMP | Roof | BAB |  |  | Freddy Arrizon | 6/11: Needed to re-order roof coping cap, push duration | EXT | Fragnet | Progressive Roofing |  |
| QTS-1013690 |  | Fragnet // RFI #1081: fragnet - Redo Coping Cap Extensions | 5d | 2026-08-19 | 2026-08-25 | QTS-1013680 |  |  |  | -1d | 0d |  | Construction |  | Build Out | IGMP | Roof | BAB |  |  | Freddy Arrizon | 6/11: Needed to re-order roof coping cap, push duration | EXT | Fragnet | Progressive Roofing | Y |
|  | 1 | **Fragnet / RFI for Curb to Penthouse** |  | 2025-11-03 | 2025-12-10 |  |  |  |  |  |  |  |  |  |  |  |  |  |  |  |  |  |  |  |  |  |
| QTS-120030 |  | Fragnet / Penthouse // Submission RFI #685 | 1d | 2025-11-03 A | 2025-11-03 A | QTS-1030 SS | 100% |  |  |  |  | 01ADMIN | Construction |  | Build Out | IGMP | Roof | BAB |  |  |  |  |  | Fragnet | Progressive Roofing | Y |
| QTS-1000420 |  | Fragnet / Penthouse // Design Response RFI #685 | 8d | 2025-11-04 A | 2025-11-13 A | QTS-120030 | 100% |  |  |  |  | 01ADMIN | Construction |  | Build Out | IGMP | Roof | BAB |  |  |  |  |  | Fragnet | Progressive Roofing | Y |
| QTS-1000430 |  | Fragnet / Penthouse // Design Response Distribution RFI #685 | 8d | 2025-11-14 A | 2025-11-14 A | QTS-1000420 | 100% | 2025-11-04 | 2025-11-13 |  |  | 01ADMIN | Construction |  | Build Out | IGMP | Roof | BAB |  |  |  |  |  | Fragnet | Progressive Roofing | Y |
| QTS-1000440 |  | Fragnet / Penthouse // Subcontractor Design RFI #685 | 8d | 2025-11-17 A | 2025-12-01 A | QTS-1000430 | 100% | 2025-11-04 | 2025-11-13 |  |  | 01ADMIN | Construction |  | Build Out | IGMP | Roof | BAB |  |  |  |  |  | Fragnet | Progressive Roofing | Y |
| QTS-1000450 |  | Fragnet / Penthouse // Demo Penthouse Scaffold | 4d | 2025-12-02 A | 2025-12-05 A | QTS-1000440 | 100% |  |  |  |  | 01ADMIN | Construction |  | Core & Shell | IGMP | Roof | BAB |  |  |  |  |  | Fragnet | Progressive Roofing | Y |
| QTS-1000460 |  | Fragnet / Penthouse // Install Penthouse Roof Curbs | 5d | 2025-12-08 A | 2025-12-10 A | QTS-1000450 | 100% | 2025-12-08 | 2025-12-12 |  |  | 01ADMIN | Construction |  | Core & Shell | IGMP | Roof | BAB |  |  |  |  |  | Fragnet | Progressive Roofing | Y |

Notes:
- QTS-20771: allucent_notes: Jason Johnston on 2025-08-19 14:08: Bulletin 3 design changes delayed the start of vapor barrier / allucent_notes: 2025-08-19 14:08 - User: Jason Johnston - Date Added: 2025-08-19 14:08 - Note: Bulletin 3 design changes delayed the start of vapor barrier
- QTS-42661: allucent_notes_20251021_145627: Jason Johnston on 2025-09-30 12:09: Rain delayed loading of the roof material. Pushed start one day. / Jason Johnston on 2025-10-14 14:10: Rain delay / allucent_notes_20251014_152335: Jason Johnston on 2025-09-30 12:09: Rain delayed loading of the roof material. Pushed start one day. / Jason Johnston on 2025-10-14 14:10: Rain delay / allucent_notes: 2025-09-30 12:09 - User: Jason Johnston - Date Added: 2025-09-30 12:09 - Note: Rain delayed loading of the roof material. Pushed start one day. / 2025-10-14 14:10 - User: Jason Johnston - Date Added: 2025-10-14 14:10 - Note: Rain delay
- QTS-42671: allucent_notes_20251118_192630: Freddy Arrizon on 2025-10-30 14:10: *PCI didnt complete sheathing and framing EJ at zone 2-3. Will start 10/31/2025, / Freddy Arrizon on 2025-11-03 08:11: Started 10/31/2025 due to expansion joint framing and sheathing not being completed. / allucent_notes_20251111_182405: Freddy Arrizon on 2025-10-30 14:10: *PCI didnt complete sheathing and framing EJ at zone 2-3. Will start 10/31/2025, / Freddy Arrizon on 2025-11-03 08:11: Started 10/31/2025 due to expansion joint framing and sheathing not being completed. / allucent_notes_20251104_160200: Freddy Arrizon on 2025-10-30 14:10: *PCI didnt complete sheathing and framing EJ at zone 2-3. Will start 10/31/2025, / Freddy Arrizon on 2025-11-03 08:11: Started 10/31/2025 due to expansion joint framing and sheathing not being completed. / allucent_notes: 2025-10-30 14:10 - User: Freddy Arrizon - Date Added: 2025-10-30 14:10 - Note: *PCI didnt complete sheathing and framing EJ at zone 2-3. Will start 10/31/2025, / 2025-11-03 08:11 - User: Freddy Arrizon - Date Added: 2025-11-03 08:11 - Note: Started 10/31
- QTS-22861: allucent_notes_20251209_203830: Freddy Arrizon on 2025-11-18T19:14:05.583Z: The final roofing system cant be installed while the vapor retarder is wet. Can be installed 24 hours post rain events and is dry. / Freddy Arrizon on 2025-11-26 09:11: Progressive has been delayed due to weather Nov 15-20 it rained multiple times. The deck never dried before it rained again the following day. To include light rain Monday 11/24/25 night rain. The roof needs to be dry in order to install the roofing system. / allucent_notes_20251202_153722: Freddy Arrizon on 2025-11-18T19:14:05.583Z: The final roofing system cant be installed while the vapor retarder is wet. Can be installed 24 hours post rain events and is dry. / Freddy Arrizon on 2025-11-26 09:11: Progressive has been delayed due to weather Nov 15-20 it rained multiple times. The deck never dried before it rained again the following day. To include light rain Monday 11/24/25 night rain. The roof needs to be dry in order to install the roofing system. / allucent_notes_20251118_192630: Freddy Arrizon on 2025-11-18T19:14:05.583Z: The final roofing system cant be installed while the vapor retarder is wet. Can be installed 24 hours post rain events and is dry. / allucent_notes: 2025-11-18T19:14:05.583Z - User: Freddy Arrizon - Date Added: 2025-11-18T19:14:05.583Z - Note: The final roofing system cant be installed while the vapor retarder is wet. Can be installed 24 hours post rain events and is dry. / 2025-11-26 09:11 - User
- QTS-24581: allucent_notes_20251216_165335: Jason Johnston on 2025-11-04T17:17:02.573Z: Switch BOH Roofing with Zone 2 Roofing. / allucent_notes_20251209_203830: Jason Johnston on 2025-11-04T17:17:02.573Z: Switch BOH Roofing with Zone 2 Roofing. / allucent_notes_20251202_153722: Jason Johnston on 2025-11-04T17:17:02.573Z: Switch BOH Roofing with Zone 2 Roofing. / allucent_notes_20251118_192630: Jason Johnston on 2025-11-04T17:17:02.573Z: Switch BOH Roofing with Zone 2 Roofing. / allucent_notes_20251111_182405: Jason Johnston on 2025-11-04T17:17:02.573Z: Switch BOH Roofing with Zone 2 Roofing. / allucent_notes_20251104_160200: Jason Johnston on 2025-11-04T17:17:02.573Z: Switch BOH Roofing with Zone 2 Roofing. / allucent_notes_20251230_164549: Jason Johnston on 2025-11-04T17:17:02.573Z: Switch BOH Roofing with Zone 2 Roofing. / Jason Johnston on 2025-12-30 16:35: No update / allucent_notes: 2025-11-04T17:17:02.573Z - User: Jason Johnston - Date Added: 2025-11-04T17:17:02.573Z - Note: Switch BOH Roofing with Zone 2 Roofing. / 2025-12-30 16:35 - User: Jason Johnston - Date Added: 2025-12-30 16:35 - Note: No update
- QTS-28991: Scheduler Notes: Tied to zone 3 industrial fill and flush / Notes: Tied to zone 3 industrial fill and flush
- QTS-99700: allucent_notes_20251027_224008: Jason Johnston on 2025-10-21 13:10: delays / Jason Johnston on 2025-10-21 13:10: Moving very slow / Jason Johnston on 2025-10-27 10:10: Delayed due to roof protection needs / allucent_notes_20251021_145627: Jason Johnston on 2025-10-21 13:10: delays / Jason Johnston on 2025-10-21 13:10: Moving very slow / allucent_notes: 2025-10-21 13:10 - User: Jason Johnston - Date Added: 2025-10-21 13:10 - Note: delays / 2025-10-21 13:10 - User: Jason Johnston - Date Added: 2025-10-21 13:10 - Note: Moving very slow / 2025-10-27 10:10 - User: Jason Johnston - Date Added: 2025-10-27 10
- QTS-99720: allucent_notes_20251118_192630: Zack Goertz on 2025-11-11T18:22:56.604Z: Alpha failed inspection and cannot get onto shaft wall to finish fire caulking. / Jason Johnston on 2025-11-11 14:11: Fire caulking delays holding up inspection. / allucent_notes_20251111_182405: Zack Goertz on 2025-11-11T18:22:56.604Z: Alpha failed inspection and cannot get onto shaft wall to finish fire caulking. / Jason Johnston on 2025-11-11 14:11: Fire caulking delays holding up inspection. / allucent_notes: 2025-11-11T18:22:56.604Z - User: Zack Goertz - Date Added: 2025-11-11T18:22:56.604Z - Note: Alpha failed inspection and cannot get onto shaft wall to finish fire caulking. / 2025-11-11 14:11 - User: Jason Johnston - Date Added: 2025-11-11 14:11 - Note:
- QTS-99780: Schedulers Notes: There are several RFIs holding this up. Team needs to get me RFI number / and timeline.
- QTS-1012450: Scheduler Notes: 7/21/26-RFI 1081 - Redoing coping cap - Add a L metal coping extension at / GL9 as well as penthouse. / Notes: Redoing coping cap-Add a L metal coping extension at GL9 as well as penthouse.
- QTS-1013690: Notes: Redoing coping cap
- QTS-120030: Schedulers Notes: There are several RFIs holding this up. Team needs to get me RFI number / and timeline. Curb to Penthouse
- QTS-1000420: Schedulers Notes: There are several RFIs holding this up. Team needs to get me RFI number / and timeline.
- QTS-1000430: Schedulers Notes: There are several RFIs holding this up. Team needs to get me RFI number / and timeline.
- QTS-1000440: Schedulers Notes: There are several RFIs holding this up. Team needs to get me RFI number / and timeline.
- QTS-1000450: allucent_notes_20251202_153722: Freddy Arrizon on 2025-11-24T20:02:37.113Z: Progressive cannot start this until PCI completes framing and sheathing of the penthouse. Current date as of now 12/5 finish for PCI. Progressive will likely start 12/8/2025. / Freddy Arrizon on 2025-11-24 13:11: PCI is delaying the penthouse sheathing and framing. There committed completion date is now 12/5/2025. Progressive will likely start install 12/8/2025 pending PCI's completion of framing, sheathing, and removing the scaffold at the penthouse. / allucent_notes: 2025-11-24T20:02:37.113Z - User: Freddy Arrizon - Date Added: 2025-11-24T20:02:37.113Z - Note: Progressive cannot start this until PCI completes framing and sheathing of the penthouse. Current date as of now 12/5 finish for PCI. Progressive will likely st
- QTS-1000460: allucent_notes_20251216_165335: Jason Johnston on 2025-12-09 16:31: Early finish / allucent_notes_20251209_203830: Jason Johnston on 2025-12-09 16:31: Early finish / allucent_notes_20251202_153722: Freddy Arrizon on 2025-11-24T20:02:37.113Z: Progressive cannot start this until PCI completes framing and sheathing of the penthouse. Current date as of now 12/5 finish for PCI. Progressive will likely start 12/8/2025. / Freddy Arrizon on 2025-11-24 13:11: PCI is delaying the penthouse sheathing and framing. There committed completion date is now 12/5/2025. Progressive will likely start install 12/8/2025 pending PCI's completion of framing, sheathing, and removing the scaffold at the penthouse. / allucent_notes: 2025-12-09 16:31 - User: Jason Johnston - Date Added: 2025-12-09 16:31 - Note: Early finish

| ID | WBS | Activity | Duration | Start | Finish | Predecessors | Complete | Remaining | Planned start | Planned finish | Total float | Free float | Allucent CSI Group | Project Section | Layton Discipline | Baseline | Level | Fragnet | Owner Impact Analysis | Fragnet Responsible Party | Contract | Location | Layton Super | Update Notes |
| --- | --- | --- | --- | --- | --- | --- | --- | --- | --- | --- | --- | --- | --- | --- | --- | --- | --- | --- | --- | --- | --- | --- | --- | --- |
|  | 3 | **Fragnet / RFI #781 Roof Hatch** |  | 2026-01-05 | 2026-01-26 |  |  |  |  |  |  |  |  |  |  |  |  |  |  |  |  |  |  |  |
| QTS-1004450 |  | Fragnet / Penthouse // Layton Submit RFI #781 | 1d | 2026-01-05 A | 2026-01-05 A | QTS-1371 SS | 100% |  |  |  |  |  | 01ADMIN | Construction | Core & Shell | IGMP | Roof | Fragnet | Y | Progressive Roofing | BAB |  |  |  |
| QTS-1004460 |  | Fragnet / Penthouse // Design Response for RFI #781 | 5d | 2026-01-06 A | 2026-01-26 A | QTS-1004450 | 100% |  | 2026-01-06 | 2026-01-12 |  |  | 01ADMIN | Construction | Core & Shell | IGMP | Roof | Fragnet | Y | Progressive Roofing | BAB |  |  |  |
|  | 5 | **Fragnet / RFI #886 Guard Rail ACM Panel Gap** |  | 2026-02-20 | 2026-04-15 |  |  |  |  |  |  |  |  |  |  |  |  |  |  |  |  |  |  |  |
| QTS-1009210 |  | Fragnet / Submission of RFI #886 | 1d | 2026-02-20 A | 2026-02-20 A | QTS-1371 SS | 100% |  |  |  |  |  |  | Construction | Core & Shell | IGMP | Roof | Fragnet | Y | True Metal Solutions, LLC | BAB |  |  |  |
| QTS-1009220 |  | Fragnet / Design Response RFI #886 | 9d | 2026-02-23 A | 2026-03-05 A | QTS-1009210 | 100% |  |  |  |  |  |  | Construction | Core & Shell | IGMP | Roof | Fragnet | Y | True Metal Solutions, LLC | BAB |  |  |  |
| QTS-1009450 |  | Fragnet / Subcontractor to Mobilize to Site RFI #886 | 9d | 2026-03-06 A | 2026-04-14 A | QTS-1009220 | 100% |  | 2026-03-06 | 2026-03-18 |  |  |  | Construction | Core & Shell | IGMP | Roof | Fragnet | Y | SteelFab Texas Inc. | BAB |  |  |  |
| QTS-1010090 |  | Fragnet / Correction of Doors RFI #886 | 1d | 2026-04-15 A | 2026-04-15 A | QTS-1009450 | 100% |  |  |  |  |  |  | Construction | Core & Shell | IGMP | Roof | Fragnet | Y | SteelFab Texas Inc. | BAB |  |  |  |
|  | 4 | **Fragnet / RFI #929 Water Proofing Penthouse Door** |  | 2026-03-09 | 2026-03-27 |  |  |  |  |  |  |  |  |  |  |  |  |  |  |  |  |  |  |  |
| QTS-1009230 |  | Fragnet / Submission of RFI #929 | 1d | 2026-03-09 A | 2026-03-09 A | QTS-1371 SS | 100% |  | 2026-02-20 | 2026-02-20 |  |  |  | Construction | Core & Shell | IGMP | Roof | Fragnet |  | True Metal Solutions, LLC | BAB |  |  |  |
| QTS-1009240 |  | Fragnet / Design Response RFI #929 | 10d | 2026-03-10 A | 2026-03-27 A | QTS-1009230 | 100% |  | 2026-03-10 | 2026-03-23 |  |  |  | Construction | Core & Shell | IGMP | Roof | Fragnet |  | True Metal Solutions, LLC | BAB |  |  |  |
|  | 6 | **Fragnet / RFI #907 Collector Boxes** |  | 2026-03-02 | 2026-03-16 |  |  |  |  |  |  |  |  |  |  |  |  |  |  |  |  |  |  |  |
| QTS-1009410 |  | Fragnet / Submission of RFI #907 | 1d | 2026-03-02 A | 2026-03-02 A | QTS-1371 SS | 100% |  | 2026-02-20 | 2026-02-20 |  |  |  | Construction | Core & Shell | IGMP | Roof | Fragnet |  | True Metal Solutions, LLC | BAB |  |  |  |
| QTS-1009420 |  | Fragnet / Design Response RFI #907 | 9d | 2026-03-03 A | 2026-03-16 A | QTS-1009410 | 100% |  | 2026-02-23 | 2026-03-05 |  |  |  | Construction | Core & Shell | IGMP | Roof | Fragnet |  | True Metal Solutions, LLC | BAB |  |  |  |
|  | 2 | **Remaining Work** |  | 2025-12-11 | 2026-09-02 |  |  |  |  |  |  |  |  |  |  |  |  |  |  |  |  |  |  |  |
| QTS-99730 |  | Penthouse // Install Roofing Flashing | 5d | 2025-12-11 A | 2025-12-17 A | QTS-1000460, QTS-22861, QTS-99720 | 100% |  |  |  |  |  | 01ADMIN | Construction | Core & Shell | IGMP | Roof |  |  |  | BAB |  |  |  |
| QTS-1002010 |  | Penthouse // Fabricate Metal Panels | 15d | 2025-12-18 A | 2026-02-18 A | QTS-99730 | 100% |  | 2025-12-18 | 2026-01-14 |  |  | 01ADMIN | Construction | Core & Shell | IGMP | Roof |  |  |  | BAB |  |  |  |
| QTS-1002040 |  | Penthouse // Install Scaffolding for Metals Panels | 4d | 2026-01-08 A | 2026-01-23 A | QTS-99730 | 100% |  | 2026-01-07 | 2026-01-12 |  |  | 01ADMIN | Construction | Core & Shell | IGMP | Roof |  |  |  | BAB |  |  |  |
| QTS-1002020 |  | Penthouse // Frame In Scuppers | 2d | 2026-01-21 A | 2026-01-26 A | QTS-1002010 SS | 100% |  | 2026-01-21 | 2026-01-22 |  |  | 01ADMIN | Construction | Core & Shell | IGMP | Roof |  |  |  | BAB |  |  |  |
| QTS-99740 |  | Penthouse // Install Roofing System | 3d | 2026-01-27 A | 2026-02-02 A | QTS-24581, QTS-99730, QTS-1004460 | 100% |  | 2026-01-27 | 2026-01-29 |  |  | 01ADMIN | Construction | Core & Shell | IGMP | Roof |  |  |  | BAB |  |  |  |
| QTS-99830 |  | Penthouse // Install Waterproofing | 9d | 2026-01-27 A | 2026-02-10 A | QTS-1002040, QTS-99730 | 100% |  | 2026-01-27 | 2026-02-06 |  |  | 01ADMIN | Construction | Core & Shell | IGMP | Roof |  |  |  | BAB |  |  |  |
| QTS-1002070 |  | Penthouse // Install Scuppers | 2d | 2026-02-03 A | 2026-02-05 A | QTS-1002020, QTS-99740 | 100% |  | 2026-02-03 | 2026-02-04 |  |  | 01ADMIN | Construction | Core & Shell | IGMP | Roof |  |  |  | BAB |  |  |  |
| QTS-1002030 |  | Penthouse // Install Lightning Protection | 1d | 2026-02-04 A | 2026-02-04 A | QTS-99740 | 100% |  | 2026-02-11 | 2026-02-11 |  |  | 01ADMIN | Construction | Core & Shell | IGMP | Roof |  |  |  | BAB |  |  |  |
| QTS-1002050 |  | Penthouse // Inspection of Waterproofing | 1d | 2026-02-11 A | 2026-02-13 A | QTS-99830 | 100% |  | 2026-02-11 | 2026-02-11 |  |  | 01ADMIN | Construction | Core & Shell | IGMP | Roof |  |  |  | BAB |  |  |  |
| QTS-99750 |  | Penthouse // Install Trim for Metal Panels | 2d | 2026-02-23 A | 2026-02-26 A | QTS-99720 | 100% |  | 2026-02-23 | 2026-02-24 |  |  |  | Construction | Core & Shell | IGMP | Roof |  |  |  | BAB |  |  |  |
| QTS-99760 |  | Penthouse // Install Z Clips | 8d | 2026-02-23 A | 2026-03-09 A | QTS-99750 SS | 100% |  | 2026-02-23 | 2026-03-04 |  |  |  | Construction | Core & Shell | IGMP | Roof |  |  |  | BAB |  |  |  |
| QTS-99840 |  | Penthouse // Install Wall Insulation | 4d | 2026-02-23 A | 2026-03-10 A | QTS-1002050, QTS-99830, QTS-99760 FF | 100% |  | 2026-02-23 | 2026-02-26 |  |  | 01ADMIN | Construction | Core & Shell | IGMP | Roof |  |  |  | BAB |  |  |  |
| QTS-99770 |  | Penthouse // Install Interior Shaft Panels | 5d | 2026-02-25 A | 2026-03-02 A | QTS-99830, QTS-99780 | 100% |  | 2026-02-25 | 2026-03-03 |  |  | 01ADMIN | Construction | Core & Shell | IGMP | Roof |  |  |  | BAB |  |  |  |
| QTS-1006990 |  | Penthouse // Install ACM Panels | 9d | 2026-03-10 A | 2026-05-04 A | QTS-99750, QTS-99840, QTS-1009220, QTS-1009240 FF+2d, QTS-1009450 FF+2d, QTS-1010090 FF+3d | 100% |  | 2026-03-10 | 2026-03-20 |  |  |  | Construction | Build Out | IGMP | Roof |  |  |  | BAB | EXT | Sage Fundingsland |  |
| QTS-99790 |  | Penthouse // Install HM Door Frame | 1d | 2026-04-22 A | 2026-04-22 A | QTS-99770 | 100% |  |  |  |  |  | 01ADMIN | Construction | Build Out | IGMP | Roof |  |  |  | BAB |  |  |  |
| QTS-1002060 |  | Penthouse // Rough In In Wall Electrical | 3d | 2026-04-30 A | 2026-05-01 A | QTS-99790 | 100% |  | 2026-04-30 | 2026-05-04 |  |  |  | Construction | Electrical | IGMP | Roof |  |  |  | BAB |  | Freddy Arrizon |  |
| QTS-99850 |  | Penthouse // Install Collector Boxes | 2d | 2026-05-12 A | 2026-05-14 A | QTS-1002070, QTS-99760, QTS-1006990, QTS-1009430 | 100% |  | 2026-05-12 | 2026-05-13 |  |  |  | Construction | Build Out | IGMP | Roof |  |  |  | BAB | EXT | Bobby Martinez |  |
| QTS-1007000 |  | Penthouse // Install Downspouts | 2d | 2026-05-20 A | 2026-05-21 A | QTS-99850 | 100% |  |  |  |  |  |  | Construction | Build Out | IGMP | Roof |  |  |  | BAB | EXT | Freddy Arrizon |  |
| QTS-99860 |  | Penthouse // Install Roof Coping Cap | 1d | 2026-06-03 A | 2026-07-21 A | QTS-1002030, QTS-99850, QTS-1007000, QTS-1012450 FF+1d | 100% |  | 2026-06-03 | 2026-06-03 |  |  |  | Construction | Build Out | IGMP | Roof |  |  |  | BAB | EXT | Freddy Arrizon | 6/11: Needed to re-order roof coping cap, push duration |
| QTS-1012070 |  | Penthouse // Rough-In Wall Inspection Mechanical | 1d | 2026-07-08 A | 2026-07-08 A | QTS-1002060, QTS-99860 SS | 100% |  | 2026-07-21 | 2026-07-21 |  |  |  | Construction | Build Out | IGMP | Roof |  |  |  | BAB |  | Jorge Maldonado |  |
| QTS-99800 |  | Penthouse // Install HM Door (2) | 3d | 2026-07-09 A | 2026-07-13 A | QTS-99630, QTS-99790, QTS-1012070 | 100% |  | 2026-07-22 | 2026-07-24 |  |  |  | Construction | Build Out | IGMP | Roof |  |  |  | BAB | EXT | Ed Carter |  |
| QTS-1012140 |  | Penthouse // Install Drywall | 3d | 2026-07-13 A | 2026-07-14 A | QTS-1012070 | 100% |  | 2026-07-22 | 2026-07-24 |  |  |  | Construction | Build Out | IGMP | Roof |  |  |  | BAB | EXT | Ed Carter |  |
| QTS-1013680 |  | Fragnet // RFI #1081: fragnet - Procure new skirting to redo Coping Cap Extensions | 10d | 2026-07-21 A | 2026-08-04 A | QTS-1012450, QTS-99860 | 100% |  | 2026-08-03 | 2026-08-14 |  |  |  | Construction | Build Out | IGMP | Roof | Fragnet | Y | Progressive Roofing | BAB | EXT | Freddy Arrizon | 6/11: Needed to re-order roof coping cap, push duration |
| QTS-1002080 |  | Penthouse // Install Light Fixtures | 3d | 2026-08-10 A | 2026-08-19 | QTS-1002060, QTS-99850, QTS-99800 | 67% | 1d | 2026-08-12 | 2026-08-14 | 9d | 65d |  | Construction | Electrical | IGMP | Roof |  |  |  | BAB | EXT | Electrical |  |
| QTS-99810 |  | Penthouse // Paint Interior Walls | 3d | 2026-08-26 | 2026-08-28 | QTS-99790, QTS-1012070, QTS-1013690 |  |  |  |  | -1d | 0d | 01ADMIN | Construction | Build Out | IGMP | Roof |  |  |  | BAB | EXT | Bobby Martinez |  |
| QTS-99820 |  | Penthouse // Install Interoir Wall Fixtures | 3d | 2026-08-31 | 2026-09-02 | QTS-99810, QTS-1012140 |  |  |  |  | -1d | 38d |  | Construction | Build Out | IGMP | Roof |  |  |  | BAB | EXT | Bobby Martinez |  |

Notes:
- QTS-1004450: Scheduler Notes: RFI-0781 - Gap around the Penthouse Roof
- QTS-1009210: Scheduler Notes: RFI-0886 - Chiller Platform Railing Issue near Penthouse / Door
- QTS-1009230: Scheduler Notes: RFI-0929 - Waterproofing around Penthouse Doors_CORGAN
- QTS-1009410: Scheduler Notes: RFI-0907 - Penthouse Collector Box Attachment_CORGAN
- QTS-99730: allucent_notes_20251216_165335: Freddy Arrizon on 2025-11-24T20:02:37.113Z: Progressive cannot start this until PCI completes framing and sheathing of the penthouse. Current date as of now 12/5 finish for PCI. Progressive will likely start 12/8/2025. / Freddy Arrizon on 2025-11-24 13:11: PCI is delaying the penthouse sheathing and framing. There committed completion date is now 12/5/2025. Progressive will likely start install 12/8/2025 pending PCI's completion of framing, sheathing, and removing the scaffold at the penthouse. / allucent_notes_20251209_203830: Freddy Arrizon on 2025-11-24T20:02:37.113Z: Progressive cannot start this until PCI completes framing and sheathing of the penthouse. Current date as of now 12/5 finish for PCI. Progressive will likely start 12/8/2025. / Freddy Arrizon on 2025-11-24 13:11: PCI is delaying the penthouse sheathing and framing. There committed completion date is now 12/5/2025. Progressive will likely start install 12/8/2025 pending PCI's completion of framing, sheathing, and removing the scaffold at the penthouse. / allucent_notes_20251202_153722: Freddy Arrizon on 2025-11-24T20:02:37.113Z: Progressive cannot start this until PCI completes framing and sheathing of the penthouse. Current date as of now 12/5 finish for PCI. Progressive will likely start 12/8/2025. / Freddy Arrizon on 2025-11-24 13:11: PCI is delaying the penthouse sheathing and framing. There committed completion date is now 12/5/2025. Progressive will likely start install 12/8/2025 pending PCI's completion of framing, sheathing, and removing the scaffold at the penthouse. / allucent_notes_20251230_164549: Freddy Arrizon on 2025-11-24T20:02:37.113Z: Progressive cannot start this until PCI completes framing and sheathing of the penthouse. Current date as of now 12/5 finish for PCI. Progressive will likely start 12/8/2025. / Freddy Arrizon on 2025-11-24 13:11: PCI is delaying the penthouse sheathing and framing. There committed completion date is now 12/5/2025. Progressive will likely start install 12/8/2025 pending PCI's completion of framing, sheathing, and removing the scaffold at the penthouse. / Jason Johnston on 2025-12-30 16:35: No update / allucent_notes: 2025-11-24T20:02:37.113Z - User: Freddy Arrizon - Date Added: 2025-11-24T20:02:37.113Z - Note: Progressive cannot start this until PCI completes framing and sheathing of the penthouse. Current date as of now 12/5 finish for PCI. Progressive will likely st
- QTS-1002010: Scheduler Notes: 1/20/26: Wall Tolerance off True Metal waiting to proceed. / Notes: 1/20/26: Wall Tolerance off True Metal waiting to proceed.
- QTS-99770: allucent_notes_20251202_153722: Zack Goertz on 2025-12-02 14:31: THis is not a critical item / allucent_notes_20251230_164549: Zack Goertz on 2025-12-02 14:31: THis is not a critical item / allucent_notes: 2025-12-02 14:31 - User: Zack Goertz - Date Added: 2025-12-02 14:31 - Note: THis is not a critical item
- QTS-1006990: Scheduler Notes: 04/21 - 90% Complete - Need MEP's to extend boxes off the face of / densglass / Notes: 04/21 - 90% Complete - Need MEP's to extend boxes off the face of densglass
- QTS-99860: Notes: RFI
- QTS-1013680: Scheduler Notes: RFI-1081 - Coping Cap Extension - Having to Redo the coping / cap / Notes: Redoing coping cap
- QTS-1002080: Notes: Manpower
- QTS-99810: Notes: Waiting on MEP
- QTS-99820: Notes: Waiting on MEP

| ID | WBS | Activity | Duration | Start | Finish | Predecessors | Complete | Planned start | Planned finish | Allucent CSI Group | Project Section | Layton Discipline | Baseline | Phase-1-1 | Project Section-1 | Contract | Layton Super | Phase-1 | Fragnet | Fragnet Responsible Party |
| --- | --- | --- | --- | --- | --- | --- | --- | --- | --- | --- | --- | --- | --- | --- | --- | --- | --- | --- | --- | --- |
|  | 1 | **Zone 1 / Exterior Finishes** |  | 2025-08-06 | 2026-10-13 |  |  |  |  |  |  |  |  |  |  |  |  |  |  |  |
|  | 3 | **Zone 1 / Exterior Finishes // North Elevation** |  | 2025-08-06 | 2026-04-29 |  |  |  |  |  |  |  |  |  |  |  |  |  |  |  |
| QTS-42681 |  | Zone 1 Gridlines 10-21 / North // Sack & Patch Tilt Panels | 8d | 2025-08-06 A | 2025-08-11 A | QTS-19811 | 100% | 2025-08-06 | 2025-08-15 | 01ADMIN | Construction | Core & Shell | IGMP | Phase 1 | Construction | BAB |  |  |  |  |
| QTS-42691 |  | Zone 1 Gridlines 10-21 / North // Power Wash Tilt Panels | 3d | 2025-08-18 A | 2025-08-19 A | QTS-42681 | 100% | 2025-08-13 | 2025-08-15 | 01ADMIN | Construction | Core & Shell | IGMP | Phase 1 | Construction | BAB |  |  |  |  |
| QTS-43061 |  | FOH / North // Sack & Patch Tilt Panels | 6d | 2025-08-19 A | 2025-08-28 A | QTS-23621 FF, QTS-42681 | 100% | 2025-08-19 | 2025-08-26 | 01ADMIN | Construction | Core & Shell | IGMP | Phase 1 | Construction | BAB |  |  |  |  |
| QTS-42701 |  | Zone 1 Gridlines 10-21 / North // Prime & Paint Tilt Panels | 7d | 2025-08-20 A | 2025-08-29 A | QTS-42691, QTS-42681 | 100% | 2025-08-20 | 2025-08-28 | 01ADMIN | Construction | Build Out | IGMP | Phase 1 | Construction | BAB | Doug Hayes |  |  |  |
| QTS-49441 |  | Zone 1 Gridlines 10-21 / North // Caulk Panel Joints | 4d | 2025-08-26 A | 2025-09-04 A | QTS-42701 FF+1d | 100% | 2025-08-26 | 2025-08-29 | 01ADMIN | Construction | Core & Shell | IGMP | Phase 1 | Construction | BAB |  |  |  |  |
| QTS-43071 |  | FOH / North // Power Wash Tilt Panels | 2d | 2025-08-29 A | 2025-09-02 A | QTS-43061 | 100% |  |  | 01ADMIN | Construction | Core & Shell | IGMP | Phase 1 | Construction | BAB |  |  |  |  |
| QTS-49451 |  | FOH / North // Caulk Panel Joints | 7d | 2025-09-05 A | 2025-09-15 A | QTS-49441 | 100% |  |  | 01ADMIN | Construction | Core & Shell | IGMP | Phase 1 | Construction | BAB |  |  |  |  |
| QTS-43081 |  | FOH / North // Prime & Paint Tilt Panels | 9d | 2025-09-09 A | 2025-09-25 A | QTS-43071, QTS-43061 | 100% | 2025-09-09 | 2025-09-19 | 01ADMIN | Construction | Core & Shell | IGMP | Phase 1 | Construction | BAB |  |  |  |  |
| QTS-50461 |  | FOH / North // Install Strip Glass Window Frames | 3d | 2025-09-24 A | 2025-09-26 A | QTS-24101, QTS-49451 | 100% |  |  |  | Construction | Core & Shell | IGMP |  |  | BAB |  | Phase 1 |  |  |
| QTS-50471 |  | FOH / North // Install Strip Glass Window Glass | 2d | 2025-10-20 A | 2025-10-24 A | QTS-18561, QTS-50461 | 100% | 2025-10-20 | 2025-10-21 | 01ADMIN | Construction | Core & Shell | IGMP |  |  | BAB |  | Phase 1 |  |  |
| QTS-50481 |  | FOH / North // Install Strip Glass Window Exterior Caulking | 2d | 2025-10-27 A | 2025-11-05 A | QTS-50471 | 100% | 2025-10-27 | 2025-10-28 | 01ADMIN | Construction | Core & Shell | IGMP |  |  | BAB |  | Phase 1 |  |  |
| QTS-50721 |  | FOH / North // Field Measure OH Doors | 1d | 2025-10-27 A | 2025-10-27 A | QTS-50471, QTS-49451 | 100% |  |  | 01ADMIN | Construction | Core & Shell | IGMP | Phase 2 | Construction | BAB |  |  |  |  |
| QTS-100000 |  | FOH / North // Excavate Loading Dock Pits | 1d | 2025-11-03 A | 2025-11-03 A | QTS-50471 | 100% |  |  | 01ADMIN | Construction | Core & Shell | IGMP | Phase 2 | Construction | BAB |  |  |  |  |
| QTS-100010 |  | FOH / North // Layout & Form Loading Dock Pits | 1d | 2025-11-04 A | 2025-11-04 A | QTS-100000 | 100% |  |  | 01ADMIN | Construction | Core & Shell | IGMP | Phase 2 | Construction | BAB |  |  |  |  |
| QTS-100020 |  | FOH / North // Install Rebar at Loading Dock Pits | 1d | 2025-11-05 A | 2025-11-05 A | QTS-100010 | 100% |  |  | 01ADMIN | Construction | Core & Shell | IGMP | Phase 2 | Construction | BAB |  |  |  |  |
| QTS-100030 |  | FOH / North // Pour Bottoms for Loading Dock | 1d | 2025-11-06 A | 2025-11-06 A | QTS-100020 | 100% |  |  | 01ADMIN | Construction | Core & Shell | IGMP | Phase 2 | Construction | BAB |  |  |  |  |
| QTS-50491 |  | FOH / North // Install Strip Glass Window Interior Caulking | 2d | 2025-11-06 A | 2025-11-07 A | QTS-50481 | 100% |  |  | 01ADMIN | Construction | Core & Shell | IGMP |  |  | BAB |  | Phase 1 |  |  |
| QTS-100040 |  | FOH / North // Build Walls for Loading Dock | 2d | 2025-11-07 A | 2025-11-10 A | QTS-100030 | 100% |  |  | 01ADMIN | Construction | Core & Shell | IGMP | Phase 2 | Construction | BAB |  |  |  |  |
| QTS-100050 |  | FOH / North // Pour Walls for Loading Dock | 1d | 2025-11-11 A | 2025-11-11 A | QTS-100040 | 100% |  |  | 01ADMIN | Construction | Core & Shell | IGMP | Phase 2 | Construction | BAB |  |  |  |  |
| QTS-100060 |  | FOH / North // Strip & Grade Walls for Loading Dock | 2d | 2025-11-12 A | 2025-11-13 A | QTS-100050 | 100% |  |  | 01ADMIN | Construction | Core & Shell | IGMP | Phase 2 | Construction | BAB |  |  |  |  |
| QTS-100070 |  | FOH / North // Pour Slab Enclosure Loading Dock | 1d | 2025-11-17 A | 2025-11-17 A | QTS-100060 | 100% | 2025-11-14 | 2025-11-14 | 01ADMIN | Construction | Core & Shell | IGMP | Phase 2 | Construction | BAB |  |  |  |  |
|  | 1 | **Fragnet RFI #719 for FOH Loading Dock Elevation** |  | 2025-11-21 | 2025-12-08 |  |  |  |  |  |  |  |  |  |  |  |  |  |  |  |
| QTS-1001150 |  | Fragnet / FOH / North // Submission of RFI #719 | 1d | 2025-11-21 A | 2025-11-21 A | QTS-1030 SS | 100% |  |  | 01ADMIN | Construction | Core & Shell | IGMP | Phase 2 | Construction | BAB |  |  | Fragnet | D.H. Pace Company, Inc. |
| QTS-1001160 |  | Fragnet / FOH / North // Design Response by Kimley Horn to RFI #719 | 6d | 2025-11-24 A | 2025-12-03 A | QTS-1001150 | 100% |  |  | 01ADMIN | Construction | Core & Shell | IGMP | Phase 2 | Construction | BAB |  |  | Fragnet | D.H. Pace Company, Inc. |
| QTS-1001170 |  | Fragnet / FOH / North // Design Response by Corgan to RFI #719 | 1d | 2025-11-24 A | 2025-12-08 A | QTS-1001150 | 100% | 2025-11-24 | 2025-11-24 | 01ADMIN | Construction | Core & Shell | IGMP | Phase 2 | Construction | BAB |  |  | Fragnet | D.H. Pace Company, Inc. |

Notes:
- QTS-42691: allucent_notes: Jason Johnston on 2025-08-19 14:08: Cure time for the caulking was no accounted for and delayed power washing. / Jason Johnston on 2025-08-19 14:08: Caulking cure time was not accounted for and required a 72 hour wait period before power washing could occur. / allucent_notes: 2025-08-19 14:08 - User: Jason Johnston - Date Added: 2025-08-19 14:08 - Note: Cure time for the caulking was no accounted for and delayed power washing. / 2025-08-19 14:08 - User: Jason Johnston - Date Added: 2025-08-19 14:08 - Note: Caulking cure time
- QTS-43061: allucent_notes: Jason Johnston on 2025-08-26 15:08: Access restricted causing delays. / allucent_notes: 2025-08-26 15:08 - User: Jason Johnston - Date Added: 2025-08-26 15:08 - Note: Access restricted causing delays.
- QTS-42701: allucent_notes: Jason Johnston on 2025-09-02 15:09: Delays in access / Jason Johnston on 2025-09-02 15:09: comment added. / allucent_notes: 2025-09-02 15:09 - User: Jason Johnston - Date Added: 2025-09-02 15:09 - Note: Delays in access / 2025-09-02 15:09 - User: Jason Johnston - Date Added: 2025-09-02 15:09 - Note: comment added.
- QTS-49441: allucent_notes: Jason Johnston on 2025-09-02 15:09: Need extra time to complete final caulking / allucent_notes: 2025-09-02 15:09 - User: Jason Johnston - Date Added: 2025-09-02 15:09 - Note: Need extra time to complete final caulking
- QTS-50471: allucent_notes_20251027_224008: Jason Johnston on 2025-09-30 12:09: Glass will not be on site until 10/20 / Jason Johnston on 2025-10-21 12:10: Needed delivery of top section of glazing. / allucent_notes_20251021_145627: Jason Johnston on 2025-09-30 12:09: Glass will not be on site until 10/20 / Jason Johnston on 2025-10-21 12:10: Needed delivery of top section of glazing. / allucent_notes_20251014_152335: Jason Johnston on 2025-09-30 12:09: Glass will not be on site until 10/20 / allucent_notes: 2025-09-30 12:09 - User: Jason Johnston - Date Added: 2025-09-30 12:09 - Note: Glass will not be on site until 10/20 / 2025-10-21 12:10 - User: Jason Johnston - Date Added: 2025-10-21 12:10 - Note: Needed delivery of top section of glazing.
- QTS-50481: allucent_notes_20251118_192630: Jason Johnston on 2025-10-28 14:10: Starting this on 10/29 finishing 10/30 / Jason Johnston on 2025-11-03 14:11: Working on south west lower windows. / allucent_notes_20251111_182405: Jason Johnston on 2025-10-28 14:10: Starting this on 10/29 finishing 10/30 / Jason Johnston on 2025-11-03 14:11: Working on south west lower windows. / allucent_notes_20251104_160200: Jason Johnston on 2025-10-28 14:10: Starting this on 10/29 finishing 10/30 / Jason Johnston on 2025-11-03 14:11: Working on south west lower windows. / allucent_notes_20251028_163138: Jason Johnston on 2025-10-28 14:10: Starting this on 10/29 finishing 10/30 / allucent_notes: 2025-10-28 14:10 - User: Jason Johnston - Date Added: 2025-10-28 14:10 - Note: Starting this on 10/29 finishing 10/30 / 2025-11-03 14:11 - User: Jason Johnston - Date Added: 2025-11-03 14:11 - Note: Working on south west lower windows.
- QTS-100000: allucent_notes_20251104_160200: Jason Johnston on 2025-10-27 13:10: Needed electrical conduits to be moved out of the way. / Jason Johnston on 2025-11-03 14:11: Needed clear area to start digging. / allucent_notes_20251028_163138: Jason Johnston on 2025-10-27 13:10: Needed electrical conduits to be moved out of the way. / allucent_notes_20251027_224008: Jason Johnston on 2025-10-27 13:10: Needed electrical conduits to be moved out of the way. / allucent_notes: 2025-10-27 13:10 - User: Jason Johnston - Date Added: 2025-10-27 13:10 - Note: Needed electrical conduits to be moved out of the way. / 2025-11-03 14:11 - User: Jason Johnston - Date Added: 2025-11-03 14:11 - Note: Needed clear area to start digging.
- QTS-100070: allucent_notes_20251118_192630: Jason Johnston on 2025-11-11 14:11: Pour moved to Monday 11/17 / allucent_notes_20251111_182405: Jason Johnston on 2025-11-11 14:11: Pour moved to Monday 11/17 / allucent_notes: 2025-11-11 14:11 - User: Jason Johnston - Date Added: 2025-11-11 14:11 - Note: Pour moved to Monday 11/17
- QTS-1001150: Scheduler Notes: RFI-0719 - FOH Loading Dock Elevation / Concerns_KH_CORGAN_1.8.2026

| ID | WBS | Activity | Duration | Start | Finish | Predecessors | Complete | Planned start | Planned finish | Allucent CSI Group | Project Section | Layton Discipline | Baseline | Phase-1-1 | Project Section-1 | Contract | Layton Super | Phase-1 | Fragnet | Owner Impact Analysis | Fragnet Responsible Party |
| --- | --- | --- | --- | --- | --- | --- | --- | --- | --- | --- | --- | --- | --- | --- | --- | --- | --- | --- | --- | --- | --- |
|  | 2 | **Remaining Scope** |  | 2025-11-18 | 2026-04-29 |  |  |  |  |  |  |  |  |  |  |  |  |  |  |  |  |
| QTS-100080 |  | FOH / North // Grade Landing/Ramp for Loading Dock | 1d | 2025-11-18 A | 2026-01-27 A | QTS-1001160 FF, QTS-1001170 FF+4d, QTS-100070 FF | 100% | 2025-11-14 | 2025-11-14 | 01ADMIN | Construction | Core & Shell | IGMP | Phase 2 | Construction | BAB |  |  |  |  |  |
| QTS-43091 |  | FOH / North // Set Single Skin Metal Screen Wall | 10d | 2025-12-08 A | 2026-01-27 A | QTS-42661, QTS-43081, QTS-21651 | 100% | 2025-11-24 | 2025-12-09 | 01ADMIN | Construction | Core & Shell | IGMP | Phase 1 | Construction | BAB |  |  |  |  |  |
| QTS-5481 |  | FOH / North // Hang OH Doors | 6d | 2026-01-21 A | 2026-01-28 A | QTS-50731, QTS-50481, QTS-43081 | 100% |  |  | 01ADMIN | Construction | Core & Shell | IGMP | Phase 2 | Construction | BAB |  |  |  |  |  |
| QTS-100090 |  | FOH / North // Install Rebar for Landing/Ramp for Loading Dock | 1d | 2026-02-18 A | 2026-02-18 A | QTS-100080 | 100% |  |  | 01ADMIN | Construction | Core & Shell | IGMP | Phase 2 | Construction | BAB |  |  |  |  |  |
| QTS-100100 |  | FOH / North // Pour Landing/Ramp for Loading Dock | 1d | 2026-02-20 A | 2026-02-20 A | QTS-100090 | 100% |  |  | 01ADMIN | Construction | Core & Shell | IGMP | Phase 2 | Construction | BAB |  |  |  |  |  |
| QTS-6851 |  | FOH / North // Set Loading Dock Steel Frames | 3d | 2026-02-25 A | 2026-02-27 A | QTS-100100 | 100% |  |  | 01ADMIN | Construction | Core & Shell | IGMP | Phase 2 | Construction | BAB |  |  |  |  |  |
| QTS-7771 |  | FOH / North // Install Dock Scissor Lift | 2d | 2026-03-02 A | 2026-03-03 A | QTS-6851 | 100% |  |  | 01ADMIN | Construction | Core & Shell | IGMP | Phase 2 | Construction | BAB |  |  |  |  |  |
| QTS-7761 |  | FOH / North // Install Dock Levelers | 3d | 2026-03-10 A | 2026-03-12 A | QTS-6851 | 100% |  |  | 01ADMIN | Construction | Core & Shell | IGMP | Phase 2 | Construction | BAB |  |  |  |  |  |
| QTS-1005320 |  | FOH / North // Install OHC Doors | 5d | 2026-03-11 A | 2026-03-17 A | QTS-100100 | 100% |  |  | 01ADMIN | Construction | Core & Shell | IGMP | Phase 2 | Construction | BAB |  |  |  |  |  |
| QTS-8711 |  | FOH / North // Install Dock Bumpers | 2d | 2026-03-13 A | 2026-04-29 A | QTS-7761 | 100% | 2026-03-13 | 2026-03-16 | 01ADMIN | Construction | Build Out | IGMP | Phase 2 | Construction | BAB | Freddy Arrizon |  |  |  |  |
| QTS-9841 |  | FOH / North // Tie In Electrical Connections to Dock Equipment | 5d | 2026-03-20 A | 2026-03-27 A | QTS-7771 | 100% | 2026-03-20 | 2026-03-26 | 01ADMIN | Construction | Core & Shell | IGMP | Phase 2 | Construction | BAB |  |  |  |  |  |
| QTS-101700 |  | North // Set Single Skin Metal Screen Wall | 10d | 2026-04-14 A | 2026-04-21 A | QTS-3201 | 100% | 2026-04-14 | 2026-04-27 | 01ADMIN | Construction | Core & Shell | IGMP | Phase 1 | Construction | BAB |  |  |  |  |  |
| QTS-1011140 |  | Zone 1 Gridlines 11-21 / North // Set Single Skin Metal Screen Wall | 10d | 2026-04-21 A | 2026-04-28 A | QTS-1221 | 100% | 2026-07-08 | 2026-07-21 | 01ADMIN | Construction | Build Out | IGMP | Phase 1 | Construction | BAB | Freddy Arrizon |  |  |  |  |
|  | 4 | **Zone 1 / Exterior Finishes // East Elevation** |  |  |  |  |  |  |  |  |  |  |  |  |  |  |  |  |  |  |  |
|  | 1 | **Zone 1 / Exterior Finishes // West Elevation** |  | 2025-08-08 | 2026-10-13 |  |  |  |  |  |  |  |  |  |  |  |  |  |  |  |  |
| QTS-23621 |  | West Elevation // Sack & Patch Panels | 4d | 2025-08-08 A | 2025-09-08 A | QTS-42681 SS, QTS-19811 | 100% | 2025-08-08 | 2025-08-13 | 01ADMIN | Construction | Core & Shell | IGMP |  |  | BAB |  | Phase 1 |  |  |  |
| QTS-23791 |  | West Elevation // Power Wash Tilt Panels | 1d | 2025-09-09 A | 2025-09-09 A | QTS-23621 | 100% |  |  | 01ADMIN | Construction | Core & Shell | IGMP |  |  | BAB |  | Phase 1 |  |  |  |
| QTS-24101 |  | West Elevation // Caulk Panel Joints | 4d | 2025-09-15 A | 2025-09-18 A | QTS-49441, QTS-49451 | 100% |  |  |  | Construction | Core & Shell | IGMP |  |  | BAB |  | Phase 1 |  |  |  |
| QTS-23921 |  | West Elevation // Prime & Paint Tilt Panels | 7d | 2025-09-22 A | 2025-09-25 A | QTS-43081 FF, QTS-23791, QTS-23621 | 100% | 2025-09-22 | 2025-09-30 | 01ADMIN | Construction | Core & Shell | IGMP |  |  | BAB |  | Phase 1 |  |  |  |
| QTS-24861 |  | West Elevation // Frame for Metal Panels | 8d | 2025-09-26 A | 2025-10-08 A | QTS-23921, QTS-24101 | 100% | 2025-09-26 | 2025-10-07 | 01ADMIN | Construction | Core & Shell | IGMP |  |  | BAB |  | Phase 1 |  |  |  |
| QTS-50331 |  | West Elevation // Install Strip Glass Window Frames - North Upper | 5d | 2025-10-27 A | 2025-10-31 A | QTS-50471, QTS-24101 | 100% |  |  | 01ADMIN | Construction | Build Out | IGMP |  |  | BAB | Doug Hayes | Phase 1 |  |  |  |
|  | 1 | **Fragnet / RFI #646 for Eyebrow Steel** |  | 2025-10-14 | 2026-01-27 |  |  |  |  |  |  |  |  |  |  |  |  |  |  |  |  |
| QTS-120090 |  | Fragnet / West Elevation // Submission of RFI #640 | 6d | 2025-10-14 A | 2025-10-20 A | QTS-1030 SS | 100% | 2025-10-14 | 2025-10-21 | 01ADMIN | Construction | Core & Shell | IGMP |  |  | BAB |  | Phase 1 | Fragnet | Y | True Metal Solutions, LLC |
| QTS-120040 |  | Fragnet / West Elevation // Submission of RFI #646 | 6d | 2025-10-21 A | 2025-10-21 A | QTS-1030 SS | 100% | 2025-10-14 | 2025-10-21 | 01ADMIN | Construction | Core & Shell | IGMP |  |  | BAB |  | Phase 1 | Fragnet | Y | True Metal Solutions, LLC |
| QTS-120100 |  | Fragnet / West Elevation // Design Response RFI #640 | 6d | 2025-10-21 A | 2025-10-30 A | QTS-120040, QTS-120090 | 100% | 2025-10-14 | 2025-10-21 | 01ADMIN | Construction | Core & Shell | IGMP |  |  | BAB |  | Phase 1 | Fragnet | Y | True Metal Solutions, LLC |
| QTS-120050 |  | Fragnet / West Elevation // Design Response RFI #646 | 3d | 2025-10-22 A | 2025-10-24 A | QTS-120100, QTS-120040 | 100% |  |  | 01ADMIN | Construction | Core & Shell | IGMP |  |  | BAB |  | Phase 1 | Fragnet | Y | True Metal Solutions, LLC |
| QTS-120060 |  | Fragnet / West Elevation // Create Mock Up and Submitted Submitted for RFI #646 | 8d | 2025-10-27 A | 2025-11-05 A | QTS-120050 | 100% |  |  | 01ADMIN | Construction | Core & Shell | IGMP |  |  | BAB |  | Phase 1 | Fragnet | Y | True Metal Solutions, LLC |
| QTS-120110 |  | Fragnet / West Elevation // Resubmit RFI #640 | 1d | 2025-10-30 A | 2025-10-30 A | QTS-120100 | 100% | 2025-10-14 | 2025-10-14 | 01ADMIN | Construction | Core & Shell | IGMP |  |  | BAB |  | Phase 1 | Fragnet | Y | True Metal Solutions, LLC |
| QTS-120150 |  | Fragnet / West Elevation // Submission of RFI #676 | 6d | 2025-10-30 A | 2025-10-30 A | QTS-1030 SS | 100% | 2025-10-14 | 2025-10-21 | 01ADMIN | Construction | Core & Shell | IGMP |  |  | BAB |  | Phase 1 | Fragnet | Y | True Metal Solutions, LLC |
| QTS-120120 |  | Fragnet / West Elevation // Design Response to Resubmitted RFI #640 | 6d | 2025-10-31 A | 2025-11-05 A | QTS-120110 | 100% | 2025-10-14 | 2025-10-21 | 01ADMIN | Construction | Core & Shell | IGMP |  |  | BAB |  | Phase 1 | Fragnet | Y | True Metal Solutions, LLC |
| QTS-120160 |  | Fragnet / West Elevation // Design Response RFI #676 | 6d | 2025-10-31 A | 2025-12-01 A | QTS-120150 | 100% | 2025-10-14 | 2025-10-21 | 01ADMIN | Construction | Core & Shell | IGMP |  |  | BAB |  | Phase 1 | Fragnet | Y | True Metal Solutions, LLC |
| QTS-120070 |  | Fragnet / West Elevation // Submittal Approved for RFI #646 | 4d | 2025-11-06 A | 2025-11-11 A | QTS-120050, QTS-120060 | 100% |  |  | 01ADMIN | Construction | Core & Shell | IGMP |  |  | BAB |  | Phase 1 | Fragnet | Y | True Metal Solutions, LLC |
| QTS-120130 |  | Fragnet / West Elevation // New Detail to be Received and Finalized RFI #640 | 6d | 2025-11-06 A | 2025-11-26 A | QTS-120120 | 100% | 2025-10-14 | 2025-10-21 | 01ADMIN | Construction | Core & Shell | IGMP |  |  | BAB |  | Phase 1 | Fragnet | Y | True Metal Solutions, LLC |
| QTS-120080 |  | Fragnet / West Elevation // Material Procurement for RFI #646 | 19d | 2025-11-12 A | 2025-12-10 A | QTS-120070 FF, QTS-120070 | 100% |  |  | 01ADMIN | Construction | Core & Shell | IGMP |  |  | BAB |  | Phase 1 | Fragnet | Y | True Metal Solutions, LLC |
| QTS-120170 |  | Fragnet / West Elevation // Layton Reviewing Detail for Constructability RFI #676 | 3d | 2025-12-01 A | 2025-12-10 A | QTS-120160 | 100% | 2025-12-01 | 2025-12-03 | 01ADMIN | Construction | Core & Shell | IGMP |  |  | BAB |  | Phase 1 | Fragnet | Y | True Metal Solutions, LLC |
| QTS-120180 |  | Fragnet / West Elevation // Install Studs Eyebrow Steel for Reduced Framing | 10d | 2025-12-08 A | 2025-12-19 A | QTS-120170 FF | 100% |  |  | 01ADMIN | Construction | Core & Shell | IGMP |  |  | BAB |  | Phase 1 | Fragnet | Y | True Metal Solutions, LLC |
| QTS-120140 |  | Fragnet / West Elevation // Layton Reviewing Detail for Constructability RFI #640 | 1d | 2025-12-10 A | 2025-12-10 A | QTS-120130 FF, QTS-120130 | 100% |  |  | 01ADMIN | Construction | Core & Shell | IGMP |  |  | BAB |  | Phase 1 | Fragnet | Y | True Metal Solutions, LLC |
| QTS-120190 |  | Fragnet / West Elevation // Frame Eyebrow Steel | 10d | 2025-12-22 A | 2026-01-27 A | QTS-120140, QTS-120180, QTS-1004410 FF | 100% | 2025-12-22 | 2026-01-09 | 01ADMIN | Construction | Core & Shell | IGMP |  |  | BAB |  | Phase 1 | Fragnet | Y | True Metal Solutions, LLC |
| QTS-1004400 |  | Fragnet / West Elevation // Submit RFI #788 | 1d | 2026-01-08 A | 2026-01-08 A | QTS-1371 SS | 100% |  |  | 01ADMIN | Construction | Core & Shell | IGMP |  |  | BAB |  | Phase 1 | Fragnet | Y | True Metal Solutions, LLC |
| QTS-1004410 |  | Fragnet / West Elevation // Design Response for RFI #788 | 3d | 2026-01-09 A | 2026-01-14 A | QTS-1004400 | 100% | 2026-01-09 | 2026-01-13 | 01ADMIN | Construction | Core & Shell | IGMP |  |  | BAB |  | Phase 1 | Fragnet | Y | True Metal Solutions, LLC |

Notes:
- QTS-100080: allucent_notes_20251216_165335: Chris Waddell on 2025-11-18T20:17:24.167Z: Pushed due to rain this week / Jason Johnston on 2025-11-24 13:11: RFI to confirm loading dock elevations. / Jason Johnston on 2025-12-01 14:08: RFI to resolve conflicting grade and concrete heights is still pending. Response expected 12/2. / Chris Waddell on 2025-12-09 14:31: Waiting on RFI confirming elevation, will update when answer is received / Ron Carroll on 2025-12-15T19:43:37.699Z: RFI 719 was returned and there will need to be rework made to Suntec's ramp wall. The ramp wall will need to have 5' added to the wall. Grading will happen after the wall in complete. Tentative date for Suntec to start rework is 12/22. / Ron Carroll on 2025-12-15 12:45: RFI 719 was returned and there will need to be rework made to Suntec's ramp wall. The ramp wall will need to have 5' added to the wall. Grading will happen after the wall in complete. Tentative date for Suntec to start rework is 12/22. / allucent_notes_20251209_203830: Chris Waddell on 2025-11-18T20:17:24.167Z: Pushed due to rain this week / Jason Johnston on 2025-11-24 13:11: RFI to confirm loading dock elevations. / Jason Johnston on 2025-12-01 14:08: RFI to resolve conflicting grade and concrete heights is still pending. Response expected 12/2. / Chris Waddell on 2025-12-09 14:31: Waiting on RFI confirming elevation, will update when answer is received / allucent_notes_20251202_153722: Chris Waddell on 2025-11-18T20:17:24.167Z: Pushed due to rain this week / Jason Johnston on 2025-11-24 13:11: RFI to confirm loading dock elevations. / Jason Johnston on 2025-12-01 14:08: RFI to resolve conflicting grade and concrete heights is still pending. Response expected 12/2. / allucent_notes_20251118_192630: Chris Waddell on 2025-11-18T20:17:24.167Z: Pushed due to rain this week / allucent_notes_20251230_164549: Chris Waddell on 2025-11-18T20:17:24.167Z: Pushed due to rain this week / Jason Johnston on 2025-11-24 13:11: RFI to confirm loading dock elevations. / Jason Johnston on 2025-12-01 14:08: RFI to resolve conflicting grade and concrete heights is still pending. Response expected 12/2. / Chris Waddell on 2025-12-09 14:31: Waiting on RFI confirming elevation, will update when answer is received / Ron Carroll on 2025-12-15T19:43:37.699Z: RFI 719 was returned and there will need to be rework made to Suntec's ramp wall. The ramp wall will need to have 5' added to the wall. Grading will happen after the wall in complete. Tentative date for Suntec to start rework is 12/22. / Ron Carroll on 2025-12-15 12:45: RFI 719 was returned and there will need to be rework made to Suntec's ramp wall. The ramp wall will need to have 5' added to the wall. Grading will happen after the wall in complete. Tentative date for Suntec to start rework is 12/22. / Jason Johnston on 2025-12-30 16:35: No update / allucent_notes: 2025-11-18T20:17:24.167Z - User: Chris Waddell - Date Added: 2025-11-18T20:17:24.167Z - Note: Pushed due to rain this week / 2025-11-24 13:11 - User: Jason Johnston - Date Added: 2025-11-24 13:11 - Note: RFI to confirm loading dock elevations. / 2025-12
- QTS-43091: allucent_notes_20251216_165335: Jason Johnston on 2025-11-04 10:11: Mobilizing 11/24 / Chris Waddell on 2025-12-09 14:32: Need to speak with Ron before updating, will update Wednesday / allucent_notes_20251209_203830: Jason Johnston on 2025-11-04 10:11: Mobilizing 11/24 / Chris Waddell on 2025-12-09 14:32: Need to speak with Ron before updating, will update Wednesday / allucent_notes_20251202_153722: Jason Johnston on 2025-11-04 10:11: Mobilizing 11/24 / allucent_notes_20251118_192630: Jason Johnston on 2025-11-04 10:11: Mobilizing 11/24 / allucent_notes_20251111_182405: Jason Johnston on 2025-11-04 10:11: Mobilizing 11/24 / allucent_notes_20251104_160200: Jason Johnston on 2025-11-04 10:11: Mobilizing 11/24 / allucent_notes_20251230_164549: Jason Johnston on 2025-11-04 10:11: Mobilizing 11/24 / Chris Waddell on 2025-12-09 14:32: Need to speak with Ron before updating, will update Wednesday / Jason Johnston on 2025-12-30 16:35: No update / allucent_notes: 2025-11-04 10:11 - User: Jason Johnston - Date Added: 2025-11-04 10:11 - Note: Mobilizing 11/24 / 2025-12-09 14:32 - User: Chris Waddell - Date Added: 2025-12-09 14:32 - Note: Need to speak with Ron before updating, will update Wednesday / 2025-12-30 16
- QTS-5481: allucent_notes_20251216_165335: Ron Carroll on 2025-12-15T21:05:46.525Z: This activity belongs to Luis Vea / allucent_notes_20251230_164549: Ron Carroll on 2025-12-15T21:05:46.525Z: This activity belongs to Luis Vea / allucent_notes: 2025-12-15T21:05:46.525Z - User: Ron Carroll - Date Added: 2025-12-15T21:05:46.525Z - Note: This activity belongs to Luis Vea
- QTS-1005320: Scheduler Notes: 3/2/26: DH Pace is holding schedule progression. / Notes: 3/2/26: DH Pace is holding schedule progression.
- QTS-8711: Scheduler Notes: 04/21 - Keystone pouring concrete in loading doc / Notes: 04/21 - Keystone pouring concrete in loading doc
- QTS-101700: Scheduler Notes: 04/21: Mistakenly actualized re-adding as QTS-1011140 / Notes: 04/21: Mistakenly actualized re-adding as QTS-1011140
- QTS-1011140: Scheduler Notes: 04/21 - Tracking for Zone 3 working West 4/21: Re-adding from / QTS-101700 / Notes: 04/21 - Tracking for Zone 3 working West 4/21: Re-adding from QTS-101700
- QTS-23621: allucent_notes: Jason Johnston on 2025-08-19 14:08: Unable to access southern half of the wall due to OEG underground work taking place in same area. / allucent_notes: 2025-08-19 14:08 - User: Jason Johnston - Date Added: 2025-08-19 14:08 - Note: Unable to access southern half of the wall due to OEG underground work taking place in same area. / 2025-08-27 07:08 - User: Jason Johnston - Date Added: 2025-08-27 07:08 - No
- QTS-24861: allucent_notes_20251014_152335: Jason Johnston on 2025-10-08 08:10: not done / allucent_notes: 2025-10-08 08:10 - User: Jason Johnston - Date Added: 2025-10-08 08:10 - Note: not done
- QTS-120090: allucent_notes_20251202_153722: Zack Goertz on 2025-10-14T14:47:19.586Z: This falls under Ron Carroll / -ZG 10/14 / Jason Johnston on 2025-11-11 14:11: RFI requires framing to be uninstalled and changed. / Chris Waddell on 2025-11-18T20:07:57.342Z: RFI was answered, now waiting on the submittal for material / Jason Johnston on 2025-11-18T21:14:22.460Z: Tie to spandrel glass install / allucent_notes_20251118_192630: Zack Goertz on 2025-10-14T14:47:19.586Z: This falls under Ron Carroll / -ZG 10/14 / Jason Johnston on 2025-11-11 14:11: RFI requires framing to be uninstalled and changed. / Chris Waddell on 2025-11-18T20:07:57.342Z: RFI was answered, now waiting on the submittal for material / Jason Johnston on 2025-11-18T21:14:22.460Z: Tie to spandrel glass install / allucent_notes_20251111_182405: Zack Goertz on 2025-10-14T14:47:19.586Z: This falls under Ron Carroll / -ZG 10/14 / Jason Johnston on 2025-11-11 14:11: RFI requires framing to be uninstalled and changed. / allucent_notes_20251104_160200: Zack Goertz on 2025-10-14T14:47:19.586Z: This falls under Ron Carroll / -ZG 10/14 / allucent_notes_20251028_163138: Zack Goertz on 2025-10-14T14:47:19.586Z: This falls under Ron Carroll / -ZG 10/14 / allucent_notes_20251027_224008: Zack Goertz on 2025-10-14T14:47:19.586Z: This falls under Ron Carroll / -ZG 10/14 / allucent_notes_20251021_145627: Zack Goertz on 2025-10-14T14:47:19.586Z: This falls under Ron Carroll / -ZG 10/14 / allucent_notes_20251014_152335: Zack Goertz on 2025-10-14T14:47:19.586Z: This falls under Ron Carroll / -ZG 10/14 / Scheduler Notes: Zack Goertz on 2025-10-14T14:47:19.586Z: This falls under Ron Carroll / -ZG / 10/14 / Jason Johnston on 2025-11-11 14:11: RFI requires framing to be uninstalled / and changed. / Chris Waddell on 2025-11-18T20:07:57.342Z: RFI was answered, now waiting on / the submittal for material / Jason Johnston on 2025-11-18T21:14:22.460Z: Tie to spandrel glass / install / allucent_notes: 2025-10-14T14:47:19.586Z - User: Zack Goertz - Date Added: 2025-10-14T14:47:19.586Z - Note: This falls under Ron Carroll-ZG 10/14 / 2025-11-11 14:11 - User: Jason Johnston - Date Added: 2025-11-11 14:11 - Note: RFI requires framing to be uninstalled and
- QTS-120040: allucent_notes_20251202_153722: Zack Goertz on 2025-10-14T14:47:19.586Z: This falls under Ron Carroll / -ZG 10/14 / Jason Johnston on 2025-11-11 14:11: RFI requires framing to be uninstalled and changed. / Chris Waddell on 2025-11-18T20:07:57.342Z: RFI was answered, now waiting on the submittal for material / Jason Johnston on 2025-11-18T21:14:22.460Z: Tie to spandrel glass install / allucent_notes_20251118_192630: Zack Goertz on 2025-10-14T14:47:19.586Z: This falls under Ron Carroll / -ZG 10/14 / Jason Johnston on 2025-11-11 14:11: RFI requires framing to be uninstalled and changed. / Chris Waddell on 2025-11-18T20:07:57.342Z: RFI was answered, now waiting on the submittal for material / Jason Johnston on 2025-11-18T21:14:22.460Z: Tie to spandrel glass install / allucent_notes_20251111_182405: Zack Goertz on 2025-10-14T14:47:19.586Z: This falls under Ron Carroll / -ZG 10/14 / Jason Johnston on 2025-11-11 14:11: RFI requires framing to be uninstalled and changed. / allucent_notes_20251104_160200: Zack Goertz on 2025-10-14T14:47:19.586Z: This falls under Ron Carroll / -ZG 10/14 / allucent_notes_20251028_163138: Zack Goertz on 2025-10-14T14:47:19.586Z: This falls under Ron Carroll / -ZG 10/14 / allucent_notes_20251027_224008: Zack Goertz on 2025-10-14T14:47:19.586Z: This falls under Ron Carroll / -ZG 10/14 / allucent_notes_20251021_145627: Zack Goertz on 2025-10-14T14:47:19.586Z: This falls under Ron Carroll / -ZG 10/14 / allucent_notes_20251014_152335: Zack Goertz on 2025-10-14T14:47:19.586Z: This falls under Ron Carroll / -ZG 10/14 / Scheduler Notes: Zack Goertz on 2025-10-14T14:47:19.586Z: This falls under Ron Carroll / -ZG / 10/14 / Jason Johnston on 2025-11-11 14:11: RFI requires framing to be uninstalled / and changed. / Chris Waddell on 2025-11-18T20:07:57.342Z: RFI was answered, now waiting on / the submittal for material / Jason Johnston on 2025-11-18T21:14:22.460Z: Tie to spandrel glass / install / allucent_notes: 2025-10-14T14:47:19.586Z - User: Zack Goertz - Date Added: 2025-10-14T14:47:19.586Z - Note: This falls under Ron Carroll-ZG 10/14 / 2025-11-11 14:11 - User: Jason Johnston - Date Added: 2025-11-11 14:11 - Note: RFI requires framing to be uninstalled and
- QTS-120100: allucent_notes_20251202_153722: Zack Goertz on 2025-10-14T14:47:19.586Z: This falls under Ron Carroll / -ZG 10/14 / Jason Johnston on 2025-11-11 14:11: RFI requires framing to be uninstalled and changed. / Chris Waddell on 2025-11-18T20:07:57.342Z: RFI was answered, now waiting on the submittal for material / Jason Johnston on 2025-11-18T21:14:22.460Z: Tie to spandrel glass install / allucent_notes_20251118_192630: Zack Goertz on 2025-10-14T14:47:19.586Z: This falls under Ron Carroll / -ZG 10/14 / Jason Johnston on 2025-11-11 14:11: RFI requires framing to be uninstalled and changed. / Chris Waddell on 2025-11-18T20:07:57.342Z: RFI was answered, now waiting on the submittal for material / Jason Johnston on 2025-11-18T21:14:22.460Z: Tie to spandrel glass install / allucent_notes_20251111_182405: Zack Goertz on 2025-10-14T14:47:19.586Z: This falls under Ron Carroll / -ZG 10/14 / Jason Johnston on 2025-11-11 14:11: RFI requires framing to be uninstalled and changed. / allucent_notes_20251104_160200: Zack Goertz on 2025-10-14T14:47:19.586Z: This falls under Ron Carroll / -ZG 10/14 / allucent_notes_20251028_163138: Zack Goertz on 2025-10-14T14:47:19.586Z: This falls under Ron Carroll / -ZG 10/14 / allucent_notes_20251027_224008: Zack Goertz on 2025-10-14T14:47:19.586Z: This falls under Ron Carroll / -ZG 10/14 / allucent_notes_20251021_145627: Zack Goertz on 2025-10-14T14:47:19.586Z: This falls under Ron Carroll / -ZG 10/14 / allucent_notes_20251014_152335: Zack Goertz on 2025-10-14T14:47:19.586Z: This falls under Ron Carroll / -ZG 10/14 / allucent_notes: 2025-10-14T14:47:19.586Z - User: Zack Goertz - Date Added: 2025-10-14T14:47:19.586Z - Note: This falls under Ron Carroll-ZG 10/14 / 2025-11-11 14:11 - User: Jason Johnston - Date Added: 2025-11-11 14:11 - Note: RFI requires framing to be uninstalled and
- QTS-120050: allucent_notes_20251202_153722: Zack Goertz on 2025-10-14T14:47:19.586Z: This falls under Ron Carroll / -ZG 10/14 / Jason Johnston on 2025-11-11 14:11: RFI requires framing to be uninstalled and changed. / Chris Waddell on 2025-11-18T20:07:57.342Z: RFI was answered, now waiting on the submittal for material / Jason Johnston on 2025-11-18T21:14:22.460Z: Tie to spandrel glass install / allucent_notes_20251118_192630: Zack Goertz on 2025-10-14T14:47:19.586Z: This falls under Ron Carroll / -ZG 10/14 / Jason Johnston on 2025-11-11 14:11: RFI requires framing to be uninstalled and changed. / Chris Waddell on 2025-11-18T20:07:57.342Z: RFI was answered, now waiting on the submittal for material / Jason Johnston on 2025-11-18T21:14:22.460Z: Tie to spandrel glass install / allucent_notes_20251111_182405: Zack Goertz on 2025-10-14T14:47:19.586Z: This falls under Ron Carroll / -ZG 10/14 / Jason Johnston on 2025-11-11 14:11: RFI requires framing to be uninstalled and changed. / allucent_notes_20251104_160200: Zack Goertz on 2025-10-14T14:47:19.586Z: This falls under Ron Carroll / -ZG 10/14 / allucent_notes_20251028_163138: Zack Goertz on 2025-10-14T14:47:19.586Z: This falls under Ron Carroll / -ZG 10/14 / allucent_notes_20251027_224008: Zack Goertz on 2025-10-14T14:47:19.586Z: This falls under Ron Carroll / -ZG 10/14 / allucent_notes_20251021_145627: Zack Goertz on 2025-10-14T14:47:19.586Z: This falls under Ron Carroll / -ZG 10/14 / allucent_notes_20251014_152335: Zack Goertz on 2025-10-14T14:47:19.586Z: This falls under Ron Carroll / -ZG 10/14 / allucent_notes: 2025-10-14T14:47:19.586Z - User: Zack Goertz - Date Added: 2025-10-14T14:47:19.586Z - Note: This falls under Ron Carroll-ZG 10/14 / 2025-11-11 14:11 - User: Jason Johnston - Date Added: 2025-11-11 14:11 - Note: RFI requires framing to be uninstalled and
- QTS-120060: allucent_notes_20251202_153722: Zack Goertz on 2025-10-14T14:47:19.586Z: This falls under Ron Carroll / -ZG 10/14 / Jason Johnston on 2025-11-11 14:11: RFI requires framing to be uninstalled and changed. / Chris Waddell on 2025-11-18T20:07:57.342Z: RFI was answered, now waiting on the submittal for material / Jason Johnston on 2025-11-18T21:14:22.460Z: Tie to spandrel glass install / allucent_notes_20251118_192630: Zack Goertz on 2025-10-14T14:47:19.586Z: This falls under Ron Carroll / -ZG 10/14 / Jason Johnston on 2025-11-11 14:11: RFI requires framing to be uninstalled and changed. / Chris Waddell on 2025-11-18T20:07:57.342Z: RFI was answered, now waiting on the submittal for material / Jason Johnston on 2025-11-18T21:14:22.460Z: Tie to spandrel glass install / allucent_notes_20251111_182405: Zack Goertz on 2025-10-14T14:47:19.586Z: This falls under Ron Carroll / -ZG 10/14 / Jason Johnston on 2025-11-11 14:11: RFI requires framing to be uninstalled and changed. / allucent_notes_20251104_160200: Zack Goertz on 2025-10-14T14:47:19.586Z: This falls under Ron Carroll / -ZG 10/14 / allucent_notes_20251028_163138: Zack Goertz on 2025-10-14T14:47:19.586Z: This falls under Ron Carroll / -ZG 10/14 / allucent_notes_20251027_224008: Zack Goertz on 2025-10-14T14:47:19.586Z: This falls under Ron Carroll / -ZG 10/14 / allucent_notes_20251021_145627: Zack Goertz on 2025-10-14T14:47:19.586Z: This falls under Ron Carroll / -ZG 10/14 / allucent_notes_20251014_152335: Zack Goertz on 2025-10-14T14:47:19.586Z: This falls under Ron Carroll / -ZG 10/14 / allucent_notes: 2025-10-14T14:47:19.586Z - User: Zack Goertz - Date Added: 2025-10-14T14:47:19.586Z - Note: This falls under Ron Carroll-ZG 10/14 / 2025-11-11 14:11 - User: Jason Johnston - Date Added: 2025-11-11 14:11 - Note: RFI requires framing to be uninstalled and
- QTS-120110: allucent_notes_20251202_153722: Zack Goertz on 2025-10-14T14:47:19.586Z: This falls under Ron Carroll / -ZG 10/14 / Jason Johnston on 2025-11-11 14:11: RFI requires framing to be uninstalled and changed. / Chris Waddell on 2025-11-18T20:07:57.342Z: RFI was answered, now waiting on the submittal for material / Jason Johnston on 2025-11-18T21:14:22.460Z: Tie to spandrel glass install / allucent_notes_20251118_192630: Zack Goertz on 2025-10-14T14:47:19.586Z: This falls under Ron Carroll / -ZG 10/14 / Jason Johnston on 2025-11-11 14:11: RFI requires framing to be uninstalled and changed. / Chris Waddell on 2025-11-18T20:07:57.342Z: RFI was answered, now waiting on the submittal for material / Jason Johnston on 2025-11-18T21:14:22.460Z: Tie to spandrel glass install / allucent_notes_20251111_182405: Zack Goertz on 2025-10-14T14:47:19.586Z: This falls under Ron Carroll / -ZG 10/14 / Jason Johnston on 2025-11-11 14:11: RFI requires framing to be uninstalled and changed. / allucent_notes_20251104_160200: Zack Goertz on 2025-10-14T14:47:19.586Z: This falls under Ron Carroll / -ZG 10/14 / allucent_notes_20251028_163138: Zack Goertz on 2025-10-14T14:47:19.586Z: This falls under Ron Carroll / -ZG 10/14 / allucent_notes_20251027_224008: Zack Goertz on 2025-10-14T14:47:19.586Z: This falls under Ron Carroll / -ZG 10/14 / allucent_notes_20251021_145627: Zack Goertz on 2025-10-14T14:47:19.586Z: This falls under Ron Carroll / -ZG 10/14 / allucent_notes_20251014_152335: Zack Goertz on 2025-10-14T14:47:19.586Z: This falls under Ron Carroll / -ZG 10/14 / allucent_notes: 2025-10-14T14:47:19.586Z - User: Zack Goertz - Date Added: 2025-10-14T14:47:19.586Z - Note: This falls under Ron Carroll-ZG 10/14 / 2025-11-11 14:11 - User: Jason Johnston - Date Added: 2025-11-11 14:11 - Note: RFI requires framing to be uninstalled and
- QTS-120150: allucent_notes_20251202_153722: Zack Goertz on 2025-10-14T14:47:19.586Z: This falls under Ron Carroll / -ZG 10/14 / Jason Johnston on 2025-11-11 14:11: RFI requires framing to be uninstalled and changed. / Chris Waddell on 2025-11-18T20:07:57.342Z: RFI was answered, now waiting on the submittal for material / Jason Johnston on 2025-11-18T21:14:22.460Z: Tie to spandrel glass install / allucent_notes_20251118_192630: Zack Goertz on 2025-10-14T14:47:19.586Z: This falls under Ron Carroll / -ZG 10/14 / Jason Johnston on 2025-11-11 14:11: RFI requires framing to be uninstalled and changed. / Chris Waddell on 2025-11-18T20:07:57.342Z: RFI was answered, now waiting on the submittal for material / Jason Johnston on 2025-11-18T21:14:22.460Z: Tie to spandrel glass install / allucent_notes_20251111_182405: Zack Goertz on 2025-10-14T14:47:19.586Z: This falls under Ron Carroll / -ZG 10/14 / Jason Johnston on 2025-11-11 14:11: RFI requires framing to be uninstalled and changed. / allucent_notes_20251104_160200: Zack Goertz on 2025-10-14T14:47:19.586Z: This falls under Ron Carroll / -ZG 10/14 / allucent_notes_20251028_163138: Zack Goertz on 2025-10-14T14:47:19.586Z: This falls under Ron Carroll / -ZG 10/14 / allucent_notes_20251027_224008: Zack Goertz on 2025-10-14T14:47:19.586Z: This falls under Ron Carroll / -ZG 10/14 / allucent_notes_20251021_145627: Zack Goertz on 2025-10-14T14:47:19.586Z: This falls under Ron Carroll / -ZG 10/14 / allucent_notes_20251014_152335: Zack Goertz on 2025-10-14T14:47:19.586Z: This falls under Ron Carroll / -ZG 10/14 / Scheduler Notes: Zack Goertz on 2025-10-14T14:47:19.586Z: This falls under Ron Carroll / -ZG / 10/14 / Jason Johnston on 2025-11-11 14:11: RFI requires framing to be uninstalled / and changed. / Chris Waddell on 2025-11-18T20:07:57.342Z: RFI was answered, now waiting on / the submittal for material / Jason Johnston on 2025-11-18T21:14:22.460Z: Tie to spandrel glass / install / allucent_notes: 2025-10-14T14:47:19.586Z - User: Zack Goertz - Date Added: 2025-10-14T14:47:19.586Z - Note: This falls under Ron Carroll-ZG 10/14 / 2025-11-11 14:11 - User: Jason Johnston - Date Added: 2025-11-11 14:11 - Note: RFI requires framing to be uninstalled and
- QTS-120120: allucent_notes_20251202_153722: Zack Goertz on 2025-10-14T14:47:19.586Z: This falls under Ron Carroll / -ZG 10/14 / Jason Johnston on 2025-11-11 14:11: RFI requires framing to be uninstalled and changed. / Chris Waddell on 2025-11-18T20:07:57.342Z: RFI was answered, now waiting on the submittal for material / Jason Johnston on 2025-11-18T21:14:22.460Z: Tie to spandrel glass install / allucent_notes_20251118_192630: Zack Goertz on 2025-10-14T14:47:19.586Z: This falls under Ron Carroll / -ZG 10/14 / Jason Johnston on 2025-11-11 14:11: RFI requires framing to be uninstalled and changed. / Chris Waddell on 2025-11-18T20:07:57.342Z: RFI was answered, now waiting on the submittal for material / Jason Johnston on 2025-11-18T21:14:22.460Z: Tie to spandrel glass install / allucent_notes_20251111_182405: Zack Goertz on 2025-10-14T14:47:19.586Z: This falls under Ron Carroll / -ZG 10/14 / Jason Johnston on 2025-11-11 14:11: RFI requires framing to be uninstalled and changed. / allucent_notes_20251104_160200: Zack Goertz on 2025-10-14T14:47:19.586Z: This falls under Ron Carroll / -ZG 10/14 / allucent_notes_20251028_163138: Zack Goertz on 2025-10-14T14:47:19.586Z: This falls under Ron Carroll / -ZG 10/14 / allucent_notes_20251027_224008: Zack Goertz on 2025-10-14T14:47:19.586Z: This falls under Ron Carroll / -ZG 10/14 / allucent_notes_20251021_145627: Zack Goertz on 2025-10-14T14:47:19.586Z: This falls under Ron Carroll / -ZG 10/14 / allucent_notes_20251014_152335: Zack Goertz on 2025-10-14T14:47:19.586Z: This falls under Ron Carroll / -ZG 10/14 / allucent_notes: 2025-10-14T14:47:19.586Z - User: Zack Goertz - Date Added: 2025-10-14T14:47:19.586Z - Note: This falls under Ron Carroll-ZG 10/14 / 2025-11-11 14:11 - User: Jason Johnston - Date Added: 2025-11-11 14:11 - Note: RFI requires framing to be uninstalled and
- QTS-120160: allucent_notes_20251202_153722: Zack Goertz on 2025-10-14T14:47:19.586Z: This falls under Ron Carroll / -ZG 10/14 / Jason Johnston on 2025-11-11 14:11: RFI requires framing to be uninstalled and changed. / Chris Waddell on 2025-11-18T20:07:57.342Z: RFI was answered, now waiting on the submittal for material / Jason Johnston on 2025-11-18T21:14:22.460Z: Tie to spandrel glass install / allucent_notes_20251118_192630: Zack Goertz on 2025-10-14T14:47:19.586Z: This falls under Ron Carroll / -ZG 10/14 / Jason Johnston on 2025-11-11 14:11: RFI requires framing to be uninstalled and changed. / Chris Waddell on 2025-11-18T20:07:57.342Z: RFI was answered, now waiting on the submittal for material / Jason Johnston on 2025-11-18T21:14:22.460Z: Tie to spandrel glass install / allucent_notes_20251111_182405: Zack Goertz on 2025-10-14T14:47:19.586Z: This falls under Ron Carroll / -ZG 10/14 / Jason Johnston on 2025-11-11 14:11: RFI requires framing to be uninstalled and changed. / allucent_notes_20251104_160200: Zack Goertz on 2025-10-14T14:47:19.586Z: This falls under Ron Carroll / -ZG 10/14 / allucent_notes_20251028_163138: Zack Goertz on 2025-10-14T14:47:19.586Z: This falls under Ron Carroll / -ZG 10/14 / allucent_notes_20251027_224008: Zack Goertz on 2025-10-14T14:47:19.586Z: This falls under Ron Carroll / -ZG 10/14 / allucent_notes_20251021_145627: Zack Goertz on 2025-10-14T14:47:19.586Z: This falls under Ron Carroll / -ZG 10/14 / allucent_notes_20251014_152335: Zack Goertz on 2025-10-14T14:47:19.586Z: This falls under Ron Carroll / -ZG 10/14 / allucent_notes: 2025-10-14T14:47:19.586Z - User: Zack Goertz - Date Added: 2025-10-14T14:47:19.586Z - Note: This falls under Ron Carroll-ZG 10/14 / 2025-11-11 14:11 - User: Jason Johnston - Date Added: 2025-11-11 14:11 - Note: RFI requires framing to be uninstalled and
- QTS-120070: allucent_notes_20251202_153722: Zack Goertz on 2025-10-14T14:47:19.586Z: This falls under Ron Carroll / -ZG 10/14 / Jason Johnston on 2025-11-11 14:11: RFI requires framing to be uninstalled and changed. / Chris Waddell on 2025-11-18T20:07:57.342Z: RFI was answered, now waiting on the submittal for material / Jason Johnston on 2025-11-18T21:14:22.460Z: Tie to spandrel glass install / allucent_notes_20251118_192630: Zack Goertz on 2025-10-14T14:47:19.586Z: This falls under Ron Carroll / -ZG 10/14 / Jason Johnston on 2025-11-11 14:11: RFI requires framing to be uninstalled and changed. / Chris Waddell on 2025-11-18T20:07:57.342Z: RFI was answered, now waiting on the submittal for material / Jason Johnston on 2025-11-18T21:14:22.460Z: Tie to spandrel glass install / allucent_notes_20251111_182405: Zack Goertz on 2025-10-14T14:47:19.586Z: This falls under Ron Carroll / -ZG 10/14 / Jason Johnston on 2025-11-11 14:11: RFI requires framing to be uninstalled and changed. / allucent_notes_20251104_160200: Zack Goertz on 2025-10-14T14:47:19.586Z: This falls under Ron Carroll / -ZG 10/14 / allucent_notes_20251028_163138: Zack Goertz on 2025-10-14T14:47:19.586Z: This falls under Ron Carroll / -ZG 10/14 / allucent_notes_20251027_224008: Zack Goertz on 2025-10-14T14:47:19.586Z: This falls under Ron Carroll / -ZG 10/14 / allucent_notes_20251021_145627: Zack Goertz on 2025-10-14T14:47:19.586Z: This falls under Ron Carroll / -ZG 10/14 / allucent_notes_20251014_152335: Zack Goertz on 2025-10-14T14:47:19.586Z: This falls under Ron Carroll / -ZG 10/14 / allucent_notes: 2025-10-14T14:47:19.586Z - User: Zack Goertz - Date Added: 2025-10-14T14:47:19.586Z - Note: This falls under Ron Carroll-ZG 10/14 / 2025-11-11 14:11 - User: Jason Johnston - Date Added: 2025-11-11 14:11 - Note: RFI requires framing to be uninstalled and
- QTS-120130: allucent_notes_20251202_153722: Zack Goertz on 2025-10-14T14:47:19.586Z: This falls under Ron Carroll / -ZG 10/14 / Jason Johnston on 2025-11-11 14:11: RFI requires framing to be uninstalled and changed. / Chris Waddell on 2025-11-18T20:07:57.342Z: RFI was answered, now waiting on the submittal for material / Jason Johnston on 2025-11-18T21:14:22.460Z: Tie to spandrel glass install / allucent_notes_20251118_192630: Zack Goertz on 2025-10-14T14:47:19.586Z: This falls under Ron Carroll / -ZG 10/14 / Jason Johnston on 2025-11-11 14:11: RFI requires framing to be uninstalled and changed. / Chris Waddell on 2025-11-18T20:07:57.342Z: RFI was answered, now waiting on the submittal for material / Jason Johnston on 2025-11-18T21:14:22.460Z: Tie to spandrel glass install / allucent_notes_20251111_182405: Zack Goertz on 2025-10-14T14:47:19.586Z: This falls under Ron Carroll / -ZG 10/14 / Jason Johnston on 2025-11-11 14:11: RFI requires framing to be uninstalled and changed. / allucent_notes_20251104_160200: Zack Goertz on 2025-10-14T14:47:19.586Z: This falls under Ron Carroll / -ZG 10/14 / allucent_notes_20251028_163138: Zack Goertz on 2025-10-14T14:47:19.586Z: This falls under Ron Carroll / -ZG 10/14 / allucent_notes_20251027_224008: Zack Goertz on 2025-10-14T14:47:19.586Z: This falls under Ron Carroll / -ZG 10/14 / allucent_notes_20251021_145627: Zack Goertz on 2025-10-14T14:47:19.586Z: This falls under Ron Carroll / -ZG 10/14 / allucent_notes_20251014_152335: Zack Goertz on 2025-10-14T14:47:19.586Z: This falls under Ron Carroll / -ZG 10/14 / allucent_notes: 2025-10-14T14:47:19.586Z - User: Zack Goertz - Date Added: 2025-10-14T14:47:19.586Z - Note: This falls under Ron Carroll-ZG 10/14 / 2025-11-11 14:11 - User: Jason Johnston - Date Added: 2025-11-11 14:11 - Note: RFI requires framing to be uninstalled and
- QTS-120080: allucent_notes_20251216_165335: Chris Waddell on 2025-12-09 14:26: Need to speak with Ron before this update. / allucent_notes_20251209_203830: Chris Waddell on 2025-12-09 14:26: Need to speak with Ron before this update. / allucent_notes_20251202_153722: Zack Goertz on 2025-10-14T14:47:19.586Z: This falls under Ron Carroll / -ZG 10/14 / Jason Johnston on 2025-11-11 14:11: RFI requires framing to be uninstalled and changed. / Chris Waddell on 2025-11-18T20:07:57.342Z: RFI was answered, now waiting on the submittal for material / Jason Johnston on 2025-11-18T21:14:22.460Z: Tie to spandrel glass install / allucent_notes_20251118_192630: Zack Goertz on 2025-10-14T14:47:19.586Z: This falls under Ron Carroll / -ZG 10/14 / Jason Johnston on 2025-11-11 14:11: RFI requires framing to be uninstalled and changed. / Chris Waddell on 2025-11-18T20:07:57.342Z: RFI was answered, now waiting on the submittal for material / Jason Johnston on 2025-11-18T21:14:22.460Z: Tie to spandrel glass install / allucent_notes_20251111_182405: Zack Goertz on 2025-10-14T14:47:19.586Z: This falls under Ron Carroll / -ZG 10/14 / Jason Johnston on 2025-11-11 14:11: RFI requires framing to be uninstalled and changed. / allucent_notes_20251104_160200: Zack Goertz on 2025-10-14T14:47:19.586Z: This falls under Ron Carroll / -ZG 10/14 / allucent_notes_20251028_163138: Zack Goertz on 2025-10-14T14:47:19.586Z: This falls under Ron Carroll / -ZG 10/14 / allucent_notes_20251027_224008: Zack Goertz on 2025-10-14T14:47:19.586Z: This falls under Ron Carroll / -ZG 10/14 / allucent_notes_20251021_145627: Zack Goertz on 2025-10-14T14:47:19.586Z: This falls under Ron Carroll / -ZG 10/14 / allucent_notes_20251014_152335: Zack Goertz on 2025-10-14T14:47:19.586Z: This falls under Ron Carroll / -ZG 10/14 / allucent_notes: 2025-12-09 14:26 - User: Chris Waddell - Date Added: 2025-12-09 14:26 - Note: Need to speak with Ron before this update.
- QTS-120170: allucent_notes_20251216_165335: Chris Waddell on 2025-12-09 14:27: Need to speak with Ron, will update on Wednesday / allucent_notes_20251209_203830: Chris Waddell on 2025-12-09 14:27: Need to speak with Ron, will update on Wednesday / allucent_notes_20251202_153722: Zack Goertz on 2025-10-14T14:47:19.586Z: This falls under Ron Carroll / -ZG 10/14 / Jason Johnston on 2025-11-11 14:11: RFI requires framing to be uninstalled and changed. / Chris Waddell on 2025-11-18T20:07:57.342Z: RFI was answered, now waiting on the submittal for material / Jason Johnston on 2025-11-18T21:14:22.460Z: Tie to spandrel glass install / allucent_notes_20251118_192630: Zack Goertz on 2025-10-14T14:47:19.586Z: This falls under Ron Carroll / -ZG 10/14 / Jason Johnston on 2025-11-11 14:11: RFI requires framing to be uninstalled and changed. / Chris Waddell on 2025-11-18T20:07:57.342Z: RFI was answered, now waiting on the submittal for material / Jason Johnston on 2025-11-18T21:14:22.460Z: Tie to spandrel glass install / allucent_notes_20251111_182405: Zack Goertz on 2025-10-14T14:47:19.586Z: This falls under Ron Carroll / -ZG 10/14 / Jason Johnston on 2025-11-11 14:11: RFI requires framing to be uninstalled and changed. / allucent_notes_20251104_160200: Zack Goertz on 2025-10-14T14:47:19.586Z: This falls under Ron Carroll / -ZG 10/14 / allucent_notes_20251028_163138: Zack Goertz on 2025-10-14T14:47:19.586Z: This falls under Ron Carroll / -ZG 10/14 / allucent_notes_20251027_224008: Zack Goertz on 2025-10-14T14:47:19.586Z: This falls under Ron Carroll / -ZG 10/14 / allucent_notes_20251021_145627: Zack Goertz on 2025-10-14T14:47:19.586Z: This falls under Ron Carroll / -ZG 10/14 / allucent_notes_20251014_152335: Zack Goertz on 2025-10-14T14:47:19.586Z: This falls under Ron Carroll / -ZG 10/14 / Scheduler Notes: Zack Goertz on 2025-10-14T14:47:19.586Z: This falls under Ron Carroll / -ZG / 10/14 / Jason Johnston on 2025-11-11 14:11: RFI requires framing to be uninstalled / and changed. / Chris Waddell on 2025-11-18T20:07:57.342Z: RFI was answered, now waiting on / the submittal for material / Jason Johnston on 2025-11-18T21:14:22.460Z: Tie to spandrel glass / install / allucent_notes: 2025-12-09 14:27 - User: Chris Waddell - Date Added: 2025-12-09 14:27 - Note: Need to speak with Ron, will update on Wednesday
- QTS-120180: allucent_notes_20251202_153722: Zack Goertz on 2025-10-14T14:47:19.586Z: This falls under Ron Carroll / -ZG 10/14 / Jason Johnston on 2025-11-11 14:11: RFI requires framing to be uninstalled and changed. / Chris Waddell on 2025-11-18T20:07:57.342Z: RFI was answered, now waiting on the submittal for material / Jason Johnston on 2025-11-18T21:14:22.460Z: Tie to spandrel glass install / allucent_notes_20251118_192630: Zack Goertz on 2025-10-14T14:47:19.586Z: This falls under Ron Carroll / -ZG 10/14 / Jason Johnston on 2025-11-11 14:11: RFI requires framing to be uninstalled and changed. / Chris Waddell on 2025-11-18T20:07:57.342Z: RFI was answered, now waiting on the submittal for material / Jason Johnston on 2025-11-18T21:14:22.460Z: Tie to spandrel glass install / allucent_notes_20251111_182405: Zack Goertz on 2025-10-14T14:47:19.586Z: This falls under Ron Carroll / -ZG 10/14 / Jason Johnston on 2025-11-11 14:11: RFI requires framing to be uninstalled and changed. / allucent_notes_20251104_160200: Zack Goertz on 2025-10-14T14:47:19.586Z: This falls under Ron Carroll / -ZG 10/14 / allucent_notes_20251028_163138: Zack Goertz on 2025-10-14T14:47:19.586Z: This falls under Ron Carroll / -ZG 10/14 / allucent_notes_20251027_224008: Zack Goertz on 2025-10-14T14:47:19.586Z: This falls under Ron Carroll / -ZG 10/14 / allucent_notes_20251021_145627: Zack Goertz on 2025-10-14T14:47:19.586Z: This falls under Ron Carroll / -ZG 10/14 / allucent_notes_20251014_152335: Zack Goertz on 2025-10-14T14:47:19.586Z: This falls under Ron Carroll / -ZG 10/14 / Scheduler Notes: Zack Goertz on 2025-10-14T14:47:19.586Z: This falls under Ron Carroll / -ZG / 10/14 / allucent_notes: 2025-10-14T14:47:19.586Z - User: Zack Goertz - Date Added: 2025-10-14T14:47:19.586Z - Note: This falls under Ron Carroll-ZG 10/14 / 2025-11-11 14:11 - User: Jason Johnston - Date Added: 2025-11-11 14:11 - Note: RFI requires framing to be uninstalled and
- QTS-120140: allucent_notes_20251216_165335: Chris Waddell on 2025-12-09 14:27: Need to speak with Ron, will update on Wednesday. / Jason Johnston on 2025-12-09 16:36: No update from team / allucent_notes_20251209_203830: Chris Waddell on 2025-12-09 14:27: Need to speak with Ron, will update on Wednesday. / Jason Johnston on 2025-12-09 16:36: No update from team / allucent_notes_20251202_153722: Zack Goertz on 2025-10-14T14:47:19.586Z: This falls under Ron Carroll / -ZG 10/14 / Jason Johnston on 2025-11-11 14:11: RFI requires framing to be uninstalled and changed. / Chris Waddell on 2025-11-18T20:07:57.342Z: RFI was answered, now waiting on the submittal for material / Jason Johnston on 2025-11-18T21:14:22.460Z: Tie to spandrel glass install / allucent_notes_20251118_192630: Zack Goertz on 2025-10-14T14:47:19.586Z: This falls under Ron Carroll / -ZG 10/14 / Jason Johnston on 2025-11-11 14:11: RFI requires framing to be uninstalled and changed. / Chris Waddell on 2025-11-18T20:07:57.342Z: RFI was answered, now waiting on the submittal for material / Jason Johnston on 2025-11-18T21:14:22.460Z: Tie to spandrel glass install / allucent_notes_20251111_182405: Zack Goertz on 2025-10-14T14:47:19.586Z: This falls under Ron Carroll / -ZG 10/14 / Jason Johnston on 2025-11-11 14:11: RFI requires framing to be uninstalled and changed. / allucent_notes_20251104_160200: Zack Goertz on 2025-10-14T14:47:19.586Z: This falls under Ron Carroll / -ZG 10/14 / allucent_notes_20251028_163138: Zack Goertz on 2025-10-14T14:47:19.586Z: This falls under Ron Carroll / -ZG 10/14 / allucent_notes_20251027_224008: Zack Goertz on 2025-10-14T14:47:19.586Z: This falls under Ron Carroll / -ZG 10/14 / allucent_notes_20251021_145627: Zack Goertz on 2025-10-14T14:47:19.586Z: This falls under Ron Carroll / -ZG 10/14 / allucent_notes_20251014_152335: Zack Goertz on 2025-10-14T14:47:19.586Z: This falls under Ron Carroll / -ZG 10/14 / allucent_notes: 2025-12-09 14:27 - User: Chris Waddell - Date Added: 2025-12-09 14:27 - Note: Need to speak with Ron, will update on Wednesday. / 2025-12-09 16:36 - User: Jason Johnston - Date Added: 2025-12-09 16:36 - Note: No update from team
- QTS-120190: allucent_notes_20251202_153722: Zack Goertz on 2025-10-14T14:47:19.586Z: This falls under Ron Carroll / -ZG 10/14 / Jason Johnston on 2025-11-11 14:11: RFI requires framing to be uninstalled and changed. / Chris Waddell on 2025-11-18T20:07:57.342Z: RFI was answered, now waiting on the submittal for material / Jason Johnston on 2025-11-18T21:14:22.460Z: Tie to spandrel glass install / allucent_notes_20251118_192630: Zack Goertz on 2025-10-14T14:47:19.586Z: This falls under Ron Carroll / -ZG 10/14 / Jason Johnston on 2025-11-11 14:11: RFI requires framing to be uninstalled and changed. / Chris Waddell on 2025-11-18T20:07:57.342Z: RFI was answered, now waiting on the submittal for material / Jason Johnston on 2025-11-18T21:14:22.460Z: Tie to spandrel glass install / allucent_notes_20251111_182405: Zack Goertz on 2025-10-14T14:47:19.586Z: This falls under Ron Carroll / -ZG 10/14 / Jason Johnston on 2025-11-11 14:11: RFI requires framing to be uninstalled and changed. / allucent_notes_20251104_160200: Zack Goertz on 2025-10-14T14:47:19.586Z: This falls under Ron Carroll / -ZG 10/14 / allucent_notes_20251028_163138: Zack Goertz on 2025-10-14T14:47:19.586Z: This falls under Ron Carroll / -ZG 10/14 / allucent_notes_20251027_224008: Zack Goertz on 2025-10-14T14:47:19.586Z: This falls under Ron Carroll / -ZG 10/14 / allucent_notes_20251021_145627: Zack Goertz on 2025-10-14T14:47:19.586Z: This falls under Ron Carroll / -ZG 10/14 / allucent_notes_20251014_152335: Zack Goertz on 2025-10-14T14:47:19.586Z: This falls under Ron Carroll / -ZG 10/14 / allucent_notes: 2025-10-14T14:47:19.586Z - User: Zack Goertz - Date Added: 2025-10-14T14:47:19.586Z - Note: This falls under Ron Carroll-ZG 10/14 / 2025-11-11 14:11 - User: Jason Johnston - Date Added: 2025-11-11 14:11 - Note: RFI requires framing to be uninstalled and
- QTS-1004400: allucent_notes_20251202_153722: Zack Goertz on 2025-10-14T14:47:19.586Z: This falls under Ron Carroll / -ZG 10/14 / Jason Johnston on 2025-11-11 14:11: RFI requires framing to be uninstalled and changed. / Chris Waddell on 2025-11-18T20:07:57.342Z: RFI was answered, now waiting on the submittal for material / Jason Johnston on 2025-11-18T21:14:22.460Z: Tie to spandrel glass install / allucent_notes_20251118_192630: Zack Goertz on 2025-10-14T14:47:19.586Z: This falls under Ron Carroll / -ZG 10/14 / Jason Johnston on 2025-11-11 14:11: RFI requires framing to be uninstalled and changed. / Chris Waddell on 2025-11-18T20:07:57.342Z: RFI was answered, now waiting on the submittal for material / Jason Johnston on 2025-11-18T21:14:22.460Z: Tie to spandrel glass install / allucent_notes_20251111_182405: Zack Goertz on 2025-10-14T14:47:19.586Z: This falls under Ron Carroll / -ZG 10/14 / Jason Johnston on 2025-11-11 14:11: RFI requires framing to be uninstalled and changed. / allucent_notes_20251104_160200: Zack Goertz on 2025-10-14T14:47:19.586Z: This falls under Ron Carroll / -ZG 10/14 / allucent_notes_20251028_163138: Zack Goertz on 2025-10-14T14:47:19.586Z: This falls under Ron Carroll / -ZG 10/14 / allucent_notes_20251027_224008: Zack Goertz on 2025-10-14T14:47:19.586Z: This falls under Ron Carroll / -ZG 10/14 / allucent_notes_20251021_145627: Zack Goertz on 2025-10-14T14:47:19.586Z: This falls under Ron Carroll / -ZG 10/14 / allucent_notes_20251014_152335: Zack Goertz on 2025-10-14T14:47:19.586Z: This falls under Ron Carroll / -ZG 10/14 / Scheduler Notes: Zack Goertz on 2025-10-14T14:47:19.586Z: This falls under Ron Carroll / -ZG / 10/14 / Jason Johnston on 2025-11-11 14:11: RFI requires framing to be uninstalled / and changed. / Chris Waddell on 2025-11-18T20:07:57.342Z: RFI was answered, now waiting on / the submittal for material / Jason Johnston on 2025-11-18T21:14:22.460Z: Tie to spandrel glass / install / allucent_notes: 2025-10-14T14:47:19.586Z - User: Zack Goertz - Date Added: 2025-10-14T14:47:19.586Z - Note: This falls under Ron Carroll-ZG 10/14 / 2025-11-11 14:11 - User: Jason Johnston - Date Added: 2025-11-11 14:11 - Note: RFI requires framing to be uninstalled and
- QTS-1004410: allucent_notes_20251202_153722: Zack Goertz on 2025-10-14T14:47:19.586Z: This falls under Ron Carroll / -ZG 10/14 / Jason Johnston on 2025-11-11 14:11: RFI requires framing to be uninstalled and changed. / Chris Waddell on 2025-11-18T20:07:57.342Z: RFI was answered, now waiting on the submittal for material / Jason Johnston on 2025-11-18T21:14:22.460Z: Tie to spandrel glass install / allucent_notes_20251118_192630: Zack Goertz on 2025-10-14T14:47:19.586Z: This falls under Ron Carroll / -ZG 10/14 / Jason Johnston on 2025-11-11 14:11: RFI requires framing to be uninstalled and changed. / Chris Waddell on 2025-11-18T20:07:57.342Z: RFI was answered, now waiting on the submittal for material / Jason Johnston on 2025-11-18T21:14:22.460Z: Tie to spandrel glass install / allucent_notes_20251111_182405: Zack Goertz on 2025-10-14T14:47:19.586Z: This falls under Ron Carroll / -ZG 10/14 / Jason Johnston on 2025-11-11 14:11: RFI requires framing to be uninstalled and changed. / allucent_notes_20251104_160200: Zack Goertz on 2025-10-14T14:47:19.586Z: This falls under Ron Carroll / -ZG 10/14 / allucent_notes_20251028_163138: Zack Goertz on 2025-10-14T14:47:19.586Z: This falls under Ron Carroll / -ZG 10/14 / allucent_notes_20251027_224008: Zack Goertz on 2025-10-14T14:47:19.586Z: This falls under Ron Carroll / -ZG 10/14 / allucent_notes_20251021_145627: Zack Goertz on 2025-10-14T14:47:19.586Z: This falls under Ron Carroll / -ZG 10/14 / allucent_notes_20251014_152335: Zack Goertz on 2025-10-14T14:47:19.586Z: This falls under Ron Carroll / -ZG 10/14 / Scheduler Notes: Zack Goertz on 2025-10-14T14:47:19.586Z: This falls under Ron Carroll / -ZG / 10/14 / Jason Johnston on 2025-11-11 14:11: RFI requires framing to be uninstalled / and changed. / Chris Waddell on 2025-11-18T20:07:57.342Z: RFI was answered, now waiting on / the submittal for material / Jason Johnston on 2025-11-18T21:14:22.460Z: Tie to spandrel glass / install / allucent_notes: 2025-10-14T14:47:19.586Z - User: Zack Goertz - Date Added: 2025-10-14T14:47:19.586Z - Note: This falls under Ron Carroll-ZG 10/14 / 2025-11-11 14:11 - User: Jason Johnston - Date Added: 2025-11-11 14:11 - Note: RFI requires framing to be uninstalled and

| ID | WBS | Activity | Duration | Start | Finish | Predecessors | Complete | Planned start | Planned finish | Allucent CSI Group | Project Section | Phase-1 | Layton Discipline | Baseline | Fragnet | Fragnet Responsible Party | Contract | Owner Impact Analysis | Location | Layton Super |
| --- | --- | --- | --- | --- | --- | --- | --- | --- | --- | --- | --- | --- | --- | --- | --- | --- | --- | --- | --- | --- |
|  | 5 | **Fragnet / FOH Access Limited By Campus** |  | 2026-04-08 | 2026-04-17 |  |  |  |  |  |  |  |  |  |  |  |  |  |  |  |
| QTS-1010100 |  | Fragnet / West Elevation // Access to Area Limited Due to Campus Work | 8d | 2026-04-08 A | 2026-04-17 A | QTS-1371 | 100% |  |  | 01ADMIN | Construction | Phase 1 | Core & Shell | IGMP | Fragnet | True Metal Solutions, LLC | BAB |  |  |  |
|  | 2 | **Remaining Scope** |  | 2025-11-03 | 2026-05-14 |  |  |  |  |  |  |  |  |  |  |  |  |  |  |  |
| QTS-50341 |  | West Elevation // Install Strip Glass Window Glass - North Upper | 5d | 2025-11-03 A | 2025-11-07 A | QTS-18561, QTS-50331 | 100% |  |  | 01ADMIN | Construction | Phase 1 | Build Out | IGMP |  |  | BAB |  |  |  |
| QTS-50411 |  | West Elevation // Install Strip Glass Window Frames - South Lower | 5d | 2025-11-03 A | 2025-11-07 A | QTS-50341 SS | 100% |  |  | 01ADMIN | Construction | Phase 1 | Build Out | IGMP |  |  | BAB |  |  |  |
| QTS-50351 |  | West Elevation // Install Strip Glass Window Exterior Caulking - North Upper | 2d | 2025-11-10 A | 2025-11-11 A | QTS-50341 | 100% |  |  | 01ADMIN | Construction | Phase 1 | Build Out | IGMP |  |  | BAB |  |  |  |
| QTS-50421 |  | West Elevation // Install Strip Glass Window Glass - South Lower | 5d | 2025-11-10 A | 2025-11-14 A | QTS-18561, QTS-50411 | 100% |  |  | 01ADMIN | Construction | Phase 1 | Build Out | IGMP |  |  | BAB |  |  |  |
| QTS-50361 |  | West Elevation // Install Strip Glass Window Interior Caulking - North Upper | 3d | 2025-11-12 A | 2025-11-14 A | QTS-50351 | 100% |  |  |  | Construction | Phase 1 | Build Out | IGMP |  |  | BAB |  |  |  |
| QTS-50431 |  | West Elevation // Install Strip Glass Window Exterior Caulking - South Lower | 2d | 2025-11-17 A | 2025-11-18 A | QTS-50421 | 100% |  |  | 01ADMIN | Construction | Phase 1 | Build Out | IGMP |  |  | BAB |  |  |  |
| QTS-50441 |  | West Elevation // Install Strip Glass Window Interior Caulking - South Lower | 3d | 2025-11-19 A | 2025-11-21 A | QTS-50431 | 100% |  |  |  | Construction | Phase 1 | Build Out | IGMP |  |  | BAB |  |  |  |
| QTS-28071 |  | West Elevation // Set Louvered Metal Screen Wall | 5d | 2026-01-28 A | 2026-02-13 A | QTS-43091 | 100% | 2026-01-28 | 2026-02-03 | 01ADMIN | Construction | Phase 1 | Core & Shell | IGMP |  |  | BAB |  |  |  |
| QTS-50371 |  | West Elevation // Install Strip/Spandrel Glass Window Frames - South Upper | 5d | 2026-01-28 A | 2026-02-06 A | QTS-25071 SS, QTS-24861, QTS-50331 | 100% | 2026-01-28 | 2026-02-03 | 01ADMIN | Construction | Phase 1 | Core & Shell | IGMP |  |  | BAB |  |  |  |
| QTS-1004800 |  | West Elevation // Frame Vertical Column for Metal Panels | 2d | 2026-02-02 A | 2026-02-03 A | QTS-120190 | 100% |  |  | 01ADMIN | Construction | Phase 1 | Core & Shell | IGMP |  |  | BAB |  |  |  |
| QTS-25071 |  | West Elevation // Hang Sheathing for Metal Panels | 4d | 2026-02-02 A | 2026-02-24 A | QTS-120190, QTS-24861, QTS-1004800 SS | 100% | 2026-02-02 | 2026-02-05 | 01ADMIN | Construction | Phase 1 | Core & Shell | IGMP |  |  | BAB |  |  |  |
| QTS-1005010 |  | West Elevation // Install Strip Glass Window Glass - South Upper | 5d | 2026-02-09 A | 2026-02-19 A | QTS-50371 | 100% | 2026-02-09 | 2026-02-13 | 01ADMIN | Construction | Phase 1 | Core & Shell | IGMP |  |  | BAB |  |  |  |
| QTS-50381 |  | West Elevation // Install Spandrel Glass Window Glass - South Upper | 5d | 2026-02-09 A | 2026-02-09 A | QTS-120080, QTS-18561, QTS-50371 | 100% | 2026-02-11 | 2026-02-17 | 01ADMIN | Construction | Phase 1 | Core & Shell | IGMP |  |  | BAB |  |  |  |
| QTS-1004930 |  | West Elevation // Field Verification & Fabrication Metal Panels - Phase 1 | 10d | 2026-02-19 A | 2026-03-04 A | QTS-25071 | 100% |  |  |  | Construction | Phase 1 | Core & Shell | IGMP |  |  | BAB |  |  |  |
| QTS-1005090 |  | West Elevation // Install Strip Glass Window Glass - South Upper - Remaining | 1d | 2026-02-27 A | 2026-03-02 A | QTS-1005080 | 100% | 2026-02-27 | 2026-02-27 | 01ADMIN | Construction | Phase 1 | Core & Shell | IGMP |  |  | BAB |  |  |  |
| QTS-25351 |  | West Elevation // Install Weather Barrier & Insulation | 5d | 2026-02-27 A | 2026-03-04 A | QTS-25071 | 100% | 2026-02-27 | 2026-03-05 | 01ADMIN | Construction | Phase 1 | Core & Shell | IGMP |  |  | BAB |  |  |  |
| QTS-50391 |  | West Elevation // Install Strip/Spandrel Glass Window Exterior Caulking - South Upper | 2d | 2026-02-27 A | 2026-03-02 A | QTS-50381, QTS-1005090 FF+1d | 100% |  |  | 01ADMIN | Construction | Phase 1 | Core & Shell | IGMP |  |  | BAB |  |  |  |
| QTS-50401 |  | West Elevation // Install Strip Glass Window Interior Caulking - South Upper | 3d | 2026-03-03 A | 2026-03-04 A | QTS-50391 | 100% | 2026-03-03 | 2026-03-05 | 01ADMIN | Construction | Phase 1 | Core & Shell | IGMP |  |  | BAB |  |  |  |
| QTS-1007200 |  | West Elevation // Waterproofing Canopy Fascia | 4d | 2026-03-05 A | 2026-03-10 A | QTS-25351 | 100% |  |  | 01ADMIN | Construction | Phase 1 | Core & Shell | IGMP |  |  | BAB |  |  |  |
| QTS-1004920 |  | West Elevation // Install Roofing | 2d | 2026-04-06 A | 2026-04-07 A | QTS-25351, QTS-1007200, QTS-50071, QTS-1009010 | 100% |  |  | 01ADMIN | Construction | Phase 1 | Core & Shell | IGMP |  |  | BAB |  |  |  |
| QTS-1009860 |  | Fragnet / West Elevation // Reinstall Plywood Deck | 1d | 2026-04-08 A | 2026-04-08 A | QTS-1004920 | 100% |  |  | 01ADMIN | Construction | Phase 1 | Core & Shell | IGMP | Fragnet | Performance Contracting Inc. | BAB | Y |  |  |
| QTS-25661 |  | West Elevation // Inspect Weather Barrier | 1d | 2026-04-20 A | 2026-04-20 A | QTS-25351, QTS-1004920, QTS-49491 FF, QTS-1009860, QTS-1010100 | 100% |  |  | 01ADMIN | Construction | Phase 1 | Core & Shell | IGMP |  |  | BAB |  |  |  |
| QTS-27491 |  | West Elevation // Install Metal Panels - Phase 1 | 11d | 2026-04-27 A | 2026-05-14 A | QTS-25411, QTS-50431, QTS-25661, QTS-25351, QTS-25071, QTS-1004930, QTS-1004920 | 100% | 2026-04-22 | 2026-05-06 |  | Construction | Phase 1 | Build Out | IGMP |  |  | BAB |  | EXT | Freddy Arrizon |

Notes:
- QTS-1010100: Scheduler Notes: Access to Area Limited Due to Campus Work
- QTS-50371: allucent_notes_20251202_153722: Jason Johnston on 2025-11-03 14:11: On hold for RFI #646 for steel out of alignment to the framing of the store front. / Jason Johnston on 2025-11-10 14:11: Clips for frames to begin install 11/11. / Jason Johnston on 2025-11-11 14:11: There is no spandrel glass on the FOH. / Chris Waddell on 2025-11-18T20:09:47.156Z: RFI was answered, now waiting on a submittal / Jason Johnston on 2025-12-01 14:12: RFI response received 12/1 rework to start 12/3. Rework to add one additional day to duration. / Jason Johnston on 2025-12-01 14:12: RFI response received 12/1 rework to start 12/3. Rework to add one additional day to duration. / allucent_notes_20251118_192630: Jason Johnston on 2025-11-03 14:11: On hold for RFI #646 for steel out of alignment to the framing of the store front. / Jason Johnston on 2025-11-10 14:11: Clips for frames to begin install 11/11. / Jason Johnston on 2025-11-11 14:11: There is no spandrel glass on the FOH. / Chris Waddell on 2025-11-18T20:09:47.156Z: RFI was answered, now waiting on a submittal / allucent_notes_20251111_182405: Jason Johnston on 2025-11-03 14:11: On hold for RFI #646 for steel out of alignment to the framing of the store front. / Jason Johnston on 2025-11-10 14:11: Clips for frames to begin install 11/11. / Jason Johnston on 2025-11-11 14:11: There is no spandrel glass on the FOH. / allucent_notes_20251104_160200: Jason Johnston on 2025-11-03 14:11: On hold for RFI #646 for steel out of alignment to the framing of the store front. / allucent_notes: 2025-11-03 14:11 - User: Jason Johnston - Date Added: 2025-11-03 14:11 - Note: On hold for RFI #646 for steel out of alignment to the framing of the store front. / 2025-11-10 14:11 - User: Jason Johnston - Date Added: 2025-11-10 14:11 - Note: Clips for f
- QTS-1004800: allucent_notes_20251202_153722: Zack Goertz on 2025-10-14T14:47:19.586Z: This falls under Ron Carroll / -ZG 10/14 / Jason Johnston on 2025-11-11 14:11: RFI requires framing to be uninstalled and changed. / Chris Waddell on 2025-11-18T20:07:57.342Z: RFI was answered, now waiting on the submittal for material / Jason Johnston on 2025-11-18T21:14:22.460Z: Tie to spandrel glass install / allucent_notes_20251118_192630: Zack Goertz on 2025-10-14T14:47:19.586Z: This falls under Ron Carroll / -ZG 10/14 / Jason Johnston on 2025-11-11 14:11: RFI requires framing to be uninstalled and changed. / Chris Waddell on 2025-11-18T20:07:57.342Z: RFI was answered, now waiting on the submittal for material / Jason Johnston on 2025-11-18T21:14:22.460Z: Tie to spandrel glass install / allucent_notes_20251111_182405: Zack Goertz on 2025-10-14T14:47:19.586Z: This falls under Ron Carroll / -ZG 10/14 / Jason Johnston on 2025-11-11 14:11: RFI requires framing to be uninstalled and changed. / allucent_notes_20251104_160200: Zack Goertz on 2025-10-14T14:47:19.586Z: This falls under Ron Carroll / -ZG 10/14 / allucent_notes_20251028_163138: Zack Goertz on 2025-10-14T14:47:19.586Z: This falls under Ron Carroll / -ZG 10/14 / allucent_notes_20251027_224008: Zack Goertz on 2025-10-14T14:47:19.586Z: This falls under Ron Carroll / -ZG 10/14 / allucent_notes_20251021_145627: Zack Goertz on 2025-10-14T14:47:19.586Z: This falls under Ron Carroll / -ZG 10/14 / allucent_notes_20251014_152335: Zack Goertz on 2025-10-14T14:47:19.586Z: This falls under Ron Carroll / -ZG 10/14 / allucent_notes: 2025-10-14T14:47:19.586Z - User: Zack Goertz - Date Added: 2025-10-14T14:47:19.586Z - Note: This falls under Ron Carroll-ZG 10/14 / 2025-11-11 14:11 - User: Jason Johnston - Date Added: 2025-11-11 14:11 - Note: RFI requires framing to be uninstalled and
- QTS-25071: allucent_notes_20251202_153722: Zack Goertz on 2025-10-14T14:47:19.586Z: This falls under Ron Carroll / -ZG 10/14 / Jason Johnston on 2025-11-11 14:11: RFI requires framing to be uninstalled and changed. / Chris Waddell on 2025-11-18T20:07:57.342Z: RFI was answered, now waiting on the submittal for material / Jason Johnston on 2025-11-18T21:14:22.460Z: Tie to spandrel glass install / allucent_notes_20251118_192630: Zack Goertz on 2025-10-14T14:47:19.586Z: This falls under Ron Carroll / -ZG 10/14 / Jason Johnston on 2025-11-11 14:11: RFI requires framing to be uninstalled and changed. / Chris Waddell on 2025-11-18T20:07:57.342Z: RFI was answered, now waiting on the submittal for material / Jason Johnston on 2025-11-18T21:14:22.460Z: Tie to spandrel glass install / allucent_notes_20251111_182405: Zack Goertz on 2025-10-14T14:47:19.586Z: This falls under Ron Carroll / -ZG 10/14 / Jason Johnston on 2025-11-11 14:11: RFI requires framing to be uninstalled and changed. / allucent_notes_20251104_160200: Zack Goertz on 2025-10-14T14:47:19.586Z: This falls under Ron Carroll / -ZG 10/14 / allucent_notes_20251028_163138: Zack Goertz on 2025-10-14T14:47:19.586Z: This falls under Ron Carroll / -ZG 10/14 / allucent_notes_20251027_224008: Zack Goertz on 2025-10-14T14:47:19.586Z: This falls under Ron Carroll / -ZG 10/14 / allucent_notes_20251021_145627: Zack Goertz on 2025-10-14T14:47:19.586Z: This falls under Ron Carroll / -ZG 10/14 / allucent_notes_20251014_152335: Zack Goertz on 2025-10-14T14:47:19.586Z: This falls under Ron Carroll / -ZG 10/14 / allucent_notes: 2025-10-14T14:47:19.586Z - User: Zack Goertz - Date Added: 2025-10-14T14:47:19.586Z - Note: This falls under Ron Carroll-ZG 10/14 / 2025-11-11 14:11 - User: Jason Johnston - Date Added: 2025-11-11 14:11 - Note: RFI requires framing to be uninstalled and
- QTS-1004920: Scheduler Notes: 4/7: Delay due to PCI plywood deck installed incorrectly. / Notes: 4/7: Delay due to PCI plywood deck installed incorrectly.
- QTS-1009860: Scheduler Notes: 4/7: Delay due to PCI plywood deck installed incorrectly. / Notes: 4/7: Delay due to PCI plywood deck installed incorrectly.
- QTS-25661: Scheduler Notes: 4/14: Access limited due to campus work in area. / Notes: 4/14: Access limited due to campus work in area.
- QTS-27491: Scheduler Notes: 04/21 - Metal panel installation needs to be coordinated with Plumbing, / Electrical contractors & others. Penetrations need to be coordinated so that / they will land in the flat area of the panels and not in seams and / joints. / Notes: 04/21 - Metal panel installation needs to be coordinated with Plumbing, Electrical contractors & others. Penetrations need to be coordinated so that they will land in the flat area of the panels and not in seams and joints.

| ID | WBS | Activity | Duration | Start | Finish | Predecessors | Complete | Planned start | Planned finish | Total float | Free float | Notes | Project Section | Phase-1 | Layton Discipline | Baseline | Fragnet | Fragnet Responsible Party | Contract | Layton Super | Location | Owner Impact Analysis | Allucent CSI Group |
| --- | --- | --- | --- | --- | --- | --- | --- | --- | --- | --- | --- | --- | --- | --- | --- | --- | --- | --- | --- | --- | --- | --- | --- |
|  | 4 | **Fragnet / Procure Replacement Curtain Wall Panes** |  | 2026-03-17 | 2026-04-06 |  |  |  |  |  |  |  |  |  |  |  |  |  |  |  |  |  |  |
| QTS-1009020 |  | Fragnet / West Elevation // Procure Replacement Panes Store Front Glass | 10d | 2026-03-17 A | 2026-04-03 A | QTS-24591 | 100% | 2026-03-17 | 2026-03-30 |  |  | 4/7/26: Delivery delayed one day | Construction | Phase 1 | Core & Shell | IGMP | Fragnet | Giroux Glass, Inc | BAB |  |  |  |  |
| QTS-1009010 |  | West Elevation // Set Store Front Glass (Replacement Panes) | 1d | 2026-04-06 A | 2026-04-06 A | QTS-1009020 | 100% |  |  |  |  | 4/7/26: Delivery delayed one day | Construction | Phase 1 | Core & Shell | IGMP | Fragnet | Giroux Glass, Inc | BAB |  |  |  |  |
|  | 6 | **Fragnet / RFI 990 Vestibule Framing Clarification** |  | 2026-04-14 | 2026-05-14 |  |  |  |  |  |  |  |  |  |  |  |  |  |  |  |  |  |  |
| QTS-1011930 |  | Fragnet / RFI #990: Vestibule Framing Clarifications | 2d | 2026-04-14 A | 2026-05-14 A | QTS-1009880 SS+5d | 100% | 2026-04-07 | 2026-04-08 |  |  | 04/28: RFI #990 04/21: RFI #990 | Construction | Phase 1 | Build Out | IGMP | Fragnet | Giroux Glass, Inc | BAB | Freddy Arrizon |  |  |  |
|  | 3 | **Large Curtain Wall Around Vestibule** |  | 2026-03-04 | 2026-10-13 |  |  |  |  |  |  |  |  |  |  |  |  |  |  |  |  |  |  |
|  | 1 | **Fragnet / Large Curtain Wall Around Vestibule** |  | 2026-08-19 | 2026-08-25 |  |  |  |  |  |  |  |  |  |  |  |  |  |  |  |  |  |  |
| QTS-1014120 |  | West Elevation // Fragnet to Install Taper System (was missing), ACM | 5d | 2026-08-19 | 2026-08-25 | QTS-1004960, QTS-1012080 |  |  |  | -16d | 56d | Missing Taper System | Construction | Phase 1 | Build Out | IGMP | Fragnet | True Metal Solutions, LLC | BAB | Freddy Arrizon | EXT | Y |  |
|  | 2 | **Existing Scope / Large Curtain Wall Around Vestibule** |  | 2026-03-04 | 2026-10-13 |  |  |  |  |  |  |  |  |  |  |  |  |  |  |  |  |  |  |
| QTS-24591 |  | West Elevation // Install Store Front Frames | 6d | 2026-03-04 A | 2026-03-10 A | QTS-46841, QTS-18561, QTS-23921 | 100% | 2026-03-04 | 2026-03-11 |  |  |  | Construction | Phase 1 | Build Out | IGMP |  |  | BAB |  |  |  |  |
| QTS-50071 |  | West Elevation // Set Store Front Glass | 6d | 2026-03-11 A | 2026-03-17 A | QTS-24591 FF+5d | 100% | 2026-03-11 | 2026-03-18 |  |  |  | Construction | Phase 1 | Build Out | IGMP |  |  | BAB |  |  |  |  |
| QTS-1004970 |  | West Elevation // Water Proofing on Vestibule | 2d | 2026-03-13 A | 2026-04-10 A | QTS-24591 | 100% | 2026-03-13 | 2026-03-16 |  |  |  | Construction | Phase 1 | Core & Shell | IGMP |  |  | BAB |  |  |  |  |
| QTS-25181 |  | West Elevation // Install Store Front Window Exterior Caulking | 2d | 2026-03-30 A | 2026-04-06 A | QTS-50071 FF, QTS-1009010 FF | 100% | 2026-04-02 | 2026-04-03 |  |  |  | Construction | Phase 1 | Core & Shell | IGMP |  |  | BAB |  |  |  |  |
| QTS-50681 |  | West Elevation // Install Store Front Window Interior Caulking | 2d | 2026-03-30 A | 2026-04-06 A | QTS-25181 FF | 100% | 2026-04-06 | 2026-04-07 |  |  |  | Construction | Phase 1 | Core & Shell | IGMP |  |  | BAB |  |  |  |  |
| QTS-1009870 |  | Fragnet / West Elevation // PCI Delay | 4d | 2026-04-01 A | 2026-04-06 A | QTS-1371 SS | 100% |  |  |  |  |  | Construction | Phase 1 | Core & Shell | IGMP | Fragnet | Performance Contracting Inc. | BAB |  |  |  |  |
| QTS-1005000 |  | West Elevation // Field Verification & Fabrication Metal Panels - Phase 2 | 10d | 2026-04-02 A | 2026-04-14 A | QTS-24591 | 100% | 2026-04-03 | 2026-04-16 |  |  |  | Construction | Phase 1 | Core & Shell | IGMP |  |  | BAB |  |  |  |  |
| QTS-1004990 |  | West Elevation // Install Knife Plate & Framing for QTS Sign | 2d | 2026-04-03 A | 2026-04-03 A | QTS-50071, QTS-1009010 | 100% | 2026-04-03 | 2026-04-06 |  |  |  | Construction | Phase 1 | Core & Shell | IGMP |  |  | BAB |  |  |  |  |
| QTS-1004960 |  | West Elevation // Framing and Sheathing on Top of Vestibule | 2d | 2026-04-07 A | 2026-05-21 A | QTS-50391, QTS-1009870, QTS-1011930 FF+2d | 100% | 2026-04-07 | 2026-04-08 |  |  | 04/28: RFI #990 04/21: RFI #990 | Construction | Phase 1 | Build Out | IGMP |  |  | BAB | Freddy Arrizon | EXT |  |  |
| QTS-24831 |  | West Elevation // Electrical Rough In for Signage | 2d | 2026-04-17 A | 2026-04-20 A | QTS-24861, QTS-24591, QTS-50071, QTS-1009010, QTS-45441 | 100% | 2026-04-15 | 2026-04-16 |  |  | 4/7: Delayed by Terrazzo install | Construction | Phase 1 | Electrical | IGMP |  |  | BAB |  |  |  | 01ADMIN |
| QTS-1004950 |  | West Elevation // Install Roof Drain | 2d | 2026-04-20 A | 2026-04-20 A | QTS-1004920, QTS-1004980 | 100% | 2026-04-21 | 2026-04-22 |  |  |  | Construction | Phase 1 | Core & Shell | IGMP |  |  | BAB |  |  |  |  |
| QTS-1004980 |  | West Elevation // Inspect Water Proofing on Vestibule | 1d | 2026-04-20 A | 2026-04-20 A | QTS-1004970, QTS-1010100 | 100% |  |  |  |  | 4/14: Access limited due to campus work in area. | Construction | Phase 1 | Core & Shell | IGMP |  |  | BAB |  |  |  |  |
| QTS-24971 |  | West Elevation // Inspect Electrical & Framing | 1d | 2026-04-27 A | 2026-07-22 A | QTS-24831, QTS-1004990 | 100% | 2026-04-22 | 2026-04-22 |  |  |  | Construction | Phase 1 | Electrical | IGMP |  |  | BAB | Electrical | EXT |  | 01ADMIN |
| QTS-1004940 |  | West Elevation // Install Metal Panels - Phase 2 | 11d | 2026-05-11 A | 2026-06-18 A | QTS-27491, QTS-1005000, QTS-25181, QTS-1004960 FF | 100% | 2026-05-11 | 2026-05-26 |  |  |  | Construction | Phase 1 | Build Out | IGMP |  |  | BAB | Freddy Arrizon | EXT |  |  |
| QTS-1012080 |  | West Elevation // Install Densdeck, Waterproofing, Taper Channel, ISO, Coverboard, ACM | 5d | 2026-05-26 A | 2026-07-31 A | QTS-1004960 | 100% | 2026-05-22 | 2026-05-29 |  |  | Missing Taper System | Construction | Phase 1 | Build Out | IGMP |  |  | BAB | Freddy Arrizon | EXT |  |  |
| QTS-1004110 |  | West Elevation // Install QTS Signage | 2d | 2026-10-12 | 2026-10-13 | QTS-24971, QTS-1004950, QTS-50091 |  |  |  | -39d | 0d |  | Construction | Phase 1 | Electrical | IGMP |  |  | BAB | Electrical | EXT |  | 01ADMIN |

Notes:
- QTS-1009020: Scheduler Notes: 4/7/26: Delivery delayed one day
- QTS-1009010: Scheduler Notes: 4/7/26: Delivery delayed one day
- QTS-1011930: Scheduler Notes: 04/28: RFI #990 04/21: RFI / #990
- QTS-1014120: Scheduler Notes: 04/28: RFI #990-still needs gutter / 8/4/26-Missing Taper System to install / Note/Comments: 6/23: Need to procure customs gutter per RFI #; pending dates from TMS
- QTS-1009870: Scheduler Notes: PCI Delay
- QTS-1004960: Scheduler Notes: 04/28: RFI #990 04/21: RFI / #990
- QTS-24831: allucent_notes_20251104_160200: David Wiltberger on 2025-10-14 12:10: No walls / Jason Johnston on 2025-11-03 14:11: Moving closer to TCO. / allucent_notes_20251028_163138: David Wiltberger on 2025-10-14 12:10: No walls / allucent_notes_20251027_224008: David Wiltberger on 2025-10-14 12:10: No walls / allucent_notes_20251021_145627: David Wiltberger on 2025-10-14 12:10: No walls / allucent_notes_20251014_152335: David Wiltberger on 2025-10-14 12:10: No walls / allucent_notes_20251230_164549: David Wiltberger on 2025-10-14 12:10: No walls / Jason Johnston on 2025-11-03 14:11: Moving closer to TCO. / Scheduler Notes: David Wiltberger on 2025-10-14 12:10: No walls / Jason Johnston on 2025-11-03 14:11: Moving closer to TCO. / 4/7: Delayed by Terrazzo install / allucent_notes: 2025-10-14 12:10 - User: David Wiltberger - Date Added: 2025-10-14 12:10 - Note: No walls / 2025-11-03 14:11 - User: Jason Johnston - Date Added: 2025-11-03 14:11 - Note: Moving closer to TCO.
- QTS-1004980: Scheduler Notes: 4/14: Access limited due to campus work in area.
- QTS-1012080: Scheduler Notes: 04/28: RFI #990-still needs gutter / 8/4/26-Missing Taper System to install / Note/Comments: 6/23: Need to procure customs gutter per RFI #; pending dates from TMS

| ID | WBS | Activity | Duration | Start | Finish | Predecessors | Complete | Planned start | Planned finish | Allucent CSI Group | Project Section | Phase-1 | Layton Discipline | Baseline | Contract | Phase-1-1 | Project Section-1 | Fragnet | Fragnet Responsible Party | Owner Impact Analysis | Layton Super |
| --- | --- | --- | --- | --- | --- | --- | --- | --- | --- | --- | --- | --- | --- | --- | --- | --- | --- | --- | --- | --- | --- |
|  | 2 | **Zone 1 / Exterior Finishes // South Elevation** |  | 2025-08-21 | 2026-08-19 |  |  |  |  |  |  |  |  |  |  |  |  |  |  |  |  |
| QTS-3561 |  | Zone 1 Gridlines 1-21 / South // Sack & Patch Panels | 8d | 2025-08-21 A | 2025-09-08 A | QTS-23621 SS | 100% | 2025-08-28 | 2025-09-09 | 01ADMIN | Construction | Phase 1 | Core & Shell | IGMP | BAB |  |  |  |  |  |  |
| QTS-5441 |  | Zone 1 Gridlines 1-21 / South // Power Wash Tilt Panels | 1d | 2025-09-09 A | 2025-09-09 A | QTS-3561 | 100% |  |  | 01ADMIN | Construction | Phase 1 | Core & Shell | IGMP | BAB |  |  |  |  |  |  |
| QTS-5661 |  | Zone 1 Gridlines 1-21 / South // Prime & Paint Tilt Panels | 5d | 2025-09-24 A | 2025-09-30 A | QTS-23921 FF, QTS-5441, QTS-3561 | 100% |  |  |  | Construction | Phase 1 | Core & Shell | IGMP | BAB |  |  |  |  |  |  |
| QTS-6981 |  | Zone 1 Gridlines 1-21 / South // Caulk Panel Joints | 4d | 2025-10-01 A | 2025-10-06 A | QTS-5661 | 100% |  |  |  | Construction | Phase 1 | Core & Shell | IGMP | BAB |  |  |  |  |  |  |
| QTS-24401 |  | Zone 1 Gridlines 1-21 / South // Install Scuppers | 5d | 2025-10-20 A | 2026-01-13 A | QTS-42661, QTS-6981 | 100% | 2025-10-20 | 2025-10-24 | 01ADMIN | Construction |  | Core & Shell | IGMP | BAB | Phase 1 | Construction |  |  |  |  |
| QTS-1002100 |  | Zone 1 Gridlines 1-21 / South // Layout Downspout Stub Outs | 5d | 2026-01-06 A | 2026-01-13 A | QTS-24401 SS | 100% | 2026-01-06 | 2026-01-12 |  | Construction | Phase 1 | Core & Shell | IGMP | BAB |  |  |  |  |  |  |
| QTS-50581 |  | Zone 1 Gridlines 1-21 / South // Install Spandrel Glass Window Frames | 2d | 2026-01-08 A | 2026-01-14 A | QTS-6981 | 100% | 2026-01-08 | 2026-01-09 | 01ADMIN | Construction | Phase 1 | Core & Shell | IGMP | BAB |  |  |  |  |  |  |
| QTS-1002130 |  | Zone 1 Gridlines 1-21 / South // Install Downspouts | 2d | 2026-01-13 A | 2026-01-13 A | QTS-1002100 SS | 100% | 2026-01-20 | 2026-01-21 |  | Construction | Phase 1 | Core & Shell | IGMP | BAB |  |  |  |  |  |  |
| QTS-1002110 |  | Zone 1 Gridlines 1-21 / South // Inspection on Rebar for Downspout Stub Outs | 1d | 2026-01-14 A | 2026-01-14 A | QTS-1002100 | 100% |  |  |  | Construction | Phase 1 | Core & Shell | IGMP | BAB |  |  |  |  |  |  |
| QTS-1002120 |  | Zone 1 Gridlines 1-21 / South // Pour Concrete Pedestals Downspout Stub Outs | 1d | 2026-01-15 A | 2026-01-20 A | QTS-1002110 | 100% | 2026-01-16 | 2026-01-16 |  | Construction | Phase 1 | Core & Shell | IGMP | BAB |  |  |  |  |  |  |
| QTS-50591 |  | Zone 1 Gridlines 1-21 / South // Install Spandrel Glass Window Glass | 6d | 2026-01-15 A | 2026-01-15 A | QTS-18561, QTS-50581 | 100% | 2026-01-16 | 2026-01-26 |  | Construction | Phase 1 | Core & Shell | IGMP | BAB |  |  |  |  |  |  |
| QTS-50601 |  | Zone 1 Gridlines 1-21 / South // Install Spandrel Glass Window Exterior Caulking | 5d | 2026-01-16 A | 2026-01-28 A | QTS-50591 | 100% | 2026-01-28 | 2026-02-03 |  | Construction | Phase 1 | Core & Shell | IGMP | BAB |  |  |  |  |  |  |
| QTS-49461 |  | Zone 1 Gridlines 1-21 / South // Frame for Metal Panels - Downspouts | 8d | 2026-01-26 A | 2026-01-28 A | QTS-100720, QTS-100200, QTS-24401, QTS-6981, QTS-50581, QTS-1002130 | 100% | 2026-01-26 | 2026-02-04 | 01ADMIN | Construction | Phase 1 | Core & Shell | IGMP | BAB |  | Construction |  |  |  |  |
|  | 3 | **Fragnet / RFI 826 Drain Line Discrepancy** |  | 2026-01-30 | 2026-02-27 |  |  |  |  |  |  |  |  |  |  |  |  |  |  |  |  |
| QTS-1005020 |  | Fragnet / RFI #826: Drain Line Discrepancy Submission | 10d | 2026-01-30 A | 2026-01-30 A | QTS-1002120 | 100% | 2026-02-16 | 2026-02-27 | 01ADMIN | Construction | Phase 1 | Core & Shell | IGMP | BAB |  |  | Fragnet | True Metal Solutions, LLC |  |  |
| QTS-1005030 |  | Fragnet / RFI #826: Engineer Review RFI #826 | 8d | 2026-02-02 A | 2026-02-17 A | QTS-1005020 | 100% | 2026-02-17 | 2026-02-26 | 01ADMIN | Construction | Phase 1 | Core & Shell | IGMP | BAB |  | Construction | Fragnet | True Metal Solutions, LLC |  |  |
| QTS-1005330 |  | Fragnet / RFI #826: Procurement of Material for Modified Downspouts | 5d | 2026-02-18 A | 2026-02-27 A | QTS-1005030 | 100% | 2026-02-18 | 2026-02-24 | 01ADMIN | Construction | Phase 1 | Core & Shell | IGMP | BAB |  | Construction | Fragnet | True Metal Solutions, LLC |  |  |
|  | 4 | **Fragnet / RFI 832 Scupper Layout** |  | 2026-01-02 | 2026-03-20 |  |  |  |  |  |  |  |  |  |  |  |  |  |  |  |  |
| QTS-1005040 |  | Fragnet / RFI #832: Scupper Layout Alignment Submission | 10d | 2026-01-02 A | 2026-02-02 A | QTS-49461 | 100% | 2026-02-16 | 2026-02-27 | 01ADMIN | Construction | Phase 1 | Core & Shell | IGMP | BAB |  |  | Fragnet | True Metal Solutions, LLC |  |  |
| QTS-1005050 |  | Fragnet / RFI #832: Engineer Review | 8d | 2026-02-03 A | 2026-02-10 A | QTS-1005040 | 100% | 2026-02-17 | 2026-02-26 | 01ADMIN | Construction | Phase 1 | Core & Shell | IGMP | BAB |  | Construction | Fragnet | True Metal Solutions, LLC |  |  |
| QTS-1005300 |  | Fragnet / RFI #832: Subcontractor Cost Impact Analysis | 5d | 2026-02-11 A | 2026-03-04 A | QTS-1005050 | 100% | 2026-02-17 | 2026-02-23 | 01ADMIN | Construction | Phase 1 | Core & Shell | IGMP | BAB |  | Construction | Fragnet | True Metal Solutions, LLC |  |  |
| QTS-1007210 |  | Fragnet / RFI #832: Condensate Drain Line Modification | 5d | 2026-03-09 A | 2026-03-20 A | QTS-1005300 | 100% | 2026-02-17 | 2026-02-23 | 01ADMIN | Construction | Phase 1 | Core & Shell | IGMP | BAB |  | Construction | Fragnet | True Metal Solutions, LLC |  |  |
|  | 1 | **Fragnet / RFI 771** |  | 2025-12-19 | 2026-05-05 |  |  |  |  |  |  |  |  |  |  |  |  |  |  |  |  |
| QTS-1007010 |  | Fragnet / RFI #771: Layton Submits to Design Team | 1d | 2025-12-19 A | 2025-12-19 A | QTS-1371 SS | 100% | 2026-02-17 | 2026-02-17 | 01ADMIN | Construction | Phase 1 | Core & Shell | IGMP | BAB |  | Construction | Fragnet | True Metal Solutions, LLC | Y |  |
| QTS-1007020 |  | Fragnet / RFI #771: Layton Receives Response from Design Team | 5d | 2025-12-19 A | 2026-03-02 A | QTS-1007010 | 100% | 2026-02-17 | 2026-02-23 | 01ADMIN | Construction | Phase 1 | Core & Shell | IGMP | BAB |  | Construction | Fragnet | True Metal Solutions, LLC | Y |  |
| QTS-1007030 |  | Fragnet / RFI #771: Layton Receives Proposal from Subcontractor | 1d | 2026-03-03 A | 2026-03-03 A | QTS-1007020 | 100% | 2026-02-17 | 2026-02-17 | 01ADMIN | Construction | Phase 1 | Core & Shell | IGMP | BAB |  | Construction | Fragnet | True Metal Solutions, LLC | Y |  |
| QTS-1007040 |  | Fragnet / RFI #771: Layton Receives Approval on Proposal from Design Team | 5d | 2026-03-04 A | 2026-04-01 A | QTS-1007030 | 100% | 2026-03-04 | 2026-03-10 | 01ADMIN | Construction | Phase 1 | Core & Shell | IGMP | BAB |  | Construction | Fragnet | True Metal Solutions, LLC | Y |  |
| QTS-1009880 |  | Fragnet / RFI #771: MEP Trades Completing Work | 5d | 2026-04-02 A | 2026-05-05 A | QTS-1007040 | 100% | 2026-04-02 | 2026-04-08 | 01ADMIN | Construction | Phase 1 | Mechanical | IGMP | BAB |  | Construction | Fragnet | True Metal Solutions, LLC | Y | Freddy Arrizon |

Notes:
- QTS-3561: allucent_notes: Jason Johnston on 2025-08-26 15:08: Got an earlier start due to limited access to other areas. / allucent_notes: 2025-08-26 15:08 - User: Jason Johnston - Date Added: 2025-08-26 15:08 - Note: Got an earlier start due to limited access to other areas. / 2025-09-02 15:09 - User: Jason Johnston - Date Added: 2025-09-02 15:09 - Note: access was restricted to building
- QTS-24401: allucent_notes_20251216_165335: Jason Johnston on 2025-10-08 08:10: not done / Jason Johnston on 2025-10-14 14:10: Must wait for TPO roof to be complete / Jason Johnston on 2025-10-27 13:10: Sleeves are installed, but collector boxes are not installed. Delay caused by incorrect grade. / Jason Johnston on 2025-11-03 14:11: Progressive needs to correct crooked sections of roof in order to install downspouts / Freddy Arrizon on 2025-11-10T20:24:45.181Z: Progressive corrected cricket slopes at overflow locations. Suntec, Progressive, and Layton reviewing tomorrow at 07:00am. / Jason Johnston on 2025-11-10 14:11: Will be done by end of next week. Walking 11/11, 5 days to fab, 3 days to install. / Jason Johnston on 2025-11-11 14:11: Scupper opening changed and therefore grading height changed. / Freddy Arrizon on 2025-11-18T19:15:36.945Z: Suntec needs to correct scupper and overflow dimensions. Suntec couldn't access scuppers due to BZI Crane activity on the SS of Zone 1. / Freddy Arrizon on 2025-11-24T20:06:11.444Z: Crane Activity at the southside of DC1 for TES tank install is preventing Suntec from repairing Zone 1 and Zone 2 scupper dimensions. Will need to re-sequence this activity. Zone 3 first, Zone 1, then lastly Zone 2. / Jason Johnston on 2025-11-24 13:11: Close and add new line following zone 3. / Jason Johnston on 2025-12-01 14:14: Delayed until crane for roof pipe moves to zone 2 on 12/5. / Chris Waddell on 2025-12-09 14:22: Need to talk to Ron before updating, will update on 12/10/25 / Ron Carroll on 2025-12-15T20:00:21.974Z: Scuppers will be done today. Collector boxes will be complete 12/19. Bel-aire will start downspouts Monday12/22. / Ron Carroll on 2025-12-15T20:00:26.655Z: null / Ron Carroll on 2025-12-15 13:00: Scuppers will be done today. Collector boxes will be complete 12/19. Bel-aire will start downspouts Monday12/22. / allucent_notes_20251209_203830: Jason Johnston on 2025-10-08 08:10: not done / Jason Johnston on 2025-10-14 14:10: Must wait for TPO roof to be complete / Jason Johnston on 2025-10-27 13:10: Sleeves are installed, but collector boxes are not installed. Delay caused by incorrect grade. / Jason Johnston on 2025-11-03 14:11: Progressive needs to correct crooked sections of roof in order to install downspouts / Freddy Arrizon on 2025-11-10T20:24:45.181Z: Progressive corrected cricket slopes at overflow locations. Suntec, Progressive, and Layton reviewing tomorrow at 07:00am. / Jason Johnston on 2025-11-10 14:11: Will be done by end of next week. Walking 11/11, 5 days to fab, 3 days to install. / Jason Johnston on 2025-11-11 14:11: Scupper opening changed and therefore grading height changed. / Freddy Arrizon on 2025-11-18T19:15:36.945Z: Suntec needs to correct scupper and overflow dimensions. Suntec couldn't access scuppers due to BZI Crane activity on the SS of Zone 1. / Freddy Arrizon on 2025-11-24T20:06:11.444Z: Crane Activity at the southside of DC1 for TES tank install is preventing Suntec from repairing Zone 1 and Zone 2 scupper dimensions. Will need to re-sequence this activity. Zone 3 first, Zone 1, then lastly Zone 2. / Jason Johnston on 2025-11-24 13:11: Close and add new line following zone 3. / Jason Johnston on 2025-12-01 14:14: Delayed until crane for roof pipe moves to zone 2 on 12/5. / Chris Waddell on 2025-12-09 14:22: Need to talk to Ron before updating, will update on 12/10/25 / allucent_notes_20251202_153722: Jason Johnston on 2025-10-08 08:10: not done / Jason Johnston on 2025-10-14 14:10: Must wait for TPO roof to be complete / Jason Johnston on 2025-10-27 13:10: Sleeves are installed, but collector boxes are not installed. Delay caused by incorrect grade. / Jason Johnston on 2025-11-03 14:11: Progressive needs to correct crooked sections of roof in order to install downspouts / Freddy Arrizon on 2025-11-10T20:24:45.181Z: Progressive corrected cricket slopes at overflow locations. Suntec, Progressive, and Layton reviewing tomorrow at 07:00am. / Jason Johnston on 2025-11-10 14:11: Will be done by end of next week. Walking 11/11, 5 days to fab, 3 days to install. / Jason Johnston on 2025-11-11 14:11: Scupper opening changed and therefore grading height changed. / Freddy Arrizon on 2025-11-18T19:15:36.945Z: Suntec needs to correct scupper and overflow dimensions. Suntec couldn't access scuppers due to BZI Crane activity on the SS of Zone 1. / Freddy Arrizon on 2025-11-24T20:06:11.444Z: Crane Activity at the southside of DC1 for TES tank install is preventing Suntec from repairing Zone 1 and Zone 2 scupper dimensions. Will need to re-sequence this activity. Zone 3 first, Zone 1, then lastly Zone 2. / Jason Johnston on 2025-11-24 13:11: Close and add new line following zone 3. / Jason Johnston on 2025-12-01 14:14: Delayed until crane for roof pipe moves to zone 2 on 12/5. / allucent_notes_20251118_192630: Jason Johnston on 2025-10-08 08:10: not done / Jason Johnston on 2025-10-14 14:10: Must wait for TPO roof to be complete / Jason Johnston on 2025-10-27 13:10: Sleeves are installed, but collector boxes are not installed. Delay caused by incorrect grade. / Jason Johnston on 2025-11-03 14:11: Progressive needs to correct crooked sections of roof in order to install downspouts / Freddy Arrizon on 2025-11-10T20:24:45.181Z: Progressive corrected cricket slopes at overflow locations. Suntec, Progressive, and Layton reviewing tomorrow at 07:00am. / Jason Johnston on 2025-11-10 14:11: Will be done by end of next week. Walking 11/11, 5 days to fab, 3 days to install. / Jason Johnston on 2025-11-11 14:11: Scupper opening changed and therefore grading height changed. / Freddy Arrizon on 2025-11-18T19:15:36.945Z: Suntec needs to correct scupper and overflow dimensions. Suntec couldn't access scuppers due to BZI Crane activity on the SS of Zone 1. / allucent_notes_20251111_182405: Jason Johnston on 2025-10-08 08:10: not done / Jason Johnston on 2025-10-14 14:10: Must wait for TPO roof to be complete / Jason Johnston on 2025-10-27 13:10: Sleeves are installed, but collector boxes are not installed. Delay caused by incorrect grade. / Jason Johnston on 2025-11-03 14:11: Progressive needs to correct crooked sections of roof in order to install downspouts / Freddy Arrizon on 2025-11-10T20:24:45.181Z: Progressive corrected cricket slopes at overflow locations. Suntec, Progressive, and Layton reviewing tomorrow at 07:00am. / Jason Johnston on 2025-11-10 14:11: Will be done by end of next week. Walking 11/11, 5 days to fab, 3 days to install. / Jason Johnston on 2025-11-11 14:11: Scupper opening changed and therefore grading height changed. / allucent_notes_20251104_160200: Jason Johnston on 2025-10-08 08:10: not done / Jason Johnston on 2025-10-14 14:10: Must wait for TPO roof to be complete / Jason Johnston on 2025-10-27 13:10: Sleeves are installed, but collector boxes are not installed. Delay caused by incorrect grade. / Jason Johnston on 2025-11-03 14:11: Progressive needs to correct crooked sections of roof in order to install downspouts / allucent_notes_20251028_163138: Jason Johnston on 2025-10-08 08:10: not done / Jason Johnston on 2025-10-14 14:10: Must wait for TPO roof to be complete / Jason Johnston on 2025-10-27 13:10: Sleeves are installed, but collector boxes are not installed. Delay caused by incorrect grade. / allucent_notes_20251027_224008: Jason Johnston on 2025-10-08 08:10: not done / Jason Johnston on 2025-10-14 14:10: Must wait for TPO roof to be complete / Jason Johnston on 2025-10-27 13:10: Sleeves are installed, but collector boxes are not installed. Delay caused by incorrect grade. / allucent_notes_20251021_145627: Jason Johnston on 2025-10-08 08:10: not done / Jason Johnston on 2025-10-14 14:10: Must wait for TPO roof to be complete / allucent_notes_20251014_152335: Jason Johnston on 2025-10-08 08:10: not done / Jason Johnston on 2025-10-14 14:10: Must wait for TPO roof to be complete / allucent_notes_20251230_164549: Jason Johnston on 2025-10-08 08:10: not done / Jason Johnston on 2025-10-14 14:10: Must wait for TPO roof to be complete / Jason Johnston on 2025-10-27 13:10: Sleeves are installed, but collector boxes are not installed. Delay caused by incorrect grade. / Jason Johnston on 2025-11-03 14:11: Progressive needs to correct crooked sections of roof in order to install downspouts / Freddy Arrizon on 2025-11-10T20:24:45.181Z: Progressive corrected cricket slopes at overflow locations. Suntec, Progressive, and Layton reviewing tomorrow at 07:00am. / Jason Johnston on 2025-11-10 14:11: Will be done by end of next week. Walking 11/11, 5 days to fab, 3 days to install. / Jason Johnston on 2025-11-11 14:11: Scupper opening changed and therefore grading height changed. / Freddy Arrizon on 2025-11-18T19:15:36.945Z: Suntec needs to correct scupper and overflow dimensions. Suntec couldn't access scuppers due to BZI Crane activity on the SS of Zone 1. / Freddy Arrizon on 2025-11-24T20:06:11.444Z: Crane Activity at the southside of DC1 for TES tank install is preventing Suntec from repairing Zone 1 and Zone 2 scupper dimensions. Will need to re-sequence this activity. Zone 3 first, Zone 1, then lastly Zone 2. / Jason Johnston on 2025-11-24 13:11: Close and add new line following zone 3. / Jason Johnston on 2025-12-01 14:14: Delayed until crane for roof pipe moves to zone 2 on 12/5. / Chris Waddell on 2025-12-09 14:22: Need to talk to Ron before updating, will update on 12/10/25 / Ron Carroll on 2025-12-15T20:00:21.974Z: Scuppers will be done today. Collector boxes will be complete 12/19. Bel-aire will start downspouts Monday12/22. / Ron Carroll on 2025-12-15T20:00:26.655Z: null / Ron Carroll on 2025-12-15 13:00: Scuppers will be done today. Collector boxes will be complete 12/19. Bel-aire will start downspouts Monday12/22. / Jason Johnston on 2025-12-30 16:35: No update / allucent_notes: 2025-10-08 08:10 - User: Jason Johnston - Date Added: 2025-10-08 08:10 - Note: not done / 2025-10-14 14:10 - User: Jason Johnston - Date Added: 2025-10-14 14:10 - Note: Must wait for TPO roof to be complete / 2025-10-27 13:10 - User: Jason Johnston - Da
- QTS-49461: allucent_notes_20251202_153722: Jason Johnston on 2025-11-11 14:11: Impacted by bulletin 4 TES tank grating and set. / allucent_notes_20251118_192630: Jason Johnston on 2025-11-11 14:11: Impacted by bulletin 4 TES tank grating and set. / allucent_notes_20251111_182405: Jason Johnston on 2025-11-11 14:11: Impacted by bulletin 4 TES tank grating and set. / allucent_notes_20251230_164549: Jason Johnston on 2025-11-11 14:11: Impacted by bulletin 4 TES tank grating and set. / allucent_notes: 2025-11-11 14:11 - User: Jason Johnston - Date Added: 2025-11-11 14:11 - Note: Impacted by bulletin 4 TES tank grating and set.
- QTS-1005020: Scheduler Notes: RFI-0826 - Drain Line Discrepancy at Stair Tower 4 & 7 / (3)
- QTS-1005040: Scheduler Notes: RFI-0832 - Scupper Layout Alignment Issue - / expedite_response
- QTS-1007010: Scheduler Notes: 3/24: Layton waiting for approval from QTS.
- QTS-1007040: Scheduler Notes: 3/24: Layton waiting for approval from QTS. / Notes: 3/24: Layton waiting for approval from QTS.
- QTS-1009880: Scheduler Notes: 04/28: Need MEP to start. 4/14: Change order approved but work has not / begun. - 04/21: Need MEP to start. 4/14: Change order approved but work has not / begun. 3/24: Layton waiting for approval from / QTS. / Notes: 04/28: Need MEP to start. 4/14: Change order approved but work has not begun. - 04/21: Need MEP to start. 4/14: Change order approved but work has not begun. 3/24: Layton waiting for approval from QTS.

| ID | WBS | Activity | Duration | Start | Finish | Predecessors | Complete | Remaining | Planned start | Planned finish | Total float | Free float | Allucent CSI Group | Project Section | Phase-1 | Layton Discipline | Baseline | Contract | Project Section-1 | Layton Super | Location | Phase-1-1 |
| --- | --- | --- | --- | --- | --- | --- | --- | --- | --- | --- | --- | --- | --- | --- | --- | --- | --- | --- | --- | --- | --- | --- |
|  | 2 | **Remaining Scope** |  | 2026-02-23 | 2026-08-19 |  |  |  |  |  |  |  |  |  |  |  |  |  |  |  |  |  |
| QTS-101710 |  | Zone 1 Gridlines 1-21 / South // Set Louvered Metal Screen Wall | 10d | 2026-02-23 A | 2026-03-27 A | QTS-28071 | 100% |  | 2026-02-23 | 2026-03-06 |  |  | 01ADMIN | Construction | Phase 1 | Core & Shell | IGMP | BAB |  |  |  |  |
| QTS-3201 |  | Zone 1 Gridlines 1-21 / South // Set Louvered Metal Screen Wall | 10d | 2026-03-30 A | 2026-03-30 A | QTS-101710, QTS-28071, QTS-23621 | 100% |  | 2026-03-30 | 2026-04-10 |  |  | 01ADMIN | Construction | Phase 1 | Core & Shell | IGMP | BAB |  |  |  |  |
| QTS-1002140 |  | Zone 1 Gridlines 1-21 / South // Frame Metal Panels - Steel Stair Enclosure | 8d | 2026-04-02 A | 2026-05-05 A | QTS-49461, QTS-46891, QTS-1005030, QTS-1005330, QTS-1007040, QTS-1009880 FF+2d | 100% |  | 2026-04-02 | 2026-04-13 |  |  | 01ADMIN | Construction | Phase 1 | Build Out | IGMP | BAB | Construction | Freddy Arrizon |  |  |
| QTS-1002150 |  | Zone 1 Gridlines 1-21 / South // Install Metal Panel Z Clips - Downspouts | 8d | 2026-05-26 A | 2026-06-09 A | QTS-49461, QTS-1005300, QTS-1007210, QTS-1007040, QTS-1009880 | 100% |  | 2026-05-20 | 2026-06-01 |  |  | 01ADMIN | Construction | Phase 1 | Build Out | IGMP | BAB | Construction | Freddy Arrizon | EXT |  |
| QTS-1002180 |  | Zone 1 Gridlines 1-21 / South // Install ACM Panels - Downspout #1 | 11d | 2026-06-18 A | 2026-07-02 A | QTS-1002160 | 100% |  | 2026-07-01 | 2026-07-16 |  |  | 01ADMIN | Construction | Phase 1 | Build Out | IGMP | BAB | Construction | Freddy Arrizon | EXT |  |
| QTS-1002190 |  | Zone 1 Gridlines 1-21 / South // Install ACM Panels - Downspout #2 | 10d | 2026-06-18 A | 2026-07-02 A | QTS-1002180 SS | 100% |  | 2026-07-08 | 2026-07-21 |  |  | 01ADMIN | Construction | Phase 1 | Build Out | IGMP | BAB | Construction | Freddy Arrizon |  |  |
| QTS-1002160 |  | Zone 1 Gridlines 1-21 / South // Install Metal Panel Trim - Downspouts | 4d | 2026-06-24 A | 2026-06-29 A | QTS-1002150, QTS-1002120 | 100% |  | 2026-07-01 | 2026-07-07 |  |  | 01ADMIN | Construction | Phase 1 | Build Out | IGMP | BAB | Construction | Freddy Arrizon | EXT |  |
| QTS-1002200 |  | Zone 1 Gridlines 1-21 / South // Install ACM Panels - Downspout #3 | 10d | 2026-07-06 A | 2026-07-15 A | QTS-1002190 | 100% |  | 2026-07-08 | 2026-07-21 |  |  | 01ADMIN | Construction | Phase 1 | Build Out | IGMP | BAB | Construction | Freddy Arrizon |  |  |
| QTS-1009890 |  | Zone 1 Gridlines 1-21 / South // Complete Remaining Louvered Metal Screen Wall | 5d | 2026-07-15 A | 2026-07-20 A | QTS-1005240 | 100% |  | 2026-07-22 | 2026-07-28 |  |  | 01ADMIN | Construction | Phase 1 | Build Out | IGMP | BAB |  | Freddy Arrizon | EXT |  |
| QTS-50111 |  | Zone 1 Gridlines 1-21 / South // Set Spandrel Window Glass | 3d | 2026-07-16 A | 2026-07-20 A | QTS-1002200, QTS-18561 | 100% |  | 2026-07-23 | 2026-07-27 |  |  |  | Construction | Phase 2 | Build Out | IGMP | BAB |  | Freddy Arrizon |  |  |
| QTS-50121 |  | Zone 1 Gridlines 1-21 / South // Caulk Spandrel Windows | 2d | 2026-07-22 A | 2026-07-23 A | QTS-50111 | 100% |  |  |  |  |  |  | Construction | Phase 2 | Build Out | IGMP | BAB |  | Freddy Arrizon |  |  |
| QTS-1002170 |  | Zone 1 Gridlines 1-21 / South // Install Metal Panel Z Clips - Steel Stair Enclosure | 8d | 2026-07-23 A | 2026-07-27 A | QTS-1002140, QTS-1002140 FF | 100% |  | 2026-07-23 | 2026-08-03 |  |  | 01ADMIN | Construction | Phase 1 | Build Out | IGMP | BAB | Construction | Freddy Arrizon | EXT |  |
| QTS-1002210 |  | Zone 1 Gridlines 1-21 / South // Install ACM Panels - Stair Enclosure | 12d | 2026-07-28 A | 2026-08-19 | QTS-1002200, QTS-1002170, QTS-1002170 FF | 92% | 1d | 2026-08-05 | 2026-08-20 | -1d | 0d | 01ADMIN | Construction | Phase 1 | Build Out | IGMP | BAB | Construction | Freddy Arrizon |  |  |
| QTS-1004210 |  | Zone 1 Gridlines 1-21 / South // Install Metal Panel Trim - Steel Stair Enclosure | 1d | 2026-08-19 | 2026-08-19 | QTS-1002170, QTS-1002210 FF |  |  |  |  | -1d | 38d | 01ADMIN | Construction | Phase 1 | Build Out | IGMP | BAB | Construction | Freddy Arrizon | EXT |  |
|  | 1 | **FOH / South Elevation** |  | 2026-02-25 | 2026-05-04 |  |  |  |  |  |  |  |  |  |  |  |  |  |  |  |  |  |
| QTS-49471 |  | Zone 1 Gridlines 1-2 / South // Hang Sheathing for Metal Panels | 4d | 2026-02-25 A | 2026-03-26 A | QTS-49461 | 100% |  | 2026-02-25 | 2026-03-02 |  |  | 01ADMIN | Construction | Phase 1 | Core & Shell | IGMP | BAB | Construction |  |  |  |
| QTS-49481 |  | Zone 1 Gridlines 1-2 / South // Install Weather Barrier & Insulation | 5d | 2026-03-03 A | 2026-03-30 A | QTS-49471 FF | 100% |  | 2026-03-03 | 2026-03-09 |  |  | 01ADMIN | Construction | Phase 1 | Core & Shell | IGMP | BAB | Construction |  |  |  |
| QTS-50501 |  | Zone 1 Gridlines 1-2 / South // Install Strip Glass Window Frames - Upper | 3d | 2026-03-23 A | 2026-03-25 A | QTS-49461, QTS-6981 | 100% |  |  |  |  |  | 01ADMIN | Construction | Phase 1 | Core & Shell | IGMP | BAB |  |  |  |  |
| QTS-1009440 |  | Zone 1 Gridlines 1-2 / South // Install Weather Barrier & Insulation at Parapet Wall | 4d | 2026-04-02 A | 2026-04-03 A | QTS-49481 | 100% |  | 2026-04-01 | 2026-04-06 |  |  | 01ADMIN | Construction | Phase 1 | Core & Shell | IGMP | BAB | Construction |  |  |  |
| QTS-49491 |  | Zone 1 Gridlines 1-2 / South // Inspect Weather Barrier | 1d | 2026-04-20 A | 2026-04-20 A | QTS-49481, QTS-1009440, QTS-1004980 FF, QTS-1010100 | 100% |  |  |  |  |  |  | Construction | Phase 1 | Core & Shell | IGMP | BAB | Construction |  |  |  |
| QTS-49501 |  | Zone 1 Gridlines 1-2 / South // Install Metal Panels | 2d | 2026-04-21 A | 2026-05-04 A | QTS-49491, QTS-49481, QTS-49471 | 100% |  | 2026-04-21 | 2026-04-22 |  |  |  | Construction | Phase 1 | Build Out | IGMP | BAB | Construction | Freddy Arrizon |  |  |
|  | 2 | **Zone 2 / Exterior Finishes** |  | 2025-09-08 | 2026-10-09 |  |  |  |  |  |  |  |  |  |  |  |  |  |  |  |  |  |
|  | 1 | **Zone 2 / Exterior Finishes // South Elevation** |  | 2025-09-09 | 2026-10-09 |  |  |  |  |  |  |  |  |  |  |  |  |  |  |  |  |  |
| QTS-23801 |  | Zone 2 Gridlines 21-30 / South // Sack & Patch Panels | 6d | 2025-09-09 A | 2025-09-16 A | QTS-21521, QTS-23621 | 100% |  |  |  |  |  | 01ADMIN | Construction | Phase 2 | Core & Shell | IGMP | BAB |  |  |  |  |
| QTS-24331 |  | Zone 2 Gridlines 21-30 / South // Power Wash Tilt Panels | 1d | 2025-09-17 A | 2025-09-17 A | QTS-23801 | 100% |  |  |  |  |  | 01ADMIN | Construction | Phase 2 | Core & Shell | IGMP | BAB |  |  |  |  |
| QTS-24391 |  | Zone 2 Gridlines 21-30 / South // Prime & Paint Tilt Panels | 5d | 2025-11-12 A | 2025-11-20 A | QTS-5661, QTS-24331, QTS-23921 | 100% |  | 2025-11-10 | 2025-11-14 |  |  | 01ADMIN | Construction | Phase 2 | Core & Shell | IGMP | BAB |  |  |  |  |
| QTS-24851 |  | Zone 2 Gridlines 21-30 / South // Caulk Panel Joints | 4d | 2025-11-26 A | 2025-12-01 A | QTS-24391 | 100% |  | 2025-11-21 | 2025-11-26 |  |  | 01ADMIN | Construction | Phase 2 | Build Out | IGMP | BAB |  |  |  |  |
| QTS-25151 |  | Zone 2 Gridlines 21-30 / South // Install Collector Boxes | 2d | 2026-01-14 A | 2026-01-15 A | QTS-24851, QTS-1002130 | 100% |  |  |  |  |  | 01ADMIN | Construction |  | Core & Shell | IGMP | BAB | Construction |  |  | Phase 2 |
| QTS-1004130 |  | Zone 2 Gridlines 21-30 / South // Layout Downspout Stub Outs | 5d | 2026-01-16 A | 2026-01-19 A | QTS-25151 | 100% |  | 2026-01-16 | 2026-01-23 |  |  | 01ADMIN | Construction |  | Core & Shell | IGMP | BAB | Construction |  |  | Phase 2 |
| QTS-1004160 |  | Zone 2 Gridlines 21-30 / South // Install Downspouts | 3d | 2026-01-21 A | 2026-01-23 A | QTS-1004150 FF | 100% |  |  |  |  |  | 01ADMIN | Construction |  | Core & Shell | IGMP | BAB | Construction |  |  | Phase 2 |
| QTS-1004140 |  | Zone 2 Gridlines 21-30 / South // Inspection on Rebar for Downspout Stub Outs | 1d | 2026-01-22 A | 2026-01-22 A | QTS-1004130 | 100% |  |  |  |  |  | 01ADMIN | Construction |  | Core & Shell | IGMP | BAB | Construction |  |  | Phase 2 |
| QTS-1004150 |  | Zone 2 Gridlines 21-30 / South // Pour Concrete Pedestals for Downspout Stub Outs | 1d | 2026-01-23 A | 2026-01-23 A | QTS-1004140 | 100% |  |  |  |  |  | 01ADMIN | Construction |  | Core & Shell | IGMP | BAB | Construction |  |  | Phase 2 |
| QTS-50611 |  | Zone 2 Gridlines 21-30 / South // Install Spandrel Glass Window Frames | 9d | 2026-03-16 A | 2026-03-20 A | QTS-24851 | 100% |  | 2026-04-24 | 2026-05-06 |  |  | 01ADMIN | Construction | Phase 1 | Core & Shell | IGMP | BAB |  |  |  |  |
| QTS-50621 |  | Zone 2 Gridlines 21-30 / South // Install Spandrel Glass Window Glass | 6d | 2026-03-23 A | 2026-03-26 A | QTS-18561, QTS-50611 | 100% |  | 2026-03-23 | 2026-03-30 |  |  |  | Construction | Phase 1 | Core & Shell | IGMP | BAB |  |  |  |  |
| QTS-28661 |  | Zone 2 Gridlines 21-30 / South // Set Louvered Metal Screen Wall | 10d | 2026-03-30 A | 2026-05-01 A | QTS-22861 | 100% |  | 2026-03-30 | 2026-04-10 |  |  |  | Construction | Phase 2 | Build Out | IGMP | BAB |  | Freddy Arrizon |  |  |
| QTS-25511 |  | Zone 2 Gridlines 21-30 / South // Frame for Metal Panels - Downspouts | 8d | 2026-04-22 A | 2026-04-27 A | QTS-24851, QTS-24861, QTS-25151, QTS-50611 | 100% |  | 2026-04-22 | 2026-05-01 |  |  |  | Construction | Phase 2 | Core & Shell | IGMP | BAB |  |  |  |  |
| QTS-50631 |  | Zone 2 Gridlines 21-30 / South // Install Spandrel Glass Window Exterior Caulking | 5d | 2026-04-22 A | 2026-04-27 A | QTS-50621 | 100% |  | 2026-04-22 | 2026-04-28 |  |  |  | Construction | Phase 1 | Core & Shell | IGMP | BAB |  |  |  |  |
| QTS-1004220 |  | Zone 2 Gridlines 21-30 / South // Frame Metal Panels - Steel Stair Enclosure | 8d | 2026-05-11 A | 2026-05-14 A | QTS-25511 | 100% |  | 2026-05-11 | 2026-05-20 |  |  | 01ADMIN | Construction | Phase 1 | Build Out | IGMP | BAB | Construction | Freddy Arrizon | EXT |  |
| QTS-28941 |  | Zone 2 Gridlines 21-30 / South // Install Metal Panel Z Clips - Downspouts | 8d | 2026-07-15 A | 2026-07-21 A | QTS-25821, QTS-25511, QTS-1009880, QTS-1002150, QTS-1002180 | 100% |  | 2026-07-22 | 2026-07-31 |  |  |  | Construction | Phase 2 | Build Out | IGMP | BAB |  | Freddy Arrizon | EXT |  |
| QTS-1004170 |  | Zone 2 Gridlines 21-30 / South // Install Metal Panel Trim - Downspouts | 4d | 2026-07-22 A | 2026-07-27 A | QTS-28941 | 100% |  | 2026-07-29 | 2026-08-03 |  |  |  | Construction | Phase 2 | Build Out | IGMP | BAB |  | Freddy Arrizon | EXT |  |
| QTS-1004230 |  | Zone 2 Gridlines 21-30 / South // Install Metal Panel Z Clips - Steel Stair Enclosure | 8d | 2026-07-22 A | 2026-07-28 A | QTS-1004220, QTS-28941 | 100% |  | 2026-07-29 | 2026-08-07 |  |  | 01ADMIN | Construction | Phase 1 | Build Out | IGMP | BAB | Construction | Freddy Arrizon | EXT |  |
| QTS-50081 |  | Zone 2 Gridlines 21-30 / South // Electrical Rough In for Signage | 2d | 2026-07-22 A | 2026-07-24 A | QTS-49461 | 100% |  | 2026-08-31 | 2026-09-01 |  |  | 01ADMIN | Construction | Phase 1 | Electrical | IGMP | BAB |  | Electrical |  |  |
| QTS-1004180 |  | Zone 2 Gridlines 21-30 / South // Install ACM Panels - Downspout #1 | 11d | 2026-07-26 A | 2026-07-31 A | QTS-1004170 | 100% |  | 2026-08-04 | 2026-08-18 |  |  |  | Construction | Phase 2 | Build Out | IGMP | BAB |  | Freddy Arrizon | EXT |  |
| QTS-1004190 |  | Zone 2 Gridlines 21-30 / South // Install ACM Panels - Downspout #2 | 10d | 2026-07-31 A | 2026-08-19 | QTS-1004180 | 90% | 1d | 2026-08-10 | 2026-08-21 | -32d | 0d |  | Construction | Phase 2 | Build Out | IGMP | BAB |  | Freddy Arrizon |  |  |
| QTS-1004200 |  | Zone 2 Gridlines 21-30 / South // Install ACM Panels - Downspout #3 | 8d | 2026-08-19 | 2026-08-28 | QTS-1004190 SS+5d |  |  |  |  | -32d | 0d |  | Construction | Phase 2 | Build Out | IGMP | BAB |  | Freddy Arrizon |  |  |
| QTS-1004250 |  | Zone 2 Gridlines 21-30 / South // Install ACM Panels - Stair Enclosure | 12d | 2026-08-31 | 2026-09-16 | QTS-1004230, QTS-1004200 |  |  |  |  | -24d | 0d | 01ADMIN | Construction | Phase 1 | Build Out | IGMP | BAB | Construction | Freddy Arrizon |  |  |
| QTS-1004240 |  | Zone 2 Gridlines 21-30 / South // Install Metal Panel Trim - Steel Stair Enclosure | 1d | 2026-09-16 | 2026-09-16 | QTS-1004230, QTS-1004250 FF |  |  |  |  | -24d | 15d | 01ADMIN | Construction | Phase 1 | Build Out | IGMP | BAB | Construction | Freddy Arrizon |  |  |
| QTS-50091 |  | Zone 2 Gridlines 21-30 / South // Install QTS Signage | 2d | 2026-10-08 | 2026-10-09 | QTS-49471, QTS-1004240, QTS-1013630 |  |  |  |  | -39d | 0d | 01ADMIN | Construction | Phase 1 | Build Out | IGMP | BAB |  | Freddy Arrizon |  |  |

Notes:
- QTS-101710: Scheduler Notes: 3/24: Completion blocked by fill and flush equipment. / Notes: 3/24: Completion blocked by fill and flush equipment.
- QTS-1002140: Scheduler Notes: 04/21: 3/3: Delayed by RFI #771 / Notes: 04/21: 3/3: Delayed by RFI #771
- QTS-1002150: Scheduler Notes: 04/21: 3/3: Delayed by RFI #771 / Notes: 04/21: 3/10: Delayed by RFI #771
- QTS-1009890: Scheduler Notes: 04/28: Will be complete with coping after first pass is complete. 04/21: / 4/14: Tied to fill and flush equipment removal. / Notes: 04/28: Will be complete with coping after first pass is complete. 04/21: 4/14: Tied to fill and flush equipment removal.
- QTS-50121: Notes: Waiting on TMS to complete panels
- QTS-49491: Scheduler Notes: 4/14: Access limited due to campus work in area. / Notes: 4/14: Access limited due to campus work in area.
- QTS-49501: Scheduler Notes: 04/21: Tracking depending on inspection results / Notes: 04/21: Tracking depending on inspection results
- QTS-24391: allucent_notes_20251202_153722: Jason Johnston on 2025-10-08 08:10: not done / Zack Goertz on 2025-10-14T14:48:26.113Z: Not started. Flow of work made us skip southside of zone 2. And jump to northside of zone 3. Also, should be a Ron Carroll task. / -ZG 10/14 / David Wiltberger on 2025-10-14 12:10: resequencing, / Jason Johnston on 2025-11-03 14:11: Moving out to accommodate campus telecom scope in area. / Jason Johnston on 2025-11-11 14:11: Starting 11/12. / Chris Waddell on 2025-11-18T20:12:43.123Z: panels are primed, weather prevented final coat. / allucent_notes_20251118_192630: Jason Johnston on 2025-10-08 08:10: not done / Zack Goertz on 2025-10-14T14:48:26.113Z: Not started. Flow of work made us skip southside of zone 2. And jump to northside of zone 3. Also, should be a Ron Carroll task. / -ZG 10/14 / David Wiltberger on 2025-10-14 12:10: resequencing, / Jason Johnston on 2025-11-03 14:11: Moving out to accommodate campus telecom scope in area. / Jason Johnston on 2025-11-11 14:11: Starting 11/12. / Chris Waddell on 2025-11-18T20:12:43.123Z: panels are primed, weather prevented final coat. / allucent_notes_20251111_182405: Jason Johnston on 2025-10-08 08:10: not done / Zack Goertz on 2025-10-14T14:48:26.113Z: Not started. Flow of work made us skip southside of zone 2. And jump to northside of zone 3. Also, should be a Ron Carroll task. / -ZG 10/14 / David Wiltberger on 2025-10-14 12:10: resequencing, / Jason Johnston on 2025-11-03 14:11: Moving out to accommodate campus telecom scope in area. / Jason Johnston on 2025-11-11 14:11: Starting 11/12. / allucent_notes_20251104_160200: Jason Johnston on 2025-10-08 08:10: not done / Zack Goertz on 2025-10-14T14:48:26.113Z: Not started. Flow of work made us skip southside of zone 2. And jump to northside of zone 3. Also, should be a Ron Carroll task. / -ZG 10/14 / David Wiltberger on 2025-10-14 12:10: resequencing, / Jason Johnston on 2025-11-03 14:11: Moving out to accommodate campus telecom scope in area. / allucent_notes_20251028_163138: Jason Johnston on 2025-10-08 08:10: not done / Zack Goertz on 2025-10-14T14:48:26.113Z: Not started. Flow of work made us skip southside of zone 2. And jump to northside of zone 3. Also, should be a Ron Carroll task. / -ZG 10/14 / David Wiltberger on 2025-10-14 12:10: resequencing, / allucent_notes_20251027_224008: Jason Johnston on 2025-10-08 08:10: not done / Zack Goertz on 2025-10-14T14:48:26.113Z: Not started. Flow of work made us skip southside of zone 2. And jump to northside of zone 3. Also, should be a Ron Carroll task. / -ZG 10/14 / David Wiltberger on 2025-10-14 12:10: resequencing, / allucent_notes_20251021_145627: Jason Johnston on 2025-10-08 08:10: not done / Zack Goertz on 2025-10-14T14:48:26.113Z: Not started. Flow of work made us skip southside of zone 2. And jump to northside of zone 3. Also, should be a Ron Carroll task. / -ZG 10/14 / David Wiltberger on 2025-10-14 12:10: resequencing, / allucent_notes_20251014_152335: Jason Johnston on 2025-10-08 08:10: not done / Zack Goertz on 2025-10-14T14:48:26.113Z: Not started. Flow of work made us skip southside of zone 2. And jump to northside of zone 3. Also, should be a Ron Carroll task. / -ZG 10/14 / David Wiltberger on 2025-10-14 12:10: resequencing, / allucent_notes: 2025-10-08 08:10 - User: Jason Johnston - Date Added: 2025-10-08 08:10 - Note: not done / 2025-10-14T14:48:26.113Z - User: Zack Goertz - Date Added: 2025-10-14T14:48:26.113Z - Note: Not started. Flow of work made us skip southside of zone 2. And jump to
- QTS-24851: allucent_notes_20251202_153722: Jason Johnston on 2025-11-24 13:11: Tie to Tes tank set for zone 2 / Jason Johnston on 2025-12-01 14:16: Finished early. / allucent_notes: 2025-11-24 13:11 - User: Jason Johnston - Date Added: 2025-11-24 13:11 - Note: Tie to Tes tank set for zone 2 / 2025-12-01 14:16 - User: Jason Johnston - Date Added: 2025-12-01 14:16 - Note: Finished early.
- QTS-25151: allucent_notes_20251216_165335: Jason Johnston on 2025-12-02 14:16: Tie to BAM Crane removal from zone 2 / Freddy Arrizon on 2025-12-16 12:15: Procurement of scuppers in zone 2 is delayed. / allucent_notes_20251209_203830: Jason Johnston on 2025-12-02 14:16: Tie to BAM Crane removal from zone 2 / allucent_notes_20251202_153722: Jason Johnston on 2025-12-02 14:16: Tie to BAM Crane removal from zone 2 / allucent_notes_20251230_164549: Jason Johnston on 2025-12-02 14:16: Tie to BAM Crane removal from zone 2 / Freddy Arrizon on 2025-12-16 12:15: Procurement of scuppers in zone 2 is delayed. / Jason Johnston on 2025-12-30 16:35: No update / allucent_notes: 2025-12-02 14:16 - User: Jason Johnston - Date Added: 2025-12-02 14:16 - Note: Tie to BAM Crane removal from zone 2 / 2025-12-16 12:15 - User: Freddy Arrizon - Date Added: 2025-12-16 12:15 - Note: Procurement of scuppers in zone 2 is delayed. / 2025-12
- QTS-1004130: allucent_notes_20251216_165335: Jason Johnston on 2025-12-02 14:16: Tie to BAM Crane removal from zone 2 / Freddy Arrizon on 2025-12-16 12:15: Procurement of scuppers in zone 2 is delayed. / allucent_notes_20251209_203830: Jason Johnston on 2025-12-02 14:16: Tie to BAM Crane removal from zone 2 / allucent_notes_20251202_153722: Jason Johnston on 2025-12-02 14:16: Tie to BAM Crane removal from zone 2 / allucent_notes_20251230_164549: Jason Johnston on 2025-12-02 14:16: Tie to BAM Crane removal from zone 2 / Freddy Arrizon on 2025-12-16 12:15: Procurement of scuppers in zone 2 is delayed. / Jason Johnston on 2025-12-30 16:35: No update / allucent_notes: 2025-12-02 14:16 - User: Jason Johnston - Date Added: 2025-12-02 14:16 - Note: Tie to BAM Crane removal from zone 2 / 2025-12-16 12:15 - User: Freddy Arrizon - Date Added: 2025-12-16 12:15 - Note: Procurement of scuppers in zone 2 is delayed. / 2025-12
- QTS-1004160: allucent_notes_20251216_165335: Jason Johnston on 2025-12-02 14:16: Tie to BAM Crane removal from zone 2 / Freddy Arrizon on 2025-12-16 12:15: Procurement of scuppers in zone 2 is delayed. / allucent_notes_20251209_203830: Jason Johnston on 2025-12-02 14:16: Tie to BAM Crane removal from zone 2 / allucent_notes_20251202_153722: Jason Johnston on 2025-12-02 14:16: Tie to BAM Crane removal from zone 2 / allucent_notes_20251230_164549: Jason Johnston on 2025-12-02 14:16: Tie to BAM Crane removal from zone 2 / Freddy Arrizon on 2025-12-16 12:15: Procurement of scuppers in zone 2 is delayed. / Jason Johnston on 2025-12-30 16:35: No update / allucent_notes: 2025-12-02 14:16 - User: Jason Johnston - Date Added: 2025-12-02 14:16 - Note: Tie to BAM Crane removal from zone 2 / 2025-12-16 12:15 - User: Freddy Arrizon - Date Added: 2025-12-16 12:15 - Note: Procurement of scuppers in zone 2 is delayed. / 2025-12
- QTS-1004140: allucent_notes_20251216_165335: Jason Johnston on 2025-12-02 14:16: Tie to BAM Crane removal from zone 2 / Freddy Arrizon on 2025-12-16 12:15: Procurement of scuppers in zone 2 is delayed. / allucent_notes_20251209_203830: Jason Johnston on 2025-12-02 14:16: Tie to BAM Crane removal from zone 2 / allucent_notes_20251202_153722: Jason Johnston on 2025-12-02 14:16: Tie to BAM Crane removal from zone 2 / allucent_notes_20251230_164549: Jason Johnston on 2025-12-02 14:16: Tie to BAM Crane removal from zone 2 / Freddy Arrizon on 2025-12-16 12:15: Procurement of scuppers in zone 2 is delayed. / Jason Johnston on 2025-12-30 16:35: No update / allucent_notes: 2025-12-02 14:16 - User: Jason Johnston - Date Added: 2025-12-02 14:16 - Note: Tie to BAM Crane removal from zone 2 / 2025-12-16 12:15 - User: Freddy Arrizon - Date Added: 2025-12-16 12:15 - Note: Procurement of scuppers in zone 2 is delayed. / 2025-12
- QTS-1004150: allucent_notes_20251216_165335: Jason Johnston on 2025-12-02 14:16: Tie to BAM Crane removal from zone 2 / Freddy Arrizon on 2025-12-16 12:15: Procurement of scuppers in zone 2 is delayed. / allucent_notes_20251209_203830: Jason Johnston on 2025-12-02 14:16: Tie to BAM Crane removal from zone 2 / allucent_notes_20251202_153722: Jason Johnston on 2025-12-02 14:16: Tie to BAM Crane removal from zone 2 / allucent_notes_20251230_164549: Jason Johnston on 2025-12-02 14:16: Tie to BAM Crane removal from zone 2 / Freddy Arrizon on 2025-12-16 12:15: Procurement of scuppers in zone 2 is delayed. / Jason Johnston on 2025-12-30 16:35: No update / allucent_notes: 2025-12-02 14:16 - User: Jason Johnston - Date Added: 2025-12-02 14:16 - Note: Tie to BAM Crane removal from zone 2 / 2025-12-16 12:15 - User: Freddy Arrizon - Date Added: 2025-12-16 12:15 - Note: Procurement of scuppers in zone 2 is delayed. / 2025-12
- QTS-28661: Scheduler Notes: 04/21: Tracking towards EF of 04/30 / Notes: 04/21: Tracking towards EF of 04/30

| ID | WBS | Activity | Duration | Start | Finish | Predecessors | Complete | Planned start | Planned finish | Allucent CSI Group | Project Section | Phase-1 | Layton Discipline | Baseline | Contract | Fragnet | Fragnet Responsible Party | Layton Super | Phase-1-1 | Project Section-1 |
| --- | --- | --- | --- | --- | --- | --- | --- | --- | --- | --- | --- | --- | --- | --- | --- | --- | --- | --- | --- | --- |
|  | 3 | **Zone 2 / Exterior Finishes // North Elevation** |  | 2025-09-08 | 2026-04-20 |  |  |  |  |  |  |  |  |  |  |  |  |  |  |  |
| QTS-1211 |  | Zone 2 Gridlines 21-30 / North // Sack & Patch Panels | 5d | 2025-09-08 A | 2025-09-12 A | QTS-23801 SS | 100% | 2025-09-17 | 2025-09-23 | 01ADMIN | Construction | Phase 2 | Core & Shell | IGMP | BAB |  |  |  |  |  |
| QTS-3571 |  | Zone 2 Gridlines 21-30 / North // Power Wash Tilt Panels | 1d | 2025-09-15 A | 2025-09-15 A | QTS-1211 | 100% | 2025-09-24 | 2025-09-24 | 01ADMIN | Construction | Phase 2 | Core & Shell | IGMP | BAB |  |  |  |  |  |
| QTS-3621 |  | Zone 2 Gridlines 21-30 / North // Prime & Paint Tilt Panels | 5d | 2025-09-16 A | 2025-09-19 A | QTS-3571 | 100% | 2025-09-25 | 2025-10-01 | 01ADMIN | Construction | Phase 2 | Core & Shell | IGMP | BAB |  |  |  |  |  |
| QTS-5451 |  | Zone 2 Gridlines 21-30 / North // Caulk Panel Joints | 4d | 2025-09-22 A | 2025-09-25 A | QTS-3621 | 100% |  |  |  | Construction | Phase 2 | Core & Shell | IGMP | BAB |  |  |  |  |  |
|  | 1 | **Fragnet / Exterior Door Frame Repair** |  | 2026-03-31 | 2026-04-02 |  |  |  |  |  |  |  |  |  |  |  |  |  |  |  |
| QTS-1007450 |  | Fragnet / Evaluate and Repair Exterior Door Frames | 6d | 2026-03-31 A | 2026-04-02 A | QTS-1371 SS | 100% | 2026-04-01 | 2026-04-08 | 01ADMIN | Construction | Phase 2 | Core & Shell | IGMP | BAB | Fragnet | ISEC Inc. |  |  |  |
|  | 2 | **Remaining Scope** |  | 2026-03-27 | 2026-04-20 |  |  |  |  |  |  |  |  |  |  |  |  |  |  |  |
| QTS-1221 |  | Zone 2 Gridlines 21-30 / North // Set Single Skin Metal Screen Wall | 10d | 2026-03-27 A | 2026-04-10 A | QTS-25501, QTS-5461 | 100% | 2026-07-01 | 2026-07-15 | 01ADMIN | Construction | Phase 2 | Build Out | IGMP | BAB |  |  | Freddy Arrizon |  |  |
| QTS-5461 |  | Zone 2 Gridlines 21-30 / North // Hang Exterior Doors & Frames | 2d | 2026-04-08 A | 2026-04-20 A | QTS-5451, QTS-99630, QTS-99620, QTS-3621, QTS-1007450 | 100% | 2026-04-08 | 2026-04-09 | 01ADMIN | Construction | Phase 2 | Core & Shell | IGMP | BAB |  |  |  |  |  |
|  | 3 | **Zone 3 / Exterior Finishes** |  | 2025-09-26 | 2026-10-27 |  |  |  |  |  |  |  |  |  |  |  |  |  |  |  |
|  | 3 | **Zone 3 / Exterior Finishes // North Elevation** |  | 2025-09-26 | 2026-06-26 |  |  |  |  |  |  |  |  |  |  |  |  |  |  |  |
| QTS-5471 |  | Zone 3 Gridlines 30-41 / North // Sack & Patch Panels | 7d | 2025-09-26 A | 2025-10-06 A | QTS-23261, QTS-3561 | 100% |  |  |  | Construction | Phase 3 | Core & Shell | IGMP | BAB |  |  |  |  |  |
| QTS-6711 |  | Zone 3 Gridlines 30-41 / North // Power Wash Tilt Panels | 1d | 2025-10-07 A | 2025-10-07 A | QTS-5471 | 100% |  |  |  | Construction | Phase 3 | Core & Shell | IGMP | BAB |  |  |  |  |  |
| QTS-6991 |  | Zone 3 Gridlines 30-41 / North // Prime & Paint Tilt Panels | 5d | 2025-10-08 A | 2025-10-14 A | QTS-6711, QTS-5661 | 100% |  |  | 01ADMIN | Construction | Phase 3 | Build Out | IGMP | BAB |  |  | Doug Hayes |  |  |
| QTS-8531 |  | Zone 3 Gridlines 30-41 / North // Caulk Panel Joints | 3d | 2025-10-15 A | 2025-10-17 A | QTS-6991 | 100% |  |  | 01ADMIN | Construction | Phase 3 | Build Out | IGMP | BAB |  |  | Doug Hayes |  |  |
| QTS-50761 |  | Zone 3 Gridlines 30-41 / North // Field Measure OH Doors | 1d | 2025-10-20 A | 2025-10-20 A | QTS-8531 | 100% |  |  | 01ADMIN | Construction |  | Build Out | IGMP | BAB |  |  | Doug Hayes | Phase 2 | Construction |
| QTS-8551 |  | Zone 3 Gridlines 30-41 / North // Hang OH Doors | 6d | 2026-01-19 A | 2026-03-24 A | QTS-50771, QTS-6991 | 100% | 2026-01-20 | 2026-01-27 |  | Construction |  | Core & Shell | IGMP | BAB |  |  |  | Phase 3 | Construction |
| QTS-20901 |  | Zone 3 Gridlines 30-41 / North // Set Loading Dock Steel Frames | 3d | 2026-01-28 A | 2026-02-27 A | QTS-15391, QTS-8551 SS | 100% | 2026-01-28 | 2026-01-30 |  | Construction |  | Core & Shell | IGMP | BAB |  |  |  | Phase 3 | Construction |
| QTS-21071 |  | Zone 3 Gridlines 30-41 / North // Install Dock Scissor Lift | 2d | 2026-03-02 A | 2026-03-03 A | QTS-20901 | 100% |  |  |  | Construction |  | Core & Shell | IGMP | BAB |  |  |  | Phase 3 | Construction |
| QTS-21371 |  | Zone 3 Gridlines 30-41 / North // Install Dock Bumpers | 2d | 2026-03-09 A | 2026-03-10 A | QTS-20901 | 100% |  |  |  | Construction |  | Core & Shell | IGMP | BAB |  |  |  | Phase 3 | Construction |
| QTS-21061 |  | Zone 3 Gridlines 30-41 / North // Install Dock Levelers | 3d | 2026-03-10 A | 2026-03-19 A | QTS-20901 | 100% | 2026-03-10 | 2026-03-12 |  | Construction |  | Core & Shell | IGMP | BAB |  |  |  | Phase 3 | Construction |
| QTS-21501 |  | Zone 3 Gridlines 30-41 / North // Tie In Electrical Connections to Dock Equipment | 5d | 2026-03-20 A | 2026-03-26 A | QTS-21371, QTS-21071, QTS-21061 | 100% |  |  |  | Construction |  | Core & Shell | IGMP | BAB |  |  |  | Phase 3 | Construction |
| QTS-8541 |  | Zone 3 Gridlines 30-41 / North // Hang Exterior Doors & Frames | 2d | 2026-04-10 A | 2026-04-20 A | QTS-99630, QTS-6991, QTS-5461 FF, QTS-1007450 | 100% | 2026-04-10 | 2026-04-13 | 01ADMIN | Construction | Phase 3 | Core & Shell | IGMP | BAB |  |  |  |  |  |
| QTS-25501 |  | Zone 3 Gridlines 30-41 / North // Set Single Skin Metal Screen Wall | 5d | 2026-06-10 A | 2026-06-26 A | QTS-24581 | 100% | 2026-06-24 | 2026-06-30 | 01ADMIN | Construction |  | Build Out | IGMP | BAB |  |  | Freddy Arrizon | Phase 3 | Construction |

Notes:
- QTS-1007450: allucent_notes_20251216_165335: Jason Johnston on 2025-09-30 15:09: Moving out a ways needs resequencing. / Zack Goertz on 2025-10-14T14:49:15.500Z: No doors here. Also, needs resequencing. Flow of work has zone 2 being last. / -ZG 10/14 / Jason Johnston on 2025-10-14 14:10: TIe to HM Door frame and HM Doors delivery - make two different line items. / allucent_notes_20251209_203830: Jason Johnston on 2025-09-30 15:09: Moving out a ways needs resequencing. / Zack Goertz on 2025-10-14T14:49:15.500Z: No doors here. Also, needs resequencing. Flow of work has zone 2 being last. / -ZG 10/14 / Jason Johnston on 2025-10-14 14:10: TIe to HM Door frame and HM Doors delivery - make two different line items. / allucent_notes_20251014_152335: Jason Johnston on 2025-09-30 15:09: Moving out a ways needs resequencing. / Zack Goertz on 2025-10-14T14:49:15.500Z: No doors here. Also, needs resequencing. Flow of work has zone 2 being last. / -ZG 10/14 / Jason Johnston on 2025-10-14 14:10: TIe to HM Door frame and HM Doors delivery - make two different line items. / allucent_notes_20251230_164549: Jason Johnston on 2025-09-30 15:09: Moving out a ways needs resequencing. / Zack Goertz on 2025-10-14T14:49:15.500Z: No doors here. Also, needs resequencing. Flow of work has zone 2 being last. / -ZG 10/14 / Jason Johnston on 2025-10-14 14:10: TIe to HM Door frame and HM Doors delivery - make two different line items. / Scheduler Notes: Jason Johnston on 2025-09-30 15:09: Moving out a ways needs resequencing. / Zack Goertz on 2025-10-14T14:49:15.500Z: No doors here. Also, needs / resequencing. Flow of work has zone 2 being last. / -ZG 10/14 / Jason Johnston on 2025-10-14 14:10: TIe to HM Door frame and HM Doors / delivery - make two different line items. / 3/10: Frame was damaged and needs to be repaired. / Notes: 3/10: Frame was damaged and needs to be repaired. / allucent_notes: 2025-09-30 15:09 - User: Jason Johnston - Date Added: 2025-09-30 15:09 - Note: Moving out a ways needs resequencing. / 2025-10-14T14:49:15.500Z - User: Zack Goertz - Date Added: 2025-10-14T14:49:15.500Z - Note: No doors here. Also, needs resequencing. Fl
- QTS-5461: allucent_notes_20251216_165335: Jason Johnston on 2025-09-30 15:09: Moving out a ways needs resequencing. / Zack Goertz on 2025-10-14T14:49:15.500Z: No doors here. Also, needs resequencing. Flow of work has zone 2 being last. / -ZG 10/14 / Jason Johnston on 2025-10-14 14:10: TIe to HM Door frame and HM Doors delivery - make two different line items. / allucent_notes_20251209_203830: Jason Johnston on 2025-09-30 15:09: Moving out a ways needs resequencing. / Zack Goertz on 2025-10-14T14:49:15.500Z: No doors here. Also, needs / resequencing. Flow of work has zone 2 being last. / -ZG 10/14 / Jason Johnston on 2025-10-14 14:10: TIe to HM Door frame and HM Doors / delivery - make two different line items. / allucent_notes_20251014_152335: Jason Johnston on 2025-09-30 15:09: Moving out a ways needs resequencing. / Zack Goertz on 2025-10-14T14:49:15.500Z: No doors here. Also, needs / resequencing. Flow of work has zone 2 being last. / -ZG 10/14 / Jason Johnston on 2025-10-14 14:10: TIe to HM Door frame and HM Doors / delivery - make two different line items. / allucent_notes_20251230_164549: Jason Johnston on 2025-09-30 15:09: Moving out a ways needs resequencing. / Zack Goertz on 2025-10-14T14:49:15.500Z: No doors here. Also, needs resequencing. Flow of work has zone 2 being last. / -ZG 10/14 / Jason Johnston on 2025-10-14 14:10: TIe to HM Door frame and HM Doors delivery - make two different line items. / Scheduler Notes: Jason Johnston on 2025-09-30 15:09: Moving out a ways needs resequencing. / Zack Goertz on 2025-10-14T14:49:15.500Z: No doors here. Also, needs / resequencing. Flow of work has zone 2 being last. / -ZG 10/14 / Jason Johnston on 2025-10-14 14:10: TIe to HM Door frame and HM Doors / delivery - make two different line items. / 4/14: Frame installed but door not hung yet. 3/10: Frame was / damaged and needs to be repaired. / Notes: 4/14: Frame installed but door not hung yet. 3/10: Frame was damaged and needs to be repaired. / allucent_notes: 2025-09-30 15:09 - User: Jason Johnston - Date Added: 2025-09-30 15:09 - Note: Moving out a ways needs resequencing. / 2025-10-14T14:49:15.500Z - User: Zack Goertz - Date Added: 2025-10-14T14:49:15.500Z - Note: No doors here. Also, needs resequencing. Fl
- QTS-6991: allucent_notes_20251014_152335: Zack Goertz on 2025-10-14T14:50:26.313Z: Should be a Ron Carroll task now. / -ZG 10/14 / allucent_notes: 2025-10-14T14:50:26.313Z - User: Zack Goertz - Date Added: 2025-10-14T14:50:26.313Z - Note: Should be a Ron Carroll task now. -ZG 10/14
- QTS-8541: allucent_notes_20251216_165335: Zack Goertz on 2025-10-21T17:22:13.142Z: Starting back of house. BOH is higher priority than Zone 3 / Zack Goertz on 2025-10-21T17:26:38.554Z: Ignore last comment. Exterior door has been installed into tilt panel wall / Jason Johnston on 2025-10-21 13:10: Procurement not until December / Zack Goertz on 2025-10-27T13:59:24.887Z: Exterior frames have been installed. Door projected to be here in January / allucent_notes_20251209_203830: Zack Goertz on 2025-10-21T17:22:13.142Z: Starting back of house. BOH is higher priority than Zone 3 / Zack Goertz on 2025-10-21T17:26:38.554Z: Ignore last comment. Exterior door has been installed into tilt panel wall / Jason Johnston on 2025-10-21 13:10: Procurement not until December / Zack Goertz on 2025-10-27T13:59:24.887Z: Exterior frames have been installed. Door projected to be here in January / allucent_notes_20251027_224008: Zack Goertz on 2025-10-21T17:22:13.142Z: Starting back of house. BOH is higher priority than Zone 3 / Zack Goertz on 2025-10-21T17:26:38.554Z: Ignore last comment. Exterior door has been installed into tilt panel wall / Jason Johnston on 2025-10-21 13:10: Procurement not until December / Zack Goertz on 2025-10-27T13:59:24.887Z: Exterior frames have been installed. Door projected to be here in January / allucent_notes_20251021_145627: Zack Goertz on 2025-10-21T17:22:13.142Z: Starting back of house. BOH is higher priority than Zone 3 / Zack Goertz on 2025-10-21T17:26:38.554Z: Ignore last comment. Exterior door has been installed into tilt panel wall / Jason Johnston on 2025-10-21 13:10: Procurement not until December / allucent_notes_20251230_164549: Zack Goertz on 2025-10-21T17:22:13.142Z: Starting back of house. BOH is higher priority than Zone 3 / Zack Goertz on 2025-10-21T17:26:38.554Z: Ignore last comment. Exterior door has been installed into tilt panel wall / Jason Johnston on 2025-10-21 13:10: Procurement not until December / Zack Goertz on 2025-10-27T13:59:24.887Z: Exterior frames have been installed. Door projected to be here in January / Scheduler Notes: Zack Goertz on 2025-10-21T17:22:13.142Z: Starting back of house. BOH is / higher priority than Zone 3 / Zack Goertz on 2025-10-21T17:26:38.554Z: Ignore last comment. Exterior door / has been installed into tilt panel wall / Jason Johnston on 2025-10-21 13:10: Procurement not until December / Zack Goertz on 2025-10-27T13:59:24.887Z: Exterior frames have been installed. / Door projected to be here in January / 4/14: Frame installed but door not hung yet. 3/10: Frame was / damaged and needs to be repaired. / Notes: 4/14: Frame installed but door not hung yet. 3/10: Frame was damaged and needs to be repaired. / allucent_notes: 2025-10-21T17:22:13.142Z - User: Zack Goertz - Date Added: 2025-10-21T17:22:13.142Z - Note: Starting back of house. BOH is higher priority than Zone 3 / 2025-10-21T17:26:38.554Z - User: Zack Goertz - Date Added: 2025-10-21T17:26:38.554Z - Note: Ignore la

| ID | WBS | Activity | Duration | Start | Finish | Predecessors | Complete | Remaining | Planned start | Planned finish | Total float | Free float | Calendar | Allucent CSI Group | Project Section | Phase-1 | Layton Discipline | Baseline | Contract | Phase-1-1 | Project Section-1 | Layton Super | Location | Notes |
| --- | --- | --- | --- | --- | --- | --- | --- | --- | --- | --- | --- | --- | --- | --- | --- | --- | --- | --- | --- | --- | --- | --- | --- | --- |
|  | 2 | **Zone 3 / Exterior Finishes // East Elevation** |  | 2025-10-10 | 2026-10-13 |  |  |  |  |  |  |  |  |  |  |  |  |  |  |  |  |  |  |  |
| QTS-6701 |  | East Elevation // Sack & Patch Panels | 4d | 2025-10-10 A | 2025-10-17 A | QTS-9691, QTS-5471 | 100% |  | 2025-10-10 | 2025-10-15 |  |  |  | 01ADMIN | Construction | Phase 3 | Core & Shell | IGMP | BAB |  |  |  |  |  |
| QTS-7661 |  | East Elevation // Power Wash Tilt Panels | 1d | 2025-12-03 A | 2025-12-03 A | QTS-10931, QTS-6701 | 100% |  |  |  |  |  |  | 01ADMIN | Construction | Phase 3 | Core & Shell | IGMP | BAB |  |  |  |  |  |
| QTS-24621 |  | East Elevation // Set Window Frames | 3d | 2025-12-08 A | 2025-12-10 A | QTS-10051, QTS-18561 | 100% |  |  |  |  |  |  | 01ADMIN | Construction | Phase 3 | Build Out | IGMP | BAB |  |  |  |  |  |
| QTS-24891 |  | East Elevation // Set Window Glass | 1d | 2025-12-11 A | 2025-12-11 A | QTS-18561, QTS-24621 | 100% |  |  |  |  |  |  | 01ADMIN | Construction | Phase 3 | Build Out | IGMP | BAB |  |  |  |  |  |
| QTS-8521 |  | East Elevation // Prime & Paint Tilt Panels | 3d | 2025-12-11 A | 2026-01-05 A | QTS-7661, QTS-6991 | 100% |  | 2025-12-11 | 2025-12-15 |  |  |  | 01ADMIN | Construction | Phase 3 | Build Out | IGMP | BAB |  |  |  |  |  |
| QTS-25141 |  | East Elevation // Caulk Windows | 2d | 2025-12-12 A | 2025-12-15 A | QTS-24891 | 100% |  |  |  |  |  |  | 01ADMIN | Construction | Phase 3 | Build Out | IGMP | BAB |  |  |  |  |  |
| QTS-50741 |  | East Elevation // Field Measure OH Doors | 1d | 2026-01-05 A | 2026-01-05 A | QTS-10051 | 100% |  |  |  |  |  |  | 01ADMIN | Construction |  | Build Out | IGMP | BAB | Phase 2 | Construction |  |  |  |
| QTS-10051 |  | East Elevation // Caulk Panel Joints | 3d | 2026-01-06 A | 2026-01-09 A | QTS-8521 | 100% |  | 2026-01-06 | 2026-01-08 |  |  |  | 01ADMIN | Construction | Phase 3 | Build Out | IGMP | BAB |  |  |  |  |  |
| QTS-44291 |  | East Elevation // Hang OH Door Level 2 | 6d | 2026-01-19 A | 2026-01-20 A | QTS-50751, QTS-10051 | 100% |  | 2026-01-14 | 2026-01-22 |  |  |  |  | Construction |  | Core & Shell | IGMP | BAB | Phase 3 | Construction |  |  |  |
| QTS-44301 |  | East Elevation // Hang OH Door Level 1 | 6d | 2026-01-20 A | 2026-01-21 A | QTS-44291 FF | 100% |  | 2026-01-20 | 2026-01-27 |  |  |  |  | Construction |  | Core & Shell | IGMP | BAB | Phase 3 | Construction |  |  |  |
| QTS-50451 |  | East Elevation // Install Exterior Doors | 6d | 2026-03-11 A | 2026-03-17 A | QTS-99630, QTS-44301 | 100% |  | 2026-03-11 | 2026-03-18 |  |  |  |  | Construction |  | Core & Shell | IGMP | BAB | Phase 3 | Construction |  |  |  |
| QTS-25711 |  | East Elevation // Set Louvered Metal Screen Wall | 5d | 2026-06-17 A | 2026-06-20 A | QTS-26341, QTS-24581, QTS-1005340 | 100% |  | 2026-06-26 | 2026-07-02 |  |  |  | 01ADMIN | Construction |  | Build Out | IGMP | BAB | Phase 3 | Construction | Freddy Arrizon |  |  |
| QTS-1013630 |  | East Elevation // Receive QTS Signage | 19d | 2026-07-01 A | 2026-10-07 | QTS-25711 |  | 35d | 2026-07-27 | 2026-08-20 | -50d | 0d |  |  | Construction | Phase 3 | Build Out | IGMP | BAB |  |  | Freddy Arrizon |  |  |
| QTS-15221 |  | East Elevation // Inspect Framing & Electrical | 1d | 2026-07-15 A | 2026-07-15 A | QTS-14571 | 100% |  | 2026-07-22 | 2026-07-22 |  |  |  |  | Construction | Phase 3 | Build Out | IGMP | BAB |  |  | Freddy Arrizon | EXT |  |
| QTS-25571 |  | East Elevation // Rough Electrical for QTS Signage | 2d | 2026-10-08 | 2026-10-09 | QTS-15221, QTS-1013630 |  |  |  |  | -50d | 0d |  |  | Construction | Phase 3 | Electrical | IGMP | BAB |  |  | Electrical |  |  |
| QTS-25921 |  | East Elevation // Install QTS Signage | 2d | 2026-10-12 | 2026-10-13 | QTS-25571, QTS-25711 |  |  |  |  | -50d | 17d |  |  | Construction | Phase 3 | Build Out | IGMP | BAB |  |  | Freddy Arrizon |  |  |
|  | 1 | **Zone 3 / Exterior Finishes // South Elevation** |  | 2025-10-01 | 2026-10-02 |  |  |  |  |  |  |  |  |  |  |  |  |  |  |  |  |  |  |  |
| QTS-9691 |  | Zone 3 Gridlines 30-41 / South // Sack & Patch Panels | 7d | 2025-10-01 A | 2025-10-09 A | QTS-5471 | 100% |  |  |  |  |  |  | 01ADMIN | Construction | Phase 3 | Core & Shell | IGMP | BAB |  |  |  |  |  |
| QTS-10801 |  | Zone 3 Gridlines 30-41 / South // Power Wash Tilt Panels | 1d | 2025-10-10 A | 2025-10-10 A | QTS-9691 | 100% |  |  |  |  |  |  | 01ADMIN | Construction | Phase 3 | Core & Shell | IGMP | BAB |  |  |  |  |  |
| QTS-10931 |  | Zone 3 Gridlines 30-41 / South // Prime & Paint Tilt Panels | 5d | 2025-11-21 A | 2025-12-02 A | QTS-24391, QTS-10801 | 100% |  | 2025-11-21 | 2025-12-01 |  |  |  | 01ADMIN | Construction | Phase 3 | Build Out | IGMP | BAB |  |  |  |  |  |
| QTS-1007550 |  | Zone 3 Gridlines 30-41 / South // Scaffold Subcontractor Mobilize to Site | 4d | 2026-03-20 A | 2026-03-20 A | QTS-1007530 FF, QTS-1007500 FF, QTS-1007510 FF, QTS-1007520 FF | 100% |  | 2026-03-23 | 2026-03-26 |  |  |  | 01ADMIN | Construction |  | Core & Shell | IGMP | BAB | Phase 3 | Construction |  |  | 3/11: Sub will not arrive to site until 3/20 for work. |
| QTS-1007560 |  | Zone 3 Gridlines 30-41 / South // Demo Dance Floor | 2d | 2026-03-21 A | 2026-03-22 A | QTS-1007550 | 100% |  | 2026-03-27 | 2026-03-28 |  |  | QTS-PHX3 DC1 - 6 day w/ Holidays | 01ADMIN | Construction |  | Core & Shell | IGMP | BAB | Phase 3 | Construction |  |  | 3/11: Sub will not arrive to site until 3/20 for work. |
| QTS-1004120 |  | Zone 3 Gridlines 30-41 / South // Install Final Tilt Panel | 1d | 2026-03-23 A | 2026-03-23 A | QTS - 1750, QTS - 2890, QTS - 3120, QTS-1007500, QTS-1007510, QTS-1007520, QTS-1007560 | 100% |  |  |  |  |  |  | 01ADMIN | Construction |  | Core & Shell | IGMP | BAB | Phase 3 | Construction |  |  | 3/11: Sub will not arrive to site until 3/20 for work. |
| QTS-1004300 |  | Zone 3 Gridlines 30-41 / South // Sack & Patch Tilt Panel | 3d | 2026-03-25 A | 2026-03-26 A | QTS-1004120 | 100% |  | 2026-03-25 | 2026-03-27 |  |  |  | 01ADMIN | Construction |  | Core & Shell | IGMP | BAB | Phase 3 | Construction |  |  |  |
| QTS-9831 |  | Zone 3 Gridlines 30-41 / South // Install Collector Boxes | 2d | 2026-03-27 A | 2026-03-27 A | QTS-11861, QTS-1004120, QTS-1004160 | 100% |  | 2026-03-27 | 2026-03-30 |  |  |  | 01ADMIN | Construction |  | Core & Shell | IGMP | BAB | Phase 3 | Construction |  |  |  |
| QTS-1004310 |  | Zone 3 Gridlines 30-41 / South // Prime & Paint Tilt Panel | 3d | 2026-03-30 A | 2026-03-31 A | QTS-1004300 | 100% |  | 2026-03-30 | 2026-04-01 |  |  |  | 01ADMIN | Construction |  | Core & Shell | IGMP | BAB | Phase 3 | Construction |  |  |  |
| QTS-1004260 |  | Zone 3 Gridlines 30-41 / South // Layout Downspout Stub Outs | 5d | 2026-03-31 A | 2026-03-31 A | QTS-9831 | 100% |  | 2026-03-31 | 2026-04-06 |  |  |  | 01ADMIN | Construction |  | Core & Shell | IGMP | BAB | Phase 2 | Construction |  |  |  |
| QTS-11861 |  | Zone 3 Gridlines 30-41 / South // Caulk Panel Joints | 2d | 2026-03-31 A | 2026-03-31 A | QTS-101180, QTS-101420, QTS-10931, QTS-1004120 | 100% |  | 2026-04-01 | 2026-04-02 |  |  |  | 01ADMIN | Construction | Phase 3 | Core & Shell | IGMP | BAB |  |  |  |  |  |
| QTS-1004290 |  | Zone 3 Gridlines 30-41 / South // Install Downspouts | 3d | 2026-04-01 A | 2026-04-02 A | QTS-1004260 | 100% |  | 2026-04-01 | 2026-04-03 |  |  |  | 01ADMIN | Construction |  | Core & Shell | IGMP | BAB | Phase 2 | Construction |  |  |  |
| QTS-50641 |  | Zone 3 Gridlines 30-41 / South // Install Spandrel Glass Window Frames - Openings 1&2 | 6d | 2026-04-01 A | 2026-04-02 A | QTS-11861, QTS-1004290 | 100% |  | 2026-04-03 | 2026-04-10 |  |  |  |  | Construction | Phase 1 | Core & Shell | IGMP | BAB |  |  |  |  |  |

Notes:
- QTS-7661: allucent_notes_20251209_203830: Jason Johnston on 2025-10-21 12:10: Starting in zone 1 south and moving to east last. / allucent_notes_20251202_153722: Jason Johnston on 2025-10-21 12:10: Starting in zone 1 south and moving to east last. / allucent_notes_20251118_192630: Jason Johnston on 2025-10-21 12:10: Starting in zone 1 south and moving to east last. / allucent_notes_20251111_182405: Jason Johnston on 2025-10-21 12:10: Starting in zone 1 south and moving to east last. / allucent_notes_20251104_160200: Jason Johnston on 2025-10-21 12:10: Starting in zone 1 south and moving to east last. / allucent_notes_20251028_163138: Jason Johnston on 2025-10-21 12:10: Starting in zone 1 south and moving to east last. / allucent_notes_20251021_145627: Jason Johnston on 2025-10-21 12:10: Starting in zone 1 south and moving to east last. / allucent_notes: 2025-10-21 12:10 - User: Jason Johnston - Date Added: 2025-10-21 12:10 - Note: Starting in zone 1 south and moving to east last.
- QTS-8521: allucent_notes_20251216_165335: Zack Goertz on 2025-10-21T17:23:13.983Z: Working on south exterior walls / Chris Waddell on 2025-12-09 14:24: Painters were waiting for waterproofing to end before painting, will star on Thursday after backfill is complete / Jason Johnston on 2025-12-09 14:35: Will start 12/11 / Chris Waddell on 2025-12-16 12:15: Suntec patchers are working on this elevation, PPC will do final coat Wednesday 12/17/25 / allucent_notes_20251209_203830: Zack Goertz on 2025-10-21T17:23:13.983Z: Working on south exterior walls / Chris Waddell on 2025-12-09 14:24: Painters were waiting for waterproofing to end before painting, will star on Thursday after backfill is complete / Jason Johnston on 2025-12-09 14:35: Will start 12/11 / allucent_notes_20251202_153722: Zack Goertz on 2025-10-21T17:23:13.983Z: Working on south exterior walls / allucent_notes_20251118_192630: Zack Goertz on 2025-10-21T17:23:13.983Z: Working on south exterior walls / allucent_notes_20251111_182405: Zack Goertz on 2025-10-21T17:23:13.983Z: Working on south exterior walls / allucent_notes_20251104_160200: Zack Goertz on 2025-10-21T17:23:13.983Z: Working on south exterior walls / allucent_notes_20251028_163138: Zack Goertz on 2025-10-21T17:23:13.983Z: Working on south exterior walls / allucent_notes_20251021_145627: Zack Goertz on 2025-10-21T17:23:13.983Z: Working on south exterior walls / allucent_notes_20251230_164549: Zack Goertz on 2025-10-21T17:23:13.983Z: Working on south exterior walls / Chris Waddell on 2025-12-09 14:24: Painters were waiting for waterproofing to end before painting, will star on Thursday after backfill is complete / Jason Johnston on 2025-12-09 14:35: Will start 12/11 / Chris Waddell on 2025-12-16 12:15: Suntec patchers are working on this elevation, PPC will do final coat Wednesday 12/17/25 / Chris Waddell on 2025-12-22 14:52: Waiting on Suntec to patch panels for final paint, will complete final on 12/23/25 / Jason Johnston on 2025-12-30 16:35: No update / allucent_notes: 2025-10-21T17:23:13.983Z - User: Zack Goertz - Date Added: 2025-10-21T17:23:13.983Z - Note: Working on south exterior walls / 2025-12-09 14:24 - User: Chris Waddell - Date Added: 2025-12-09 14:24 - Note: Painters were waiting for waterproofing to end bef
- QTS-9691: allucent_notes_20251014_152335: Jason Johnston on 2025-10-07 12:10: Working around the building switched East and South elevation order. / allucent_notes: 2025-10-07 12:10 - User: Jason Johnston - Date Added: 2025-10-07 12:10 - Note: Working around the building switched East and South elevation order.
- QTS-10931: allucent_notes_20251202_153722: Zack Goertz on 2025-10-14T14:51:31.259Z: Needs to be a Ron Carrol task. Sequencing changed. Waiting for Suntec and Alpha to be done in that area. / -ZG 10/14 / Jason Johnston on 2025-10-14 14:10: Moving out to resequence. Will plan with Waddell / Jason Johnston on 2025-12-01 14:18: Paint delayed due to short day Wednesday. / allucent_notes_20251118_192630: Zack Goertz on 2025-10-14T14:51:31.259Z: Needs to be a Ron Carrol task. Sequencing changed. Waiting for Suntec and Alpha to be done in that area. / -ZG 10/14 / Jason Johnston on 2025-10-14 14:10: Moving out to resequence. Will plan with Waddell / allucent_notes_20251111_182405: Zack Goertz on 2025-10-14T14:51:31.259Z: Needs to be a Ron Carrol task. Sequencing changed. Waiting for Suntec and Alpha to be done in that area. / -ZG 10/14 / Jason Johnston on 2025-10-14 14:10: Moving out to resequence. Will plan with Waddell / allucent_notes_20251104_160200: Zack Goertz on 2025-10-14T14:51:31.259Z: Needs to be a Ron Carrol task. Sequencing changed. Waiting for Suntec and Alpha to be done in that area. / -ZG 10/14 / Jason Johnston on 2025-10-14 14:10: Moving out to resequence. Will plan with Waddell / allucent_notes_20251028_163138: Zack Goertz on 2025-10-14T14:51:31.259Z: Needs to be a Ron Carrol task. Sequencing changed. Waiting for Suntec and Alpha to be done in that area. / -ZG 10/14 / Jason Johnston on 2025-10-14 14:10: Moving out to resequence. Will plan with Waddell / allucent_notes_20251027_224008: Zack Goertz on 2025-10-14T14:51:31.259Z: Needs to be a Ron Carrol task. Sequencing changed. Waiting for Suntec and Alpha to be done in that area. / -ZG 10/14 / Jason Johnston on 2025-10-14 14:10: Moving out to resequence. Will plan with Waddell / allucent_notes_20251021_145627: Zack Goertz on 2025-10-14T14:51:31.259Z: Needs to be a Ron Carrol task. Sequencing changed. Waiting for Suntec and Alpha to be done in that area. / -ZG 10/14 / Jason Johnston on 2025-10-14 14:10: Moving out to resequence. Will plan with Waddell / allucent_notes_20251014_152335: Zack Goertz on 2025-10-14T14:51:31.259Z: Needs to be a Ron Carrol task. Sequencing changed. Waiting for Suntec and Alpha to be done in that area. / -ZG 10/14 / Jason Johnston on 2025-10-14 14:10: Moving out to resequence. Will plan with Waddell / allucent_notes: 2025-10-14T14:51:31.259Z - User: Zack Goertz - Date Added: 2025-10-14T14:51:31.259Z - Note: Needs to be a Ron Carrol task. Sequencing changed. Waiting for Suntec and Alpha to be done in that area. -ZG 10/14 / 2025-10-14 14:10 - User: Jason Johnston - Dat
- QTS-1007550: Scheduler Notes: 3/11: Sub will not arrive to site until 3/20 for work.
- QTS-1007560: Scheduler Notes: 3/11: Sub will not arrive to site until 3/20 for work.
- QTS-1004120: Scheduler Notes: 3/11: Sub will not arrive to site until 3/20 for work.
- QTS-9831: allucent_notes_20251209_203830: Jason Johnston on 2025-11-24T20:40:40.210Z: Add line for scupper fabrication. / allucent_notes_20251202_153722: Jason Johnston on 2025-11-24T20:40:40.210Z: Add line for scupper fabrication. / allucent_notes: 2025-11-24T20:40:40.210Z - User: Jason Johnston - Date Added: 2025-11-24T20:40:40.210Z - Note: Add line for scupper fabrication.
- QTS-1004260: allucent_notes_20251216_165335: Jason Johnston on 2025-12-02 14:16: Tie to BAM Crane removal from zone 2 / Freddy Arrizon on 2025-12-16 12:15: Procurement of scuppers in zone 2 is delayed. / allucent_notes_20251209_203830: Jason Johnston on 2025-12-02 14:16: Tie to BAM Crane removal from zone 2 / allucent_notes_20251202_153722: Jason Johnston on 2025-12-02 14:16: Tie to BAM Crane removal from zone 2 / allucent_notes_20251230_164549: Jason Johnston on 2025-12-02 14:16: Tie to BAM Crane removal from zone 2 / Freddy Arrizon on 2025-12-16 12:15: Procurement of scuppers in zone 2 is delayed. / Jason Johnston on 2025-12-30 16:35: No update / allucent_notes: 2025-12-02 14:16 - User: Jason Johnston - Date Added: 2025-12-02 14:16 - Note: Tie to BAM Crane removal from zone 2 / 2025-12-16 12:15 - User: Freddy Arrizon - Date Added: 2025-12-16 12:15 - Note: Procurement of scuppers in zone 2 is delayed. / 2025-12
- QTS-11861: allucent_notes_20251209_203830: Chris Waddell on 2025-12-09 14:25: Waiting on BZI crane to vacate the area. / Jason Johnston on 2025-12-09 14:36: Waiting for crane to leave area to resume work. / allucent_notes: 2025-12-09 14:25 - User: Chris Waddell - Date Added: 2025-12-09 14:25 - Note: Waiting on BZI crane to vacate the area. / 2025-12-09 14:36 - User: Jason Johnston - Date Added: 2025-12-09 14:36 - Note: Waiting for crane to leave area to resume work.
- QTS-1004290: allucent_notes_20251216_165335: Jason Johnston on 2025-12-02 14:16: Tie to BAM Crane removal from zone 2 / Freddy Arrizon on 2025-12-16 12:15: Procurement of scuppers in zone 2 is delayed. / allucent_notes_20251209_203830: Jason Johnston on 2025-12-02 14:16: Tie to BAM Crane removal from zone 2 / allucent_notes_20251202_153722: Jason Johnston on 2025-12-02 14:16: Tie to BAM Crane removal from zone 2 / allucent_notes_20251230_164549: Jason Johnston on 2025-12-02 14:16: Tie to BAM Crane removal from zone 2 / Freddy Arrizon on 2025-12-16 12:15: Procurement of scuppers in zone 2 is delayed. / Jason Johnston on 2025-12-30 16:35: No update / allucent_notes: 2025-12-02 14:16 - User: Jason Johnston - Date Added: 2025-12-02 14:16 - Note: Tie to BAM Crane removal from zone 2 / 2025-12-16 12:15 - User: Freddy Arrizon - Date Added: 2025-12-16 12:15 - Note: Procurement of scuppers in zone 2 is delayed. / 2025-12

| ID | WBS | Activity | Duration | Start | Finish | Predecessors | Complete | Planned start | Planned finish | Total float | Free float | Project Section | Phase-1 | Layton Discipline | Baseline | Fragnet | Fragnet Responsible Party | Contract | Allucent CSI Group | Phase-1-1 | Project Section-1 | Owner Impact Analysis | Layton Super | Location |
| --- | --- | --- | --- | --- | --- | --- | --- | --- | --- | --- | --- | --- | --- | --- | --- | --- | --- | --- | --- | --- | --- | --- | --- | --- |
|  | 3 | **Fragnet / Trash Chute Demo** |  | 2026-04-03 | 2026-04-27 |  |  |  |  |  |  |  |  |  |  |  |  |  |  |  |  |  |  |  |
| QTS-1009910 |  | Fragnet / Zone 3 Gridlines 30-41 / South // Waiting for Trash Chute Demo | 6d | 2026-04-03 A | 2026-04-16 A | QTS-1371 SS | 100% | 2026-04-03 | 2026-04-10 |  |  | Construction | Phase 1 | Core & Shell | IGMP | Fragnet | Giroux Glass, Inc | BAB |  |  |  |  |  |  |
| QTS-1011150 |  | Fragnet / Zone 3 Gridlines 30-41 / South // Install Glazing Angle & Patch Panel | 3d | 2026-04-17 A | 2026-04-21 A | QTS-1009910 | 100% |  |  |  |  | Construction | Phase 1 | Core & Shell | IGMP | Fragnet | Giroux Glass, Inc | BAB |  |  |  |  |  |  |
| QTS-1009920 |  | Fragnet / Zone 3 Gridlines 30-41 / South // Paint Exterior Wall Behind Trash Chute | 1d | 2026-04-22 A | 2026-04-27 A | QTS-1009910, QTS-1011150 | 100% | 2026-04-22 | 2026-04-22 |  |  | Construction | Phase 1 | Core & Shell | IGMP | Fragnet | Giroux Glass, Inc | BAB |  |  |  |  |  |  |
|  | 1 | **Fragnet / Downspout Rebar Inspection Failed** |  | 2026-04-09 | 2026-05-05 |  |  |  |  |  |  |  |  |  |  |  |  |  |  |  |  |  |  |  |
| QTS-1010110 |  | Fragnet / Zone 3 Gridlines 30-41 / South // Suntec Correcting Rebar for Downspout Stub Outs | 3d | 2026-04-09 A | 2026-05-04 A | QTS-1004270, QTS-1011170 FF+3d | 100% | 2026-04-09 | 2026-04-13 |  |  | Construction |  | Build Out | IGMP | Fragnet | True Metal Solutions, LLC | BAB | 01ADMIN | Phase 2 | Construction | Y | Freddy Arrizon |  |
| QTS-1011160 |  | Fragnet / Zone 3 Gridlines 30-41 / South // Submission of RFI #1009 Epoxy Rebar into Rain Leader Foundation | 1d | 2026-04-20 A | 2026-04-20 A | QTS-1371 | 100% |  |  |  |  | Construction |  | Core & Shell | IGMP | Fragnet | Sunset Concrete Inc. | BAB | 01ADMIN | Phase 2 | Construction | Y |  |  |
| QTS-1011170 |  | Fragnet / Zone 3 Gridlines 30-41 / South // Design Response of RFI #1009 Epoxy Rebar into Rain Leader Foundation | 5d | 2026-04-21 A | 2026-05-04 A | QTS-1011160 | 100% | 2026-04-21 | 2026-04-27 |  |  | Construction |  | Build Out | IGMP | Fragnet | Sunset Concrete Inc. | BAB | 01ADMIN | Phase 2 | Construction | Y | Freddy Arrizon |  |
| QTS-1010120 |  | Fragnet / Zone 3 Gridlines 30-41 / South // Reinspection on Rebar for Downspout Stub Outs | 1d | 2026-05-05 A | 2026-05-05 A | QTS-1010110 | 100% |  |  |  |  | Construction |  | Build Out | IGMP | Fragnet | True Metal Solutions, LLC | BAB | 01ADMIN | Phase 2 | Construction | Y | Freddy Arrizon |  |
|  | 2 | **Remaining Scope** |  | 2026-04-08 | 2026-10-02 |  |  |  |  |  |  |  |  |  |  |  |  |  |  |  |  |  |  |  |
| QTS-1004270 |  | Zone 3 Gridlines 30-41 / South // Inspection on Rebar for Downspout Stub Outs | 1d | 2026-04-08 A | 2026-04-08 A | QTS-1004260 | 100% |  |  |  |  | Construction |  | Core & Shell | IGMP |  |  | BAB | 01ADMIN | Phase 2 | Construction |  |  |  |
| QTS-11911 |  | Zone 3 Gridlines 30-41 / South // Hang Exterior Doors & Frames | 2d | 2026-04-14 A | 2026-04-21 A | QTS-99630, QTS-10931, QTS-8541 FF, QTS-1007450 | 100% | 2026-04-14 | 2026-04-15 |  |  | Construction |  | Core & Shell | IGMP |  |  | BAB | 01ADMIN | Phase 3 | Construction |  |  |  |
| QTS-50671 |  | Zone 3 Gridlines 30-41 / South // Install Spandrel Glass Window Frames - Openings 3&4 | 4d | 2026-04-28 A | 2026-05-01 A | QTS-50641, QTS-1009920 | 100% | 2026-04-23 | 2026-04-28 |  |  | Construction | Phase 1 | Build Out | IGMP |  |  | BAB |  |  |  |  | Freddy Arrizon |  |
| QTS-50651 |  | Zone 3 Gridlines 30-41 / South // Install Spandrel Glass Window Glass | 8d | 2026-05-04 A | 2026-05-05 A | QTS-18561, QTS-50671, QTS-50641 | 100% | 2026-05-04 | 2026-05-13 |  |  | Construction | Phase 1 | Build Out | IGMP |  |  | BAB |  |  |  |  | Freddy Arrizon |  |
| QTS-26341 |  | Zone 3 Gridlines 30-41 / South // Set Louvered Metal Screen Wall | 10d | 2026-05-05 A | 2026-06-12 A | QTS-28661, QTS-24581 | 100% | 2026-05-05 | 2026-05-18 |  |  | Construction |  | Build Out | IGMP |  |  | BAB |  | Phase 3 | Construction |  | Freddy Arrizon | EXT |
| QTS-13591 |  | Zone 3 Gridlines 30-41 / South // Frame for Metal Panels | 3d | 2026-05-11 A | 2026-05-19 A | QTS-50671, QTS-1004220 SS, QTS-1004310 | 100% | 2026-05-11 | 2026-05-13 |  |  | Construction | Phase 3 | Build Out | IGMP |  |  | BAB |  |  |  |  | Freddy Arrizon | EXT |
| QTS-1004280 |  | Zone 3 Gridlines 30-41 / South // Pour Concrete Pedestals for Downspout Stub Outs | 2d | 2026-05-13 A | 2026-05-14 A | QTS-1004270, QTS-1010120 | 100% |  |  |  |  | Construction |  | Build Out | IGMP |  |  | BAB | 01ADMIN | Phase 2 | Construction |  | Freddy Arrizon | EXT |
| QTS-50661 |  | Zone 3 Gridlines 30-41 / South // Install Spandrel Glass Window Exterior Caulking | 6d | 2026-05-14 A | 2026-05-14 A | QTS-50651 | 100% | 2026-05-13 | 2026-05-20 |  |  | Construction | Phase 1 | Build Out | IGMP |  |  | BAB |  |  |  |  | Freddy Arrizon | EXT |
| QTS-14051 |  | Zone 3 Gridlines 30-41 / South // Inspect Framing | 1d | 2026-06-03 A | 2026-06-03 A | QTS-13591 | 100% |  |  |  |  | Construction | Phase 3 | Build Out | IGMP |  |  | BAB |  |  |  |  | Freddy Arrizon | EXT |
| QTS-15681 |  | Zone 3 Gridlines 30-41 / South // Field Scan For Metal Panels | 1d | 2026-06-12 A | 2026-06-12 A | QTS-50671, QTS-14051 | 100% | 2026-06-24 | 2026-06-24 |  |  | Construction | Phase 3 | Build Out | IGMP |  |  | BAB |  |  |  |  | Freddy Arrizon | EXT |
| QTS-1004340 |  | Zone 3 Gridlines 30-41 / South // Install Metal Panel Z Clips - Downspouts | 8d | 2026-07-15 A | 2026-07-28 A | QTS-13591, QTS-1002180 | 100% | 2026-07-22 | 2026-07-31 |  |  | Construction | Phase 2 | Build Out | IGMP |  |  | BAB |  |  |  |  | Freddy Arrizon | EXT |
| QTS-1004350 |  | Zone 2 Gridlines 30-41 / South // Install Metal Panel Trim | 4d | 2026-07-23 A | 2026-07-28 A | QTS-15681 | 100% | 2026-07-30 | 2026-08-04 |  |  | Construction | Phase 2 | Build Out | IGMP |  |  | BAB |  |  |  |  | Freddy Arrizon |  |
| QTS-17291 |  | Zone 3 Gridlines 30-41 / South // Install ACM Panels - Downspouts #1 | 8d | 2026-08-31 | 2026-09-10 | QTS-1004350, QTS-15801, QTS-15681, QTS-1004280, QTS-1004340, QTS-1004200 |  |  |  | -32d | 0d | Construction | Phase 3 | Build Out | IGMP |  |  | BAB |  |  |  |  | Freddy Arrizon |  |
| QTS-1004320 |  | Zone 3 Gridlines 30-41 / South // Install ACM Panels - Downspouts #2 | 8d | 2026-09-11 | 2026-09-22 | QTS-17291 |  |  |  | -32d | 0d | Construction | Phase 3 | Build Out | IGMP |  |  | BAB |  |  |  |  | Freddy Arrizon |  |
| QTS-1004330 |  | Zone 3 Gridlines 30-41 / South // Install ACM Panels - Downspouts #3 | 8d | 2026-09-23 | 2026-10-02 | QTS-1004320 |  |  |  | -32d | 0d | Construction | Phase 3 | Build Out | IGMP |  |  | BAB |  |  |  |  | Freddy Arrizon |  |
| QTS-1013970 |  | Zone 3 Gridlines 30-41 / South // Continue to Install Metal Panel Z Clips - Downspoutsn after ACM Panels | 4d | 2026-09-29 | 2026-10-02 | QTS-1004340, QTS-1004330 FF |  |  |  | -32d | 0d | Construction | Phase 2 | Build Out | IGMP |  |  | BAB |  |  |  |  | Freddy Arrizon | EXT |

Notes:
- QTS-1009910: Scheduler Notes: 04/21: Added to show work between trash chute removal and panel / painting.
- QTS-1011150: Scheduler Notes: 04/21: Added to show work between trash chute removal and panel / painting. / Notes: 04/21: Added to show work between trash chute removal and panel painting.
- QTS-1009920: Scheduler Notes: 04/21: Installing Glazing Angle, Then patch suntec, then / paint. / Notes: 04/21: Installing Glazing Angle, Then patch suntec, then paint.
- QTS-1010110: allucent_notes_20251216_165335: Jason Johnston on 2025-12-02 14:16: Tie to BAM Crane removal from zone 2 / Freddy Arrizon on 2025-12-16 12:15: Procurement of scuppers in zone 2 is delayed. / allucent_notes_20251209_203830: Jason Johnston on 2025-12-02 14:16: Tie to BAM Crane removal from zone 2 / allucent_notes_20251202_153722: Jason Johnston on 2025-12-02 14:16: Tie to BAM Crane removal from zone 2 / allucent_notes_20251230_164549: Jason Johnston on 2025-12-02 14:16: Tie to BAM Crane removal from zone 2 / Freddy Arrizon on 2025-12-16 12:15: Procurement of scuppers in zone 2 is delayed. / Jason Johnston on 2025-12-30 16:35: No update / Scheduler Notes: 04/21: RFI 1009 - 4/14: Inspection failed. Suntec needs to fix before / inspection can be called again. 4/7: Impacted by flush & fill / equipment / Notes: 04/21: RFI 1009 - 4/14: Inspection failed. Suntec needs to fix before inspection can be called again. 4/7: Impacted by flush & fill equipment / allucent_notes: 2025-12-02 14:16 - User: Jason Johnston - Date Added: 2025-12-02 14:16 - Note: Tie to BAM Crane removal from zone 2 / 2025-12-16 12:15 - User: Freddy Arrizon - Date Added: 2025-12-16 12:15 - Note: Procurement of scuppers in zone 2 is delayed. / 2025-12
- QTS-1011160: allucent_notes_20251216_165335: Jason Johnston on 2025-12-02 14:16: Tie to BAM Crane removal from zone 2 / Freddy Arrizon on 2025-12-16 12:15: Procurement of scuppers in zone 2 is delayed. / allucent_notes_20251209_203830: Jason Johnston on 2025-12-02 14:16: Tie to BAM Crane removal from zone 2 / allucent_notes_20251202_153722: Jason Johnston on 2025-12-02 14:16: Tie to BAM Crane removal from zone 2 / allucent_notes_20251230_164549: Jason Johnston on 2025-12-02 14:16: Tie to BAM Crane removal from zone 2 / Freddy Arrizon on 2025-12-16 12:15: Procurement of scuppers in zone 2 is delayed. / Jason Johnston on 2025-12-30 16:35: No update / Scheduler Notes: Jason Johnston on 2025-12-02 14:16: Tie to BAM Crane removal from zone 2 / Freddy Arrizon on 2025-12-16 12:15: Procurement of scuppers in zone 2 is / delayed. / Jason Johnston on 2025-12-30 16:35: No update / 4/21: RFI #1009 Added for rebar in downspout connections. / Notes: 4/21: RFI #1009 Added for rebar in downspout connections. / allucent_notes: 2025-12-02 14:16 - User: Jason Johnston - Date Added: 2025-12-02 14:16 - Note: Tie to BAM Crane removal from zone 2 / 2025-12-16 12:15 - User: Freddy Arrizon - Date Added: 2025-12-16 12:15 - Note: Procurement of scuppers in zone 2 is delayed. / 2025-12
- QTS-1011170: allucent_notes_20251216_165335: Jason Johnston on 2025-12-02 14:16: Tie to BAM Crane removal from zone 2 / Freddy Arrizon on 2025-12-16 12:15: Procurement of scuppers in zone 2 is delayed. / allucent_notes_20251209_203830: Jason Johnston on 2025-12-02 14:16: Tie to BAM Crane removal from zone / 2 / allucent_notes_20251202_153722: Jason Johnston on 2025-12-02 14:16: Tie to BAM Crane removal from zone 2 / allucent_notes_20251230_164549: Jason Johnston on 2025-12-02 14:16: Tie to BAM Crane removal from zone 2 / Freddy Arrizon on 2025-12-16 12:15: Procurement of scuppers in zone 2 is delayed. / Jason Johnston on 2025-12-30 16:35: No update / Scheduler Notes: Jason Johnston on 2025-12-02 14:16: Tie to BAM Crane removal from zone 2 / Freddy Arrizon on 2025-12-16 12:15: Procurement of scuppers in zone 2 is / delayed. / Jason Johnston on 2025-12-30 16:35: No update / 4/21: RFI #1009 Added for rebar in downspout connections. / Notes: 4/21: RFI #1009 Added for rebar in downspout connections. / allucent_notes: 2025-12-02 14:16 - User: Jason Johnston - Date Added: 2025-12-02 14:16 - Note: Tie to BAM Crane removal from zone 2 / 2025-12-16 12:15 - User: Freddy Arrizon - Date Added: 2025-12-16 12:15 - Note: Procurement of scuppers in zone 2 is delayed. / 2025-12
- QTS-1010120: allucent_notes_20251216_165335: Jason Johnston on 2025-12-02 14:16: Tie to BAM Crane removal from zone 2 / Freddy Arrizon on 2025-12-16 12:15: Procurement of scuppers in zone 2 is delayed. / allucent_notes_20251209_203830: Jason Johnston on 2025-12-02 14:16: Tie to BAM Crane removal from zone 2 / allucent_notes_20251202_153722: Jason Johnston on 2025-12-02 14:16: Tie to BAM Crane removal from zone 2 / allucent_notes_20251230_164549: Jason Johnston on 2025-12-02 14:16: Tie to BAM Crane removal from zone 2 / Freddy Arrizon on 2025-12-16 12:15: Procurement of scuppers in zone 2 is / delayed. / Jason Johnston on 2025-12-30 16:35: No update / Scheduler Notes: Jason Johnston on 2025-12-02 14:16: Tie to BAM Crane removal from zone 2 / Freddy Arrizon on 2025-12-16 12:15: Procurement of scuppers in zone 2 is / delayed. / Jason Johnston on 2025-12-30 16:35: No update / 04/21: RFI 1009 - 4/14: Inspection failed. Suntec needs to fix before / inspection can be called again. 4/7: Impacted by flush & fill / equipment / Notes: 04/21: RFI 1009 - 4/14: Inspection failed. Suntec needs to fix before inspection can be called again. 4/7: Impacted by flush & fill equipment / allucent_notes: 2025-12-02 14:16 - User: Jason Johnston - Date Added: 2025-12-02 14:16 - Note: Tie to BAM Crane removal from zone 2 / 2025-12-16 12:15 - User: Freddy Arrizon - Date Added: 2025-12-16 12:15 - Note: Procurement of scuppers in zone 2 is delayed. / 2025-12
- QTS-1004270: allucent_notes_20251216_165335: Jason Johnston on 2025-12-02 14:16: Tie to BAM Crane removal from zone 2 / Freddy Arrizon on 2025-12-16 12:15: Procurement of scuppers in zone 2 is delayed. / allucent_notes_20251209_203830: Jason Johnston on 2025-12-02 14:16: Tie to BAM Crane removal from zone 2 / allucent_notes_20251202_153722: Jason Johnston on 2025-12-02 14:16: Tie to BAM Crane removal from zone 2 / allucent_notes_20251230_164549: Jason Johnston on 2025-12-02 14:16: Tie to BAM Crane removal from zone 2 / Freddy Arrizon on 2025-12-16 12:15: Procurement of scuppers in zone 2 is / delayed. / Jason Johnston on 2025-12-30 16:35: No update / Scheduler Notes: Jason Johnston on 2025-12-02 14:16: Tie to BAM Crane removal from zone 2 / Freddy Arrizon on 2025-12-16 12:15: Procurement of scuppers in zone 2 is / delayed. / Jason Johnston on 2025-12-30 16:35: No update / 4/14: Inspection failed. Suntec needs to fix before inspection can be called / again. 4/7: Impacted by flush & fill equipment / Notes: 4/14: Inspection failed. Suntec needs to fix before inspection can be called again. 4/7: Impacted by flush & fill equipment / allucent_notes: 2025-12-02 14:16 - User: Jason Johnston - Date Added: 2025-12-02 14:16 - Note: Tie to BAM Crane removal from zone 2 / 2025-12-16 12:15 - User: Freddy Arrizon - Date Added: 2025-12-16 12:15 - Note: Procurement of scuppers in zone 2 is delayed. / 2025-12
- QTS-11911: Scheduler Notes: 4/14: Frame installed but door not hung yet. 3/10: Frame was / damaged and needs to be repaired. / Notes: 4/14: Frame installed but door not hung yet. 3/10: Frame was damaged and needs to be repaired.
- QTS-26341: Scheduler Notes: 04/21: 1May (ES) 29May (EF) / Notes: 04/21: 1May (ES) 29May (EF)
- QTS-1004280: allucent_notes_20251216_165335: Jason Johnston on 2025-12-02 14:16: Tie to BAM Crane removal from zone 2 / Freddy Arrizon on 2025-12-16 12:15: Procurement of scuppers in zone 2 is delayed. / allucent_notes_20251209_203830: Jason Johnston on 2025-12-02 14:16: Tie to BAM Crane removal from zone 2 / allucent_notes_20251202_153722: Jason Johnston on 2025-12-02 14:16: Tie to BAM Crane removal from zone 2 / allucent_notes_20251230_164549: Jason Johnston on 2025-12-02 14:16: Tie to BAM Crane removal from zone 2 / Freddy Arrizon on 2025-12-16 12:15: Procurement of scuppers in zone 2 is delayed. / Jason Johnston on 2025-12-30 16:35: No update / allucent_notes: 2025-12-02 14:16 - User: Jason Johnston - Date Added: 2025-12-02 14:16 - Note: Tie to BAM Crane removal from zone 2 / 2025-12-16 12:15 - User: Freddy Arrizon - Date Added: 2025-12-16 12:15 - Note: Procurement of scuppers in zone 2 is delayed. / 2025-12
- QTS-1004340: Notes: 7/29-60%
- QTS-1013970: Notes: 7/29-60%

| ID | WBS | Activity | Type | Duration | Start | Finish | Predecessors | Complete | Planned start | Planned finish | Total float | Free float | Calendar | Project Section | Layton Discipline | Baseline | Layton Super | Contract | Allucent CSI Group | Phase-1-1 | Project Section-1 | Location | Fragnet | Owner Impact Analysis | Fragnet Responsible Party | Precon Phase | Delay Notice 07-26 | Remaining Duration | Phase-1 | Level |
| --- | --- | --- | --- | --- | --- | --- | --- | --- | --- | --- | --- | --- | --- | --- | --- | --- | --- | --- | --- | --- | --- | --- | --- | --- | --- | --- | --- | --- | --- | --- |
|  | 4 | **Exterior Punch List** |  |  | 2026-10-05 | 2026-10-27 |  |  |  |  |  |  |  |  |  |  |  |  |  |  |  |  |  |  |  |  |  |  |  |  |
| QTS-101690 |  | Exterior // Contractor Punch List - Zone 3 & BOH |  | 10d | 2026-10-05 | 2026-10-16 | QTS-8541, QTS-50451, QTS-26341, QTS-50661, QTS-17291, QTS-1004330, QTS-99800, QTS-15221, QTS-1013970 |  |  |  | -32d | 24d |  | Construction | Closeout | IGMP | Freddy Arrizon | BAB |  |  |  |  |  |  |  |  |  |  |  |  |
| QTS-101680 |  | Exterior // Contractor Punch List - Zone 2 |  | 10d | 2026-10-12 | 2026-10-23 | QTS-1221, QTS-50631, QTS-28661, QTS-50091, QTS-1004250, QTS-50081, QTS-1004190, QTS-1004200 |  |  |  | -37d | 19d |  | Construction | Closeout | IGMP | Freddy Arrizon | BAB |  |  |  |  |  |  |  |  |  |  |  |  |
| QTS-29461 |  | Exterior // Contractor Punch List - Zone 1 & FOH |  | 10d | 2026-10-14 | 2026-10-27 | QTS-50501, QTS-101700, QTS-99140, QTS-99740, QTS-99860, QTS-50601, QTS-50491, QTS-50441, QTS-50401, QTS-50361, QTS-50681, QTS-9841, QTS-50121, QTS-49501, QTS-43091, QTS-3201, QTS-6981 FF, QTS-6981, QTS-28731, QTS-25181, QTS-5481, QTS-1002210, QTS-1004110, QTS-1004940, QTS-1005320, QTS-8711, QTS-1009890, QTS-1011140, QTS-1004210 |  |  |  | -39d | 17d |  | Construction | Closeout | IGMP | Freddy Arrizon | BAB |  |  |  |  |  |  |  |  |  |  |  |  |
|  | 7 | **Site Improvements** |  |  | 2025-05-05 | 2026-07-27 |  |  |  |  |  |  |  |  |  |  |  |  |  |  |  |  |  |  |  |  |  |  |  |  |
| A1070 |  | DC1 Site Improvements - Campus | level of effort | 5d | 2025-05-05 A | 2026-07-27 A | QTS-3890 (other project) | 100% | 2026-06-17 | 2026-06-23 |  |  | **GLOBAL - 5 Day Workweek w/ Basic Holidays |  | Earth + Found |  |  | BAB |  |  |  |  |  |  |  |  |  |  |  |  |
|  | 2 | **Infrastructure Buildout** |  |  | 2025-01-17 | 2026-11-19 |  |  |  |  |  |  |  |  |  |  |  |  |  |  |  |  |  |  |  |  |  |  |  |  |
|  | 11 | **RFI #0171 BOB Mounting Adjustments** |  |  | 2026-05-14 | 2026-06-09 |  |  |  |  |  |  |  |  |  |  |  |  |  |  |  |  |  |  |  |  |  |  |  |  |
| QTS-1012240 |  | RFI #0171 BOB Mounting Adjustments (A100 Request) |  | 10d | 2026-05-14 A | 2026-06-09 A | QTS-1012180 | 100% | 2026-05-14 | 2026-05-26 |  |  | QTS-PHX3 DC1 - 6 day w/ Holidays | Construction | Electrical | IGMP | Oscar Armenta | BAB | 01ADMIN | Phase 2 | Construction | DH2200 |  |  |  |  |  |  |  |  |
|  | 10 | **Fragnet / Fire Protection Re-Work Delay** |  |  | 2025-11-07 | 2025-11-20 |  |  |  |  |  |  |  |  |  |  |  |  |  |  |  |  |  |  |  |  |  |  |  |  |
|  | 1 | **DC1 Fire Protection Re-Design SWO** |  |  | 2025-11-07 | 2025-11-20 |  |  |  |  |  |  |  |  |  |  |  |  |  |  |  |  |  |  |  |  |  |  |  |  |
| QTS-120000 |  | Fragnet / Fire Protection Re-Work Delay // NTP From QTS |  | 5d | 2025-11-07 A | 2025-11-20 A | QTS-1371 SS | 100% | 2025-11-07 | 2025-11-13 |  |  | **GLOBAL - 5 Day Workweek w/ Basic Holidays |  | Mechanical |  |  | BAB | 01ADMIN |  |  |  | Fragnet | Y | Quality Technology Services |  |  |  |  |  |
| QTS-120010 |  | Fragnet / Fire Protection Re-Work Delay // Re-Design Fire Protection |  | 20d | 2025-11-13 A | 2025-11-20 A | QTS-120000 SS | 100% | 2025-11-14 | 2025-12-15 |  |  | **GLOBAL - 5 Day Workweek w/ Basic Holidays |  | Mechanical |  |  | BAB | 01ADMIN |  |  |  | Fragnet | Y | Quality Technology Services |  |  |  |  |  |
|  | 1 | **Front of House (FOH)** |  |  | 2025-03-31 | 2026-10-22 |  |  |  |  |  |  |  |  |  |  |  |  |  |  |  |  |  |  |  |  |  |  |  |  |
| QTS-1012050 |  | Fragnet / Post-HMIS Battery Delivery + Reinstallation |  | 4d | 2026-06-19 A | 2026-06-24 A | QTS-1013980 | 100% | 2026-07-29 | 2026-08-03 |  |  |  | Preconstruction | Electrical | GMP | Electrical | BAB | 01ADMIN |  | Preconstruction |  | Fragnet | Y | Quality Technology Services | CFCI Procurement | Delay 07-26 |  |  |  |
|  | 6 | **Fragnet / Fire Suppression Branch Line Size Change** |  |  | 2026-04-20 | 2026-06-09 |  |  |  |  |  |  |  |  |  |  |  |  |  |  |  |  |  |  |  |  |  |  |  |  |
| QTS-1009500 |  | Fragnet / Install Branch Piping in Room #0172 |  | 10d | 2026-04-20 A | 2026-04-30 A | QTS-1009490 | 100% |  |  |  |  | QTS-PHX3 DC1 - 6 day w/ Holidays | Construction | Mechanical | IGMP | Sage Fundingsland | BAB | 01ADMIN |  |  | FOH | Fragnet | Y | Olympic West Fire Protection |  |  | 1 | Phase 1 | Level 1 |
| QTS-1009510 |  | Fragnet / Install Branch Piping in Room #0173 |  | 10d | 2026-04-20 A | 2026-04-30 A | QTS-1009490 | 100% |  |  |  |  | QTS-PHX3 DC1 - 6 day w/ Holidays | Construction | Mechanical | IGMP | Sage Fundingsland | BAB | 01ADMIN |  |  | FOH | Fragnet | Y | Olympic West Fire Protection |  |  | 1 | Phase 1 | Level 1 |
| QTS-1009520 |  | Fragnet / Install Branch Piping in Room #1066 |  | 10d | 2026-04-20 A | 2026-04-30 A | QTS-1009490 | 100% |  |  |  |  | QTS-PHX3 DC1 - 6 day w/ Holidays | Construction | Mechanical | IGMP | Sage Fundingsland | BAB | 01ADMIN |  |  | FOH | Fragnet | Y | Olympic West Fire Protection |  |  | 1 | Phase 1 | Level 1 |
| QTS-1009530 |  | Fragnet / Install Branch Piping in Room #1081 |  | 10d | 2026-04-20 A | 2026-04-30 A | QTS-1009490 | 100% |  |  |  |  | QTS-PHX3 DC1 - 6 day w/ Holidays | Construction | Mechanical | IGMP | Sage Fundingsland | BAB | 01ADMIN |  |  | FOH | Fragnet | Y | Olympic West Fire Protection |  |  | 1 | Phase 1 | Level 1 |
| QTS-1009540 |  | Fragnet / Install Branch Piping in Room #0373 |  | 10d | 2026-04-20 A | 2026-04-30 A | QTS-1009490 | 100% |  |  |  |  | QTS-PHX3 DC1 - 6 day w/ Holidays | Construction | Mechanical | IGMP | Sage Fundingsland | BAB | 01ADMIN |  |  | FOH | Fragnet | Y | Olympic West Fire Protection |  |  | 1 | Phase 1 | Level 1 |
| QTS-1009550 |  | Fragnet / Install Branch Piping in Room #2085 |  | 10d | 2026-04-20 A | 2026-04-30 A | QTS-1009490 | 100% |  |  |  |  | QTS-PHX3 DC1 - 6 day w/ Holidays | Construction | Mechanical | IGMP | Sage Fundingsland | BAB | 01ADMIN |  |  | FOH | Fragnet | Y | Olympic West Fire Protection |  |  | 1 | Phase 1 | Level 1 |
| QTS-1011940 |  | Fragnet / Fire Suppression Testing |  | 2d | 2026-06-05 A | 2026-06-09 A | QTS-1009500, QTS-1009510, QTS-1009520, QTS-1009530, QTS-1009540, QTS-1009550, QTS-1011870, QTS-M4050, QTS-1012280 | 100% | 2026-06-05 | 2026-06-06 |  |  | QTS-PHX3 DC1 - 6 day w/ Holidays | Construction | Mechanical | IGMP | Mechanical | BAB | 01ADMIN |  |  | FOH | Fragnet | Y | Olympic West Fire Protection |  |  | 1 | Phase 1 | Level 1 |
|  | 8 | **Fragnet / Permanent Network Available** |  |  | 2026-04-14 | 2026-06-02 |  |  |  |  |  |  |  |  |  |  |  |  |  |  |  |  |  |  |  |  |  |  |  |  |
| QTS-1011330 |  | Fragnet / Fiber for Permanent Network From DC13 to DC1 Discovered To Be Too Short |  | 1d | 2026-04-14 A | 2026-04-14 A | QTS-1371 | 100% |  |  |  |  | QTS-PHX3 DC1 - 6 day w/ Holidays | Construction | Mechanical | IGMP |  | BAB | 01ADMIN |  |  | FOH | Fragnet | Y | E2 Optics, LLC |  |  | 1 | Phase 1 | Level 1 |
| QTS-1011350 |  | Fragnet / Re-Order Fiber for DC13 to DC1 |  | 10d | 2026-04-15 A | 2026-04-27 A | QTS-1011330 | 100% | 2026-04-15 | 2026-04-25 |  |  | QTS-PHX3 DC1 - 6 day w/ Holidays | Construction | LV | IGMP | Sage Fundingsland | BAB | 01ADMIN |  |  | FOH | Fragnet | Y | E2 Optics, LLC |  |  | 1 | Phase 1 | Level 1 |
| QTS-1011340 |  | Fragnet / Short Fiber from DC13 to DC1 Being Removed |  | 15d | 2026-04-28 A | 2026-05-28 A | QTS-1011330 | 100% | 2026-05-06 | 2026-05-22 |  |  | QTS-PHX3 DC1 - 6 day w/ Holidays | Construction | LV | IGMP |  | BAB | 01ADMIN |  |  | FOH | Fragnet | Y | E2 Optics, LLC |  |  | 1 | Phase 1 | Level 1 |
| QTS-1011360 |  | Fragnet / Pull Fiber for DC13 to DC1 |  | 10d | 2026-05-29 A | 2026-05-29 A | QTS-1011350, QTS-1011340 | 100% | 2026-05-29 | 2026-06-09 |  |  | QTS-PHX3 DC1 - 6 day w/ Holidays | Construction | LV | IGMP |  | BAB | 01ADMIN |  |  | FOH | Fragnet | Y | E2 Optics, LLC |  |  | 1 | Phase 1 | Level 1 |
| QTS-1011370 |  | Fragnet / Terminate Fiber for DC13 to DC1 |  | 10d | 2026-06-02 A | 2026-06-02 A | QTS-1011360 | 100% | 2026-06-03 | 2026-06-13 |  |  | QTS-PHX3 DC1 - 6 day w/ Holidays | Construction | LV | IGMP |  | BAB | 01ADMIN |  |  | FOH | Fragnet | Y | E2 Optics, LLC |  |  | 1 | Phase 1 | Level 1 |

Notes:
- QTS-1012240: allucent_notes_20251216_165335: Jason Johnston on 2025-11-11 16:11: SWO / Jason Johnston on 2025-11-19T02:25:11.371Z: undo / David Wiltberger on 2025-12-02 14:02: Impacted by stop work / allucent_notes_20251209_203830: Jason Johnston on 2025-11-11 16:11: SWO / Jason Johnston on 2025-11-19T02:25:11.371Z: undo / David Wiltberger on 2025-12-02 14:02: Impacted by stop work / allucent_notes_20251202_153722: Jason Johnston on 2025-11-11 16:11: SWO / Jason Johnston on 2025-11-19T02:25:11.371Z: undo / David Wiltberger on 2025-12-02 14:02: Impacted by stop work / allucent_notes_20251118_192630: Jason Johnston on 2025-11-11 16:11: SWO / Jason Johnston on 2025-11-19T02:25:11.371Z: undo / allucent_notes_20251111_182405: Jason Johnston on 2025-11-11 16:11: SWO / allucent_notes_20251230_164549: Jason Johnston on 2025-11-11 16:11: SWO / Jason Johnston on 2025-11-19T02:25:11.371Z: undo / David Wiltberger on 2025-12-02 14:02: Impacted by stop work / allucent_notes: 2025-11-11 16:11 - User: Jason Johnston - Date Added: 2025-11-11 16:11 - Note: SWO / 2025-11-19T02:25:11.371Z - User: Jason Johnston - Date Added: 2025-11-19T02:25:11.371Z - Note: undo / 2025-12-02 14:02 - User: David Wiltberger - Date Added: 2025-12-02
- QTS-120000: Scheduler Notes: Fire Protection Re-Work Delay // NTP From QTS / Notes: Fire Protection Re-Work Delay // NTP From QTS
- QTS-1012050: allucent_notes_20251216_165335: John Capriotti on 2025-08-05 15:08: Olympic West to submit the design to the city on 8/6, City review to 8/7. / John Capriotti on 2025-08-12 14:08: Fire Suppression contractor submitted the design to the city for review/approval on 8/8. / Chris Perales on 2025-09-02 12:09: Delay in getting fire pump approved by the city. City is requesting more documentation from tenant / Jason Johnston on 2025-10-21 14:10: Awaiting response / Jason Johnston on 2025-10-27 16:10: Waiting for feedback from city. / Jason Johnston on 2025-10-28 16:10: Need an answer from CP / Jason Johnston on 2025-12-02 14:16: Waiting for design submittal approval / Jason Johnston on 2025-12-16 15:49: no update / allucent_notes_20251209_203830: John Capriotti on 2025-08-05 15:08: Olympic West to submit the design to the city on 8/6, City review to 8/7. / John Capriotti on 2025-08-12 14:08: Fire Suppression contractor submitted the design to the city for review/approval on 8/8. / Chris Perales on 2025-09-02 12:09: Delay in getting fire pump approved by the city. City is requesting more documentation from tenant / Jason Johnston on 2025-10-21 14:10: Awaiting response / Jason Johnston on 2025-10-27 16:10: Waiting for feedback from city. / Jason Johnston on 2025-10-28 16:10: Need an answer from CP / Jason Johnston on 2025-12-02 14:16: Waiting for design submittal approval / allucent_notes_20251202_153722: John Capriotti on 2025-08-05 15:08: Olympic West to submit the design to the city on 8/6, City review to 8/7. / John Capriotti on 2025-08-12 14:08: Fire Suppression contractor submitted the design to the city for review/approval on 8/8. / Chris Perales on 2025-09-02 12:09: Delay in getting fire pump approved by the city. City is requesting more documentation from tenant / Jason Johnston on 2025-10-21 14:10: Awaiting response / Jason Johnston on 2025-10-27 16:10: Waiting for feedback from city. / Jason Johnston on 2025-10-28 16:10: Need an answer from CP / Jason Johnston on 2025-12-02 14:16: Waiting for design submittal approval / allucent_notes_20251118_192630: John Capriotti on 2025-08-05 15:08: Olympic West to submit the design to the city on 8/6, City review to 8/7. / John Capriotti on 2025-08-12 14:08: Fire Suppression contractor submitted the design to the city for review/approval on 8/8. / Chris Perales on 2025-09-02 12:09: Delay in getting fire pump approved by the city. City is requesting more documentation from tenant / Jason Johnston on 2025-10-21 14:10: Awaiting response / Jason Johnston on 2025-10-27 16:10: Waiting for feedback from city. / Jason Johnston on 2025-10-28 16:10: Need an answer from CP / allucent_notes_20251111_182405: John Capriotti on 2025-08-05 15:08: Olympic West to submit the design to the city on 8/6, City review to 8/7. / John Capriotti on 2025-08-12 14:08: Fire Suppression contractor submitted the design to the city for review/approval on 8/8. / Chris Perales on 2025-09-02 12:09: Delay in getting fire pump approved by the city. City is requesting more documentation from tenant / Jason Johnston on 2025-10-21 14:10: Awaiting response / Jason Johnston on 2025-10-27 16:10: Waiting for feedback from city. / Jason Johnston on 2025-10-28 16:10: Need an answer from CP / allucent_notes_20251104_160200: John Capriotti on 2025-08-05 15:08: Olympic West to submit the design to the city on 8/6, City review to 8/7. / John Capriotti on 2025-08-12 14:08: Fire Suppression contractor submitted the design to the city for review/approval on 8/8. / Chris Perales on 2025-09-02 12:09: Delay in getting fire pump approved by the city. City is requesting more documentation from tenant / Jason Johnston on 2025-10-21 14:10: Awaiting response / Jason Johnston on 2025-10-27 16:10: Waiting for feedback from city. / Jason Johnston on 2025-10-28 16:10: Need an answer from CP / allucent_notes_20251028_163138: John Capriotti on 2025-08-05 15:08: Olympic West to submit the design to the city on 8/6, City review to 8/7. / John Capriotti on 2025-08-12 14:08: Fire Suppression contractor submitted the design to the city for review/approval on 8/8. / Chris Perales on 2025-09-02 12:09: Delay in getting fire pump approved by the city. City is requesting more documentation from tenant / Jason Johnston on 2025-10-21 14:10: Awaiting response / Jason Johnston on 2025-10-27 16:10: Waiting for feedback from city. / Jason Johnston on 2025-10-28 16:10: Need an answer from CP / allucent_notes_20251027_224008: John Capriotti on 2025-08-05 15:08: Olympic West to submit the design to the city on 8/6, City review to 8/7. / John Capriotti on 2025-08-12 14:08: Fire Suppression contractor submitted the design to the city for review/approval on 8/8. / Chris Perales on 2025-09-02 12:09: Delay in getting fire pump approved by the city. City is requesting more documentation from tenant / Jason Johnston on 2025-10-21 14:10: Awaiting response / Jason Johnston on 2025-10-27 16:10: Waiting for feedback from city. / allucent_notes_20251021_145627: John Capriotti on 2025-08-05 15:08: Olympic West to submit the design to the city on 8/6, City review to 8/7. / John Capriotti on 2025-08-12 14:08: Fire Suppression contractor submitted the design to the city for review/approval on 8/8. / Chris Perales on 2025-09-02 12:09: Delay in getting fire pump approved by the city. City is requesting more documentation from tenant / Jason Johnston on 2025-10-21 14:10: Awaiting response / allucent_notes_20251014_152335: John Capriotti on 2025-08-05 15:08: Olympic West to submit the design to the city on 8/6, City review to 8/7. / John Capriotti on 2025-08-12 14:08: Fire Suppression contractor submitted the design to the city for review/approval on 8/8. / Chris Perales on 2025-09-02 12:09: Delay in getting fire pump approved by the city. City is requesting more documentation from tenant / allucent_notes: John Capriotti on 2025-08-05 15:08: Olympic West to submit the design to the city on 8/6, City review to 8/7. / allucent_notes_20251230_164549: John Capriotti on 2025-08-05 15:08: Olympic West to submit the design to the city on 8/6, City review to 8/7. / John Capriotti on 2025-08-12 14:08: Fire Suppression contractor submitted the design to the city for review/approval on 8/8. / Chris Perales on 2025-09-02 12:09: Delay in getting fire pump approved by the city. City is requesting more documentation from tenant / Jason Johnston on 2025-10-21 14:10: Awaiting response / Jason Johnston on 2025-10-27 16:10: Waiting for feedback from city. / Jason Johnston on 2025-10-28 16:10: Need an answer from CP / Jason Johnston on 2025-12-02 14:16: Waiting for design submittal approval / Jason Johnston on 2025-12-16 15:49: no update / Scheduler Notes: John Capriotti on 2025-08-05 15:08: Olympic West to submit the design to the / city on 8/6, City review to 8/7. / John Capriotti on 2025-08-12 14:08: Fire Suppression contractor submitted the / design to the city for review/approval on 8/8. / Chris Perales on 2025-09-02 12:09: Delay in getting fire pump approved by the / city. City is requesting more documentation from tenant / Jason Johnston on 2025-10-21 14:10: Awaiting response / Jason Johnston on 2025-10-27 16:10: Waiting for feedback from city. / Jason Johnston on 2025-10-28 16:10: Need an answer from CP / allucent_notes: 2025-08-05 15:08 - User: John Capriotti - Date Added: 2025-08-05 15:08 - Note: Olympic West to submit the design to the city on 8/6, City review to 8/7. / 2025-08-12 14:08 - User: John Capriotti - Date Added: 2025-08-12 14:08 - Note: Fire Suppression con
- QTS-1009500: Scheduler Notes: Installation of Branch Piping / Notes: Added Activity
- QTS-1009510: Notes: Added Activity
- QTS-1009520: Notes: Added Activity
- QTS-1009530: Notes: Added Activity
- QTS-1009540: Notes: Added Activity
- QTS-1009550: Notes: Added Activity
- QTS-1011940: Scheduler Notes: 04/28: Will be finished 5/2/26 / Notes: 04/28: Will be finished 5/2/26
- QTS-1011330: Scheduler Notes: Fiber for Permanent Network From DC13 to DC1 Discovered To Be Too / Short / Notes: Fiber for Permanent Network From DC13 to DC1 Discovered To Be Too Short
- QTS-1011370: Schedule Note: 6/2 - Fiber was abandoned and will be connected eventually (dependent on campus), will not imapct IST

| ID | WBS | Activity | Duration | Start | Finish | Predecessors | Complete | Planned start | Planned finish | Calendar | Allucent CSI Group | Project Section | Layton Discipline | Baseline | Phase-1-1 | Project Section-1 | Location | Level | Contract | Fragnet | Fragnet Responsible Party | Owner Impact Analysis | Layton Super | Delay Notice 07-26 | Phase-1 | Notes |
| --- | --- | --- | --- | --- | --- | --- | --- | --- | --- | --- | --- | --- | --- | --- | --- | --- | --- | --- | --- | --- | --- | --- | --- | --- | --- | --- |
|  | 2 | **Front of House / Mechanical Yard Buildout** |  | 2025-03-31 | 2026-06-04 |  |  |  |  |  |  |  |  |  |  |  |  |  |  |  |  |  |  |  |  |  |
| QTS-41541 |  | FOH / Mechanical Yard // Form, Reinforce, & Pour Thickened Slab On Grade for Transformer & Generator | 8d | 2025-09-26 A | 2025-10-15 A | QTS-42791 SS | 100% | 2025-09-26 | 2025-10-07 |  | 01ADMIN | Construction | Core & Shell | IGMP | Phase 1 | Construction | Gen Yard | Level 1 | BAB |  |  |  |  |  |  |  |
| QTS-41581 |  | FOH / Mechanical Yard // OFCI - L2 SET IN PLACE - Eq Type # - House Transformer - 1 units | 3d | 2025-10-20 A | 2025-10-20 A | QTS-41541, QTS-36121 | 100% | 2025-10-29 | 2025-10-31 |  | 01ADMIN | Construction | Electrical | IGMP | Phase 1 | Construction | Gen Yard | Level 1 | BAB |  |  |  |  |  |  |  |
| QTS-41621 |  | FOH / Mechanical Yard // Install Raceway from Transformers to SWD | 5d | 2025-11-21 A | 2025-12-01 A | QTS-41641 SS+2d, QTS-41581 | 100% |  |  |  | 01ADMIN | Construction | Electrical | IGMP | Phase 1 | Construction | Gen Yard | Level 1 | BAB |  |  |  |  |  |  |  |
| QTS-41711 |  | FOH / Mechanical Yard // OFCI - L2 SET IN PLACE - Eq Type # - House Generator - 1 units | 1d | 2025-11-21 A | 2025-11-21 A | QTS-39731, QTS-39721, QTS-39711, QTS-39701, QTS-41581 | 100% |  |  |  | 01ADMIN | Construction | Electrical |  | Phase 1 | Construction | Gen Yard | Level 1 | BAB |  |  |  |  |  |  |  |
| QTS-41641 |  | FOH / Mechanical Yard // Install Raceway from Generators to SWD | 5d | 2025-11-24 A | 2025-11-25 A | QTS-41711 | 100% | 2025-11-19 | 2025-11-25 |  | 01ADMIN | Construction | Electrical | IGMP | Phase 1 | Construction | Gen Yard | Level 1 | BAB |  |  |  |  |  |  |  |
| QTS-41631 |  | FOH / Mechanical Yard // Pull from Transformers to SWD | 10d | 2025-12-02 A | 2025-12-10 A | QTS-41621 | 100% | 2025-12-02 | 2025-12-15 |  | 01ADMIN | Construction | Electrical | IGMP | Phase 1 | Construction | Gen Yard | Level 1 | BAB |  |  |  |  |  |  |  |
| QTS-41651 |  | FOH / Mechanical Yard // Pull from Generators to SWD | 4d | 2025-12-02 A | 2025-12-04 A | QTS-41631 SS, QTS-41711, QTS-41641 | 100% | 2025-12-09 | 2025-12-12 |  | 01ADMIN | Construction | Electrical | IGMP | Phase 1 | Construction | Gen Yard | Level 1 | BAB |  |  |  |  |  |  |  |
| QTS-1000500 |  | FOH / Mechanical Yard // Terminate Wire from Transformers to SWD | 2d | 2025-12-09 A | 2025-12-10 A | QTS-41631 SS | 100% |  |  |  | 01ADMIN | Construction | Electrical | IGMP | Phase 1 | Construction | Gen Yard | Level 1 | BAB |  |  |  |  |  |  |  |
| QTS-1000510 |  | FOH / Mechanical Yard // Terminate Wire from Generator to SWD | 2d | 2025-12-11 A | 2025-12-12 A | QTS-1000500, QTS-41651 FF+1d | 100% |  |  |  | 01ADMIN | Construction | Electrical | IGMP | Phase 1 | Construction | Gen Yard | Level 1 | BAB |  |  |  |  |  |  |  |
|  | 1 | **Fragnet / Incorrect Breakers in House Panel** |  | 2025-03-31 | 2026-02-25 |  |  |  |  |  |  |  |  |  |  |  |  |  |  |  |  |  |  |  |  |  |
| QTS-120260 |  | Fragnet / FOH / Mechanical Yard // Submittal Approved for FOH Switch Board | 1d | 2025-03-31 A | 2025-03-31 A | QTS-1030 SS | 100% |  |  |  | 01ADMIN | Construction | Electrical | IGMP | Phase 1 | Construction | Gen Yard | Level 1 | BAB | Fragnet | Rosendin Electric Inc. |  |  |  |  |  |
| QTS-120270 |  | Fragnet / FOH / Mechanical Yard // Switch Board Changes Confirmed by Vendor | 1d | 2025-05-30 A | 2025-05-30 A | QTS-120260 | 100% |  |  |  | 01ADMIN | Construction | Electrical | IGMP | Phase 1 | Construction | Gen Yard | Level 1 | BAB | Fragnet | Rosendin Electric Inc. |  |  |  |  |  |
| QTS-120280 |  | Fragnet / FOH / Mechanical Yard // Breaker Change Quote Submitted by Vendor to QTS | 1d | 2025-08-22 A | 2025-08-22 A | QTS-120270 | 100% | 2025-05-30 | 2025-05-30 |  | 01ADMIN | Construction | Electrical | IGMP | Phase 1 | Construction | Gen Yard | Level 1 | BAB | Fragnet | Rosendin Electric Inc. |  |  |  |  |  |
| QTS-120290 |  | Fragnet / FOH / Mechanical Yard // Breaker Change PO Not Issued to Vendor by QTS | 1d | 2025-09-16 A | 2025-09-16 A | QTS-120280 | 100% | 2025-05-30 | 2025-05-30 |  | 01ADMIN | Construction | Electrical | IGMP | Phase 1 | Construction | Gen Yard | Level 1 | BAB | Fragnet | Rosendin Electric Inc. |  |  |  |  |  |
| QTS-120300 |  | Fragnet / FOH / Mechanical Yard // Breaker Change PO Issued to Vendor by QTS | 1d | 2025-10-02 A | 2025-10-02 A | QTS-120290 | 100% | 2025-05-30 | 2025-05-30 |  | 01ADMIN | Construction | Electrical | IGMP | Phase 1 | Construction | Gen Yard | Level 1 | BAB | Fragnet | Rosendin Electric Inc. |  |  |  |  |  |
| QTS-120310 |  | Fragnet / FOH / Mechanical Yard // Breaker Procurement | 69d | 2025-10-03 A | 2026-02-18 A | QTS-120300 | 100% | 2025-10-03 | 2026-01-16 |  | 01ADMIN | Construction | Electrical | IGMP | Phase 1 | Construction | Gen Yard | Level 1 | BAB | Fragnet | Rosendin Electric Inc. |  |  |  |  |  |
| QTS-120320 |  | Fragnet / FOH / Mechanical Yard // Swap and NETA Test Breakers | 6d | 2026-02-19 A | 2026-02-22 A | QTS-120310 | 100% | 2026-02-19 | 2026-02-26 |  | 01ADMIN | Construction | Electrical | IGMP | Phase 1 | Construction | Gen Yard | Level 1 | BAB | Fragnet | Rosendin Electric Inc. |  |  |  |  |  |
| QTS-120330 |  | Fragnet / FOH / Mechanical Yard // Terminate Wire at Switchboard | 1d | 2026-02-25 A | 2026-02-25 A | QTS-120320 | 100% |  |  |  | 01ADMIN | Construction | Electrical | IGMP | Phase 1 | Construction | Gen Yard | Level 1 | BAB | Fragnet | Rosendin Electric Inc. |  |  |  |  |  |
|  | 2 | **Fragnet / HSE GEN Transient Testing Failure** |  | 2026-05-26 | 2026-06-04 |  |  |  |  |  |  |  |  |  |  |  |  |  |  |  |  |  |  |  |  |  |
| QTS-1010000 |  | FOH / Mechanical Yard // Install Generator Ship Loose Material | 5d | 2026-05-26 A | 2026-06-02 A | QTS-1009990 | 100% | 2026-05-26 | 2026-06-01 |  | 01ADMIN | Construction | Electrical | IGMP | Phase 1 | Construction | Gen Yard | Level 1 | BAB |  |  | Y |  |  |  |  |
| QTS-1012280 |  | Fragnet // Transient Testing Failure due to inadequate software updates - HSE GEN | 3d | 2026-06-03 A | 2026-06-04 A | QTS-1009990, QTS-1010000 | 100% | 2026-06-03 | 2026-06-05 |  | 01ADMIN | Construction | Electrical | IGMP | Phase 1 | Construction | Gen Yard | Level 1 | BAB | Fragnet | Holt/CAT | Y | Electrical | Delay 07-26 |  |  |
|  | 1 | **Level 1 Front of House Segment A (Gridlines A-P)** |  | 2025-09-11 | 2026-10-22 |  |  |  |  |  |  |  |  |  |  |  |  |  |  |  |  |  |  |  |  |  |
|  | 2 | **L1 / FOH // Tenant Improvement** |  | 2025-09-11 | 2026-03-30 |  |  |  |  |  |  |  |  |  |  |  |  |  |  |  |  |  |  |  |  |  |
| QTS-44091 |  | TI Area A // Concrete Seal | 3d | 2025-09-11 A | 2025-09-15 A | QTS-46981 SS, QTS-21391 FF, QTS-20771 | 100% |  |  |  | 01ADMIN | Construction | Build Out | IGMP | Phase 1 | Construction | FOH | Level 1 | BAB |  |  |  | Doug Hayes |  |  |  |
| QTS-46981 |  | TI Area A // Prime & Paint Exposed Structure | 5d | 2025-09-11 A | 2025-09-22 A | QTS-47011, QTS-44781 | 100% | 2025-09-11 | 2025-09-17 |  | 01ADMIN | Construction | Build Out | IGMP | Phase 1 | Construction | FOH | Level 1 | BAB |  |  |  | Doug Hayes |  |  |  |
| QTS-25981 |  | TI Area A // Rough Overhead Fire Sprinkler | 10d | 2025-09-25 A | 2025-10-06 A | QTS-18841 | 100% | 2025-09-25 | 2025-10-08 |  |  | Construction | Mechanical | IGMP |  |  | FOH | Level 1 | BAB |  |  |  |  |  | Phase 1 |  |
| QTS-25421 |  | TI Area A // Layout Walls | 1d | 2025-09-30 A | 2025-09-30 A | QTS-25981 FF, QTS-21391, QTS-20771 | 100% |  |  |  |  | Construction | Build Out | IGMP |  |  | FOH | Level 1 | BAB |  |  |  | Doug Hayes |  | Phase 1 |  |
| QTS-25731 |  | TI Area A // Frame Priority Walls /Top Out ( Corridor 0105, 0140, 1011) | 6d | 2025-10-03 A | 2025-10-14 A | QTS-25421 | 100% | 2025-10-03 | 2025-10-10 |  | 01ADMIN | Construction | Build Out | IGMP |  |  | FOH | Level 1 | BAB |  |  |  | Doug Hayes |  | Phase 1 |  |
| QTS-44921 |  | TI Area A // Set HM Door Frames | 6d | 2025-10-03 A | 2025-10-31 A | QTS-25731 FF | 100% | 2025-10-03 | 2025-10-10 |  | 01ADMIN | Construction | Build Out | IGMP | Phase 1 | Construction | FOH | Level 1 | BAB |  |  |  | Doug Hayes |  |  |  |
| QTS-26001 |  | TI Area A // Rough Overhead Electrical (Early Access) | 10d | 2025-10-15 A | 2025-11-12 A | QTS-25731 | 100% | 2025-10-15 | 2025-10-28 |  | 01ADMIN | Construction | Electrical | IGMP |  |  | FOH | Level 1 | BAB |  |  |  |  |  | Phase 1 |  |
| QTS-25961 |  | TI Area A // Rough In-Wall Electrical, Security, & Access Controls | 8d | 2025-10-20 A | 2025-11-12 A | QTS-44921 FF, QTS-25731, QTS-9871 | 100% | 2025-10-20 | 2025-10-29 |  | 01ADMIN | Construction | Electrical | IGMP |  |  | FOH | Level 1 | BAB |  |  |  |  |  | Phase 1 |  |
| QTS-25971 |  | TI Area A // Rough In-Wall Plumbing | 2d | 2025-10-27 A | 2025-10-28 A | QTS-25731 | 100% |  |  |  | 01ADMIN | Construction | Mechanical | IGMP |  |  | FOH | Level 1 | BAB |  |  |  |  |  | Phase 1 |  |
| QTS-27101 |  | TI Area A // Rough Overhead Plumbing & Refrigerant Piping | 6d | 2025-11-12 A | 2025-11-18 A | QTS-26001, QTS-25731, QTS-25421 | 100% | 2025-11-12 | 2025-11-19 |  | 01ADMIN | Construction | Build Out | IGMP |  |  | FOH | Level 1 | BAB |  |  |  | Doug Hayes |  | Phase 1 |  |
| QTS-44101 |  | TI Area A // City Inspection Plumbing | 1d | 2025-11-19 A | 2025-11-19 A | QTS-27101 | 100% |  |  |  | 01ADMIN | Construction | Mechanical | IGMP | Phase 1 | Construction | FOH | Level 1 | BAB |  |  |  |  |  |  |  |
| QTS-25991 |  | TI Area A // Layout Freight Elevator E2 Front & Start Install Shaft Wall | 7d | 2025-11-20 A | 2025-12-02 A | QTS-25731, QTS-14901 | 100% |  |  |  | 01ADMIN | Construction | Build Out | IGMP |  |  | FOH | Level 1 | BAB |  |  |  |  |  | Phase 1 |  |
| QTS-26701 |  | TI Area A // Layout Passenger Elevator E1 Front & Start Install Shaft Wall | 7d | 2025-12-03 A | 2025-12-12 A | QTS-25991, QTS-25731 | 100% | 2025-12-03 | 2025-12-11 |  | 01ADMIN | Construction | Build Out | IGMP |  |  | FOH | Level 1 | BAB |  |  |  |  |  | Phase 1 |  |
| QTS-26841 |  | TI Area A // MEP In Wall Inspection | 1d | 2025-12-03 A | 2025-12-03 A | QTS-25991, QTS-25961, QTS-25971 | 100% |  |  |  | 01ADMIN | Construction | Mechanical | IGMP |  |  | FOH | Level 1 | BAB |  |  |  |  |  | Phase 1 |  |
| QTS-44931 |  | TI Area A // Pressure Test/Inspect Piping & Refrigerant Lines | 2d | 2025-12-03 A | 2025-12-04 A | QTS-101620, QTS-27101 | 100% |  |  |  | 01ADMIN | Construction | Mechanical | IGMP | Phase 1 | Construction | FOH | Level 1 | BAB |  |  |  |  |  |  |  |
| QTS-28381 |  | TI Area A // Insulate Piping & Refrigerant Lines | 10d | 2025-12-05 A | 2025-12-31 A | QTS-44931, QTS-44101, QTS-27101, QTS-25971 | 100% | 2025-12-05 | 2025-12-18 |  | 01ADMIN | Construction | Mechanical | IGMP |  |  | FOH | Level 1 | BAB |  |  |  |  |  | Phase 1 |  |
| QTS-1001370 |  | TI Area A // Frame Shaft Wall for Elevator E1 | 2d | 2025-12-17 A | 2025-12-18 A | QTS-1030 SS | 100% |  |  |  | 01ADMIN | Construction | Mechanical | IGMP |  |  | FOH | Level 1 | BAB |  |  |  |  |  | Phase 1 |  |
| QTS-1001360 |  | TI Area A // Complete Framing | 5d | 2025-12-19 A | 2025-12-23 A | QTS-1001370 | 100% | 2025-12-19 | 2025-12-30 |  | 01ADMIN | Construction | Mechanical | IGMP |  |  | FOH | Level 1 | BAB |  |  |  |  |  | Phase 1 |  |
| QTS-1001340 |  | TI Area A // Rough In Wall Electrical | 10d | 2025-12-31 A | 2026-02-13 A | QTS-1001360 FF+3d, QTS-26561 FF+4d, QTS-26591 FF+4d | 100% | 2025-12-31 | 2026-01-12 | QTS-PHX3 DC1 - 6 day w/ Holidays | 01ADMIN | Construction | Electrical | IGMP |  |  | FOH | Level 1 | BAB |  |  |  |  |  | Phase 1 | 2/3/26: Waiting on framing. |
| QTS-29051 |  | TI Area A // Insulate HVAC Ductwork | 10d | 2026-02-13 A | 2026-02-24 A | QTS-27101 | 100% |  |  | QTS-PHX3 DC1 - 6 day w/ Holidays |  | Construction | Mechanical | IGMP |  |  | FOH | Level 1 | BAB |  |  |  |  |  | Phase 1 |  |
| QTS-1002930 |  | TI Area A // Rough Overhead Electrical (Remaining) | 10d | 2026-02-19 A | 2026-03-30 A | QTS-1001340, QTS-1001350 FF | 100% | 2026-02-19 | 2026-03-02 | QTS-PHX3 DC1 - 6 day w/ Holidays | 01ADMIN | Construction | Electrical | IGMP |  |  | FOH | Level 1 | BAB |  |  |  |  |  | Phase 1 |  |
| QTS-1001350 |  | TI Area A // In Wall Inspection Electrical | 1d | 2026-03-25 A | 2026-03-25 A | QTS-1001340 | 100% | 2026-04-01 | 2026-04-01 | QTS-PHX3 DC1 - 6 day w/ Holidays | 01ADMIN | Construction | Electrical | IGMP |  |  | FOH | Level 1 | BAB |  |  |  |  |  | Phase 1 |  |

Notes:
- QTS-41541: allucent_notes_20251021_145627: Jason Johnston on 2025-09-30 12:09: Schedule error / Jason Johnston on 2025-10-07 13:10: Underground MV delaying start of transformer pad. Add line for gen pad that goes with zone 1 gen pads. / allucent_notes_20251014_152335: Jason Johnston on 2025-10-07 13:10: Underground MV delaying start of / transformer pad. Add line for gen pad that goes with zone 1 gen / pads. / allucent_notes: 2025-09-30 12:09 - User: Jason Johnston - Date Added: 2025-09-30 12:09 - Note: Schedule error / 2025-10-07 13:10 - User: Jason Johnston - Date Added: 2025-10-07 13:10 - Note: Underground MV delaying start of transformer pad. Add line for gen pad that goe
- QTS-41581: allucent_notes_20251021_145627: Scott Masterson on 2025-10-21 11:10: Installed HSE transformer. / Scott Masterson on 2025-10-21 11:10: Installed HSE transformer. / allucent_notes: 2025-10-21 11:10 - User: Scott Masterson - Date Added: 2025-10-21 11:10 - Note: Installed HSE transformer. / 2025-10-21 11:10 - User: Scott Masterson - Date Added: 2025-10-21 11:10 - Note: Installed HSE transformer.
- QTS-41621: allucent_notes_20251202_153722: Jason Johnston on 2025-11-19T02:22:34.690Z: undo / allucent_notes_20251118_192630: Jason Johnston on 2025-11-19T02:22:34.690Z: undo / allucent_notes: 2025-11-19T02:22:34.690Z - User: Jason Johnston - Date Added: 2025-11-19T02:22:34.690Z - Note: undo
- QTS-41711: allucent_notes_20251202_153722: Scott Masterson on 2025-10-21 11:10: Generator ROJ is set for 11/10 / Jason Johnston on 2025-11-04 10:11: Earlier set date / Jason Johnston on 2025-11-11 14:11: Slab needs to be corrected before set can happen. / Jason Johnston on 2025-11-19T02:22:24.588Z: undo / allucent_notes_20251118_192630: Scott Masterson on 2025-10-21 11:10: Generator ROJ is set for 11/10 / Jason Johnston on 2025-11-04 10:11: Earlier set date / Jason Johnston on 2025-11-11 14:11: Slab needs to be corrected before set can / happen. / Jason Johnston on 2025-11-19T02:22:24.588Z: Pad corrections complete 11/20 / setting 11/21. / allucent_notes_20251111_182405: Scott Masterson on 2025-10-21 11:10: Generator ROJ is set for 11/10 / Jason Johnston on 2025-11-04 10:11: Earlier set date / Jason Johnston on 2025-11-11 14:11: Slab needs to be corrected before set can happen. / allucent_notes_20251104_160200: Scott Masterson on 2025-10-21 11:10: Generator ROJ is set for 11/10 / Jason Johnston on 2025-11-04 10:11: Earlier set date / allucent_notes_20251028_163138: Scott Masterson on 2025-10-21 11:10: Generator ROJ is set for 11/10 / allucent_notes_20251027_224008: Scott Masterson on 2025-10-21 11:10: Generator ROJ is set for 11/10 / allucent_notes_20251021_145627: Scott Masterson on 2025-10-21 11:10: Generator ROJ is set for 11/10 / allucent_notes: 2025-10-21 11:10 - User: Scott Masterson - Date Added: 2025-10-21 11:10 - Note: Generator ROJ is set for 11/10 / 2025-11-04 10:11 - User: Jason Johnston - Date Added: 2025-11-04 10:11 - Note: Earlier set date / 2025-11-11 14:11 - User: Jason Johnston -
- QTS-41641: allucent_notes_20251202_153722: Jason Johnston on 2025-11-19T02:22:29.356Z: undo / allucent_notes_20251118_192630: Jason Johnston on 2025-11-19T02:22:29.356Z: undo / allucent_notes: 2025-11-19T02:22:29.356Z - User: Jason Johnston - Date Added: 2025-11-19T02:22:29.356Z - Note: undo
- QTS-41631: allucent_notes_20251216_165335: Jason Johnston on 2025-12-09 20:34: Need update from team / allucent_notes_20251209_203830: Jason Johnston on 2025-12-09 20:34: Need update from team / allucent_notes: 2025-12-09 20:34 - User: Jason Johnston - Date Added: 2025-12-09 20:34 - Note: Need update from team
- QTS-120260: Scheduler Notes: Submittal Approved for FOH Switch Board changes
- QTS-1012280: Scheduler Notes: Transient Testing Failure due to inadequate software updates - HSE / GEN
- QTS-25731: allucent_notes_20251014_152335: Luis Vea on 2025-10-08 10:10: The space was available to start framing. / Luis Vea on 2025-10-14T16:49:06.456Z: getting pushed due to BZI in the way / due to RFI delay Response for the freedom stair embed, and completing the / elevator beams. they need the forklift to lift the beam and carry in the stairs. / resequencing trades after to complete this activity / Luis Vea on 2025-10-14T16:50:09.447Z: adding to previous comment, this is the / hallway 0140 / Luis Vea on 2025-10-14 09:10: BZI needs hallway 0140 to be able to use the / forklift to stand a beam for the elevator and freedom stairs, can i break out / the hallway 0140 and 1011 to a different activity? / allucent_notes: 2025-10-08 10:10 - User: Luis Vea - Date Added: 2025-10-08 10:10 - Note: The space was available to start framing. / 2025-10-14T16:49:06.456Z - User: Luis Vea - Date Added: 2025-10-14T16:49:06.456Z - Note: getting pushed due to BZI in the way due to R
- QTS-44921: allucent_notes_20251104_160200: Luis Vea on 2025-10-08 10:10: door frames have not been roughin. / Luis Vea on 2025-10-08 10:10: door frames have not been roughin / Jason Johnston on 2025-10-21 11:10: Awaiting delivery of door frames / allucent_notes_20251028_163138: Luis Vea on 2025-10-08 10:10: door frames have not been roughin. / Luis Vea on 2025-10-08 10:10: door frames have not been roughin / Jason Johnston on 2025-10-21 11:10: Awaiting delivery of door frames / allucent_notes_20251027_224008: Luis Vea on 2025-10-08 10:10: door frames have not been roughin. / Luis Vea on 2025-10-08 10:10: door frames have not been roughin / Jason Johnston on 2025-10-21 11:10: Awaiting delivery of door frames / allucent_notes_20251021_145627: Luis Vea on 2025-10-08 10:10: door frames have not been roughin. / Luis Vea on 2025-10-08 10:10: door frames have not been roughin / Jason Johnston on 2025-10-21 11:10: Awaiting delivery of door frames / allucent_notes_20251014_152335: Luis Vea on 2025-10-08 10:10: door frames have not been roughin. / allucent_notes: 2025-10-08 10:10 - User: Luis Vea - Date Added: 2025-10-08 10:10 - Note: door frames have not been roughin. / 2025-10-08 10:10 - User: Luis Vea - Date Added: 2025-10-08 10:10 - Note: door frames have not been roughin / 2025-10-21 11:10 - User: Jason Jo
- QTS-26001: allucent_notes_20251118_192630: Luis Vea on 2025-10-21T15:19:25.239Z: BZI is in the way with CAZ zones / Jason Johnston on 2025-10-28 16:10: Needs to be broken out into more detailed sections. / Jason Johnston on 2025-11-03 11:11: HVAC needs to go before electrical. Need tie / Jason Johnston on 2025-11-11T21:57:49.078Z: The overhead electrical needs to be restarted after early access and priority rooms are complete. / allucent_notes_20251111_182405: Luis Vea on 2025-10-21T15:19:25.239Z: BZI is in the way with CAZ zones / Jason Johnston on 2025-10-28 16:10: Needs to be broken out into more detailed sections. / Jason Johnston on 2025-11-03 11:11: HVAC needs to go before electrical. Need tie / Jason Johnston on 2025-11-11T21:57:49.078Z: The overhead electrical needs to be restarted after early access and priority rooms are complete. / allucent_notes_20251104_160200: Luis Vea on 2025-10-21T15:19:25.239Z: BZI is in the way with CAZ zones / Jason Johnston on 2025-10-28 16:10: Needs to be broken out into more detailed sections. / Jason Johnston on 2025-11-03 11:11: HVAC needs to go before electrical. Need tie / allucent_notes_20251028_163138: Luis Vea on 2025-10-21T15:19:25.239Z: BZI is in the way with CAZ zones / Jason Johnston on 2025-10-28 16:10: Needs to be broken out into more detailed sections. / allucent_notes_20251027_224008: Luis Vea on 2025-10-21T15:19:25.239Z: BZI is in the way with CAZ zones / allucent_notes_20251021_145627: Luis Vea on 2025-10-21T15:19:25.239Z: BZI is in the way with CAZ zones / allucent_notes: 2025-10-21T15:19:25.239Z - User: Luis Vea - Date Added: 2025-10-21T15:19:25.239Z - Note: BZI is in the way with CAZ zones / 2025-10-28 16:10 - User: Jason Johnston - Date Added: 2025-10-28 16:10 - Note: Needs to be broken out into more detailed sections
- QTS-25961: allucent_notes_20251118_192630: Jason Johnston on 2025-11-03 11:11: Pushing to next week in order to focus on priority rooms. / Jason Johnston on 2025-11-11 14:11: Like overhead it needs to be restarted after early / allucent_notes_20251111_182405: Jason Johnston on 2025-11-03 11:11: Pushing to next week in order to focus on priority rooms. / Jason Johnston on 2025-11-11 14:11: Like overhead it needs to be restarted after early / allucent_notes_20251104_160200: Jason Johnston on 2025-11-03 11:11: Pushing to next week in order to focus on priority rooms. / allucent_notes: 2025-11-03 11:11 - User: Jason Johnston - Date Added: 2025-11-03 11:11 - Note: Pushing to next week in order to focus on priority rooms. / 2025-11-11 14:11 - User: Jason Johnston - Date Added: 2025-11-11 14:11 - Note: Like overhead it needs to be restart
- QTS-25971: allucent_notes_20251028_163138: Luis Vea on 2025-10-21T15:17:01.669Z: delayed, focusing on line sets and shafts and fan walls area. per dave request / David Wiltberger on 2025-10-21 13:10: Wall schedule and focused changed to complete early access first the doo rest of build / allucent_notes_20251027_224008: Luis Vea on 2025-10-21T15:17:01.669Z: delayed, focusing on line sets and shafts and fan walls area. per dave request / David Wiltberger on 2025-10-21 13:10: Wall schedule and focused changed to complete early access first the doo rest of build / allucent_notes_20251021_145627: Luis Vea on 2025-10-21T15:17:01.669Z: delayed, focusing on line sets and shafts and fan walls area. per dave request / David Wiltberger on 2025-10-21 13:10: Wall schedule and focused changed to complete early access first the doo rest of build / allucent_notes: 2025-10-21T15:17:01.669Z - User: Luis Vea - Date Added: 2025-10-21T15:17:01.669Z - Note: delayed, focusing on line sets and shafts and fan walls area. per dave request / 2025-10-21 13:10 - User: David Wiltberger - Date Added: 2025-10-21 13:10 - Note: Wa
- QTS-25991: allucent_notes_20251202_153722: Luis Vea on 2025-10-21T15:18:39.606Z: BZI and PCI are in the way to start this scope / Jason Johnston on 2025-10-21 11:10: Still dealing with structural steel in area / Jason Johnston on 2025-10-27 08:10: Waiting for dance floor removal. / Jason Johnston on 2025-11-04 12:11: Suntec needs to investigate pit to see if mitigation is required. / Luis Vea on 2025-11-10 10:11: Layout has started today / Jason Johnston on 2025-11-11 14:11: Starting 11/12. Should be good to start but need to confirm. / Jason Johnston on 2025-11-18T21:37:08.158Z: RFI for beam fire proofing / allucent_notes_20251118_192630: Luis Vea on 2025-10-21T15:18:39.606Z: BZI and PCI are in the way to start / this scope / Jason Johnston on 2025-10-21 11:10: Still dealing with structural steel in / area / Jason Johnston on 2025-10-27 08:10: Waiting for dance floor removal. / Jason Johnston on 2025-11-04 12:11: Suntec needs to investigate pit to see if / mitigation is required. / Luis Vea on 2025-11-10 10:11: Layout has started today / Jason Johnston on 2025-11-11 14:11: Starting 11/12. Should be good to start / but need to confirm. / Jason Johnston on 2025-11-18T21:37:08.158Z: RFI 710 for beam fire proofing. / Starting 11/20. / allucent_notes_20251111_182405: Luis Vea on 2025-10-21T15:18:39.606Z: BZI and PCI are in the way to start this scope / Jason Johnston on 2025-10-21 11:10: Still dealing with structural steel in area / Jason Johnston on 2025-10-27 08:10: Waiting for dance floor removal. / Jason Johnston on 2025-11-04 12:11: Suntec needs to investigate pit to see if mitigation is required. / Luis Vea on 2025-11-10 10:11: Layout has started today / Jason Johnston on 2025-11-11 14:11: Starting 11/12. Should be good to start but need to confirm. / allucent_notes_20251104_160200: Luis Vea on 2025-10-21T15:18:39.606Z: BZI and PCI are in the way to start this scope / Jason Johnston on 2025-10-21 11:10: Still dealing with structural steel in area / Jason Johnston on 2025-10-27 08:10: Waiting for dance floor removal. / Jason Johnston on 2025-11-04 12:11: Suntec needs to investigate pit to see if mitigation is required. / allucent_notes_20251028_163138: Luis Vea on 2025-10-21T15:18:39.606Z: BZI and PCI are in the way to start this scope / Jason Johnston on 2025-10-21 11:10: Still dealing with structural steel in area / Jason Johnston on 2025-10-27 08:10: Waiting for dance floor removal. / allucent_notes_20251027_224008: Luis Vea on 2025-10-21T15:18:39.606Z: BZI and PCI are in the way to start this scope / Jason Johnston on 2025-10-21 11:10: Still dealing with structural steel in area / Jason Johnston on 2025-10-27 08:10: Waiting for dance floor removal. / allucent_notes_20251021_145627: Luis Vea on 2025-10-21T15:18:39.606Z: BZI and PCI are in the way to start this scope / Jason Johnston on 2025-10-21 11:10: Still dealing with structural steel in area / allucent_notes: 2025-10-21T15:18:39.606Z - User: Luis Vea - Date Added: 2025-10-21T15:18:39.606Z - Note: BZI and PCI are in the way to start this scope / 2025-10-21 11:10 - User: Jason Johnston - Date Added: 2025-10-21 11:10 - Note: Still dealing with structural steel
- QTS-26701: allucent_notes_20251216_165335: Sean Waisner on 2025-12-16 14:47: Had MEP in the way and had to move to install / allucent_notes: 2025-12-16 14:47 - User: Sean Waisner - Date Added: 2025-12-16 14:47 - Note: Had MEP in the way and had to move to install
- QTS-26841: allucent_notes_20251209_203830: David Wiltberger on 2025-11-17 16:11: out of sequence / allucent_notes_20251202_153722: David Wiltberger on 2025-11-17 16:11: out of sequence / allucent_notes_20251118_192630: David Wiltberger on 2025-11-17 16:11: out of sequence / allucent_notes: 2025-11-17 16:11 - User: David Wiltberger - Date Added: 2025-11-17 16:11 - Note: out of sequence
- QTS-28381: allucent_notes_20251230_164549: Sean Waisner on 2025-12-30 15:44: Do not have man power / allucent_notes: 2025-12-30 15:44 - User: Sean Waisner - Date Added: 2025-12-30 15:44 - Note: Do not have man power
- QTS-1001360: allucent_notes_20251230_164549: Sean Waisner on 2025-12-30 16:02: More man power arrives next week / allucent_notes: 2025-12-30 16:02 - User: Sean Waisner - Date Added: 2025-12-30 16:02 - Note: More man power arrives next week
- QTS-1001340: Scheduler Notes: 2/3/26: Waiting on framing.
- QTS-1002930: allucent_notes_20251118_192630: Luis Vea on 2025-10-21T15:19:25.239Z: BZI is in the way with CAZ zones / Jason Johnston on 2025-10-28 16:10: Needs to be broken out into more detailed sections. / Jason Johnston on 2025-11-03 11:11: HVAC needs to go before electrical. Need tie / Jason Johnston on 2025-11-11T21:57:49.078Z: The overhead electrical needs to be restarted after early access and priority rooms are complete. / allucent_notes_20251111_182405: Luis Vea on 2025-10-21T15:19:25.239Z: BZI is in the way with CAZ zones / Jason Johnston on 2025-10-28 16:10: Needs to be broken out into more detailed sections. / Jason Johnston on 2025-11-03 11:11: HVAC needs to go before electrical. Need tie / Jason Johnston on 2025-11-11T21:57:49.078Z: The overhead electrical needs to be restarted after early access and priority rooms are complete. / allucent_notes_20251104_160200: Luis Vea on 2025-10-21T15:19:25.239Z: BZI is in the way with CAZ zones / Jason Johnston on 2025-10-28 16:10: Needs to be broken out into more detailed sections. / Jason Johnston on 2025-11-03 11:11: HVAC needs to go before electrical. Need tie / allucent_notes_20251028_163138: Luis Vea on 2025-10-21T15:19:25.239Z: BZI is in the way with CAZ zones / Jason Johnston on 2025-10-28 16:10: Needs to be broken out into more detailed sections. / allucent_notes_20251027_224008: Luis Vea on 2025-10-21T15:19:25.239Z: BZI is in the way with CAZ zones / allucent_notes_20251021_145627: Luis Vea on 2025-10-21T15:19:25.239Z: BZI is in the way with CAZ zones / allucent_notes: 2025-10-21T15:19:25.239Z - User: Luis Vea - Date Added: 2025-10-21T15:19:25.239Z - Note: BZI is in the way with CAZ zones / 2025-10-28 16:10 - User: Jason Johnston - Date Added: 2025-10-28 16:10 - Note: Needs to be broken out into more detailed sections

| ID | WBS | Activity | Duration | Start | Finish | Predecessors | Complete | Planned start | Planned finish | Calendar | Project Section | Phase-1 | Layton Discipline | Baseline | Location | Level | Fragnet | Layton Super | Fragnet Responsible Party | Contract | Delay Notice 07-26 | Owner Impact Analysis | Allucent CSI Group | Phase-1-1 | Project Section-1 | Update Notes |
| --- | --- | --- | --- | --- | --- | --- | --- | --- | --- | --- | --- | --- | --- | --- | --- | --- | --- | --- | --- | --- | --- | --- | --- | --- | --- | --- |
|  | 1 | **L1 / FOH // Tenant Improvement - Fragnet Delays** |  |  |  |  |  |  |  |  |  |  |  |  |  |  |  |  |  |  |  |  |  |  |  |  |
|  | 16 | **L1 / FOH // Elevator #E1** |  | 2025-12-03 | 2026-08-07 |  |  |  |  |  |  |  |  |  |  |  |  |  |  |  |  |  |  |  |  |  |
|  | 1 | **Fragnet / Missing Arc Flash Labels** |  | 2026-06-01 | 2026-06-04 |  |  |  |  |  |  |  |  |  |  |  |  |  |  |  |  |  |  |  |  |  |
| QTS-1012270 |  | Fragnet // Missing Arc Flash Labels | 5d | 2026-06-01 A | 2026-06-04 A | QTS-30571 | 100% | 2026-06-01 | 2026-06-05 | QTS-PHX3 DC1 - 6 day w/ Holidays | Construction | Phase 1 | Build Out | IGMP | FOH | Level 1 | Fragnet | Ben Ribble | DLB Associates | BAB | Delay 07-26 |  |  |  |  |  |
|  | 2 | **L1 FOH // Passenger Elevator #E1 Fragnet - Re-Inspection** |  | 2026-07-29 | 2026-08-07 |  |  |  |  |  |  |  |  |  |  |  |  |  |  |  |  |  |  |  |  |  |
| QTS-1013850 |  | Passenger Elevator E1 // Work for RE-Inspection | 8d | 2026-07-29 A | 2026-07-31 A | QTS-30911 | 100% | 2026-08-05 | 2026-08-14 | **GLOBAL - 5 Day Workweek w/ Basic Holidays |  |  | Build Out |  |  |  | Fragnet | Ben Ribble | Otis Elevator Company | BAB |  | Y |  |  |  |  |
| QTS-1013830 |  | Passenger Elevator E1 // State Elevator RE-Scheduling | 1d | 2026-08-07 A | 2026-08-07 A | QTS-30911, QTS-1013850 | 100% | 2026-08-13 | 2026-08-13 | **GLOBAL - 5 Day Workweek w/ Basic Holidays |  |  | Build Out |  |  |  | Fragnet | Ben Ribble | Otis Elevator Company | BAB |  | Y |  |  |  |  |
| QTS-1013840 |  | Passenger Elevator E1 // State Elevator 2nd - Re-Inspection | 1d | 2026-08-07 A | 2026-08-07 A | QTS-1013830 | 100% | 2026-08-14 | 2026-08-14 | **GLOBAL - 5 Day Workweek w/ Basic Holidays |  |  | Build Out |  |  |  | Fragnet | Ben Ribble | Otis Elevator Company | BAB |  | Y |  |  |  |  |
|  | 12 | **Existing Scope** |  | 2025-12-03 | 2026-07-28 |  |  |  |  |  |  |  |  |  |  |  |  |  |  |  |  |  |  |  |  |  |
| QTS-27811 |  | Passenger Elevator E1 // Safety Barricade Install & Netting | 4d | 2025-12-03 A | 2025-12-04 A | QTS-26701 SS | 100% | 2025-12-01 | 2025-12-04 |  | Construction |  | Build Out | IGMP | FOH | Level 1 |  |  |  | BAB |  |  | 01ADMIN | Phase 1 | Construction |  |
| QTS-28221 |  | Passenger Elevator E1 // Provide Temp Power Box at Level 1 Elevator Entry | 2d | 2025-12-03 A | 2025-12-04 A | QTS-27811 | 100% |  |  |  | Construction |  | Build Out | IGMP | FOH | Level 1 |  |  |  | BAB |  |  | 01ADMIN | Phase 1 | Construction |  |
| QTS-1004430 |  | Passenger Elevator E1 // Sub Mobilization to Site | 28d | 2025-12-15 A | 2026-01-20 A | QTS-26701 | 100% | 2025-12-15 | 2026-01-17 | QTS-PHX3 DC1 - 6 day w/ Holidays | Construction | Phase 1 | Build Out | IGMP | FOH | Level 1 |  |  |  | BAB |  |  | 01ADMIN |  |  |  |
| QTS-29831 |  | Passenger Elevator E1 // Install Rails | 8d | 2026-01-29 A | 2026-02-06 A | QTS-22571, QTS-26701, QTS-28221, QTS-1004430 | 100% |  |  | QTS-PHX3 DC1 - 6 day w/ Holidays | Construction | Phase 1 | Core & Shell | IGMP | FOH | Level 1 |  |  |  | BAB |  |  | 01ADMIN |  |  |  |
| QTS-30181 |  | Passenger Elevator E1 // Install Elevator Floor & Walls | 3d | 2026-02-07 A | 2026-02-26 A | QTS-29831 | 100% | 2026-02-18 | 2026-02-20 | QTS-PHX3 DC1 - 6 day w/ Holidays | Construction | Phase 1 | Core & Shell | IGMP | FOH | Level 1 |  |  |  | BAB |  |  | 01ADMIN |  |  |  |
| QTS-30571 |  | Passenger Elevator E1 // Install Entrances, Doors, Hardware | 7d | 2026-02-27 A | 2026-03-06 A | QTS-30181, QTS-30451 SS+5d | 100% |  |  | QTS-PHX3 DC1 - 6 day w/ Holidays | Construction | Phase 1 | Core & Shell | IGMP | FOH | Level 1 |  |  |  | BAB |  |  |  |  |  |  |
| QTS-30451 |  | Passenger Elevator E1 // Hoistway Equipment, Conduit & Wire | 8d | 2026-03-02 A | 2026-03-06 A | QTS-30181 | 100% | 2026-03-02 | 2026-03-10 | QTS-PHX3 DC1 - 6 day w/ Holidays | Construction | Phase 1 | Core & Shell | IGMP | FOH | Level 1 |  |  |  | BAB |  |  |  |  |  |  |
| QTS-30481 |  | Passenger Elevator E1 // Install Elevator Thresholds & Grout | 2d | 2026-03-05 A | 2026-03-06 A | QTS-30181 | 100% |  |  | QTS-PHX3 DC1 - 6 day w/ Holidays | Construction |  | Core & Shell | IGMP | FOH | Level 1 |  |  |  | BAB |  |  |  | Phase 1 | Construction |  |
| QTS-1009110 |  | Passenger Elevator E1 // Rebuild Level 1 Elevator Door Frame | 11d | 2026-03-18 A | 2026-03-27 A | QTS-30451 | 100% | 2026-03-18 | 2026-03-30 | QTS-PHX3 DC1 - 6 day w/ Holidays | Construction | Phase 1 | Core & Shell | IGMP | FOH | Level 1 |  |  |  | BAB |  |  |  |  |  |  |
| QTS-30531 |  | Passenger Elevator E1 // Install Conduit for Heat & Smoke Sensors Elevator Shaft | 2d | 2026-04-05 A | 2026-04-07 A | QTS-30481, QTS-1009110 | 100% | 2026-04-15 | 2026-04-16 | QTS-PHX3 DC1 - 6 day w/ Holidays | Construction |  | Build Out | IGMP | FOH | Level 1 |  |  |  | BAB |  |  |  | Phase 1 | Construction |  |
| QTS-1009040 |  | Passenger Elevator E1 // Install FA Devices & Pull & Terminate FA Wire | 2d | 2026-04-12 A | 2026-05-01 A | QTS-1009030, QTS-1009090 | 100% | 2026-04-22 | 2026-04-23 | QTS-PHX3 DC1 - 6 day w/ Holidays | Construction |  | Electrical | IGMP | FOH | Level 1 |  |  |  | BAB |  |  |  | Phase 1 | Construction | 5/7: Passenger doesn't get security (BR) |
| QTS-1009030 |  | Passenger Elevator E1 // Install Communications, & FA Conduits | 4d | 2026-04-15 A | 2026-04-17 A | QTS-1009110 | 100% | 2026-04-15 | 2026-04-18 | QTS-PHX3 DC1 - 6 day w/ Holidays | Construction |  | Build Out | IGMP | FOH | Level 1 |  |  |  | BAB |  |  |  | Phase 1 | Construction |  |
| QTS-1009090 |  | Passenger Elevator E1 // Rough In, Pull & Terminate Power & Lighting | 4d | 2026-04-16 A | 2026-04-18 A | QTS-1009030 SS | 100% | 2026-04-15 | 2026-04-18 | QTS-PHX3 DC1 - 6 day w/ Holidays | Construction |  | Build Out | IGMP | FOH | Level 1 |  |  |  | BAB |  |  |  | Phase 1 | Construction |  |
| QTS-1011120 |  | Passenger Elevator E1 // Install Power to SUMP Pump | 1d | 2026-04-20 A | 2026-04-22 A | QTS-1009050 | 100% | 2026-04-22 | 2026-04-22 | QTS-PHX3 DC1 - 6 day w/ Holidays | Construction |  | Build Out | IGMP | FOH | Level 1 |  |  |  | BAB |  |  |  | Phase 1 | Construction |  |
| QTS-1009050 |  | Passenger Elevator E1 // Install SUMP Pump & Discharge Piping | 1d | 2026-04-21 A | 2026-04-21 A | QTS-30451 | 100% |  |  | QTS-PHX3 DC1 - 6 day w/ Holidays | Construction |  | Build Out | IGMP | FOH | Level 1 |  |  |  | BAB |  |  |  | Phase 1 | Construction |  |
| QTS-1009080 |  | Passenger Elevator E1 // Install Elevator Flooring | 1d | 2026-05-11 A | 2026-05-11 A | QTS-30531, QTS-1011120 | 100% |  |  | QTS-PHX3 DC1 - 6 day w/ Holidays | Construction |  | Build Out | IGMP | FOH | Level 1 |  | Ben Ribble |  | BAB |  |  |  | Phase 1 | Construction |  |
| QTS-30691 |  | Passenger Elevator E1 // Pre-Adjustment Checklist | 1d | 2026-05-12 A | 2026-06-09 A | QTS-30571, QTS-30451 FF, QTS-1009080, QTS-1012270 FF+1d | 100% | 2026-05-15 | 2026-05-15 |  | Construction | Phase 1 | Build Out | IGMP | FOH | Level 1 |  | Ben Ribble |  | BAB |  |  |  |  |  |  |
| QTS-30711 |  | Passenger Elevator E1 // Adjust Passenger Elevator E1 | 3d | 2026-05-12 A | 2026-06-09 A | QTS-30691 SS, QTS-30691 FF, QTS-1012270 FF+1d | 100% | 2026-05-18 | 2026-05-20 |  | Construction | Phase 1 | Build Out | IGMP | FOH | Level 1 |  | Ben Ribble |  | BAB |  |  |  |  |  |  |
| QTS-30721 |  | Passenger Elevator E1 // State Elevator Inspection - FAILED | 5d | 2026-07-01 A | 2026-07-07 A | QTS-30711, QTS-1009040, QTS-1011440, QTS-1011530, QTS-1012270 | 100% | 2026-07-08 | 2026-07-14 |  | Construction | Phase 1 | Build Out | IGMP | FOH | Level 1 | Fragnet | Ben Ribble | Otis Elevator Company | BAB |  | Y |  |  |  |  |
| QTS-30861 |  | Passenger Elevator E1 // State Elevator Scheduling | 2d | 2026-07-24 A | 2026-07-24 A | QTS-30721 | 100% | 2026-07-29 | 2026-07-30 | **GLOBAL - 5 Day Workweek w/ Basic Holidays |  |  | Build Out |  |  |  | Fragnet | Ben Ribble | Otis Elevator Company | BAB |  | Y |  |  |  |  |
| QTS-30911 |  | Passenger Elevator E1 // State Elevator Re-Inspection - Failed | 1d | 2026-07-28 A | 2026-07-28 A | QTS-30861 | 100% | 2026-07-31 | 2026-07-31 | **GLOBAL - 5 Day Workweek w/ Basic Holidays |  |  | Build Out |  |  |  | Fragnet | Ben Ribble | Otis Elevator Company | BAB |  | Y |  |  |  |  |

Notes:
- QTS-1012270: Scheduler Notes: Missing Arc Flash Labels
- QTS-1013850: Scheduler Notes: State Elevator 2nd - Re-Inspection
- QTS-1013830: Scheduler Notes: 8/4/26 - 4th Inspection Scheduled 8/10 / Notes: Inspection Scheduled 8/10
- QTS-27811: allucent_notes_20251209_203830: Luis Vea on 2025-10-20T17:59:06.763Z: should be ordering material this week for this scope. / allucent_notes_20251202_153722: Luis Vea on 2025-10-20T17:59:06.763Z: should be ordering material this week for this scope. / allucent_notes_20251118_192630: Luis Vea on 2025-10-20T17:59:06.763Z: should be ordering material this week for this scope. / allucent_notes_20251111_182405: Luis Vea on 2025-10-20T17:59:06.763Z: should be ordering material this week for this scope. / allucent_notes_20251104_160200: Luis Vea on 2025-10-20T17:59:06.763Z: should be ordering material this week for this scope. / allucent_notes_20251028_163138: Luis Vea on 2025-10-20T17:59:06.763Z: should be ordering material this week for this scope. / allucent_notes_20251027_224008: Luis Vea on 2025-10-20T17:59:06.763Z: should be ordering material this week for this scope. / allucent_notes_20251021_145627: Luis Vea on 2025-10-20T17:59:06.763Z: should be ordering material this week for this scope. / allucent_notes: 2025-10-20T17:59:06.763Z - User: Luis Vea - Date Added: 2025-10-20T17:59:06.763Z - Note: should be ordering material this week for this scope.
- QTS-1004430: allucent_notes_20251216_165335: Sean Waisner on 2025-12-16 14:48: Need to complete shaft to mobilize / allucent_notes_20251230_164549: Sean Waisner on 2025-12-16 14:48: Need to complete shaft to mobilize / Sean Waisner on 2025-12-30 16:03: Mobilization of crew / allucent_notes: 2025-12-16 14:48 - User: Sean Waisner - Date Added: 2025-12-16 14:48 - Note: Need to complete shaft to mobilize / 2025-12-30 16:03 - User: Sean Waisner - Date Added: 2025-12-30 16:03 - Note: Mobilization of crew
- QTS-29831: allucent_notes_20251216_165335: Sean Waisner on 2025-12-16 14:48: Need to complete shaft to mobilize / allucent_notes_20251230_164549: Sean Waisner on 2025-12-16 14:48: Need to complete shaft to mobilize / Sean Waisner on 2025-12-30 16:03: Mobilization of crew / Scheduler Notes: Sean Waisner on 2025-12-16 14:48: Need to complete shaft to mobilize / Sean Waisner on 2025-12-30 16:03: Mobilization of crew / 1/13/26: Sub Mobilization to Site 1/20. / Notes: 1/13/26: Sub Mobilization to Site 1/20. / allucent_notes: 2025-12-16 14:48 - User: Sean Waisner - Date Added: 2025-12-16 14:48 - Note: Need to complete shaft to mobilize / 2025-12-30 16:03 - User: Sean Waisner - Date Added: 2025-12-30 16:03 - Note: Mobilization of crew
- QTS-1009040: Scheduler Notes: 04/28: PCI immact shaft on 2nd level needs complete for vesda panel / install / Notes: 04/28: PCI immact shaft on 2nd level needs complete for vesda panel install
- QTS-30721: Scheduler Notes: 7/7/26 - Failed inspection / Notes: Failed inspection
- QTS-30861: Scheduler Notes: 7/24/26 - Failed inspection / Notes: Scheduled 7/24
- QTS-30911: Scheduler Notes: 7/28/26 - Failed inspection / Notes: Failed inspection

| ID | WBS | Activity | Duration | Start | Finish | Predecessors | Complete | Remaining | Planned start | Planned finish | Total float | Free float | Calendar | Allucent CSI Group | Project Section | Layton Discipline | Baseline | Phase-1-1 | Project Section-1 | Location | Level | Contract | Note/Comments | Fragnet | Owner Impact Analysis | Layton Super | Fragnet Responsible Party | Delay Notice 07-26 | Trade Partner | Notes |
| --- | --- | --- | --- | --- | --- | --- | --- | --- | --- | --- | --- | --- | --- | --- | --- | --- | --- | --- | --- | --- | --- | --- | --- | --- | --- | --- | --- | --- | --- | --- |
|  | 6 | **L1 / Zone 1 // Elevator #E3** |  | 2025-12-15 | 2026-10-05 |  |  |  |  |  |  |  |  |  |  |  |  |  |  |  |  |  |  |  |  |  |  |  |  |  |
| QTS-44071 |  | Passenger Elevator E3 // Layout Passenger Elevator E3 Front & Start Install Shaft Wall | 7d | 2025-12-15 A | 2025-12-23 A | QTS-26701 | 100% |  | 2025-12-12 | 2025-12-22 |  |  |  | 01ADMIN | Construction | Build Out | IGMP | Phase 1 | Construction | FOH | Level 1 | BAB |  |  |  |  |  |  |  |  |
| QTS-44051 |  | Passenger Elevator E3 // Safety Barricade Install & Netting | 4d | 2026-01-07 A | 2026-01-10 A | QTS-44071 | 100% |  |  |  |  |  | QTS-PHX3 DC1 - 6 day w/ Holidays | 01ADMIN | Construction | Build Out | IGMP | Phase 1 | Construction | FOH | Level 1 | BAB |  |  |  |  |  |  |  |  |
| QTS-1005170 |  | Passenger Elevator E3 // Provide Temp Power Box at Level 1 Elevator Entry | 2d | 2026-01-12 A | 2026-01-22 A | QTS-44051 | 100% |  | 2026-01-12 | 2026-01-13 |  |  | QTS-PHX3 DC1 - 6 day w/ Holidays | 01ADMIN | Construction | Build Out | IGMP | Phase 1 | Construction | FOH | Level 1 | BAB |  |  |  |  |  |  |  |  |
| QTS-44061 |  | Passenger Elevator E3 // Provide Temp Power Box at Level 1 Elevator Entry | 2d | 2026-01-12 A | 2026-01-27 A | QTS-44051 | 100% |  | 2026-01-12 | 2026-01-13 |  |  | QTS-PHX3 DC1 - 6 day w/ Holidays | 01ADMIN | Construction | Build Out | IGMP | Phase 1 | Construction | FOH | Level 1 | BAB |  |  |  |  |  |  |  |  |
| QTS-1013990 |  | Fragnet - Breaker & Feeder Upsizes for Freight Elevators - Discovery & Approval | 1d | 2026-04-08 A | 2026-04-08 A | QTS-29711, QTS-30491 SS | 100% |  | 2026-05-11 | 2026-05-11 |  |  | QTS-PHX3 DC1 - 6 day w/ Holidays |  | Construction | Build Out | IGMP | Phase 1 | Construction | FOH | Level 1 | BAB | 6/23: Delay to concrete issues | Fragnet | Y | Ben Ribble | Quality Technology Services | Delay 07-26 |  |  |
| QTS-1014000 |  | Fragnet - Breaker & Feeder Upsizes for Freight Elevators - RFI 984 Answered | 10d | 2026-04-09 A | 2026-04-21 A | QTS-1013990 | 100% |  | 2026-05-11 | 2026-05-21 |  |  | QTS-PHX3 DC1 - 6 day w/ Holidays |  | Construction | Build Out | IGMP | Phase 1 | Construction | FOH | Level 1 | BAB | 6/23: Delay to concrete issues | Fragnet | Y | Ben Ribble | Quality Technology Services | Delay 07-26 |  |  |
| QTS-43951 |  | Freight Elevator E3 // Install Rails | 8d | 2026-05-11 A | 2026-07-01 A | QTS-44081, QTS-44061, QTS-1005170 | 100% |  | 2026-05-11 | 2026-05-19 |  |  | QTS-PHX3 DC1 - 6 day w/ Holidays |  | Construction | Build Out | IGMP | Phase 1 | Construction | FOH | Level 1 | BAB | 6/23: Delay to concrete issues |  |  | Ben Ribble |  |  |  |  |
| QTS-43961 |  | Freight Elevator E3 // Install Elevator Floor | 8d | 2026-07-02 A | 2026-07-17 A | QTS-43951 | 100% |  | 2026-07-08 | 2026-07-16 |  |  | QTS-PHX3 DC1 - 6 day w/ Holidays |  | Construction | Build Out | IGMP | Phase 1 | Construction | FOH | Level 1 | BAB | 7/7: Pending wall completion |  |  | Ben Ribble |  |  | Otis Elevator Company |  |
| QTS-44031 |  | Freight Elevator E3 // Install Elevator Thresholds & Grout | 2d | 2026-07-16 A | 2026-07-17 A | QTS-43951 | 100% |  | 2026-07-25 | 2026-07-27 |  |  | QTS-PHX3 DC1 - 6 day w/ Holidays |  | Construction | Build Out | IGMP | Phase 1 | Construction | FOH | Level 1 | BAB |  |  |  | Ben Ribble |  |  | Otis Elevator Company |  |
|  | 1 | **Fragnet / Freight Elevators - Breaker and Feeder Upsize** |  | 2026-08-07 | 2026-08-07 |  |  |  |  |  |  |  |  |  |  |  |  |  |  |  |  |  |  |  |  |  |  |  |  |  |
| QTS-1014010 |  | Fragnet - Shut Down (TBD) for Breaker & Feeder Upsizes - Freight Elevators | 1d | 2026-08-07 A | 2026-08-07 A | QTS-1014000 | 100% |  | 2026-08-05 | 2026-08-05 |  |  | QTS-PHX3 DC1 - 6 day w/ Holidays |  | Construction | Build Out | IGMP | Phase 1 | Construction | FOH | Level 1 | BAB | 6/23: Delay to concrete issues | Fragnet | Y | Ben Ribble | Quality Technology Services | Delay 07-26 |  | Shut down scheduled for 8/8 |
|  | 2 | **Existing Scope - L1 / Zone 1 // Elevator #E3** |  | 2026-08-10 | 2026-10-05 |  |  |  |  |  |  |  |  |  |  |  |  |  |  |  |  |  |  |  |  |  |  |  |  |  |
| QTS-43971 |  | Freight Elevator E3 // Install Entrances, Doors, Hardware | 7d | 2026-08-10 A | 2026-08-16 A | QTS-43961, QTS-44031, QTS-1013850 | 100% |  | 2026-08-12 | 2026-08-19 |  |  | QTS-PHX3 DC1 - 6 day w/ Holidays |  | Construction | Build Out | IGMP | Phase 1 | Construction | FOH | Level 1 | BAB |  |  |  | Ben Ribble |  |  | Otis Elevator Company | Delayed to get Passenger Elev signed off - Start 8/10 |
| QTS-1013860 |  | Freight Elevator E3 // Install Elevator Cab Walls | 10d | 2026-08-17 A | 2026-08-29 | QTS-43971 |  | 10d | 2026-08-20 | 2026-08-31 | -105d | 0d | QTS-PHX3 DC1 - 6 day w/ Holidays |  | Construction | Build Out | IGMP | Phase 1 | Construction | FOH | Level 1 | BAB | 7/7: Pending wall completion |  |  | Ben Ribble |  |  | Otis Elevator Company |  |
| QTS-1009600 |  | Freight Elevator E3 // Install Fire Sprinkler | 1d | 2026-08-31 | 2026-08-31 | QTS-43961, QTS-43971, QTS-1013860 |  |  |  |  | -105d | 0d | QTS-PHX3 DC1 - 6 day w/ Holidays |  | Construction | Mechanical | IGMP | Phase 1 | Construction | FOH | Level 1 | BAB |  |  |  | Mechanical |  |  | Otis Elevator Company |  |
| QTS-1009560 |  | Freight Elevator E3 // Install Communications, & FA Conduits | 4d | 2026-09-01 | 2026-09-04 | QTS-1009600 |  |  |  |  | -105d | 0d | QTS-PHX3 DC1 - 6 day w/ Holidays |  | Construction | Electrical | IGMP | Phase 1 | Construction | FOH | Level 1 | BAB |  |  |  | Electrical |  |  | Olympic |  |
| QTS-1009570 |  | Freight Elevator E3 // Rough In, Pull & Terminate Power & Lighting | 4d | 2026-09-01 | 2026-09-04 | QTS-1009560 SS |  |  |  |  | -105d | 0d | QTS-PHX3 DC1 - 6 day w/ Holidays |  | Construction | Electrical | IGMP | Phase 1 | Construction | FOH | Level 1 | BAB |  |  |  | Electrical |  |  | E2/Nexus |  |
| QTS-1013870 |  | Freight Elevator E3 // HSS Steel per Email | 2d | 2026-09-01 | 2026-09-02 | QTS-1009600 |  |  |  |  | -101d | 4d | QTS-PHX3 DC1 - 6 day w/ Holidays |  | Construction | Electrical | IGMP | Phase 1 | Construction | FOH | Level 1 | BAB |  |  |  | Electrical |  |  | Olympic |  |
| QTS-1009580 |  | Freight Elevator E3 // Install FA Devices & Pull & Terminate FA Wire | 2d | 2026-09-05 | 2026-09-08 | QTS-1009560, QTS-1009570 |  |  |  |  | -105d | 0d | QTS-PHX3 DC1 - 6 day w/ Holidays |  | Construction | Electrical | IGMP | Phase 1 | Construction | FOH | Level 1 | BAB |  |  |  | Electrical |  |  | Rosendin Electric, Inc |  |
| QTS-1009590 |  | Freight Elevator E3 // Install SUMP Pump & Discharge Piping | 1d | 2026-09-09 | 2026-09-09 | QTS-1009580, QTS-1013870 |  |  |  |  | -105d | 0d | QTS-PHX3 DC1 - 6 day w/ Holidays |  | Construction | Mechanical | IGMP | Phase 1 | Construction | FOH | Level 1 | BAB |  |  |  | Mechanical |  |  | Bel-Aire |  |
| QTS-1009710 |  | Freight Elevator E3 // Pull Communications & Security Cable | 1d | 2026-09-10 | 2026-09-10 | QTS-1009590 |  |  |  |  | -105d | 0d | QTS-PHX3 DC1 - 6 day w/ Holidays |  | Construction | Electrical | IGMP | Phase 1 | Construction | FOH | Level 1 | BAB |  |  |  | Electrical |  |  | E2 |  |
| QTS-1009740 |  | Freight Elevator E3 // Install Security Devices | 1d | 2026-09-11 | 2026-09-11 | QTS-1009590, QTS-1009710 |  |  |  |  | -105d | 0d | QTS-PHX3 DC1 - 6 day w/ Holidays |  | Construction | LV | IGMP | Phase 1 | Construction | FOH | Level 1 | BAB |  |  |  | Low Voltage |  |  | Securitas |  |
| QTS-43981 |  | Freight Elevator E3 // Hoistway Equipment, Conduit & Wire | 8d | 2026-09-12 | 2026-09-21 | QTS-1009740 |  |  |  |  | -105d | 0d | QTS-PHX3 DC1 - 6 day w/ Holidays |  | Construction | Electrical | IGMP | Phase 1 | Construction | FOH | Level 1 | BAB | 7/14: delayed due to steel re-work to start on 7/20 |  |  | Ben Ribble |  |  | Otis Elevator Company |  |
| QTS-44041 |  | Freight Elevator E3 // Install Conduit for Heat & Smoke Sensors Elevator Shaft | 2d | 2026-09-22 | 2026-09-23 | QTS-43981 |  |  |  |  | -105d | 0d | QTS-PHX3 DC1 - 6 day w/ Holidays |  | Construction | Electrical | IGMP | Phase 1 | Construction | FOH | Level 1 | BAB |  |  |  | Ben Ribble |  |  | Otis Elevator Company |  |
| QTS-43991 |  | Freight Elevator E3 // Pre-Adjustment Checklist | 1d | 2026-09-24 | 2026-09-24 | QTS-43971, QTS-43981 FF, QTS-44041, QTS-1014010 |  |  |  |  | -105d | 0d | QTS-PHX3 DC1 - 6 day w/ Holidays |  | Construction | Build Out | IGMP | Phase 1 | Construction | FOH | Level 1 | BAB |  |  |  | Ben Ribble |  |  | Otis Elevator Company |  |
| QTS-44001 |  | Freight Elevator E3 // Adjust Passenger Elevator E3 | 3d | 2026-09-25 | 2026-09-28 | QTS-43991 |  |  |  |  | -105d | 0d | QTS-PHX3 DC1 - 6 day w/ Holidays |  | Construction | Build Out | IGMP | Phase 1 | Construction | FOH | Level 1 | BAB |  |  |  | Ben Ribble |  |  | Otis Elevator Company |  |
| QTS-44021 |  | Freight Elevator E3 // State Elevator Inspection | 5d | 2026-09-29 | 2026-10-03 | QTS-44001 |  |  |  |  | -105d | 0d | QTS-PHX3 DC1 - 6 day w/ Holidays |  | Construction | Build Out | IGMP | Phase 1 | Construction | FOH | Level 1 | BAB |  |  |  | Ben Ribble |  |  | Otis Elevator Company |  |
| QTS-44011 |  | Freight Elevator E3 // City Inspection | 1d | 2026-10-05 | 2026-10-05 | QTS-44001, QTS-44021 |  |  |  |  | -105d | 6d | QTS-PHX3 DC1 - 6 day w/ Holidays |  | Construction | Build Out | IGMP | Phase 1 | Construction | FOH | Level 1 | BAB |  |  |  | Ben Ribble |  |  | Otis Elevator Company |  |

Notes:
- QTS-44051: allucent_notes_20251230_164549: Sean Waisner on 2025-12-30 16:03: materials arrived 12-29 / allucent_notes: 2025-12-30 16:03 - User: Sean Waisner - Date Added: 2025-12-30 16:03 - Note: materials arrived 12-29
- QTS-1013990: Scheduler Notes: Breaker & Feeder Upsizes for Freight Elevators - Discovery & / Approval
- QTS-1014010: Scheduler Notes: Breaker & Feeder Upsizes for Freight Elevators - Discovery & / Approval
- QTS-43971: Scheduler Notes: 7/28/26-Pushed a week due to work needed on Passenger Elevator / 8/4/26 - Delayed to get Passenger Elev signed off - Start / 8/10

| ID | WBS | Activity | Duration | Start | Finish | Predecessors | Complete | Planned start | Planned finish | Project Section | Layton Discipline | Baseline | Phase-1-1 | Project Section-1 | Location | Level | Layton Super | Contract | Allucent CSI Group |
| --- | --- | --- | --- | --- | --- | --- | --- | --- | --- | --- | --- | --- | --- | --- | --- | --- | --- | --- | --- |
|  | 4 | **L1 / FOH // Telecom Riser #0135 (Early Access)** |  | 2025-09-11 | 2025-12-05 |  |  |  |  |  |  |  |  |  |  |  |  |  |  |
| QTS-44131 |  | Telecom Riser #0135 // Concrete Seal | 3d | 2025-09-11 A | 2025-09-15 A | QTS-44091 SS | 100% |  |  | Construction | Build Out | IGMP | Phase 1 | Construction | FOH | Level 1 | Doug Hayes | BAB |  |
| QTS-2421 |  | Telecom Riser #0135 // Rough Overhead Fire Sprinkler | 2d | 2025-09-29 A | 2025-10-01 A | QTS-25981, QTS-44131 | 100% | 2025-09-29 | 2025-09-30 | Construction | Mechanical | IGMP | Phase 1 | Construction | FOH | Level 1 |  | BAB |  |
| QTS-1501 |  | Telecom Riser #0135 // Frame Walls | 2d | 2025-10-14 A | 2025-10-24 A | QTS-2421, QTS-25731 | 100% | 2025-10-13 | 2025-10-14 | Construction | Build Out | IGMP | Phase 1 | Construction | FOH | Level 1 | Doug Hayes | BAB | 01ADMIN |
| QTS-2401 |  | Telecom Riser #0135 // Rough In Electrical | 10d | 2025-10-16 A | 2025-10-29 A | QTS-1501 FF | 100% |  |  | Construction | Electrical | IGMP | Phase 1 | Construction | FOH | Level 1 |  | BAB | 01ADMIN |
| QTS-2431 |  | Telecom Riser #0135 // Rough Overhead Linesets | 3d | 2025-10-27 A | 2025-10-29 A | QTS-1501 | 100% |  |  | Construction | Mechanical | IGMP | Phase 1 | Construction | FOH | Level 1 |  | BAB | 01ADMIN |
| QTS-3151 |  | Telecom Riser #0135 // In Wall Inspection | 1d | 2025-10-30 A | 2025-10-30 A | QTS-2401 | 100% |  |  | Construction | Mechanical | IGMP | Phase 1 | Construction | FOH | Level 1 |  | BAB | 01ADMIN |
| QTS-2411 |  | Telecom Riser #0135 // Set HM Frame | 1d | 2025-10-31 A | 2025-10-31 A | QTS-15231, QTS-1501 FF | 100% |  |  | Construction | Build Out | IGMP | Phase 1 | Construction | FOH | Level 1 | Doug Hayes | BAB | 01ADMIN |
| QTS-3361 |  | Telecom Riser #0135 // Hang Drywall | 1d | 2025-10-31 A | 2025-10-31 A | QTS-2421, QTS-3151 | 100% |  |  | Construction | Build Out | IGMP | Phase 1 | Construction | FOH | Level 1 | Doug Hayes | BAB | 01ADMIN |
| QTS-3591 |  | Telecom Riser #0135 // Tape & Finish Drywall | 3d | 2025-11-03 A | 2025-11-11 A | QTS-3361 | 100% | 2025-11-13 | 2025-11-17 | Construction | Build Out | IGMP | Phase 1 | Construction | FOH | Level 1 | Doug Hayes | BAB | 01ADMIN |
| QTS-4361 |  | Telecom Riser #0135 // Prime & Paint | 2d | 2025-11-12 A | 2025-11-13 A | QTS-3591 | 100% |  |  | Construction | Build Out | IGMP | Phase 1 | Construction | FOH | Level 1 | Doug Hayes | BAB | 01ADMIN |
| QTS-45491 |  | Telecom Riser #0135 // Set Door & Hardware (Temp) | 1d | 2025-11-17 A | 2025-11-17 A | QTS-99630 SS, QTS-2411, QTS-99650 SS, QTS-3591 FF | 100% |  |  | Construction | Build Out | IGMP | Phase 1 | Construction | FOH | Level 1 |  | BAB | 01ADMIN |
| QTS-4741 |  | Telecom Riser #0135 // Install AC Unit | 2d | 2025-11-19 A | 2025-11-20 A | QTS-2431, QTS-4361 | 100% |  |  | Construction | Mechanical | IGMP | Phase 1 | Construction | FOH | Level 1 |  | BAB | 01ADMIN |
| QTS-5721 |  | Telecom Riser #0135 // Install Light Fixtures | 2d | 2025-11-24 A | 2025-11-25 A | QTS-4741, QTS-4361 | 100% |  |  | Construction | Electrical | IGMP | Phase 1 | Construction | FOH | Level 1 |  | BAB | 01ADMIN |
| QTS-6311 |  | Telecom Riser #0135 // Install Cable Racks | 5d | 2025-11-26 A | 2025-12-05 A | QTS-5721 | 100% | 2025-11-26 | 2025-12-04 | Construction | Electrical | IGMP | Phase 1 | Construction | FOH | Level 1 |  | BAB | 01ADMIN |
|  | 3 | **L1 / FOH // MMR #0134/0133 (Early Access)** |  | 2025-09-11 | 2026-03-30 |  |  |  |  |  |  |  |  |  |  |  |  |  |  |
| QTS-44161 |  | MMR Room #0134 // Concrete Seal | 3d | 2025-09-11 A | 2025-09-15 A | QTS-44131 | 100% |  |  | Construction | Build Out | IGMP | Phase 1 | Construction | FOH | Level 1 | Doug Hayes | BAB |  |
| QTS-2381 |  | MMR Room #0134 // Rough Overhead Fire Sprinkler | 2d | 2025-09-25 A | 2025-09-26 A | QTS-2421, QTS-44161 | 100% |  |  | Construction | Mechanical | IGMP | Phase 1 | Construction | FOH | Level 1 |  | BAB |  |
| QTS-1491 |  | MMR Room #0134 // Frame Walls | 2d | 2025-10-14 A | 2025-10-15 A | QTS-2381, QTS-25731 | 100% | 2025-10-13 | 2025-10-14 | Construction | Build Out | IGMP | Phase 1 | Construction | FOH | Level 1 | Doug Hayes | BAB | 01ADMIN |
| QTS-2361 |  | MMR Room #0134 // Rough In Electrical | 10d | 2025-10-16 A | 2025-10-29 A | QTS-1491 | 100% |  |  | Construction | Electrical | IGMP | Phase 1 | Construction | FOH | Level 1 |  | BAB | 01ADMIN |
| QTS-2391 |  | MMR Room #0134 // Rough Overhead Linesets | 5d | 2025-10-16 A | 2025-10-29 A | QTS-1491 | 100% | 2025-10-16 | 2025-10-22 | Construction | Mechanical | IGMP | Phase 1 | Construction | FOH | Level 1 |  | BAB | 01ADMIN |
| QTS-3141 |  | MMR Room #0134 // In Wall Inspection | 1d | 2025-10-30 A | 2025-10-30 A | QTS-2361 | 100% |  |  | Construction | Mechanical | IGMP | Phase 1 | Construction | FOH | Level 1 |  | BAB | 01ADMIN |
| QTS-2371 |  | MMR Room #0134 // Set HM Frame | 1d | 2025-10-31 A | 2025-10-31 A | QTS-15231, QTS-1491 FF | 100% |  |  | Construction | Build Out | IGMP | Phase 1 | Construction | FOH | Level 1 | Doug Hayes | BAB | 01ADMIN |
| QTS-3351 |  | MMR Room #0134 // Hang Drywall | 1d | 2025-10-31 A | 2025-11-04 A | QTS-2381, QTS-3141 | 100% | 2025-10-31 | 2025-10-31 | Construction | Build Out | IGMP | Phase 1 | Construction | FOH | Level 1 | Doug Hayes | BAB | 01ADMIN |
| QTS-3581 |  | MMR Room #0134 // Tape & Finish Drywall | 3d | 2025-11-05 A | 2025-11-07 A | QTS-3351 | 100% |  |  | Construction | Build Out | IGMP | Phase 1 | Construction | FOH | Level 1 | Doug Hayes | BAB | 01ADMIN |
| QTS-4731 |  | MMR Room #0134 // Plywood Install | 1d | 2025-11-10 A | 2025-11-10 A | QTS-3581 | 100% |  |  | Construction | Build Out | IGMP | Phase 1 | Construction | FOH | Level 1 | Doug Hayes | BAB | 01ADMIN |
| QTS-4351 |  | MMR Room #0134 // Prime & Paint | 2d | 2025-11-11 A | 2025-11-12 A | QTS-4731 | 100% |  |  | Construction | Build Out | IGMP | Phase 1 | Construction | FOH | Level 1 | Doug Hayes | BAB | 01ADMIN |
| QTS-5491 |  | MMR Room #0134 // Install AC Unit | 2d | 2025-11-13 A | 2025-11-14 A | QTS-2391, QTS-4731, QTS-4351 | 100% |  |  | Construction | Mechanical | IGMP | Phase 1 | Construction | FOH | Level 1 |  | BAB | 01ADMIN |
| QTS-45501 |  | MMR Room #0134 // Set Door & Hardware (Temp) | 1d | 2025-11-17 A | 2025-11-17 A | QTS-99630 SS, QTS-2371, QTS-99650 SS, QTS-3581 FF | 100% |  |  | Construction | Build Out | IGMP | Phase 1 | Construction | FOH | Level 1 |  | BAB | 01ADMIN |
| QTS-6111 |  | MMR Room #0134 // Install Light Fixtures | 2d | 2025-11-17 A | 2025-11-19 A | QTS-5491 | 100% | 2025-11-17 | 2025-11-18 | Construction | Electrical | IGMP | Phase 1 | Construction | FOH | Level 1 |  | BAB | 01ADMIN |
| QTS-6731 |  | MMR Room #0134 // Install Cable Racks | 5d | 2025-11-18 A | 2025-11-24 A | QTS-6111 | 100% | 2025-11-19 | 2025-11-25 | Construction | Electrical | IGMP | Phase 1 | Construction | FOH | Level 1 |  | BAB | 01ADMIN |

Notes:
- QTS-1501: allucent_notes_20251027_224008: Luis Vea on 2025-10-14 09:10: area is available / Luis Vea on 2025-10-20T18:03:07.467Z: shaft wall can't be completed due to Dave direction to give BAM another day to complete line sets / Jason Johnston on 2025-10-21 11:10: Overhead line sets need to finish in area to allow for framing to complete. / allucent_notes_20251021_145627: Luis Vea on 2025-10-14 09:10: area is available / Luis Vea on 2025-10-20T18:03:07.467Z: shaft wall can't be completed due to Dave direction to give BAM another day to complete line sets / Jason Johnston on 2025-10-21 11:10: Overhead line sets need to finish in area to allow for framing to complete. / allucent_notes_20251014_152335: Luis Vea on 2025-10-14 09:10: area is available / allucent_notes: 2025-10-14 09:10 - User: Luis Vea - Date Added: 2025-10-14 09:10 - Note: area is available / 2025-10-20T18:03:07.467Z - User: Luis Vea - Date Added: 2025-10-20T18:03:07.467Z - Note: shaft wall can't be completed due to Dave direction to give BAM another
- QTS-2401: allucent_notes_20251104_160200: Luis Vea on 2025-10-20T18:04:55.251Z: room needs to be completed per rough in can be installed, / shaft wall needs to be framed, waiting on another day per daves request to have bam complete the line sets / allucent_notes_20251028_163138: Luis Vea on 2025-10-20T18:04:55.251Z: room needs to be completed per rough in can be installed, / shaft wall needs to be framed, waiting on another day per daves request to have bam complete the line sets / allucent_notes_20251027_224008: Luis Vea on 2025-10-20T18:04:55.251Z: room needs to be completed per rough in can be installed, / shaft wall needs to be framed, waiting on another day per daves request to have bam complete the line sets / allucent_notes_20251021_145627: Luis Vea on 2025-10-20T18:04:55.251Z: room needs to be completed per rough in can be installed, / shaft wall needs to be framed, waiting on another day per daves request to have bam complete the line sets / allucent_notes: 2025-10-20T18:04:55.251Z - User: Luis Vea - Date Added: 2025-10-20T18:04:55.251Z - Note: room needs to be completed per rough in can be installed, shaft wall needs to be framed, waiting on another day per daves request to have bam complete the line sets
- QTS-2431: allucent_notes_20251104_160200: Luis Vea on 2025-10-20T18:03:40.220Z: completed tomorrow per Daves direction / allucent_notes_20251028_163138: Luis Vea on 2025-10-20T18:03:40.220Z: completed tomorrow per Daves direction / allucent_notes_20251027_224008: Luis Vea on 2025-10-20T18:03:40.220Z: completed tomorrow per Daves direction / allucent_notes_20251021_145627: Luis Vea on 2025-10-20T18:03:40.220Z: completed tomorrow per Daves direction / allucent_notes: 2025-10-20T18:03:40.220Z - User: Luis Vea - Date Added: 2025-10-20T18:03:40.220Z - Note: completed tomorrow per Daves direction
- QTS-2411: allucent_notes_20251104_160200: Luis Vea on 2025-10-20T18:05:46.507Z: tracking for oct. 27th for arrival, would a 1 or 2 for rough in / allucent_notes_20251028_163138: Luis Vea on 2025-10-20T18:05:46.507Z: tracking for oct. 27th for arrival, would a 1 or 2 for rough in / allucent_notes_20251027_224008: Luis Vea on 2025-10-20T18:05:46.507Z: tracking for oct. 27th for arrival, would a 1 or 2 for rough in / allucent_notes_20251021_145627: Luis Vea on 2025-10-20T18:05:46.507Z: tracking for oct. 27th for arrival, would a 1 or 2 for rough in / allucent_notes: 2025-10-20T18:05:46.507Z - User: Luis Vea - Date Added: 2025-10-20T18:05:46.507Z - Note: tracking for oct. 27th for arrival, would a 1 or 2 for rough in
- QTS-3591: allucent_notes_20251118_192630: Jason Johnston on 2025-11-03 11:11: Need shaft wall to be complete. / Luis Vea on 2025-11-10 10:11: Walls will be completed 11/10 / allucent_notes_20251111_182405: Jason Johnston on 2025-11-03 11:11: Need shaft wall to be complete. / Luis Vea on 2025-11-10 10:11: Walls will be completed 11/10 / allucent_notes_20251104_160200: Jason Johnston on 2025-11-03 11:11: Need shaft wall to be complete. / allucent_notes: 2025-11-03 11:11 - User: Jason Johnston - Date Added: 2025-11-03 11:11 - Note: Need shaft wall to be complete. / 2025-11-10 10:11 - User: Luis Vea - Date Added: 2025-11-10 10:11 - Note: Walls will be completed 11/10
- QTS-6311: allucent_notes_20251209_203830: Jason Johnston on 2025-12-09 20:34: Need update from team / allucent_notes: 2025-12-09 20:34 - User: Jason Johnston - Date Added: 2025-12-09 20:34 - Note: Need update from team
- QTS-1491: allucent_notes_20251021_145627: Luis Vea on 2025-10-14 09:10: area was available / Luis Vea on 2025-10-20T18:06:46.732Z: shaft walls needs to be completed. waiting for line sets to be completed per Daves request, should be ready for install tomorrow. / Luis Vea on 2025-10-20T18:07:34.861Z: 0133 it is completed by the way / allucent_notes_20251014_152335: Luis Vea on 2025-10-14 09:10: area was available / allucent_notes: 2025-10-14 09:10 - User: Luis Vea - Date Added: 2025-10-14 09:10 - Note: area was available / 2025-10-20T18:06:46.732Z - User: Luis Vea - Date Added: 2025-10-20T18:06:46.732Z - Note: shaft walls needs to be completed. waiting for line sets to be complet
- QTS-2361: allucent_notes_20251104_160200: Luis Vea on 2025-10-20T18:10:27.109Z: waiting for shaft wall to be framed, waiting for line sets to be completed, wall should be up tomorrow mid day per dave request / allucent_notes_20251028_163138: Luis Vea on 2025-10-20T18:10:27.109Z: waiting for shaft wall to be framed, waiting for line sets to be completed, wall should be up tomorrow mid day per dave request / allucent_notes_20251027_224008: Luis Vea on 2025-10-20T18:10:27.109Z: waiting for shaft wall to be framed, waiting for line sets to be completed, wall should be up tomorrow mid day per dave request / allucent_notes_20251021_145627: Luis Vea on 2025-10-20T18:10:27.109Z: waiting for shaft wall to be framed, waiting for line sets to be completed, wall should be up tomorrow mid day per dave request / allucent_notes: 2025-10-20T18:10:27.109Z - User: Luis Vea - Date Added: 2025-10-20T18:10:27.109Z - Note: waiting for shaft wall to be framed, waiting for line sets to be completed, wall should be up tomorrow mid day per dave request
- QTS-2391: allucent_notes_20251104_160200: Luis Vea on 2025-10-20T18:08:57.234Z: waiting for line sets to be completed in the shaft wall area. / Scott Masterson on 2025-10-27 16:10: Room was completed oveerr the weekend so BAM can finalize install this week. / Jason Johnston on 2025-10-28 16:10: Need more detailed break out top out work to get lines installed. / allucent_notes_20251028_163138: Luis Vea on 2025-10-20T18:08:57.234Z: waiting for line sets to be completed in the shaft wall area. / Scott Masterson on 2025-10-27 16:10: Room was completed oveerr the weekend so BAM can finalize install this week. / Jason Johnston on 2025-10-28 16:10: Need more detailed break out top out work to get lines installed. / allucent_notes_20251027_224008: Luis Vea on 2025-10-20T18:08:57.234Z: waiting for line sets to be completed in the shaft wall area. / Scott Masterson on 2025-10-27 16:10: Room was completed oveerr the weekend so BAM can finalize install this week. / allucent_notes_20251021_145627: Luis Vea on 2025-10-20T18:08:57.234Z: waiting for line sets to be completed in the shaft wall area. / allucent_notes: 2025-10-20T18:08:57.234Z - User: Luis Vea - Date Added: 2025-10-20T18:08:57.234Z - Note: waiting for line sets to be completed in the shaft wall area. / 2025-10-27 16:10 - User: Scott Masterson - Date Added: 2025-10-27 16:10 - Note: Room was completed o
- QTS-3351: allucent_notes_20251104_160200: Jason Johnston on 2025-11-03 11:11: Need shaft wall and west wall completed. / allucent_notes: 2025-11-03 11:11 - User: Jason Johnston - Date Added: 2025-11-03 11:11 - Note: Need shaft wall and west wall completed.
- QTS-3581: allucent_notes_20251118_192630: Luis Vea on 2025-11-10 10:11: Walls will be completed 11/11 / allucent_notes_20251111_182405: Luis Vea on 2025-11-10 10:11: Walls will be completed 11/11 / allucent_notes: 2025-11-10 10:11 - User: Luis Vea - Date Added: 2025-11-10 10:11 - Note: Walls will be completed 11/11
- QTS-4731: allucent_notes_20251118_192630: Luis Vea on 2025-11-10 11:11: plywood got installed 11/06 / Luis Vea on 2025-11-10 11:11: completed 11/07 / allucent_notes_20251111_182405: Luis Vea on 2025-11-10 11:11: plywood got installed 11/06 / Luis Vea on 2025-11-10 11:11: completed 11/07 / allucent_notes: 2025-11-10 11:11 - User: Luis Vea - Date Added: 2025-11-10 11:11 - Note: plywood got installed 11/06 / 2025-11-10 11:11 - User: Luis Vea - Date Added: 2025-11-10 11:11 - Note: completed 11/07
- QTS-4351: allucent_notes_20251118_192630: Luis Vea on 2025-11-10 11:11: paint will start 11/11 from PCI direction / allucent_notes_20251111_182405: Luis Vea on 2025-11-10 11:11: paint will start 11/11 from PCI direction / allucent_notes: 2025-11-10 11:11 - User: Luis Vea - Date Added: 2025-11-10 11:11 - Note: paint will start 11/11 from PCI direction

| ID | WBS | Activity | Duration | Start | Finish | Predecessors | Complete | Planned start | Planned finish | Calendar | Allucent CSI Group | Project Section | Layton Discipline | Baseline | Phase-1-1 | Project Section-1 | Location | Level | Fragnet | Fragnet Responsible Party | Contract | Last Period Finish | Last Period Start | Layton Super | Trade Partner |
| --- | --- | --- | --- | --- | --- | --- | --- | --- | --- | --- | --- | --- | --- | --- | --- | --- | --- | --- | --- | --- | --- | --- | --- | --- | --- |
|  | 1 | **Fragnet / DCIM Room Network Live** |  | 2026-03-04 | 2026-03-30 |  |  |  |  |  |  |  |  |  |  |  |  |  |  |  |  |  |  |  |  |
| QTS-1007100 |  | DCIM Room #0133 // Install Cable Tray | 3d | 2026-03-04 A | 2026-03-15 A | QTS-6731 | 100% | 2026-03-04 | 2026-03-06 |  | 01ADMIN | Construction | Electrical | IGMP | Phase 1 | Construction | FOH | Level 1 | Fragnet | E2 Optics, LLC | BAB |  |  |  |  |
| QTS-1007110 |  | DCIM Room #0133 // Install Fiber | 3d | 2026-03-11 A | 2026-03-13 A | QTS-1007100 | 100% |  |  |  | 01ADMIN | Construction | Electrical | IGMP | Phase 1 | Construction | FOH | Level 1 | Fragnet | E2 Optics, LLC | BAB |  |  |  |  |
| QTS-1007120 |  | DCIM Room #0133 // Server Configuration | 5d | 2026-03-25 A | 2026-03-30 A | QTS-1007110, DC1-FOH-PNL-L3-1000, QTS-1000520 FF | 100% | 2026-04-01 | 2026-04-07 |  | 01ADMIN | Construction | Electrical | IGMP | Phase 1 | Construction | FOH | Level 1 | Fragnet | E2 Optics, LLC | BAB |  |  |  |  |
| QTS-1007130 |  | DCIM Room #0133 // Upload Graphics | 2d | 2026-03-25 A | 2026-03-30 A | QTS-1007120 | 100% | 2026-04-08 | 2026-04-09 |  | 01ADMIN | Construction | Electrical | IGMP | Phase 1 | Construction | FOH | Level 1 | Fragnet | E2 Optics, LLC | BAB |  |  |  |  |
|  | 1 | **L1 / FOH // Restrooms #0112/0107/0108** |  | 2025-09-25 | 2026-07-13 |  |  |  |  |  |  |  |  |  |  |  |  |  |  |  |  |  |  |  |  |
| QTS-5731 |  | Restrooms #0107/0108/0112 // Rough Overhead Fire Sprinkler | 1d | 2025-09-25 A | 2025-09-26 A | QTS-2381 | 100% | 2025-09-29 | 2025-09-29 |  |  | Construction | Mechanical | IGMP | Phase 1 | Construction | FOH | Level 1 |  |  | BAB | 2023-01-17 | 2023-01-13 |  |  |
| QTS-1521 |  | Restrooms #0107/0108/0112 // Layout | 1d | 2025-10-07 A | 2025-10-07 A | QTS-5731, QTS-25731 SS | 100% |  |  |  |  | Construction | Build Out | IGMP | Phase 1 | Construction | FOH | Level 1 |  |  | BAB | 2023-01-05 | 2023-01-05 | Doug Hayes |  |
| QTS-2291 |  | Restrooms #0107/0108/0112 // Frame Walls & Ceilings | 2d | 2025-10-07 A | 2025-11-17 A | QTS-1521 SS | 100% | 2025-10-07 | 2025-10-08 |  | 01ADMIN | Construction | Build Out | IGMP | Phase 1 | Construction | FOH | Level 1 |  |  | BAB | 2023-01-09 | 2023-01-06 | Doug Hayes |  |
| QTS-2621 |  | Restrooms #0107/0108/0112 // Rough In-Wall Plumbing | 5d | 2025-10-13 A | 2025-11-26 A | QTS-2291 FF | 100% | 2025-10-09 | 2025-10-15 |  | 01ADMIN | Construction | Mechanical | IGMP | Phase 1 | Construction | FOH | Level 1 |  |  | BAB | 2023-01-13 | 2023-01-11 |  |  |
| QTS-2611 |  | Restrooms #0107/0108/0112 // Rough In-Wall Electrical, Security, & Access Controls | 2d | 2025-10-20 A | 2025-11-19 A | QTS-2291 FF | 100% | 2025-10-20 | 2025-10-21 |  | 01ADMIN | Construction | Electrical | IGMP | Phase 1 | Construction | FOH | Level 1 |  |  | BAB | 2023-01-12 | 2023-01-10 |  |  |
| QTS-3731 |  | Restrooms #0107/0108/0112 // Install Backing for Restroom Specialties/ Stainless Steel Wall Brackets | 1d | 2025-12-17 A | 2025-12-17 A | QTS-2621 | 100% |  |  |  | 01ADMIN | Construction | Build Out | IGMP | Phase 1 | Construction | FOH | Level 1 |  |  | BAB | 2023-02-27 | 2023-02-27 |  |  |
| QTS-1004440 |  | Restrooms #0107/0108/0112 // Complete MEP In Wall | 1d | 2026-01-14 A | 2026-01-15 A | QTS-2611 | 100% | 2026-01-14 | 2026-01-14 | QTS-PHX3 DC1 - 6 day w/ Holidays | 01ADMIN | Construction | Mechanical | IGMP | Phase 1 | Construction | FOH | Level 1 |  |  | BAB | 2023-01-17 | 2023-01-17 |  |  |
| QTS-3711 |  | Restrooms #0107/0108/0112 // In Wall Inspection | 1d | 2026-01-16 A | 2026-01-16 A | QTS-2611, QTS-2621, QTS-1004440 | 100% |  |  | QTS-PHX3 DC1 - 6 day w/ Holidays | 01ADMIN | Construction | Mechanical | IGMP | Phase 1 | Construction | FOH | Level 1 |  |  | BAB | 2023-01-17 | 2023-01-17 |  |  |
| QTS-2601 |  | Restrooms #0107/0108/0112 // Rough Overhead Mechanical | 5d | 2026-01-23 A | 2026-01-27 A | QTS-2291 | 100% | 2026-01-23 | 2026-01-28 | QTS-PHX3 DC1 - 6 day w/ Holidays | 01ADMIN | Construction | Mechanical | IGMP | Phase 1 | Construction | FOH | Level 1 |  |  | BAB | 2023-01-26 | 2023-01-23 |  |  |
| QTS-4381 |  | Restrooms #0107/0108/0112 // Insulate Walls | 1d | 2026-02-03 A | 2026-02-17 A | QTS-3731, QTS-3711 | 100% | 2026-02-03 | 2026-02-03 | QTS-PHX3 DC1 - 6 day w/ Holidays | 01ADMIN | Construction | Build Out | IGMP | Phase 1 | Construction | FOH | Level 1 |  |  | BAB | 2023-02-24 | 2023-02-24 |  |  |
| QTS-3701 |  | Restrooms #0107/0108/0112 // Rough Overhead Plumbing | 1d | 2026-02-04 A | 2026-02-04 A | QTS-2291, QTS-2601 | 100% | 2026-02-13 | 2026-02-13 | QTS-PHX3 DC1 - 6 day w/ Holidays | 01ADMIN | Construction | Mechanical | IGMP | Phase 1 | Construction | FOH | Level 1 |  |  | BAB | 2023-01-12 | 2023-01-10 |  |  |
| QTS-120020 |  | Restrooms #0107/0108/0112 // Frame Walls & Ceilings (Remaining) | 2d | 2026-02-11 A | 2026-02-17 A | QTS-8661, QTS-2601 | 100% | 2026-02-11 | 2026-02-12 | QTS-PHX3 DC1 - 6 day w/ Holidays | 01ADMIN | Construction | Build Out | IGMP | Phase 1 | Construction | FOH | Level 1 |  |  | BAB | 2023-01-09 | 2023-01-06 |  |  |
| QTS-45511 |  | Restrooms #0107/0108/0112 // Frame Hard Lids | 1d | 2026-02-11 A | 2026-02-17 A | QTS-3731 | 100% | 2026-02-11 | 2026-02-11 | QTS-PHX3 DC1 - 6 day w/ Holidays | 01ADMIN | Construction | Build Out | IGMP | Phase 1 | Construction | FOH | Level 1 |  |  | BAB | 2023-03-13 | 2023-03-10 |  |  |
| QTS-6131 |  | Restrooms #0107/0108/0112 // Hang Drywall Walls | 1d | 2026-02-18 A | 2026-02-20 A | QTS-3711, QTS-4381, QTS-5731, QTS-120020 | 100% | 2026-02-18 | 2026-02-18 | QTS-PHX3 DC1 - 6 day w/ Holidays | 01ADMIN | Construction | Build Out | IGMP | Phase 1 | Construction | FOH | Level 1 |  |  | BAB | 2023-03-01 | 2023-02-28 |  |  |
| QTS-3721 |  | Restrooms #0107/0108/0112 // Rough Overhead Electrical/ Light Fixtures Install | 2d | 2026-02-25 A | 2026-03-05 A | QTS-2291, QTS-2601 | 100% | 2026-02-25 | 2026-02-26 | QTS-PHX3 DC1 - 6 day w/ Holidays | 01ADMIN | Construction | Electrical | IGMP | Phase 1 | Construction | FOH | Level 1 |  |  | BAB | 2023-03-08 | 2023-03-07 |  |  |
| QTS-6141 |  | Restrooms #0107/0108/0112 // Above Ceiling Inspection | 1d | 2026-03-06 A | 2026-03-06 A | QTS-3701, QTS-2601, QTS-3721, QTS-5731 | 100% |  |  | QTS-PHX3 DC1 - 6 day w/ Holidays | 01ADMIN | Construction | Mechanical | IGMP | Phase 1 | Construction | FOH | Level 1 |  |  | BAB | 2023-03-09 | 2023-03-09 |  |  |
| QTS-44181 |  | Restrooms #0107/0108/0112 // Screw Inspection | 1d | 2026-03-21 A | 2026-03-21 A | QTS-6131 | 100% |  |  | QTS-PHX3 DC1 - 6 day w/ Holidays | 01ADMIN | Construction | Build Out | IGMP | Phase 1 | Construction | FOH | Level 1 |  |  | BAB | 2023-03-09 | 2023-03-09 |  |  |
| QTS-6321 |  | Restrooms #0107/0108/0112 // Hang Drywall on Hard Lids | 3d | 2026-04-08 A | 2026-04-10 A | QTS-45511, QTS-6141, QTS-6131 FF | 100% |  |  | QTS-PHX3 DC1 - 6 day w/ Holidays | 01ADMIN | Construction | Build Out | IGMP | Phase 1 | Construction | FOH | Level 1 |  |  | BAB | 2023-03-13 | 2023-03-10 |  |  |
| QTS-6751 |  | Restrooms #0107/0108/0112 // Tape & Finish Drywall on Hard Lids | 3d | 2026-04-11 A | 2026-04-15 A | QTS-44181, QTS-6321, QTS-6131 | 100% | 2026-04-11 | 2026-04-14 | QTS-PHX3 DC1 - 6 day w/ Holidays | 01ADMIN | Construction | Build Out | IGMP | Phase 1 | Construction | FOH | Level 1 |  |  | BAB | 2023-03-20 | 2023-03-14 |  |  |
| QTS-7341 |  | Restrooms #0107/0108/0112 // Prime & Paint | 1d | 2026-04-16 A | 2026-04-20 A | QTS-6751 | 100% | 2026-04-16 | 2026-04-16 | QTS-PHX3 DC1 - 6 day w/ Holidays | 01ADMIN | Construction | Build Out | IGMP | Phase 1 | Construction | FOH | Level 1 |  |  | BAB | 2023-04-12 | 2023-04-11 |  |  |
| QTS-11411 |  | Restrooms #0107/0108/0112 // Final Coat of Paint | 1d | 2026-04-20 A | 2026-04-20 A | QTS-7341 FF | 100% | 2026-05-04 | 2026-05-04 | QTS-PHX3 DC1 - 6 day w/ Holidays |  | Construction | Build Out | IGMP | Phase 1 | Construction | FOH | Level 1 |  |  | BAB |  |  |  |  |
| QTS-11481 |  | Restrooms #0107/0108/0112 // Install Mechanical Trim | 3d | 2026-04-20 A | 2026-04-20 A | QTS-7341 FF, QTS-11411 FF | 100% | 2026-04-20 | 2026-04-22 | QTS-PHX3 DC1 - 6 day w/ Holidays |  | Construction | Mechanical | IGMP | Phase 1 | Construction | FOH | Level 1 |  |  | BAB | 2023-04-14 | 2023-04-13 |  |  |
| QTS-7801 |  | Restrooms #0107/0108/0112 // Install Wall & Floor Tile - WRR | 10d | 2026-04-21 A | 2026-04-24 A | QTS-18241, QTS-7341, QTS-1005290 | 100% | 2026-04-21 | 2026-05-01 | QTS-PHX3 DC1 - 6 day w/ Holidays |  | Construction | Build Out | IGMP | Phase 1 | Construction | FOH | Level 1 |  |  | BAB | 2023-04-10 | 2023-04-06 |  |  |
| QTS-1011390 |  | Restrooms #0107/0108/0112 // Install Wall & Floor Tile - MRR | 5d | 2026-04-23 A | 2026-04-24 A | QTS-7801 FF | 100% | 2026-04-23 | 2026-04-29 |  |  | Construction | Build Out | IGMP | Phase 1 | Construction | FOH | Level 1 |  |  | BAB | 2023-04-10 | 2023-04-06 |  |  |
| QTS-11041 |  | Restrooms #0107/0108/0112 // Field Measure for Countertops | 1d | 2026-04-27 A | 2026-04-27 A | QTS-7801, QTS-6751 | 100% |  |  | QTS-PHX3 DC1 - 6 day w/ Holidays |  | Construction | Build Out | IGMP | Phase 1 | Construction | FOH | Level 1 |  |  | BAB |  |  |  |  |
| QTS-1011410 |  | Restrooms #0107/0108/0112 // Millwork, Countertops, and Bathroom Stalls and Accessories - MRR | 11d | 2026-05-07 A | 2026-05-26 A | QTS-1011390, QTS-13171 SS | 100% | 2026-05-07 | 2026-05-19 | QTS-PHX3 DC1 - 6 day w/ Holidays |  | Construction | Build Out | IGMP | Phase 1 | Construction | FOH | Level 1 |  |  | BAB |  |  | Ed Carter |  |
| QTS-13171 |  | Restrooms #0107/0108/0112 // Millwork, Countertops, and Bathroom Stalls and Accessories - WRR | 11d | 2026-05-07 A | 2026-05-28 A | QTS-11041, QTS-6751 | 100% | 2026-05-07 | 2026-05-19 | QTS-PHX3 DC1 - 6 day w/ Holidays |  | Construction | Build Out | IGMP | Phase 1 | Construction | FOH | Level 1 |  |  | BAB |  |  | Ed Carter |  |
| QTS-12501 |  | Restrooms #0107/0108/0112 // Set Doors & Hardware | 1d | 2026-05-13 A | 2026-05-13 A | QTS-99640, QTS-99650, QTS-11481 | 100% |  |  | QTS-PHX3 DC1 - 6 day w/ Holidays |  | Construction | Build Out | IGMP | Phase 1 | Construction | FOH | Level 1 |  |  | BAB | 2023-04-21 | 2023-04-20 | Ed Carter |  |
| QTS-1011380 |  | Restrooms #0107/0108/0112 // Layout Partitions - WRR | 1d | 2026-05-28 A | 2026-05-28 A | QTS-6321, QTS-13171 | 100% |  |  | QTS-PHX3 DC1 - 6 day w/ Holidays |  | Construction | Build Out | IGMP | Phase 1 | Construction | FOH | Level 1 |  |  | BAB |  |  | Ed Carter |  |
| QTS-11021 |  | Restrooms #0107/0108/0112 // Install Electrical Fixtures | 1d | 2026-06-03 A | 2026-07-13 A | QTS-7341, QTS-7801, QTS-11031 | 100% | 2026-06-03 | 2026-06-03 | QTS-PHX3 DC1 - 6 day w/ Holidays |  | Construction | Electrical | IGMP | Phase 1 | Construction | FOH | Level 1 |  |  | BAB | 2023-04-14 | 2023-04-13 | Electrical | Bel-Aire |
| QTS-1011400 |  | Restrooms #0107/0108/0112 // Water Closet/Lavatory Trim Out - MRR | 1d | 2026-06-17 A | 2026-06-29 A | QTS-1011390 | 100% | 2026-06-17 | 2026-06-17 | QTS-PHX3 DC1 - 6 day w/ Holidays |  | Construction | Mechanical | IGMP | Phase 1 | Construction | FOH | Level 1 |  |  | BAB | 2023-04-21 | 2023-04-20 | Mechanical |  |
| QTS-12121 |  | Restrooms #0107/0108/0112 // Water Closet/Lavatory Trim Out - WRR | 1d | 2026-06-17 A | 2026-06-29 A | QTS-11411, QTS-7801 | 100% | 2026-06-17 | 2026-06-17 | QTS-PHX3 DC1 - 6 day w/ Holidays |  | Construction | Mechanical | IGMP | Phase 1 | Construction | FOH | Level 1 |  |  | BAB | 2023-04-21 | 2023-04-20 | Mechanical |  |
| QTS-13301 |  | Restrooms #0107/0108/0112 // Install Plumbing Fixtures at Countertops | 1d | 2026-06-17 A | 2026-06-29 A | QTS-13171 | 100% | 2026-06-10 | 2026-06-10 | QTS-PHX3 DC1 - 6 day w/ Holidays |  | Construction | Mechanical | IGMP | Phase 1 | Construction | FOH | Level 1 |  |  | BAB |  |  | Mechanical |  |
| QTS-44191 |  | Restrooms #0107/0108/0112 // ADA Inspection | 1d | 2026-07-06 A | 2026-07-06 A | QTS-12121, QTS-1011410, QTS-1011380, QTS-11021 SS, QTS-1011400 | 100% | 2026-07-09 | 2026-07-09 | QTS-PHX3 DC1 - 6 day w/ Holidays |  | Construction | Mechanical | IGMP | Phase 1 | Construction | FOH | Level 1 |  |  | BAB | 2023-03-09 | 2023-03-09 | Mechanical |  |

Notes:
- QTS-1007100: Scheduler Notes: Added activities to Install Cable Tray, Fiber, Server Configuration and / Upload graphics / Notes: Added activities to Install Cable Tray, Fiber, Server Configuration and Upload graphics
- QTS-2291: allucent_notes_20251118_192630: Luis Vea on 2025-10-14 10:10: going to push this to Saturday work, PCI is completing a critical item this week. / Luis Vea on 2025-10-20T18:16:28.459Z: waiting for shaft wall due to BAM line sets and duct run to be installed. / Jason Johnston on 2025-10-21 11:10: Reallocated manpower to zone 1 priority / Jason Johnston on 2025-11-03 11:11: Working to complete by Thursday. / Luis Vea on 2025-11-10 11:11: Walls have been completed, needing just ceiling / Jason Johnston on 2025-11-11 15:11: Add shaft wall build out. / Jason Johnston on 2025-11-18T21:39:14.695Z: After Green Mile / allucent_notes_20251111_182405: Luis Vea on 2025-10-14 10:10: going to push this to Saturday work, PCI is completing a critical item this week. / Luis Vea on 2025-10-20T18:16:28.459Z: waiting for shaft wall due to BAM line sets and duct run to be installed. / Jason Johnston on 2025-10-21 11:10: Reallocated manpower to zone 1 priority / Jason Johnston on 2025-11-03 11:11: Working to complete by Thursday. / Luis Vea on 2025-11-10 11:11: Walls have been completed, needing just ceiling / Jason Johnston on 2025-11-11 15:11: Add shaft wall build out. / allucent_notes_20251104_160200: Luis Vea on 2025-10-14 10:10: going to push this to Saturday work, PCI is completing a critical item this week. / Luis Vea on 2025-10-20T18:16:28.459Z: waiting for shaft wall due to BAM line sets and duct run to be installed. / Jason Johnston on 2025-10-21 11:10: Reallocated manpower to zone 1 priority / Jason Johnston on 2025-11-03 11:11: Working to complete by Thursday. / allucent_notes_20251028_163138: Luis Vea on 2025-10-14 10:10: going to push this to Saturday work, PCI is completing a critical item this week. / Luis Vea on 2025-10-20T18:16:28.459Z: waiting for shaft wall due to BAM line sets and duct run to be installed. / Jason Johnston on 2025-10-21 11:10: Reallocated manpower to zone 1 priority / allucent_notes_20251027_224008: Luis Vea on 2025-10-14 10:10: going to push this to Saturday work, PCI is completing a critical item this week. / Luis Vea on 2025-10-20T18:16:28.459Z: waiting for shaft wall due to BAM line sets and duct run to be installed. / Jason Johnston on 2025-10-21 11:10: Reallocated manpower to zone 1 priority / allucent_notes_20251021_145627: Luis Vea on 2025-10-14 10:10: going to push this to Saturday work, PCI is completing a critical item this week. / Luis Vea on 2025-10-20T18:16:28.459Z: waiting for shaft wall due to BAM line sets and duct run to be installed. / Jason Johnston on 2025-10-21 11:10: Reallocated manpower to zone 1 priority / allucent_notes_20251014_152335: Luis Vea on 2025-10-14 10:10: going to push this to Saturday work, PCI is completing a critical item this week. / allucent_notes: 2025-10-14 10:10 - User: Luis Vea - Date Added: 2025-10-14 10:10 - Note: going to push this to Saturday work, PCI is completing a critical item this week. / 2025-10-20T18:16:28.459Z - User: Luis Vea - Date Added: 2025-10-20T18:16:28.459Z - Note: waiting
- QTS-2621: allucent_notes_20251202_153722: Luis Vea on 2025-10-14 10:10: installing their carriers, and DWV connections. going to be running water lines this week / David Wiltberger on 2025-10-21 13:10: Wall priority changed to complete early access on time / Jason Johnston on 2025-11-03T18:50:20.963Z: Waiting for Second floor tie in inspection to be completed. / David Wiltberger on 2025-11-17 16:11: out of sequence / allucent_notes_20251118_192630: Luis Vea on 2025-10-14 10:10: installing their carriers, and DWV connections. going to be running water lines this week / David Wiltberger on 2025-10-21 13:10: Wall priority changed to complete early access on time / Jason Johnston on 2025-11-03T18:50:20.963Z: Waiting for Second floor tie in inspection to be completed. / David Wiltberger on 2025-11-17 16:11: out of sequence / allucent_notes_20251111_182405: Luis Vea on 2025-10-14 10:10: installing their carriers, and DWV connections. going to be running water lines this week / David Wiltberger on 2025-10-21 13:10: Wall priority changed to complete early access on time / Jason Johnston on 2025-11-03T18:50:20.963Z: Waiting for Second floor tie in inspection to be completed. / allucent_notes_20251104_160200: Luis Vea on 2025-10-14 10:10: installing their carriers, and DWV connections. going to be running water lines this week / David Wiltberger on 2025-10-21 13:10: Wall priority changed to complete early access on time / Jason Johnston on 2025-11-03T18:50:20.963Z: Waiting for Second floor tie in inspection to be completed. / allucent_notes_20251028_163138: Luis Vea on 2025-10-14 10:10: installing their carriers, and DWV connections. going to be running water lines this week / David Wiltberger on 2025-10-21 13:10: Wall priority changed to complete early access on time / allucent_notes_20251027_224008: Luis Vea on 2025-10-14 10:10: installing their carriers, and DWV connections. going to be running water lines this week / David Wiltberger on 2025-10-21 13:10: Wall priority changed to complete early access on time / allucent_notes_20251021_145627: Luis Vea on 2025-10-14 10:10: installing their carriers, and DWV connections. going to be running water lines this week / David Wiltberger on 2025-10-21 13:10: Wall priority changed to complete early access on time / allucent_notes_20251014_152335: Luis Vea on 2025-10-14 10:10: installing their carriers, and DWV connections. going to be running water lines this week / allucent_notes: 2025-10-14 10:10 - User: Luis Vea - Date Added: 2025-10-14 10:10 - Note: installing their carriers, and DWV connections. going to be running water lines this week / 2025-10-21 13:10 - User: David Wiltberger - Date Added: 2025-10-21 13:10 - Note: Wall pri
- QTS-2611: allucent_notes_20251202_153722: Luis Vea on 2025-10-14 09:10: started from south 0105 corridor for inwall rough / Luis Vea on 2025-10-14 10:10: plumbing needs to finish and also needing furout walls for the wet walls to be framed. again, need plumbing to finish / Luis Vea on 2025-10-20T18:19:28.643Z: on going, plumbing needs to finish and also needing furout walls for the wet walls to be framed. again, need plumbing to finish / Framing is not completed due to fan walls manpower got pulled / Scott Masterson on 2025-10-21 11:10: Walls were held off due to plumbing carrier build out. Walls were also held back due to Steel install for the Elevator. REI will be working recovery thir week to get this caught up. / allucent_notes_20251118_192630: Luis Vea on 2025-10-14 09:10: started from south 0105 corridor for inwall rough / Luis Vea on 2025-10-14 10:10: plumbing needs to finish and also needing furout walls for the wet walls to be framed. again, need plumbing to finish / Luis Vea on 2025-10-20T18:19:28.643Z: on going, plumbing needs to finish and also needing furout walls for the wet walls to be framed. again, need plumbing to finish / Framing is not completed due to fan walls manpower got pulled / Scott Masterson on 2025-10-21 11:10: Walls were held off due to plumbing carrier build out. Walls were also held back due to Steel install for the Elevator. REI will be working recovery thir week to get this caught up. / allucent_notes_20251111_182405: Luis Vea on 2025-10-14 09:10: started from south 0105 corridor for inwall rough / Luis Vea on 2025-10-14 10:10: plumbing needs to finish and also needing furout walls for the wet walls to be framed. again, need plumbing to finish / Luis Vea on 2025-10-20T18:19:28.643Z: on going, plumbing needs to finish and also needing furout walls for the wet walls to be framed. again, need plumbing to finish / Framing is not completed due to fan walls manpower got pulled / Scott Masterson on 2025-10-21 11:10: Walls were held off due to plumbing carrier build out. Walls were also held back due to Steel install for the Elevator. REI will be working recovery thir week to get this caught up. / allucent_notes_20251104_160200: Luis Vea on 2025-10-14 09:10: started from south 0105 corridor for inwall rough / Luis Vea on 2025-10-14 10:10: plumbing needs to finish and also needing furout walls for the wet walls to be framed. again, need plumbing to finish / Luis Vea on 2025-10-20T18:19:28.643Z: on going, plumbing needs to finish and also needing furout walls for the wet walls to be framed. again, need plumbing to finish / Framing is not completed due to fan walls manpower got pulled / Scott Masterson on 2025-10-21 11:10: Walls were held off due to plumbing carrier build out. Walls were also held back due to Steel install for the Elevator. REI will be working recovery thir week to get this caught up. / allucent_notes_20251028_163138: Luis Vea on 2025-10-14 09:10: started from south 0105 corridor for inwall rough / Luis Vea on 2025-10-14 10:10: plumbing needs to finish and also needing furout walls for the wet walls to be framed. again, need plumbing to finish / Luis Vea on 2025-10-20T18:19:28.643Z: on going, plumbing needs to finish and also needing furout walls for the wet walls to be framed. again, need plumbing to finish / Framing is not completed due to fan walls manpower got pulled / Scott Masterson on 2025-10-21 11:10: Walls were held off due to plumbing carrier build out. Walls were also held back due to Steel install for the Elevator. REI will be working recovery thir week to get this caught up. / allucent_notes_20251027_224008: Luis Vea on 2025-10-14 09:10: started from south 0105 corridor for inwall rough / Luis Vea on 2025-10-14 10:10: plumbing needs to finish and also needing furout walls for the wet walls to be framed. again, need plumbing to finish / Luis Vea on 2025-10-20T18:19:28.643Z: on going, plumbing needs to finish and also needing furout walls for the wet walls to be framed. again, need plumbing to finish / Framing is not completed due to fan walls manpower got pulled / Scott Masterson on 2025-10-21 11:10: Walls were held off due to plumbing carrier build out. Walls were also held back due to Steel install for the Elevator. REI will be working recovery thir week to get this caught up. / allucent_notes_20251021_145627: Luis Vea on 2025-10-14 09:10: started from south 0105 corridor for inwall rough / Luis Vea on 2025-10-14 10:10: plumbing needs to finish and also needing furout walls for the wet walls to be framed. again, need plumbing to finish / Luis Vea on 2025-10-20T18:19:28.643Z: on going, plumbing needs to finish and also needing furout walls for the wet walls to be framed. again, need plumbing to finish / Framing is not completed due to fan walls manpower got pulled / Scott Masterson on 2025-10-21 11:10: Walls were held off due to plumbing carrier build out. Walls were also held back due to Steel install for the Elevator. REI will be working recovery thir week to get this caught up. / allucent_notes_20251014_152335: Luis Vea on 2025-10-14 09:10: started from south 0105 corridor for inwall rough / Luis Vea on 2025-10-14 10:10: plumbing needs to finish and also needing furout walls for the wet walls to be framed. again, need plumbing to finish / allucent_notes: 2025-10-14 09:10 - User: Luis Vea - Date Added: 2025-10-14 09:10 - Note: started from south 0105 corridor for inwall rough / 2025-10-14 10:10 - User: Luis Vea - Date Added: 2025-10-14 10:10 - Note: plumbing needs to finish and also needing furout walls f
- QTS-3731: allucent_notes_20251216_165335: Luis Vea on 2025-10-20T18:18:01.184Z: manpower got pulled for fan walls installation, focus right now is early access rooms and priority rooms / Jason Johnston on 2025-10-21 11:10: Moving out until after framing. / Luis Vea on 2025-11-10 11:11: brackets got installed, needing backing / Luis Vea on 2025-11-10 11:11: need backing, shafts walls and furout was holding up backing. / Sean Waisner on 2025-12-02 15:22: Re-sequencing for priority / Sean Waisner on 2025-12-16 15:06: Not priority due to sequencing / allucent_notes_20251209_203830: Luis Vea on 2025-10-20T18:18:01.184Z: manpower got pulled for fan walls installation, focus right now is early access rooms and priority rooms / Jason Johnston on 2025-10-21 11:10: Moving out until after framing. / Luis Vea on 2025-11-10 11:11: brackets got installed, needing backing / Luis Vea on 2025-11-10 11:11: need backing, shafts walls and furout was holding up backing. / Sean Waisner on 2025-12-02 15:22: Re-sequencing for priority / allucent_notes_20251202_153722: Luis Vea on 2025-10-20T18:18:01.184Z: manpower got pulled for fan walls installation, focus right now is early access rooms and priority rooms / Jason Johnston on 2025-10-21 11:10: Moving out until after framing. / Luis Vea on 2025-11-10 11:11: brackets got installed, needing backing / Luis Vea on 2025-11-10 11:11: need backing, shafts walls and furout was holding up backing. / Sean Waisner on 2025-12-02 15:22: Re-sequencing for priority / allucent_notes_20251118_192630: Luis Vea on 2025-10-20T18:18:01.184Z: manpower got pulled for fan walls installation, focus right now is early access rooms and priority rooms / Jason Johnston on 2025-10-21 11:10: Moving out until after framing. / Luis Vea on 2025-11-10 11:11: brackets got installed, needing backing / Luis Vea on 2025-11-10 11:11: need backing, shafts walls and furout was holding up backing. / allucent_notes_20251111_182405: Luis Vea on 2025-10-20T18:18:01.184Z: manpower got pulled for fan walls installation, focus right now is early access rooms and priority rooms / Jason Johnston on 2025-10-21 11:10: Moving out until after framing. / Luis Vea on 2025-11-10 11:11: brackets got installed, needing backing / Luis Vea on 2025-11-10 11:11: need backing, shafts walls and furout was holding up backing. / allucent_notes_20251104_160200: Luis Vea on 2025-10-20T18:18:01.184Z: manpower got pulled for fan walls installation, focus right now is early access rooms and priority rooms / Jason Johnston on 2025-10-21 11:10: Moving out until after framing. / allucent_notes_20251028_163138: Luis Vea on 2025-10-20T18:18:01.184Z: manpower got pulled for fan walls installation, focus right now is early access rooms and priority rooms / Jason Johnston on 2025-10-21 11:10: Moving out until after framing. / allucent_notes_20251027_224008: Luis Vea on 2025-10-20T18:18:01.184Z: manpower got pulled for fan walls installation, focus right now is early access rooms and priority rooms / Jason Johnston on 2025-10-21 11:10: Moving out until after framing. / allucent_notes_20251021_145627: Luis Vea on 2025-10-20T18:18:01.184Z: manpower got pulled for fan walls installation, focus right now is early access rooms and priority rooms / Jason Johnston on 2025-10-21 11:10: Moving out until after framing. / allucent_notes_20251230_164549: Luis Vea on 2025-10-20T18:18:01.184Z: manpower got pulled for fan walls installation, focus right now is early access rooms and priority rooms / Jason Johnston on 2025-10-21 11:10: Moving out until after framing. / Luis Vea on 2025-11-10 11:11: brackets got installed, needing backing / Luis Vea on 2025-11-10 11:11: need backing, shafts walls and furout was holding up backing. / Sean Waisner on 2025-12-02 15:22: Re-sequencing for priority / Sean Waisner on 2025-12-16 15:06: Not priority due to sequencing / allucent_notes: 2025-10-20T18:18:01.184Z - User: Luis Vea - Date Added: 2025-10-20T18:18:01.184Z - Note: manpower got pulled for fan walls installation, focus right now is early access rooms and priority rooms / 2025-10-21 11:10 - User: Jason Johnston - Date Added: 2025
- QTS-1004440: allucent_notes_20251230_164549: JD Kitchens on 2025-12-30 14:30: update / Scheduler Notes: JD Kitchens on 2025-12-30 14:30: update / Need duration for this / Notes: Need duration for this / allucent_notes: 2025-12-30 14:30 - User: JD Kitchens - Date Added: 2025-12-30 14:30 - Note: update
- QTS-3711: allucent_notes_20251230_164549: JD Kitchens on 2025-12-30 14:30: update / allucent_notes: 2025-12-30 14:30 - User: JD Kitchens - Date Added: 2025-12-30 14:30 - Note: update
- QTS-2601: allucent_notes_20251118_192630: Luis Vea on 2025-10-14 10:10: need bam to bring down the duct room from the shaft, also need plumbers to get area. / David Wiltberger on 2025-11-17 16:11: out of sequence / allucent_notes_20251111_182405: Luis Vea on 2025-10-14 10:10: need bam to bring down the duct room from the shaft, also need plumbers to get area. / allucent_notes_20251104_160200: Luis Vea on 2025-10-14 10:10: need bam to bring down the duct room from the shaft, also need plumbers to get area. / allucent_notes_20251028_163138: Luis Vea on 2025-10-14 10:10: need bam to bring down the duct room from the shaft, also need plumbers to get area. / allucent_notes_20251027_224008: Luis Vea on 2025-10-14 10:10: need bam to bring down the duct room from the shaft, also need plumbers to get area. / allucent_notes_20251021_145627: Luis Vea on 2025-10-14 10:10: need bam to bring down the duct room from the shaft, also need plumbers to get area. / allucent_notes_20251014_152335: Luis Vea on 2025-10-14 10:10: need bam to bring down the duct room from the shaft, also need plumbers to get area. / allucent_notes: 2025-10-14 10:10 - User: Luis Vea - Date Added: 2025-10-14 10:10 - Note: need bam to bring down the duct room from the shaft, also need plumbers to get area. / 2025-11-17 16:11 - User: David Wiltberger - Date Added: 2025-11-17 16:11 - Note: out of seque
- QTS-4381: Scheduler Notes: 1/20/26: In wall plumbing is incomplete in this room. / Notes: 1/20/26: In wall plumbing is incomplete in this room.
- QTS-120020: allucent_notes_20251118_192630: Luis Vea on 2025-10-14 10:10: going to push this to Saturday work, PCI is completing a critical item this week. / Luis Vea on 2025-10-20T18:16:28.459Z: waiting for shaft wall due to BAM line sets and duct run to be installed. / Jason Johnston on 2025-10-21 11:10: Reallocated manpower to zone 1 priority / Jason Johnston on 2025-11-03 11:11: Working to complete by Thursday. / Luis Vea on 2025-11-10 11:11: Walls have been completed, needing just ceiling / Jason Johnston on 2025-11-11 15:11: Add shaft wall build out. / Jason Johnston on 2025-11-18T21:39:14.695Z: After Green Mile / allucent_notes_20251111_182405: Luis Vea on 2025-10-14 10:10: going to push this to Saturday work, PCI is completing a critical item this week. / Luis Vea on 2025-10-20T18:16:28.459Z: waiting for shaft wall due to BAM line sets and duct run to be installed. / Jason Johnston on 2025-10-21 11:10: Reallocated manpower to zone 1 priority / Jason Johnston on 2025-11-03 11:11: Working to complete by Thursday. / Luis Vea on 2025-11-10 11:11: Walls have been completed, needing just ceiling / Jason Johnston on 2025-11-11 15:11: Add shaft wall build out. / allucent_notes_20251104_160200: Luis Vea on 2025-10-14 10:10: going to push this to Saturday work, PCI is completing a critical item this week. / Luis Vea on 2025-10-20T18:16:28.459Z: waiting for shaft wall due to BAM line sets and duct run to be installed. / Jason Johnston on 2025-10-21 11:10: Reallocated manpower to zone 1 priority / Jason Johnston on 2025-11-03 11:11: Working to complete by Thursday. / allucent_notes_20251028_163138: Luis Vea on 2025-10-14 10:10: going to push this to Saturday work, PCI is completing a critical item this week. / Luis Vea on 2025-10-20T18:16:28.459Z: waiting for shaft wall due to BAM line sets and duct run to be installed. / Jason Johnston on 2025-10-21 11:10: Reallocated manpower to zone 1 priority / allucent_notes_20251027_224008: Luis Vea on 2025-10-14 10:10: going to push this to Saturday work, PCI is completing a critical item this week. / Luis Vea on 2025-10-20T18:16:28.459Z: waiting for shaft wall due to BAM line sets and duct run to be installed. / Jason Johnston on 2025-10-21 11:10: Reallocated manpower to zone 1 priority / allucent_notes_20251021_145627: Luis Vea on 2025-10-14 10:10: going to push this to Saturday work, PCI is completing a critical item this week. / Luis Vea on 2025-10-20T18:16:28.459Z: waiting for shaft wall due to BAM line sets and duct run to be installed. / Jason Johnston on 2025-10-21 11:10: Reallocated manpower to zone 1 priority / allucent_notes_20251014_152335: Luis Vea on 2025-10-14 10:10: going to push this to Saturday work, PCI is completing a critical item this week. / allucent_notes: 2025-10-14 10:10 - User: Luis Vea - Date Added: 2025-10-14 10:10 - Note: going to push this to Saturday work, PCI is completing a critical item this week. / 2025-10-20T18:16:28.459Z - User: Luis Vea - Date Added: 2025-10-20T18:16:28.459Z - Note: waiting
- QTS-45511: allucent_notes_20251230_164549: JD Kitchens on 2025-12-30 14:36: Update / allucent_notes: 2025-12-30 14:36 - User: JD Kitchens - Date Added: 2025-12-30 14:36 - Note: Update
- QTS-44181: Scheduler Notes: 3/17: Delayed waiting for fire protection pressure test. / Notes: 3/17: Delayed waiting for fire protection pressure test.
- QTS-6321: Scheduler Notes: 4/7: Delayed waiting for fire protection pressure test. 3/17: / Delayed waiting for fire protection pressure test. / Notes: 4/7: Delayed waiting for fire protection pressure test. 3/17: Delayed waiting for fire protection pressure test.
- QTS-6751: Scheduler Notes: 3/17: Delayed waiting for fire protection pressure test. / Notes: 3/17: Delayed waiting for fire protection pressure test.

| ID | WBS | Activity | Duration | Start | Finish | Predecessors | Complete | Remaining | Planned start | Planned finish | Total float | Free float | Allucent CSI Group | Project Section | Phase-1 | Layton Discipline | Baseline | Location | Level | Fragnet | Owner Impact Analysis | Layton Super | Fragnet Responsible Party | TFO-CONST ONLY | Contract | Phase-1-1 | Project Section-1 |
| --- | --- | --- | --- | --- | --- | --- | --- | --- | --- | --- | --- | --- | --- | --- | --- | --- | --- | --- | --- | --- | --- | --- | --- | --- | --- | --- | --- |
|  | 5 | **L1 / FOH // Electrical Room #0172/0173** |  | 2025-09-11 | 2026-10-22 |  |  |  |  |  |  |  |  |  |  |  |  |  |  |  |  |  |  |  |  |  |  |
|  | 2 | **Fragnet - L1 / FOH // Electrical Room #0172/0173** |  | 2026-07-22 | 2026-10-22 |  |  |  |  |  |  |  |  |  |  |  |  |  |  |  |  |  |  |  |  |  |  |
| QTS-1013790 |  | TFO SCOPE / Electrical Room - Fragnet to Procure Breaker for Emergency Lighting | 60d | 2026-07-22 A | 2026-10-21 | QTS-27661 | 25% | 45d | 2025-12-22 | 2026-03-23 | -36d | 0d | 01ADMIN | Construction | Phase 1 | Procurement | IGMP | FOH | Level 1 | Fragnet | Y | Electrical | Quality Technology Services | TFO CONST | TFO |  |  |
| QTS-1013800 |  | TFO SCOPE / Electrical Room - Fragnet to Install Replacement Breaker for Emergency Lighting | 1d | 2026-10-22 | 2026-10-22 | QTS-1013790 |  |  |  |  | -36d | 13d | 01ADMIN | Construction | Phase 1 | Electrical | IGMP | FOH | Level 1 | Fragnet | Y | Electrical | Quality Technology Services | TFO CONST | TFO |  |  |
|  | 1 | **L1 / FOH // Electrical Room #0172/0173 - Existing Scope** |  | 2025-09-11 | 2025-12-16 |  |  |  |  |  |  |  |  |  |  |  |  |  |  |  |  |  |  |  |  |  |  |
| QTS-44241 |  | Electrical Room #0172 // Concrete Seal | 3d | 2025-09-11 A | 2025-09-15 A | QTS-44161 | 100% |  |  |  |  |  |  | Construction |  | Build Out | IGMP | FOH | Level 1 |  |  | Doug Hayes |  |  | BAB | Phase 1 | Construction |
| QTS-26281 |  | Electrical Room #0172 // Rough Overhead Fire Sprinkler | 3d | 2025-10-08 A | 2025-10-10 A | QTS-2381, QTS-44241 | 100% |  |  |  |  |  | 01ADMIN | Construction | Phase 1 | Mechanical | IGMP | FOH | Level 1 |  |  |  |  |  | BAB |  |  |
| QTS-25941 |  | Electrical Room #0172 // Frame Walls | 2d | 2025-10-10 A | 2025-10-15 A | QTS-26281, QTS-25731 SS | 100% |  | 2025-10-13 | 2025-10-14 |  |  | 01ADMIN | Construction | Phase 1 | Build Out | IGMP | FOH | Level 1 |  |  | Doug Hayes |  |  | BAB |  |  |
| QTS-26261 |  | Electrical Room #0172 // Rough In Electrical | 10d | 2025-10-16 A | 2025-11-06 A | QTS-25941 | 100% |  | 2025-10-16 | 2025-10-29 |  |  | 01ADMIN | Construction | Phase 1 | Electrical | IGMP | FOH | Level 1 |  |  |  |  |  | BAB |  |  |
| QTS-26291 |  | Electrical Room #0172 // Rough Overhead Linesets | 3d | 2025-10-16 A | 2025-11-07 A | QTS-25941 | 100% |  | 2025-10-16 | 2025-10-20 |  |  | 01ADMIN | Construction | Phase 1 | Mechanical | IGMP | FOH | Level 1 |  |  |  |  |  | BAB |  |  |
| QTS-26411 |  | Electrical Room #0172 // In Wall Inspection | 1d | 2025-11-06 A | 2025-11-06 A | QTS-26261 | 100% |  |  |  |  |  | 01ADMIN | Construction | Phase 1 | Mechanical | IGMP | FOH | Level 1 |  |  |  |  |  | BAB |  |  |
| QTS-26431 |  | Electrical Room #0172 // Hang Drywall | 1d | 2025-11-12 A | 2025-11-12 A | QTS-26411 | 100% |  | 2025-11-07 | 2025-11-07 |  |  | 01ADMIN | Construction | Phase 1 | Build Out | IGMP | FOH | Level 1 |  |  | Doug Hayes |  |  | BAB |  |  |
| QTS-44201 |  | Electrical Room #0172 // Screw Inspection | 1d | 2025-11-13 A | 2025-11-13 A | QTS-26431 | 100% |  | 2025-11-10 | 2025-11-10 |  |  | 01ADMIN | Construction |  | Build Out | IGMP | FOH | Level 1 |  |  | Doug Hayes |  |  | BAB | Phase 1 | Construction |
| QTS-26541 |  | Electrical Room #0172 // Tape & Finish Drywall | 3d | 2025-11-14 A | 2025-11-19 A | QTS-44201, QTS-26431 | 100% |  | 2025-11-11 | 2025-11-13 |  |  | 01ADMIN | Construction | Phase 1 | Build Out | IGMP | FOH | Level 1 |  |  |  |  |  | BAB |  |  |
| QTS-26901 |  | Electrical Room #0172 // Prime & Paint | 2d | 2025-11-20 A | 2025-11-20 A | QTS-26541 | 100% |  | 2025-11-21 | 2025-11-24 |  |  | 01ADMIN | Construction | Phase 1 | Build Out | IGMP | FOH | Level 1 |  |  |  |  |  | BAB |  |  |
| QTS-44891 |  | Electrical Room #0172 // Set HM Frame | 1d | 2025-11-24 A | 2025-11-24 A | QTS-15231, QTS-25941 SS | 100% |  |  |  |  |  | 01ADMIN | Construction |  | Build Out | IGMP | FOH | Level 1 |  |  |  |  |  | BAB | Phase 1 | Construction |
| QTS-27341 |  | Electrical Room #0172 // Set House Switchboard | 1d | 2025-11-25 A | 2025-11-25 A | QTS-27201, QTS-26901 | 100% |  |  |  |  |  | 01ADMIN | Construction |  | Electrical | IGMP | FOH | Level 1 |  |  |  |  |  | BAB | Phase 1 | Construction |
| QTS-27461 |  | Electrical Room #0172 // Install AC Unit | 2d | 2025-11-25 A | 2025-11-25 A | QTS-26291, QTS-26901 | 100% |  | 2025-11-25 | 2025-11-26 |  |  | 01ADMIN | Construction | Phase 1 | Mechanical | IGMP | FOH | Level 1 |  |  |  |  |  | BAB |  |  |
| QTS-44221 |  | Electrical Room #0172 // Rough In Electrical - HSE SWD (Early Access) | 10d | 2025-12-01 A | 2025-12-11 A | QTS-27341 | 100% |  | 2025-12-01 | 2025-12-12 |  |  | 01ADMIN | Construction |  | Electrical | IGMP | FOH | Level 1 |  |  |  |  |  | BAB | Phase 1 | Construction |
| QTS-44211 |  | Electrical Room #0172 // Rough Mechanical Inspection | 1d | 2025-12-03 A | 2025-12-03 A | QTS-27461 | 100% |  |  |  |  |  | 01ADMIN | Construction |  | Mechanical | IGMP | FOH | Level 1 |  |  |  |  |  | BAB | Phase 1 | Construction |
| QTS-27291 |  | Electrical Room #0172 // Set Static Transfer Switch | 1d | 2025-12-04 A | 2025-12-04 A | QTS-26901, QTS-27161 | 100% |  |  |  |  |  | 01ADMIN | Construction |  | Electrical | IGMP | FOH | Level 1 |  |  |  |  |  | BAB | Phase 1 | Construction |
| QTS-27311 |  | Electrical Room #0172 // OFCI - L2 SET IN PLACE - Eq Type # - UPS HSE - 1 unit | 1d | 2025-12-04 A | 2025-12-04 A | QTS-26901, QTS-27181 | 100% |  |  |  |  |  | 01ADMIN | Construction |  | Electrical | IGMP | FOH | Level 1 |  |  |  |  |  | BAB | Phase 1 | Construction |
| QTS-27661 |  | Electrical Room #0172 // Install Light Fixtures | 2d | 2025-12-15 A | 2025-12-16 A | QTS-44211, QTS-27461 | 100% |  |  |  |  |  | 01ADMIN | Construction | Phase 1 | Electrical | IGMP | FOH | Level 1 |  |  |  |  |  | BAB |  |  |
| QTS-26271 |  | Electrical Room #0172 // Set Door & Hardware (Temp) | 3d | 2025-12-16 A | 2025-12-16 A | QTS-27661, QTS-99650, QTS-26541 FF, QTS-44891, QTS-15231, QTS-25941 | 100% |  | 2025-12-22 | 2025-12-29 |  |  | 01ADMIN | Construction | Phase 1 | Build Out | IGMP | FOH | Level 1 |  |  |  |  |  | BAB |  |  |

Notes:
- QTS-1013790: Scheduler Notes: Replacement Breaker for Emergency Lighting
- QTS-25941: allucent_notes_20251021_145627: Luis Vea on 2025-10-08 10:10: space is available, top track has started / Luis Vea on 2025-10-14 10:10: area was available / Luis Vea on 2025-10-14 10:10: needing exterior walls to complete / Luis Vea on 2025-10-20T18:21:54.942Z: waiting for 3-inch wall material to arrive, it should be arriving today to start tomorrow / allucent_notes_20251014_152335: Luis Vea on 2025-10-08 10:10: space is available, top track has started / Luis Vea on 2025-10-14 10:10: area was available / Luis Vea on 2025-10-14 10:10: needing exterior walls to complete / allucent_notes: 2025-10-08 10:10 - User: Luis Vea - Date Added: 2025-10-08 10:10 - Note: space is available, top track has started / 2025-10-14 10:10 - User: Luis Vea - Date Added: 2025-10-14 10:10 - Note: area was available / 2025-10-14 10:10 - User: Luis Vea - Date
- QTS-26261: allucent_notes_20251118_192630: Luis Vea on 2025-10-20T18:26:03.210Z: this scope has started today, there are electrical boxes installed. / Jason Johnston on 2025-11-03 14:11: Completing tomorrow / Jason Johnston on 2025-11-04 12:11: Missed inspection because fire taping was incomplete gating the completion of electric rough in / Luis Vea on 2025-11-10 11:11: expected to be completed 11/10 / allucent_notes_20251111_182405: Luis Vea on 2025-10-20T18:26:03.210Z: this scope has started today, there are electrical boxes installed. / Jason Johnston on 2025-11-03 14:11: Completing tomorrow / Jason Johnston on 2025-11-04 12:11: Missed inspection because fire taping was incomplete gating the completion of electric rough in / Luis Vea on 2025-11-10 11:11: expected to be completed 11/10 / allucent_notes_20251104_160200: Luis Vea on 2025-10-20T18:26:03.210Z: this scope has started today, there are electrical boxes installed. / Jason Johnston on 2025-11-03 14:11: Completing tomorrow / Jason Johnston on 2025-11-04 12:11: Missed inspection because fire taping was incomplete gating the completion of electric rough in / allucent_notes_20251028_163138: Luis Vea on 2025-10-20T18:26:03.210Z: this scope has started today, there are electrical boxes installed. / allucent_notes_20251027_224008: Luis Vea on 2025-10-20T18:26:03.210Z: this scope has started today, there are electrical boxes installed. / allucent_notes_20251021_145627: Luis Vea on 2025-10-20T18:26:03.210Z: this scope has started today, there are electrical boxes installed. / allucent_notes: 2025-10-20T18:26:03.210Z - User: Luis Vea - Date Added: 2025-10-20T18:26:03.210Z - Note: this scope has started today, there are electrical boxes installed. / 2025-11-03 14:11 - User: Jason Johnston - Date Added: 2025-11-03 14:11 - Note: Completing tomo
- QTS-26291: allucent_notes_20251118_192630: Luis Vea on 2025-10-20T18:23:22.108Z: line sets have not been dropped from second floor / David Wiltberger on 2025-10-21 13:10: Finishing line sets impacted by Progressive not allowing roof access for safety reasons / Scott Masterson on 2025-10-27 16:10: Room was completed over the weekend so BAM can finalize install this week. / Jason Johnston on 2025-10-28 16:10: Need more detailed break out top out work to get lines installed. / Jason Johnston on 2025-11-03 14:11: BAM committed to all line sets done by 11/14 / Luis Vea on 2025-11-10 11:11: needing to run to each room and brace and purge / allucent_notes_20251111_182405: Luis Vea on 2025-10-20T18:23:22.108Z: line sets have not been dropped from second floor / David Wiltberger on 2025-10-21 13:10: Finishing line sets impacted by Progressive not allowing roof access for safety reasons / Scott Masterson on 2025-10-27 16:10: Room was completed over the weekend so BAM can finalize install this week. / Jason Johnston on 2025-10-28 16:10: Need more detailed break out top out work to get lines installed. / Jason Johnston on 2025-11-03 14:11: BAM committed to all line sets done by 11/14 / Luis Vea on 2025-11-10 11:11: needing to run to each room and brace and purge / allucent_notes_20251104_160200: Luis Vea on 2025-10-20T18:23:22.108Z: line sets have not been dropped from second floor / David Wiltberger on 2025-10-21 13:10: Finishing line sets impacted by Progressive not allowing roof access for safety reasons / Scott Masterson on 2025-10-27 16:10: Room was completed over the weekend so BAM can finalize install this week. / Jason Johnston on 2025-10-28 16:10: Need more detailed break out top out work to get lines installed. / Jason Johnston on 2025-11-03 14:11: BAM committed to all line sets done by 11/14 / allucent_notes_20251028_163138: Luis Vea on 2025-10-20T18:23:22.108Z: line sets have not been dropped from second floor / David Wiltberger on 2025-10-21 13:10: Finishing line sets impacted by Progressive not allowing roof access for safety reasons / Scott Masterson on 2025-10-27 16:10: Room was completed over the weekend so BAM can finalize install this week. / Jason Johnston on 2025-10-28 16:10: Need more detailed break out top out work to get lines installed. / allucent_notes_20251027_224008: Luis Vea on 2025-10-20T18:23:22.108Z: line sets have not been dropped from second floor / David Wiltberger on 2025-10-21 13:10: Finishing line sets impacted by Progressive not allowing roof access for safety reasons / Scott Masterson on 2025-10-27 16:10: Room was completed over the weekend so BAM can finalize install this week. / allucent_notes_20251021_145627: Luis Vea on 2025-10-20T18:23:22.108Z: line sets have not been dropped from second floor / David Wiltberger on 2025-10-21 13:10: Finishing line sets impacted by Progressive not allowing roof access for safety reasons / allucent_notes: 2025-10-20T18:23:22.108Z - User: Luis Vea - Date Added: 2025-10-20T18:23:22.108Z - Note: line sets have not been dropped from second floor / 2025-10-21 13:10 - User: David Wiltberger - Date Added: 2025-10-21 13:10 - Note: Finishing line sets impacted by
- QTS-26411: allucent_notes_20251118_192630: Jason Johnston on 2025-11-03 11:11: Inspection scheduled for 11/4 / Jason Johnston on 2025-11-04 12:11: Missed inspection because fire taping was incomplete gating the completion of electric rough in / Luis Vea on 2025-11-10T18:07:11.153Z: passed inspection, Inspector requested some pictures for some walls for completion / allucent_notes_20251111_182405: Jason Johnston on 2025-11-03 11:11: Inspection scheduled for 11/4 / Jason Johnston on 2025-11-04 12:11: Missed inspection because fire taping was incomplete gating the completion of electric rough in / Luis Vea on 2025-11-10T18:07:11.153Z: passed inspection, Inspector requested some pictures for some walls for completion / allucent_notes_20251104_160200: Jason Johnston on 2025-11-03 11:11: Inspection scheduled for 11/4 / Jason Johnston on 2025-11-04 12:11: Missed inspection because fire taping was incomplete gating the completion of electric rough in / allucent_notes: 2025-11-03 11:11 - User: Jason Johnston - Date Added: 2025-11-03 11:11 - Note: Inspection scheduled for 11/4 / 2025-11-04 12:11 - User: Jason Johnston - Date Added: 2025-11-04 12:11 - Note: Missed inspection because fire taping was incomplete gating the
- QTS-26431: allucent_notes_20251118_192630: Luis Vea on 2025-11-10 11:11: REI will release walls to PCI 11/11 / Jason Johnston on 2025-11-11 15:11: delayed by inspection. / allucent_notes_20251111_182405: Luis Vea on 2025-11-10 11:11: REI will release walls to PCI 11/11 / Jason Johnston on 2025-11-11 15:11: delayed by inspection. / allucent_notes: 2025-11-10 11:11 - User: Luis Vea - Date Added: 2025-11-10 11:11 - Note: REI will release walls to PCI 11/11 / 2025-11-11 15:11 - User: Jason Johnston - Date Added: 2025-11-11 15:11 - Note: delayed by inspection.
- QTS-26901: allucent_notes_20251202_153722: Sean Waisner on 2025-12-02 15:24: Scissor lift issue / allucent_notes: 2025-12-02 15:24 - User: Sean Waisner - Date Added: 2025-12-02 15:24 - Note: Scissor lift issue
- QTS-44891: allucent_notes_20251202_153722: Luis Vea on 2025-10-20T18:26:59.919Z: need 173 door to be installed, just need the rough in holes to be installed / Jason Johnston on 2025-11-03 11:11: Delivered and awaiting installation. / Scott Masterson on 2025-11-04 15:11: Just got the door frame, need to install electrical / security before it can be installed. / Jason Johnston on 2025-11-11 15:11: Wrong frame was delivered. / Jason Johnston on 2025-11-18T21:41:30.190Z: Door frame shipped from Mexico. / allucent_notes_20251118_192630: Luis Vea on 2025-10-20T18:26:59.919Z: need 173 door to be installed, just need the rough in holes to be installed / Jason Johnston on 2025-11-03 11:11: Delivered and awaiting installation. / Scott Masterson on 2025-11-04 15:11: Just got the door frame, need to install electrical / security before it can be installed. / Jason Johnston on 2025-11-11 15:11: Wrong frame was delivered. / Jason Johnston on 2025-11-18T21:41:30.190Z: Door frame shipped from Mexico. / allucent_notes_20251111_182405: Luis Vea on 2025-10-20T18:26:59.919Z: need 173 door to be installed, just need the rough in holes to be installed / Jason Johnston on 2025-11-03 11:11: Delivered and awaiting installation. / Scott Masterson on 2025-11-04 15:11: Just got the door frame, need to install electrical / security before it can be installed. / Jason Johnston on 2025-11-11 15:11: Wrong frame was delivered. / allucent_notes_20251104_160200: Luis Vea on 2025-10-20T18:26:59.919Z: need 173 door to be installed, just need the rough in holes to be installed / Jason Johnston on 2025-11-03 11:11: Delivered and awaiting installation. / Scott Masterson on 2025-11-04 15:11: Just got the door frame, need to install electrical / security before it can be installed. / allucent_notes_20251028_163138: Luis Vea on 2025-10-20T18:26:59.919Z: need 173 door to be installed, just need the rough in holes to be installed / allucent_notes_20251027_224008: Luis Vea on 2025-10-20T18:26:59.919Z: need 173 door to be installed, just need the rough in holes to be installed / allucent_notes_20251021_145627: Luis Vea on 2025-10-20T18:26:59.919Z: need 173 door to be installed, just need the rough in holes to be installed / allucent_notes: 2025-10-20T18:26:59.919Z - User: Luis Vea - Date Added: 2025-10-20T18:26:59.919Z - Note: need 173 door to be installed, just need the rough in holes to be installed / 2025-11-03 11:11 - User: Jason Johnston - Date Added: 2025-11-03 11:11 - Note: Delivere
- QTS-27461: allucent_notes_20251202_153722: David Wiltberger on 2025-12-02 06:38: wall built late / allucent_notes: 2025-12-02 06:38 - User: David Wiltberger - Date Added: 2025-12-02 06:38 - Note: wall built late
- QTS-44211: allucent_notes_20251209_203830: Jason Johnston on 2025-12-09 14:44: Not started / allucent_notes: 2025-12-09 14:44 - User: Jason Johnston - Date Added: 2025-12-09 14:44 - Note: Not started
- QTS-27291: allucent_notes_20251209_203830: David Wiltberger on 2025-12-02 13:40: pads need to be poured / Jason Johnston on 2025-12-09 14:43: No gear until dry in / Jason Johnston on 2025-12-09 20:34: Need update from team / allucent_notes_20251202_153722: David Wiltberger on 2025-12-02 13:40: pads need to be poured / allucent_notes: 2025-12-02 13:40 - User: David Wiltberger - Date Added: 2025-12-02 13:40 - Note: pads need to be poured / 2025-12-09 14:43 - User: Jason Johnston - Date Added: 2025-12-09 14:43 - Note: No gear until dry in / 2025-12-09 20:34 - User: Jason Johnston - Dat
- QTS-27311: allucent_notes_20251209_203830: David Wiltberger on 2025-12-02 13:40: New ROJ dates given for update / Jason Johnston on 2025-12-09 14:43: No gear until dry in / Jason Johnston on 2025-12-09 20:34: Need update from team / allucent_notes_20251202_153722: David Wiltberger on 2025-12-02 13:40: New ROJ dates given for update / allucent_notes: 2025-12-02 13:40 - User: David Wiltberger - Date Added: 2025-12-02 13:40 - Note: New ROJ dates given for update / 2025-12-09 14:43 - User: Jason Johnston - Date Added: 2025-12-09 14:43 - Note: No gear until dry in / 2025-12-09 20:34 - User: Jason Johnst
- QTS-27661: allucent_notes_20251216_165335: Jason Johnston on 2025-12-09 20:34: Need update from team / allucent_notes_20251209_203830: Jason Johnston on 2025-12-09 20:34: Need update from team / allucent_notes: 2025-12-09 20:34 - User: Jason Johnston - Date Added: 2025-12-09 20:34 - Note: Need update from team

| ID | WBS | Activity | Duration | Start | Finish | Predecessors | Complete | Planned start | Planned finish | Calendar | Notes | Project Section | Layton Discipline | Baseline | Phase-1-1 | Project Section-1 | Location | Level | Layton Super | Contract | Allucent CSI Group | Trade Partner |
| --- | --- | --- | --- | --- | --- | --- | --- | --- | --- | --- | --- | --- | --- | --- | --- | --- | --- | --- | --- | --- | --- | --- |
|  | 9 | **L1 / FOH // Board Room #0102** |  | 2026-04-09 | 2026-07-10 |  |  |  |  |  |  |  |  |  |  |  |  |  |  |  |  |  |
| QTS-1010260 |  | Board Room #0102 // Tape & Finish Drywall | 4d | 2026-04-09 A | 2026-04-29 A | QTS-1009970 | 100% | 2026-04-15 | 2026-04-18 | QTS-PHX3 DC1 - 6 day w/ Holidays | 3/17: Delayed waiting for fire protection pressure test. | Construction | Build Out | IGMP | Phase 1 | Construction | FOH | Level 1 | Jay Perkins | BAB |  |  |
| QTS-1010280 |  | Board Room #0102 // Paint Walls | 2d | 2026-04-30 A | 2026-05-01 A | QTS-1010260 | 100% |  |  | QTS-PHX3 DC1 - 6 day w/ Holidays |  | Construction | Build Out | IGMP | Phase 1 | Construction | FOH | Level 1 | Jay Perkins | BAB |  |  |
| QTS-1010290 |  | Board Room #0102 // Install Ceiling | 3d | 2026-05-01 A | 2026-05-01 A | QTS-1010280, QTS-1010280 FF | 100% | 2026-05-01 | 2026-05-04 | QTS-PHX3 DC1 - 6 day w/ Holidays |  | Construction | Build Out | IGMP | Phase 1 | Construction | FOH | Level 1 | Jay Perkins | BAB |  |  |
| QTS-1011580 |  | Board Room #0102 // Paint RO For Store Front | 2d | 2026-05-01 A | 2026-05-01 A | QTS-1010260 | 100% | 2026-05-01 | 2026-05-02 | QTS-PHX3 DC1 - 6 day w/ Holidays |  | Construction | Build Out | IGMP | Phase 1 | Construction | FOH | Level 1 | Jay Perkins | BAB |  |  |
| QTS-1010270 |  | Board Room #0102 // Install Store Front Doors | 4d | 2026-05-05 A | 2026-05-06 A | QTS-1010260, QTS-1011580 | 100% | 2026-05-05 | 2026-05-08 | QTS-PHX3 DC1 - 6 day w/ Holidays |  | Construction | Build Out | IGMP | Phase 1 | Construction | FOH | Level 1 | Jay Perkins | BAB |  |  |
| QTS-1011620 |  | Board Room #0102 // Install Doors | 1d | 2026-06-01 A | 2026-06-01 A | QTS-1010290 | 100% | 2026-07-10 | 2026-07-10 | QTS-PHX3 DC1 - 6 day w/ Holidays |  | Construction | Build Out | IGMP | Phase 1 | Construction | FOH | Level 1 | Ed Carter | BAB |  |  |
| QTS-1011970 |  | Board Room #0102 // OH Ceiling Inspection | 1d | 2026-06-24 A | 2026-06-24 A | QTS-1011870, QTS-1010290, QTS-1011940 SS | 100% |  |  | QTS-PHX3 DC1 - 6 day w/ Holidays |  | Construction | Build Out | IGMP | Phase 1 | Construction | FOH | Level 1 | Ed Carter | BAB |  |  |
| QTS-1011980 |  | Board Room #0102 // Drop Ceiling Tile | 1d | 2026-06-25 A | 2026-06-25 A | QTS-1011970 | 100% | 2026-07-01 | 2026-07-01 | QTS-PHX3 DC1 - 6 day w/ Holidays |  | Construction | Build Out | IGMP | Phase 1 | Construction | FOH | Level 1 | Ed Carter | BAB |  |  |
| QTS-1011590 |  | Board Room #0102 // HVAC Trim | 3d | 2026-06-26 A | 2026-06-29 A | QTS-1010270 | 100% |  |  | QTS-PHX3 DC1 - 6 day w/ Holidays |  | Construction | Build Out | IGMP | Phase 1 | Construction | FOH | Level 1 | Jorge Maldonado | BAB |  |  |
| QTS-1010310 |  | Board Room #0102 // Install Millwork, Countertops, & Wood Base | 3d | 2026-07-01 A | 2026-07-06 A | QTS-1010290, QTS-1011590 SS, QTS-1011590 FF | 100% | 2026-07-08 | 2026-07-10 | QTS-PHX3 DC1 - 6 day w/ Holidays |  | Construction | Build Out | IGMP | Phase 1 | Construction | FOH | Level 1 | Ed Carter | BAB |  |  |
| QTS-1010300 |  | Board Room #0102 // Install Chandelier | 2d | 2026-07-08 A | 2026-07-09 A | QTS-1010290, QTS-1011970 | 100% | 2026-07-15 | 2026-07-16 |  |  | Construction | Build Out | IGMP | Phase 1 | Construction | FOH | Level 1 | Ed Carter | BAB |  |  |
| QTS-1011610 |  | Board Room #0102 // Install Wall Covering | 3d | 2026-07-08 A | 2026-07-10 A | QTS-1010310 | 100% | 2026-07-15 | 2026-07-17 | QTS-PHX3 DC1 - 6 day w/ Holidays |  | Construction | Build Out | IGMP | Phase 1 | Construction | FOH | Level 1 | Ed Carter | BAB |  |  |
|  | 7 | **L1 / FOH // Freedom Cafe #0103** |  | 2025-10-28 | 2026-08-29 |  |  |  |  |  |  |  |  |  |  |  |  |  |  |  |  |  |
| QTS-44981 |  | Freedom Cafe / Board Room #0103 // Layout Wall System | 2d | 2025-10-28 A | 2025-11-05 A | QTS-25731 | 100% | 2025-10-28 | 2025-10-29 |  |  | Construction | Build Out | IGMP | Phase 1 | Construction | FOH | Level 1 | Doug Hayes | BAB | 01ADMIN |  |
| QTS-44991 |  | Freedom Cafe / Board Room #0103 // Frame Walls | 5d | 2025-11-17 A | 2025-11-26 A | QTS-44981 | 100% | 2025-11-17 | 2025-11-21 |  |  | Construction | Build Out | IGMP | Phase 1 | Construction | FOH | Level 1 |  | BAB | 01ADMIN |  |
| QTS-45001 |  | Freedom Cafe / Board Room #0103 // Install Fire Sprinkler Drops | 2d | 2025-12-01 A | 2025-12-02 A | QTS-44981 | 100% |  |  |  |  | Construction | Mechanical | IGMP | Phase 1 | Construction | FOH | Level 1 |  | BAB | 01ADMIN |  |
| QTS-45011 |  | Freedom Cafe / Board Room #0103 // HVAC Overhead Duct Work | 2d | 2025-12-23 A | 2026-01-10 A | QTS-45001, QTS-44991 | 100% | 2025-12-23 | 2025-12-24 | QTS-PHX3 DC1 - 6 day w/ Holidays |  | Construction | Electrical | IGMP | Phase 1 | Construction | FOH | Level 1 |  | BAB | 01ADMIN |  |
| QTS-45021 |  | Freedom Cafe / Board Room #0103 // Plumbing Overhead Hangers/Lines | 3d | 2026-01-21 A | 2026-02-11 A | QTS-45011 | 100% | 2026-01-21 | 2026-01-23 | QTS-PHX3 DC1 - 6 day w/ Holidays |  | Construction | Mechanical | IGMP | Phase 1 | Construction | FOH | Level 1 |  | BAB | 01ADMIN |  |
| QTS-101670 |  | Freedom Cafe / Board Room #0103 // Frame Ceilings | 5d | 2026-02-07 A | 2026-02-07 A | QTS-45011 | 100% | 2026-02-21 | 2026-02-26 | QTS-PHX3 DC1 - 6 day w/ Holidays |  | Construction | Build Out | IGMP | Phase 1 | Construction | FOH | Level 1 |  | BAB | 01ADMIN |  |
| QTS-45031 |  | Freedom Cafe / Board Room #0103 // Electrical Overhead Hangers/Conduit | 5d | 2026-02-11 A | 2026-02-16 A | QTS-45021 SS+1d | 100% |  |  | QTS-PHX3 DC1 - 6 day w/ Holidays |  | Construction | Electrical | IGMP | Phase 1 | Construction | FOH | Level 1 |  | BAB | 01ADMIN |  |
| QTS-45081 |  | Freedom Cafe / Board Room #0103 // Layout Electrical For Pendent/Strip Lighting | 1d | 2026-02-12 A | 2026-02-12 A | QTS-101670 | 100% |  |  | QTS-PHX3 DC1 - 6 day w/ Holidays |  | Construction | Electrical | IGMP | Phase 1 | Construction | FOH | Level 1 |  | BAB |  |  |
| QTS-45041 |  | Freedom Cafe / Board Room #0103 // Overhead/Wall MEP Inspections | 2d | 2026-02-17 A | 2026-02-25 A | QTS-45031 | 100% | 2026-02-17 | 2026-02-18 | QTS-PHX3 DC1 - 6 day w/ Holidays | 3/10: PCI has to open walls and there is an RFI | Construction | Electrical | IGMP | Phase 1 | Construction | FOH | Level 1 |  | BAB | 01ADMIN |  |
| QTS-45051 |  | Freedom Cafe / Board Room #0103 // HVAC Overhead Duct Work Insulation | 2d | 2026-02-19 A | 2026-02-20 A | QTS-45041 SS | 100% |  |  | QTS-PHX3 DC1 - 6 day w/ Holidays |  | Construction | Mechanical | IGMP | Phase 1 | Construction | FOH | Level 1 |  | BAB |  |  |
| QTS-1009970 |  | Freedom Cafe / Board Room #0103 // Hang Drywall on Walls | 5d | 2026-03-16 A | 2026-03-20 A | QTS-44991 | 100% |  |  | QTS-PHX3 DC1 - 6 day w/ Holidays | 3/17: Delayed waiting for fire protection pressure test. | Construction | Build Out | IGMP | Phase 1 | Construction | FOH | Level 1 |  | BAB |  |  |
| QTS-1009960 |  | Freedom Cafe #0103 // Tape & Finish Ceiling Drywall | 5d | 2026-04-01 A | 2026-04-27 A | QTS-45061 | 100% | 2026-04-18 | 2026-04-23 | QTS-PHX3 DC1 - 6 day w/ Holidays | 3/17: Delayed waiting for fire protection pressure test. | Construction | Build Out | IGMP | Phase 1 | Construction | FOH | Level 1 |  | BAB |  |  |
| QTS-1010240 |  | Freedom Cafe #0103 // Tape & Finish Drywall | 9d | 2026-04-01 A | 2026-04-27 A | QTS-45071 FF | 100% | 2026-04-18 | 2026-04-28 | QTS-PHX3 DC1 - 6 day w/ Holidays | 3/17: Delayed waiting for fire protection pressure test. | Construction | Build Out | IGMP | Phase 1 | Construction | FOH | Level 1 |  | BAB |  |  |
| QTS-45071 |  | Freedom Cafe #0103 // Hang Drywall | 5d | 2026-04-01 A | 2026-04-27 A | QTS-1009970 | 100% | 2026-03-24 | 2026-03-28 | QTS-PHX3 DC1 - 6 day w/ Holidays | 3/17: Delayed waiting for fire protection pressure test. | Construction | Build Out | IGMP | Phase 1 | Construction | FOH | Level 1 |  | BAB |  |  |
| QTS-45151 |  | Freedom Cafe / Board Room #0103 // Install Electrical Whips In Grid System Hard Lid | 3d | 2026-04-06 A | 2026-04-10 A | QTS-101670 | 100% | 2026-04-06 | 2026-04-08 | QTS-PHX3 DC1 - 6 day w/ Holidays |  | Construction | Electrical | IGMP | Phase 1 | Construction | FOH | Level 1 |  | BAB |  |  |
| QTS-45061 |  | Freedom Cafe / Board Room #0103 // Hang Drywall on Ceilings | 5d | 2026-04-08 A | 2026-04-13 A | QTS-101670, QTS-45051 | 100% |  |  | QTS-PHX3 DC1 - 6 day w/ Holidays | 3/17: Delayed waiting for fire protection pressure test. | Construction | Build Out | IGMP | Phase 1 | Construction | FOH | Level 1 |  | BAB |  |  |
| QTS-45101 |  | Freedom Cafe / Board Room #0103 // Layout Supply Vents in Soffits/Wood Ceiling | 1d | 2026-04-13 A | 2026-04-13 A | QTS-45081 | 100% |  |  | QTS-PHX3 DC1 - 6 day w/ Holidays |  | Construction | Mechanical | IGMP | Phase 1 | Construction | FOH | Level 1 |  | BAB |  |  |
| QTS-45091 |  | Freedom Cafe #0103 // Layout Fire Suppression Drops In Decorative Wood Ceiling | 1d | 2026-04-24 A | 2026-04-24 A | QTS-45081 SS, QTS-45071, QTS-1009960 | 100% |  |  | QTS-PHX3 DC1 - 6 day w/ Holidays |  | Construction | Mechanical | IGMP | Phase 1 | Construction | FOH | Level 1 |  | BAB |  |  |
| QTS-45111 |  | Freedom Cafe #0103 // Prime /First Coat Walls For Tile | 2d | 2026-04-28 A | 2026-04-28 A | QTS-45101 SS, QTS-1010240 | 100% | 2026-04-24 | 2026-04-25 | QTS-PHX3 DC1 - 6 day w/ Holidays |  | Construction | Build Out | IGMP | Phase 1 | Construction | FOH | Level 1 |  | BAB |  |  |
| QTS-1010250 |  | Freedom Cafe #0103 // Install X Fixtures | 2d | 2026-04-29 A | 2026-05-01 A | QTS-45201, QTS-1010240 | 100% | 2026-04-29 | 2026-04-30 |  |  | Construction | Build Out | IGMP | Phase 1 | Construction | FOH | Level 1 | Jay Perkins | BAB |  |  |
| QTS-45201 |  | Freedom Cafe #0103 // Install T Fixtures | 3d | 2026-04-29 A | 2026-04-29 A | QTS-45151, QTS-45071 | 100% | 2026-04-29 | 2026-05-01 |  |  | Construction | Build Out | IGMP | Phase 1 | Construction | FOH | Level 1 | Jay Perkins | BAB |  |  |
| QTS-1011600 |  | Freedom Cafe #0103 // Deliver Millwork, Countertops, & Wood Base | 12d | 2026-05-04 A | 2026-05-06 A | QTS-1010250, QTS-45111 | 100% | 2026-05-04 | 2026-05-16 | QTS-PHX3 DC1 - 6 day w/ Holidays |  | Construction | Build Out | IGMP | Phase 1 | Construction | FOH | Level 1 | Jay Perkins | BAB |  |  |
| QTS-45121 |  | Freedom Cafe #0103 // Install ACT | 5d | 2026-05-12 A | 2026-05-14 A | QTS-45101, QTS-1010250 | 100% | 2026-05-13 | 2026-05-18 | QTS-PHX3 DC1 - 6 day w/ Holidays |  | Construction | Build Out | IGMP | Phase 1 | Construction | FOH | Level 1 | Jay Perkins | BAB |  |  |
| QTS-45141 |  | Freedom Cafe #0103 // Install Fire Sprinkler Drops In Grid System Hard Lid | 2d | 2026-06-03 A | 2026-06-04 A | QTS-45121 | 100% |  |  | QTS-PHX3 DC1 - 6 day w/ Holidays |  | Construction | Build Out | IGMP | Phase 1 | Construction | FOH | Level 1 | Jay Perkins | BAB |  |  |
| QTS-45181 |  | Freedom Cafe #0103 // Install Millwork | 10d | 2026-06-24 A | 2026-06-26 A | QTS-45201, QTS-99660, QTS-99670, QTS-1010250, QTS-1011600 | 100% | 2026-07-15 | 2026-07-25 | QTS-PHX3 DC1 - 6 day w/ Holidays |  | Construction | Build Out | IGMP | Phase 1 | Construction | FOH | Level 1 | Ed Carter | BAB |  |  |
| QTS-45211 |  | Freedom Cafe #0103 // Plumbing Finishes | 2d | 2026-06-29 A | 2026-07-06 A | QTS-45201 | 100% | 2026-07-09 | 2026-07-10 | QTS-PHX3 DC1 - 6 day w/ Holidays |  | Construction | Mechanical | IGMP | Phase 1 | Construction | FOH | Level 1 | Mechanical | BAB |  |  |
| QTS-45221 |  | Freedom Cafe #0103 // HVAC Trim | 2d | 2026-06-29 A | 2026-07-06 A | QTS-45211 SS, QTS-45201, QTS-45181 | 100% | 2026-07-09 | 2026-07-10 | QTS-PHX3 DC1 - 6 day w/ Holidays |  | Construction | Mechanical | IGMP | Phase 1 | Construction | FOH | Level 1 | Mechanical | BAB |  |  |
| QTS-45251 |  | Freedom Cafe #0103 // Fire Sprinkler Finishes | 1d | 2026-07-09 A | 2026-07-09 A | QTS-45211 SS, QTS-45141, QTS-45221 | 100% | 2026-07-28 | 2026-07-28 | QTS-PHX3 DC1 - 6 day w/ Holidays |  | Construction | Build Out | IGMP | Phase 1 | Construction | FOH | Level 1 | Ed Carter | BAB |  |  |
| QTS-0020 |  | FOH / Freedom Café 103 / Install countertop @ storefront | 4d | 2026-07-15 A | 2026-07-18 A | QTS-45211 | 100% | 2026-07-17 | 2026-07-21 | **GLOBAL - 6 Day Workweek w/ Basic Holidays |  |  | Build Out |  |  |  |  |  | Ed Carter | BAB |  |  |
| QTS-0010 |  | FOH / Freedom Café 103 / Install Plumbing finishes | 2d | 2026-07-20 A | 2026-07-28 A | QTS-45211, QTS-45251 | 100% | 2026-07-22 | 2026-07-23 | **GLOBAL - 6 Day Workweek w/ Basic Holidays |  |  | Build Out |  |  |  |  |  | Jorge Maldonado | BAB |  | Bel-Aire |
| QTS-0050 |  | FOH / Freedom Café 103 / Install Accent wall tile | 3d | 2026-07-21 A | 2026-07-24 A | QTS-0020 | 100% | 2026-07-27 | 2026-07-29 | **GLOBAL - 6 Day Workweek w/ Basic Holidays |  |  | Build Out |  |  |  |  |  | Ed Carter | BAB |  | Wholesale Flooring |
| QTS-0060 |  | FOH / Freedom Café 103 / Install Finish Flooring | 1d | 2026-07-23 A | 2026-07-23 A | QTS-0050 | 100% |  |  | **GLOBAL - 6 Day Workweek w/ Basic Holidays |  |  | Build Out |  |  |  |  |  | Ben Ribble | BAB |  | Wholesale Flooring |
| QTS-0080 |  | FOH / Freedom Café 103 / Window shades | 1d | 2026-07-24 A | 2026-07-24 A | QTS-0060 | 100% | 2026-07-28 | 2026-07-28 | **GLOBAL - 6 Day Workweek w/ Basic Holidays |  |  | Build Out |  |  |  |  |  | Ed Carter | BAB |  | Custom Design |

Notes:
- QTS-1010260: Scheduler Notes: 3/17: Delayed waiting for fire protection pressure test.
- QTS-44981: allucent_notes_20251118_192630: Luis Vea on 2025-10-08 10:10: space was available to do layout / Luis Vea on 2025-10-20T18:28:34.173Z: need north side of board room wall installed, cant happen until BZI installed the stair case / Jason Johnston on 2025-10-21 12:10: BZI stair install gating the start of this activity. / Jason Johnston on 2025-10-27 08:10: BZI finishing up stair welding CAZ to be removed by wednesday. / Jason Johnston on 2025-11-03 11:11: BZI impact in area removed and working can begin 11/5. / allucent_notes_20251111_182405: Luis Vea on 2025-10-08 10:10: space was available to do layout / Luis Vea on 2025-10-20T18:28:34.173Z: need north side of board room wall installed, cant happen until BZI installed the stair case / Jason Johnston on 2025-10-21 12:10: BZI stair install gating the start of this activity. / Jason Johnston on 2025-10-27 08:10: BZI finishing up stair welding CAZ to be removed by wednesday. / Jason Johnston on 2025-11-03 11:11: BZI impact in area removed and working can begin 11/5. / allucent_notes_20251104_160200: Luis Vea on 2025-10-08 10:10: space was available to do layout / Luis Vea on 2025-10-20T18:28:34.173Z: need north side of board room wall installed, cant happen until BZI installed the stair case / Jason Johnston on 2025-10-21 12:10: BZI stair install gating the start of this activity. / Jason Johnston on 2025-10-27 08:10: BZI finishing up stair welding CAZ to be removed by wednesday. / Jason Johnston on 2025-11-03 11:11: BZI impact in area removed and working can begin 11/5. / allucent_notes_20251028_163138: Luis Vea on 2025-10-08 10:10: space was available to do layout / Luis Vea on 2025-10-20T18:28:34.173Z: need north side of board room wall installed, cant happen until BZI installed the stair case / Jason Johnston on 2025-10-21 12:10: BZI stair install gating the start of this activity. / Jason Johnston on 2025-10-27 08:10: BZI finishing up stair welding CAZ to be removed by wednesday. / allucent_notes_20251027_224008: Luis Vea on 2025-10-08 10:10: space was available to do layout / Luis Vea on 2025-10-20T18:28:34.173Z: need north side of board room wall installed, cant happen until BZI installed the stair case / Jason Johnston on 2025-10-21 12:10: BZI stair install gating the start of this activity. / Jason Johnston on 2025-10-27 08:10: BZI finishing up stair welding CAZ to be removed by wednesday. / allucent_notes_20251021_145627: Luis Vea on 2025-10-08 10:10: space was available to do layout / Luis Vea on 2025-10-20T18:28:34.173Z: need north side of board room wall installed, cant happen until BZI installed the stair case / Jason Johnston on 2025-10-21 12:10: BZI stair install gating the start of this activity. / allucent_notes_20251014_152335: Luis Vea on 2025-10-08 10:10: space was available to do layout / allucent_notes: 2025-10-08 10:10 - User: Luis Vea - Date Added: 2025-10-08 10:10 - Note: space was available to do layout / 2025-10-20T18:28:34.173Z - User: Luis Vea - Date Added: 2025-10-20T18:28:34.173Z - Note: need north side of board room wall installed, cant happe
- QTS-44991: allucent_notes_20251118_192630: Luis Vea on 2025-10-20T18:29:35.359Z: BZI is installing the stair case, once this is completed, they will finish the north wall of board room wall / Jason Johnston on 2025-10-28T21:58:51.922Z: Split framing walls and soffit details / framing before overhead and soffit after details. / Jason Johnston on 2025-11-11 15:11: Find new Predecessor / Jason Johnston on 2025-11-18T21:44:28.921Z: After the Green Mile. / allucent_notes_20251111_182405: Luis Vea on 2025-10-20T18:29:35.359Z: BZI is installing the stair case, once this is completed, they will finish the north wall of board room wall / Jason Johnston on 2025-10-28T21:58:51.922Z: Split framing walls and soffit details / framing before overhead and soffit after details. / Jason Johnston on 2025-11-11 15:11: Find new Predecessor / allucent_notes_20251104_160200: Luis Vea on 2025-10-20T18:29:35.359Z: BZI is installing the stair case, once this is completed, they will finish the north wall of board room wall / Jason Johnston on 2025-10-28T21:58:51.922Z: Split framing walls and soffit details / framing before overhead and soffit after details. / allucent_notes_20251028_163138: Luis Vea on 2025-10-20T18:29:35.359Z: BZI is installing the stair case, once this is completed, they will finish the north wall of board room wall / Jason Johnston on 2025-10-28T21:58:51.922Z: Split framing walls and soffit details / framing before overhead and soffit after details. / allucent_notes_20251027_224008: Luis Vea on 2025-10-20T18:29:35.359Z: BZI is installing the stair case, once this is completed, they will finish the north wall of board room wall / allucent_notes_20251021_145627: Luis Vea on 2025-10-20T18:29:35.359Z: BZI is installing the stair case, once this is completed, they will finish the north wall of board room wall / allucent_notes: 2025-10-20T18:29:35.359Z - User: Luis Vea - Date Added: 2025-10-20T18:29:35.359Z - Note: BZI is installing the stair case, once this is completed, they will finish the north wall of board room wall / 2025-10-28T21:58:51.922Z - User: Jason Johnston - Date
- QTS-101670: allucent_notes_20251027_224008: Luis Vea on 2025-10-20T18:29:35.359Z: BZI is installing the stair case, once this is completed, they will finish the north wall of board room wall / allucent_notes_20251021_145627: Luis Vea on 2025-10-20T18:29:35.359Z: BZI is installing the stair case, once this is completed, they will finish the north wall of board room wall / allucent_notes: 2025-10-20T18:29:35.359Z - User: Luis Vea - Date Added: 2025-10-20T18:29:35.359Z - Note: BZI is installing the stair case, once this is completed, they will finish the north wall of board room wall / 2025-10-28T21:58:51.922Z - User: Jason Johnston - Date
- QTS-45041: Scheduler Notes: 3/10: PCI has to open walls and there is an RFI
- QTS-1009970: Scheduler Notes: 3/17: Delayed waiting for fire protection pressure test.
- QTS-1009960: Scheduler Notes: 3/17: Delayed waiting for fire protection pressure test.
- QTS-1010240: Scheduler Notes: 3/17: Delayed waiting for fire protection pressure test.
- QTS-45071: Scheduler Notes: 3/17: Delayed waiting for fire protection pressure test.
- QTS-45061: Scheduler Notes: 3/17: Delayed waiting for fire protection pressure test.

| ID | WBS | Activity | Duration | Start | Finish | Predecessors | Complete | Remaining | Planned start | Planned finish | Total float | Free float | Calendar | Layton Discipline | Layton Super | Contract | Trade Partner | Allucent CSI Group | Project Section | Baseline | Phase-1-1 | Project Section-1 | Location | Level | If Not Started or Finished Why? |
| --- | --- | --- | --- | --- | --- | --- | --- | --- | --- | --- | --- | --- | --- | --- | --- | --- | --- | --- | --- | --- | --- | --- | --- | --- | --- |
|  | 1 | **Fragnet - L1 / FOH // Freedom Cafe #0103** |  | 2026-08-19 | 2026-08-19 |  |  |  |  |  |  |  |  |  |  |  |  |  |  |  |  |  |  |  |  |
| QTS-1014050 |  | FOH / Freedom Café 103 / Repair Damaged Sprinkler | 1d | 2026-08-19 | 2026-08-19 | QTS-0020 |  |  |  |  | -94d | 0d | **GLOBAL - 6 Day Workweek w/ Basic Holidays | Build Out | Jake Shimmin | BAB | PCI |  |  |  |  |  |  |  |  |
|  | 2 | **Existing Scope - L1 / FOH // Freedom Cafe #0103** |  | 2026-08-03 | 2026-08-29 |  |  |  |  |  |  |  |  |  |  |  |  |  |  |  |  |  |  |  |  |
| QTS-0090 |  | FOH / Freedom Café 103 / Final paint | 1d | 2026-08-03 A | 2026-08-03 A | QTS-0010 | 100% |  | 2026-08-05 | 2026-08-05 |  |  | **GLOBAL - 6 Day Workweek w/ Basic Holidays | Build Out | Ed Carter | BAB | PPC |  |  |  |  |  |  |  |  |
| QTS-1013820 |  | FOH / Freecom Cafe / Install art / signage | 2d | 2026-08-04 A | 2026-08-20 | QTS-0090 |  | 2d | 2026-08-06 | 2026-08-07 | -88d | 6d | **GLOBAL - 6 Day Workweek w/ Basic Holidays | Build Out | Jake Shimmin | BAB | ISEC |  |  |  |  |  |  |  |  |
| QTS-0070 |  | FOH / Freedom Café 103 / Install Floor base | 2d | 2026-08-19 | 2026-08-20 | QTS-0060 |  |  |  |  | -88d | 6d | **GLOBAL - 6 Day Workweek w/ Basic Holidays | Build Out | Ben Ribble | BAB | Wholesale Flooring |  |  |  |  |  |  |  |  |
| QTS-0030 |  | FOH / Freedom Café 103 / Install Wood ceiling | 5d | 2026-08-20 | 2026-08-25 | QTS-0020, QTS-1014050 |  |  |  |  | -94d | 0d | **GLOBAL - 6 Day Workweek w/ Basic Holidays | Build Out | Jake Shimmin | BAB | PCI |  |  |  |  |  |  |  |  |
| QTS-0040 |  | FOH / Freedom Café 103 / Install Fire sprinkler Trim out | 2d | 2026-08-26 | 2026-08-27 | QTS-0030, QTS-0030 FF |  |  |  |  | -94d | 0d | **GLOBAL - 6 Day Workweek w/ Basic Holidays | Build Out | Jake Shimmin | BAB | Olympic |  |  |  |  |  |  |  |  |
| QTS-0100 |  | FOH / Freedom Café 103 / Clean | 2d | 2026-08-28 | 2026-08-29 | QTS-0080, QTS-1013820, QTS-0040, QTS-0070 |  |  |  |  | -94d | 0d | **GLOBAL - 6 Day Workweek w/ Basic Holidays | Build Out | Jake Shimmin | BAB | AGDC |  |  |  |  |  |  |  |  |
|  | 8 | **L1 / FOH // Lobby & Lobby Stairs** |  | 2026-01-10 | 2026-08-25 |  |  |  |  |  |  |  |  |  |  |  |  |  |  |  |  |  |  |  |  |
| QTS-45331 |  | Lobby / Install Sprinker Drops | 2d | 2026-01-10 A | 2026-01-12 A | QTS-46451 SS | 100% |  |  |  |  |  | QTS-PHX3 DC1 - 6 day w/ Holidays | Mechanical |  | BAB |  | 01ADMIN | Construction | IGMP | Phase 1 | Construction | FOH | Level 1 |  |
| QTS-46451 |  | Lobby / Layout Walls | 1d | 2026-01-10 A | 2026-01-10 A | QTS-44991 | 100% |  |  |  |  |  | QTS-PHX3 DC1 - 6 day w/ Holidays | Build Out |  | BAB |  | 01ADMIN | Construction | IGMP | Phase 1 | Construction | FOH | Level 1 |  |
| QTS-45301 |  | Lobby / Layout Overhead MEP/Sprinkler Drops Transfer To Deck | 2d | 2026-01-21 A | 2026-02-17 A | QTS-46451 | 100% |  | 2026-01-21 | 2026-01-22 |  |  | QTS-PHX3 DC1 - 6 day w/ Holidays | Mechanical |  | BAB |  | 01ADMIN | Construction | IGMP | Phase 1 | Construction | FOH | Level 1 |  |
| QTS-45321 |  | Lobby / Install MEP Hangers | 2d | 2026-01-31 A | 2026-02-02 A | QTS-45301 SS | 100% |  |  |  |  |  | QTS-PHX3 DC1 - 6 day w/ Holidays | Mechanical |  | BAB |  | 01ADMIN | Construction | IGMP | Phase 1 | Construction | FOH | Level 1 |  |
| QTS-45351 |  | Lobby / Install MEP / Sprinkler Drops Overhead Stairwell Area | 2d | 2026-03-09 A | 2026-03-10 A | QTS-45321 | 100% |  |  |  |  |  | QTS-PHX3 DC1 - 6 day w/ Holidays | Mechanical |  | BAB |  | 01ADMIN | Construction | IGMP | Phase 1 | Construction | FOH | Level 1 |  |
| QTS-1007220 |  | Lobby / Scan Freedom Wall for Metal Panels | 1d | 2026-03-10 A | 2026-03-10 A | QTS-1371 SS | 100% |  |  |  |  |  | QTS-PHX3 DC1 - 6 day w/ Holidays | Build Out |  | BAB |  |  | Construction | IGMP | Phase 1 | Construction | FOH | Level 1 |  |
| QTS-45361 |  | Lobby / Frame Lobby Ceiling / Walls (Freedom Wall) | 5d | 2026-03-16 A | 2026-03-24 A | QTS-45351 | 100% |  | 2026-03-16 | 2026-03-20 |  |  | QTS-PHX3 DC1 - 6 day w/ Holidays | Build Out |  | BAB |  |  | Construction | IGMP | Phase 1 | Construction | FOH | Level 1 |  |
| QTS-45341 |  | Lobby / Rough In Overhead Lighting | 5d | 2026-03-17 A | 2026-03-20 A | QTS-45321, QTS-45331 | 100% |  | 2026-03-17 | 2026-03-21 |  |  | QTS-PHX3 DC1 - 6 day w/ Holidays | Electrical |  | BAB |  | 01ADMIN | Construction | IGMP | Phase 1 | Construction | FOH | Level 1 |  |
| QTS-1002270 |  | Lobby / Hang Drywall - Walls | 6d | 2026-03-23 A | 2026-03-24 A | QTS-45361 | 100% |  | 2026-03-23 | 2026-03-28 |  |  | QTS-PHX3 DC1 - 6 day w/ Holidays | Build Out |  | BAB |  |  | Construction | IGMP | Phase 1 | Construction | FOH | Level 1 |  |
| QTS-45381 |  | Lobby / Rough In MEP Overhead Grid System | 3d | 2026-03-25 A | 2026-04-03 A | QTS-45371 | 100% |  | 2026-04-01 | 2026-04-03 |  |  | QTS-PHX3 DC1 - 6 day w/ Holidays | Electrical |  | BAB |  |  | Construction | IGMP | Phase 1 | Construction | FOH | Level 1 | To start 4/9 |
| QTS-45371 |  | Lobby / Hang Hard Lid Grid System | 2d | 2026-03-29 A | 2026-04-02 A | QTS-45361, QTS-45341 | 100% |  | 2026-04-01 | 2026-04-02 |  |  | QTS-PHX3 DC1 - 6 day w/ Holidays | Build Out |  | BAB |  |  | Construction | IGMP | Phase 1 | Construction | FOH | Level 1 |  |
| QTS-45441 |  | Lobby / Install Terazzo Flooring At Lobby & Stairs | 10d | 2026-04-06 A | 2026-04-16 A | QTS-45341 | 100% |  |  |  |  |  | QTS-PHX3 DC1 - 6 day w/ Holidays | Build Out |  | BAB |  |  | Construction | IGMP | Phase 1 | Construction | FOH | Level 1 |  |
| QTS-46461 |  | Lobby / Install Floor Protection | 1d | 2026-04-17 A | 2026-04-17 A | QTS-45441 FF+1d | 100% |  |  |  |  |  | QTS-PHX3 DC1 - 6 day w/ Holidays | Build Out |  | BAB |  |  | Construction | IGMP | Phase 1 | Construction | FOH | Level 1 |  |
| QTS-1002280 |  | Lobby #0101 / Tape & Finish Drywall - Walls | 6d | 2026-04-20 A | 2026-04-23 A | QTS-1002270, QTS-45441 | 100% |  | 2026-04-17 | 2026-04-23 |  |  | QTS-PHX3 DC1 - 6 day w/ Holidays | Build Out |  | BAB |  |  | Construction | IGMP | Phase 1 | Construction | FOH | Level 1 |  |
| QTS-45401 |  | Lobby #0101 / Hang Drywall Hard Lid | 4d | 2026-04-20 A | 2026-04-23 A | QTS-45391 FF, QTS-45441 | 100% |  | 2026-04-21 | 2026-04-24 |  |  | QTS-PHX3 DC1 - 6 day w/ Holidays | Build Out |  | BAB |  |  | Construction | IGMP | Phase 1 | Construction | FOH | Level 1 |  |
| QTS-45391 |  | Lobby #0101 / Inspect Overhead MEP | 1d | 2026-04-21 A | 2026-04-23 A | QTS-45381, QTS-45441, QTS-46461, QTS-46461 FF | 100% |  | 2026-04-21 | 2026-04-21 |  |  | QTS-PHX3 DC1 - 6 day w/ Holidays | Electrical |  | BAB |  |  | Construction | IGMP | Phase 1 | Construction | FOH | Level 1 | To start 4/9 |
| QTS-45421 |  | Lobby #0101 / Install Lighting Fixtures Hard Lid | 1d | 2026-04-24 A | 2026-05-01 A | QTS-45401 FF+2d | 100% |  | 2026-04-24 | 2026-04-24 |  |  | QTS-PHX3 DC1 - 6 day w/ Holidays | Build Out | Jay Perkins | BAB |  |  | Construction | IGMP | Phase 1 | Construction | FOH | Level 1 |  |
| QTS-45451 |  | Lobby #0101 / Install Storefront At Lobby & 2nd Floor Landing - North Wall of Lobby | 6d | 2026-04-24 A | 2026-04-27 A | QTS-45441 | 100% |  | 2026-04-24 | 2026-04-30 |  |  | QTS-PHX3 DC1 - 6 day w/ Holidays | Build Out |  | BAB |  |  | Construction | IGMP | Phase 1 | Construction | FOH | Level 1 |  |
| QTS-1010220 |  | Lobby #0101 / Rough Electric for QTS Signage | 1d | 2026-05-01 A | 2026-05-05 A | QTS-46461 | 100% |  | 2026-05-01 | 2026-05-01 |  |  | QTS-PHX3 DC1 - 6 day w/ Holidays | Build Out | Jay Perkins | BAB |  |  | Construction | IGMP | Phase 1 | Construction | FOH | Level 1 | To start 4/9 |
| QTS-1002300 |  | Lobby #0101 / Tape & Finish Drywall Hard Lid | 6d | 2026-05-05 A | 2026-05-14 A | QTS-45401, QTS-45421 | 100% |  | 2026-05-07 | 2026-05-13 |  |  | QTS-PHX3 DC1 - 6 day w/ Holidays | Build Out | Jay Perkins | BAB |  |  | Construction | IGMP | Phase 1 | Construction | FOH | Level 1 |  |
| QTS-1011540 |  | Lobby #0101 / Fire Suppression Inspection | 1d | 2026-05-08 A | 2026-05-08 A | QTS-18851 FF | 100% |  |  |  |  |  | QTS-PHX3 DC1 - 6 day w/ Holidays | Build Out | Jay Perkins | BAB |  |  | Construction | IGMP | Phase 1 | Construction | FOH | Level 1 |  |
| QTS-1002290 |  | Lobby #0101 / Paint Walls & Hard Lid | 5d | 2026-05-21 A | 2026-05-27 A | QTS-1002280, QTS-1002300, QTS-1010230 | 100% |  |  |  |  |  | QTS-PHX3 DC1 - 6 day w/ Holidays | Build Out | Jay Perkins | BAB |  |  | Construction | IGMP | Phase 1 | Construction | FOH | Level 1 |  |
| QTS-45461 |  | Lobby #0101 / Install Glazing at Stairs & Soffit | 5d | 2026-05-22 A | 2026-05-28 A | QTS-45451, QTS-45441, QTS-1011100 | 100% |  |  |  |  |  | QTS-PHX3 DC1 - 6 day w/ Holidays | Build Out | Jay Perkins | BAB |  |  | Construction | IGMP | Phase 1 | Construction | FOH | Level 1 |  |
| QTS-1010230 |  | Lobby #0101 / Paint Lobby Stairs | 2d | 2026-05-27 A | 2026-05-28 A | QTS-46461, QTS-1002280, QTS-45421 | 100% |  |  |  |  |  | QTS-PHX3 DC1 - 6 day w/ Holidays | Build Out | Jay Perkins | BAB |  |  | Construction | IGMP | Phase 1 | Construction | FOH | Level 1 |  |
| QTS-45431 |  | Lobby #0101 / Install HVAC Trim in Hard lid | 3d | 2026-06-02 A | 2026-06-03 A | QTS-45421, QTS-1002290 | 100% |  | 2026-06-02 | 2026-06-04 |  |  | QTS-PHX3 DC1 - 6 day w/ Holidays | Mechanical | Mechanical | BAB |  |  | Construction | IGMP | Phase 1 | Construction | FOH | Level 1 |  |
| QTS-1007240 |  | Lobby #0101 / Install Freedom Wall Metal Panels | 10d | 2026-06-05 A | 2026-06-26 A | QTS-1007230, QTS-1010220 | 100% |  | 2026-06-19 | 2026-06-30 |  |  | QTS-PHX3 DC1 - 6 day w/ Holidays | Build Out | Ed Carter | BAB |  |  | Construction | IGMP | Phase 1 | Construction | FOH | Level 1 |  |
| QTS-1012370 |  | Lobby #0101 / ACM Paneling (Flag Wall) | 5d | 2026-06-08 A | 2026-06-17 A | QTS-1007230, QTS-1010220, QTS-1007240 SS | 100% |  | 2026-06-27 | 2026-07-02 |  |  | QTS-PHX3 DC1 - 6 day w/ Holidays | Build Out | Ed Carter | BAB |  |  | Construction | IGMP | Phase 1 | Construction | FOH | Level 1 |  |
| QTS-45481 |  | Lobby #0101 / Install Millwork | 2d | 2026-07-02 A | 2026-07-06 A | QTS-1007240, QTS-45431, QTS-1012370 | 100% |  | 2026-07-09 | 2026-07-10 |  |  | QTS-PHX3 DC1 - 6 day w/ Holidays | Build Out | Ed Carter | BAB |  |  | Construction | IGMP | Phase 1 | Construction | FOH | Level 1 |  |
| QTS-1012380 |  | FOH / Lobby 101 / Hange Temp Flag on Freedom Wall | 1d | 2026-07-15 A | 2026-07-16 A | QTS-1007230, QTS-1010220, QTS-1007240, QTS-1012370 | 100% |  | 2026-07-23 | 2026-07-23 |  |  | QTS-PHX3 DC1 - 6 day w/ Holidays | Build Out | Jake Shimmin | BAB |  |  | Construction | IGMP | Phase 1 | Construction | FOH | Level 1 | Temp Flag hung 6/23 |
| QTS-0130 |  | FOH / Lobby 101 / Install Millwork | 2d | 2026-07-18 A | 2026-07-20 A | QTS-45481 | 100% |  | 2026-07-27 | 2026-07-28 |  |  | **GLOBAL - 6 Day Workweek w/ Basic Holidays | Build Out | Jake Shimmin | BAB | ISEC |  |  |  |  |  |  |  |  |
| QTS-0140 |  | FOH / Lobby 101 / Final paint | 1d | 2026-07-29 A | 2026-07-29 A | QTS-0130 | 100% |  | 2026-08-05 | 2026-08-05 |  |  | **GLOBAL - 6 Day Workweek w/ Basic Holidays | Build Out | Jake Shimmin | BAB | PPC |  |  |  |  |  |  |  |  |
| QTS-0120 |  | FOH / Lobby 101 / Install art / signage | 2d | 2026-08-19 | 2026-08-20 | QTS-0140 |  |  |  |  | -90d | 0d | **GLOBAL - 6 Day Workweek w/ Basic Holidays | Build Out | Jake Shimmin | BAB | ISEC |  |  |  |  |  |  |  |  |
| QTS-0150 |  | FOH / Lobby 101 / Clean | 2d | 2026-08-21 | 2026-08-22 | QTS-0140, QTS-0120 |  |  |  |  | -90d | 0d | **GLOBAL - 6 Day Workweek w/ Basic Holidays | Build Out | Jake Shimmin | BAB | AGDC |  |  |  |  |  |  |  |  |
| QTS-0110 |  | FOH / Lobby 101 / Hang flag | 2d | 2026-08-24 | 2026-08-25 | QTS-45481, QTS-1012380, QTS-0150 |  |  |  |  | -90d | 10d | **GLOBAL - 6 Day Workweek w/ Basic Holidays | Build Out | Jake Shimmin | BAB | ISEC |  |  |  |  |  |  |  |  |

Notes:
- QTS-1014050: Scheduler Notes: 8/4/26 - damaged Sprinkler repair
- QTS-0030: Scheduler Notes: 8/4/26 - Waiting on damaged Sprinkler repair / Notes: Waiting on lights to be installed
- QTS-0040: Notes: After Rulon is Finished
- QTS-45301: Scheduler Notes: 1/20/26: Eye brow work preventing the start of the of this / item / Notes: 1/20/26: Eye brow work preventing the start of the of this item
- QTS-1010220: Scheduler Notes: 4/21: REI to install pathway for E2 to run control cable / 4/28: REI to install pathway for E2 to run control cable / Notes: 4/28: REI to install pathway for E2 to run control cable 4/21: REI to install pathway for E2 to run control cable
- QTS-1012380: Scheduler Notes: Temp Flag hung 6/23 / Notes: Temp Flag hung 6/23
- QTS-0110: Scheduler Notes: 7/28-Flage being reordered - not flame retardant / Notes: Flage being reordered - not flame retardant

| ID | WBS | Activity | Duration | Start | Finish | Predecessors | Complete | Planned start | Planned finish | Total float | Free float | Constraint | Calendar | Layton Discipline | Location | Contract | Notes | Layton Super | Project Section | Baseline | Phase-1-1 | Project Section-1 | Level | Trade Partner |
| --- | --- | --- | --- | --- | --- | --- | --- | --- | --- | --- | --- | --- | --- | --- | --- | --- | --- | --- | --- | --- | --- | --- | --- | --- |
|  | 5 | **L2 / FOH // Flex Space Storefront #0209** |  | 2026-03-09 | 2026-05-04 |  |  |  |  |  |  |  |  |  |  |  |  |  |  |  |  |  |  |  |
| QTS - 25971 |  | Flex Space #0209 // Install Vertical Control Joints at Header | 7d | 2026-03-09 A | 2026-03-30 A | QTS-1371 SS | 100% | 2026-03-09 | 2026-03-16 |  |  |  | QTS-PHX3 DC1 - 6 day w/ Holidays | Build Out | FOH | BAB |  |  |  |  |  |  |  |  |
| QTS - 26041 |  | Flex Space #0209 // Tape & Finish Drywall Header | 4d | 2026-03-30 A | 2026-03-31 A | QTS - 25971 FF | 100% | 2026-04-07 | 2026-04-10 |  |  |  | QTS-PHX3 DC1 - 6 day w/ Holidays | Build Out | FOH | BAB |  |  |  |  |  |  |  |  |
| QTS - 26011 |  | Flex Space #0209 // Paint Control Joints at Header | 2d | 2026-04-20 A | 2026-04-21 A | QTS - 25971, QTS - 26041 | 100% |  |  |  |  |  | QTS-PHX3 DC1 - 6 day w/ Holidays | Build Out | FOH | BAB |  |  |  |  |  |  |  |  |
| QTS - 25981 |  | Flex Space #0209 // Install Interior Storefront - South Wall of Lobby | 6d | 2026-05-01 A | 2026-05-04 A | QTS - 25971, QTS - 26011, QTS-46461, QTS-45451 | 100% | 2026-05-01 | 2026-05-07 |  |  |  | QTS-PHX3 DC1 - 6 day w/ Holidays | Build Out | FOH | BAB | 4/24: RFI # for Glazing delaying install | Ed Carter |  |  |  |  |  |  |
| QTS - 25991 |  | Flex Space #0209 // Apply Frosted Film to Interior Storefront - Huddle #0230 | 1d | 2026-05-04 A | 2026-05-04 A | QTS - 25981 | 100% |  |  |  |  |  | QTS-PHX3 DC1 - 6 day w/ Holidays | Build Out | FOH | BAB |  | Ed Carter |  |  |  |  |  |  |
|  | 1 | **L1 / FOH // Security Vestibule #0130 & #0131** |  | 2026-04-29 | 2026-05-04 |  |  |  |  |  |  |  |  |  |  |  |  |  |  |  |  |  |  |  |
| QTS - 26231 |  | Security Vestibule #0130 & #0131 // Install Interior Storefront Frame & Glass | 5d | 2026-04-29 A | 2026-05-04 A | QTS-45451 | 100% |  |  |  |  |  | QTS-PHX3 DC1 - 6 day w/ Holidays | Build Out | FOH | BAB | 4/24: RFI # for Glazing delaying install | Bobby Martinez |  |  |  |  |  |  |
|  | 14 | **L1 / FOH // Vestibule #0100** |  | 2026-04-24 | 2026-08-27 |  |  |  |  |  |  |  |  |  |  |  |  |  |  |  |  |  |  |  |
| QTS-1011460 |  | Vestibule #0100 / Install Plywood Door | 2d | 2026-04-24 A | 2026-04-24 A | QTS-45421 SS | 100% | 2026-04-24 | 2026-04-25 |  |  |  | QTS-PHX3 DC1 - 6 day w/ Holidays | Electrical | FOH | BAB |  |  | Construction | IGMP | Phase 1 | Construction | Level 1 |  |
| QTS-1011470 |  | Vestibule #0100 / Install Pull Boxes & Wireway for Security | 1d | 2026-05-04 A | 2026-05-05 A | QTS-1011460, QTS-45401 | 100% | 2026-05-04 | 2026-05-04 |  |  |  | QTS-PHX3 DC1 - 6 day w/ Holidays | Build Out | FOH | BAB |  | Jay Perkins | Construction | IGMP | Phase 1 | Construction | Level 1 |  |
| QTS-1011480 |  | Vestibule #0100 / Rough In Electrical | 1d | 2026-05-04 A | 2026-05-04 A | QTS-1011470 SS | 100% |  |  |  |  |  | QTS-PHX3 DC1 - 6 day w/ Holidays | Build Out | FOH | BAB |  | Jay Perkins | Construction | IGMP | Phase 1 | Construction | Level 1 |  |
| QTS-1011650 |  | Vestibule #0100 / Install Storefront Frames Door 100 | 2d | 2026-06-03 A | 2026-06-04 A | QTS-1011480 | 100% |  |  |  |  |  | QTS-PHX3 DC1 - 6 day w/ Holidays | Build Out | FOH | BAB |  | Jay Perkins | Construction | IGMP | Phase 1 | Construction | Level 1 |  |
| QTS-1011490 |  | Vestibule #0100 / Install Storefront Frames Door 101 | 3d | 2026-06-24 A | 2026-06-26 A | QTS-1011480, QTS-1011650 | 100% |  |  |  |  |  | QTS-PHX3 DC1 - 6 day w/ Holidays | Build Out | FOH | BAB |  | Ed Carter | Construction | IGMP | Phase 1 | Construction | Level 1 |  |
| QTS-1011500 |  | Vestibule #0100 / Install Vestibule Doors | 2d | 2026-06-27 A | 2026-06-29 A | QTS-1011490, QTS-1011490 FF | 100% |  |  |  |  |  | QTS-PHX3 DC1 - 6 day w/ Holidays | Build Out | FOH | BAB |  | Ed Carter | Construction | IGMP | Phase 1 | Construction | Level 1 |  |
| QTS-0160 |  | FOH / Vestibule 101 / Install Remaining ACM | 8d | 2026-08-19 | 2026-08-27 | QTS-1011500 |  |  |  | -92d | 8d | start on or after 2026-08-14 | **GLOBAL - 6 Day Workweek w/ Basic Holidays | Build Out |  | BAB | Estimated 8/14 | Freddy Arrizon |  |  |  |  |  | TMS |
|  | 10 | **L1 / FOH // Flex Room #0123** |  | 2026-04-14 | 2026-05-20 |  |  |  |  |  |  |  |  |  |  |  |  |  |  |  |  |  |  |  |
| QTS-1010320 |  | Flex Room #0123 / Tape & Finish Drywall | 5d | 2026-04-14 A | 2026-04-18 A | QTS-1371 | 100% |  |  |  |  |  | QTS-PHX3 DC1 - 6 day w/ Holidays | Build Out | FOH | BAB |  |  | Construction | IGMP | Phase 1 | Construction | Level 1 |  |
| QTS-1010330 |  | Flex Room #0123 / Paint Walls | 2d | 2026-04-21 A | 2026-04-29 A | QTS-1010320 | 100% | 2026-04-21 | 2026-04-22 |  |  |  | QTS-PHX3 DC1 - 6 day w/ Holidays | Build Out | FOH | BAB |  | Ed Carter | Construction | IGMP | Phase 1 | Construction | Level 1 |  |
| QTS-1010360 |  | Flex Room #0123 / Install Light Fixtures | 1d | 2026-04-21 A | 2026-05-05 A | QTS-1010330 | 100% | 2026-04-21 | 2026-04-21 |  |  |  | QTS-PHX3 DC1 - 6 day w/ Holidays | Electrical | FOH | BAB | 4/21: Registers are installed. |  | Construction | IGMP | Phase 1 | Construction | Level 1 |  |
| QTS-1010340 |  | Flex Room #0123 / Rough In OH Electrical Raceway | 1d | 2026-04-23 A | 2026-04-23 A | QTS-1010330 SS | 100% |  |  |  |  |  | QTS-PHX3 DC1 - 6 day w/ Holidays | Electrical | FOH | BAB |  |  | Construction | IGMP | Phase 1 | Construction | Level 1 |  |
| QTS-1010350 |  | Flex Room #0123 / Pull Wire for Branches | 1d | 2026-05-18 A | 2026-05-18 A | QTS-1010340 | 100% |  |  |  |  |  | QTS-PHX3 DC1 - 6 day w/ Holidays | Electrical | FOH | BAB | 4/28: Need shade power and control |  | Construction | IGMP | Phase 1 | Construction | Level 1 |  |
| QTS-1010370 |  | Flex Room #0123 / Install Electrical Trim | 1d | 2026-05-19 A | 2026-05-19 A | QTS-1010350 | 100% |  |  |  |  |  | QTS-PHX3 DC1 - 6 day w/ Holidays | Electrical | FOH | BAB |  |  | Construction | IGMP | Phase 1 | Construction | Level 1 |  |
| QTS-1012130 |  | Flex Room #0123 / Install Diffuser Fixtures (Mechanical) | 1d | 2026-05-20 A | 2026-05-20 A | QTS-1010360, QTS-1010370 | 100% |  |  |  |  |  | QTS-PHX3 DC1 - 6 day w/ Holidays | Mechanical | FOH | BAB | 4/21: Registers are installed. |  | Construction | IGMP | Phase 1 | Construction | Level 1 |  |

Notes:
- QTS - 25981: Scheduler Notes: 4/24: RFI # for Glazing delaying install
- QTS - 26231: Scheduler Notes: 4/24: RFI # for Glazing delaying install
- QTS-1010360: Scheduler Notes: 4/21: Registers are installed.
- QTS-1010350: Scheduler Notes: 4/28: Need shade power and control
- QTS-1012130: Scheduler Notes: 4/21: Registers are installed.

| ID | WBS | Activity | Duration | Start | Finish | Predecessors | Complete | Planned start | Planned finish | Total float | Free float | Calendar | Project Section | Layton Discipline | Baseline | Phase-1-1 | Project Section-1 | Location | Level | Contract | Layton Super | Last Period Finish | Last Period Start | Notes | Trade Partner | Allucent CSI Group | Phase-1 |
| --- | --- | --- | --- | --- | --- | --- | --- | --- | --- | --- | --- | --- | --- | --- | --- | --- | --- | --- | --- | --- | --- | --- | --- | --- | --- | --- | --- |
|  | 11 | **L1 / FOH // Corridor #0105** |  | 2026-04-17 | 2026-05-18 |  |  |  |  |  |  |  |  |  |  |  |  |  |  |  |  |  |  |  |  |  |  |
| QTS-1011510 |  | Corridor #0105 / Install Ceiling Grid - South Side | 3d | 2026-04-17 A | 2026-04-20 A | QTS-45371 | 100% |  |  |  |  | QTS-PHX3 DC1 - 6 day w/ Holidays | Construction | Electrical | IGMP | Phase 1 | Construction | FOH | Level 1 | BAB |  |  |  |  |  |  |  |
| QTS-1011420 |  | Corridor #0105 / Install Lighting Fixtures | 3d | 2026-04-20 A | 2026-05-05 A | QTS-1011510 FF | 100% | 2026-04-20 | 2026-04-22 |  |  | QTS-PHX3 DC1 - 6 day w/ Holidays | Construction | Build Out | IGMP | Phase 1 | Construction | FOH | Level 1 | BAB | Ed Carter |  |  |  |  |  |  |
| QTS-11031 |  | Corridor #0105 / Electrical Surface Mount Conduit - Corridor 105 | 2d | 2026-05-04 A | 2026-05-05 A | QTS-7341, QTS-7801 FF+1d | 100% |  |  |  |  | QTS-PHX3 DC1 - 6 day w/ Holidays | Construction | Build Out | IGMP | Phase 1 | Construction | FOH | Level 1 | BAB | Ed Carter | 2023-04-14 | 2023-04-13 |  |  |  |  |
| QTS-1011520 |  | Corridor #0105 / Install Ceiling Grid - North Side | 3d | 2026-05-13 A | 2026-05-15 A | QTS-1011510 | 100% |  |  |  |  | QTS-PHX3 DC1 - 6 day w/ Holidays | Construction | Build Out | IGMP | Phase 1 | Construction | FOH | Level 1 | BAB | Ed Carter |  |  |  |  |  |  |
| QTS-1011530 |  | Corridor #0105 / Install HVAC Trim | 3d | 2026-05-18 A | 2026-05-18 A | QTS-1011520 | 100% | 2026-05-18 | 2026-05-20 |  |  | QTS-PHX3 DC1 - 6 day w/ Holidays | Construction | Build Out | IGMP | Phase 1 | Construction | FOH | Level 1 | BAB | Ed Carter |  |  |  |  |  |  |
|  | 13 | **L1 / FOH // Fitness Center #0111** |  | 2026-04-11 | 2026-08-20 |  |  |  |  |  |  |  |  |  |  |  |  |  |  |  |  |  |  |  |  |  |  |
| QTS-1011430 |  | Fitness Center #0111 / Install Electrical Fixtures | 1d | 2026-04-11 A | 2026-04-15 A | QTS-1371 | 100% | 2026-04-11 | 2026-04-11 |  |  | QTS-PHX3 DC1 - 6 day w/ Holidays | Construction | Electrical | IGMP | Phase 1 | Construction | FOH | Level 1 | BAB |  |  |  |  |  |  |  |
| QTS-1012390 |  | Fitness Center #0111 / Install Fan | 1d | 2026-04-20 A | 2026-04-20 A | QTS-1011430 | 100% | 2026-04-11 | 2026-04-11 |  |  | QTS-PHX3 DC1 - 6 day w/ Holidays | Construction | Electrical | IGMP | Phase 1 | Construction | FOH | Level 1 | BAB |  |  |  |  |  |  |  |
| QTS-1012400 |  | Fitness Center #0111 / Install Fixtures | 1d | 2026-05-05 A | 2026-05-07 A | QTS-1011430 | 100% | 2026-04-11 | 2026-04-11 |  |  | QTS-PHX3 DC1 - 6 day w/ Holidays | Construction | Electrical | IGMP | Phase 1 | Construction | FOH | Level 1 | BAB |  |  |  |  |  |  |  |
| QTS-1012410 |  | Fitness Center #0111 / Install Finished Walls & Tile | 1d | 2026-05-08 A | 2026-05-12 A | QTS-1012400 | 100% | 2026-04-11 | 2026-04-11 |  |  | QTS-PHX3 DC1 - 6 day w/ Holidays | Construction | Electrical | IGMP | Phase 1 | Construction | FOH | Level 1 | BAB |  |  |  |  |  |  |  |
| QTS-1011630 |  | Fitness Center #0111 / Install Devices & Trim | 5d | 2026-05-13 A | 2026-05-18 A | QTS-1371, QTS-1011430 | 100% |  |  |  |  | QTS-PHX3 DC1 - 6 day w/ Holidays | Construction | Electrical | IGMP | Phase 1 | Construction | FOH | Level 1 | BAB |  |  |  |  |  |  |  |
| QTS-1011640 |  | Fitness Center #0111 / Cameras Pendant and Raceways | 2d | 2026-05-13 A | 2026-05-13 A | QTS-1371, QTS-1012390, QTS-1012400, QTS-1012410 | 100% | 2026-05-13 | 2026-05-14 |  |  | QTS-PHX3 DC1 - 6 day w/ Holidays | Construction | Electrical | IGMP | Phase 1 | Construction | FOH | Level 1 | BAB |  |  |  |  |  |  |  |
| QTS-1012430 |  | Fitness Center #0111 / Install Lighting | 5d | 2026-05-26 A | 2026-06-29 A | QTS-1011430 | 100% | 2026-05-13 | 2026-05-18 |  |  | QTS-PHX3 DC1 - 6 day w/ Holidays | Construction | Electrical | IGMP | Phase 1 | Construction | FOH | Level 1 | BAB | Ed Carter |  |  |  |  |  |  |
| QTS-0180 |  | FOH / Fitness 111 / Install Rubber flooring | 2d | 2026-07-27 A | 2026-07-27 A | QTS-1012430 | 100% | 2026-07-31 | 2026-08-01 |  |  | **GLOBAL - 6 Day Workweek w/ Basic Holidays |  | Build Out |  |  |  |  |  | BAB | Ben Ribble |  |  | Est 8/3/26 - Touch up Paint | Wholesale Flooring |  |  |
| QTS-0170 |  | FOH / Fitness 111 / Install wallpaper | 2d | 2026-07-28 A | 2026-07-28 A | QTS-1012430, QTS-0180 SS | 100% | 2026-07-31 | 2026-08-01 |  |  | **GLOBAL - 6 Day Workweek w/ Basic Holidays |  | Build Out |  |  |  |  |  | BAB | Ed Carter |  |  |  |  |  |  |
| QTS-0190 |  | FOH / Fitness 111 / Hang mirrors | 2d | 2026-08-19 | 2026-08-20 | QTS-0180 |  |  |  | -86d | 14d | **GLOBAL - 6 Day Workweek w/ Basic Holidays |  | Build Out |  |  |  |  |  | BAB | Jake Shimmin |  |  | After Wall Covering |  |  |  |
|  | 15 | **FOH / Stairs** |  | 2026-04-24 | 2026-05-04 |  |  |  |  |  |  |  |  |  |  |  |  |  |  |  |  |  |  |  |  |  |  |
| QTS-1011660 |  | FOH / Stair 1 // Tape & Finish Drywall | 1d | 2026-04-24 A | 2026-04-24 A | QTS-1371 | 100% |  |  |  |  | QTS-PHX3 DC1 - 6 day w/ Holidays | Construction | Electrical | IGMP | Phase 1 | Construction | FOH | Level 1 | BAB |  |  |  |  |  |  |  |
| QTS-1011670 |  | FOH / Stair 1 // Paint Drywall | 3d | 2026-04-27 A | 2026-04-28 A | QTS-1011660 | 100% | 2026-04-30 | 2026-05-02 |  |  | QTS-PHX3 DC1 - 6 day w/ Holidays | Construction | Electrical | IGMP | Phase 1 | Construction | FOH | Level 1 | BAB |  |  |  |  |  |  |  |
| QTS-1011680 |  | FOH / Stair 1 // Install Fixtures | 1d | 2026-05-04 A | 2026-05-04 A | QTS-1011670 | 100% |  |  |  |  | QTS-PHX3 DC1 - 6 day w/ Holidays | Construction | Build Out | IGMP | Phase 1 | Construction | FOH | Level 1 | BAB | Jay Perkins |  |  |  |  |  |  |
|  | 13 | **Level 1 Front of House Segment B (Gridlines P-V)** |  | 2025-08-28 | 2026-08-26 |  |  |  |  |  |  |  |  |  |  |  |  |  |  |  |  |  |  |  |  |  |  |
|  | 8 | **L1 / FOH // Tenant Improvement** |  | 2025-08-28 | 2026-02-02 |  |  |  |  |  |  |  |  |  |  |  |  |  |  |  |  |  |  |  |  |  |  |
| QTS-47011 |  | TI Area B // Prime & Paint Exposed Structure | 5d | 2025-08-28 A | 2025-09-02 A | QTS-44801 | 100% | 2025-08-28 | 2025-09-04 |  |  |  | Construction | Build Out | IGMP | Phase 1 | Construction | FOH | Level 1 | BAB | Doug Hayes |  |  |  |  | 01ADMIN |  |
| QTS-44251 |  | TI Area B // Concrete Seal | 3d | 2025-09-04 A | 2025-09-08 A | QTS-47011 SS | 100% |  |  |  |  |  | Construction | Build Out | IGMP | Phase 1 | Construction | FOH | Level 1 | BAB | Doug Hayes |  |  |  |  |  |  |
| QTS-26581 |  | TI Area B // Rough Overhead Fire Sprinkler | 7d | 2025-09-24 A | 2025-10-01 A | QTS-44251 | 100% | 2025-09-24 | 2025-10-02 |  |  |  | Construction | Mechanical | IGMP |  |  | FOH | Level 1 | BAB |  |  |  |  |  |  | Phase 1 |
| QTS-25431 |  | TI Area B // Layout Walls | 3d | 2025-09-30 A | 2025-10-09 A | QTS-26581 FF | 100% | 2025-09-30 | 2025-10-02 |  |  |  | Construction | Build Out | IGMP |  |  | FOH | Level 1 | BAB | Doug Hayes |  |  |  |  | 01ADMIN | Phase 1 |
| QTS-26011 |  | TI Area B // Frame Walls & Soffits | 6d | 2025-10-15 A | 2025-10-29 A | QTS-25431, QTS-25731 | 100% | 2025-10-15 | 2025-10-22 |  |  |  | Construction | Build Out | IGMP |  |  | FOH | Level 1 | BAB | Doug Hayes |  |  |  |  | 01ADMIN | Phase 1 |
| QTS-26571 |  | TI Area B // Rough In-Wall Plumbing | 5d | 2025-10-30 A | 2025-11-03 A | QTS-26011 | 100% | 2025-10-30 | 2025-11-05 |  |  |  | Construction | Mechanical | IGMP |  |  | FOH | Level 1 | BAB |  |  |  |  |  | 01ADMIN | Phase 1 |
| QTS-26561 |  | TI Area B // Rough In-Wall Electrical, Security, & Access Controls | 8d | 2025-11-14 A | 2025-12-15 A | QTS-26011, QTS-9871 | 100% | 2025-11-14 | 2025-11-25 |  |  |  | Construction | Electrical | IGMP |  |  | FOH | Level 1 | BAB |  |  |  |  |  | 01ADMIN | Phase 1 |
| QTS-26591 |  | TI Area B // Rough Overhead Electrical | 10d | 2025-11-19 A | 2026-01-27 A | QTS-26011 | 100% | 2025-11-19 | 2025-12-02 |  |  | QTS-PHX3 DC1 - 6 day w/ Holidays | Construction | Electrical | IGMP |  |  | FOH | Level 1 | BAB |  |  |  |  |  | 01ADMIN | Phase 1 |
| QTS-28051 |  | TI Area B // Rough Overhead Plumbing & Refrigerant Piping | 10d | 2025-12-05 A | 2025-12-22 A | QTS-26011, QTS-25431 | 100% | 2025-12-05 | 2025-12-16 |  |  | QTS-PHX3 DC1 - 6 day w/ Holidays | Construction | Mechanical | IGMP |  |  | FOH | Level 1 | BAB |  |  |  |  |  | 01ADMIN | Phase 1 |
| QTS-1002220 |  | TI Area B // In Wall Electrical, Security, & Access Controls Rough | 5d | 2025-12-18 A | 2026-01-14 A | QTS-26591 SS | 100% | 2025-12-18 | 2025-12-23 |  |  | QTS-PHX3 DC1 - 6 day w/ Holidays | Construction | Build Out | IGMP |  |  | FOH | Level 1 | BAB |  |  |  | 1/13/26: Not complete. Held up by back box procurement |  | 01ADMIN | Phase 1 |
| QTS-44871 |  | TI Area B // Pressure Testing and Inspection Plumbing & Refrigerant Piping | 1d | 2025-12-22 A | 2025-12-22 A | QTS-28051 FF | 100% |  |  |  |  | QTS-PHX3 DC1 - 6 day w/ Holidays | Construction | Mechanical | IGMP | Phase 1 | Construction | FOH | Level 1 | BAB |  |  |  |  |  | 01ADMIN |  |
| QTS-28971 |  | TI Area B // Insulate Piping & Refrigerant Lines | 10d | 2025-12-23 A | 2026-01-05 A | QTS-44871, QTS-28051, QTS-26571 | 100% |  |  |  |  | QTS-PHX3 DC1 - 6 day w/ Holidays | Construction | Mechanical | IGMP |  |  | FOH | Level 1 | BAB |  |  |  |  |  | 01ADMIN | Phase 1 |
| QTS-27711 |  | TI Area B // MEP In Wall Inspection | 1d | 2026-01-15 A | 2026-01-15 A | QTS-1002220, QTS-26561, QTS-26571 | 100% |  |  |  |  | QTS-PHX3 DC1 - 6 day w/ Holidays | Construction | Mechanical | IGMP |  |  | FOH | Level 1 | BAB |  |  |  |  |  | 01ADMIN | Phase 1 |
| QTS-27881 |  | TI Area B // Insulate Walls | 5d | 2026-01-26 A | 2026-02-02 A | QTS-27711 FF+1d | 100% | 2026-01-26 | 2026-01-30 |  |  | QTS-PHX3 DC1 - 6 day w/ Holidays | Construction | Build Out | IGMP |  |  | FOH | Level 1 | BAB |  |  |  |  |  | 01ADMIN | Phase 1 |

Notes:
- QTS-26011: allucent_notes_20251104_160200: Luis Vea on 2025-10-20T18:32:35.137Z: waiting on material for the 3inch wall, need BZI to finish stair case, BZI was using the forklift to finish the elevator beams / Jason Johnston on 2025-10-21 12:10: BZI stair install impacting access to complete the area. / allucent_notes_20251028_163138: Luis Vea on 2025-10-20T18:32:35.137Z: waiting on material for the 3inch wall, need BZI to finish stair case, BZI was using the forklift to finish the elevator beams / Jason Johnston on 2025-10-21 12:10: BZI stair install impacting access to complete the area. / allucent_notes_20251027_224008: Luis Vea on 2025-10-20T18:32:35.137Z: waiting on material for the 3inch wall, need BZI to finish stair case, BZI was using the forklift to finish the elevator beams / Jason Johnston on 2025-10-21 12:10: BZI stair install impacting access to complete the area. / allucent_notes_20251021_145627: Luis Vea on 2025-10-20T18:32:35.137Z: waiting on material for the 3inch wall, need BZI to finish stair case, BZI was using the forklift to finish the elevator beams / Jason Johnston on 2025-10-21 12:10: BZI stair install impacting access to complete the area. / allucent_notes: 2025-10-20T18:32:35.137Z - User: Luis Vea - Date Added: 2025-10-20T18:32:35.137Z - Note: waiting on material for the 3inch wall, need BZI to finish stair case, BZI was using the forklift to finish the elevator beams / 2025-10-21 12:10 - User: Jason John
- QTS-26571: allucent_notes_20251104_160200: Jason Johnston on 2025-11-03 11:11: Only in wall plumbing is in captured in restroom line. / allucent_notes: 2025-11-03 11:11 - User: Jason Johnston - Date Added: 2025-11-03 11:11 - Note: Only in wall plumbing is in captured in restroom line.
- QTS-26561: allucent_notes_20251216_165335: Jason Johnston on 2025-11-03 11:11: Focus on priority rooms first. / David Wiltberger on 2025-12-02 13:42: no walls built not early ACCESS / allucent_notes_20251209_203830: Jason Johnston on 2025-11-03 11:11: Focus on priority rooms first. / David Wiltberger on 2025-12-02 13:42: no walls built not early ACCESS / allucent_notes_20251202_153722: Jason Johnston on 2025-11-03 11:11: Focus on priority rooms first. / David Wiltberger on 2025-12-02 13:42: no walls built not early ACCESS / allucent_notes_20251118_192630: Jason Johnston on 2025-11-03 11:11: Focus on priority rooms first. / allucent_notes_20251111_182405: Jason Johnston on 2025-11-03 11:11: Focus on priority rooms first. / allucent_notes_20251104_160200: Jason Johnston on 2025-11-03 11:11: Focus on priority rooms first. / allucent_notes: 2025-11-03 11:11 - User: Jason Johnston - Date Added: 2025-11-03 11:11 - Note: Focus on priority rooms first. / 2025-12-02 13:42 - User: David Wiltberger - Date Added: 2025-12-02 13:42 - Note: no walls built not early ACCESS
- QTS-26591: allucent_notes_20251216_165335: Jason Johnston on 2025-11-03 11:11: focus on priority walls / Jason Johnston on 2025-11-19T02:22:41.829Z: undo / Jason Johnston on 2025-12-09 20:34: Need update from team / Scott Masterson on 2025-12-16 16:19: Jason is fixing the start... / allucent_notes_20251209_203830: Jason Johnston on 2025-11-03 11:11: focus on priority walls / Jason Johnston on 2025-11-19T02:22:41.829Z: undo / Jason Johnston on 2025-12-09 20:34: Need update from team / allucent_notes_20251202_153722: Jason Johnston on 2025-11-03 11:11: focus on priority walls / Jason Johnston on 2025-11-19T02:22:41.829Z: undo / allucent_notes_20251118_192630: Jason Johnston on 2025-11-03 11:11: focus on priority walls / Jason Johnston on 2025-11-19T02:22:41.829Z: undo / allucent_notes_20251111_182405: Jason Johnston on 2025-11-03 11:11: focus on priority walls / allucent_notes_20251104_160200: Jason Johnston on 2025-11-03 11:11: focus on priority walls / allucent_notes_20251230_164549: Jason Johnston on 2025-11-03 11:11: focus on priority walls / Jason Johnston on 2025-11-19T02:22:41.829Z: undo / Jason Johnston on 2025-12-09 20:34: Need update from team / Scott Masterson on 2025-12-16 16:19: Jason is fixing the start... / Sean Waisner on 2025-12-30 16:05: Man power issues / allucent_notes: 2025-11-03 11:11 - User: Jason Johnston - Date Added: 2025-11-03 11:11 - Note: focus on priority walls / 2025-11-19T02:22:41.829Z - User: Jason Johnston - Date Added: 2025-11-19T02:22:41.829Z - Note: undo / 2025-12-09 20:34 - User: Jason Johnston - Date
- QTS-1002220: Scheduler Notes: 1/13/26: Not complete. Held up by back box procurement
- QTS-27711: allucent_notes_20251216_165335: David Wiltberger on 2025-12-02 06:38: wall built late / allucent_notes_20251209_203830: David Wiltberger on 2025-12-02 06:38: wall built late / allucent_notes_20251202_153722: David Wiltberger on 2025-12-02 06:38: wall built late / allucent_notes_20251230_164549: David Wiltberger on 2025-12-02 06:38: wall built late / JD Kitchens on 2025-12-30 14:28: update / allucent_notes: 2025-12-02 06:38 - User: David Wiltberger - Date Added: 2025-12-02 06:38 - Note: wall built late / 2025-12-30 14:28 - User: JD Kitchens - Date Added: 2025-12-30 14:28 - Note: update
- QTS-27881: allucent_notes_20251230_164549: JD Kitchens on 2025-12-30 14:27: actual / JD Kitchens on 2025-12-30 14:27: actual / allucent_notes: 2025-12-30 14:27 - User: JD Kitchens - Date Added: 2025-12-30 14:27 - Note: actual / 2025-12-30 14:27 - User: JD Kitchens - Date Added: 2025-12-30 14:27 - Note: actual

| ID | WBS | Activity | Duration | Start | Finish | Predecessors | Complete | Planned start | Planned finish | Calendar | Project Section | Layton Discipline | Baseline | Phase-1-1 | Project Section-1 | Location | Level | Layton Super | Contract | Phase-1 | Allucent CSI Group | Notes |
| --- | --- | --- | --- | --- | --- | --- | --- | --- | --- | --- | --- | --- | --- | --- | --- | --- | --- | --- | --- | --- | --- | --- |
|  | 6 | **L1 / FOH // SDF #0163 (Early Access)** |  | 2025-09-04 | 2025-12-16 |  |  |  |  |  |  |  |  |  |  |  |  |  |  |  |  |  |
| QTS-44261 |  | SDF #0163 // Concrete Seal | 3d | 2025-09-04 A | 2025-09-08 A | QTS-44251 FF | 100% |  |  |  | Construction | Build Out | IGMP | Phase 1 | Construction | FOH | Level 1 | Doug Hayes | BAB |  |  |  |
| QTS-1271 |  | SDF #0163 // Frame Walls | 2d | 2025-10-03 A | 2025-10-06 A | QTS-26581 | 100% |  |  |  | Construction | Build Out | IGMP |  |  | FOH | Level 1 | Doug Hayes | BAB | Phase 1 |  |  |
| QTS-2341 |  | SDF #0163 // Rough Overhead Fire Sprinkler | 2d | 2025-10-08 A | 2025-10-09 A | QTS-26581, QTS-44261 | 100% |  |  |  | Construction | Mechanical | IGMP |  |  | FOH | Level 1 |  | BAB | Phase 1 | 01ADMIN |  |
| QTS-2351 |  | SDF #0163 // Rough Overhead Linesets | 5d | 2025-10-17 A | 2025-11-14 A | QTS-1271 | 100% | 2025-10-17 | 2025-10-23 |  | Construction | Mechanical | IGMP |  |  | FOH | Level 1 |  | BAB | Phase 1 | 01ADMIN |  |
| QTS-2331 |  | SDF #0163 // Rough In Electrical | 10d | 2025-10-20 A | 2025-11-12 A | QTS-2341, QTS-1271 | 100% | 2025-10-20 | 2025-10-31 |  | Construction | Electrical | IGMP |  |  | FOH | Level 1 |  | BAB | Phase 1 | 01ADMIN |  |
| QTS-99600 |  | SDF #0163 // Set Door Frame | 1d | 2025-11-12 A | 2025-11-12 A | QTS-1271 | 100% | 2025-11-05 | 2025-11-05 |  | Construction | Build Out | IGMP |  |  | FOH | Level 1 | Doug Hayes | BAB | Phase 1 | 01ADMIN |  |
| QTS-3131 |  | SDF #0163 // In Wall Inspection | 1d | 2025-11-13 A | 2025-11-13 A | QTS-2331 | 100% | 2025-11-06 | 2025-11-06 |  | Construction | Mechanical | IGMP |  |  | FOH | Level 1 |  | BAB | Phase 1 | 01ADMIN |  |
| QTS-20851 |  | SDF #0163 // Hang Drywall | 1d | 2025-11-14 A | 2025-11-17 A | QTS-3131 | 100% | 2025-11-07 | 2025-11-07 |  | Construction | Build Out | IGMP |  |  | FOH | Level 1 | Doug Hayes | BAB | Phase 1 | 01ADMIN |  |
| QTS-20941 |  | SDF #0163 // Tape & Finish Drywall | 3d | 2025-11-17 A | 2025-11-19 A | QTS-20851 | 100% | 2025-11-10 | 2025-11-12 |  | Construction | Build Out | IGMP |  |  | FOH | Level 1 |  | BAB | Phase 1 | 01ADMIN |  |
| QTS-21311 |  | SDF #0163 // Plywood Install | 1d | 2025-11-20 A | 2025-11-20 A | QTS-20941 | 100% |  |  |  | Construction | Build Out | IGMP |  |  | FOH | Level 1 |  | BAB | Phase 1 | 01ADMIN |  |
| QTS-21151 |  | SDF #0163 // Prime & Paint | 2d | 2025-11-21 A | 2025-11-24 A | QTS-21311 | 100% |  |  |  | Construction | Build Out | IGMP |  |  | FOH | Level 1 |  | BAB | Phase 1 | 01ADMIN |  |
| QTS-21611 |  | SDF #0163 // Install Light Fixtures | 2d | 2025-12-03 A | 2025-12-04 A | QTS-20631 | 100% |  |  |  | Construction | Electrical | IGMP |  |  | FOH | Level 1 |  | BAB | Phase 1 | 01ADMIN |  |
| QTS-21421 |  | SDF #0163 // Install AC Unit | 2d | 2025-12-05 A | 2025-12-08 A | QTS-21611, QTS-2351, QTS-21311, QTS-21151 | 100% |  |  |  | Construction | Mechanical | IGMP |  |  | FOH | Level 1 |  | BAB | Phase 1 | 01ADMIN |  |
| QTS-20631 |  | SDF #0163 // Set Door | 1d | 2025-12-08 A | 2025-12-08 A | QTS-99600, QTS-1271 FF | 100% |  |  |  | Construction | Build Out | IGMP |  |  | FOH | Level 1 |  | BAB | Phase 1 | 01ADMIN |  |
| QTS-21731 |  | SDF #0163 // Install Cable Racks | 5d | 2025-12-10 A | 2025-12-16 A | QTS-21151 | 100% |  |  |  | Construction | Electrical | IGMP |  |  | FOH | Level 1 |  | BAB | Phase 1 | 01ADMIN |  |
|  | 10 | **L1 / FOH // Fire Riser #0171** |  | 2025-09-04 | 2026-06-08 |  |  |  |  |  |  |  |  |  |  |  |  |  |  |  |  |  |
| QTS-44271 |  | Fire Riser #0171 // Concrete Seal | 3d | 2025-09-04 A | 2025-09-08 A | QTS-44261 | 100% |  |  |  | Construction | Build Out | IGMP | Phase 1 | Construction | FOH | Level 1 | Doug Hayes | BAB |  |  |  |
| QTS-22291 |  | Fire Riser #0171 // Rough Overhead Fire Sprinkler | 10d | 2025-09-29 A | 2025-10-03 A | QTS-44271 | 100% | 2025-09-29 | 2025-10-10 |  | Construction | Mechanical | IGMP |  |  | FOH | Level 1 |  | BAB | Phase 1 |  |  |
| QTS-4341 |  | Fire Riser #0171 // In Wall Inspection | 5d | 2025-10-15 A | 2025-10-21 A | QTS-3111 | 100% |  |  |  | Construction | Mechanical | IGMP |  |  | FOH | Level 1 |  | BAB | Phase 1 | 01ADMIN |  |
| QTS-2321 |  | Fire Riser #0171 // Frame Walls | 2d | 2025-10-30 A | 2025-10-31 A | QTS-22291, QTS-26011, QTS-1271 | 100% |  |  |  | Construction | Build Out | IGMP |  |  | FOH | Level 1 | Doug Hayes | BAB | Phase 1 | 01ADMIN |  |
| QTS-3111 |  | Fire Riser #0171 // Rough In Electrical | 5d | 2025-11-03 A | 2025-11-12 A | QTS-2321 | 100% | 2025-11-03 | 2025-11-07 |  | Construction | Electrical | IGMP |  |  | FOH | Level 1 |  | BAB | Phase 1 | 01ADMIN |  |
| QTS-99610 |  | Fire Riser #0171 // Set Door Frame | 1d | 2025-11-12 A | 2025-11-12 A | QTS-2321 | 100% | 2025-11-05 | 2025-11-05 |  | Construction | Build Out | IGMP |  |  | FOH | Level 1 | Doug Hayes | BAB | Phase 1 | 01ADMIN |  |
| QTS-20841 |  | Fire Riser #0171 // Hang Drywall | 5d | 2025-11-20 A | 2025-11-26 A | QTS-4341 | 100% |  |  |  | Construction | Build Out | IGMP |  |  | FOH | Level 1 |  | BAB | Phase 1 | 01ADMIN |  |
| QTS-21291 |  | Fire Riser #0171 // Tape & Finish Drywall | 5d | 2025-12-01 A | 2025-12-05 A | QTS-20841 | 100% |  |  |  | Construction | Build Out | IGMP |  |  | FOH | Level 1 |  | BAB | Phase 1 | 01ADMIN |  |
| QTS-21691 |  | Fire Riser #0171 // Prime & Paint | 5d | 2025-12-08 A | 2025-12-09 A | QTS-21291 | 100% | 2025-12-08 | 2025-12-12 |  | Construction | Build Out | IGMP |  |  | FOH | Level 1 |  | BAB | Phase 1 | 01ADMIN |  |
| QTS-20621 |  | Fire Riser #0171 // Set Door (Temp) | 1d | 2025-12-10 A | 2025-12-10 A | QTS-99610, QTS-15231, QTS-2321 FF | 100% |  |  |  | Construction | Build Out | IGMP |  |  | FOH | Level 1 |  | BAB | Phase 1 | 01ADMIN |  |
| QTS-1005220 |  | Fire Riser #0171 // Install Light Fixtures | 5d | 2025-12-23 A | 2026-03-03 A | QTS-20621 | 100% | 2025-12-23 | 2025-12-29 | QTS-PHX3 DC1 - 6 day w/ Holidays | Construction | Electrical | IGMP |  |  | FOH | Level 1 |  | BAB | Phase 1 | 01ADMIN |  |
| QTS-21951 |  | Fire Riser #0171 // Install Light Fixtures | 5d | 2025-12-23 A | 2026-01-27 A | QTS-20621 FF, QTS-21691 | 100% | 2025-12-23 | 2025-12-29 | QTS-PHX3 DC1 - 6 day w/ Holidays | Construction | Electrical | IGMP |  |  | FOH | Level 1 |  | BAB | Phase 1 | 01ADMIN |  |
| QTS-27111 |  | Fire Riser #0171 // Air Test System | 2d | 2026-01-26 A | 2026-03-10 A | QTS-26801, QTS-26321, QTS-2341, QTS-26281 | 100% | 2026-01-30 | 2026-01-31 | QTS-PHX3 DC1 - 6 day w/ Holidays | Construction | Mechanical | IGMP |  |  | FOH | Level 1 |  | BAB | Phase 1 | 01ADMIN |  |
| QTS-27481 |  | Fire Riser #0171 // Install Fire Pump | 2d | 2026-01-30 A | 2026-01-31 A | QTS-12901, QTS-27111 SS, QTS-23011 SS | 100% |  |  | QTS-PHX3 DC1 - 6 day w/ Holidays | Construction | Mechanical | IGMP |  |  | FOH | Level 1 |  | BAB | Phase 1 | 01ADMIN |  |
| QTS-27691 |  | Fire Riser #0171 // Install Heater | 5d | 2026-02-02 A | 2026-02-04 A | QTS-27481 | 100% | 2026-02-02 | 2026-02-06 | QTS-PHX3 DC1 - 6 day w/ Holidays | Construction | Mechanical | IGMP |  |  | FOH | Level 1 |  | BAB | Phase 1 | 01ADMIN |  |
| QTS-1007180 |  | Fire Riser #0171 // Air Test System | 2d | 2026-03-10 A | 2026-04-08 A | QTS-22291 | 100% | 2026-03-10 | 2026-03-11 | QTS-PHX3 DC1 - 6 day w/ Holidays | Construction | Mechanical | IGMP |  |  | FOH | Level 1 |  | BAB | Phase 1 | 01ADMIN | Replacing QTS-27111 due to in correct update |
| QTS-1011690 |  | Fire Riser #0171 // Raceway - Surface Mount Conduit | 2d | 2026-03-10 A | 2026-04-22 A | QTS-1371 | 100% | 2026-03-10 | 2026-03-11 | QTS-PHX3 DC1 - 6 day w/ Holidays | Construction | Mechanical | IGMP |  |  | FOH | Level 1 |  | BAB | Phase 1 | 01ADMIN |  |
| QTS-1011700 |  | Fire Riser #0171 // Raceway - Fire Alarm | 2d | 2026-03-10 A | 2026-04-24 A | QTS-1371 | 100% | 2026-03-10 | 2026-03-11 | QTS-PHX3 DC1 - 6 day w/ Holidays | Construction | Mechanical | IGMP |  |  | FOH | Level 1 |  | BAB | Phase 1 | 01ADMIN |  |

Notes:
- QTS-2351: allucent_notes_20251118_192630: Luis Vea on 2025-10-14 10:10: BZI can be in the way for scope to complete/sart / Luis Vea on 2025-10-20T18:41:39.785Z: linesets are not run yet, walls have not be framed due to BZI was in the way with forklift / Scott Masterson on 2025-10-27 16:10: Room is not framed yet. BZI occupied the area installing stell at the entry and the lobby stairs. / Jason Johnston on 2025-11-03 14:11: Done 11/14 / allucent_notes_20251111_182405: Luis Vea on 2025-10-14 10:10: BZI can be in the way for scope to complete/sart / Luis Vea on 2025-10-20T18:41:39.785Z: linesets are not run yet, walls have not be framed due to BZI was in the way with forklift / Scott Masterson on 2025-10-27 16:10: Room is not framed yet. BZI occupied the area installing stell at the entry and the lobby stairs. / Jason Johnston on 2025-11-03 14:11: Done 11/14 / allucent_notes_20251104_160200: Luis Vea on 2025-10-14 10:10: BZI can be in the way for scope to complete/sart / Luis Vea on 2025-10-20T18:41:39.785Z: linesets are not run yet, walls have not be framed due to BZI was in the way with forklift / Scott Masterson on 2025-10-27 16:10: Room is not framed yet. BZI occupied the area installing stell at the entry and the lobby stairs. / Jason Johnston on 2025-11-03 14:11: Done 11/14 / allucent_notes_20251028_163138: Luis Vea on 2025-10-14 10:10: BZI can be in the way for scope to complete/sart / Luis Vea on 2025-10-20T18:41:39.785Z: linesets are not run yet, walls have not be framed due to BZI was in the way with forklift / Scott Masterson on 2025-10-27 16:10: Room is not framed yet. BZI occupied the area installing stell at the entry and the lobby stairs. / allucent_notes_20251027_224008: Luis Vea on 2025-10-14 10:10: BZI can be in the way for scope to complete/sart / Luis Vea on 2025-10-20T18:41:39.785Z: linesets are not run yet, walls have not be framed due to BZI was in the way with forklift / Scott Masterson on 2025-10-27 16:10: Room is not framed yet. BZI occupied the area installing stell at the entry and the lobby stairs. / allucent_notes_20251021_145627: Luis Vea on 2025-10-14 10:10: BZI can be in the way for scope to complete/sart / Luis Vea on 2025-10-20T18:41:39.785Z: linesets are not run yet, walls have not be framed due to BZI was in the way with forklift / allucent_notes_20251014_152335: Luis Vea on 2025-10-14 10:10: BZI can be in the way for scope to complete/sart / allucent_notes: 2025-10-14 10:10 - User: Luis Vea - Date Added: 2025-10-14 10:10 - Note: BZI can be in the way for scope to complete/sart / 2025-10-20T18:41:39.785Z - User: Luis Vea - Date Added: 2025-10-20T18:41:39.785Z - Note: linesets are not run yet, walls have not
- QTS-2331: allucent_notes_20251118_192630: Luis Vea on 2025-10-14 10:10: walls are not framed. due to weather impact last weekend and BZI needing room for Forklift and material / Luis Vea on 2025-10-20T18:42:59.886Z: walls are not framed due to manpower getting pulled to the fan walls / Jason Johnston on 2025-11-03 14:11: Completing Wednesday. / Luis Vea on 2025-11-10 11:11: completing 11/10 / Jason Johnston on 2025-11-11 15:11: Will be complete 11/12. / allucent_notes_20251111_182405: Luis Vea on 2025-10-14 10:10: walls are not framed. due to weather impact last weekend and BZI needing room for Forklift and material / Luis Vea on 2025-10-20T18:42:59.886Z: walls are not framed due to manpower getting pulled to the fan walls / Jason Johnston on 2025-11-03 14:11: Completing Wednesday. / Luis Vea on 2025-11-10 11:11: completing 11/10 / Jason Johnston on 2025-11-11 15:11: Will be complete 11/12. / allucent_notes_20251104_160200: Luis Vea on 2025-10-14 10:10: walls are not framed. due to weather impact last weekend and BZI needing room for Forklift and material / Luis Vea on 2025-10-20T18:42:59.886Z: walls are not framed due to manpower getting pulled to the fan walls / Jason Johnston on 2025-11-03 14:11: Completing Wednesday. / allucent_notes_20251028_163138: Luis Vea on 2025-10-14 10:10: walls are not framed. due to weather impact last weekend and BZI needing room for Forklift and material / Luis Vea on 2025-10-20T18:42:59.886Z: walls are not framed due to manpower getting pulled to the fan walls / allucent_notes_20251027_224008: Luis Vea on 2025-10-14 10:10: walls are not framed. due to weather impact last weekend and BZI needing room for Forklift and material / Luis Vea on 2025-10-20T18:42:59.886Z: walls are not framed due to manpower getting pulled to the fan walls / allucent_notes_20251021_145627: Luis Vea on 2025-10-14 10:10: walls are not framed. due to weather impact last weekend and BZI needing room for Forklift and material / Luis Vea on 2025-10-20T18:42:59.886Z: walls are not framed due to manpower getting pulled to the fan walls / allucent_notes_20251014_152335: Luis Vea on 2025-10-14 10:10: walls are not framed. due to weather impact last weekend and BZI needing room for Forklift and material / allucent_notes: 2025-10-14 10:10 - User: Luis Vea - Date Added: 2025-10-14 10:10 - Note: walls are not framed. due to weather impact last weekend and BZI needing room for Forklift and material / 2025-10-20T18:42:59.886Z - User: Luis Vea - Date Added: 2025-10-20T18:42:5
- QTS-99600: allucent_notes_20251118_192630: Luis Vea on 2025-10-14 10:10: doors to arrive on October 27th / Jason Johnston on 2025-10-27 09:10: Door arrives on site 10/30. / Jason Johnston on 2025-11-03 14:11: Completing Wednesday / Luis Vea on 2025-11-10 11:11: needing door frame to be installed / Jason Johnston on 2025-11-11 15:11: Its Wednesday. / allucent_notes_20251111_182405: Luis Vea on 2025-10-14 10:10: doors to arrive on October 27th / Jason Johnston on 2025-10-27 09:10: Door arrives on site 10/30. / Jason Johnston on 2025-11-03 14:11: Completing Wednesday / Luis Vea on 2025-11-10 11:11: needing door frame to be installed / allucent_notes_20251104_160200: Luis Vea on 2025-10-14 10:10: doors to arrive on October 27th / Jason Johnston on 2025-10-27 09:10: Door arrives on site 10/30. / Jason Johnston on 2025-11-03 14:11: Completing Wednesday / allucent_notes_20251028_163138: Luis Vea on 2025-10-14 10:10: doors to arrive on October 27th / Jason Johnston on 2025-10-27 09:10: Door arrives on site 10/30. / allucent_notes_20251027_224008: Luis Vea on 2025-10-14 10:10: doors to arrive on October 27th / Jason Johnston on 2025-10-27 09:10: Door arrives on site 10/30. / allucent_notes_20251021_145627: Luis Vea on 2025-10-14 10:10: doors to arrive on October 27th / allucent_notes_20251014_152335: Luis Vea on 2025-10-14 10:10: doors to arrive on October 27th / allucent_notes: 2025-10-14 10:10 - User: Luis Vea - Date Added: 2025-10-14 10:10 - Note: doors to arrive on October 27th / 2025-10-27 09:10 - User: Jason Johnston - Date Added: 2025-10-27 09:10 - Note: Door arrives on site 10/30. / 2025-11-03 14:11 - User: Jason Johns
- QTS-20851: allucent_notes_20251118_192630: Jake Shimmin on 2025-11-17 13:11: finish rough in and inspection / allucent_notes: 2025-11-17 13:11 - User: Jake Shimmin - Date Added: 2025-11-17 13:11 - Note: finish rough in and inspection
- QTS-21611: allucent_notes_20251209_203830: Jason Johnston on 2025-12-09 20:34: Need update from team / allucent_notes: 2025-12-09 20:34 - User: Jason Johnston - Date Added: 2025-12-09 20:34 - Note: Need update from team
- QTS-21421: allucent_notes_20251209_203830: David Wiltberger on 2025-12-02 06:38: wall built late / allucent_notes_20251202_153722: David Wiltberger on 2025-12-02 06:38: wall built late / allucent_notes: 2025-12-02 06:38 - User: David Wiltberger - Date Added: 2025-12-02 06:38 - Note: wall built late
- QTS-20631: allucent_notes_20251209_203830: Sean Waisner on 2025-12-09T22:29:44.410Z: Needs to say temp door / allucent_notes: 2025-12-09T22:29:44.410Z - User: Sean Waisner - Date Added: 2025-12-09T22:29:44.410Z - Note: Needs to say temp door
- QTS-21731: allucent_notes_20251216_165335: David Wiltberger on 2025-12-02 13:43: last early access built / Jason Johnston on 2025-12-09 20:34: Need update from team / allucent_notes_20251209_203830: David Wiltberger on 2025-12-02 13:43: last early access built / Jason Johnston on 2025-12-09 20:34: Need update from team / allucent_notes_20251202_153722: David Wiltberger on 2025-12-02 13:43: last early access built / allucent_notes: 2025-12-02 13:43 - User: David Wiltberger - Date Added: 2025-12-02 13:43 - Note: last early access built / 2025-12-09 20:34 - User: Jason Johnston - Date Added: 2025-12-09 20:34 - Note: Need update from team
- QTS-2321: allucent_notes_20251104_160200: Luis Vea on 2025-10-20T18:44:52.014Z: needing exterior walls to be framed, waiting for material to arrive today to start tomorrow. / also, diamonds are not poured going to finish tomorrow / allucent_notes_20251028_163138: Luis Vea on 2025-10-20T18:44:52.014Z: needing exterior walls to be framed, waiting for material to arrive today to start tomorrow. / also, diamonds are not poured going to finish tomorrow / allucent_notes_20251027_224008: Luis Vea on 2025-10-20T18:44:52.014Z: needing exterior walls to be framed, waiting for material to arrive today to start tomorrow. / also, diamonds are not poured going to finish tomorrow / allucent_notes_20251021_145627: Luis Vea on 2025-10-20T18:44:52.014Z: needing exterior walls to be framed, waiting for material to arrive today to start tomorrow. / also, diamonds are not poured going to finish tomorrow / allucent_notes: 2025-10-20T18:44:52.014Z - User: Luis Vea - Date Added: 2025-10-20T18:44:52.014Z - Note: needing exterior walls to be framed, waiting for material to arrive today to start tomorrow. also, diamonds are not poured going to finish tomorrow
- QTS-3111: allucent_notes_20251118_192630: Luis Vea on 2025-10-20T18:45:25.239Z: it has started on the door frame the roughin / Luis Vea on 2025-11-10 11:11: completing 11/10 / Jason Johnston on 2025-11-11 17:11: SWO / allucent_notes_20251111_182405: Luis Vea on 2025-10-20T18:45:25.239Z: it has started on the door frame the roughin / Luis Vea on 2025-11-10 11:11: completing 11/10 / Jason Johnston on 2025-11-11 17:11: SWO / allucent_notes_20251104_160200: Luis Vea on 2025-10-20T18:45:25.239Z: it has started on the door frame the roughin / allucent_notes_20251028_163138: Luis Vea on 2025-10-20T18:45:25.239Z: it has started on the door frame the roughin / allucent_notes_20251027_224008: Luis Vea on 2025-10-20T18:45:25.239Z: it has started on the door frame the roughin / allucent_notes_20251021_145627: Luis Vea on 2025-10-20T18:45:25.239Z: it has started on the door frame the roughin / allucent_notes: 2025-10-20T18:45:25.239Z - User: Luis Vea - Date Added: 2025-10-20T18:45:25.239Z - Note: it has started on the door frame the roughin / 2025-11-10 11:11 - User: Luis Vea - Date Added: 2025-11-10 11:11 - Note: completing 11/10 / 2025-11-11 17:11 - User:
- QTS-99610: allucent_notes_20251118_192630: Jason Johnston on 2025-11-03 14:11: Late delivery. / Luis Vea on 2025-11-10 11:11: needing to install door frame, rough in is completed / Jason Johnston on 2025-11-11 17:11: SWO / allucent_notes_20251111_182405: Jason Johnston on 2025-11-03 14:11: Late delivery. / Luis Vea on 2025-11-10 11:11: needing to install door frame, rough in is completed / Jason Johnston on 2025-11-11 17:11: SWO / allucent_notes_20251104_160200: Jason Johnston on 2025-11-03 14:11: Late delivery. / allucent_notes: 2025-11-03 14:11 - User: Jason Johnston - Date Added: 2025-11-03 14:11 - Note: Late delivery. / 2025-11-10 11:11 - User: Luis Vea - Date Added: 2025-11-10 11:11 - Note: needing to install door frame, rough in is completed / 2025-11-11 17:11 - User: Jas
- QTS-1005220: allucent_notes_20251216_165335: Scott Masterson on 2025-12-16 16:04: There are still other over head activitives that need completed. Mech, Elct. / allucent_notes_20251230_164549: Scott Masterson on 2025-12-16 16:04: There are still other over head activitives that need completed. Mech, Elct. / allucent_notes: 2025-12-16 16:04 - User: Scott Masterson - Date Added: 2025-12-16 16:04 - Note: There are still other over head activitives that need completed. Mech, Elct.
- QTS-21951: allucent_notes_20251216_165335: Scott Masterson on 2025-12-16 16:04: There are still other over head activitives that need completed. Mech, Elct. / allucent_notes_20251230_164549: Scott Masterson on 2025-12-16 16:04: There are still other over head activitives that need completed. Mech, Elct. / allucent_notes: 2025-12-16 16:04 - User: Scott Masterson - Date Added: 2025-12-16 16:04 - Note: There are still other over head activitives that need completed. Mech, Elct.
- QTS-1007180: Scheduler Notes: Replacing QTS-27111 due to in correct update

| ID | WBS | Activity | Duration | Start | Finish | Predecessors | Complete | Planned start | Planned finish | Total float | Free float | Constraint | Calendar | Allucent CSI Group | Project Section | Phase-1 | Layton Discipline | Baseline | Location | Level | Fragnet | Fragnet Responsible Party | Contract | Layton Super | Phase-1-1 | Project Section-1 | Update Notes | Trade Partner |
| --- | --- | --- | --- | --- | --- | --- | --- | --- | --- | --- | --- | --- | --- | --- | --- | --- | --- | --- | --- | --- | --- | --- | --- | --- | --- | --- | --- | --- |
|  | 1 | **Fragnet RFI #1011** |  | 2026-04-21 | 2026-04-28 |  |  |  |  |  |  |  |  |  |  |  |  |  |  |  |  |  |  |  |  |  |  |  |
| QTS-1011810 |  | Fragnet / RFI #1011 Submission | 1d | 2026-04-21 A | 2026-04-21 A | QTS-1371 | 100% |  |  |  |  |  | QTS-PHX3 DC1 - 6 day w/ Holidays | 01ADMIN | Construction | Phase 1 | Mechanical | IGMP | FOH | Level 1 | Fragnet | Rosendin Electric Inc. | BAB |  |  |  |  |  |
| QTS-1011820 |  | Fragnet / RFI #1011 Design Response | 2d | 2026-04-22 A | 2026-04-28 A | QTS-1011810 | 100% | 2026-04-22 | 2026-04-23 |  |  |  | QTS-PHX3 DC1 - 6 day w/ Holidays | 01ADMIN | Construction | Phase 1 | Mechanical | IGMP | FOH | Level 1 | Fragnet | Rosendin Electric Inc. | BAB |  |  |  |  |  |
|  | 2 | **Remaining Scope** |  | 2026-01-07 | 2026-06-08 |  |  |  |  |  |  |  |  |  |  |  |  |  |  |  |  |  |  |  |  |  |  |  |
| QTS-23011 |  | Fire Riser #0171 // Build Fire Risers | 10d | 2026-01-07 A | 2026-05-19 A | QTS-120000, QTS-22291 | 100% | 2026-01-07 | 2026-01-17 |  |  |  | QTS-PHX3 DC1 - 6 day w/ Holidays | 01ADMIN | Construction | Phase 1 | Mechanical | IGMP | FOH | Level 1 |  |  | BAB |  |  |  |  |  |
| QTS-1011710 |  | Fire Riser #0171 // Install Fire Suppression Devices | 2d | 2026-05-13 A | 2026-05-14 A | QTS-1371, QTS-1011820 | 100% |  |  |  |  |  | QTS-PHX3 DC1 - 6 day w/ Holidays | 01ADMIN | Construction | Phase 1 | Mechanical | IGMP | FOH | Level 1 |  |  | BAB |  |  |  |  |  |
| QTS-1011720 |  | Fire Riser #0171 // Air Test System | 2d | 2026-05-15 A | 2026-05-15 A | QTS-18851, QTS-1011710 | 100% | 2026-05-13 | 2026-05-14 |  |  |  | QTS-PHX3 DC1 - 6 day w/ Holidays | 01ADMIN | Construction | Phase 1 | Mechanical | IGMP | FOH | Level 1 |  |  | BAB |  |  |  |  |  |
| QTS-1003980 |  | Fire Riser #0171 // Water Test System | 1d | 2026-06-03 A | 2026-06-08 A | QTS-27481, QTS-27691, QTS-1007180, QTS-1011720 | 100% | 2026-06-03 | 2026-06-03 |  |  |  | QTS-PHX3 DC1 - 6 day w/ Holidays | 01ADMIN | Construction | Phase 1 | Mechanical | IGMP | FOH | Level 1 |  |  | BAB | Mechanical |  |  |  |  |
| QTS-1003990 |  | Fire Riser #0171 // City Inspection of Fire Pump/System | 1d | 2026-06-08 A | 2026-06-08 A | QTS-1003980, QTS-1011700, QTS-1011690 | 100% | 2026-07-15 | 2026-07-15 |  |  |  | QTS-PHX3 DC1 - 6 day w/ Holidays | 01ADMIN | Construction | Phase 1 | Mechanical | IGMP | FOH | Level 1 |  |  | BAB | Mechanical |  |  |  |  |
|  | 11 | **L1 / FOH // Office Elevator #E2** |  | 2025-12-03 | 2026-08-26 |  |  |  |  |  |  |  |  |  |  |  |  |  |  |  |  |  |  |  |  |  |  |  |
| QTS-27351 |  | Freight Elevator E2 // Provide Temp Power Box at Level 1 Elevator Entry | 2d | 2025-12-03 A | 2025-12-04 A | QTS-25991 | 100% |  |  |  |  |  |  | 01ADMIN | Construction |  | Build Out | IGMP | FOH | Level 1 |  |  | BAB |  | Phase 1 | Construction |  |  |
| QTS-26721 |  | Freight Elevator E2 // Safety Barricade Install & Netting | 4d | 2025-12-22 A | 2025-12-31 A | QTS-25991 | 100% | 2025-12-22 | 2025-12-30 |  |  |  |  | 01ADMIN | Construction |  | Build Out | IGMP | FOH | Level 1 |  |  | BAB |  | Phase 1 | Construction |  |  |
| QTS-29341 |  | Freight Elevator E2 // Install Rails | 10d | 2026-01-26 A | 2026-02-26 A | QTS-26721, QTS-17311, QTS-25991, QTS-27351, QTS-1004430 | 100% | 2026-01-26 | 2026-02-05 |  |  |  | QTS-PHX3 DC1 - 6 day w/ Holidays | 01ADMIN | Construction | Phase 1 | Core & Shell | IGMP | FOH | Level 1 |  |  | BAB |  |  |  |  |  |
| QTS-29711 |  | Freight Elevator E2 // Install Machine & Controller | 8d | 2026-02-27 A | 2026-03-07 A | QTS-29341 | 100% |  |  |  |  |  | QTS-PHX3 DC1 - 6 day w/ Holidays | 01ADMIN | Construction | Phase 1 | Core & Shell | IGMP | FOH | Level 1 |  |  | BAB |  |  |  |  |  |
| QTS-30141 |  | Freight Elevator E2 // Install Elevator Floor & Walls | 8d | 2026-03-11 A | 2026-03-26 A | QTS-29711 | 100% | 2026-03-11 | 2026-03-19 |  |  |  | QTS-PHX3 DC1 - 6 day w/ Holidays |  | Construction | Phase 1 | Core & Shell | IGMP | FOH | Level 1 |  |  | BAB |  |  |  |  |  |
| QTS-30491 |  | Freight Elevator E2 // Hoistway Equipment, Conduit & Wire | 10d | 2026-03-27 A | 2026-04-20 A | QTS-30141 | 100% | 2026-03-27 | 2026-04-07 |  |  |  | QTS-PHX3 DC1 - 6 day w/ Holidays |  | Construction | Phase 1 | Electrical | IGMP | FOH | Level 1 |  |  | BAB | Ben Ribble |  |  | 5/19 - Confirm activity with Ben |  |
| QTS-1009700 |  | Freight Elevator E2 // Install SUMP Pump & Discharge Piping | 1d | 2026-04-20 A | 2026-04-29 A | QTS-30141 | 100% | 2026-04-20 | 2026-04-20 |  |  |  | QTS-PHX3 DC1 - 6 day w/ Holidays |  | Construction |  | Mechanical | IGMP | FOH | Level 1 |  |  | BAB |  | Phase 1 | Construction |  |  |
| QTS-1009660 |  | Freight Elevator E2 // Install Communications, & FA Conduits | 4d | 2026-04-24 A | 2026-04-30 A | QTS-30491 FF | 100% | 2026-04-24 | 2026-04-28 |  |  |  | QTS-PHX3 DC1 - 6 day w/ Holidays |  | Construction |  | Electrical | IGMP | FOH | Level 1 |  |  | BAB |  | Phase 1 | Construction |  |  |
| QTS-1009670 |  | Freight Elevator E2 // Rough In, Pull & Terminate Power & Lighting | 4d | 2026-04-24 A | 2026-04-29 A | QTS-1009660 SS | 100% | 2026-04-24 | 2026-04-28 |  |  |  | QTS-PHX3 DC1 - 6 day w/ Holidays |  | Construction |  | Electrical | IGMP | FOH | Level 1 |  |  | BAB |  | Phase 1 | Construction |  |  |
| QTS-30601 |  | Freight Elevator E2 // Install Conduit for Heat & Smoke Sensors Elevator Shaft | 5d | 2026-04-27 A | 2026-05-01 A | QTS-30141 | 100% | 2026-04-28 | 2026-05-02 |  |  |  | QTS-PHX3 DC1 - 6 day w/ Holidays |  | Construction |  | Electrical | IGMP | FOH | Level 1 |  |  | BAB | Ben Ribble | Phase 1 | Construction |  |  |
| QTS-1009690 |  | Freight Elevator E2 // Install FA Devices & Pull & Terminate FA Wire | 2d | 2026-04-30 A | 2026-04-30 A | QTS-1009660, QTS-1009670 | 100% | 2026-05-21 | 2026-05-22 |  |  |  | QTS-PHX3 DC1 - 6 day w/ Holidays |  | Construction |  | Electrical | IGMP | FOH | Level 1 |  |  | BAB |  | Phase 1 | Construction |  |  |
| QTS-1009720 |  | Freight Elevator E2 // Pull Communications & Security Cable | 1d | 2026-04-30 A | 2026-04-30 A | QTS-1009700, QTS-1009690 | 100% |  |  |  |  |  | QTS-PHX3 DC1 - 6 day w/ Holidays |  | Construction |  | Electrical | IGMP | FOH | Level 1 |  |  | BAB |  | Phase 1 | Construction |  |  |
| QTS-1009760 |  | Freight Elevator E2 // Install Security Devices | 1d | 2026-05-01 A | 2026-05-01 A | QTS-1009720 | 100% |  |  |  |  |  | QTS-PHX3 DC1 - 6 day w/ Holidays |  | Construction |  | Electrical | IGMP | FOH | Level 1 |  |  | BAB |  | Phase 1 | Construction |  |  |
| QTS-30681 |  | Freight Elevator E2 // Install Entrances, Doors, Hardware | 7d | 2026-05-04 A | 2026-05-12 A | QTS-30491, QTS-30141, QTS-30601 | 100% | 2026-07-08 | 2026-07-15 |  |  |  | QTS-PHX3 DC1 - 6 day w/ Holidays |  | Construction | Phase 1 | Build Out | IGMP | FOH | Level 1 |  |  | BAB | Ben Ribble |  |  |  |  |
| QTS-30501 |  | Freight Elevator E2 // Install Elevator Thresholds & Grout | 5d | 2026-05-20 A | 2026-07-21 A | QTS-30141, QTS-1009760 | 100% | 2026-05-20 | 2026-05-26 |  |  |  | QTS-PHX3 DC1 - 6 day w/ Holidays |  | Construction |  | Build Out | IGMP | FOH | Level 1 |  |  | BAB | Ben Ribble | Phase 1 | Construction |  | Otis Elevator Company |
| QTS-1013640 |  | Freight Elevator E2 // Fragnet Delay due to Material to Install Elevator Thresholds & Grout | 5d | 2026-07-22 A | 2026-08-03 A | QTS-30141, QTS-1009760 | 100% | 2026-07-29 | 2026-08-03 |  |  |  | QTS-PHX3 DC1 - 6 day w/ Holidays |  | Construction |  | Build Out | IGMP | FOH | Level 1 |  |  | BAB | Ben Ribble | Phase 1 | Construction |  | Otis Elevator Company |
| QTS-30811 |  | Freight Elevator E2 // City Inspection | 5d | 2026-08-06 A | 2026-08-06 A | QTS-1013640 | 100% | 2026-08-27 | 2026-09-01 |  |  |  | QTS-PHX3 DC1 - 6 day w/ Holidays |  | Construction | Phase 1 | Build Out | IGMP | FOH | Level 1 |  |  | BAB | Ben Ribble |  |  |  | Otis Elevator Company |
| QTS-30741 |  | Freight Elevator E2 // Pre-Adjustment Checklist | 2d | 2026-08-07 A | 2026-08-08 A | QTS-30681, QTS-30491, QTS-30501, QTS-1013640, QTS-1014010 | 100% | 2026-08-12 | 2026-08-13 |  |  |  | QTS-PHX3 DC1 - 6 day w/ Holidays |  | Construction | Phase 1 | Build Out | IGMP | FOH | Level 1 |  |  | BAB | Ben Ribble |  |  |  | Otis Elevator Company |
| QTS-30751 |  | Freight Elevator E2 // Adjust Freight Elevator #FE1 | 6d | 2026-08-10 A | 2026-08-14 A | QTS-30741 | 100% | 2026-08-14 | 2026-08-20 |  |  |  | QTS-PHX3 DC1 - 6 day w/ Holidays |  | Construction | Phase 1 | Build Out | IGMP | FOH | Level 1 |  |  | BAB | Ben Ribble |  |  |  | Otis Elevator Company |
| QTS-1014490 |  | Freight Elevator E2 // Pre Adjustment Test - Freight Elevator #FE1 | 3d | 2026-08-21 | 2026-08-24 | QTS-30751 |  |  |  | -90d | 0d | start on or after 2026-08-21 | QTS-PHX3 DC1 - 6 day w/ Holidays |  | Construction | Phase 1 | Build Out | IGMP | FOH | Level 1 |  |  | BAB | Ben Ribble |  |  |  | Otis Elevator Company |
| QTS-30771 |  | Freight Elevator E2 // State Elevator Inspection | 2d | 2026-08-25 | 2026-08-26 | QTS-30751, QTS-1014490 |  |  |  | -90d | 9d |  | QTS-PHX3 DC1 - 6 day w/ Holidays |  | Construction | Phase 1 | Build Out | IGMP | FOH | Level 1 |  |  | BAB | Ben Ribble |  |  |  | Otis Elevator Company |

Notes:
- QTS-1011810: Scheduler Notes: RFI 1011 - No panel and circuit information provided on sheet / E03-01B
- QTS-23011: allucent_notes_20251209_203830: Luis Vea on 2025-10-14T17:10:08.219Z: waiting for concrete to be poured / underneath stairs / Luis Vea on 2025-10-14 10:10: pushing due to underneath stairs not being / poured. / Luis Vea on 2025-10-20T18:43:43.283Z: equipment has not arrived / David Wiltberger on 2025-10-21 13:10: Changed schedule to address early / access / Jason Johnston on 2025-10-28 15:10: Fire riser room on hold due to potential / design changes. / Jason Johnston on 2025-11-03 14:11: Still waiting for design / finalization. / Luis Vea on 2025-11-10 11:11: equipment gets installed once drywall and OH is / completed / Jason Johnston on 2025-11-11 17:11: SWO / David Wiltberger on 2025-11-17 16:11: Impacted by stop work / David Wiltberger on 2025-12-02 06:19: Delayed from Stop / Work / allucent_notes_20251202_153722: Luis Vea on 2025-10-14T17:10:08.219Z: waiting for concrete to be poured underneath stairs / Luis Vea on 2025-10-14 10:10: pushing due to underneath stairs not being poured. / Luis Vea on 2025-10-20T18:43:43.283Z: equipment has not arrived / David Wiltberger on 2025-10-21 13:10: Changed schedule to address early access / Jason Johnston on 2025-10-28 15:10: Fire riser room on hold due to potential design changes. / Jason Johnston on 2025-11-03 14:11: Still waiting for design finalization. / Luis Vea on 2025-11-10 11:11: equipment gets installed once drywall and OH is completed / Jason Johnston on 2025-11-11 17:11: SWO / David Wiltberger on 2025-11-17 16:11: Impacted by stop work / David Wiltberger on 2025-12-02 06:19: Delayed from Stop Work / allucent_notes_20251118_192630: Luis Vea on 2025-10-14T17:10:08.219Z: waiting for concrete to be poured underneath stairs / Luis Vea on 2025-10-14 10:10: pushing due to underneath stairs not being poured. / Luis Vea on 2025-10-20T18:43:43.283Z: equipment has not arrived / David Wiltberger on 2025-10-21 13:10: Changed schedule to address early access / Jason Johnston on 2025-10-28 15:10: Fire riser room on hold due to potential design changes. / Jason Johnston on 2025-11-03 14:11: Still waiting for design finalization. / Luis Vea on 2025-11-10 11:11: equipment gets installed once drywall and OH is completed / Jason Johnston on 2025-11-11 17:11: SWO / David Wiltberger on 2025-11-17 16:11: Impacted by stop work / allucent_notes_20251111_182405: Luis Vea on 2025-10-14T17:10:08.219Z: waiting for concrete to be poured underneath stairs / Luis Vea on 2025-10-14 10:10: pushing due to underneath stairs not being poured. / Luis Vea on 2025-10-20T18:43:43.283Z: equipment has not arrived / David Wiltberger on 2025-10-21 13:10: Changed schedule to address early access / Jason Johnston on 2025-10-28 15:10: Fire riser room on hold due to potential design changes. / Jason Johnston on 2025-11-03 14:11: Still waiting for design finalization. / Luis Vea on 2025-11-10 11:11: equipment gets installed once drywall and OH is completed / Jason Johnston on 2025-11-11 17:11: SWO / allucent_notes_20251104_160200: Luis Vea on 2025-10-14T17:10:08.219Z: waiting for concrete to be poured underneath stairs / Luis Vea on 2025-10-14 10:10: pushing due to underneath stairs not being poured. / Luis Vea on 2025-10-20T18:43:43.283Z: equipment has not arrived / David Wiltberger on 2025-10-21 13:10: Changed schedule to address early access / Jason Johnston on 2025-10-28 15:10: Fire riser room on hold due to potential design changes. / Jason Johnston on 2025-11-03 14:11: Still waiting for design finalization. / allucent_notes_20251028_163138: Luis Vea on 2025-10-14T17:10:08.219Z: waiting for concrete to be poured underneath stairs / Luis Vea on 2025-10-14 10:10: pushing due to underneath stairs not being poured. / Luis Vea on 2025-10-20T18:43:43.283Z: equipment has not arrived / David Wiltberger on 2025-10-21 13:10: Changed schedule to address early access / Jason Johnston on 2025-10-28 15:10: Fire riser room on hold due to potential design changes. / allucent_notes_20251230_164549: Luis Vea on 2025-10-14T17:10:08.219Z: waiting for concrete to be poured underneath stairs / Luis Vea on 2025-10-14 10:10: pushing due to underneath stairs not being poured. / Luis Vea on 2025-10-20T18:43:43.283Z: equipment has not arrived / David Wiltberger on 2025-10-21 13:10: Changed schedule to address early access / Jason Johnston on 2025-10-28 15:10: Fire riser room on hold due to potential design changes. / Jason Johnston on 2025-11-03 14:11: Still waiting for design finalization. / Luis Vea on 2025-11-10 11:11: equipment gets installed once drywall and OH is completed / Jason Johnston on 2025-11-11 17:11: SWO / David Wiltberger on 2025-11-17 16:11: Impacted by stop work / David Wiltberger on 2025-12-02 06:19: Delayed from Stop Work / Scheduler Notes: Luis Vea on 2025-10-14T17:10:08.219Z: waiting for concrete to be poured / underneath stairs / Luis Vea on 2025-10-14 10:10: pushing due to underneath stairs not being / poured. / Luis Vea on 2025-10-20T18:43:43.283Z: equipment has not arrived / David Wiltberger on 2025-10-21 13:10: Changed schedule to address early / access / Jason Johnston on 2025-10-28 15:10: Fire riser room on hold due to potential / design changes. / Jason Johnston on 2025-11-03 14:11: Still waiting for design / finalization. / Luis Vea on 2025-11-10 11:11: equipment gets installed once drywall and OH is / completed / Jason Johnston on 2025-11-11 17:11: SWO / David Wiltberger on 2025-11-17 16:11: Impacted by stop work / David Wiltberger on 2025-12-02 06:19: Delayed from Stop Work / 1/20/26: BAM delayed this item by not completing domestic water / piping. / Notes: 1/20/26: BAM delayed this item by not completing domestic water piping. / allucent_notes: 2025-10-14T17:10:08.219Z - User: Luis Vea - Date Added: 2025-10-14T17:10:08.219Z - Note: waiting for concrete to be poured underneath stairs / 2025-10-14 10:10 - User: Luis Vea - Date Added: 2025-10-14 10:10 - Note: pushing due to underneath stairs not
- QTS-1011720: Scheduler Notes: Replacing QTS-1007180 due to in correct update / Notes: Replacing QTS-1007180 due to in correct update
- QTS-26721: allucent_notes_20251216_165335: Sean Waisner on 2025-12-09 15:30: Need materials / Sean Waisner on 2025-12-16 15:05: Not started due to Sean / allucent_notes_20251209_203830: Sean Waisner on 2025-12-09 15:30: Need materials / allucent_notes_20251230_164549: Sean Waisner on 2025-12-09 15:30: Need materials / Sean Waisner on 2025-12-16 15:05: Not started due to Sean / Sean Waisner on 2025-12-30 16:07: short week had guys busy / allucent_notes: 2025-12-09 15:30 - User: Sean Waisner - Date Added: 2025-12-09 15:30 - Note: Need materials / 2025-12-16 15:05 - User: Sean Waisner - Date Added: 2025-12-16 15:05 - Note: Not started due to Sean / 2025-12-30 16:07 - User: Sean Waisner - Date Added: 20
- QTS-29341: Scheduler Notes: 2/3/26: RFI to be submitted for rail attachment. / Notes: 2/3/26: RFI to be submitted for rail attachment.
- QTS-1013640: Scheduler Notes: Delay - waiting on material / Notes: Delay - waiting on material
- QTS-30741: Notes: 8/6 - permanent power

| ID | WBS | Activity | Duration | Start | Finish | Predecessors | Complete | Planned start | Planned finish | Calendar | Project Section | Layton Discipline | Baseline | Phase-1-1 | Project Section-1 | Location | Level | Layton Super | Contract | Last Period Finish | Last Period Start | Allucent CSI Group | Phase-1 | Notes |
| --- | --- | --- | --- | --- | --- | --- | --- | --- | --- | --- | --- | --- | --- | --- | --- | --- | --- | --- | --- | --- | --- | --- | --- | --- |
|  | 1 | **L1 / FOH // Restrooms #0157** |  | 2025-09-04 | 2026-06-30 |  |  |  |  |  |  |  |  |  |  |  |  |  |  |  |  |  |  |  |
| QTS-44281 |  | Restrooms #0157 // Concrete Seal | 3d | 2025-09-04 A | 2025-09-08 A | QTS-44271 FF, QTS-44271 | 100% |  |  |  | Construction | Build Out | IGMP | Phase 1 | Construction | FOH | Level 1 | Doug Hayes | BAB |  |  |  |  |  |
| QTS-5681 |  | Restrooms #0157 // Rough Overhead Fire Sprinkler | 1d | 2025-10-08 A | 2025-10-08 A | QTS-22291, QTS-44281 | 100% |  |  |  | Construction | Mechanical | IGMP |  |  | FOH | Level 1 |  | BAB | 2023-01-17 | 2023-01-13 | 01ADMIN | Phase 1 |  |
| QTS-3661 |  | Restrooms #0157 // Rough Overhead Plumbing | 5d | 2025-11-03 A | 2025-11-12 A | QTS-5681 | 100% | 2025-10-29 | 2025-11-04 |  | Construction | Mechanical | IGMP |  |  | FOH | Level 1 |  | BAB | 2023-01-12 | 2023-01-10 | 01ADMIN | Phase 1 |  |
| QTS-1261 |  | Restrooms #0157 // Layout | 1d | 2025-11-13 A | 2025-11-13 A | QTS-3661, QTS-26011 | 100% | 2025-11-10 | 2025-11-10 |  | Construction | Build Out | IGMP |  |  | FOH | Level 1 | Doug Hayes | BAB | 2023-01-05 | 2023-01-05 | 01ADMIN | Phase 1 |  |
| QTS-2281 |  | Restrooms #0157 // Frame Walls | 2d | 2025-11-13 A | 2025-11-14 A | QTS-1261 SS | 100% | 2025-11-10 | 2025-11-11 |  | Construction | Build Out | IGMP |  |  | FOH | Level 1 | Doug Hayes | BAB | 2023-01-09 | 2023-01-06 | 01ADMIN | Phase 1 |  |
| QTS-2581 |  | Restrooms #0157 // Rough Overhead Mechanical | 5d | 2025-11-17 A | 2026-01-14 A | QTS-2281 | 100% | 2025-11-12 | 2025-11-17 | QTS-PHX3 DC1 - 6 day w/ Holidays | Construction | Mechanical | IGMP |  |  | FOH | Level 1 |  | BAB | 2023-01-26 | 2023-01-23 | 01ADMIN | Phase 1 | 1/13/26: Not started in area. |
| QTS-2591 |  | Restrooms #0157 // Rough In-Wall Plumbing | 5d | 2025-11-17 A | 2025-11-21 A | QTS-2281 | 100% | 2025-11-12 | 2025-11-18 |  | Construction | Mechanical | IGMP |  |  | FOH | Level 1 |  | BAB | 2023-01-13 | 2023-01-11 | 01ADMIN | Phase 1 |  |
| QTS-10951 |  | Restrooms #0157 // Rough In-Wall Electrical, Security, & Access Controls | 2d | 2026-01-14 A | 2026-01-16 A | QTS-2581, QTS-2281, QTS-9871 | 100% | 2026-01-14 | 2026-01-15 | QTS-PHX3 DC1 - 6 day w/ Holidays | Construction | Electrical | IGMP |  |  | FOH | Level 1 |  | BAB | 2023-01-12 | 2023-01-10 | 01ADMIN | Phase 1 |  |
| QTS-3681 |  | Restrooms #0157 // Install Backing for Restroom Specialties/Inwall Brackets | 1d | 2026-01-26 A | 2026-02-02 A | QTS-2581, QTS-2591 | 100% | 2026-01-26 | 2026-01-26 | QTS-PHX3 DC1 - 6 day w/ Holidays | Construction | Build Out | IGMP |  |  | FOH | Level 1 |  | BAB | 2023-02-27 | 2023-02-27 | 01ADMIN | Phase 1 |  |
| QTS-11461 |  | Restrooms #0157 // In Wall Inspection | 1d | 2026-01-30 A | 2026-01-30 A | QTS-10951, QTS-2591 | 100% |  |  | QTS-PHX3 DC1 - 6 day w/ Holidays | Construction | Mechanical | IGMP |  |  | FOH | Level 1 |  | BAB | 2023-01-17 | 2023-01-17 | 01ADMIN | Phase 1 | 1/20/26: Electrical is done. Plumbing is not. |
| QTS-1002940 |  | Restrooms #0157 // Complete Top Out | 2d | 2026-02-10 A | 2026-02-12 A | QTS-2281 | 100% | 2026-02-13 | 2026-02-14 | QTS-PHX3 DC1 - 6 day w/ Holidays | Construction | Build Out | IGMP | Phase 1 | Construction | FOH | Level 1 |  | BAB | 2023-01-09 | 2023-01-06 | 01ADMIN |  |  |
| QTS-11731 |  | Restrooms #0157 // Insulate Walls | 1d | 2026-02-10 A | 2026-02-18 A | QTS-3681, QTS-11461 | 100% | 2026-02-16 | 2026-02-16 | QTS-PHX3 DC1 - 6 day w/ Holidays | Construction | Build Out | IGMP |  |  | FOH | Level 1 |  | BAB | 2023-02-24 | 2023-02-24 | 01ADMIN | Phase 1 |  |
| QTS-44901 |  | Restrooms #0157 // Frame Hard Lids | 1d | 2026-02-10 A | 2026-02-11 A | QTS-10951 | 100% | 2026-02-13 | 2026-02-13 | QTS-PHX3 DC1 - 6 day w/ Holidays | Construction | Build Out | IGMP | Phase 1 | Construction | FOH | Level 1 |  | BAB | 2023-01-09 | 2023-01-06 | 01ADMIN |  |  |
| QTS-11881 |  | Restrooms #0157 // Hang Drywall Walls | 1d | 2026-02-11 A | 2026-02-18 A | QTS-11461, QTS-11731 FF, QTS-5681 | 100% | 2026-02-17 | 2026-02-17 | QTS-PHX3 DC1 - 6 day w/ Holidays | Construction | Build Out | IGMP |  |  | FOH | Level 1 |  | BAB | 2023-03-01 | 2023-02-28 | 01ADMIN | Phase 1 |  |
| QTS-3671 |  | Restrooms #0157 // Rough Overhead Electrical/ Light Fixtures Install | 2d | 2026-02-17 A | 2026-03-03 A | QTS-2281, QTS-2581, QTS-1002940 | 100% | 2026-02-17 | 2026-02-18 | QTS-PHX3 DC1 - 6 day w/ Holidays | Construction | Electrical | IGMP |  |  | FOH | Level 1 |  | BAB | 2023-03-08 | 2023-03-07 | 01ADMIN | Phase 1 |  |
| QTS-1007190 |  | Restrooms #0157 // Install Fire Alarm | 3d | 2026-03-09 A | 2026-03-13 A | QTS-1002940 | 100% | 2026-02-23 | 2026-02-25 | QTS-PHX3 DC1 - 6 day w/ Holidays | Construction | Electrical | IGMP |  |  | FOH | Level 1 |  | BAB | 2023-03-09 | 2023-03-09 | 01ADMIN | Phase 1 |  |
| QTS-6071 |  | Restrooms #0157 // Above Ceiling Inspection | 1d | 2026-03-13 A | 2026-03-13 A | QTS-3671 SS, QTS-5681, QTS-44901, QTS-1007190 | 100% |  |  | QTS-PHX3 DC1 - 6 day w/ Holidays | Construction | Mechanical | IGMP |  |  | FOH | Level 1 |  | BAB | 2023-03-09 | 2023-03-09 | 01ADMIN | Phase 1 |  |
| QTS-11891 |  | Restrooms #0157 // Hang Drywall on Hard Lids | 1d | 2026-04-08 A | 2026-04-08 A | QTS-44901, QTS-6071, QTS-11881 FF | 100% |  |  | QTS-PHX3 DC1 - 6 day w/ Holidays | Construction | Build Out | IGMP |  |  | FOH | Level 1 |  | BAB | 2023-03-13 | 2023-03-10 | 01ADMIN | Phase 1 |  |
| QTS-12081 |  | Restrooms #0157 // Tape & Finish Hard Lids | 3d | 2026-04-14 A | 2026-04-28 A | QTS-11891, QTS-11881 | 100% | 2026-04-14 | 2026-04-16 | QTS-PHX3 DC1 - 6 day w/ Holidays | Construction | Build Out | IGMP |  |  | FOH | Level 1 |  | BAB | 2023-03-20 | 2023-03-14 | 01ADMIN | Phase 1 |  |
| QTS-12631 |  | Restrooms #0157 // Prime & Paint | 1d | 2026-04-23 A | 2026-04-23 A | QTS-12081 | 100% |  |  | QTS-PHX3 DC1 - 6 day w/ Holidays | Construction | Build Out | IGMP |  |  | FOH | Level 1 |  | BAB | 2023-04-12 | 2023-04-11 |  | Phase 1 |  |
| QTS-12781 |  | Restrooms #0157 // Install FRP | 4d | 2026-04-25 A | 2026-05-19 A | QTS-12631, QTS-12081, QTS-1005290 | 100% | 2026-04-25 | 2026-04-29 | QTS-PHX3 DC1 - 6 day w/ Holidays | Construction | Build Out | IGMP |  |  | FOH | Level 1 | Ed Carter | BAB | 2023-04-10 | 2023-04-06 |  | Phase 1 |  |
| QTS-14881 |  | Restrooms #0157 // Install Mechanical Trim | 3d | 2026-04-28 A | 2026-04-28 A | QTS-12631 | 100% | 2026-04-28 | 2026-04-30 | QTS-PHX3 DC1 - 6 day w/ Holidays | Construction | Mechanical | IGMP |  |  | FOH | Level 1 |  | BAB | 2023-04-14 | 2023-04-13 |  | Phase 1 | 4/14: Drywall needs to be finished. |
| QTS-15691 |  | Restrooms #0157 // Set Doors & Hardware | 1d | 2026-05-13 A | 2026-05-13 A | QTS-99640, QTS-99650, QTS-14881 | 100% |  |  | QTS-PHX3 DC1 - 6 day w/ Holidays | Construction | Build Out | IGMP |  |  | FOH | Level 1 | Ed Carter | BAB | 2023-04-21 | 2023-04-20 |  | Phase 1 |  |
| QTS-14411 |  | Restrooms #0157 // Electrical Trim | 1d | 2026-05-20 A | 2026-05-20 A | QTS-12631, QTS-12781 | 100% |  |  | QTS-PHX3 DC1 - 6 day w/ Holidays | Construction | Electrical | IGMP |  |  | FOH | Level 1 |  | BAB | 2023-04-14 | 2023-04-13 |  | Phase 1 |  |
| QTS-1012150 |  | Restrooms #0157 // Install Floor Tile | 2d | 2026-05-27 A | 2026-06-02 A | QTS-12781 | 100% | 2026-05-27 | 2026-05-28 | QTS-PHX3 DC1 - 6 day w/ Holidays | Construction | Build Out | IGMP |  |  | FOH | Level 1 | Ed Carter | BAB | 2023-04-10 | 2023-04-06 |  | Phase 1 |  |
| QTS-15361 |  | Restrooms #0157 // Install Restroom Specialties / ADA Trim | 1d | 2026-06-27 A | 2026-06-27 A | QTS-14401, QTS-14411 | 100% | 2026-07-01 | 2026-07-01 | QTS-PHX3 DC1 - 6 day w/ Holidays | Construction | Build Out | IGMP |  |  | FOH | Level 1 | Ed Carter | BAB | 2023-04-21 | 2023-04-20 |  | Phase 1 |  |
| QTS-14401 |  | Restrooms #0157 // Plumbing Fixtures Install | 1d | 2026-06-29 A | 2026-06-30 A | QTS-12631, QTS-12781, QTS-1012150, QTS-16751 | 100% | 2026-06-26 | 2026-06-26 | QTS-PHX3 DC1 - 6 day w/ Holidays | Construction | Mechanical | IGMP |  |  | FOH | Level 1 | Mechanical | BAB | 2023-04-14 | 2023-04-13 |  | Phase 1 |  |
| QTS-16451 |  | Restrooms #0157 // Set Sink | 1d | 2026-06-29 A | 2026-06-30 A | QTS-12781, QTS-14411 | 100% | 2026-06-25 | 2026-06-25 | QTS-PHX3 DC1 - 6 day w/ Holidays | Construction | Mechanical | IGMP |  |  | FOH | Level 1 | Mechanical | BAB |  |  |  | Phase 1 |  |
| QTS-16751 |  | Restrooms #0157 // Install Plumbing Trim at Sink | 1d | 2026-06-29 A | 2026-06-30 A | QTS-16451 SS, QTS-16451 FF | 100% | 2026-06-25 | 2026-06-25 | QTS-PHX3 DC1 - 6 day w/ Holidays | Construction | Mechanical | IGMP |  |  | FOH | Level 1 | Mechanical | BAB |  |  |  | Phase 1 |  |

Notes:
- QTS-3661: allucent_notes_20251118_192630: Luis Vea on 2025-10-14 10:10: BZI needs to complete their scope to get walls up. for elevator and stairs / Luis Vea on 2025-10-20T18:46:23.065Z: walls need to be framed, manpower got pulled for fan walls and early access rooms / David Wiltberger on 2025-10-21 13:10: Changed schedule to address early access / Jason Johnston on 2025-11-03 14:11: Starting on it today after PCI made opening for them. / Luis Vea on 2025-11-10 11:11: Bel air is completing line sets for priority rooms / Jason Johnston on 2025-11-11 15:11: Push until after early access / allucent_notes_20251111_182405: Luis Vea on 2025-10-14 10:10: BZI needs to complete their scope to get walls up. for elevator and stairs / Luis Vea on 2025-10-20T18:46:23.065Z: walls need to be framed, manpower got pulled for fan walls and early access rooms / David Wiltberger on 2025-10-21 13:10: Changed schedule to address early access / Jason Johnston on 2025-11-03 14:11: Starting on it today after PCI made opening for them. / Luis Vea on 2025-11-10 11:11: Bel air is completing line sets for priority rooms / Jason Johnston on 2025-11-11 15:11: Push until after early access / allucent_notes_20251104_160200: Luis Vea on 2025-10-14 10:10: BZI needs to complete their scope to get walls up. for elevator and stairs / Luis Vea on 2025-10-20T18:46:23.065Z: walls need to be framed, manpower got pulled for fan walls and early access rooms / David Wiltberger on 2025-10-21 13:10: Changed schedule to address early access / Jason Johnston on 2025-11-03 14:11: Starting on it today after PCI made opening for them. / allucent_notes_20251028_163138: Luis Vea on 2025-10-14 10:10: BZI needs to complete their scope to get walls up. for elevator and stairs / Luis Vea on 2025-10-20T18:46:23.065Z: walls need to be framed, manpower got pulled for fan walls and early access rooms / David Wiltberger on 2025-10-21 13:10: Changed schedule to address early access / allucent_notes_20251027_224008: Luis Vea on 2025-10-14 10:10: BZI needs to complete their scope to get walls up. for elevator and stairs / Luis Vea on 2025-10-20T18:46:23.065Z: walls need to be framed, manpower got pulled for fan walls and early access rooms / David Wiltberger on 2025-10-21 13:10: Changed schedule to address early access / allucent_notes_20251021_145627: Luis Vea on 2025-10-14 10:10: BZI needs to complete their scope to get walls up. for elevator and stairs / Luis Vea on 2025-10-20T18:46:23.065Z: walls need to be framed, manpower got pulled for fan walls and early access rooms / David Wiltberger on 2025-10-21 13:10: Changed schedule to address early access / allucent_notes_20251014_152335: Luis Vea on 2025-10-14 10:10: BZI needs to complete their scope to get walls up. for elevator and stairs / allucent_notes: 2025-10-14 10:10 - User: Luis Vea - Date Added: 2025-10-14 10:10 - Note: BZI needs to complete their scope to get walls up. for elevator and stairs / 2025-10-20T18:46:23.065Z - User: Luis Vea - Date Added: 2025-10-20T18:46:23.065Z - Note: walls need to
- QTS-1261: allucent_notes_20251118_192630: Luis Vea on 2025-10-20T18:46:51.024Z: this got completed on the 10th of oct. / Luis Vea on 2025-11-10 11:11: completed / allucent_notes_20251111_182405: Luis Vea on 2025-10-20T18:46:51.024Z: this got completed on the 10th of oct. / Luis Vea on 2025-11-10 11:11: completed / allucent_notes_20251104_160200: Luis Vea on 2025-10-20T18:46:51.024Z: this got completed on the 10th of oct. / allucent_notes_20251028_163138: Luis Vea on 2025-10-20T18:46:51.024Z: this got completed on the 10th of oct. / allucent_notes_20251027_224008: Luis Vea on 2025-10-20T18:46:51.024Z: this got completed on the 10th of oct. / allucent_notes_20251021_145627: Luis Vea on 2025-10-20T18:46:51.024Z: this got completed on the 10th of oct. / allucent_notes: 2025-10-20T18:46:51.024Z - User: Luis Vea - Date Added: 2025-10-20T18:46:51.024Z - Note: this got completed on the 10th of oct. / 2025-11-10 11:11 - User: Luis Vea - Date Added: 2025-11-10 11:11 - Note: completed
- QTS-2281: allucent_notes_20251118_192630: Luis Vea on 2025-10-20T18:47:35.846Z: bottom and top track got installed on monday the 13th / allucent_notes_20251111_182405: Luis Vea on 2025-10-20T18:47:35.846Z: bottom and top track got installed on monday the 13th / allucent_notes_20251104_160200: Luis Vea on 2025-10-20T18:47:35.846Z: bottom and top track got installed on monday the 13th / allucent_notes_20251028_163138: Luis Vea on 2025-10-20T18:47:35.846Z: bottom and top track got installed on monday the 13th / allucent_notes_20251027_224008: Luis Vea on 2025-10-20T18:47:35.846Z: bottom and top track got installed on monday the 13th / allucent_notes_20251021_145627: Luis Vea on 2025-10-20T18:47:35.846Z: bottom and top track got installed on monday the 13th / allucent_notes: 2025-10-20T18:47:35.846Z - User: Luis Vea - Date Added: 2025-10-20T18:47:35.846Z - Note: bottom and top track got installed on monday the 13th
- QTS-2581: allucent_notes_20251216_165335: Luis Vea on 2025-11-10 11:11: focusing on priority rooms and early access / David Wiltberger on 2025-12-02 06:20: Chage of scope for TFO impacting the finish / allucent_notes_20251209_203830: Luis Vea on 2025-11-10 11:11: focusing on priority rooms and early access / David Wiltberger on 2025-12-02 06:20: Chage of scope for TFO impacting the finish / allucent_notes_20251202_153722: Luis Vea on 2025-11-10 11:11: focusing on priority rooms and early access / David Wiltberger on 2025-12-02 06:20: Chage of scope for TFO impacting the finish / allucent_notes_20251118_192630: Luis Vea on 2025-11-10 11:11: focusing on priority rooms and early access / allucent_notes_20251111_182405: Luis Vea on 2025-11-10 11:11: focusing on priority rooms and early access / allucent_notes_20251230_164549: Luis Vea on 2025-11-10 11:11: focusing on priority rooms and early access / David Wiltberger on 2025-12-02 06:20: Chage of scope for TFO impacting the finish / Scheduler Notes: Luis Vea on 2025-11-10 11:11: focusing on priority rooms and early access / David Wiltberger on 2025-12-02 06:20: Chage of scope for TFO impacting the / finish / 1/13/26: Not started in area. / allucent_notes: 2025-11-10 11:11 - User: Luis Vea - Date Added: 2025-11-10 11:11 - Note: focusing on priority rooms and early access / 2025-12-02 06:20 - User: David Wiltberger - Date Added: 2025-12-02 06:20 - Note: Chage of scope for TFO impacting the finish
- QTS-2591: allucent_notes_20251202_153722: Luis Vea on 2025-11-10 11:11: fouscing on priority room and early access / allucent_notes_20251118_192630: Luis Vea on 2025-11-10 11:11: fouscing on priority room and early access / allucent_notes_20251111_182405: Luis Vea on 2025-11-10 11:11: fouscing on priority room and early access / allucent_notes: 2025-11-10 11:11 - User: Luis Vea - Date Added: 2025-11-10 11:11 - Note: fouscing on priority room and early access
- QTS-10951: allucent_notes_20251209_203830: Luis Vea on 2025-11-10 11:11: fousing on priority rooms for completing and early access / Jason Johnston on 2025-11-19T02:22:46.029Z: undo / Jason Johnston on 2025-11-19T02:22:47.717Z: null / allucent_notes_20251118_192630: Luis Vea on 2025-11-10 11:11: fousing on priority rooms for completing and early access / Jason Johnston on 2025-11-19T02:22:46.029Z: undo / Jason Johnston on 2025-11-19T02:22:47.717Z: null / allucent_notes_20251111_182405: Luis Vea on 2025-11-10 11:11: fousing on priority rooms for completing and early access / allucent_notes: 2025-11-10 11:11 - User: Luis Vea - Date Added: 2025-11-10 11:11 - Note: fousing on priority rooms for completing and early access / 2025-11-19T02:22:46.029Z - User: Jason Johnston - Date Added: 2025-11-19T02:22:46.029Z - Note: undo / 2025-11-19T02:22:4
- QTS-3681: allucent_notes_20251209_203830: Jake Shimmin on 2025-12-01T18:00:57.109Z: will start when green mile is finished / Jake Shimmin on 2025-12-01T18:11:58.875Z: null / Sean Waisner on 2025-12-02 15:24: Re-sequencing for priority / allucent_notes_20251202_153722: Jake Shimmin on 2025-12-01T18:00:57.109Z: will start when green mile is finished / Jake Shimmin on 2025-12-01T18:11:58.875Z: null / Sean Waisner on 2025-12-02 15:24: Re-sequencing for priority / allucent_notes: 2025-12-01T18:00:57.109Z - User: Jake Shimmin - Date Added: 2025-12-01T18:00:57.109Z - Note: will start when green mile is finished / 2025-12-01T18:11:58.875Z - User: Jake Shimmin - Date Added: 2025-12-01T18:11:58.875Z - Note: null / 2025-12-02 15:24
- QTS-11461: Scheduler Notes: 1/20/26: Electrical is done. Plumbing is not.
- QTS-14881: Scheduler Notes: 4/14: Drywall needs to be finished.

| ID | WBS | Activity | Duration | Start | Finish | Predecessors | Complete | Planned start | Planned finish | Calendar | Last Period Finish | Last Period Start | Project Section | Phase-1 | Layton Discipline | Baseline | Location | Level | Contract | If Not Started or Finished Why? | Fragnet | Fragnet Responsible Party | Layton Super |
| --- | --- | --- | --- | --- | --- | --- | --- | --- | --- | --- | --- | --- | --- | --- | --- | --- | --- | --- | --- | --- | --- | --- | --- |
|  | 2 | **L1 / FOH // Loading Dock** |  | 2026-02-11 | 2026-05-08 |  |  |  |  |  |  |  |  |  |  |  |  |  |  |  |  |  |  |
| QTS-1004570 |  | Loading Dock, Trash Room, Storage #0160 #0161 #0162 // Install Framing | 2d | 2026-02-11 A | 2026-02-12 A | QTS-1371 SS | 100% |  |  | QTS-PHX3 DC1 - 6 day w/ Holidays | 2023-04-21 | 2023-04-20 | Construction | Phase 1 | Build Out | IGMP | FOH | Level 1 | BAB |  |  |  |  |
| QTS-1004650 |  | Loading Dock, Trash Room, Storage #0160 #0161 #0162 // Rough In Wall Electrical | 4d | 2026-02-13 A | 2026-02-27 A | QTS-1004570 | 100% | 2026-02-13 | 2026-02-17 | QTS-PHX3 DC1 - 6 day w/ Holidays | 2023-04-21 | 2023-04-20 | Construction | Phase 1 | Electrical | IGMP | FOH | Level 1 | BAB |  |  |  |  |
| QTS-1004610 |  | Loading Dock, Trash Room, Storage #0160 #0161 #0162 // Insulate Walls | 1d | 2026-02-23 A | 2026-03-06 A | QTS-1004570, QTS-1004650 SS | 100% | 2026-02-23 | 2026-02-23 | QTS-PHX3 DC1 - 6 day w/ Holidays | 2023-04-21 | 2023-04-20 | Construction | Phase 1 | Build Out | IGMP | FOH | Level 1 | BAB |  |  |  |  |
| QTS-1004580 |  | Loading Dock, Trash Room, Storage #0160 #0161 #0162 // Hang Drywall | 3d | 2026-02-24 A | 2026-03-10 A | QTS-1004610 FF | 100% | 2026-02-24 | 2026-02-26 | QTS-PHX3 DC1 - 6 day w/ Holidays | 2023-04-21 | 2023-04-20 | Construction | Phase 1 | Build Out | IGMP | FOH | Level 1 | BAB |  |  |  |  |
| QTS-1004590 |  | Loading Dock, Trash Room, Storage #0160 #0161 #0162 // Tape & Finish Drywall | 7d | 2026-03-12 A | 2026-03-21 A | QTS-1004580 | 100% | 2026-03-12 | 2026-03-19 | QTS-PHX3 DC1 - 6 day w/ Holidays | 2023-04-21 | 2023-04-20 | Construction | Phase 1 | Build Out | IGMP | FOH | Level 1 | BAB |  |  |  |  |
| QTS-1004600 |  | Loading Dock, Trash Room, Storage #0160 #0161 #0162 // Paint Drywall | 4d | 2026-03-23 A | 2026-03-28 A | QTS-1004590 | 100% | 2026-03-23 | 2026-03-26 | QTS-PHX3 DC1 - 6 day w/ Holidays | 2023-04-21 | 2023-04-20 | Construction | Phase 1 | Build Out | IGMP | FOH | Level 1 | BAB |  |  |  |  |
| QTS-1004620 |  | Loading Dock, Trash Room, Storage #0160 #0161 #0162 // Install OH Electrical | 5d | 2026-04-01 A | 2026-05-08 A | QTS-1004600 | 100% | 2026-04-01 | 2026-04-06 | QTS-PHX3 DC1 - 6 day w/ Holidays | 2023-04-21 | 2023-04-20 | Construction | Phase 1 | Electrical | IGMP | FOH | Level 1 | BAB | 4/10/26 Temporary Completion Date |  |  |  |
| QTS-1009800 |  | Fragnet / Loading Dock, Trash Room, Storage #0160 #0161 #0162 // Correct Supports and Dry Wall | 4d | 2026-04-01 A | 2026-04-22 A | QTS-1371 SS | 100% | 2026-04-20 | 2026-04-23 | QTS-PHX3 DC1 - 6 day w/ Holidays | 2023-04-21 | 2023-04-20 | Construction | Phase 1 | Mechanical | IGMP | FOH | Level 1 | BAB |  | Fragnet | Bel-Aire Mechanical. LLC |  |
| QTS-1004630 |  | Loading Dock, Trash Room, Storage #0160 #0161 #0162 // Install OH Mechanical | 4d | 2026-04-13 A | 2026-04-20 A | QTS-1004620 SS | 100% | 2026-04-13 | 2026-04-16 | QTS-PHX3 DC1 - 6 day w/ Holidays | 2023-04-21 | 2023-04-20 | Construction | Phase 1 | Mechanical | IGMP | FOH | Level 1 | BAB |  |  |  |  |
| QTS-1009810 |  | Fragnet / Loading Dock, Trash Room, Storage #0160 #0161 #0162 // Install OH Door (Trash Room) | 4d | 2026-04-30 A | 2026-05-04 A | QTS-1009800 | 100% |  |  | QTS-PHX3 DC1 - 6 day w/ Holidays | 2023-04-21 | 2023-04-20 | Construction | Phase 1 | Mechanical | IGMP | FOH | Level 1 | BAB |  | Fragnet | Bel-Aire Mechanical. LLC |  |
|  | 3 | **L1 / FOH // Security Room #0150** |  | 2026-02-17 | 2026-07-17 |  |  |  |  |  |  |  |  |  |  |  |  |  |  |  |  |  |  |
| QTS-1004690 |  | Security Room #0150 // Install OH Electrical | 3d | 2026-02-17 A | 2026-03-20 A | QTS-1371 SS | 100% | 2026-02-17 | 2026-02-19 | QTS-PHX3 DC1 - 6 day w/ Holidays | 2023-04-21 | 2023-04-20 | Construction | Phase 1 | Electrical | IGMP | FOH | Level 1 | BAB |  |  |  |  |
| QTS-1004660 |  | Security Room #0150 // Hang Drywall | 1d | 2026-02-23 A | 2026-02-23 A | QTS-1371 SS | 100% |  |  | QTS-PHX3 DC1 - 6 day w/ Holidays | 2023-04-21 | 2023-04-20 | Construction | Phase 1 | Build Out | IGMP | FOH | Level 1 | BAB |  |  |  |  |
| QTS-1004670 |  | Security Room #0150 // Tape & Finish Drywall | 7d | 2026-02-24 A | 2026-03-23 A | QTS-1004660 | 100% | 2026-02-24 | 2026-03-03 | QTS-PHX3 DC1 - 6 day w/ Holidays | 2023-04-21 | 2023-04-20 | Construction | Phase 1 | Build Out | IGMP | FOH | Level 1 | BAB |  |  |  |  |
| QTS-1004680 |  | Security Room #0150 // Paint Drywall | 2d | 2026-03-24 A | 2026-03-25 A | QTS-1004670 | 100% |  |  | QTS-PHX3 DC1 - 6 day w/ Holidays | 2023-04-21 | 2023-04-20 | Construction | Phase 1 | Build Out | IGMP | FOH | Level 1 | BAB |  |  |  |  |
| QTS-1004700 |  | Security Room #0150 // Install OH Mechanical | 4d | 2026-04-08 A | 2026-04-13 A | QTS-1004690, QTS-1004680 | 100% | 2026-04-08 | 2026-04-11 | QTS-PHX3 DC1 - 6 day w/ Holidays | 2023-04-21 | 2023-04-20 | Construction | Phase 1 | Mechanical | IGMP | FOH | Level 1 | BAB |  |  |  |  |
| QTS-1009830 |  | Security Room #0150 // Install Ceiling Grid | 4d | 2026-04-13 A | 2026-04-13 A | QTS-1004700 | 100% | 2026-04-13 | 2026-04-16 | QTS-PHX3 DC1 - 6 day w/ Holidays | 2023-04-21 | 2023-04-20 | Construction | Phase 1 | Build Out | IGMP | FOH | Level 1 | BAB |  |  |  |  |
| QTS-1009850 |  | Security Room #0150 // Install Ceiling Tiles | 4d | 2026-04-14 A | 2026-04-16 A | QTS-1009830 | 100% | 2026-04-14 | 2026-04-17 | QTS-PHX3 DC1 - 6 day w/ Holidays | 2023-04-21 | 2023-04-20 | Construction | Phase 1 | Build Out | IGMP | FOH | Level 1 | BAB |  |  |  |  |
| QTS-1009840 |  | Security Room #0150 // Install Mechanical Drops | 3d | 2026-04-17 A | 2026-04-20 A | QTS-1009830, QTS-1009850 | 100% |  |  | QTS-PHX3 DC1 - 6 day w/ Holidays | 2023-04-21 | 2023-04-20 | Construction | Phase 1 | Build Out | IGMP | FOH | Level 1 | BAB |  |  |  |  |
| QTS-1009820 |  | Security Room #0150 // Install Lighting | 3d | 2026-04-20 A | 2026-04-21 A | QTS-1009830, QTS-1009850 | 100% | 2026-04-24 | 2026-04-27 | QTS-PHX3 DC1 - 6 day w/ Holidays | 2023-04-21 | 2023-04-20 | Construction | Phase 1 | Build Out | IGMP | FOH | Level 1 | BAB |  |  |  |  |
| QTS-1004720 |  | Security Room #0150 // Install Mill Work | 6d | 2026-05-05 A | 2026-06-12 A | QTS-1004700, QTS-50681, QTS-25181, QTS-1009850, QTS-1009820, QTS-1009840 | 100% | 2026-05-05 | 2026-05-12 |  | 2023-04-21 | 2023-04-20 | Construction | Phase 1 | Build Out | IGMP | FOH | Level 1 | BAB |  |  |  | Ed Carter |
| QTS-1011560 |  | Security Room #0150 // Fire Panels Turning On | 6d | 2026-05-05 A | 2026-05-06 A | QTS-1009850 | 100% | 2026-05-05 | 2026-05-11 | QTS-PHX3 DC1 - 6 day w/ Holidays | 2023-04-21 | 2023-04-20 | Construction | Phase 1 | Build Out | IGMP | FOH | Level 1 | BAB |  |  |  | Jay Perkins |
| QTS-1012110 |  | Security Room #0150 // Install Doors | 4d | 2026-05-11 A | 2026-05-14 A | QTS-16151 | 100% |  |  | QTS-PHX3 DC1 - 6 day w/ Holidays | 2023-04-21 | 2023-04-20 | Construction | Phase 1 | Build Out | IGMP | FOH | Level 1 | BAB |  |  |  | Jay Perkins |
| QTS-1004730 |  | Security Room #0150 // Install Flooring | 4d | 2026-05-12 A | 2026-05-14 A | QTS-1012110 | 100% | 2026-06-12 | 2026-06-16 | QTS-PHX3 DC1 - 6 day w/ Holidays | 2023-04-21 | 2023-04-20 | Construction | Phase 1 | Build Out | IGMP | FOH | Level 1 | BAB |  |  |  | Jay Perkins |
| QTS-1011550 |  | Security Room #0150 // Install Stops | 4d | 2026-05-15 A | 2026-05-26 A | QTS-1009850 | 100% | 2026-06-12 | 2026-06-16 | QTS-PHX3 DC1 - 6 day w/ Holidays | 2023-04-21 | 2023-04-20 | Construction | Phase 1 | Build Out | IGMP | FOH | Level 1 | BAB |  |  |  | Jay Perkins |
| QTS-1004710 |  | Security Room #0150 // Install Security (SOC) Window | 2d | 2026-05-18 A | 2026-05-19 A | QTS-1011560, QTS-1004730 | 100% | 2026-05-19 | 2026-05-20 | QTS-PHX3 DC1 - 6 day w/ Holidays | 2023-04-21 | 2023-04-20 | Construction | Phase 1 | Build Out | IGMP | FOH | Level 1 | BAB |  |  |  | Jay Perkins |
| QTS-1011570 |  | Security Room #0150 // Fire Panels Testing | 6d | 2026-05-26 A | 2026-06-02 A | QTS-1011560 | 100% | 2026-05-07 | 2026-05-13 | QTS-PHX3 DC1 - 6 day w/ Holidays | 2023-04-21 | 2023-04-20 | Construction | Phase 1 | Build Out | IGMP | FOH | Level 1 | BAB |  |  |  | Jay Perkins |
| QTS-1012440 |  | Security Room #0150 // Install Flooring | 5d | 2026-07-08 A | 2026-07-09 A | QTS-1012110, QTS-1011570, QTS-1004720 | 100% | 2026-07-15 | 2026-07-21 |  | 2023-04-21 | 2023-04-20 | Construction | Phase 1 | Build Out | IGMP | FOH | Level 1 | BAB |  |  |  | Ben Ribble |
| QTS-0200 |  | FOH / Security 150 / Install Countertop | 2d | 2026-07-15 A | 2026-07-16 A | QTS-1004720 | 100% |  |  | **GLOBAL - 6 Day Workweek w/ Basic Holidays |  |  |  |  | Build Out |  |  |  | BAB |  |  |  | Ed Carter |
| QTS-0210 |  | FOH / Security 150 / Install Finish Flooring | 1d | 2026-07-17 A | 2026-07-17 A | QTS-0200 | 100% |  |  | **GLOBAL - 6 Day Workweek w/ Basic Holidays |  |  |  |  | Build Out |  |  |  | BAB |  |  |  | Ben Ribble |

Notes:
- QTS-1004620: Scheduler Notes: 4/24: REI to run power to OH roll up doors. 4/10: 75% / complete. Need conduit complete / Notes: 4/24: REI to run power to OH roll up doors. 4/10: 75% complete. Need conduit complete
- QTS-1009800: Scheduler Notes: Correct Supports and Dry Wall

| ID | WBS | Activity | Duration | Start | Finish | Predecessors | Complete | Planned start | Planned finish | Calendar | Last Period Finish | Last Period Start | Project Section | Phase-1 | Layton Discipline | Baseline | Location | Level | Layton Super | Contract | Allucent CSI Group | Project Section-1 | Notes | Phase-1-1 |
| --- | --- | --- | --- | --- | --- | --- | --- | --- | --- | --- | --- | --- | --- | --- | --- | --- | --- | --- | --- | --- | --- | --- | --- | --- |
|  | 4 | **L1 / FOH // Elevator Machine Room #0156** |  | 2026-04-24 | 2026-04-29 |  |  |  |  |  |  |  |  |  |  |  |  |  |  |  |  |  |  |  |
| QTS-1011730 |  | Elevator Machine Room #0158 // Install Raceway - Surface Mount Conduit | 4d | 2026-04-24 A | 2026-04-28 A | QTS-1371 | 100% |  |  | QTS-PHX3 DC1 - 6 day w/ Holidays | 2023-04-21 | 2023-04-20 | Construction | Phase 1 | Build Out | IGMP | FOH | Level 1 | Jay Perkins | BAB |  |  |  |  |
| QTS-1011740 |  | Elevator Machine Room #0158 // Install Raceway - Fire Alarm | 1d | 2026-04-29 A | 2026-04-29 A | QTS-1011730 | 100% |  |  | QTS-PHX3 DC1 - 6 day w/ Holidays | 2023-04-21 | 2023-04-20 | Construction | Phase 1 | Build Out | IGMP | FOH | Level 1 | Jay Perkins | BAB |  |  |  |  |
|  | 3 | **Level 2 Front of House Segment A (Gridlines A-P)** |  | 2025-08-04 | 2026-07-20 |  |  |  |  |  |  |  |  |  |  |  |  |  |  |  |  |  |  |  |
|  | 2 | **L2 / FOH // Tenant Improvement** |  | 2025-08-07 | 2026-03-27 |  |  |  |  |  |  |  |  |  |  |  |  |  |  |  |  |  |  |  |
| QTS-46991 |  | TI Area A // Prime & Paint Exposed Structure | 5d | 2025-08-07 A | 2025-08-11 A | QTS-47001 FF, QTS-19841, QTS-46941 | 100% | 2025-08-07 | 2025-08-13 |  |  |  | Construction | Phase 1 | Build Out | IGMP | FOH | Level 2 | Doug Hayes | BAB | 01ADMIN | Construction |  |  |
| QTS-26031 |  | TI Area A // Rough Overhead Fire Sprinkler | 10d | 2025-08-12 A | 2025-08-26 A | QTS-46991, QTS-46941, QTS-19841 | 100% | 2025-08-12 | 2025-08-25 |  |  |  | Construction | Phase 1 | Mechanical | IGMP | FOH | Level 2 |  | BAB | 01ADMIN |  |  |  |
| QTS-25441 |  | TI Area A // Layout Walls | 3d | 2025-08-22 A | 2025-08-22 A | QTS-26031 FF | 100% | 2025-08-22 | 2025-08-26 |  |  |  | Construction | Phase 1 | Build Out | IGMP | FOH | Level 2 | Doug Hayes | BAB | 01ADMIN |  |  |  |
| QTS-25741 |  | TI Area A // Frame Priority Walls/ Top Out Inside of Walls | 6d | 2025-08-25 A | 2025-09-09 A | QTS-M3000 SS, QTS-25441 | 100% | 2025-08-27 | 2025-09-04 |  |  |  | Construction | Phase 1 | Build Out | IGMP | FOH | Level 2 | Doug Hayes | BAB | 01ADMIN |  |  |  |
| QTS-26021 |  | TI Area A // Rough In-Wall Electrical, Security, & Access Controls | 8d | 2025-09-24 A | 2025-10-31 A | QTS-25741, QTS-9871 | 100% | 2025-09-24 | 2025-10-03 |  |  |  | Construction | Phase 1 | Electrical | IGMP | FOH | Level 2 |  | BAB | 01ADMIN |  |  |  |
| QTS-26941 |  | TI Area A // Insulate Walls | 5d | 2025-10-28 A | 2025-10-31 A | QTS-26851 | 100% | 2025-10-28 | 2025-11-03 |  |  |  | Construction | Phase 1 | Build Out | IGMP | FOH | Level 2 | Doug Hayes | BAB | 01ADMIN |  |  |  |
| QTS-26041 |  | TI Area A // Rough Overhead Electrical | 10d | 2025-10-31 A | 2025-11-13 A | QTS-25741 | 100% |  |  |  |  |  | Construction | Phase 1 | Electrical | IGMP | FOH | Level 2 |  | BAB | 01ADMIN |  |  |  |
| QTS-26851 |  | TI Area A // MEP In Wall Inspection | 1d | 2025-11-03 A | 2025-11-03 A | QTS-25741, QTS-26021 | 100% | 2025-10-31 | 2025-10-31 |  |  |  | Construction | Phase 1 | Mechanical | IGMP | FOH | Level 2 |  | BAB | 01ADMIN |  |  |  |
| QTS-27721 |  | TI Area A // Hang Drywall (Early Access) | 10d | 2025-11-03 A | 2025-11-14 A | QTS-26941, QTS-25741 | 100% | 2025-11-06 | 2025-11-19 |  |  |  | Construction | Phase 1 | Build Out | IGMP | FOH | Level 2 | Doug Hayes | BAB | 01ADMIN |  |  |  |
| QTS-28301 |  | TI Area A // Tape & Finish Drywall | 10d | 2025-11-10 A | 2026-03-27 A | QTS-27721 FF+5d, QTS-27721 SS+5d, QTS-1002950 FF+2d | 100% | 2025-11-10 | 2025-11-20 | QTS-PHX3 DC1 - 6 day w/ Holidays |  |  | Construction | Phase 1 | Build Out | IGMP | FOH | Level 2 |  | BAB | 01ADMIN |  | 1/13/26: Awaiting a door ISEC impact. |  |
| QTS-27121 |  | TI Area A // Rough Overhead Plumbing & Refrigerant Piping | 8d | 2025-11-14 A | 2025-11-25 A | QTS-26041, QTS-25741, QTS-25441 | 100% |  |  |  |  |  | Construction | Phase 1 | Mechanical | IGMP | FOH | Level 2 |  | BAB | 01ADMIN |  |  |  |
| QTS-28541 |  | TI Area A // Rough Overhead Ductwork Gridline A-H | 8d | 2025-12-08 A | 2025-12-17 A | QTS-26941, QTS-28191, QTS-27121 | 100% |  |  |  |  |  | Construction | Phase 1 | Mechanical | IGMP | FOH | Level 2 |  | BAB | 01ADMIN |  |  |  |
| QTS-44851 |  | TI Area A // Pressure Test Plumbing & Refrigerant Lines | 2d | 2025-12-12 A | 2025-12-31 A | QTS-27121 | 100% | 2025-12-12 | 2025-12-15 |  |  |  | Construction |  | Mechanical | IGMP | FOH | Level 2 |  | BAB | 01ADMIN | Construction |  | Phase 1 |
| QTS-29221 |  | TI Area A // Insulate HVAC Ductwork | 10d | 2025-12-18 A | 2026-01-06 A | QTS-28541, QTS-26941 FF, QTS-26941, QTS-28191 FF, QTS-28191, QTS-27121 | 100% | 2025-12-18 | 2026-01-07 |  |  |  | Construction | Phase 1 | Mechanical | IGMP | FOH | Level 2 |  | BAB |  |  |  |  |
| QTS-28191 |  | TI Area A // Insulate Piping & Refrigerant Lines | 3d | 2025-12-29 A | 2026-01-05 A | QTS-44851, QTS-25741, QTS-27121 | 100% | 2025-12-29 | 2025-12-31 |  |  |  | Construction | Phase 1 | Mechanical | IGMP | FOH | Level 2 |  | BAB | 01ADMIN |  |  |  |
| QTS-1002950 |  | TI Area A // Hang Drywall (Remaining) | 2d | 2026-01-14 A | 2026-03-25 A | QTS-27721 | 100% | 2026-01-14 | 2026-01-15 | QTS-PHX3 DC1 - 6 day w/ Holidays |  |  | Construction | Phase 1 | Build Out | IGMP | FOH | Level 2 |  | BAB | 01ADMIN |  | 3/24: Fix columns for lobby handrail |  |
|  | 8 | **L2 / FOH // IDF #0213 (Early Access)** |  | 2025-08-04 | 2025-11-17 |  |  |  |  |  |  |  |  |  |  |  |  |  |  |  |  |  |  |  |
| QTS-44311 |  | IDF Room #0213 // Concrete Seal | 3d | 2025-08-04 A | 2025-08-06 A | QTS-26031 | 100% | 2025-08-27 | 2025-08-29 |  |  |  | Construction |  | Build Out | IGMP | FOH | Level 2 | Doug Hayes | BAB | 01ADMIN | Construction |  | Phase 1 |
| QTS-26801 |  | IDF Room #0213 // Rough Overhead Fire Sprinkler | 2d | 2025-08-28 A | 2025-08-29 A | QTS-26031, QTS-44311 | 100% |  |  |  |  |  | Construction | Phase 1 | Mechanical | IGMP | FOH | Level 2 |  | BAB | 01ADMIN |  |  |  |
| QTS-26491 |  | IDF Room #0213 // Frame Walls | 2d | 2025-09-08 A | 2025-09-11 A | QTS-26801, QTS-26051 | 100% | 2025-09-08 | 2025-09-09 |  |  |  | Construction | Phase 1 | Build Out | IGMP | FOH | Level 2 | Doug Hayes | BAB | 01ADMIN |  |  |  |
| QTS-26781 |  | IDF Room #0213 // Rough In Electrical | 10d | 2025-09-24 A | 2025-10-07 A | QTS-26491 | 100% |  |  |  |  |  | Construction | Phase 1 | Electrical | IGMP | FOH | Level 2 |  | BAB | 01ADMIN |  |  |  |
| QTS-26811 |  | IDF Room #0213 // Rough Overhead Linesets | 5d | 2025-10-02 A | 2025-10-24 A | QTS-26491 | 100% | 2025-10-02 | 2025-10-08 |  |  |  | Construction | Phase 1 | Mechanical | IGMP | FOH | Level 2 |  | BAB | 01ADMIN |  |  |  |
| QTS-99570 |  | IDF Room #0213 // Set Door Frame | 1d | 2025-10-06 A | 2025-10-06 A | QTS-26491 | 100% |  |  |  |  |  | Construction | Phase 1 | Build Out | IGMP | FOH | Level 2 | Doug Hayes | BAB |  |  |  |  |
| QTS-27031 |  | IDF Room #0213 // In Wall Inspection | 1d | 2025-10-08 A | 2025-10-08 A | QTS-26781 | 100% |  |  |  |  |  | Construction | Phase 1 | Mechanical | IGMP | FOH | Level 2 |  | BAB | 01ADMIN |  |  |  |
| QTS-27221 |  | IDF Room #0213 // Hang Drywall | 1d | 2025-10-09 A | 2025-10-09 A | QTS-99570, QTS-27031 | 100% |  |  |  |  |  | Construction | Phase 1 | Build Out | IGMP | FOH | Level 2 | Doug Hayes | BAB | 01ADMIN |  |  |  |
| QTS-27391 |  | IDF Room #0213 // Tape & Finish Drywall | 3d | 2025-10-10 A | 2025-10-15 A | QTS-27221 | 100% | 2025-10-10 | 2025-10-14 |  |  |  | Construction | Phase 1 | Build Out | IGMP | FOH | Level 2 | Doug Hayes | BAB | 01ADMIN |  |  |  |
| QTS-28101 |  | IDF Room #0213 // Plywood Install | 1d | 2025-10-16 A | 2025-10-16 A | QTS-27391 | 100% |  |  |  |  |  | Construction | Phase 1 | Build Out | IGMP | FOH | Level 2 | Doug Hayes | BAB | 01ADMIN |  |  |  |
| QTS-27841 |  | IDF Room #0213 // Prime & Paint | 2d | 2025-10-20 A | 2025-10-21 A | QTS-28101 | 100% | 2025-10-17 | 2025-10-20 |  |  |  | Construction | Phase 1 | Build Out | IGMP | FOH | Level 2 | Doug Hayes | BAB | 01ADMIN |  |  |  |
| QTS-28141 |  | IDF Room #0213 // Install AC Unit | 2d | 2025-10-27 A | 2025-10-28 A | QTS-26811, QTS-27841 | 100% |  |  |  |  |  | Construction | Phase 1 | Mechanical | IGMP | FOH | Level 2 |  | BAB | 01ADMIN |  |  |  |
| QTS-38561 |  | IDF Room #0213 // Install Cable Racks | 5d | 2025-11-10 A | 2025-11-14 A | QTS-28341 | 100% | 2025-11-12 | 2025-11-18 |  |  |  | Construction |  | Electrical | IGMP | FOH | Level 2 |  | BAB | 01ADMIN | Construction |  | Phase 1 |
| QTS-28341 |  | IDF Room #0213 // Install Light Fixtures | 2d | 2025-11-12 A | 2025-11-13 A | QTS-28141 | 100% | 2025-11-10 | 2025-11-11 |  |  |  | Construction | Phase 1 | Electrical | IGMP | FOH | Level 2 |  | BAB | 01ADMIN |  |  |  |
| QTS-26791 |  | IDF Room #0213 // Set Door (Temp) | 1d | 2025-11-17 A | 2025-11-17 A | QTS-99630 SS, QTS-15231, QTS-26491 FF | 100% |  |  |  |  |  | Construction | Phase 1 | Build Out | IGMP | FOH | Level 2 |  | BAB | 01ADMIN |  |  |  |

Notes:
- QTS-25441: allucent_notes: Zack Goertz on 2025-08-25 13:08: FInished with layout early / allucent_notes: 2025-08-25 13:08 - User: Zack Goertz - Date Added: 2025-08-25 13:08 - Note: FInished with layout early
- QTS-25741: allucent_notes: Jason Johnston on 2025-09-02 13:09: Will be complete with walls by EOD Saturday / allucent_notes: 2025-09-02 13:09 - User: Jason Johnston - Date Added: 2025-09-02 13:09 - Note: Will be complete with walls by EOD Saturday
- QTS-26941: allucent_notes_20251104_160200: Jason Johnston on 2025-10-27 16:10: Jake owes update / Jason Johnston on 2025-10-28 15:10: Driving in the field to make Friday. / allucent_notes_20251028_163138: Jason Johnston on 2025-10-27 16:10: Jake owes update / Jason Johnston on 2025-10-28 15:10: Driving in the field to make Friday. / allucent_notes_20251027_224008: Jason Johnston on 2025-10-27 16:10: Jake owes update / allucent_notes: 2025-10-27 16:10 - User: Jason Johnston - Date Added: 2025-10-27 16:10 - Note: Jake owes update / 2025-10-28 15:10 - User: Jason Johnston - Date Added: 2025-10-28 15:10 - Note: Driving in the field to make Friday.
- QTS-26041: allucent_notes_20251118_192630: David Wiltberger on 2025-09-09 14:09: walls delayed / David Wiltberger on 2025-09-30 12:09: Waiting for plumbing to complete / David Wiltberger on 2025-10-07 16:10: need wall inspection first / David Wiltberger on 2025-10-14 12:10: No walls / Jason Johnston on 2025-11-19T02:23:05.995Z: undo / allucent_notes_20251111_182405: David Wiltberger on 2025-09-09 14:09: walls delayed / David Wiltberger on 2025-09-30 12:09: Waiting for plumbing to complete / David Wiltberger on 2025-10-07 16:10: need wall inspection first / David Wiltberger on 2025-10-14 12:10: No walls / allucent_notes_20251104_160200: David Wiltberger on 2025-09-09 14:09: walls delayed / David Wiltberger on 2025-09-30 12:09: Waiting for plumbing to complete / David Wiltberger on 2025-10-07 16:10: need wall inspection first / David Wiltberger on 2025-10-14 12:10: No walls / allucent_notes_20251028_163138: David Wiltberger on 2025-09-09 14:09: walls delayed / David Wiltberger on 2025-09-30 12:09: Waiting for plumbing to complete / David Wiltberger on 2025-10-07 16:10: need wall inspection first / David Wiltberger on 2025-10-14 12:10: No walls / allucent_notes_20251027_224008: David Wiltberger on 2025-09-09 14:09: walls delayed / David Wiltberger on 2025-09-30 12:09: Waiting for plumbing to complete / David Wiltberger on 2025-10-07 16:10: need wall inspection first / David Wiltberger on 2025-10-14 12:10: No walls / allucent_notes_20251021_145627: David Wiltberger on 2025-09-09 14:09: walls delayed / David Wiltberger on 2025-09-30 12:09: Waiting for plumbing to complete / David Wiltberger on 2025-10-07 16:10: need wall inspection first / David Wiltberger on 2025-10-14 12:10: No walls / allucent_notes_20251014_152335: David Wiltberger on 2025-09-09 14:09: walls delayed / David Wiltberger on 2025-09-30 12:09: Waiting for plumbing to complete / David Wiltberger on 2025-10-07 16:10: need wall inspection first / David Wiltberger on 2025-10-14 12:10: No walls / allucent_notes: 2025-09-09 14:09 - User: David Wiltberger - Date Added: 2025-09-09 14:09 - Note: walls delayed / 2025-09-30 12:09 - User: David Wiltberger - Date Added: 2025-09-30 12:09 - Note: Waiting for plumbing to complete / 2025-10-07 16:10 - User: David Wiltberge
- QTS-26851: allucent_notes_20251104_160200: Jake Shimmin on 2025-10-21 08:10: REI Man power is focusing on data hall walls. Last of rough will be inspected 9/28. / allucent_notes_20251027_224008: Jake Shimmin on 2025-10-21 08:10: REI Man power is focusing on data hall walls. Last of rough will be inspected 9/28. / allucent_notes_20251021_145627: Jake Shimmin on 2025-10-21 08:10: REI Man power is focusing on data hall walls. Last of rough will be inspected 9/28. / allucent_notes: 2025-10-21 08:10 - User: Jake Shimmin - Date Added: 2025-10-21 08:10 - Note: REI Man power is focusing on data hall walls. Last of rough will be inspected 9/28.
- QTS-28301: allucent_notes_20251216_165335: Jason Johnston on 2025-11-10 14:11: Need to confirm set. / Sean Waisner on 2025-12-02 15:26: Re-sequenced for priority / Sean Waisner on 2025-12-09 15:32: Not all drywall hung awaiting electricians / allucent_notes_20251209_203830: Jason Johnston on 2025-11-10 14:11: Need to confirm set. / Sean Waisner on 2025-12-02 15:26: Re-sequenced for priority / Sean Waisner on 2025-12-09 15:32: Not all drywall hung awaiting electricians / allucent_notes_20251202_153722: Jason Johnston on 2025-11-10 14:11: Need to confirm set. / Sean Waisner on 2025-12-02 15:26: Re-sequenced for priority / allucent_notes_20251118_192630: Jason Johnston on 2025-11-10 14:11: Need to confirm set. / allucent_notes_20251111_182405: Jason Johnston on 2025-11-10 14:11: Need to confirm set. / allucent_notes_20251230_164549: Jason Johnston on 2025-11-10 14:11: Need to confirm set. / Sean Waisner on 2025-12-02 15:26: Re-sequenced for priority / Sean Waisner on 2025-12-09 15:32: Not all drywall hung awaiting electricians / Sean Waisner on 2025-12-30 16:33: Not complete due to man power / Scheduler Notes: Jason Johnston on 2025-11-10 14:11: Need to confirm set. / Sean Waisner on 2025-12-02 15:26: Re-sequenced for priority / Sean Waisner on 2025-12-09 15:32: Not all drywall hung awaiting electricians / Sean Waisner on 2025-12-30 16:33: Not complete due to man power / 1/13/26: Awaiting a door ISEC impact. / allucent_notes: 2025-11-10 14:11 - User: Jason Johnston - Date Added: 2025-11-10 14:11 - Note: Need to confirm set. / 2025-12-02 15:26 - User: Sean Waisner - Date Added: 2025-12-02 15:26 - Note: Re-sequenced for priority / 2025-12-09 15:32 - User: Sean Waisner - Date
- QTS-44851: allucent_notes_20251216_165335: David Wiltberger on 2025-12-02 06:39: wall built late / Scott Masterson on 2025-12-16T23:05:00.670Z: We need to break this apart for early access vs priorty rooms / Scott Masterson on 2025-12-16T23:05:07.434Z: null / Scott Masterson on 2025-12-16 16:05: We need to break this apart for early access vs priorty rooms / allucent_notes_20251209_203830: David Wiltberger on 2025-12-02 06:39: wall built late / allucent_notes_20251202_153722: David Wiltberger on 2025-12-02 06:39: wall built late / allucent_notes_20251230_164549: David Wiltberger on 2025-12-02 06:39: wall built late / Scott Masterson on 2025-12-16T23:05:00.670Z: We need to break this apart for early access vs priorty rooms / Scott Masterson on 2025-12-16T23:05:07.434Z: null / Scott Masterson on 2025-12-16 16:05: We need to break this apart for early access vs priorty rooms / David Wiltberger on 2025-12-30 16:06: roof delayed install / allucent_notes: 2025-12-02 06:39 - User: David Wiltberger - Date Added: 2025-12-02 06:39 - Note: wall built late / 2025-12-16T23:05:00.670Z - User: Scott Masterson - Date Added: 2025-12-16T23:05:00.670Z - Note: We need to break this apart for early access vs priorty ro
- QTS-1002950: Scheduler Notes: 3/24: Fix columns for lobby handrail
- QTS-26811: allucent_notes_20251027_224008: David Wiltberger on 2025-09-09 14:09: walls not ready / David Wiltberger on 2025-09-24 03:09: Need drywall before setting / David Wiltberger on 2025-09-30 09:09: Working with build out to correct / David Wiltberger on 2025-10-14 12:10: Need to finish walls / allucent_notes_20251021_145627: David Wiltberger on 2025-09-09 14:09: walls not ready / David Wiltberger on 2025-09-24 03:09: Need drywall before setting / David Wiltberger on 2025-09-30 09:09: Working with build out to correct / David Wiltberger on 2025-10-14 12:10: Need to finish walls / allucent_notes_20251014_152335: David Wiltberger on 2025-09-09 14:09: walls not ready / David Wiltberger on 2025-09-24 03:09: Need drywall before setting / David Wiltberger on 2025-09-30 09:09: Working with build out to correct / David Wiltberger on 2025-10-14 12:10: Need to finish walls / allucent_notes: 2025-09-09 14:09 - User: David Wiltberger - Date Added: 2025-09-09 14:09 - Note: walls not ready / 2025-09-24 03:09 - User: David Wiltberger - Date Added: 2025-09-24 03:09 - Note: Need drywall before setting / 2025-09-30 09:09 - User: David Wiltberger
- QTS-27391: allucent_notes_20251021_145627: Jake Shimmin on 2025-10-14T16:51:50.335Z: will be finished 10/16 / Jason Johnston on 2025-10-14 15:10: Waited for inspection and will be complete EOD 10-15 / allucent_notes_20251014_152335: Jake Shimmin on 2025-10-14T16:51:50.335Z: will be finished 10/16 / Jason Johnston on 2025-10-14 15:10: Waited for inspection and will be complete EOD 10-15 / allucent_notes: 2025-10-14T16:51:50.335Z - User: Jake Shimmin - Date Added: 2025-10-14T16:51:50.335Z - Note: will be finished 10/16 / 2025-10-14 15:10 - User: Jason Johnston - Date Added: 2025-10-14 15:10 - Note: Waited for inspection and will be complete EOD 10-15
- QTS-27841: allucent_notes_20251021_145627: Jake Shimmin on 2025-10-20 11:10: Hanging ply was finished 10/18 / allucent_notes: 2025-10-20 11:10 - User: Jake Shimmin - Date Added: 2025-10-20 11:10 - Note: Hanging ply was finished 10/18
- QTS-38561: allucent_notes_20251118_192630: Jason Johnston on 2025-11-11 15:11: Started early. / allucent_notes_20251111_182405: Jason Johnston on 2025-11-11 15:11: Started early. / allucent_notes: 2025-11-11 15:11 - User: Jason Johnston - Date Added: 2025-11-11 15:11 - Note: Started early.
- QTS-28341: allucent_notes_20251118_192630: Jason Johnston on 2025-11-03 15:11: Need to confirm that light fixtures are on site and ready to install. / Jason Johnston on 2025-11-11 15:11: starting 11/12. / allucent_notes_20251111_182405: Jason Johnston on 2025-11-03 15:11: Need to confirm that light fixtures are on site and ready to install. / Jason Johnston on 2025-11-11 15:11: starting 11/12. / allucent_notes_20251104_160200: Jason Johnston on 2025-11-03 15:11: Need to confirm that light fixtures are on site and ready to install. / allucent_notes: 2025-11-03 15:11 - User: Jason Johnston - Date Added: 2025-11-03 15:11 - Note: Need to confirm that light fixtures are on site and ready to install. / 2025-11-11 15:11 - User: Jason Johnston - Date Added: 2025-11-11 15:11 - Note: starting 11/12.

| ID | WBS | Activity | Duration | Start | Finish | Predecessors | Complete | Planned start | Planned finish | Allucent CSI Group | Project Section | Layton Discipline | Baseline | Phase-1-1 | Project Section-1 | Location | Level | Layton Super | Contract | Phase-1 |
| --- | --- | --- | --- | --- | --- | --- | --- | --- | --- | --- | --- | --- | --- | --- | --- | --- | --- | --- | --- | --- |
|  | 7 | **L2 / FOH // MMR #0212** |  | 2025-08-04 | 2025-11-17 |  |  |  |  |  |  |  |  |  |  |  |  |  |  |  |
| QTS-44321 |  | MMR Room #0212 // Concrete Seal | 3d | 2025-08-04 A | 2025-08-06 A | QTS-44311 | 100% |  |  | 01ADMIN | Construction | Build Out | IGMP | Phase 1 | Construction | FOH | Level 2 | Doug Hayes | BAB |  |
| QTS-27071 |  | MMR Room #0212 // Rough Overhead Fire Sprinkler | 2d | 2025-09-02 A | 2025-09-24 A | QTS-26801, QTS-44321 | 100% | 2025-09-02 | 2025-09-03 | 01ADMIN | Construction | Mechanical | IGMP |  |  | FOH | Level 2 |  | BAB | Phase 1 |
| QTS-26821 |  | MMR Room #0212 // Frame Walls | 2d | 2025-09-10 A | 2025-09-11 A | QTS-26491 FF | 100% |  |  | 01ADMIN | Construction | Build Out | IGMP |  |  | FOH | Level 2 | Doug Hayes | BAB | Phase 1 |
| QTS-27051 |  | MMR Room #0212 // Rough In Electrical | 10d | 2025-09-24 A | 2025-10-07 A | QTS-26821 | 100% |  |  | 01ADMIN | Construction | Electrical | IGMP |  |  | FOH | Level 2 |  | BAB | Phase 1 |
| QTS-99580 |  | MMR Room #0212 // Set Door Frame | 1d | 2025-10-06 A | 2025-10-06 A | QTS-26821 | 100% |  |  |  | Construction | Build Out | IGMP |  |  | FOH | Level 2 | Doug Hayes | BAB | Phase 1 |
| QTS-27451 |  | MMR Room #0212 // In Wall Inspection | 1d | 2025-10-08 A | 2025-10-08 A | QTS-27051 | 100% |  |  | 01ADMIN | Construction | Mechanical | IGMP |  |  | FOH | Level 2 |  | BAB | Phase 1 |
| QTS-27531 |  | MMR Room #0212 // Hang Drywall | 1d | 2025-10-09 A | 2025-10-09 A | QTS-99580, QTS-27451 | 100% |  |  | 01ADMIN | Construction | Build Out | IGMP |  |  | FOH | Level 2 | Doug Hayes | BAB | Phase 1 |
| QTS-27651 |  | MMR Room #0212 // Tape & Finish Drywall | 3d | 2025-10-10 A | 2025-10-15 A | QTS-27531 | 100% | 2025-10-10 | 2025-10-14 | 01ADMIN | Construction | Build Out | IGMP |  |  | FOH | Level 2 | Doug Hayes | BAB | Phase 1 |
| QTS-28281 |  | MMR Room #0212 // Plywood Install | 1d | 2025-10-16 A | 2025-10-16 A | QTS-27651 | 100% |  |  | 01ADMIN | Construction | Build Out | IGMP |  |  | FOH | Level 2 | Doug Hayes | BAB | Phase 1 |
| QTS-28121 |  | MMR Room #0212 // Prime & Paint | 2d | 2025-10-17 A | 2025-10-20 A | QTS-28281 | 100% |  |  | 01ADMIN | Construction | Build Out | IGMP |  |  | FOH | Level 2 | Doug Hayes | BAB | Phase 1 |
| QTS-27081 |  | MMR Room #0212 // Rough Overhead Linesets | 5d | 2025-10-21 A | 2025-10-27 A | QTS-28121, QTS-26821 | 100% |  |  | 01ADMIN | Construction | Mechanical | IGMP |  |  | FOH | Level 2 |  | BAB | Phase 1 |
| QTS-28361 |  | MMR Room #0212 // Install AC Unit | 2d | 2025-10-28 A | 2025-10-29 A | QTS-27081, QTS-28281, QTS-28121 | 100% |  |  | 01ADMIN | Construction | Mechanical | IGMP |  |  | FOH | Level 2 |  | BAB | Phase 1 |
| QTS-28851 |  | MMR Room #0212 // Install Cable Racks | 5d | 2025-11-10 A | 2025-11-14 A | QTS-28701 | 100% |  |  | 01ADMIN | Construction | Electrical | IGMP |  |  | FOH | Level 2 |  | BAB | Phase 1 |
| QTS-28701 |  | MMR Room #0212 // Install Light Fixtures | 2d | 2025-11-12 A | 2025-11-13 A | QTS-28361 | 100% | 2025-11-10 | 2025-11-11 | 01ADMIN | Construction | Electrical | IGMP |  |  | FOH | Level 2 |  | BAB | Phase 1 |
| QTS-27061 |  | MMR Room #0212 // Set Door (Temp) | 1d | 2025-11-17 A | 2025-11-17 A | QTS-99630 SS, QTS-15231 FF, QTS-26821 | 100% |  |  | 01ADMIN | Construction | Build Out | IGMP |  |  | FOH | Level 2 |  | BAB | Phase 1 |
|  | 1 | **L2 / FOH // Electrical Room #0222** |  | 2025-08-04 | 2025-11-24 |  |  |  |  |  |  |  |  |  |  |  |  |  |  |  |
| QTS-44331 |  | Electrical Room #0222 // Concrete Seal | 3d | 2025-08-04 A | 2025-08-06 A | QTS-44321 | 100% |  |  | 01ADMIN | Construction | Build Out | IGMP | Phase 1 | Construction | FOH | Level 2 | Doug Hayes | BAB |  |
| QTS-25951 |  | Electrical Room #0222 // Frame Walls | 2d | 2025-09-08 A | 2025-09-09 A | QTS-25741 | 100% |  |  | 01ADMIN | Construction | Build Out | IGMP |  |  | FOH | Level 2 | Doug Hayes | BAB | Phase 1 |
| QTS-26301 |  | Electrical Room #0222 // Rough In Electrical | 10d | 2025-09-24 A | 2025-10-07 A | QTS-25951 | 100% |  |  | 01ADMIN | Construction | Electrical | IGMP |  |  | FOH | Level 2 |  | BAB | Phase 1 |
| QTS-26321 |  | Electrical Room #0222 // Rough Overhead Fire Sprinkler | 2d | 2025-10-08 A | 2025-10-09 A | QTS-27071, QTS-44331 | 100% |  |  | 01ADMIN | Construction | Mechanical | IGMP |  |  | FOH | Level 2 |  | BAB | Phase 1 |
| QTS-26421 |  | Electrical Room #0222 // In Wall Inspection | 1d | 2025-10-08 A | 2025-10-08 A | QTS-26301 | 100% |  |  | 01ADMIN | Construction | Mechanical | IGMP |  |  | FOH | Level 2 |  | BAB | Phase 1 |
| QTS-99590 |  | Electrical Room #0222 // Set Door Frame | 1d | 2025-10-08 A | 2025-10-08 A | QTS-25951 | 100% |  |  | 01ADMIN | Construction | Build Out | IGMP |  |  | FOH | Level 2 | Doug Hayes | BAB | Phase 1 |
| QTS-26441 |  | Electrical Room #0222 // Hang Drywall | 1d | 2025-10-09 A | 2025-10-09 A | QTS-99590, QTS-26421 | 100% |  |  | 01ADMIN | Construction | Build Out | IGMP |  |  | FOH | Level 2 | Doug Hayes | BAB | Phase 1 |
| QTS-26551 |  | Electrical Room #0222 // Tape & Finish Drywall | 3d | 2025-10-14 A | 2025-10-24 A | QTS-26441 | 100% | 2025-10-14 | 2025-10-16 | 01ADMIN | Construction | Build Out | IGMP |  |  | FOH | Level 2 | Doug Hayes | BAB | Phase 1 |
| QTS-27241 |  | Electrical Room #0222 // Plywood Install | 1d | 2025-10-20 A | 2025-10-20 A | QTS-26551 SS | 100% |  |  | 01ADMIN | Construction | Build Out | IGMP |  |  | FOH | Level 2 | Doug Hayes | BAB | Phase 1 |
| QTS-26911 |  | Electrical Room #0222 // Prime & Paint | 2d | 2025-10-21 A | 2025-10-28 A | QTS-27241, QTS-26551 FF | 100% | 2025-10-21 | 2025-10-22 | 01ADMIN | Construction | Build Out | IGMP |  |  | FOH | Level 2 | Doug Hayes | BAB | Phase 1 |
| QTS-101630 |  | Electrical Room #0222 // Cure and Seal House Pads | 3d | 2025-10-29 A | 2025-10-31 A | QTS-26911 | 100% |  |  | 01ADMIN | Construction | Core & Shell | IGMP | Phase 1 | Construction | FOH | Level 2 |  | BAB |  |
| QTS-26331 |  | Electrical Room #0222 // Rough Overhead Linesets | 5d | 2025-10-29 A | 2025-11-04 A | QTS-26911, QTS-25951 | 100% |  |  | 01ADMIN | Construction | Mechanical | IGMP |  |  | FOH | Level 2 |  | BAB | Phase 1 |
| QTS-27471 |  | Electrical Room #0222 // Install AC Unit | 2d | 2025-11-05 A | 2025-11-06 A | QTS-101630, QTS-26331, QTS-27241, QTS-26911 | 100% |  |  | 01ADMIN | Construction | Mechanical | IGMP |  |  | FOH | Level 2 |  | BAB | Phase 1 |
| QTS-28041 |  | Electrical Room #0222 // Install Cable Racks | 5d | 2025-11-14 A | 2025-11-24 A | QTS-27671 | 100% | 2025-11-11 | 2025-11-17 | 01ADMIN | Construction | Electrical | IGMP |  |  | FOH | Level 2 |  | BAB | Phase 1 |
| QTS-26311 |  | Electrical Room #0222 // Set Door (Temp) | 1d | 2025-11-17 A | 2025-11-17 A | QTS-99630 SS, QTS-15231, QTS-25951 FF | 100% |  |  | 01ADMIN | Construction | Build Out | IGMP |  |  | FOH | Level 2 |  | BAB | Phase 1 |
| QTS-27671 |  | Electrical Room #0222 // Install Light Fixtures | 2d | 2025-11-19 A | 2025-11-20 A | QTS-27471 | 100% |  |  | 01ADMIN | Construction | Electrical | IGMP |  |  | FOH | Level 2 |  | BAB | Phase 1 |

Notes:
- QTS-27451: allucent_notes_20251014_152335: Jason Johnston on 2025-10-08 08:10: inspector only one tuesday and thursday / allucent_notes: 2025-10-08 08:10 - User: Jason Johnston - Date Added: 2025-10-08 08:10 - Note: inspector only one tuesday and thursday
- QTS-27651: allucent_notes_20251021_145627: Jake Shimmin on 2025-10-14T16:52:45.528Z: will be finished 10/15 / Jason Johnston on 2025-10-14 15:10: Will be finished 10-15 / allucent_notes_20251014_152335: Jake Shimmin on 2025-10-14T16:52:45.528Z: will be finished 10/15 / allucent_notes: 2025-10-14T16:52:45.528Z - User: Jake Shimmin - Date Added: 2025-10-14T16:52:45.528Z - Note: will be finished 10/15 / 2025-10-14 15:10 - User: Jason Johnston - Date Added: 2025-10-14 15:10 - Note: Will be finished 10-15
- QTS-27081: allucent_notes_20251027_224008: David Wiltberger on 2025-09-09 14:09: walls delayed / David Wiltberger on 2025-09-24T10:50:42.676Z: Need drywall up before setting / David Wiltberger on 2025-09-24 03:09: Need drywall before settings / David Wiltberger on 2025-09-30 09:09: Need to coordinate with Buildout / allucent_notes_20251021_145627: David Wiltberger on 2025-09-09 14:09: walls delayed / David Wiltberger on 2025-09-24T10:50:42.676Z: Need drywall up before setting / David Wiltberger on 2025-09-24 03:09: Need drywall before settings / David Wiltberger on 2025-09-30 09:09: Need to coordinate with Buildout / allucent_notes_20251014_152335: David Wiltberger on 2025-09-09 14:09: walls delayed / David Wiltberger on 2025-09-24T10:50:42.676Z: Need drywall up before setting / David Wiltberger on 2025-09-24 03:09: Need drywall before settings / David Wiltberger on 2025-09-30 09:09: Need to coordinate with Buildout / allucent_notes: 2025-09-09 14:09 - User: David Wiltberger - Date Added: 2025-09-09 14:09 - Note: walls delayed / 2025-09-24T10:50:42.676Z - User: David Wiltberger - Date Added: 2025-09-24T10:50:42.676Z - Note: Need drywall up before setting / 2025-09-24 03:09 - User: D
- QTS-28851: allucent_notes_20251118_192630: Jason Johnston on 2025-11-03 15:11: Light fixtures are not on site yet. / allucent_notes_20251111_182405: Jason Johnston on 2025-11-03 15:11: Light fixtures are not on site yet. / allucent_notes_20251104_160200: Jason Johnston on 2025-11-03 15:11: Light fixtures are not on site yet. / allucent_notes: 2025-11-03 15:11 - User: Jason Johnston - Date Added: 2025-11-03 15:11 - Note: Light fixtures are not on site yet.
- QTS-28701: allucent_notes_20251118_192630: Jason Johnston on 2025-11-03 15:11: Light fixtures are not on site. / Jason Johnston on 2025-11-11 15:11: Starting wednesday. / allucent_notes_20251111_182405: Jason Johnston on 2025-11-03 15:11: Light fixtures are not on site. / Jason Johnston on 2025-11-11 15:11: Starting wednesday. / allucent_notes_20251104_160200: Jason Johnston on 2025-11-03 15:11: Light fixtures are not on site. / allucent_notes: 2025-11-03 15:11 - User: Jason Johnston - Date Added: 2025-11-03 15:11 - Note: Light fixtures are not on site. / 2025-11-11 15:11 - User: Jason Johnston - Date Added: 2025-11-11 15:11 - Note: Starting wednesday.
- QTS-27061: allucent_notes_20251209_203830: Jake Shimmin on 2025-10-27 09:10: Door to be deliver on the 30th and set on 31st. / allucent_notes_20251028_163138: Jake Shimmin on 2025-10-27 09:10: Door to be deliver on the 30th and set on 31st. / allucent_notes_20251027_224008: Jake Shimmin on 2025-10-27 09:10: Door to be deliver on the 30th and set on 31st. / allucent_notes: 2025-10-27 09:10 - User: Jake Shimmin - Date Added: 2025-10-27 09:10 - Note: Door to be deliver on the 30th and set on 31st.
- QTS-26421: allucent_notes_20251014_152335: Jason Johnston on 2025-10-08 08:10: inspector only tuesday and thursday / allucent_notes: 2025-10-08 08:10 - User: Jason Johnston - Date Added: 2025-10-08 08:10 - Note: inspector only tuesday and thursday
- QTS-26441: allucent_notes_20251014_152335: Jake Shimmin on 2025-10-14T16:53:30.384Z: will be finished 10/17 / allucent_notes: 2025-10-14T16:53:30.384Z - User: Jake Shimmin - Date Added: 2025-10-14T16:53:30.384Z - Note: will be finished 10/17
- QTS-26551: allucent_notes_20251027_224008: Jake Shimmin on 2025-10-14T16:54:06.095Z: will be finished 10/17 / Jake Shimmin on 2025-10-14 10:10: dry wall is not complete / Jake Shimmin on 2025-10-21 08:10: Not enough manpower / allucent_notes_20251021_145627: Jake Shimmin on 2025-10-14T16:54:06.095Z: will be finished 10/17 / Jake Shimmin on 2025-10-14 10:10: dry wall is not complete / Jake Shimmin on 2025-10-21 08:10: Not enough manpower / allucent_notes_20251014_152335: Jake Shimmin on 2025-10-14T16:54:06.095Z: will be finished 10/17 / Jake Shimmin on 2025-10-14 10:10: dry wall is not complete / allucent_notes: 2025-10-14T16:54:06.095Z - User: Jake Shimmin - Date Added: 2025-10-14T16:54:06.095Z - Note: will be finished 10/17 / 2025-10-14 10:10 - User: Jake Shimmin - Date Added: 2025-10-14 10:10 - Note: dry wall is not complete / 2025-10-21 08:10 - User: Jak
- QTS-26911: allucent_notes_20251028_163138: Jake Shimmin on 2025-10-27 09:10: Paint will be done 10/28. Mud and tape was delayed do to man power. / allucent_notes_20251027_224008: Jake Shimmin on 2025-10-27 09:10: Paint will be done 10/28. Mud and tape was delayed do to man power. / allucent_notes: 2025-10-27 09:10 - User: Jake Shimmin - Date Added: 2025-10-27 09:10 - Note: Paint will be done 10/28. Mud and tape was delayed do to man power.
- QTS-26331: allucent_notes_20251104_160200: David Wiltberger on 2025-09-24 03:09: Need Drywall before setting / David Wiltberger on 2025-09-30 12:09: Waiting for drywall / Jake Shimmin on 2025-10-21T15:24:58.946Z: THERE IS NO DRY PLYWOOD IN THIS ROOM LOOK AT THE PLANS. / allucent_notes_20251028_163138: David Wiltberger on 2025-09-24 03:09: Need Drywall before setting / David Wiltberger on 2025-09-30 12:09: Waiting for drywall / Jake Shimmin on 2025-10-21T15:24:58.946Z: THERE IS NO DRY PLYWOOD IN THIS ROOM LOOK AT THE PLANS. / allucent_notes_20251027_224008: David Wiltberger on 2025-09-24 03:09: Need Drywall before setting / David Wiltberger on 2025-09-30 12:09: Waiting for drywall / Jake Shimmin on 2025-10-21T15:24:58.946Z: THERE IS NO DRY PLYWOOD IN THIS ROOM LOOK AT THE PLANS. / allucent_notes_20251021_145627: David Wiltberger on 2025-09-24 03:09: Need Drywall before setting / David Wiltberger on 2025-09-30 12:09: Waiting for drywall / Jake Shimmin on 2025-10-21T15:24:58.946Z: THERE IS NO DRY PLYWOOD IN THIS ROOM LOOK AT THE PLANS. / allucent_notes_20251014_152335: David Wiltberger on 2025-09-24 03:09: Need Drywall before setting / David Wiltberger on 2025-09-30 12:09: Waiting for drywall / allucent_notes: 2025-09-24 03:09 - User: David Wiltberger - Date Added: 2025-09-24 03:09 - Note: Need Drywall before setting / 2025-09-30 12:09 - User: David Wiltberger - Date Added: 2025-09-30 12:09 - Note: Waiting for drywall / 2025-10-21T15:24:58.946Z - User: Jake
- QTS-28041: allucent_notes_20251202_153722: JD Kitchens on 2025-11-18T20:43:13.783Z: No cable racks in this room / JD Kitchens on 2025-11-18T20:45:38.241Z: Please remove / Jason Johnston on 2025-11-19T02:23:14.770Z: undo / allucent_notes_20251118_192630: JD Kitchens on 2025-11-18T20:43:13.783Z: No cable racks in this room / JD Kitchens on 2025-11-18T20:45:38.241Z: Please remove / Jason Johnston on 2025-11-19T02:23:14.770Z: undo / allucent_notes: 2025-11-18T20:43:13.783Z - User: JD Kitchens - Date Added: 2025-11-18T20:43:13.783Z - Note: No cable racks in this room / 2025-11-18T20:45:38.241Z - User: JD Kitchens - Date Added: 2025-11-18T20:45:38.241Z - Note: Please remove / 2025-11-19T02:23:14.770
- QTS-27671: allucent_notes_20251202_153722: Jason Johnston on 2025-11-11 15:11: waiting until wednesday. / Jason Johnston on 2025-11-19T02:23:11.176Z: undo / allucent_notes_20251118_192630: Jason Johnston on 2025-11-11 15:11: waiting until wednesday. / Jason Johnston on 2025-11-19T02:23:11.176Z: undo / allucent_notes_20251111_182405: Jason Johnston on 2025-11-11 15:11: waiting until wednesday. / allucent_notes: 2025-11-11 15:11 - User: Jason Johnston - Date Added: 2025-11-11 15:11 - Note: waiting until wednesday. / 2025-11-19T02:23:11.176Z - User: Jason Johnston - Date Added: 2025-11-19T02:23:11.176Z - Note: undo

| ID | WBS | Activity | Duration | Start | Finish | Predecessors | Complete | Planned start | Planned finish | Calendar | Last Period Finish | Last Period Start | Allucent CSI Group | Project Section | Layton Discipline | Baseline | Phase-1-1 | Project Section-1 | Location | Level | Layton Super | Contract | Note/Comments | Trade Partner |
| --- | --- | --- | --- | --- | --- | --- | --- | --- | --- | --- | --- | --- | --- | --- | --- | --- | --- | --- | --- | --- | --- | --- | --- | --- |
|  | 3 | **L2 / FOH // Restrooms #0207/0208** |  | 2025-09-08 | 2026-07-20 |  |  |  |  |  |  |  |  |  |  |  |  |  |  |  |  |  |  |  |
| QTS-1531 |  | Restrooms #0207/0208 // Layout | 1d | 2025-09-08 A | 2025-09-08 A | QTS-25741 | 100% |  |  |  | 2023-01-05 | 2023-01-05 | 01ADMIN | Construction | Build Out | IGMP | Phase 1 | Construction | FOH | Level 2 | Doug Hayes | BAB |  |  |
| QTS-2301 |  | Restrooms #0207/0208 // Frame Walls | 2d | 2025-09-08 A | 2025-09-09 A | QTS-1531 | 100% |  |  |  | 2023-01-09 | 2023-01-06 | 01ADMIN | Construction | Build Out | IGMP | Phase 1 | Construction | FOH | Level 2 | Doug Hayes | BAB |  |  |
| QTS-2651 |  | Restrooms #0207/0208 // Rough In-Wall Plumbing | 5d | 2025-09-24 A | 2025-10-24 A | QTS-2301 | 100% | 2025-09-24 | 2025-09-30 |  | 2023-01-13 | 2023-01-11 | 01ADMIN | Construction | Mechanical | IGMP | Phase 1 | Construction | FOH | Level 2 |  | BAB |  |  |
| QTS-4501 |  | Restrooms #0207/0208 // Rough Overhead Fire Sprinkler | 1d | 2025-09-29 A | 2025-09-29 A | QTS-1531 | 100% |  |  |  | 2023-01-17 | 2023-01-13 | 01ADMIN | Construction | Mechanical | IGMP | Phase 1 | Construction | FOH | Level 2 |  | BAB |  |  |
| QTS-99450 |  | Restrooms #0207/0208 // Frame Wet Walls | 2d | 2025-09-30 A | 2025-10-01 A | QTS-4501 | 100% |  |  |  | 2023-01-09 | 2023-01-06 | 01ADMIN | Construction | Build Out | IGMP | Phase 1 | Construction | FOH | Level 2 | Doug Hayes | BAB |  |  |
| QTS-2631 |  | Restrooms #0207/0208 // Rough Overhead Mechanical | 2d | 2025-10-02 A | 2025-10-10 A | QTS-99450, QTS-2301 | 100% | 2025-10-02 | 2025-10-03 |  | 2023-01-26 | 2023-01-23 | 01ADMIN | Construction | Mechanical | IGMP | Phase 1 | Construction | FOH | Level 2 |  | BAB |  |  |
| QTS-3751 |  | Restrooms #0207/0208 // Install Backing for Restroom Specialties/Counter Brackets | 1d | 2025-10-09 A | 2025-10-09 A | QTS-2651 SS | 100% |  |  |  | 2023-02-27 | 2023-02-27 | 01ADMIN | Construction | Build Out | IGMP | Phase 1 | Construction | FOH | Level 2 | Doug Hayes | BAB |  |  |
| QTS-3381 |  | Restrooms #0207/0208 // Rough Overhead Plumbing | 5d | 2025-10-24 A | 2025-12-12 A | QTS-2301, QTS-2631 | 100% | 2025-10-24 | 2025-10-30 |  | 2023-01-12 | 2023-01-10 | 01ADMIN | Construction | Mechanical | IGMP | Phase 1 | Construction | FOH | Level 2 |  | BAB |  |  |
| QTS-2641 |  | Restrooms #0207/0208 // Rough In-Wall Electrical, Security, & Access Controls | 2d | 2025-11-12 A | 2025-11-13 A | QTS-99450, QTS-2301 | 100% | 2025-11-11 | 2025-11-12 |  | 2023-01-12 | 2023-01-10 | 01ADMIN | Construction | Electrical | IGMP | Phase 1 | Construction | FOH | Level 2 |  | BAB |  |  |
| QTS-3391 |  | Restrooms #0207/0208 // Rough Overhead Electrical/ Light Fixtures Install | 2d | 2025-11-12 A | 2025-11-13 A | QTS-2301, QTS-2631 | 100% | 2025-11-11 | 2025-11-12 |  | 2023-03-08 | 2023-03-07 | 01ADMIN | Construction | Electrical | IGMP | Phase 1 | Construction | FOH | Level 2 |  | BAB |  |  |
| QTS-1001280 |  | Restrooms #0207/0208 // Rough In-Wall Electrical Final Connections | 2d | 2026-01-16 A | 2026-01-16 A | QTS-3381 | 100% | 2026-01-28 | 2026-01-29 | QTS-PHX3 DC1 - 6 day w/ Holidays | 2023-01-12 | 2023-01-10 | 01ADMIN | Construction | Electrical | IGMP | Phase 1 | Construction | FOH | Level 2 |  | BAB |  |  |
| QTS-3741 |  | Restrooms #0207/0208 // In Wall Inspection | 1d | 2026-01-29 A | 2026-01-29 A | QTS-1001280, QTS-2641, QTS-2651 | 100% |  |  | QTS-PHX3 DC1 - 6 day w/ Holidays | 2023-01-17 | 2023-01-17 | 01ADMIN | Construction | Mechanical | IGMP | Phase 1 | Construction | FOH | Level 2 |  | BAB |  |  |
| QTS-1003040 |  | Restrooms #0207/0208 // Top Out Walls | 3d | 2026-02-10 A | 2026-02-19 A | QTS-1001280 | 100% | 2026-02-23 | 2026-02-25 | QTS-PHX3 DC1 - 6 day w/ Holidays | 2023-03-01 | 2023-02-28 | 01ADMIN | Construction | Build Out | IGMP | Phase 1 | Construction | FOH | Level 2 |  | BAB |  |  |
| QTS-1002330 |  | Restrooms #0207/0208 // Install Mechanical Branch Lines | 1d | 2026-03-04 A | 2026-03-05 A | QTS-1003030 | 100% | 2026-03-04 | 2026-03-04 | QTS-PHX3 DC1 - 6 day w/ Holidays | 2023-03-01 | 2023-02-28 | 01ADMIN | Construction | Build Out | IGMP | Phase 1 | Construction | FOH | Level 2 |  | BAB |  |  |
| QTS-44861 |  | Restrooms #0207/0208 // Frame Hard Lids | 2d | 2026-03-11 A | 2026-03-12 A | QTS-3381 FF, QTS-1003040 | 100% |  |  | QTS-PHX3 DC1 - 6 day w/ Holidays | 2023-01-09 | 2023-01-06 | 01ADMIN | Construction | Build Out | IGMP | Phase 1 | Construction | FOH | Level 2 |  | BAB |  |  |
| QTS-1002340 |  | Restrooms #0207/0208 // Install Light Fixtures | 1d | 2026-03-18 A | 2026-03-18 A | QTS-1002330, QTS-44861 | 100% |  |  | QTS-PHX3 DC1 - 6 day w/ Holidays | 2023-03-01 | 2023-02-28 | 01ADMIN | Construction | Build Out | IGMP | Phase 1 | Construction | FOH | Level 2 |  | BAB |  |  |
| QTS-4391 |  | Restrooms #0207/0208 // Insulate Walls | 1d | 2026-03-18 A | 2026-03-18 A | QTS-3751, QTS-3741 | 100% |  |  | QTS-PHX3 DC1 - 6 day w/ Holidays | 2023-02-24 | 2023-02-24 | 01ADMIN | Construction | Build Out | IGMP | Phase 1 | Construction | FOH | Level 2 |  | BAB |  |  |
| QTS-4791 |  | Restrooms #0207/0208 // Hang Drywall Walls | 1d | 2026-03-19 A | 2026-03-19 A | QTS-3741, QTS-4391, QTS-4501, QTS-1002990 | 100% |  |  | QTS-PHX3 DC1 - 6 day w/ Holidays | 2023-03-01 | 2023-02-28 | 01ADMIN | Construction | Build Out | IGMP | Phase 1 | Construction | FOH | Level 2 |  | BAB |  |  |
| QTS-4801 |  | Restrooms #0207/0208 // Above Ceiling Inspection | 1d | 2026-03-23 A | 2026-03-23 A | QTS-3381, QTS-3391, QTS-4501, QTS-1002330, QTS-44861, QTS-1002340 | 100% |  |  | QTS-PHX3 DC1 - 6 day w/ Holidays | 2023-03-09 | 2023-03-09 | 01ADMIN | Construction | Mechanical | IGMP | Phase 1 | Construction | FOH | Level 2 |  | BAB |  |  |
| QTS-5511 |  | Restrooms #0207/0208 // Hang Drywall on Hard Lids | 1d | 2026-03-24 A | 2026-04-13 A | QTS-4801, QTS-4791 FF | 100% | 2026-03-24 | 2026-03-24 | QTS-PHX3 DC1 - 6 day w/ Holidays | 2023-03-13 | 2023-03-10 | 01ADMIN | Construction | Build Out | IGMP | Phase 1 | Construction | FOH | Level 2 |  | BAB |  |  |
| QTS-5741 |  | Restrooms #0207/0208 // Tape & Finish Drywall | 3d | 2026-04-15 A | 2026-04-25 A | QTS-5511, QTS-4791 | 100% | 2026-04-15 | 2026-04-17 | QTS-PHX3 DC1 - 6 day w/ Holidays | 2023-03-20 | 2023-03-14 | 01ADMIN | Construction | Build Out | IGMP | Phase 1 | Construction | FOH | Level 2 |  | BAB |  |  |
| QTS-6761 |  | Restrooms #0207/0208 // Prime & Paint | 1d | 2026-04-27 A | 2026-04-27 A | QTS-5741 | 100% |  |  | QTS-PHX3 DC1 - 6 day w/ Holidays | 2023-04-12 | 2023-04-11 | 01ADMIN | Construction | Build Out | IGMP | Phase 1 | Construction | FOH | Level 2 |  | BAB |  |  |
| QTS-6861 |  | Restrooms #0207/0208 // Install Wall & Floor Tile | 10d | 2026-04-28 A | 2026-05-19 A | QTS-6761, QTS-5741, QTS-1005290 | 100% | 2026-04-28 | 2026-05-08 | QTS-PHX3 DC1 - 6 day w/ Holidays | 2023-04-10 | 2023-04-06 | 01ADMIN | Construction | Build Out | IGMP | Phase 1 | Construction | FOH | Level 2 | Bobby Martinez | BAB |  |  |
| QTS-10161 |  | Restrooms #0207/0208 // Field Measure for Countertops | 1d | 2026-04-29 A | 2026-04-29 A | QTS-5741 | 100% |  |  | QTS-PHX3 DC1 - 6 day w/ Holidays |  |  |  | Construction | Build Out | IGMP | Phase 1 | Construction | FOH | Level 2 | Bobby Martinez | BAB |  |  |
| QTS-10151 |  | Restrooms #0207/0208 // Electrical Trim | 1d | 2026-06-03 A | 2026-07-14 A | QTS-6761, QTS-6861 | 100% | 2026-06-03 | 2026-06-03 | QTS-PHX3 DC1 - 6 day w/ Holidays | 2023-04-14 | 2023-04-13 |  | Construction | Electrical | IGMP | Phase 1 | Construction | FOH | Level 2 | Electrical | BAB | 7/7: Need light switch & recep covers |  |
| QTS-10811 |  | Restrooms #0207/0208 // Final Coat of Paint | 1d | 2026-06-15 A | 2026-06-16 A | QTS-10151 SS | 100% | 2026-06-25 | 2026-06-25 | QTS-PHX3 DC1 - 6 day w/ Holidays |  |  |  | Construction | Build Out | IGMP | Phase 1 | Construction | FOH | Level 2 | Bobby Martinez | BAB |  |  |
| QTS-11431 |  | Restrooms #0207/0208 // Set Doors & Hardware | 2d | 2026-06-15 A | 2026-06-17 A | QTS-99650, QTS-6761 | 100% | 2026-06-27 | 2026-06-29 | QTS-PHX3 DC1 - 6 day w/ Holidays | 2023-04-21 | 2023-04-20 |  | Construction | Build Out | IGMP | Phase 1 | Construction | FOH | Level 2 | Bobby Martinez | BAB |  |  |
| QTS-1003050 |  | Restrooms #0207/0208 // Install Casework | 8d | 2026-06-16 A | 2026-07-14 A | QTS-12651 | 100% | 2026-06-25 | 2026-07-06 | QTS-PHX3 DC1 - 6 day w/ Holidays |  |  |  | Construction | Build Out | IGMP | Phase 1 | Construction | FOH | Level 2 | Bobby Martinez | BAB |  |  |
| QTS-12651 |  | Restrooms #0207/0208 // Set Countertops | 2d | 2026-06-19 A | 2026-06-20 A | QTS-10811, QTS-10161 | 100% | 2026-06-25 | 2026-06-26 | QTS-PHX3 DC1 - 6 day w/ Holidays |  |  |  | Construction | Build Out | IGMP | Phase 1 | Construction | FOH | Level 2 | Bobby Martinez | BAB |  |  |
| QTS-10861 |  | Restrooms #0207/0208 // Install Restroom Specialties/ ADA Trim/ Partitions | 2d | 2026-06-23 A | 2026-07-20 A | QTS-10811, QTS-1003050 SS | 100% | 2026-06-26 | 2026-06-27 | QTS-PHX3 DC1 - 6 day w/ Holidays | 2023-04-21 | 2023-04-20 |  | Construction | Build Out | IGMP | Phase 1 | Construction | FOH | Level 2 | Bobby Martinez | BAB |  | ISEC |
| QTS-10871 |  | Restrooms #0207/0208 // Install Mechanical Trim | 2d | 2026-06-29 A | 2026-07-06 A | QTS-6761, QTS-10811 | 100% | 2026-06-24 | 2026-06-25 | QTS-PHX3 DC1 - 6 day w/ Holidays | 2023-04-14 | 2023-04-13 |  | Construction | Mechanical | IGMP | Phase 1 | Construction | FOH | Level 2 | Mechanical | BAB |  |  |
| QTS-10141 |  | Restrooms #0207/0208 // Plumbing Fixtures Install | 2d | 2026-07-06 A | 2026-07-06 A | QTS-6761, QTS-6861 | 100% | 2026-07-08 | 2026-07-09 | QTS-PHX3 DC1 - 6 day w/ Holidays | 2023-04-14 | 2023-04-13 |  | Construction | Mechanical | IGMP | Phase 1 | Construction | FOH | Level 2 | Mechanical | BAB |  |  |
| QTS-12951 |  | Restrooms #0207/0208 // Install Plumbing Trim at Countertops | 2d | 2026-07-06 A | 2026-07-06 A | QTS-12651, QTS-1003050 SS | 100% | 2026-07-08 | 2026-07-09 | QTS-PHX3 DC1 - 6 day w/ Holidays |  |  |  | Construction | Mechanical | IGMP | Phase 1 | Construction | FOH | Level 2 | Mechanical | BAB |  |  |
| QTS-0220 |  | FOH / RR 207/208 / Install Final Sensors and skirt | 4d | 2026-07-16 A | 2026-07-20 A | QTS-10861 FF, QTS-1003050 | 100% | 2026-07-23 | 2026-07-27 | **GLOBAL - 6 Day Workweek w/ Basic Holidays |  |  |  |  | Build Out |  |  |  |  |  | Bobby Martinez | BAB |  |  |

Notes:
- QTS-2651: allucent_notes_20251027_224008: David Wiltberger on 2025-09-24 03:09: Needs wall framing completed / David Wiltberger on 2025-09-30 12:09: waitinf for framing to complete / David Wiltberger on 2025-10-14 12:10: Need wall built for water lines / allucent_notes_20251021_145627: David Wiltberger on 2025-09-24 03:09: Needs wall framing completed / David Wiltberger on 2025-09-30 12:09: waitinf for framing to complete / David Wiltberger on 2025-10-14 12:10: Need wall built for water lines / allucent_notes_20251014_152335: David Wiltberger on 2025-09-24 03:09: Needs wall framing completed / David Wiltberger on 2025-09-30 12:09: waitinf for framing to complete / David Wiltberger on 2025-10-14 12:10: Need wall built for water lines / allucent_notes: 2025-09-24 03:09 - User: David Wiltberger - Date Added: 2025-09-24 03:09 - Note: Needs wall framing completed / 2025-09-30 12:09 - User: David Wiltberger - Date Added: 2025-09-30 12:09 - Note: waitinf for framing to complete / 2025-10-14 12:10 - User: D
- QTS-2631: allucent_notes_20251014_152335: David Wiltberger on 2025-10-07 15:10: framing need to be finished / allucent_notes: 2025-10-07 15:10 - User: David Wiltberger - Date Added: 2025-10-07 15:10 - Note: framing need to be finished
- QTS-3751: allucent_notes_20251014_152335: Jake Shimmin on 2025-10-14T16:56:12.221Z: Bathroom framing is being delayed due to necessity of fan walls being built. push to 10/20 / allucent_notes: 2025-10-14T16:56:12.221Z - User: Jake Shimmin - Date Added: 2025-10-14T16:56:12.221Z - Note: Bathroom framing is being delayed due to necessity of fan walls being built. push to 10/20
- QTS-3381: allucent_notes_20251216_165335: David Wiltberger on 2025-10-14 12:10: No walls yet / David Wiltberger on 2025-11-04 14:11: Access limited due to walls / Jason Johnston on 2025-11-10 14:11: Delayed by drywall completion. / Jason Johnston on 2025-11-11 15:11: Need to tie to early access and priority rooms. / Jake Shimmin on 2025-11-17T20:32:23.185Z: THis needs to be pushed out. THe predecessor should be the last early Access rooms/priority rooms in the building / David Wiltberger on 2025-11-17 16:11: out of sequence / David Wiltberger on 2025-12-02 06:39: wall built late / allucent_notes_20251209_203830: David Wiltberger on 2025-10-14 12:10: No walls yet / David Wiltberger on 2025-11-04 14:11: Access limited due to walls / Jason Johnston on 2025-11-10 14:11: Delayed by drywall completion. / Jason Johnston on 2025-11-11 15:11: Need to tie to early access and priority rooms. / Jake Shimmin on 2025-11-17T20:32:23.185Z: THis needs to be pushed out. THe predecessor should be the last early Access rooms/priority rooms in the building / David Wiltberger on 2025-11-17 16:11: out of sequence / David Wiltberger on 2025-12-02 06:39: wall built late / allucent_notes_20251202_153722: David Wiltberger on 2025-10-14 12:10: No walls yet / David Wiltberger on 2025-11-04 14:11: Access limited due to walls / Jason Johnston on 2025-11-10 14:11: Delayed by drywall completion. / Jason Johnston on 2025-11-11 15:11: Need to tie to early access and priority rooms. / Jake Shimmin on 2025-11-17T20:32:23.185Z: THis needs to be pushed out. THe predecessor should be the last early Access rooms/priority rooms in the building / David Wiltberger on 2025-11-17 16:11: out of sequence / David Wiltberger on 2025-12-02 06:39: wall built late / allucent_notes_20251118_192630: David Wiltberger on 2025-10-14 12:10: No walls yet / David Wiltberger on 2025-11-04 14:11: Access limited due to walls / Jason Johnston on 2025-11-10 14:11: Delayed by drywall completion. / Jason Johnston on 2025-11-11 15:11: Need to tie to early access and priority rooms. / Jake Shimmin on 2025-11-17T20:32:23.185Z: THis needs to be pushed out. THe predecessor should be the last early Access rooms/priority rooms in the building / David Wiltberger on 2025-11-17 16:11: out of sequence / allucent_notes_20251111_182405: David Wiltberger on 2025-10-14 12:10: No walls yet / David Wiltberger on 2025-11-04 14:11: Access limited due to walls / Jason Johnston on 2025-11-10 14:11: Delayed by drywall completion. / Jason Johnston on 2025-11-11 15:11: Need to tie to early access and priority rooms. / allucent_notes_20251104_160200: David Wiltberger on 2025-10-14 12:10: No walls yet / David Wiltberger on 2025-11-04 14:11: Access limited due to walls / allucent_notes_20251028_163138: David Wiltberger on 2025-10-14 12:10: No walls yet / allucent_notes_20251027_224008: David Wiltberger on 2025-10-14 12:10: No walls yet / allucent_notes_20251021_145627: David Wiltberger on 2025-10-14 12:10: No walls yet / allucent_notes_20251014_152335: David Wiltberger on 2025-10-14 12:10: No walls yet / allucent_notes: 2025-10-14 12:10 - User: David Wiltberger - Date Added: 2025-10-14 12:10 - Note: No walls yet / 2025-11-04 14:11 - User: David Wiltberger - Date Added: 2025-11-04 14:11 - Note: Access limited due to walls / 2025-11-10 14:11 - User: Jason Johnston - Date
- QTS-2641: allucent_notes_20251118_192630: David Wiltberger on 2025-09-30 12:09: walls not complete / David Wiltberger on 2025-10-07 16:10: No doors / Jake Shimmin on 2025-10-21 08:10: REI does not have enough manpower to rough in bathroom and data hall walls at the same time. Data hall is priority. / Jason Johnston on 2025-10-28T22:25:08.907Z: Unactualize start. Room is low priority. / Jason Johnston on 2025-10-28 15:10: pushing / Scott Masterson on 2025-11-04 14:11: The Restrooms are not a high priority. Its completion date is TCO. / Jason Johnston on 2025-11-11 15:11: Tie to shaft wall / Jason Johnston on 2025-11-19T02:23:19.397Z: undo / allucent_notes_20251111_182405: David Wiltberger on 2025-09-30 12:09: walls not complete / David Wiltberger on 2025-10-07 16:10: No doors / Jake Shimmin on 2025-10-21 08:10: REI does not have enough manpower to rough in bathroom and data hall walls at the same time. Data hall is priority. / Jason Johnston on 2025-10-28T22:25:08.907Z: Unactualize start. Room is low priority. / Jason Johnston on 2025-10-28 15:10: pushing / Scott Masterson on 2025-11-04 14:11: The Restrooms are not a high priority. Its completion date is TCO. / Jason Johnston on 2025-11-11 15:11: Tie to shaft wall / allucent_notes_20251104_160200: David Wiltberger on 2025-09-30 12:09: walls not complete / David Wiltberger on 2025-10-07 16:10: No doors / Jake Shimmin on 2025-10-21 08:10: REI does not have enough manpower to rough in bathroom and data hall walls at the same time. Data hall is priority. / Jason Johnston on 2025-10-28T22:25:08.907Z: Unactualize start. Room is low priority. / Jason Johnston on 2025-10-28 15:10: pushing / Scott Masterson on 2025-11-04 14:11: The Restrooms are not a high priority. Its completion date is TCO. / allucent_notes_20251028_163138: David Wiltberger on 2025-09-30 12:09: walls not complete / David Wiltberger on 2025-10-07 16:10: No doors / Jake Shimmin on 2025-10-21 08:10: REI does not have enough manpower to rough in bathroom and data hall walls at the same time. Data hall is priority. / Jason Johnston on 2025-10-28T22:25:08.907Z: Unactualize start. Room is low priority. / Jason Johnston on 2025-10-28 15:10: pushing / allucent_notes_20251027_224008: David Wiltberger on 2025-09-30 12:09: walls not complete / David Wiltberger on 2025-10-07 16:10: No doors / Jake Shimmin on 2025-10-21 08:10: REI does not have enough manpower to rough in bathroom and data hall walls at the same time. Data hall is priority. / allucent_notes_20251021_145627: David Wiltberger on 2025-09-30 12:09: walls not complete / David Wiltberger on 2025-10-07 16:10: No doors / Jake Shimmin on 2025-10-21 08:10: REI does not have enough manpower to rough in bathroom and data hall walls at the same time. Data hall is priority. / allucent_notes_20251014_152335: David Wiltberger on 2025-09-30 12:09: walls not complete / David Wiltberger on 2025-10-07 16:10: No doors / allucent_notes: 2025-09-30 12:09 - User: David Wiltberger - Date Added: 2025-09-30 12:09 - Note: walls not complete / 2025-10-07 16:10 - User: David Wiltberger - Date Added: 2025-10-07 16:10 - Note: No doors / 2025-10-21 08:10 - User: Jake Shimmin - Date Added: 2025-1
- QTS-3391: allucent_notes_20251118_192630: David Wiltberger on 2025-10-14 12:10: No ceiling built / Scott Masterson on 2025-11-04 14:11: The Restrooms are not a high priority. Its completion date is TCO. / Jason Johnston on 2025-11-11 15:11: Tie to shaft wall. / Jason Johnston on 2025-11-19T02:23:22.998Z: undo / allucent_notes_20251111_182405: David Wiltberger on 2025-10-14 12:10: No ceiling built / Scott Masterson on 2025-11-04 14:11: The Restrooms are not a high priority. Its completion date is TCO. / Jason Johnston on 2025-11-11 15:11: Tie to shaft wall. / allucent_notes_20251104_160200: David Wiltberger on 2025-10-14 12:10: No ceiling built / Scott Masterson on 2025-11-04 14:11: The Restrooms are not a high priority. Its completion date is TCO. / allucent_notes_20251028_163138: David Wiltberger on 2025-10-14 12:10: No ceiling built / allucent_notes_20251027_224008: David Wiltberger on 2025-10-14 12:10: No ceiling built / allucent_notes_20251021_145627: David Wiltberger on 2025-10-14 12:10: No ceiling built / allucent_notes_20251014_152335: David Wiltberger on 2025-10-14 12:10: No ceiling built / allucent_notes: 2025-10-14 12:10 - User: David Wiltberger - Date Added: 2025-10-14 12:10 - Note: No ceiling built / 2025-11-04 14:11 - User: Scott Masterson - Date Added: 2025-11-04 14:11 - Note: The Restrooms are not a high priority. Its completion date is TCO. / 202
- QTS-1001280: allucent_notes_20251118_192630: David Wiltberger on 2025-09-30 12:09: walls not complete / David Wiltberger on 2025-10-07 16:10: No doors / Jake Shimmin on 2025-10-21 08:10: REI does not have enough manpower to rough in bathroom and data hall walls at the same time. Data hall is priority. / Jason Johnston on 2025-10-28T22:25:08.907Z: Unactualize start. Room is low priority. / Jason Johnston on 2025-10-28 15:10: pushing / Scott Masterson on 2025-11-04 14:11: The Restrooms are not a high priority. Its completion date is TCO. / Jason Johnston on 2025-11-11 15:11: Tie to shaft wall / Jason Johnston on 2025-11-19T02:23:19.397Z: undo / allucent_notes_20251111_182405: David Wiltberger on 2025-09-30 12:09: walls not complete / David Wiltberger on 2025-10-07 16:10: No doors / Jake Shimmin on 2025-10-21 08:10: REI does not have enough manpower to rough in bathroom and data hall walls at the same time. Data hall is priority. / Jason Johnston on 2025-10-28T22:25:08.907Z: Unactualize start. Room is low priority. / Jason Johnston on 2025-10-28 15:10: pushing / Scott Masterson on 2025-11-04 14:11: The Restrooms are not a high priority. Its completion date is TCO. / Jason Johnston on 2025-11-11 15:11: Tie to shaft wall / allucent_notes_20251104_160200: David Wiltberger on 2025-09-30 12:09: walls not complete / David Wiltberger on 2025-10-07 16:10: No doors / Jake Shimmin on 2025-10-21 08:10: REI does not have enough manpower to rough in bathroom and data hall walls at the same time. Data hall is priority. / Jason Johnston on 2025-10-28T22:25:08.907Z: Unactualize start. Room is low priority. / Jason Johnston on 2025-10-28 15:10: pushing / Scott Masterson on 2025-11-04 14:11: The Restrooms are not a high priority. Its completion date is TCO. / allucent_notes_20251028_163138: David Wiltberger on 2025-09-30 12:09: walls not complete / David Wiltberger on 2025-10-07 16:10: No doors / Jake Shimmin on 2025-10-21 08:10: REI does not have enough manpower to rough in bathroom and data hall walls at the same time. Data hall is priority. / Jason Johnston on 2025-10-28T22:25:08.907Z: Unactualize start. Room is low priority. / Jason Johnston on 2025-10-28 15:10: pushing / allucent_notes_20251027_224008: David Wiltberger on 2025-09-30 12:09: walls not complete / David Wiltberger on 2025-10-07 16:10: No doors / Jake Shimmin on 2025-10-21 08:10: REI does not have enough manpower to rough in bathroom and data hall walls at the same time. Data hall is priority. / allucent_notes_20251021_145627: David Wiltberger on 2025-09-30 12:09: walls not complete / David Wiltberger on 2025-10-07 16:10: No doors / Jake Shimmin on 2025-10-21 08:10: REI does not have enough manpower to rough in bathroom and data hall walls at the same time. Data hall is priority. / allucent_notes_20251014_152335: David Wiltberger on 2025-09-30 12:09: walls not complete / David Wiltberger on 2025-10-07 16:10: No doors / allucent_notes: 2025-09-30 12:09 - User: David Wiltberger - Date Added: 2025-09-30 12:09 - Note: walls not complete / 2025-10-07 16:10 - User: David Wiltberger - Date Added: 2025-10-07 16:10 - Note: No doors / 2025-10-21 08:10 - User: Jake Shimmin - Date Added: 2025-1
- QTS-3741: allucent_notes_20251216_165335: David Wiltberger on 2025-11-17 16:11: out of sequence / allucent_notes_20251209_203830: David Wiltberger on 2025-11-17 16:11: out of sequence / allucent_notes_20251118_192630: David Wiltberger on 2025-11-17 16:11: out of sequence / allucent_notes_20251230_164549: David Wiltberger on 2025-11-17 16:11: out of sequence / allucent_notes: 2025-11-17 16:11 - User: David Wiltberger - Date Added: 2025-11-17 16:11 - Note: out of sequence
- QTS-44861: allucent_notes_20251118_192630: Jason Johnston on 2025-11-10 14:11: delayed until light fixtures in TI area. / Jason Johnston on 2025-11-11 07:11: Tied to Light fixtures in TI Area / allucent_notes_20251111_182405: Jason Johnston on 2025-11-10 14:11: delayed until light fixtures in TI area. / Jason Johnston on 2025-11-11 07:11: Tied to Light fixtures in TI Area / allucent_notes: 2025-11-10 14:11 - User: Jason Johnston - Date Added: 2025-11-10 14:11 - Note: delayed until light fixtures in TI area. / 2025-11-11 07:11 - User: Jason Johnston - Date Added: 2025-11-11 07:11 - Note: Tied to Light fixtures in TI Area
- QTS-5511: Scheduler Notes: 3/31/26: Waiting for fire sprinkler inspection to finish / drywall. / Notes: 3/31/26: Waiting for fire sprinkler inspection to finish drywall.
- QTS-5741: Scheduler Notes: 4/21: Delay for change on hand dryer and trash combo / Notes: 4/21: Delay for change on hand dryer and trash combo

| ID | WBS | Activity | Duration | Start | Finish | Predecessors | Complete | Planned start | Planned finish | Calendar | Allucent CSI Group | Project Section | Layton Discipline | Baseline | Phase-1-1 | Project Section-1 | Location | Level | Contract | Layton Super | Phase-1 |
| --- | --- | --- | --- | --- | --- | --- | --- | --- | --- | --- | --- | --- | --- | --- | --- | --- | --- | --- | --- | --- | --- |
|  | 4 | **L2 / FOH // Corridors** |  | 2026-04-20 | 2026-06-09 |  |  |  |  |  |  |  |  |  |  |  |  |  |  |  |  |
|  | 1 | **L2 / FOH // Corridor #0205** |  | 2026-04-20 | 2026-06-09 |  |  |  |  |  |  |  |  |  |  |  |  |  |  |  |  |
| QTS-1011450 |  | Corridor #0205 // Complete Corridor Walls | 3d | 2026-04-20 A | 2026-04-23 A | QTS-1371 | 100% | 2026-04-20 | 2026-04-22 | QTS-PHX3 DC1 - 6 day w/ Holidays | 01ADMIN | Construction | Mechanical | IGMP | Phase 1 | Construction | FOH | Level 2 | BAB |  |  |
| QTS-1011440 |  | Corridor #0205 // Complete HVAC Duct & Trim Rooms Near Security Vestibule | 5d | 2026-06-02 A | 2026-06-09 A | QTS-1011450 | 100% | 2026-06-03 | 2026-06-08 | QTS-PHX3 DC1 - 6 day w/ Holidays | 01ADMIN | Construction | Mechanical | IGMP | Phase 1 | Construction | FOH | Level 2 | BAB | Mechanical |  |
|  | 2 | **L2 / FOH // Corridor #0240** |  |  |  |  |  |  |  |  |  |  |  |  |  |  |  |  |  |  |  |
|  | 5 | **Level 2 Front of House Segment B (Gridlines P-V)** |  | 2025-08-01 | 2026-06-08 |  |  |  |  |  |  |  |  |  |  |  |  |  |  |  |  |
|  | 3 | **L2 / FOH // Tenant Improvement** |  | 2025-08-01 | 2026-03-19 |  |  |  |  |  |  |  |  |  |  |  |  |  |  |  |  |
| QTS-47001 |  | TI Area B // Prime & Paint Exposed Structure | 5d | 2025-08-01 A | 2025-08-07 A | QTS-46941 | 100% |  |  |  | 01ADMIN | Construction | Build Out | IGMP |  | Construction | FOH | Level 2 | BAB | Doug Hayes | Phase 1 |
| QTS-26611 |  | TI Area B // Rough Overhead Fire Sprinkler | 7d | 2025-08-18 A | 2025-08-26 A | QTS-26031 FF, QTS-47001 | 100% |  |  |  | 01ADMIN | Construction | Mechanical | IGMP |  |  | FOH | Level 2 | BAB |  | Phase 1 |
| QTS-26051 |  | TI Area B // Frame Priority Walls /Top Out | 6d | 2025-08-28 A | 2025-09-02 A | QTS-26611, QTS-25741 | 100% | 2025-09-03 | 2025-09-10 |  | 01ADMIN | Construction | Build Out | IGMP |  |  | FOH | Level 2 | BAB | Doug Hayes | Phase 1 |
| QTS-44821 |  | TI Area B // Install H.M. Frames | 3d | 2025-08-28 A | 2025-09-02 A | QTS-26051 FF | 100% | 2025-09-08 | 2025-09-10 |  | 01ADMIN | Construction | Build Out | IGMP | Phase 1 | Construction | FOH | Level 2 | BAB | Doug Hayes |  |
| QTS-25451 |  | TI Area B // Layout Walls | 3d | 2025-09-24 A | 2025-09-26 A | QTS-25441 FF, QTS-20771 | 100% |  |  |  | 01ADMIN | Construction | Build Out | IGMP |  |  | FOH | Level 2 | BAB | Doug Hayes | Phase 1 |
| QTS-26601 |  | TI Area B // Rough In-Wall Electrical, Security, & Access Controls | 8d | 2025-09-24 A | 2025-10-24 A | QTS-44821, QTS-26051, QTS-9871 | 100% | 2025-09-24 | 2025-10-03 |  | 01ADMIN | Construction | Electrical | IGMP |  |  | FOH | Level 2 | BAB |  | Phase 1 |
| QTS-27891 |  | TI Area B // Insulate Walls | 5d | 2025-10-07 A | 2025-11-12 A | QTS-26601 FF | 100% | 2025-10-07 | 2025-10-13 |  | 01ADMIN | Construction | Build Out | IGMP |  |  | FOH | Level 2 | BAB | Doug Hayes | Phase 1 |
| QTS-26621 |  | TI Area B // Rough Overhead Electrical | 10d | 2025-10-27 A | 2025-11-12 A | QTS-26601, QTS-26051 | 100% | 2025-10-27 | 2025-11-07 |  | 01ADMIN | Construction | Electrical | IGMP |  |  | FOH | Level 2 | BAB |  | Phase 1 |
| QTS-27731 |  | TI Area B // MEP In Wall Inspection | 1d | 2025-10-27 A | 2025-11-12 A | QTS-26601 | 100% | 2025-10-27 | 2025-10-27 |  | 01ADMIN | Construction | Mechanical | IGMP |  |  | FOH | Level 2 | BAB |  | Phase 1 |
| QTS-28411 |  | TI Area B // Hang Drywall | 5d | 2025-11-13 A | 2026-01-10 A | QTS-1001310 FF+4d, QTS-27731, QTS-27891, QTS-26051 | 100% | 2025-11-10 | 2025-11-14 | QTS-PHX3 DC1 - 6 day w/ Holidays | 01ADMIN | Construction | Build Out | IGMP |  |  | FOH | Level 2 | BAB |  | Phase 1 |
| QTS-28421 |  | TI Area B // Rough Overhead Ductwork Gridline P-V | 10d | 2025-11-13 A | 2025-12-23 A | QTS-27891, QTS-26621, QTS-26051, QTS-25451 | 100% | 2025-11-10 | 2025-11-21 |  | 01ADMIN | Construction | Mechanical | IGMP |  |  | FOH | Level 2 | BAB |  | Phase 1 |
| QTS-28901 |  | TI Area B // Tape & Finish Drywall | 6d | 2025-11-20 A | 2026-01-16 A | QTS-28411 FF+5d | 100% | 2025-11-20 | 2025-11-26 | QTS-PHX3 DC1 - 6 day w/ Holidays | 01ADMIN | Construction | Build Out | IGMP |  |  | FOH | Level 2 | BAB |  | Phase 1 |
| QTS-29351 |  | TI Area B // Insulate HVAC Ductwork | 10d | 2025-11-20 A | 2026-01-14 A | QTS-28421 FF+5d | 100% | 2025-11-20 | 2025-12-03 | QTS-PHX3 DC1 - 6 day w/ Holidays | 01ADMIN | Construction | Mechanical | IGMP |  |  | FOH | Level 2 | BAB |  | Phase 1 |
| QTS-1001290 |  | TI Area B // Install Overhead Electrical Conduits for Lights & HVAC Units | 8d | 2025-12-17 A | 2026-01-21 A | QTS-28421 SS | 100% | 2025-12-17 | 2025-12-26 | QTS-PHX3 DC1 - 6 day w/ Holidays | 01ADMIN | Construction | Build Out | IGMP |  |  | FOH | Level 2 | BAB |  | Phase 1 |
| QTS-1001300 |  | TI Area B // Install Framing | 5d | 2025-12-17 A | 2025-12-23 A | QTS-26051 | 100% |  |  |  | 01ADMIN | Construction | Electrical | IGMP |  |  | FOH | Level 2 | BAB |  | Phase 1 |
| QTS-1001310 |  | TI Area B // Rough In Electrical | 2d | 2025-12-29 A | 2025-12-30 A | QTS-1001300 | 100% |  |  |  | 01ADMIN | Construction | Electrical | IGMP |  |  | FOH | Level 2 | BAB |  | Phase 1 |
| QTS-30301 |  | TI Area B // Install Flooring & Base | 10d | 2026-01-23 A | 2026-03-19 A | QTS-1001310, QTS-1001290 | 100% | 2026-01-23 | 2026-02-03 | QTS-PHX3 DC1 - 6 day w/ Holidays | 01ADMIN | Construction | Build Out | IGMP |  |  | FOH | Level 2 | BAB |  | Phase 1 |

Notes:
- QTS-26611: allucent_notes: David Wiltberger on 2025-08-26 06:08: new piping needed to be fabricated for west branch line / allucent_notes: 2025-08-26 06:08 - User: David Wiltberger - Date Added: 2025-08-26 06:08 - Note: new piping needed to be fabricated for west branch line
- QTS-26051: allucent_notes: Jason Johnston on 2025-09-02 13:09: Switched with Area A to Area B / allucent_notes: 2025-09-02 13:09 - User: Jason Johnston - Date Added: 2025-09-02 13:09 - Note: Switched with Area A to Area B
- QTS-26601: allucent_notes_20251027_224008: Jason Johnston on 2025-09-02 13:09: Broke tie to BIM. Framing to be completed by 9/6. / David Wiltberger on 2025-09-09 14:09: walls delayed / David Wiltberger on 2025-10-07 15:10: REI not completed / David Wiltberger on 2025-10-14 12:10: Missing door frames / allucent_notes_20251021_145627: Jason Johnston on 2025-09-02 13:09: Broke tie to BIM. Framing to be completed by 9/6. / David Wiltberger on 2025-09-09 14:09: walls delayed / David Wiltberger on 2025-10-07 15:10: REI not completed / David Wiltberger on 2025-10-14 12:10: Missing door frames / allucent_notes_20251014_152335: Jason Johnston on 2025-09-02 13:09: Broke tie to BIM. Framing to be completed by 9/6. / David Wiltberger on 2025-09-09 14:09: walls delayed / David Wiltberger on 2025-10-07 15:10: REI not completed / David Wiltberger on 2025-10-14 12:10: Missing door frames / allucent_notes: Jason Johnston on 2025-09-02 13:09: Broke tie to BIM. Framing to be completed by 9/6. / allucent_notes: 2025-09-02 13:09 - User: Jason Johnston - Date Added: 2025-09-02 13:09 - Note: Broke tie to BIM. Framing to be completed by 9/6. / 2025-09-09 14:09 - User: David Wiltberger - Date Added: 2025-09-09 14:09 - Note: walls delayed / 2025-10-07 15:10 - User:
- QTS-27891: allucent_notes_20251118_192630: Jake Shimmin on 2025-10-27 10:10: Need manpower to finish install. Most of REI is on 1st floor. / Jason Johnston on 2025-11-04 15:11: Need Update / Jason Johnston on 2025-11-10 14:11: Delayed until early access rooms are done. / Jason Johnston on 2025-11-11 15:11: Waiting on elevator shaft walls / allucent_notes_20251111_182405: Jake Shimmin on 2025-10-27 10:10: Need manpower to finish install. Most of REI is on 1st floor. / Jason Johnston on 2025-11-04 15:11: Need Update / Jason Johnston on 2025-11-10 14:11: Delayed until early access rooms are done. / Jason Johnston on 2025-11-11 15:11: Waiting on elevator shaft walls / allucent_notes_20251104_160200: Jake Shimmin on 2025-10-27 10:10: Need manpower to finish install. Most of REI is on 1st floor. / Jason Johnston on 2025-11-04 15:11: Need Update / allucent_notes_20251028_163138: Jake Shimmin on 2025-10-27 10:10: Need manpower to finish install. Most of REI is on 1st floor. / allucent_notes_20251027_224008: Jake Shimmin on 2025-10-27 10:10: Need manpower to finish install. Most of REI is on 1st floor. / allucent_notes: 2025-10-27 10:10 - User: Jake Shimmin - Date Added: 2025-10-27 10:10 - Note: Need manpower to finish install. Most of REI is on 1st floor. / 2025-11-04 15:11 - User: Jason Johnston - Date Added: 2025-11-04 15:11 - Note: Need Update / 2025-11-10 14:11
- QTS-26621: allucent_notes_20251118_192630: David Wiltberger on 2025-09-09 14:09: Walls delayed / David Wiltberger on 2025-09-30 12:09: waiting for plumbing / Jason Johnston on 2025-11-10 14:11: Delayed until early access rooms are complete. / Jason Johnston on 2025-11-11 15:11: Waiting on elevator shaft walls / Jason Johnston on 2025-11-19T02:23:26.718Z: undo / allucent_notes_20251111_182405: David Wiltberger on 2025-09-09 14:09: Walls delayed / David Wiltberger on 2025-09-30 12:09: waiting for plumbing / Jason Johnston on 2025-11-10 14:11: Delayed until early access rooms are complete. / Jason Johnston on 2025-11-11 15:11: Waiting on elevator shaft walls / allucent_notes_20251104_160200: David Wiltberger on 2025-09-09 14:09: Walls delayed / David Wiltberger on 2025-09-30 12:09: waiting for plumbing / allucent_notes_20251028_163138: David Wiltberger on 2025-09-09 14:09: Walls delayed / David Wiltberger on 2025-09-30 12:09: waiting for plumbing / allucent_notes_20251027_224008: David Wiltberger on 2025-09-09 14:09: Walls delayed / David Wiltberger on 2025-09-30 12:09: waiting for plumbing / allucent_notes_20251021_145627: David Wiltberger on 2025-09-09 14:09: Walls delayed / David Wiltberger on 2025-09-30 12:09: waiting for plumbing / allucent_notes_20251014_152335: David Wiltberger on 2025-09-09 14:09: Walls delayed / David Wiltberger on 2025-09-30 12:09: waiting for plumbing / allucent_notes: 2025-09-09 14:09 - User: David Wiltberger - Date Added: 2025-09-09 14:09 - Note: Walls delayed / 2025-09-30 12:09 - User: David Wiltberger - Date Added: 2025-09-30 12:09 - Note: waiting for plumbing / 2025-11-10 14:11 - User: Jason Johnston - Date Added
- QTS-27731: allucent_notes_20251118_192630: David Wiltberger on 2025-10-07 15:10: REI not completed / Jake Shimmin on 2025-10-27 10:10: Waiting for manpower to free up. / David Wiltberger on 2025-11-04 14:11: Need breakout to define area. walls are not complete to finish / Jason Johnston on 2025-11-10 14:11: Delayed until early access rooms are complete. / Jason Johnston on 2025-11-11 15:11: Waiting on elevator shaft walls / allucent_notes_20251111_182405: David Wiltberger on 2025-10-07 15:10: REI not completed / Jake Shimmin on 2025-10-27 10:10: Waiting for manpower to free up. / David Wiltberger on 2025-11-04 14:11: Need breakout to define area. walls are not complete to finish / Jason Johnston on 2025-11-10 14:11: Delayed until early access rooms are complete. / Jason Johnston on 2025-11-11 15:11: Waiting on elevator shaft walls / allucent_notes_20251104_160200: David Wiltberger on 2025-10-07 15:10: REI not completed / Jake Shimmin on 2025-10-27 10:10: Waiting for manpower to free up. / David Wiltberger on 2025-11-04 14:11: Need breakout to define area. walls are not complete to finish / allucent_notes_20251028_163138: David Wiltberger on 2025-10-07 15:10: REI not completed / Jake Shimmin on 2025-10-27 10:10: Waiting for manpower to free up. / allucent_notes_20251027_224008: David Wiltberger on 2025-10-07 15:10: REI not completed / Jake Shimmin on 2025-10-27 10:10: Waiting for manpower to free up. / allucent_notes_20251021_145627: David Wiltberger on 2025-10-07 15:10: REI not completed / allucent_notes_20251014_152335: David Wiltberger on 2025-10-07 15:10: REI not completed / allucent_notes: 2025-10-07 15:10 - User: David Wiltberger - Date Added: 2025-10-07 15:10 - Note: REI not completed / 2025-10-27 10:10 - User: Jake Shimmin - Date Added: 2025-10-27 10:10 - Note: Waiting for manpower to free up. / 2025-11-04 14:11 - User: David Wiltber
- QTS-28411: allucent_notes_20251216_165335: Jake Shimmin on 2025-10-14T16:59:18.111Z: waiting on electrical rough in and inspection. will be complete 10/22 / Jake Shimmin on 2025-10-14 10:10: Focusing on fan walls not enough man power to do both. / Sean Waisner on 2025-12-02 15:31: Awaiting for electrical inspection / Sean Waisner on 2025-12-09 15:32: need electrical / Sean Waisner on 2025-12-16 15:05: Still need rough walls from REI / allucent_notes_20251209_203830: Jake Shimmin on 2025-10-14T16:59:18.111Z: waiting on electrical rough in and inspection. will be complete 10/22 / Jake Shimmin on 2025-10-14 10:10: Focusing on fan walls not enough man power to do both. / Sean Waisner on 2025-12-02 15:31: Awaiting for electrical inspection / Sean Waisner on 2025-12-09 15:32: need electrical / allucent_notes_20251202_153722: Jake Shimmin on 2025-10-14T16:59:18.111Z: waiting on electrical rough in and inspection. will be complete 10/22 / Jake Shimmin on 2025-10-14 10:10: Focusing on fan walls not enough man power to do both. / Sean Waisner on 2025-12-02 15:31: Awaiting for electrical inspection / allucent_notes_20251118_192630: Jake Shimmin on 2025-10-14T16:59:18.111Z: waiting on electrical rough in and inspection. will be complete 10/22 / Jake Shimmin on 2025-10-14 10:10: Focusing on fan walls not enough man power to do both. / allucent_notes_20251111_182405: Jake Shimmin on 2025-10-14T16:59:18.111Z: waiting on electrical rough in and inspection. will be complete 10/22 / Jake Shimmin on 2025-10-14 10:10: Focusing on fan walls not enough man power to do both. / allucent_notes_20251104_160200: Jake Shimmin on 2025-10-14T16:59:18.111Z: waiting on electrical rough in and inspection. will be complete 10/22 / Jake Shimmin on 2025-10-14 10:10: Focusing on fan walls not enough man power to do both. / allucent_notes_20251028_163138: Jake Shimmin on 2025-10-14T16:59:18.111Z: waiting on electrical rough in and inspection. will be complete 10/22 / Jake Shimmin on 2025-10-14 10:10: Focusing on fan walls not enough man power to do both. / allucent_notes_20251027_224008: Jake Shimmin on 2025-10-14T16:59:18.111Z: waiting on electrical rough in and inspection. will be complete 10/22 / Jake Shimmin on 2025-10-14 10:10: Focusing on fan walls not enough man power to do both. / allucent_notes_20251021_145627: Jake Shimmin on 2025-10-14T16:59:18.111Z: waiting on electrical rough in and inspection. will be complete 10/22 / Jake Shimmin on 2025-10-14 10:10: Focusing on fan walls not enough man power to do both. / allucent_notes_20251014_152335: Jake Shimmin on 2025-10-14T16:59:18.111Z: waiting on electrical rough in and inspection. will be complete 10/22 / Jake Shimmin on 2025-10-14 10:10: Focusing on fan walls not enough man power to do both. / allucent_notes_20251230_164549: Jake Shimmin on 2025-10-14T16:59:18.111Z: waiting on electrical rough in and inspection. will be complete 10/22 / Jake Shimmin on 2025-10-14 10:10: Focusing on fan walls not enough man power to do both. / Sean Waisner on 2025-12-02 15:31: Awaiting for electrical inspection / Sean Waisner on 2025-12-09 15:32: need electrical / Sean Waisner on 2025-12-16 15:05: Still need rough walls from REI / allucent_notes: 2025-10-14T16:59:18.111Z - User: Jake Shimmin - Date Added: 2025-10-14T16:59:18.111Z - Note: waiting on electrical rough in and inspection. will be complete 10/22 / 2025-10-14 10:10 - User: Jake Shimmin - Date Added: 2025-10-14 10:10 - Note: Focusing o
- QTS-28421: allucent_notes_20251216_165335: David Wiltberger on 2025-12-02 06:40: wall built late / Scott Masterson on 2025-12-16 16:20: some of this reamining duct is tied to the corridor stop work from fire suppression. / allucent_notes_20251209_203830: David Wiltberger on 2025-12-02 06:40: wall built late / allucent_notes_20251202_153722: David Wiltberger on 2025-12-02 06:40: wall built late / allucent_notes_20251230_164549: David Wiltberger on 2025-12-02 06:40: wall built late / Scott Masterson on 2025-12-16 16:20: some of this reamining duct is tied to the corridor stop work from fire suppression. / allucent_notes: 2025-12-02 06:40 - User: David Wiltberger - Date Added: 2025-12-02 06:40 - Note: wall built late / 2025-12-16 16:20 - User: Scott Masterson - Date Added: 2025-12-16 16:20 - Note: some of this reamining duct is tied to the corridor stop work from fire su
- QTS-28901: allucent_notes_20251216_165335: Sean Waisner on 2025-12-02 15:34: Only top out need electrical / allucent_notes_20251209_203830: Sean Waisner on 2025-12-02 15:34: Only top out need electrical / allucent_notes_20251202_153722: Sean Waisner on 2025-12-02 15:34: Only top out need electrical / allucent_notes_20251230_164549: Sean Waisner on 2025-12-02 15:34: Only top out need electrical / allucent_notes: 2025-12-02 15:34 - User: Sean Waisner - Date Added: 2025-12-02 15:34 - Note: Only top out need electrical

| ID | WBS | Activity | Duration | Start | Finish | Predecessors | Complete | Planned start | Planned finish | Calendar | Allucent CSI Group | Project Section | Layton Discipline | Baseline | Phase-1-1 | Project Section-1 | Location | Level | Layton Super | Contract | Phase-1 |
| --- | --- | --- | --- | --- | --- | --- | --- | --- | --- | --- | --- | --- | --- | --- | --- | --- | --- | --- | --- | --- | --- |
|  | 2 | **L2 / FOH // Electrical Room #0273** |  | 2025-09-24 | 2025-12-04 |  |  |  |  |  |  |  |  |  |  |  |  |  |  |  |  |
| QTS-1551 |  | Electrical Room #0273 // Frame Walls | 1d | 2025-09-24 A | 2025-09-24 A | QTS-26051 | 100% |  |  |  | 01ADMIN | Construction | Build Out | IGMP | Phase 1 | Construction | FOH | Level 2 | Doug Hayes | BAB |  |
| QTS-44831 |  | Electrical Room #0273 // Set H.M. Door Frame | 1d | 2025-09-24 A | 2025-09-24 A | QTS-1551 FF | 100% |  |  |  | 01ADMIN | Construction | Build Out | IGMP | Phase 1 | Construction | FOH | Level 2 | Doug Hayes | BAB |  |
| QTS-2511 |  | Electrical Room #0273 // Rough In Electrical | 2d | 2025-09-25 A | 2025-09-26 A | QTS-44831, QTS-1551 | 100% |  |  |  | 01ADMIN | Construction | Electrical | IGMP | Phase 1 | Construction | FOH | Level 2 |  | BAB |  |
| QTS-2541 |  | Electrical Room #0273 // Rough Overhead Linesets | 5d | 2025-10-03 A | 2025-10-24 A | QTS-1551 | 100% | 2025-10-03 | 2025-10-09 |  | 01ADMIN | Construction | Mechanical | IGMP | Phase 1 | Construction | FOH | Level 2 |  | BAB |  |
| QTS-99560 |  | Electrical Room #0273 // Set Door Frame | 1d | 2025-10-06 A | 2025-10-06 A | QTS-1551 | 100% |  |  |  | 01ADMIN | Construction | Build Out | IGMP | Phase 1 | Construction | FOH | Level 2 | Doug Hayes | BAB |  |
| QTS-3171 |  | Electrical Room #0273 // In Wall Inspection | 1d | 2025-10-09 A | 2025-10-09 A | QTS-2511 | 100% |  |  |  | 01ADMIN | Construction | Mechanical | IGMP | Phase 1 | Construction | FOH | Level 2 |  | BAB |  |
| QTS-2531 |  | Electrical Room #0273 // Rough Overhead Fire Sprinkler | 2d | 2025-10-17 A | 2025-10-20 A | QTS-11491, QTS-26611 | 100% |  |  |  | 01ADMIN | Construction | Mechanical | IGMP | Phase 1 | Construction | FOH | Level 2 |  | BAB |  |
| QTS-3401 |  | Electrical Room #0273 // Hang Drywall | 1d | 2025-10-21 A | 2025-10-21 A | QTS-99560, QTS-2531, QTS-3171 | 100% |  |  |  | 01ADMIN | Construction | Build Out | IGMP | Phase 1 | Construction | FOH | Level 2 | Doug Hayes | BAB |  |
| QTS-3611 |  | Electrical Room #0273 // Tape & Finish Drywall | 3d | 2025-10-22 A | 2025-10-24 A | QTS-3401 | 100% |  |  |  | 01ADMIN | Construction | Build Out | IGMP | Phase 1 | Construction | FOH | Level 2 | Doug Hayes | BAB |  |
| QTS-4811 |  | Electrical Room #0273 // Plywood Install | 1d | 2025-10-27 A | 2025-10-27 A | QTS-3611 | 100% |  |  |  | 01ADMIN | Construction | Build Out | IGMP | Phase 1 | Construction | FOH | Level 2 | Doug Hayes | BAB |  |
| QTS-4401 |  | Electrical Room #0273 // Prime & Paint | 2d | 2025-10-28 A | 2025-10-29 A | QTS-4811 | 100% |  |  |  | 01ADMIN | Construction | Build Out | IGMP | Phase 1 | Construction | FOH | Level 2 | Doug Hayes | BAB |  |
| QTS-101640 |  | Electrical Room #0273 // Cure and Seal House Pads | 3d | 2025-10-30 A | 2025-11-03 A | QTS-4401 | 100% |  |  |  | 01ADMIN | Construction | Core & Shell | IGMP | Phase 1 | Construction | FOH | Level 2 |  | BAB |  |
| QTS-5531 |  | Electrical Room #0273 // Install AC Unit | 2d | 2025-10-30 A | 2025-10-31 A | QTS-2541, QTS-4401 | 100% |  |  |  | 01ADMIN | Construction | Mechanical | IGMP | Phase 1 | Construction | FOH | Level 2 |  | BAB |  |
| QTS-4831 |  | Electrical Room #0273 // Set UPS | 1d | 2025-11-12 A | 2025-11-12 A | QTS-27191, QTS-27181, QTS-4401 | 100% | 2025-11-10 | 2025-11-10 |  | 01ADMIN | Construction | Electrical | IGMP | Phase 1 | Construction | FOH | Level 2 |  | BAB |  |
| QTS-6151 |  | Electrical Room #0273 // Install Light Fixtures | 2d | 2025-11-12 A | 2025-11-13 A | QTS-5531 | 100% | 2025-11-10 | 2025-11-11 |  | 01ADMIN | Construction | Electrical | IGMP | Phase 1 | Construction | FOH | Level 2 |  | BAB |  |
| QTS-6771 |  | Electrical Room #0273 // Install Cable Racks | 5d | 2025-11-14 A | 2025-11-20 A | QTS-1371 SS | 100% | 2025-11-12 | 2025-11-18 |  | 01ADMIN | Construction | Electrical | IGMP | Phase 1 | Construction | FOH | Level 2 |  | BAB |  |
| QTS-2521 |  | Electrical Room #0273 // Set Door (Temp) | 1d | 2025-11-17 A | 2025-11-17 A | QTS-99630 SS, QTS-6151, QTS-1551 FF | 100% |  |  |  | 01ADMIN | Construction | Build Out | IGMP | Phase 1 | Construction | FOH | Level 2 |  | BAB |  |
| QTS-4821 |  | Electrical Room #0273 // Set Static Transfer Switch | 1d | 2025-12-04 A | 2025-12-04 A | QTS-27171, QTS-101640, QTS-4401 FF, QTS-4401 | 100% |  |  |  | 01ADMIN | Construction | Electrical | IGMP | Phase 1 | Construction | FOH | Level 2 |  | BAB |  |
|  | 4 | **L2 / FOH // Fire Riser #0271** |  | 2025-08-28 | 2026-06-08 |  |  |  |  |  |  |  |  |  |  |  |  |  |  |  |  |
| QTS-11491 |  | Fire Riser #0271 // Rough Overhead Fire Sprinkler | 10d | 2025-08-28 A | 2025-10-16 A | QTS-26611 | 100% | 2025-08-28 | 2025-09-11 |  | 01ADMIN | Construction | Mechanical | IGMP | Phase 1 | Construction | FOH | Level 2 |  | BAB |  |
| QTS-1541 |  | Fire Riser #0271 // Frame Walls | 2d | 2025-09-24 A | 2025-09-25 A | QTS-26051 | 100% |  |  |  | 01ADMIN | Construction | Build Out | IGMP | Phase 1 | Construction | FOH | Level 2 | Doug Hayes | BAB |  |
| QTS-44841 |  | Fire Riser #0271 // Set H.M. Frame | 1d | 2025-09-24 A | 2025-09-24 A | QTS-1541 SS | 100% |  |  |  | 01ADMIN | Construction | Build Out | IGMP | Phase 1 | Construction | FOH | Level 2 | Doug Hayes | BAB |  |
| QTS-2481 |  | Fire Riser #0271 // Rough In Electrical | 5d | 2025-09-26 A | 2025-10-02 A | QTS-1541 | 100% |  |  |  | 01ADMIN | Construction | Electrical | IGMP | Phase 1 | Construction | FOH | Level 2 |  | BAB |  |
| QTS-2491 |  | Fire Riser #0271 // In Wall Rough Plumbing | 5d | 2025-09-26 A | 2025-10-10 A | QTS-1541 | 100% | 2025-09-26 | 2025-10-02 |  | 01ADMIN | Construction | Mechanical | IGMP | Phase 1 | Construction | FOH | Level 2 |  | BAB |  |
| QTS-3651 |  | Fire Riser #0271 // In Wall Inspection | 5d | 2025-10-13 A | 2025-10-29 A | QTS-2481, QTS-2491 | 100% | 2025-10-13 | 2025-10-17 |  | 01ADMIN | Construction | Mechanical | IGMP | Phase 1 | Construction | FOH | Level 2 |  | BAB |  |
| QTS-5521 |  | Fire Riser #0271 // Hang Drywall | 5d | 2025-10-20 A | 2025-10-24 A | QTS-3651 SS | 100% |  |  |  | 01ADMIN | Construction | Build Out | IGMP | Phase 1 | Construction | FOH | Level 2 | Doug Hayes | BAB |  |
| QTS-6871 |  | Fire Riser #0271 // Tape & Finish Drywall | 5d | 2025-10-27 A | 2025-10-31 A | QTS-5521 | 100% |  |  |  | 01ADMIN | Construction | Build Out | IGMP | Phase 1 | Construction | FOH | Level 2 | Doug Hayes | BAB |  |
| QTS-8561 |  | Fire Riser #0271 // Prime & Paint | 5d | 2025-11-03 A | 2025-11-04 A | QTS-6871 | 100% | 2025-11-03 | 2025-11-07 |  | 01ADMIN | Construction | Build Out | IGMP | Phase 1 | Construction | FOH | Level 2 | Doug Hayes | BAB |  |
| QTS-10181 |  | Fire Riser #0271 // Install VESDA | 2d | 2025-11-21 A | 2025-11-24 A | QTS-120000, QTS-8561 | 100% |  |  |  | 01ADMIN | Construction | Mechanical | IGMP | Phase 1 | Construction | FOH | Level 2 |  | BAB |  |
| QTS-2501 |  | Fire Riser #0271 // Install Door & Hardware (Temp) | 1d | 2025-11-24 A | 2025-11-24 A | QTS-99630 SS, QTS-99650 SS, QTS-6871, QTS-44841, QTS-1541 | 100% |  |  |  | 01ADMIN | Construction | Build Out | IGMP | Phase 1 | Construction | FOH | Level 2 |  | BAB |  |
| QTS-10171 |  | Fire Riser #0271 // Install Light Fixtures | 5d | 2025-12-15 A | 2026-02-26 A | QTS-120000, QTS-8561 | 100% | 2025-12-15 | 2025-12-19 | QTS-PHX3 DC1 - 6 day w/ Holidays | 01ADMIN | Construction | Electrical | IGMP | Phase 1 | Construction | FOH | Level 2 |  | BAB |  |
| QTS-13281 |  | Fire Riser #0271 // Build Fire Risers | 10d | 2026-01-30 A | 2026-02-23 A | QTS-120000, QTS-6871, QTS-11491 | 100% | 2026-01-30 | 2026-02-10 | QTS-PHX3 DC1 - 6 day w/ Holidays | 01ADMIN | Construction | Mechanical | IGMP | Phase 1 | Construction | FOH | Level 2 |  | BAB |  |
| QTS-15091 |  | Fire Riser #0271 // Air Test System | 3d | 2026-05-15 A | 2026-05-15 A | QTS-13281 | 100% | 2026-05-15 | 2026-05-18 | QTS-PHX3 DC1 - 6 day w/ Holidays | 01ADMIN | Construction | Mechanical | IGMP | Phase 1 | Construction | FOH | Level 2 |  | BAB |  |
| QTS-15431 |  | Fire Riser #0271 // Install Fire Pump | 2d | 2026-05-18 A | 2026-05-19 A | QTS-15091, QTS-13281 | 100% |  |  | QTS-PHX3 DC1 - 6 day w/ Holidays | 01ADMIN | Construction | Mechanical | IGMP | Phase 1 | Construction | FOH | Level 2 |  | BAB |  |
| QTS-15731 |  | Fire Riser #0271 // Install Heater | 5d | 2026-05-19 A | 2026-05-19 A | QTS-15431 | 100% | 2026-05-19 | 2026-05-23 | QTS-PHX3 DC1 - 6 day w/ Holidays | 01ADMIN | Construction | Mechanical | IGMP | Phase 1 | Construction | FOH | Level 2 |  | BAB |  |
| QTS-1004040 |  | Fire Riser #0271 // Water Test System | 2d | 2026-06-08 A | 2026-06-08 A | QTS-15731 | 100% | 2026-07-15 | 2026-07-16 | QTS-PHX3 DC1 - 6 day w/ Holidays | 01ADMIN | Construction | Mechanical | IGMP |  |  | FOH | Level 1 | Mechanical | BAB | Phase 1 |
| QTS-1004050 |  | Fire Riser #0271 // City Inspection of Fire Pump/System | 2d | 2026-06-08 A | 2026-06-08 A | QTS-1004040 | 100% | 2026-07-17 | 2026-07-18 | QTS-PHX3 DC1 - 6 day w/ Holidays | 01ADMIN | Construction | Mechanical | IGMP |  |  | FOH | Level 1 | Mechanical | BAB | Phase 1 |

Notes:
- QTS-2541: allucent_notes_20251027_224008: David Wiltberger on 2025-09-09 14:09: walls delayed / David Wiltberger on 2025-09-24 03:09: Need drywall completed / David Wiltberger on 2025-09-30 09:09: Need to coordinate with buildout / David Wiltberger on 2025-10-14 12:10: need to finish walls / allucent_notes_20251021_145627: David Wiltberger on 2025-09-09 14:09: walls delayed / David Wiltberger on 2025-09-24 03:09: Need drywall completed / David Wiltberger on 2025-09-30 09:09: Need to coordinate with buildout / David Wiltberger on 2025-10-14 12:10: need to finish walls / allucent_notes_20251014_152335: David Wiltberger on 2025-09-09 14:09: walls delayed / David Wiltberger on 2025-09-24 03:09: Need drywall completed / David Wiltberger on 2025-09-30 09:09: Need to coordinate with buildout / David Wiltberger on 2025-10-14 12:10: need to finish walls / allucent_notes: 2025-09-09 14:09 - User: David Wiltberger - Date Added: 2025-09-09 14:09 - Note: walls delayed / 2025-09-24 03:09 - User: David Wiltberger - Date Added: 2025-09-24 03:09 - Note: Need drywall completed / 2025-09-30 09:09 - User: David Wiltberger - Date A
- QTS-3171: allucent_notes_20251014_152335: David Wiltberger on 2025-09-30 12:09: did not pass inspection / David Wiltberger on 2025-10-07 16:10: REI Delayed / allucent_notes: 2025-09-30 12:09 - User: David Wiltberger - Date Added: 2025-09-30 12:09 - Note: did not pass inspection / 2025-10-07 16:10 - User: David Wiltberger - Date Added: 2025-10-07 16:10 - Note: REI Delayed
- QTS-4811: allucent_notes_20251027_224008: Jake Shimmin on 2025-10-27T16:14:53.231Z: No plywood din this room / allucent_notes: 2025-10-27T16:14:53.231Z - User: Jake Shimmin - Date Added: 2025-10-27T16:14:53.231Z - Note: No plywood din this room
- QTS-4831: allucent_notes_20251118_192630: Jason Johnston on 2025-11-04 12:11: Need to find better predecessor for equipment set / Jason Johnston on 2025-11-10 14:11: Need updated predecessor / Jason Johnston on 2025-11-11 15:11: Finding the new pred / allucent_notes_20251111_182405: Jason Johnston on 2025-11-04 12:11: Need to find better predecessor for equipment set / Jason Johnston on 2025-11-10 14:11: Need updated predecessor / Jason Johnston on 2025-11-11 15:11: Finding the new pred / allucent_notes_20251104_160200: Jason Johnston on 2025-11-04 12:11: Need to find better predecessor for equipment set / allucent_notes: 2025-11-04 12:11 - User: Jason Johnston - Date Added: 2025-11-04 12:11 - Note: Need to find better predecessor for equipment set / 2025-11-10 14:11 - User: Jason Johnston - Date Added: 2025-11-10 14:11 - Note: Need updated predecessor / 2025-11-11 15:11
- QTS-6151: allucent_notes_20251118_192630: Jason Johnston on 2025-11-04 12:11: Install light fixtures moved out until light fixtures are onsite. / Jason Johnston on 2025-11-10 14:11: Need updated predecessor / Jason Johnston on 2025-11-11 15:11: Finding the new pred / allucent_notes_20251111_182405: Jason Johnston on 2025-11-04 12:11: Install light fixtures moved out until light fixtures are onsite. / Jason Johnston on 2025-11-10 14:11: Need updated predecessor / Jason Johnston on 2025-11-11 15:11: Finding the new pred / allucent_notes_20251104_160200: Jason Johnston on 2025-11-04 12:11: Install light fixtures moved out until light fixtures are onsite. / allucent_notes: 2025-11-04 12:11 - User: Jason Johnston - Date Added: 2025-11-04 12:11 - Note: Install light fixtures moved out until light fixtures are onsite. / 2025-11-10 14:11 - User: Jason Johnston - Date Added: 2025-11-10 14:11 - Note: Need updated predecessor
- QTS-6771: allucent_notes_20251202_153722: JD Kitchens on 2025-11-18T20:48:17.622Z: No cable racks in this room. please remove / allucent_notes_20251118_192630: JD Kitchens on 2025-11-18T20:48:17.622Z: No cable racks in this room. please remove / allucent_notes: 2025-11-18T20:48:17.622Z - User: JD Kitchens - Date Added: 2025-11-18T20:48:17.622Z - Note: No cable racks in this room. please remove
- QTS-2521: allucent_notes_20251209_203830: Zack Goertz on 2025-09-30T21:46:22.538Z: Set door is not supposed to be this early. HM frame is set and I believe is a different item. / allucent_notes_20251028_163138: Zack Goertz on 2025-09-30T21:46:22.538Z: Set door is not supposed to be this early. HM frame is set and I believe is a different item. / allucent_notes_20251027_224008: Zack Goertz on 2025-09-30T21:46:22.538Z: Set door is not supposed to be this early. HM frame is set and I believe is a different item. / allucent_notes: 2025-09-30T21:46:22.538Z - User: Zack Goertz - Date Added: 2025-09-30T21:46:22.538Z - Note: Set door is not supposed to be this early. HM frame is set and I believe is a different item.
- QTS-4821: allucent_notes_20251209_203830: Jason Johnston on 2025-11-04 12:11: Need to find better predecessor for equipment set / Jason Johnston on 2025-11-10 14:11: Need updated predecessor / Jason Johnston on 2025-11-11 15:11: Finding the new pred / David Wiltberger on 2025-12-02 13:46: Waiting for pad to be poured / allucent_notes_20251202_153722: Jason Johnston on 2025-11-04 12:11: Need to find better predecessor for equipment set / Jason Johnston on 2025-11-10 14:11: Need updated predecessor / Jason Johnston on 2025-11-11 15:11: Finding the new pred / David Wiltberger on 2025-12-02 13:46: Waiting for pad to be poured / allucent_notes_20251118_192630: Jason Johnston on 2025-11-04 12:11: Need to find better predecessor for equipment set / Jason Johnston on 2025-11-10 14:11: Need updated predecessor / Jason Johnston on 2025-11-11 15:11: Finding the new pred / allucent_notes_20251111_182405: Jason Johnston on 2025-11-04 12:11: Need to find better predecessor for equipment set / Jason Johnston on 2025-11-10 14:11: Need updated predecessor / Jason Johnston on 2025-11-11 15:11: Finding the new pred / allucent_notes_20251104_160200: Jason Johnston on 2025-11-04 12:11: Need to find better predecessor for equipment set / allucent_notes: 2025-11-04 12:11 - User: Jason Johnston - Date Added: 2025-11-04 12:11 - Note: Need to find better predecessor for equipment set / 2025-11-10 14:11 - User: Jason Johnston - Date Added: 2025-11-10 14:11 - Note: Need updated predecessor / 2025-11-11 15:11
- QTS-2491: allucent_notes_20251014_152335: David Wiltberger on 2025-09-09 14:09: walls delayed / David Wiltberger on 2025-10-07 15:10: need to inspect / allucent_notes: 2025-09-09 14:09 - User: David Wiltberger - Date Added: 2025-09-09 14:09 - Note: walls delayed / 2025-10-07 15:10 - User: David Wiltberger - Date Added: 2025-10-07 15:10 - Note: need to inspect
- QTS-3651: allucent_notes_20251104_160200: David Wiltberger on 2025-10-21 13:10: Changed schedule to address early access / allucent_notes_20251028_163138: David Wiltberger on 2025-10-21 13:10: Changed schedule to address early access / allucent_notes_20251027_224008: David Wiltberger on 2025-10-21 13:10: Changed schedule to address early access / allucent_notes_20251021_145627: David Wiltberger on 2025-10-21 13:10: Changed schedule to address early access / allucent_notes: 2025-10-21 13:10 - User: David Wiltberger - Date Added: 2025-10-21 13:10 - Note: Changed schedule to address early access
- QTS-8561: allucent_notes_20251104_160200: Jason Johnston on 2025-11-04 12:11: Painted early. / allucent_notes: 2025-11-04 12:11 - User: Jason Johnston - Date Added: 2025-11-04 12:11 - Note: Painted early.
- QTS-10181: allucent_notes_20251202_153722: Jason Johnston on 2025-11-10 14:11: will be delayed by SWN / Jason Johnston on 2025-11-11 17:11: SWO / David Wiltberger on 2025-11-17 16:11: out of sequence / allucent_notes_20251118_192630: Jason Johnston on 2025-11-10 14:11: will be delayed by SWN / Jason Johnston on 2025-11-11 17:11: SWO / David Wiltberger on 2025-11-17 16:11: out of sequence / allucent_notes_20251111_182405: Jason Johnston on 2025-11-10 14:11: will be delayed by SWN / Jason Johnston on 2025-11-11 17:11: SWO / allucent_notes: 2025-11-10 14:11 - User: Jason Johnston - Date Added: 2025-11-10 14:11 - Note: will be delayed by SWN / 2025-11-11 17:11 - User: Jason Johnston - Date Added: 2025-11-11 17:11 - Note: SWO / 2025-11-17 16:11 - User: David Wiltberger - Date Added: 2025-11-
- QTS-10171: allucent_notes_20251216_165335: Jason Johnston on 2025-11-10 14:11: will be delayed by SWN / Jason Johnston on 2025-11-11 17:11: SWO / David Wiltberger on 2025-12-02 13:47: priority room completed on 12/17 / allucent_notes_20251209_203830: Jason Johnston on 2025-11-10 14:11: will be delayed by SWN / Jason Johnston on 2025-11-11 17:11: SWO / David Wiltberger on 2025-12-02 13:47: priority room completed on 12/17 / allucent_notes_20251202_153722: Jason Johnston on 2025-11-10 14:11: will be delayed by SWN / Jason Johnston on 2025-11-11 17:11: SWO / David Wiltberger on 2025-12-02 13:47: priority room completed on 12/17 / allucent_notes_20251118_192630: Jason Johnston on 2025-11-10 14:11: will be delayed by SWN / Jason Johnston on 2025-11-11 17:11: SWO / allucent_notes_20251111_182405: Jason Johnston on 2025-11-10 14:11: will be delayed by SWN / Jason Johnston on 2025-11-11 17:11: SWO / allucent_notes_20251230_164549: Jason Johnston on 2025-11-10 14:11: will be delayed by SWN / Jason Johnston on 2025-11-11 17:11: SWO / David Wiltberger on 2025-12-02 13:47: priority room completed on 12/17 / David Wiltberger on 2025-12-30 16:06: access to room / Scheduler Notes: Jason Johnston on 2025-11-10 14:11: will be delayed by SWN / Jason Johnston on 2025-11-11 17:11: SWO / David Wiltberger on 2025-12-02 13:47: priority room completed on 12/17 / David Wiltberger on 2025-12-30 16:06: access to room / 1/13/26: Area not started. / Notes: 1/13/26: Area not started. / allucent_notes: 2025-11-10 14:11 - User: Jason Johnston - Date Added: 2025-11-10 14:11 - Note: will be delayed by SWN / 2025-11-11 17:11 - User: Jason Johnston - Date Added: 2025-11-11 17:11 - Note: SWO / 2025-12-02 13:47 - User: David Wiltberger - Date Added: 2025-12-
- QTS-13281: allucent_notes_20251209_203830: David Wiltberger on 2025-09-24 03:09: Need drywall completed / David Wiltberger on 2025-11-04 14:11: City sent stop order. Waiting for size of pipe needed / David Wiltberger on 2025-11-17 16:11: out of sequence / David Wiltberger on 2025-12-02 06:40: wall built late / allucent_notes_20251202_153722: David Wiltberger on 2025-09-24 03:09: Need drywall completed / David Wiltberger on 2025-11-04 14:11: City sent stop order. Waiting for size of pipe needed / David Wiltberger on 2025-11-17 16:11: out of sequence / David Wiltberger on 2025-12-02 06:40: wall built late / allucent_notes_20251118_192630: David Wiltberger on 2025-09-24 03:09: Need drywall completed / David Wiltberger on 2025-11-04 14:11: City sent stop order. Waiting for size of pipe needed / David Wiltberger on 2025-11-17 16:11: out of sequence / allucent_notes_20251111_182405: David Wiltberger on 2025-09-24 03:09: Need drywall completed / David Wiltberger on 2025-11-04 14:11: City sent stop order. Waiting for size of pipe needed / allucent_notes_20251104_160200: David Wiltberger on 2025-09-24 03:09: Need drywall completed / David Wiltberger on 2025-11-04 14:11: City sent stop order. Waiting for size of pipe needed / allucent_notes_20251028_163138: David Wiltberger on 2025-09-24 03:09: Need drywall completed / allucent_notes_20251027_224008: David Wiltberger on 2025-09-24 03:09: Need drywall completed / allucent_notes_20251021_145627: David Wiltberger on 2025-09-24 03:09: Need drywall completed / allucent_notes_20251230_164549: David Wiltberger on 2025-09-24 03:09: Need drywall completed / David Wiltberger on 2025-11-04 14:11: City sent stop order. Waiting for size of pipe needed / David Wiltberger on 2025-11-17 16:11: out of sequence / David Wiltberger on 2025-12-02 06:40: wall built late / Scheduler Notes: David Wiltberger on 2025-09-24 03:09: Need drywall completed / David Wiltberger on 2025-11-04 14:11: City sent stop order. Waiting for size / of pipe needed / David Wiltberger on 2025-11-17 16:11: out of sequence / David Wiltberger on 2025-12-02 06:40: wall built late / 1/20/26: BAM delayed this item by not completing domestic water piping. Tied / to first floor. / Notes: 1/20/26: BAM delayed this item by not completing domestic water piping. Tied to first floor. / allucent_notes: 2025-09-24 03:09 - User: David Wiltberger - Date Added: 2025-09-24 03:09 - Note: Need drywall completed / 2025-11-04 14:11 - User: David Wiltberger - Date Added: 2025-11-04 14:11 - Note: City sent stop order. Waiting for size of pipe needed / 2025-11-17

| ID | WBS | Activity | Duration | Start | Finish | Predecessors | Complete | Planned start | Planned finish | Total float | Free float | Calendar | Notes | Layton Discipline | Fragnet | Owner Impact Analysis | Fragnet Responsible Party | Contract | Notes/Preds | Allucent CSI Group | Location | TFO-CONST ONLY | NICK | Layton Super | Trade Partner |
| --- | --- | --- | --- | --- | --- | --- | --- | --- | --- | --- | --- | --- | --- | --- | --- | --- | --- | --- | --- | --- | --- | --- | --- | --- | --- |
|  | 6 | **Fragnet / RFI #741 Redesign for Additional Split Units** |  | 2025-12-11 | 2026-03-05 |  |  |  |  |  |  |  |  |  |  |  |  |  |  |  |  |  |  |  |  |
| QTS-1002960 |  | Design Change Notification Date | 1d | 2025-12-11 A | 2025-12-11 A | QTS-1371 SS | 100% |  |  |  |  | **GLOBAL - 5 Day Workweek w/ Basic Holidays | Procure Additional Split Units - Design change | Mechanical | Fragnet | Y | Quality Technology Services | BAB |  |  |  |  |  |  |  |
| QTS-1002970 |  | Redesign Recevied from QTS | 5d | 2025-12-12 A | 2025-12-17 A | QTS-1002960 | 100% | 2025-12-11 | 2025-12-17 |  |  | **GLOBAL - 5 Day Workweek w/ Basic Holidays |  | Mechanical | Fragnet | Y | Quality Technology Services | BAB |  |  |  |  |  |  |  |
| QTS-1002980 |  | Procure Additional Split Units | 11d | 2025-12-18 A | 2026-01-27 A | QTS-1002970 | 100% | 2025-12-18 | 2025-12-31 |  |  | QTS-PHX3 DC1 - 6 day w/ Holidays | 1/13/26: Procurement delayed due to holidays. | Mechanical | Fragnet | Y | Quality Technology Services | BAB |  |  |  |  |  |  |  |
| QTS-1003000 |  | Install Piping for Additional Units | 9d | 2025-12-29 A | 2026-03-03 A | QTS-1003020 FF+3d | 100% | 2025-12-29 | 2026-01-08 |  |  | QTS-PHX3 DC1 - 6 day w/ Holidays |  | Mechanical | Fragnet | Y | Quality Technology Services | BAB |  |  |  |  |  |  |  |
| QTS-1003010 |  | RFI #783 Submitted | 1d | 2026-01-06 A | 2026-01-06 A | QTS-1371 SS | 100% |  |  |  |  | **GLOBAL - 5 Day Workweek w/ Basic Holidays |  | Mechanical | Fragnet | Y | Quality Technology Services | BAB |  |  |  |  |  |  |  |
| QTS-1003020 |  | RFI #783 Approval | 4d | 2026-01-07 A | 2026-01-15 A | QTS-1003010 | 100% | 2026-01-07 | 2026-01-10 |  |  | QTS-PHX3 DC1 - 6 day w/ Holidays |  | Mechanical | Fragnet | Y | Quality Technology Services | BAB |  |  |  |  |  |  |  |
| QTS-1002990 |  | Install Split Units in MMR and IDF Rooms | 9d | 2026-02-11 A | 2026-02-13 A | QTS-1002980 | 100% | 2026-02-11 | 2026-02-20 |  |  | QTS-PHX3 DC1 - 6 day w/ Holidays |  | Mechanical | Fragnet | Y | Quality Technology Services | BAB |  |  |  |  |  |  |  |
| QTS-1003030 |  | Pressure Test Piping for Additional Units | 2d | 2026-03-04 A | 2026-03-05 A | QTS-1003000 | 100% |  |  |  |  | QTS-PHX3 DC1 - 6 day w/ Holidays |  | Mechanical | Fragnet | Y | Quality Technology Services | BAB |  |  |  |  |  |  |  |
|  | 7 | **FOH TFO** |  | 2026-02-02 | 2026-08-22 |  |  |  |  |  |  |  |  |  |  |  |  |  |  |  |  |  |  |  |  |
|  | 1 | **L2 / Flex Space** |  | 2026-02-02 | 2026-08-22 |  |  |  |  |  |  |  |  |  |  |  |  |  |  |  |  |  |  |  |  |
| QTS - 24191 |  | TFO Scope // Flex Space // Rework OH Fire Sprinkler | 6d | 2026-02-02 A | 2026-03-16 A | QTS-28311, QTS-26521, QTS-27271, QTS-29301 SS, QTS-42221, QTS-1005210 SS | 100% | 2026-01-28 | 2026-02-03 |  |  | QTS-PHX3 DC1 - 6 day w/ Holidays |  | Mechanical |  |  |  | TFO | QTS-29591 | 01ADMIN | FOH | TFO CONST | NICK |  |  |
| QTS - 24251 |  | TFO Scope // Flex Space // Framing Walls | 5d | 2026-03-10 A | 2026-04-14 A | QTS - 24191 SF | 100% | 2026-03-10 | 2026-03-14 |  |  | QTS-PHX3 DC1 - 6 day w/ Holidays |  | Build Out |  |  |  | TFO |  |  | FOH | TFO CONST | NICK |  |  |
| QTS - 24201 |  | TFO Scope // Flex Space // Framing Layout & MEP Blockouts | 3d | 2026-03-30 A | 2026-04-01 A | QTS - 24191 | 100% |  |  |  |  | QTS-PHX3 DC1 - 6 day w/ Holidays |  | Build Out |  |  |  | TFO |  | 01ADMIN | FOH | TFO CONST | NICK |  |  |
| QTS - 24261 |  | TFO Scope // Flex Space // Frame HM Doors | 2d | 2026-04-06 A | 2026-04-08 A | QTS - 24251 | 100% | 2026-04-06 | 2026-04-07 |  |  | QTS-PHX3 DC1 - 6 day w/ Holidays |  | Build Out |  |  |  | TFO |  |  | FOH | TFO CONST | NICK |  |  |
| QTS - 24221 |  | TFO Scope // Flex Space // OH Mechanical Rough-In | 3d | 2026-04-14 A | 2026-04-20 A | QTS - 24191 | 100% | 2026-04-14 | 2026-04-16 |  |  | QTS-PHX3 DC1 - 6 day w/ Holidays |  | Mechanical |  |  |  | TFO |  | 01ADMIN | FOH | TFO CONST | NICK |  |  |
| QTS - 24231 |  | TFO Scope // Flex Space // OH Plumbing Rough-In | 3d | 2026-04-14 A | 2026-04-20 A | QTS - 24191 | 100% | 2026-04-14 | 2026-04-16 |  |  | QTS-PHX3 DC1 - 6 day w/ Holidays |  | Mechanical |  |  |  | TFO |  | 01ADMIN | FOH | TFO CONST | NICK |  |  |
| QTS - 24271 |  | TFO Scope // Flex Space // Soffit Framing Layout | 2d | 2026-04-22 A | 2026-04-22 A | QTS - 24201 SS | 100% | 2026-04-22 | 2026-04-23 |  |  | QTS-PHX3 DC1 - 6 day w/ Holidays |  | Build Out |  |  |  | TFO |  | 01ADMIN | FOH | TFO CONST | NICK |  |  |
| QTS-0260 |  | FOH TFO Flex / Install MEP finishes | 3d | 2026-07-15 A | 2026-07-21 A | QTS - 24231 | 100% | 2026-07-20 | 2026-07-22 |  |  | **GLOBAL - 6 Day Workweek w/ Basic Holidays |  | Build Out |  |  |  | TFO |  |  |  |  | NICK | Ed Carter |  |
| QTS-0230 |  | FOH TFO Flex / Install Window shades | 4d | 2026-07-29 A | 2026-08-01 A | QTS-0260, A1040 | 100% | 2026-08-05 | 2026-08-08 |  |  | **GLOBAL - 6 Day Workweek w/ Basic Holidays | Update? | Build Out |  |  |  | TFO |  |  |  |  | NICK | Ed Carter | Custom Design |
| QTS-0250 |  | FOH TFO Flex / Install Countertop | 2d | 2026-08-13 A | 2026-08-15 A | QTS - 26481, QTS - 26491 | 100% | 2026-08-14 | 2026-08-15 |  |  | **GLOBAL - 6 Day Workweek w/ Basic Holidays |  | Build Out |  |  |  | TFO |  |  |  | TFO CONST | NICK | Ben Ribble | ISEC |
| QTS-0240 |  | FOH TFO Flex / Install Millwork | 2d | 2026-08-19 | 2026-08-20 | QTS - 24271, QTS - 26191, QTS - 26201, QTS - 26181 |  |  |  | -86d | 14d | **GLOBAL - 6 Day Workweek w/ Basic Holidays | Plumbing line in the way of Millwork | Build Out |  |  |  | TFO |  |  |  | TFO CONST | NICK | Ben Ribble | ISEC |
| QTS-0270 |  | FOH TFO Flex / Install Appliances | 4d | 2026-08-19 | 2026-08-22 | QTS-0260, QTS-0250 FF, QTS - 26451, QTS - 26461 |  |  |  | 8d | 55d | **GLOBAL - 6 Day Workweek w/ Basic Holidays |  | Build Out |  |  |  | TFO |  |  |  | TFO CONST | NICK | Ben Ribble | ISEC |
|  | 1 | **Fragnet / TFO RFI #158 Ceiling & Basket Tray Height** |  | 2026-04-20 | 2026-04-28 |  |  |  |  |  |  |  |  |  |  |  |  |  |  |  |  |  |  |  |  |
| QTS - 26251 |  | Fragnet / RFI #158 Submitted | 1d | 2026-04-20 A | 2026-04-20 A | QTS-1371 | 100% |  |  |  |  | QTS-PHX3 DC1 - 6 day w/ Holidays | RFI 158 - Site Lighting Panel Discrepancy | Build Out | Fragnet |  | Performance Contracting Inc. | TFO |  |  | FOH | TFO CONST | NICK |  |  |
| QTS - 26261 |  | Fragnet / RFI #158 Design Response | 7d | 2026-04-21 A | 2026-04-28 A | QTS - 26251 | 100% | 2026-04-24 | 2026-05-01 |  |  | QTS-PHX3 DC1 - 6 day w/ Holidays |  | Build Out | Fragnet |  | Performance Contracting Inc. | TFO |  |  | FOH | TFO CONST | NICK |  |  |

Notes:
- QTS-1002960: Scheduler Notes: Procure Additional Split Units - Design change
- QTS-1002980: Scheduler Notes: 1/13/26: Procurement delayed due to holidays.
- QTS - 24191: allucent_notes_20251209_203830: Jason Johnston on 2025-12-09 20:32: Need update from team / allucent_notes: 2025-12-09 20:32 - User: Jason Johnston - Date Added: 2025-12-09 20:32 - Note: Need update from team
- QTS - 26251: Scheduler Notes: RFI 158 - Site Lighting Panel Discrepancy

| ID | WBS | Activity | Duration | Start | Finish | Predecessors | Complete | Remaining | Planned start | Planned finish | Total float | Free float | Calendar | Allucent CSI Group | Layton Discipline | Location | TFO-CONST ONLY | Contract | NICK | Notes | Layton Super | Schedule Note | Fragnet | Fragnet Responsible Party | Trade Partner | If Not Started or Finished Why? |
| --- | --- | --- | --- | --- | --- | --- | --- | --- | --- | --- | --- | --- | --- | --- | --- | --- | --- | --- | --- | --- | --- | --- | --- | --- | --- | --- |
|  | 2 | **Remaining Scope** |  | 2026-04-20 | 2026-07-02 |  |  |  |  |  |  |  |  |  |  |  |  |  |  |  |  |  |  |  |  |  |
| QTS - 24211 |  | TFO Scope // Flex Space // OH Electrical Rough-In | 5d | 2026-04-20 A | 2026-04-24 A | QTS - 24201, QTS - 24191 | 100% |  |  |  |  |  | QTS-PHX3 DC1 - 6 day w/ Holidays | 01ADMIN | Electrical | FOH | TFO CONST | TFO | NICK |  |  |  |  |  |  |  |
| QTS - 24241 |  | TFO Scope // Flex Space // In-Wall MEP, AV, Security & FA | 10d | 2026-04-20 A | 2026-04-24 A | QTS - 24261 SS, QTS - 24251 | 100% |  | 2026-04-20 | 2026-04-30 |  |  | QTS-PHX3 DC1 - 6 day w/ Holidays |  | Electrical | FOH | TFO CONST | TFO | NICK |  |  |  |  |  |  |  |
| QTS - 24291 |  | TFO Scope // Flex Space // HVAC/Lighting Soffit Rough-In | 5d | 2026-04-21 A | 2026-04-27 A | QTS - 24281 FF | 100% |  | 2026-04-21 | 2026-04-25 |  |  | QTS-PHX3 DC1 - 6 day w/ Holidays |  | Electrical | FOH | TFO CONST | TFO | NICK | 4/24: HVAC started. |  |  |  |  |  |  |
| QTS - 24311 |  | TFO Scope // Flex Space // OH MEP Inspections | 1d | 2026-04-28 A | 2026-04-28 A | QTS - 24211, QTS - 24221, QTS - 24231, QTS - 24291 | 100% |  |  |  |  |  | QTS-PHX3 DC1 - 6 day w/ Holidays |  | Electrical | FOH | TFO CONST | TFO | NICK |  |  |  |  |  |  |  |
| QTS - 24301 |  | TFO Scope // Flex Space // In-Wall MEP Inspections | 1d | 2026-04-30 A | 2026-04-30 A | QTS - 24241, QTS - 24261 | 100% |  |  |  |  |  | QTS-PHX3 DC1 - 6 day w/ Holidays |  | Electrical | FOH | TFO CONST | TFO | NICK |  |  |  |  |  |  |  |
| QTS - 24321 |  | TFO Scope // Flex Space // Hang GWB Soffits | 4d | 2026-05-01 A | 2026-05-05 A | QTS - 24311 | 100% |  |  |  |  |  | QTS-PHX3 DC1 - 6 day w/ Holidays |  | Build Out | FOH | TFO CONST | TFO | NICK |  | Ed Carter |  |  |  |  |  |
| QTS - 24331 |  | TFO Scope // Flex Space // Hang GWB Drywall | 5d | 2026-05-08 A | 2026-05-13 A | QTS - 24301 | 100% |  |  |  |  |  | QTS-PHX3 DC1 - 6 day w/ Holidays |  | Build Out | FOH | TFO CONST | TFO | NICK |  | Ed Carter |  |  |  |  |  |
| QTS - 24351 |  | TFO Scope // Flex Space // Tape & Finish Soffits | 8d | 2026-05-08 A | 2026-05-16 A | QTS - 24321 | 100% |  |  |  |  |  | QTS-PHX3 DC1 - 6 day w/ Holidays |  | Build Out | FOH | TFO CONST | TFO | NICK |  | Ed Carter |  |  |  |  |  |
| QTS - 24281 |  | TFO Scope // Flex Space // Soffit Framing | 4d | 2026-05-11 A | 2026-05-15 A | QTS - 24221, QTS - 24231, QTS - 24271, QTS - 26261 | 100% |  | 2026-05-11 | 2026-05-14 |  |  | QTS-PHX3 DC1 - 6 day w/ Holidays |  | Build Out | FOH | TFO CONST | TFO | NICK | 4/28: Impacted by TFO RFI #158. | Ed Carter |  |  |  |  |  |
| QTS - 24341 |  | TFO Scope // Flex Space // Tape & Finish Drywall | 10d | 2026-05-14 A | 2026-05-18 A | QTS - 24331 | 100% |  | 2026-05-14 | 2026-05-26 |  |  | QTS-PHX3 DC1 - 6 day w/ Holidays |  | Build Out | FOH | TFO CONST | TFO | NICK |  | Ed Carter |  |  |  |  |  |
| QTS - 24361 |  | TFO Scope // Flex Space // Prime & Paint Soffit & Walls | 4d | 2026-05-19 A | 2026-05-28 A | QTS - 24341 | 100% |  | 2026-05-19 | 2026-05-22 |  |  | QTS-PHX3 DC1 - 6 day w/ Holidays |  | Build Out | FOH | TFO CONST | TFO | NICK |  | Jay Perkins |  |  |  |  |  |
| QTS - 24371 |  | TFO Scope // Flex Space // Install Grid | 6d | 2026-05-29 A | 2026-06-01 A | QTS - 24361, QTS - 24351 | 100% |  | 2026-05-29 | 2026-06-04 |  |  | QTS-PHX3 DC1 - 6 day w/ Holidays |  | Build Out | FOH | TFO CONST | TFO | NICK |  | Ed Carter |  |  |  |  |  |
| QTS - 25671 |  | TFO Scope // Flex Space // Install Frames For Security Storefront | 1d | 2026-06-01 A | 2026-06-01 A | QTS - 24361, QTS - 26001 | 100% |  | 2026-06-06 | 2026-06-06 |  |  | QTS-PHX3 DC1 - 6 day w/ Holidays |  | Build Out | FOH | TFO CONST | TFO | NICK |  | Ed Carter |  |  |  |  |  |
| QTS - 25681 |  | TFO Scope // Flex Space // Install Interior Windows and Doors | 5d | 2026-06-01 A | 2026-06-05 A | QTS - 25671 | 100% |  | 2026-06-08 | 2026-06-12 |  |  | QTS-PHX3 DC1 - 6 day w/ Holidays |  | Build Out | FOH | TFO CONST | TFO | NICK |  | Ed Carter |  |  |  |  |  |
| QTS - 24421 |  | TFO Scope // Flex Space // OH Inspection | 6d | 2026-06-02 A | 2026-06-11 A | QTS - 24361 | 100% |  | 2026-06-06 | 2026-06-12 |  |  | QTS-PHX3 DC1 - 6 day w/ Holidays |  | Build Out | FOH | TFO CONST | TFO | NICK |  | Ed Carter |  |  |  |  |  |
| QTS - 26541 |  | TFO Scope // Flex Space // ACT Installation | 3d | 2026-06-15 A | 2026-06-25 A | QTS - 24421 | 100% |  | 2026-06-15 | 2026-06-17 |  |  | QTS-PHX3 DC1 - 6 day w/ Holidays |  | Build Out | FOH | TFO CONST | TFO | NICK |  | Ed Carter |  |  |  |  |  |
| QTS - 24381 |  | TFO Scope // Flex Space // Install Lighting | 5d | 2026-06-19 A | 2026-06-24 A | QTS - 24371, QTS - 24361, QTS - 26541 SS | 100% |  | 2026-06-26 | 2026-07-01 |  |  | QTS-PHX3 DC1 - 6 day w/ Holidays |  | Electrical | FOH | TFO CONST | TFO | NICK |  | Electrical |  |  |  |  |  |
| QTS - 24431 |  | TFO Scope // Flex Space // Carpet Flooring Installation | 6d | 2026-06-25 A | 2026-07-02 A | QTS - 24421, QTS - 25681, QTS - 24381 | 100% |  | 2026-07-02 | 2026-07-10 |  |  | QTS-PHX3 DC1 - 6 day w/ Holidays |  | Build Out | FOH | TFO CONST | TFO | NICK |  | Ed Carter |  |  |  |  |  |
|  | 2 | **MDF #0221** |  | 2026-04-23 | 2026-08-19 |  |  |  |  |  |  |  |  |  |  |  |  |  |  |  |  |  |  |  |  |  |
| QTS-1011950 |  | Fragnet // TFO Scope // MDF #221 // Contractual Approval (E2) | 15d | 2026-04-23 A | 2026-05-12 A | QTS-1371 | 100% |  | 2026-04-23 | 2026-05-09 |  |  | QTS-PHX3 DC1 - 6 day w/ Holidays |  | LV | FOH | TFO CONST | TFO | NICK |  |  | IDF 0213? MDF #0221 does not appear to be in drawings | Fragnet | E2 Optics, LLC |  |  |
| QTS-1012010 |  | TFO Scope // MDF #221 // Framing + Wall Backing | 5d | 2026-05-04 A | 2026-05-13 A | QTS - 24251 | 100% |  | 2026-05-04 | 2026-05-08 |  |  | QTS-PHX3 DC1 - 6 day w/ Holidays |  | Build Out | FOH | TFO CONST | TFO | NICK |  | Jay Perkins | IDF 0213? MDF #0221 does not appear to be in drawings |  |  |  |  |
| QTS-1012020 |  | TFO Scope // MDF #221 // Patch, Mud, Tape | 4d | 2026-05-11 A | 2026-05-14 A | QTS-1012010 | 100% |  |  |  |  |  | QTS-PHX3 DC1 - 6 day w/ Holidays |  | LV | FOH | TFO CONST | TFO | NICK |  |  | IDF 0213? MDF #0221 does not appear to be in drawings |  |  |  |  |
| QTS-1012030 |  | TFO Scope // MDF #221 // Install Split Units (3) | 3d | 2026-05-19 A | 2026-05-20 A | QTS-1012020 | 100% |  | 2026-05-19 | 2026-05-21 |  |  | QTS-PHX3 DC1 - 6 day w/ Holidays |  | Mechanical | FOH | TFO CONST | TFO | NICK |  |  | IDF 0213? MDF #0221 does not appear to be in drawings |  |  |  |  |
| QTS-1012090 |  | TFO Scope // MDF #221 // Paint | 2d | 2026-05-19 A | 2026-05-19 A | QTS-1012020 | 100% |  | 2026-05-19 | 2026-05-20 |  |  | QTS-PHX3 DC1 - 6 day w/ Holidays |  | Build Out | FOH | TFO CONST | TFO | NICK |  | Jay Perkins |  |  |  |  |  |
| QTS-1012100 |  | TFO Scope // MDF #221 // Install Dog House | 1d | 2026-05-19 A | 2026-05-21 A | QTS-1012030 SS, QTS-1012030 FF | 100% |  | 2026-05-19 | 2026-05-19 |  |  | QTS-PHX3 DC1 - 6 day w/ Holidays |  | Mechanical | FOH | TFO CONST | TFO | NICK |  |  | IDF 0213? MDF #0221 does not appear to be in drawings |  |  |  |  |
| QTS-1012040 |  | TFO Scope // MDF #221 // Condensing Unit Tie-In | 3d | 2026-05-20 A | 2026-05-22 A | QTS-1012030, QTS-1012100 | 100% |  |  |  |  |  | QTS-PHX3 DC1 - 6 day w/ Holidays |  | Mechanical | FOH | TFO CONST | TFO | NICK |  |  |  |  |  |  |  |
| QTS-1000180 |  | TFO Scope // MDF #221 // Install Telecom Racks | 3d | 2026-05-26 A | 2026-05-28 A | QTS-1371 SS, QTS-1011950, QTS-1012090, QTS-1012040 | 100% |  |  |  |  |  | QTS-PHX3 DC1 - 6 day w/ Holidays |  | LV | FOH | TFO CONST | TFO | NICK |  |  |  |  |  |  |  |
| QTS-1000190 |  | TFO Scope // MDF #221 // Rack & Stack | 2d | 2026-05-29 A | 2026-05-29 A | QTS-1000180 | 100% |  | 2026-05-29 | 2026-05-30 |  |  | QTS-PHX3 DC1 - 6 day w/ Holidays |  | LV | FOH | TFO CONST | TFO | NICK |  |  |  |  |  |  |  |
| QTS-1000200 |  | TFO Scope // MDF #221 // Level 2 - Technology Pathway FOH - A Loop | 3d | 2026-05-29 A | 2026-06-01 A | QTS-1000180 | 100% |  |  |  |  |  | QTS-PHX3 DC1 - 6 day w/ Holidays |  | LV | FOH | TFO CONST | TFO | NICK |  |  |  |  |  |  |  |
| QTS-1000220 |  | TFO Scope // MDF #221 // Level 2 - Technology Pathway FOH - B Loop | 3d | 2026-06-02 A | 2026-07-22 A | QTS-1000200 | 100% |  | 2026-06-06 | 2026-06-09 |  |  | QTS-PHX3 DC1 - 6 day w/ Holidays |  | LV | FOH | TFO CONST | TFO | NICK |  | Low Voltage |  |  |  | E2 |  |
| QTS-1000230 |  | TFO Scope // MDF #221 // Level 1 - Technology Pathway FOH - A Loop | 3d | 2026-06-02 A | 2026-07-22 A | QTS-1000220 SS, QTS-1000220 FF | 100% |  | 2026-06-18 | 2026-06-20 |  |  | QTS-PHX3 DC1 - 6 day w/ Holidays |  | LV | FOH | TFO CONST | TFO | NICK |  | Low Voltage |  |  |  | E2 |  |
| QTS-1000250 |  | TFO Scope // MDF #221 // Wire & Telecom - Terminations | 3d | 2026-07-28 A | 2026-08-19 | QTS-1000220, QTS-1000190 | 67% | 1d | 2026-08-03 | 2026-08-05 | -56d | 0d |  |  | LV | FOH | TFO CONST | TFO | NICK |  | Low Voltage |  |  |  | E2 |  |
| QTS-1000240 |  | TFO Scope // MDF #221 // Level 1 - Technology Pathway FOH - B Loop | 3d | 2026-07-29 A | 2026-07-31 A | QTS-1000230 | 100% |  | 2026-08-05 | 2026-08-07 |  |  | QTS-PHX3 DC1 - 6 day w/ Holidays |  | LV | FOH | TFO CONST | TFO | NICK |  | Electrical |  |  |  | Prime |  |
| QTS-1000210 |  | TFO Scope // MDF #221 // Install Security Devices / Hoffman Enclosures | 3d | 2026-08-04 A | 2026-08-04 A | QTS-1000240 | 100% |  | 2026-08-06 | 2026-08-08 |  |  | QTS-PHX3 DC1 - 6 day w/ Holidays |  | LV | FOH | TFO CONST | TFO | NICK |  | Low Voltage |  |  |  | Securitas |  |
| QTS-1000260 |  | TFO Scope // MDF #221 // Pull Wire | 1d | 2026-08-19 | 2026-08-19 | QTS-1000190 |  |  |  |  | -66d | 52d | QTS-PHX3 DC1 - 6 day w/ Holidays |  | LV | FOH | TFO CONST | TFO | NICK |  | Low Voltage |  |  |  | E2 | Waiting on contract to be signed |

Notes:
- QTS - 24291: Scheduler Notes: 4/24: HVAC started.
- QTS - 24281: Scheduler Notes: 4/28: Impacted by TFO RFI #158.
- QTS-1011950: Scheduler Notes: TFO Scope // MDF #221 // Contractual Approval (E2)
- QTS-1000260: Scheduler Notes: 4/28: Impacted by TFO RFI #158.

| ID | WBS | Activity | Duration | Start | Finish | Predecessors | Complete | Planned start | Planned finish | Calendar | Allucent CSI Group | Project Section | Layton Discipline | Baseline | Phase-1-1 | Project Section-1 | Location | Level | Contract | Phase-1 | Layton Super | Trade Partner |
| --- | --- | --- | --- | --- | --- | --- | --- | --- | --- | --- | --- | --- | --- | --- | --- | --- | --- | --- | --- | --- | --- | --- |
|  | 2 | **Back of House (BOH)** |  | 2025-10-08 | 2026-11-10 |  |  |  |  |  |  |  |  |  |  |  |  |  |  |  |  |  |
|  | 3 | **Back of House / Mechanical Yard Buildout** |  | 2025-10-20 | 2026-05-18 |  |  |  |  |  |  |  |  |  |  |  |  |  |  |  |  |  |
| QTS-41731 |  | BOH / Mechanical Yard // Form, Reinforce, & Pour Thickened Slab On Grade for Transformer & Generator | 8d | 2025-10-20 A | 2025-11-03 A | QTS-42521, QTS-42511 SS | 100% | 2025-10-20 | 2025-10-29 |  | 01ADMIN | Construction | Core & Shell | IGMP | Phase 1 | Construction | Gen Yard | Level 1 | BAB |  |  |  |
| QTS-41761 |  | BOH / Mechanical Yard // OFCI - L2 SET IN PLACE - Eq Type # - House Transformer - 1 units | 3d | 2025-11-04 A | 2025-11-04 A | QTS-41731, QTS-6991, QTS-36141 | 100% | 2025-11-05 | 2025-11-07 |  | 01ADMIN | Construction | Electrical | IGMP | Phase 1 | Construction | Gen Yard | Level 1 | BAB |  |  |  |
| QTS-41881 |  | BOH / Mechanical Yard // OFCI - L2 SET IN PLACE - Eq Type # - House Generator - 1 units | 1d | 2025-11-25 A | 2025-11-25 A | QTS-39771, QTS-39761, QTS-39751, QTS-39741, QTS-41761 | 100% |  |  |  | 01ADMIN | Construction | Electrical |  | Phase 1 | Construction | Gen Yard | Level 1 | BAB |  |  |  |
| QTS-41821 |  | BOH / Mechanical Yard // Install Raceway from Generators to SWD | 4d | 2025-11-26 A | 2025-12-03 A | QTS-41881 | 100% |  |  |  | 01ADMIN | Construction | Electrical | IGMP | Phase 1 | Construction | Gen Yard | Level 1 | BAB |  |  |  |
| QTS-41811 |  | BOH / Mechanical Yard // Pull & Terminate from Transformer to UPS | 8d | 2026-02-16 A | 2026-03-05 A | QTS-42081, QTS-41821 SS, QTS-41761 | 100% | 2026-02-16 | 2026-02-24 | QTS-PHX3 DC1 - 6 day w/ Holidays | 01ADMIN | Construction | Electrical | IGMP | Phase 1 | Construction | Gen Yard | Level 1 | BAB |  |  |  |
| QTS-41831 |  | BOH / Mechanical Yard // Pull & Terminate from Generators to UPS | 1d | 2026-02-16 A | 2026-03-04 A | QTS-42081, QTS-41821 | 100% | 2026-03-04 | 2026-03-04 | QTS-PHX3 DC1 - 6 day w/ Holidays | 01ADMIN | Construction | Electrical | IGMP | Phase 1 | Construction | Gen Yard | Level 1 | BAB |  |  |  |
| QTS-1010390 |  | BOH / Mechanical Yard // OFCI - L2 SET IN PLACE - Eq Type # - House Generator - SCR/Ship Loose - 1 units | 1d | 2026-05-18 A | 2026-05-18 A | QTS-1010380 | 100% |  |  |  | 01ADMIN | Construction | Electrical |  | Phase 1 | Construction | Gen Yard | Level 1 | BAB |  |  |  |
|  | 1 | **Level 1 Back of House** |  | 2025-11-07 | 2026-11-10 |  |  |  |  |  |  |  |  |  |  |  |  |  |  |  |  |  |
|  | 3 | **L1 / BOH // Tenant Improvement** |  | 2025-11-12 | 2026-03-30 |  |  |  |  |  |  |  |  |  |  |  |  |  |  |  |  |  |
| QTS-25751 |  | TI Area J & K // Frame Walls | 6d | 2025-11-12 A | 2025-11-26 A | QTS-99500, QTS-23281 | 100% | 2025-11-06 | 2025-11-13 |  | 01ADMIN | Construction | Build Out | IGMP |  | Construction | BOH | Level 1 | BAB | Phase 1 |  |  |
| QTS-47021 |  | TI Area J & K // Prime & Paint Exposed Structure | 3d | 2025-11-13 A | 2025-11-20 A | QTS-23281, QTS-23741 | 100% | 2025-11-11 | 2025-11-13 |  | 01ADMIN | Construction | Build Out | IGMP | Phase 1 | Construction | FOH | Level 1 | BAB |  |  |  |
| QTS-25461 |  | TI Area J & K // Layout Walls | 3d | 2025-11-21 A | 2025-11-25 A | QTS-47021 | 100% | 2025-11-20 | 2025-11-24 |  | 01ADMIN | Construction | Build Out | IGMP |  | Construction | BOH | Level 1 | BAB | Phase 1 |  |  |
| QTS-26091 |  | TI Area J & K // Layout Freight Elevator Front & Install Shaft Wall | 10d | 2025-11-21 A | 2025-12-08 A | QTS-25461 SS, QTS-14851 | 100% | 2025-11-20 | 2025-12-05 |  | 01ADMIN | Construction | Build Out | IGMP |  | Construction | BOH | Level 1 | BAB | Phase 1 |  |  |
| QTS-26061 |  | TI Area J & K // Rough In-Wall Electrical, Security, & Access Controls | 8d | 2025-12-01 A | 2026-03-10 A | QTS-25751, QTS-9871 | 100% | 2025-11-20 | 2025-12-01 | QTS-PHX3 DC1 - 6 day w/ Holidays | 01ADMIN | Construction | Electrical | IGMP |  | Construction | BOH | Level 1 | BAB | Phase 1 |  |  |
| QTS-26081 |  | TI Area J & K // Rough Overhead Fire Sprinkler | 10d | 2025-12-02 A | 2025-12-17 A | QTS-120000, QTS-99500, QTS-23281 | 100% | 2025-11-21 | 2025-12-08 |  | 01ADMIN | Construction | Mechanical | IGMP |  | Construction | BOH | Level 1 | BAB | Phase 1 |  |  |
| QTS-45591 |  | TI Area J & K // Set HM Frames | 6d | 2025-12-10 A | 2025-12-19 A | QTS-99620, QTS-25751 FF | 100% | 2025-12-10 | 2025-12-17 |  | 01ADMIN | Construction | Build Out | IGMP | Phase 1 | Construction | BOH | Level 1 | BAB |  |  |  |
| QTS-26101 |  | TI Area J & K // Rough Overhead Electrical | 10d | 2025-12-16 A | 2026-03-30 A | QTS-25751 | 100% | 2025-12-16 | 2025-12-27 | QTS-PHX3 DC1 - 6 day w/ Holidays | 01ADMIN | Construction | Electrical | IGMP |  | Construction | BOH | Level 1 | BAB | Phase 1 |  |  |
| QTS-26071 |  | TI Area J & K // Rough In-Wall Plumbing | 4d | 2026-02-02 A | 2026-03-20 A | QTS-25751 | 100% | 2026-01-28 | 2026-01-31 | QTS-PHX3 DC1 - 6 day w/ Holidays | 01ADMIN | Construction | Mechanical | IGMP |  | Construction | BOH | Level 1 | BAB | Phase 1 |  |  |
| QTS-27131 |  | TI Area J & K // Rough Overhead Plumbing & Refrigerant Piping | 8d | 2026-02-02 A | 2026-03-06 A | QTS-26101 SS, QTS-25751, QTS-25461 | 100% | 2026-01-28 | 2026-02-05 | QTS-PHX3 DC1 - 6 day w/ Holidays | 01ADMIN | Construction | Mechanical | IGMP |  | Construction | BOH | Level 1 | BAB | Phase 1 |  |  |
| QTS-45601 |  | TI Area J & K // Pressure Test Overhead Plumbing & Refrigerant Piping | 2d | 2026-03-07 A | 2026-03-09 A | QTS-27131 | 100% |  |  | QTS-PHX3 DC1 - 6 day w/ Holidays |  | Construction | Mechanical | IGMP | Phase 1 | Construction | BOH | Level 1 | BAB |  |  |  |
| QTS-1009120 |  | TI Area J & K // Rough In Wall Electrical for Exterior Lights | 2d | 2026-03-18 A | 2026-03-30 A | QTS-26071 | 100% | 2026-03-18 | 2026-03-19 | QTS-PHX3 DC1 - 6 day w/ Holidays | 01ADMIN | Construction | Electrical | IGMP |  | Construction | BOH | Level 1 | BAB | Phase 1 |  |  |
|  | 1 | **L1 / BOH // Tenant Improvement - Fragnet Delays** |  |  |  |  |  |  |  |  |  |  |  |  |  |  |  |  |  |  |  |  |
|  | 7 | **L1 / BOH // IDF #1064 (Early Access)** |  | 2025-11-24 | 2026-07-17 |  |  |  |  |  |  |  |  |  |  |  |  |  |  |  |  |  |
| QTS-26251 |  | IDF Room #1064 // Frame Walls | 2d | 2025-11-24 A | 2025-12-12 A | QTS-25751 | 100% | 2025-11-24 | 2025-11-25 |  | 01ADMIN | Construction | Build Out | IGMP |  |  | BOH | Level 1 | BAB | Phase 1 |  |  |
| QTS-26361 |  | IDF Room #1064 // Rough In Wall Electrical | 10d | 2025-11-26 A | 2025-12-16 A | QTS-26251 FF+1d | 100% | 2025-11-26 | 2025-12-11 |  | 01ADMIN | Construction | Electrical | IGMP |  |  | BOH | Level 1 | BAB | Phase 1 |  |  |
| QTS-26691 |  | IDF Room #1064 // Hang Drywall | 1d | 2025-12-05 A | 2025-12-18 A | QTS-26481 FF+1d | 100% | 2025-12-05 | 2025-12-05 |  | 01ADMIN | Construction | Build Out | IGMP |  |  | BOH | Level 1 | BAB | Phase 1 |  |  |
| QTS-26371 |  | IDF Room #1064 // Set HM Frame | 1d | 2025-12-12 A | 2025-12-12 A | QTS-99620, QTS-26251 FF | 100% | 2025-12-10 | 2025-12-10 |  | 01ADMIN | Construction | Build Out | IGMP |  |  | BOH | Level 1 | BAB | Phase 1 |  |  |
| QTS-26481 |  | IDF Room #1064 // In Wall Inspection | 1d | 2025-12-17 A | 2025-12-17 A | QTS-26361 | 100% |  |  |  | 01ADMIN | Construction | Mechanical | IGMP |  |  | BOH | Level 1 | BAB | Phase 1 |  |  |
| QTS-26381 |  | IDF Room #1064 // Rough Overhead Fire Sprinkler | 2d | 2025-12-18 A | 2025-12-19 A | QTS-26081 | 100% |  |  |  | 01ADMIN | Construction | Mechanical | IGMP |  |  | BOH | Level 1 | BAB | Phase 1 |  |  |
| QTS-26771 |  | IDF Room #1064 // Tape & Finish Drywall | 3d | 2025-12-29 A | 2026-01-07 A | QTS-27571, QTS-26691 | 100% | 2025-12-29 | 2025-12-31 | QTS-PHX3 DC1 - 6 day w/ Holidays | 01ADMIN | Construction | Build Out | IGMP |  |  | BOH | Level 1 | BAB | Phase 1 |  |  |
| QTS-27211 |  | IDF Room #1064 // Prime & Paint | 2d | 2026-01-09 A | 2026-01-10 A | QTS-26771 | 100% |  |  | QTS-PHX3 DC1 - 6 day w/ Holidays | 01ADMIN | Construction | Build Out | IGMP |  |  | BOH | Level 1 | BAB | Phase 1 |  |  |
| QTS-27521 |  | IDF Room #1064 // Plywood Install | 1d | 2026-01-17 A | 2026-01-17 A | QTS-26771 | 100% |  |  | QTS-PHX3 DC1 - 6 day w/ Holidays | 01ADMIN | Construction | Build Out | IGMP |  |  | BOH | Level 1 | BAB | Phase 1 |  |  |
| QTS-0280 |  | BOH IDF 1064 / Paint hard lid | 1d | 2026-07-15 A | 2026-07-15 A | QTS-27521 | 100% | 2026-07-22 | 2026-07-22 | **GLOBAL - 6 Day Workweek w/ Basic Holidays |  |  | Build Out |  |  |  |  |  | BAB |  | Ed Carter | PPC |
| QTS-0290 |  | BOH IDF 1064 / Install Finish flooring | 1d | 2026-07-17 A | 2026-07-17 A | QTS-0280 | 100% | 2026-07-22 | 2026-07-22 | **GLOBAL - 6 Day Workweek w/ Basic Holidays |  |  | Build Out |  |  |  |  |  | BAB |  | Ben Ribble | Wholesale Flooring |
| QTS-0300 |  | BOH IDF 1064 / Install wall base | 2d | 2026-07-17 A | 2026-07-17 A | QTS-0290 | 100% | 2026-07-23 | 2026-07-24 | **GLOBAL - 6 Day Workweek w/ Basic Holidays |  |  | Build Out |  |  |  |  |  | BAB |  | Ben Ribble | Wholesale Flooring |

Notes:
- QTS-41731: allucent_notes_20251104_160200: Jason Johnston on 2025-10-07 13:10: Waiting on underground MV to be complete. / Jason Johnston on 2025-10-07 13:10: Increasing duration to account for additional equipment needed for BOH power. / Jason Johnston on 2025-10-14 09:10: Area unavailable to Suntec / Jason Johnston on 2025-11-04 10:11: Poured late / allucent_notes_20251028_163138: Jason Johnston on 2025-10-07 13:10: Waiting on underground MV to be complete. / Jason Johnston on 2025-10-07 13:10: Increasing duration to account for additional equipment needed for BOH power. / Jason Johnston on 2025-10-14 09:10: Area unavailable to Suntec / allucent_notes_20251027_224008: Jason Johnston on 2025-10-07 13:10: Waiting on underground MV to be complete. / Jason Johnston on 2025-10-07 13:10: Increasing duration to account for additional equipment needed for BOH power. / Jason Johnston on 2025-10-14 09:10: Area unavailable to Suntec / allucent_notes_20251021_145627: Jason Johnston on 2025-10-07 13:10: Waiting on underground MV to be complete. / Jason Johnston on 2025-10-07 13:10: Increasing duration to account for additional equipment needed for BOH power. / Jason Johnston on 2025-10-14 09:10: Area unavailable to Suntec / allucent_notes_20251014_152335: Jason Johnston on 2025-10-07 13:10: Waiting on underground MV to be complete. / Jason Johnston on 2025-10-07 13:10: Increasing duration to account for additional equipment needed for BOH power. / Jason Johnston on 2025-10-14 09:10: Area unavailable to Suntec / allucent_notes: 2025-10-07 13:10 - User: Jason Johnston - Date Added: 2025-10-07 13:10 - Note: Waiting on underground MV to be complete. / 2025-10-07 13:10 - User: Jason Johnston - Date Added: 2025-10-07 13:10 - Note: Increasing duration to account for additional equip
- QTS-41761: allucent_notes_20251104_160200: Jason Johnston on 2025-11-04 10:11: Early set / Jason Johnston on 2025-11-04 10:11: early set / allucent_notes: 2025-11-04 10:11 - User: Jason Johnston - Date Added: 2025-11-04 10:11 - Note: Early set / 2025-11-04 10:11 - User: Jason Johnston - Date Added: 2025-11-04 10:11 - Note: early set
- QTS-41811: allucent_notes_20251209_203830: Jason Johnston on 2025-12-09 20:35: Need update from team / allucent_notes_20251230_164549: Jason Johnston on 2025-12-09 20:35: Need update from team / allucent_notes: 2025-12-09 20:35 - User: Jason Johnston - Date Added: 2025-12-09 20:35 - Note: Need update from team
- QTS-25751: allucent_notes_20251202_153722: Zack Goertz on 2025-11-11T18:24:11.283Z: PCI is being told level 1 BOH is not priority. green mile is priority / Jason Johnston on 2025-11-11 15:11: Starting pending Wednesday. / Zack Goertz on 2025-11-25 09:11: FOH and zone 1 took priority / allucent_notes_20251118_192630: Zack Goertz on 2025-11-11T18:24:11.283Z: PCI is being told level 1 BOH is not priority. green mile is priority / Jason Johnston on 2025-11-11 15:11: Starting pending Wednesday. / allucent_notes_20251111_182405: Zack Goertz on 2025-11-11T18:24:11.283Z: PCI is being told level 1 BOH is not priority. green mile is priority / Jason Johnston on 2025-11-11 15:11: Starting pending Wednesday. / allucent_notes: 2025-11-11T18:24:11.283Z - User: Zack Goertz - Date Added: 2025-11-11T18:24:11.283Z - Note: PCI is being told level 1 BOH is not priority. green mile is priority / 2025-11-11 15:11 - User: Jason Johnston - Date Added: 2025-11-11 15:11 - Note: Starting pe
- QTS-47021: allucent_notes_20251202_153722: Zack Goertz on 2025-10-31T19:51:20.893Z: Area J was just poured Wednseday. Area K to be poured on Monday night. / Zack Goertz on 2025-11-03T16:54:58.875Z: Paint to start 11/4 on the south side, and then wait 1 week to start on the north side. / Jason Johnston on 2025-11-04 12:11: Delayed by concrete cure. / Zack Goertz on 2025-11-11T18:25:43.339Z: delayed. priorities are elsewhere / Jason Johnston on 2025-11-11 15:11: starting thursday / Zack Goertz on 2025-11-17 13:11: Coordination efforts slowed their work, plus BOH labor was pulled to FOH / Zack Goertz on 2025-11-25 09:11: FOH and zone 1 was taking priority / allucent_notes_20251118_192630: Zack Goertz on 2025-10-31T19:51:20.893Z: Area J was just poured Wednseday. Area K to be poured on Monday night. / Zack Goertz on 2025-11-03T16:54:58.875Z: Paint to start 11/4 on the south side, and then wait 1 week to start on the north side. / Jason Johnston on 2025-11-04 12:11: Delayed by concrete cure. / Zack Goertz on 2025-11-11T18:25:43.339Z: delayed. priorities are elsewhere / Jason Johnston on 2025-11-11 15:11: starting thursday / Zack Goertz on 2025-11-17 13:11: Coordination efforts slowed their work, plus BOH labor was pulled to FOH / allucent_notes_20251111_182405: Zack Goertz on 2025-10-31T19:51:20.893Z: Area J was just poured Wednseday. Area K to be poured on Monday night. / Zack Goertz on 2025-11-03T16:54:58.875Z: Paint to start 11/4 on the south side, and then wait 1 week to start on the north side. / Jason Johnston on 2025-11-04 12:11: Delayed by concrete cure. / Zack Goertz on 2025-11-11T18:25:43.339Z: delayed. priorities are elsewhere / Jason Johnston on 2025-11-11 15:11: starting thursday / allucent_notes_20251104_160200: Zack Goertz on 2025-10-31T19:51:20.893Z: Area J was just poured Wednseday. Area K to be poured on Monday night. / Zack Goertz on 2025-11-03T16:54:58.875Z: Paint to start 11/4 on the south side, and then wait 1 week to start on the north side. / Jason Johnston on 2025-11-04 12:11: Delayed by concrete cure. / allucent_notes: 2025-10-31T19:51:20.893Z - User: Zack Goertz - Date Added: 2025-10-31T19:51:20.893Z - Note: Area J was just poured Wednseday. Area K to be poured on Monday night. / 2025-11-03T16:54:58.875Z - User: Zack Goertz - Date Added: 2025-11-03T16:54:58.875Z - No
- QTS-25461: allucent_notes_20251202_153722: Zack Goertz on 2025-11-03T16:55:42.346Z: Paint to start 11/4 on the south side, and then wait 1 week to start on the north side. Layout will follow paint. and should be done in 1 day / Jason Johnston on 2025-11-04 12:11: Layout tomorrow based on first pour cure time complete. / allucent_notes_20251118_192630: Zack Goertz on 2025-11-03T16:55:42.346Z: Paint to start 11/4 on the south side, and then wait 1 week to start on the north side. Layout will follow paint. and should be done in 1 day / Jason Johnston on 2025-11-04 12:11: Layout tomorrow based on first pour cure time complete. / allucent_notes_20251111_182405: Zack Goertz on 2025-11-03T16:55:42.346Z: Paint to start 11/4 on the south side, and then wait 1 week to start on the north side. Layout will follow paint. and should be done in 1 day / Jason Johnston on 2025-11-04 12:11: Layout tomorrow based on first pour cure time complete. / allucent_notes_20251104_160200: Zack Goertz on 2025-11-03T16:55:42.346Z: Paint to start 11/4 on the south side, and then wait 1 week to start on the north side. Layout will follow paint. and should be done in 1 day / Jason Johnston on 2025-11-04 12:11: Layout tomorrow based on first pour cure time complete. / allucent_notes: 2025-11-03T16:55:42.346Z - User: Zack Goertz - Date Added: 2025-11-03T16:55:42.346Z - Note: Paint to start 11/4 on the south side, and then wait 1 week to start on the north side. Layout will follow paint. and should be done in 1 day / 2025-11-04 12:11 -
- QTS-26091: allucent_notes_20251209_203830: Jason Johnston on 2025-11-10 14:11: Shaft walls not ready to be installed yet because they're for the second batch of elevators. / allucent_notes_20251202_153722: Jason Johnston on 2025-11-10 14:11: Shaft walls not ready to be installed yet because they're for the second batch of elevators. / allucent_notes_20251118_192630: Jason Johnston on 2025-11-10 14:11: Shaft walls not ready to be installed yet because they're for the second batch of elevators. / allucent_notes_20251111_182405: Jason Johnston on 2025-11-10 14:11: Shaft walls not ready to be installed yet because they're for the second batch of elevators. / allucent_notes: 2025-11-10 14:11 - User: Jason Johnston - Date Added: 2025-11-10 14:11 - Note: Shaft walls not ready to be installed yet because they're for the second batch of elevators.
- QTS-26061: allucent_notes_20251216_165335: Zach Gioe on 2025-12-16 13:12: This work has not completely started. Only Fire has started but is not complete due to working on priority areas and some areas still not complete such as framing. / allucent_notes_20251230_164549: Zach Gioe on 2025-12-16 13:12: This work has not completely started. Only Fire has started but is not complete due to working on priority areas and some areas still not complete such as framing. / allucent_notes: 2025-12-16 13:12 - User: Zach Gioe - Date Added: 2025-12-16 13:12 - Note: This work has not completely started. Only Fire has started but is not complete due to working on priority areas and some areas still not complete such as framing.
- QTS-26081: allucent_notes_20251216_165335: Zack Goertz on 2025-11-11T18:24:25.182Z: Stop work has been issued / Jason Johnston on 2025-11-11 15:11: SWO / Zack Goertz on 2025-11-25 09:11: North Corridor and DH rework are priorities / Zach Gioe on 2025-12-16 13:14: This task did not start till 12/15. / allucent_notes_20251209_203830: Zack Goertz on 2025-11-11T18:24:25.182Z: Stop work has been issued / Jason Johnston on 2025-11-11 15:11: SWO / Zack Goertz on 2025-11-25 09:11: North Corridor and DH rework are priorities / allucent_notes_20251202_153722: Zack Goertz on 2025-11-11T18:24:25.182Z: Stop work has been issued / Jason Johnston on 2025-11-11 15:11: SWO / Zack Goertz on 2025-11-25 09:11: North Corridor and DH rework are priorities / allucent_notes_20251118_192630: Zack Goertz on 2025-11-11T18:24:25.182Z: Stop work has been issued / Jason Johnston on 2025-11-11 15:11: SWO / allucent_notes_20251111_182405: Zack Goertz on 2025-11-11T18:24:25.182Z: Stop work has been issued / Jason Johnston on 2025-11-11 15:11: SWO / allucent_notes_20251230_164549: Zack Goertz on 2025-11-11T18:24:25.182Z: Stop work has been issued / Jason Johnston on 2025-11-11 15:11: SWO / Zack Goertz on 2025-11-25 09:11: North Corridor and DH rework are priorities / Zach Gioe on 2025-12-16 13:14: This task did not start till 12/15. / allucent_notes: 2025-11-11T18:24:25.182Z - User: Zack Goertz - Date Added: 2025-11-11T18:24:25.182Z - Note: Stop work has been issued / 2025-11-11 15:11 - User: Jason Johnston - Date Added: 2025-11-11 15:11 - Note: SWO / 2025-11-25 09:11 - User: Zack Goertz - Date Add
- QTS-45591: allucent_notes_20251216_165335: Zach Gioe on 2025-12-16 13:15: Work has not been ongoing to completion due to all areas not complete or ready for HM Door frames. / allucent_notes_20251230_164549: Zach Gioe on 2025-12-16 13:15: Work has not been ongoing to completion due to all areas not complete or ready for HM Door frames. / allucent_notes: 2025-12-16 13:15 - User: Zach Gioe - Date Added: 2025-12-16 13:15 - Note: Work has not been ongoing to completion due to all areas not complete or ready for HM Door frames.
- QTS-26101: allucent_notes_20251216_165335: Zack Goertz on 2025-12-01 10:30: Rough in is being done first. / Zack Goertz on 2025-12-09 10:49: Walls arent done being mudded and taped / allucent_notes_20251209_203830: Zack Goertz on 2025-12-01 10:30: Rough in is being done first. / Zack Goertz on 2025-12-09 10:49: Walls arent done being mudded and taped / allucent_notes_20251202_153722: Zack Goertz on 2025-12-01 10:30: Rough in is being done first. / allucent_notes_20251230_164549: Zack Goertz on 2025-12-01 10:30: Rough in is being done first. / Zack Goertz on 2025-12-09 10:49: Walls arent done being mudded and taped / allucent_notes: 2025-12-01 10:30 - User: Zack Goertz - Date Added: 2025-12-01 10:30 - Note: Rough in is being done first. / 2025-12-09 10:49 - User: Zack Goertz - Date Added: 2025-12-09 10:49 - Note: Walls arent done being mudded and taped
- QTS-26071: allucent_notes_20251216_165335: Zack Goertz on 2025-12-01 10:29: Bel-aire does not have labor in BOH level 1. Labor is in BOH Level 2. Not from Layton direction. / Zack Goertz on 2025-12-09 10:49: BAM missed the wall, waiting for RFI answer. / Zach Gioe on 2025-12-16 13:16: Walls in areas not complete. / Zach Gioe on 2025-12-16 13:16: Walls in areas not complete. / allucent_notes_20251209_203830: Zack Goertz on 2025-12-01 10:29: Bel-aire does not have labor in BOH level 1. Labor is in BOH Level 2. Not from Layton direction. / Zack Goertz on 2025-12-09 10:49: BAM missed the wall, waiting for RFI answer. / allucent_notes_20251202_153722: Zack Goertz on 2025-12-01 10:29: Bel-aire does not have labor in BOH level 1. Labor is in BOH Level 2. Not from Layton direction. / allucent_notes_20251230_164549: Zack Goertz on 2025-12-01 10:29: Bel-aire does not have labor in BOH level 1. Labor is in BOH Level 2. Not from Layton direction. / Zack Goertz on 2025-12-09 10:49: BAM missed the wall, waiting for RFI answer. / Zach Gioe on 2025-12-16 13:16: Walls in areas not complete. / Zach Gioe on 2025-12-16 13:16: Walls in areas not complete. / allucent_notes: 2025-12-01 10:29 - User: Zack Goertz - Date Added: 2025-12-01 10:29 - Note: Bel-aire does not have labor in BOH level 1. Labor is in BOH Level 2. Not from Layton direction. / 2025-12-09 10:49 - User: Zack Goertz - Date Added: 2025-12-09 10:49 - Note: BA
- QTS-1009120: allucent_notes_20251216_165335: Zack Goertz on 2025-12-01 10:30: Rough in is being done first. / Zack Goertz on 2025-12-09 10:49: Walls arent done being mudded and taped / allucent_notes_20251209_203830: Zack Goertz on 2025-12-01 10:30: Rough in is being done first. / Zack Goertz on 2025-12-09 10:49: Walls arent done being mudded and taped / allucent_notes_20251202_153722: Zack Goertz on 2025-12-01 10:30: Rough in is being done first. / allucent_notes_20251230_164549: Zack Goertz on 2025-12-01 10:30: Rough in is being done first. / Zack Goertz on 2025-12-09 10:49: Walls arent done being mudded and taped / allucent_notes: 2025-12-01 10:30 - User: Zack Goertz - Date Added: 2025-12-01 10:30 - Note: Rough in is being done first. / 2025-12-09 10:49 - User: Zack Goertz - Date Added: 2025-12-09 10:49 - Note: Walls arent done being mudded and taped
- QTS-26251: allucent_notes_20251216_165335: Zach Gioe on 2025-12-16 13:17: RFI Design change for door wall. / Zach Gioe on 2025-12-16 13:18: RFI for design change. / allucent_notes: 2025-12-16 13:17 - User: Zach Gioe - Date Added: 2025-12-16 13:17 - Note: RFI Design change for door wall. / 2025-12-16 13:18 - User: Zach Gioe - Date Added: 2025-12-16 13:18 - Note: RFI for design change.
- QTS-26361: allucent_notes_20251216_165335: Zach Gioe on 2025-12-16 13:19: Wall change from RFI. / allucent_notes: 2025-12-16 13:19 - User: Zach Gioe - Date Added: 2025-12-16 13:19 - Note: Wall change from RFI.

| ID | WBS | Activity | Duration | Start | Finish | Predecessors | Complete | Planned start | Planned finish | Calendar | Allucent CSI Group | Project Section | Phase-1 | Layton Discipline | Baseline | Location | Level | Fragnet | Fragnet Responsible Party | Contract | Phase-1-1 | Project Section-1 | Layton Super | Trade Partner |
| --- | --- | --- | --- | --- | --- | --- | --- | --- | --- | --- | --- | --- | --- | --- | --- | --- | --- | --- | --- | --- | --- | --- | --- | --- |
|  | 1 | **Fragnet / RFI #939 BOH Lighting** |  | 2026-03-14 | 2026-03-18 |  |  |  |  |  |  |  |  |  |  |  |  |  |  |  |  |  |  |  |
| QTS-1008990 |  | Fragnet / RFI #939 Submission | 1d | 2026-03-14 A | 2026-03-14 A | QTS-1371 SS | 100% |  |  | QTS-PHX3 DC1 - 6 day w/ Holidays | 01ADMIN | Construction | Phase 1 | Build Out | IGMP | BOH | Level 1 | Fragnet | Performance Contracting Inc. | BAB |  |  |  |  |
| QTS-1009000 |  | Fragnet / RFI #939 Design Response | 5d | 2026-03-16 A | 2026-03-18 A | QTS-1008990 | 100% | 2026-03-16 | 2026-03-20 | QTS-PHX3 DC1 - 6 day w/ Holidays | 01ADMIN | Construction | Phase 1 | Build Out | IGMP | BOH | Level 1 | Fragnet | Performance Contracting Inc. | BAB |  |  |  |  |
|  | 2 | **Remaining Scope** |  | 2026-03-08 | 2026-07-17 |  |  |  |  |  |  |  |  |  |  |  |  |  |  |  |  |  |  |  |
| QTS-1002890 |  | IDF Room #1064 // Frame Hard Lid | 2d | 2026-03-08 A | 2026-04-24 A | QTS-27211, QTS-1009000 FF+4d | 100% | 2026-03-04 | 2026-03-05 | QTS-PHX3 DC1 - 6 day w/ Holidays | 01ADMIN | Construction | Phase 1 | Build Out | IGMP | BOH | Level 1 |  |  | BAB |  |  |  |  |
| QTS-38571 |  | IDF Room #1064 // Install Cable Racks | 5d | 2026-03-25 A | 2026-03-27 A | QTS-27521 | 100% | 2026-04-18 | 2026-04-23 | QTS-PHX3 DC1 - 6 day w/ Holidays |  | Construction |  | Electrical | IGMP | BOH | Level 1 |  |  | BAB | Phase 1 | Construction |  |  |
| QTS-27581 |  | IDF Room #1064 // Install AC Unit | 2d | 2026-04-13 A | 2026-04-14 A | QTS-27521, QTS-27211 | 100% |  |  | QTS-PHX3 DC1 - 6 day w/ Holidays | 01ADMIN | Construction | Phase 1 | Mechanical | IGMP | BOH | Level 1 |  |  | BAB |  |  |  |  |
| QTS-1002900 |  | IDF Room #1064 // Hang Drywall Hard Lid | 2d | 2026-04-25 A | 2026-04-30 A | QTS-1002890 | 100% | 2026-04-25 | 2026-04-27 | QTS-PHX3 DC1 - 6 day w/ Holidays | 01ADMIN | Construction | Phase 1 | Electrical | IGMP | BOH | Level 1 |  |  | BAB |  |  | Oscar Armenta |  |
| QTS-1002910 |  | IDF Room #1064 // Tape & Finish Hard Lid | 2d | 2026-05-01 A | 2026-05-02 A | QTS-1002900 | 100% |  |  | QTS-PHX3 DC1 - 6 day w/ Holidays | 01ADMIN | Construction | Phase 1 | Electrical | IGMP | BOH | Level 1 |  |  | BAB |  |  | Oscar Armenta |  |
| QTS-26391 |  | IDF Room #1064 // Rough Overhead Linesets | 3d | 2026-05-15 A | 2026-05-18 A | QTS-26251, QTS-1002910 | 100% |  |  | QTS-PHX3 DC1 - 6 day w/ Holidays | 01ADMIN | Construction | Phase 1 | Mechanical | IGMP | BOH | Level 1 |  |  | BAB |  |  |  |  |
| QTS-1000660 |  | IDF Room #1064 // Rough In Overhead Electrical | 5d | 2026-06-01 A | 2026-06-20 A | QTS-27211 | 100% | 2026-06-26 | 2026-07-01 | QTS-PHX3 DC1 - 6 day w/ Holidays | 01ADMIN |  |  | Electrical |  | BOH |  |  |  | BAB |  |  | Electrical |  |
| QTS-27951 |  | IDF Room #1064 // Install Light Fixtures | 2d | 2026-06-01 A | 2026-06-19 A | QTS-1000660, QTS-27581 | 100% | 2026-07-02 | 2026-07-06 | QTS-PHX3 DC1 - 6 day w/ Holidays |  | Construction | Phase 1 | Electrical | IGMP | BOH | Level 1 |  |  | BAB |  |  | Electrical |  |
| QTS-1001050 |  | IDF Room #1064 // Install Wall Base | 2d | 2026-07-06 A | 2026-07-07 A | QTS-1000660 | 100% | 2026-07-10 | 2026-07-11 | QTS-PHX3 DC1 - 6 day w/ Holidays |  | Construction | Phase 1 | Electrical | IGMP | BOH | Level 1 |  |  | BAB |  |  | Electrical |  |
| QTS-1002920 |  | IDF Room #1064 // Paint Hard Lid | 2d | 2026-07-15 A | 2026-07-15 A | QTS-1002910, QTS-26391 | 100% | 2026-07-22 | 2026-07-23 | QTS-PHX3 DC1 - 6 day w/ Holidays | 01ADMIN | Construction | Phase 1 | Build Out | IGMP | BOH | Level 1 |  |  | BAB |  |  | Ed Carter | Wholesale Flooring |
| QTS-45611 |  | IDF Room #1064 // Set Door & Hardware | 3d | 2026-07-15 A | 2026-07-15 A | QTS-1001050, QTS-99630, QTS-99650, QTS-26371, QTS-1002920 | 100% | 2026-07-24 | 2026-07-27 | QTS-PHX3 DC1 - 6 day w/ Holidays |  | Construction |  | Build Out | IGMP | BOH | Level 1 |  |  | BAB | Phase 1 | Construction | Ed Carter |  |
| QTS-1001060 |  | IDF Room #1064 // Finish Flooring | 2d | 2026-07-17 A | 2026-07-17 A | QTS-27951 | 100% | 2026-07-22 | 2026-07-23 | QTS-PHX3 DC1 - 6 day w/ Holidays |  | Construction | Phase 1 | Build Out | IGMP | BOH | Level 1 |  |  | BAB |  |  | Ben Ribble | PPC |
|  | 10 | **L1 / BOH // Electrical Room #1081/1066 (Early Access)** |  | 2025-11-07 | 2026-05-15 |  |  |  |  |  |  |  |  |  |  |  |  |  |  |  |  |  |  |  |
| QTS-26401 |  | Electrical Room #1066/1081 // Frame Walls | 2d | 2025-11-07 A | 2025-11-10 A | QTS-25751 | 100% |  |  |  | 01ADMIN | Construction | Phase 1 | Build Out | IGMP | BOH | Level 1 |  |  | BAB |  |  |  |  |
| QTS-26501 |  | Electrical Room #1066/1081 // Rough In Wall Electrical | 10d | 2025-11-26 A | 2025-12-02 A | QTS-26401 | 100% | 2025-11-26 | 2025-12-11 |  |  | Construction | Phase 1 | Electrical | IGMP | BOH | Level 1 |  |  | BAB |  |  |  |  |
| QTS-26831 |  | Electrical Room #1066/1081 // In Wall Inspection | 1d | 2025-12-02 A | 2025-12-02 A | QTS-26501 | 100% |  |  |  |  | Construction | Phase 1 | Mechanical | IGMP | BOH | Level 1 |  |  | BAB |  |  |  |  |
| QTS-26891 |  | Electrical Room #1066/1081 // Hang Drywall | 3d | 2025-12-19 A | 2025-12-23 A | QTS-99550, QTS-26831 | 100% |  |  |  | 01ADMIN | Construction | Phase 1 | Build Out | IGMP | BOH | Level 1 |  |  | BAB |  |  |  |  |
| QTS-26521 |  | Electrical Room #1066/1081 // Rough Overhead Fire Sprinkler | 2d | 2025-12-22 A | 2025-12-23 A | QTS-26381 | 100% |  |  |  | 01ADMIN | Construction | Phase 1 | Mechanical | IGMP | BOH | Level 1 |  |  | BAB |  |  |  |  |
| QTS-99550 |  | Electrical Room #1066/1081 // Set Door Frame | 1d | 2025-12-22 A | 2025-12-22 A | QTS-26401 | 100% |  |  |  | 01ADMIN | Construction | Phase 1 | Build Out | IGMP | BOH | Level 1 |  |  | BAB |  |  |  |  |
| QTS-27091 |  | Electrical Room #1066/1081 // Tape & Finish Drywall | 3d | 2025-12-29 A | 2025-12-30 A | QTS-27571, QTS-26891 | 100% | 2025-12-29 | 2025-12-31 |  | 01ADMIN | Construction | Phase 1 | Build Out | IGMP | BOH | Level 1 |  |  | BAB |  |  |  |  |
| QTS-1001140 |  | Electrical Room #1066/1081 // Pour Equipment Pads | 2d | 2026-01-05 A | 2026-01-06 A | QTS-27091 | 100% |  |  |  | 01ADMIN | Construction | Phase 1 | Build Out | IGMP | BOH | Level 2 |  |  | BAB |  |  |  |  |
| QTS-27541 |  | Electrical Room #1066/1081 // Prime & Paint | 2d | 2026-01-05 A | 2026-01-06 A | QTS-27091 | 100% |  |  |  | 01ADMIN | Construction | Phase 1 | Build Out | IGMP | BOH | Level 1 |  |  | BAB |  |  |  |  |
| QTS-42081 |  | Electrical Room #1066/1081 // Set House Switchboard | 1d | 2026-01-05 A | 2026-01-06 A | QTS-24581 SS, QTS-36151, QTS-27541 | 100% | 2026-01-05 | 2026-01-05 |  | 01ADMIN | Construction |  | Electrical | IGMP | BOH | Level 1 |  |  | BAB | Phase 1 | Construction |  |  |
| QTS-26531 |  | Electrical Room #1066/1081 // Rough Overhead Linesets | 3d | 2026-01-14 A | 2026-01-16 A | QTS-26401, QTS-27541 | 100% |  |  | QTS-PHX3 DC1 - 6 day w/ Holidays | 01ADMIN | Construction | Phase 1 | Mechanical | IGMP | BOH | Level 1 |  |  | BAB |  |  |  |  |
| QTS-1000670 |  | Electrical Room #1066/1081 // Rough Overhead Electrical | 5d | 2026-01-28 A | 2026-03-10 A | QTS-27541 | 100% | 2026-01-28 | 2026-02-02 | QTS-PHX3 DC1 - 6 day w/ Holidays | 01ADMIN | Construction | Phase 1 | Electrical | IGMP | BOH | Level 1 |  |  | BAB |  |  |  |  |
| QTS-1005280 |  | Electrical Room #1066/1081 // Install AC Unit Piping | 2d | 2026-01-28 A | 2026-03-31 A | QTS-26531 | 100% | 2026-01-28 | 2026-01-29 | QTS-PHX3 DC1 - 6 day w/ Holidays | 01ADMIN | Construction | Phase 1 | Mechanical | IGMP | BOH | Level 1 |  |  | BAB |  |  |  |  |
| QTS-28021 |  | Electrical Room #1066/1081 // Install AC Unit | 2d | 2026-01-28 A | 2026-02-10 A | QTS-27541 | 100% | 2026-01-28 | 2026-01-29 | QTS-PHX3 DC1 - 6 day w/ Holidays | 01ADMIN | Construction | Phase 1 | Mechanical | IGMP | BOH | Level 1 |  |  | BAB |  |  |  |  |
| QTS-28171 |  | Electrical Room #1066/1081 // Install Light Fixtures | 2d | 2026-02-03 A | 2026-03-06 A | QTS-1000670 FF, QTS-28021 FF, QTS-28021 | 100% | 2026-02-03 | 2026-02-04 | QTS-PHX3 DC1 - 6 day w/ Holidays |  | Construction | Phase 1 | Electrical | IGMP | BOH | Level 1 |  |  | BAB |  |  |  |  |
| QTS-26511 |  | Electrical Room #1066/1081 // Set Door & Hardware | 1d | 2026-02-10 A | 2026-03-20 A | QTS-99550, QTS-15231, QTS-26401 | 100% | 2026-02-23 | 2026-02-23 | QTS-PHX3 DC1 - 6 day w/ Holidays |  | Construction | Phase 1 | Build Out | IGMP | BOH | Level 1 |  |  | BAB |  |  |  |  |
| QTS-27921 |  | Electrical Room #1066/1081 // Set Static Transfer Switch | 1d | 2026-02-13 A | 2026-02-13 A | QTS-1001140, QTS-24581, QTS-27541, QTS-27821 | 100% |  |  | QTS-PHX3 DC1 - 6 day w/ Holidays | 01ADMIN | Construction |  | Electrical | IGMP | BOH | Level 1 |  |  | BAB | Phase 1 | Construction |  |  |
| QTS-27931 |  | Electrical Room #1066/1081 // Set UPS | 1d | 2026-02-13 A | 2026-02-13 A | QTS-1001140, QTS-24581, QTS-36131, QTS-27541, QTS-27831 | 100% |  |  | QTS-PHX3 DC1 - 6 day w/ Holidays | 01ADMIN | Construction |  | Electrical | IGMP | BOH | Level 1 |  |  | BAB | Phase 1 | Construction |  |  |
| QTS-28371 |  | Electrical Room #1066/1081 // Install Cable Racks | 5d | 2026-02-13 A | 2026-03-17 A | QTS-28171 FF | 100% | 2026-02-13 | 2026-02-18 | QTS-PHX3 DC1 - 6 day w/ Holidays |  | Construction | Phase 1 | Electrical | IGMP | BOH | Level 1 |  |  | BAB |  |  |  |  |
| QTS-1001070 |  | Electrical Room #1066/1081 // Install MEP Trim | 2d | 2026-03-20 A | 2026-03-30 A | QTS-27921, QTS-28371 | 100% | 2026-03-20 | 2026-03-21 | QTS-PHX3 DC1 - 6 day w/ Holidays |  | Construction | Phase 1 | Electrical | IGMP | BOH | Level 1 |  |  | BAB |  |  |  |  |

Notes:
- QTS-1008990: Scheduler Notes: RFI-0939 - Lighting Clarification for Elevator Machine Rooms and BOH IDF / Rooms_DLB_CORGAN / Notes: Lighting Clarification for Elevator Machine Rooms and BOH IDF Rooms
- QTS-1002890: Scheduler Notes: 3/31/26: Waiting on E2 to move cable rack before this can begin. / 3/17: RFI Submitted for the elevation / Notes: 3/31/26: Waiting on E2 to move cable rack before this can begin. 3/17: RFI Submitted for the elevation
- QTS-26391: allucent_notes_20251216_165335: Zach Gioe on 2025-12-16 13:34: Will start after Prime/Paint. / allucent_notes_20251230_164549: Zach Gioe on 2025-12-16 13:34: Will start after Prime/Paint. / allucent_notes: 2025-12-16 13:34 - User: Zach Gioe - Date Added: 2025-12-16 13:34 - Note: Will start after Prime/Paint.
- QTS-99550: allucent_notes_20251216_165335: Zack Goertz on 2025-12-09 10:50: Walls arent done being mudded and taped / allucent_notes_20251209_203830: Zack Goertz on 2025-12-09 10:50: Walls arent done being mudded and taped / allucent_notes_20251230_164549: Zack Goertz on 2025-12-09 10:50: Walls arent done being mudded and taped / Sean Waisner on 2025-12-30 15:13: Door frame arrived today 12-30 / allucent_notes: 2025-12-09 10:50 - User: Zack Goertz - Date Added: 2025-12-09 10:50 - Note: Walls arent done being mudded and taped / 2025-12-30 15:13 - User: Sean Waisner - Date Added: 2025-12-30 15:13 - Note: Door frame arrived today 12-30
- QTS-1000670: Scheduler Notes: Set in 1066 on 2/2 / Notes: Set in 1066 on 2/2
- QTS-28021: Scheduler Notes: Set in 1066 on 2/2 / Notes: Set in 1066 on 2/2
- QTS-28171: Scheduler Notes: Set in 1066 on 2/2 / Notes: Set in 1066 on 2/2
- QTS-26511: Scheduler Notes: 3/2/26: Electrical rough in to door was not finished. / Notes: 3/2/26: Electrical rough in to door was not finished.

| ID | WBS | Activity | Duration | Start | Finish | Predecessors | Complete | Planned start | Planned finish | Calendar | Project Section | Phase-1 | Layton Discipline | Baseline | Location | Level | Fragnet | Layton Super | Fragnet Responsible Party | Contract | Notes | Allucent CSI Group | Phase-1-1 | Project Section-1 | Note/Comments | Trade Partner |
| --- | --- | --- | --- | --- | --- | --- | --- | --- | --- | --- | --- | --- | --- | --- | --- | --- | --- | --- | --- | --- | --- | --- | --- | --- | --- | --- |
|  | 3 | **Fragnet / BOH SWBD Missing Panel Covers** |  | 2026-05-08 | 2026-05-15 |  |  |  |  |  |  |  |  |  |  |  |  |  |  |  |  |  |  |  |  |  |
| QTS-1012310 |  | Fragnet // SWBD-HSE-2 Missing Panel Covers | 10d | 2026-05-08 A | 2026-05-15 A | QTS-1011910 | 100% | 2026-05-08 | 2026-05-21 |  | Construction | Phase 1 | Electrical | IGMP | BOH | Level 1 | Fragnet | Oscar Armenta | Parrish-Hare Electrical Supply | BAB |  |  |  |  |  |  |
|  | 1 | **L1 / BOH // Electrical Room #1081/1066 (Early Access) - Fragnet Delays** |  | 2026-03-31 | 2026-05-04 |  |  |  |  |  |  |  |  |  |  |  |  |  |  |  |  |  |  |  |  |  |
| QTS-1009310 |  | Electrical Room #1066/1081 // Fragnet Delay to Finish Installation of the MEP Trim | 9d | 2026-03-31 A | 2026-04-10 A | QTS-1001070 | 100% | 2026-03-20 | 2026-03-30 | QTS-PHX3 DC1 - 6 day w/ Holidays | Construction | Phase 1 | Electrical | IGMP | BOH | Level 1 | Fragnet |  | Rosendin Electric Inc. | BAB | Manpower Delay |  |  |  |  |  |
| QTS-1010070 |  | Electrical Room #1066/1081 // Prime & Paint Wall | 2d | 2026-04-27 A | 2026-04-28 A | QTS-27091 | 100% |  |  |  | Construction | Phase 1 | Electrical | IGMP | BOH | Level 1 | Fragnet | Oscar Armenta | Rosendin Electric Inc. | BAB |  | 01ADMIN |  |  |  |  |
| QTS-1010080 |  | Electrical Room #1066/1081 // Fragnet Delay - Mount AC Unit | 2d | 2026-04-30 A | 2026-05-01 A | QTS-1010070 | 100% |  |  | QTS-PHX3 DC1 - 6 day w/ Holidays | Construction | Phase 1 | Electrical | IGMP | BOH | Level 1 | Fragnet | Oscar Armenta | Bel-Aire Mechanical. LLC | BAB |  | 01ADMIN |  |  |  |  |
| QTS-1009380 |  | Electrical Room #1066/1081 // Fragnet Delay to complete - Install AC Unit Piping | 2d | 2026-05-04 A | 2026-05-04 A | QTS-1005280, QTS-1010080 | 100% | 2026-05-04 | 2026-05-05 | QTS-PHX3 DC1 - 6 day w/ Holidays | Construction | Phase 1 | Electrical | IGMP | BOH | Level 1 | Fragnet | Oscar Armenta | Bel-Aire Mechanical. LLC | BAB |  | 01ADMIN |  |  |  |  |
|  | 2 | **Remaining Scope** |  | 2026-04-28 | 2026-05-12 |  |  |  |  |  |  |  |  |  |  |  |  |  |  |  |  |  |  |  |  |  |
| QTS-1011890 |  | Electrical Room #1066/1081 // SWBD-HSE-2 Branch Wire Pulls | 1d | 2026-04-28 A | 2026-05-01 A | QTS-1011880 | 100% | 2026-05-18 | 2026-05-18 | QTS-PHX3 DC1 - 6 day w/ Holidays | Construction | Phase 1 | Electrical | IGMP | BOH | Level 1 |  | Oscar Armenta |  | BAB |  |  |  |  |  |  |
| QTS-1011880 |  | Electrical Room #1066/1081 // SWBD-HSE-2 Feeder Terminations | 4d | 2026-04-29 A | 2026-05-04 A | QTS-1011900 FF | 100% | 2026-04-29 | 2026-05-02 | QTS-PHX3 DC1 - 6 day w/ Holidays | Construction | Phase 1 | Electrical | IGMP | BOH | Level 1 |  | Oscar Armenta |  | BAB |  |  |  |  |  |  |
| QTS-1011900 |  | Electrical Room #1066/1081 // Install OH Raceway - Branch Conduit - Elevator Dry Contacts | 3d | 2026-05-01 A | 2026-05-04 A | QTS-1000900 | 100% |  |  | QTS-PHX3 DC1 - 6 day w/ Holidays | Construction | Phase 1 | Electrical | IGMP | BOH | Level 1 |  | Oscar Armenta |  | BAB |  |  |  |  |  |  |
| QTS-1011910 |  | Electrical Room #1066/1081 // SWBD-HSE-2 QAQC | 1d | 2026-05-05 A | 2026-05-07 A | QTS-1011880, QTS-1011890, QTS-1011880 FF | 100% | 2026-05-05 | 2026-05-05 | QTS-PHX3 DC1 - 6 day w/ Holidays | Construction | Phase 1 | Electrical | IGMP | BOH | Level 1 |  | Oscar Armenta |  | BAB |  |  |  |  |  |  |
| QTS-1001080 |  | Electrical Room #1066/1081 // Finish Flooring | 1d | 2026-05-08 A | 2026-05-08 A | QTS-1001070, QTS-28171, QTS-1009310 | 100% |  |  | QTS-PHX3 DC1 - 6 day w/ Holidays | Construction | Phase 1 | Build Out | IGMP | BOH | Level 1 |  | Jay Perkins |  | BAB |  |  |  |  |  |  |
| QTS-1001090 |  | Electrical Room #1066/1081 // Install Wall Base | 1d | 2026-05-12 A | 2026-05-12 A | QTS-27541, QTS-26511, QTS-1001080 | 100% |  |  | QTS-PHX3 DC1 - 6 day w/ Holidays | Construction | Phase 1 | Build Out | IGMP | BOH | Level 1 |  | Jay Perkins |  | BAB |  | 01ADMIN |  |  |  |  |
|  | 2 | **L1 / BOH // MMR #1068 (Early Access)** |  | 2025-12-02 | 2026-07-24 |  |  |  |  |  |  |  |  |  |  |  |  |  |  |  |  |  |  |  |  |  |
| QTS-26931 |  | MMR B Room #1068 // Frame Walls | 2d | 2025-12-02 A | 2025-12-03 A | QTS-25751 | 100% |  |  |  | Construction | Phase 1 | Build Out | IGMP | BOH | Level 1 |  |  |  | BAB |  |  |  |  |  |  |
| QTS-27251 |  | MMR B Room #1068 // Rough In Electrical | 10d | 2025-12-04 A | 2025-12-05 A | QTS-26931 | 100% | 2025-12-04 | 2025-12-17 |  | Construction | Phase 1 | Electrical | IGMP | BOH | Level 1 |  |  |  | BAB |  |  |  |  |  |  |
| QTS-27551 |  | MMR B Room #1068 // In Wall Inspection | 1d | 2025-12-08 A | 2025-12-08 A | QTS-27251 | 100% |  |  |  | Construction | Phase 1 | Mechanical | IGMP | BOH | Level 1 |  |  |  | BAB |  |  |  |  |  |  |
| QTS-27701 |  | MMR B Room #1068 // Hang Drywall | 1d | 2025-12-09 A | 2025-12-11 A | QTS-27551 | 100% | 2025-12-09 | 2025-12-09 |  | Construction | Phase 1 | Build Out | IGMP | BOH | Level 1 |  |  |  | BAB |  | 01ADMIN |  |  |  |  |
| QTS-27261 |  | MMR B Room #1068 // Set HM Frame | 1d | 2025-12-10 A | 2025-12-10 A | QTS-99620, QTS-26931 FF | 100% |  |  |  | Construction | Phase 1 | Build Out | IGMP | BOH | Level 1 |  |  |  | BAB |  | 01ADMIN |  |  |  |  |
| QTS-27871 |  | MMR B Room #1068 // Tape & Finish Drywall | 3d | 2025-12-15 A | 2025-12-23 A | QTS-27571 FF, QTS-27701 | 100% | 2025-12-15 | 2025-12-17 |  | Construction | Phase 1 | Build Out | IGMP | BOH | Level 1 |  |  |  | BAB |  | 01ADMIN |  |  |  |  |
| QTS-27271 |  | MMR B Room #1068 // Rough Overhead Fire Sprinkler | 2d | 2025-12-29 A | 2025-12-30 A | QTS-26521 | 100% |  |  |  | Construction | Phase 1 | Mechanical | IGMP | BOH | Level 1 |  |  |  | BAB |  | 01ADMIN |  |  |  |  |
| QTS-28531 |  | MMR B Room #1068 // Install AC Unit | 2d | 2026-01-05 A | 2026-01-06 A | QTS-27871 | 100% |  |  |  | Construction | Phase 1 | Mechanical | IGMP | BOH | Level 1 |  |  |  | BAB |  | 01ADMIN |  |  |  |  |
| QTS-28181 |  | MMR B Room #1068 // Prime & Paint | 2d | 2026-01-08 A | 2026-01-09 A | QTS-27871 | 100% |  |  | QTS-PHX3 DC1 - 6 day w/ Holidays | Construction | Phase 1 | Build Out | IGMP | BOH | Level 1 |  |  |  | BAB |  | 01ADMIN |  |  |  |  |
| QTS-27281 |  | MMR B Room #1068 // Rough Overhead Linesets | 5d | 2026-01-17 A | 2026-01-19 A | QTS-26531, QTS-26931 | 100% | 2026-01-17 | 2026-01-23 | QTS-PHX3 DC1 - 6 day w/ Holidays | Construction | Phase 1 | Mechanical | IGMP | BOH | Level 1 |  |  |  | BAB |  | 01ADMIN |  |  |  |  |
| QTS-28391 |  | MMR B Room #1068 // Plywood Install | 1d | 2026-01-17 A | 2026-01-17 A | QTS-27871 | 100% |  |  | QTS-PHX3 DC1 - 6 day w/ Holidays | Construction | Phase 1 | Build Out | IGMP | BOH | Level 1 |  |  |  | BAB |  | 01ADMIN |  |  |  |  |
| QTS-28781 |  | MMR B Room #1068 // Install Light Fixtures | 2d | 2026-02-03 A | 2026-02-03 A | QTS-28531 | 100% | 2026-02-03 | 2026-02-04 | QTS-PHX3 DC1 - 6 day w/ Holidays | Construction | Phase 1 | Electrical | IGMP | BOH | Level 1 |  |  |  | BAB | Was installed before 1/26 |  |  |  |  |  |
| QTS-45621 |  | MMR B Room #1068 // Set Door & Hardware | 1d | 2026-02-10 A | 2026-03-20 A | QTS-27261, QTS-99650, QTS-28391 SS | 100% | 2026-03-04 | 2026-03-04 | QTS-PHX3 DC1 - 6 day w/ Holidays | Construction |  | Build Out | IGMP | BOH | Level 1 |  |  |  | BAB | 3/2/26: Electrical rough in to door was not finished. | 01ADMIN | Phase 1 | Construction |  |  |
| QTS-28891 |  | MMR B Room #1068 // Install Cable Racks | 5d | 2026-02-14 A | 2026-02-20 A | QTS-28781 | 100% | 2026-02-14 | 2026-02-19 | QTS-PHX3 DC1 - 6 day w/ Holidays | Construction | Phase 1 | Electrical | IGMP | BOH | Level 1 |  |  |  | BAB |  |  |  |  |  |  |
| QTS-1001120 |  | MMR B Room #1068 // Install MEP Trim | 2d | 2026-03-20 A | 2026-03-30 A | QTS-28891, QTS-1001070 SS | 100% | 2026-03-20 | 2026-03-21 | QTS-PHX3 DC1 - 6 day w/ Holidays | Construction | Phase 1 | Electrical | IGMP | BOH | Level 1 |  |  |  | BAB |  |  |  |  |  |  |
| QTS-1000680 |  | MMR B Room #1068 // Rough In Overhead Busway | 5d | 2026-05-19 A | 2026-05-22 A | QTS-28531, QTS-28181, QTS-27281, QTS-27281 FF | 100% | 2026-05-20 | 2026-05-26 | QTS-PHX3 DC1 - 6 day w/ Holidays |  |  | Electrical |  | BOH |  |  |  |  | BAB | Was installed before 1/26 | 01ADMIN |  |  |  |  |
| QTS-1001110 |  | MMR B Room #1068 // Finish Flooring | 2d | 2026-07-17 A | 2026-07-17 A | QTS-1001120, QTS-28781, QTS-1000680 | 100% | 2026-07-31 | 2026-08-01 | QTS-PHX3 DC1 - 6 day w/ Holidays | Construction | Phase 1 | Build Out | IGMP | BOH | Level 1 |  | Ben Ribble |  | BAB |  |  |  |  | 7/14: pending split systems to turn to acclimate material | Wholesale Flooring |
| QTS-1001100 |  | MMR B Room #1068 // Install Wall Base | 2d | 2026-07-21 A | 2026-07-24 A | QTS-1001110 | 100% | 2026-08-03 | 2026-08-04 | QTS-PHX3 DC1 - 6 day w/ Holidays | Construction | Phase 1 | Build Out | IGMP | BOH | Level 1 |  | Ben Ribble |  | BAB |  |  |  |  |  | Wholesale Flooring |

Notes:
- QTS-1012310: Scheduler Notes: SWBD-HSE-2 Missing Panel Covers
- QTS-1009310: Scheduler Notes: 4/7: Manpower Delayed
- QTS-28391: allucent_notes_20251230_164549: Sean Waisner on 2025-12-30 15:14: Man power issues / allucent_notes: 2025-12-30 15:14 - User: Sean Waisner - Date Added: 2025-12-30 15:14 - Note: Man power issues
- QTS-28781: Scheduler Notes: Was installed before 1/26
- QTS-45621: Scheduler Notes: 3/2/26: Electrical rough in to door was not finished.
- QTS-1000680: Scheduler Notes: Was installed before 1/26

| ID | WBS | Activity | Duration | Start | Finish | Predecessors | Complete | Planned start | Planned finish | Total float | Free float | Calendar | Notes | Project Section | Phase-1 | Layton Discipline | Baseline | Location | Level | Fragnet | Layton Super | Fragnet Responsible Party | Contract | Trade Partner | Phase-1-1 | Project Section-1 | Allucent CSI Group |
| --- | --- | --- | --- | --- | --- | --- | --- | --- | --- | --- | --- | --- | --- | --- | --- | --- | --- | --- | --- | --- | --- | --- | --- | --- | --- | --- | --- |
|  | 1 | **L1 / BOH // MMR #1068 (Early Access) - Fragnet Delays** |  | 2026-03-31 | 2026-07-16 |  |  |  |  |  |  |  |  |  |  |  |  |  |  |  |  |  |  |  |  |  |  |
| QTS-1009320 |  | MMR B Room #1068 // Fragnet Delay to Finish Installation of the MEP Trim | 9d | 2026-03-31 A | 2026-07-16 A | QTS-1001120 | 100% | 2026-03-20 | 2026-03-30 |  |  | QTS-PHX3 DC1 - 6 day w/ Holidays | Manpower Delay | Construction | Phase 1 | Electrical | IGMP | BOH | Level 1 | Fragnet | Electrical | Rosendin Electric Inc. | BAB | REI |  |  |  |
|  | 5 | **L1 / BOH // Telecom Riser #1069 (Early Access)** |  | 2025-12-02 | 2026-06-08 |  |  |  |  |  |  |  |  |  |  |  |  |  |  |  |  |  |  |  |  |  |  |
| QTS-42151 |  | Telecom Riser #1069 // Frame Walls | 2d | 2025-12-02 A | 2025-12-03 A | QTS-25751 | 100% |  |  |  |  |  |  | Construction |  | Build Out | IGMP | BOH | Level 1 |  |  |  | BAB |  | Phase 1 | Construction |  |
| QTS-42161 |  | Telecom Riser #1069 // Rough In Electrical | 10d | 2025-12-04 A | 2025-12-05 A | QTS-42151 | 100% | 2025-12-04 | 2025-12-17 |  |  |  |  | Construction |  | Electrical | IGMP | BOH | Level 1 |  |  |  | BAB |  | Phase 1 | Construction |  |
| QTS-42171 |  | Telecom Riser #1069 // In Wall Inspection | 1d | 2025-12-08 A | 2025-12-08 A | QTS-42161 | 100% |  |  |  |  |  |  | Construction |  | Mechanical | IGMP | BOH | Level 1 |  |  |  | BAB |  | Phase 1 | Construction |  |
| QTS-42181 |  | Telecom Riser #1069 // Hang Drywall | 1d | 2025-12-09 A | 2025-12-09 A | QTS-42171 | 100% |  |  |  |  |  |  | Construction |  | Build Out | IGMP | BOH | Level 1 |  |  |  | BAB |  | Phase 1 | Construction | 01ADMIN |
| QTS-42211 |  | Telecom Riser #1069 // Set HM Frame | 1d | 2025-12-10 A | 2025-12-10 A | QTS-99620, QTS-42151 | 100% |  |  |  |  |  |  | Construction |  | Build Out | IGMP | BOH | Level 1 |  |  |  | BAB |  | Phase 1 | Construction | 01ADMIN |
| QTS-42231 |  | Telecom Riser #1069 // Rough Overhead Linesets | 5d | 2025-12-10 A | 2025-12-16 A | QTS-42151 | 100% |  |  |  |  |  |  | Construction |  | Mechanical | IGMP | BOH | Level 1 |  |  |  | BAB |  | Phase 1 | Construction | 01ADMIN |
| QTS-42191 |  | Telecom Riser #1069 // Tape & Finish Drywall | 3d | 2025-12-15 A | 2025-12-23 A | QTS-27571 FF, QTS-42181 | 100% | 2025-12-15 | 2025-12-17 |  |  |  |  | Construction |  | Build Out | IGMP | BOH | Level 1 |  |  |  | BAB |  | Phase 1 | Construction | 01ADMIN |
| QTS-42201 |  | Telecom Riser #1069 // Prime & Paint | 2d | 2025-12-29 A | 2025-12-30 A | QTS-42191 | 100% |  |  |  |  |  |  | Construction |  | Build Out | IGMP | BOH | Level 1 |  |  |  | BAB |  | Phase 1 | Construction | 01ADMIN |
| QTS-42221 |  | Telecom Riser #1069 // Rough Overhead Fire Sprinkler | 2d | 2025-12-30 A | 2026-01-05 A | QTS-27271 | 100% | 2025-12-31 | 2026-01-05 |  |  |  |  | Construction |  | Mechanical | IGMP | BOH | Level 1 |  |  |  | BAB |  | Phase 1 | Construction | 01ADMIN |
| QTS-45631 |  | Telecom Riser #1069 // Set Door & Hardware | 1d | 2026-02-09 A | 2026-02-09 A | QTS-99630, QTS-42211, QTS-99650, QTS-42191 | 100% | 2026-02-11 | 2026-02-11 |  |  | QTS-PHX3 DC1 - 6 day w/ Holidays |  | Construction |  | Build Out | IGMP | BOH | Level 1 |  |  |  | BAB |  | Phase 1 | Construction | 01ADMIN |
| QTS-42241 |  | Telecom Riser #1069 // Install Light Fixtures | 2d | 2026-02-13 A | 2026-02-14 A | QTS-42201 | 100% |  |  |  |  | QTS-PHX3 DC1 - 6 day w/ Holidays |  | Construction |  | Electrical | IGMP | BOH | Level 1 |  |  |  | BAB |  | Phase 1 | Construction | 01ADMIN |
| QTS-42251 |  | Telecom Riser #1069 // Install Cable Racks | 5d | 2026-02-16 A | 2026-02-20 A | QTS-42241 | 100% |  |  |  |  | QTS-PHX3 DC1 - 6 day w/ Holidays |  | Construction |  | Electrical | IGMP | BOH | Level 1 |  |  |  | BAB |  | Phase 1 | Construction |  |
| QTS-1000690 |  | Telecom Riser #1069 // Rough In Overhead Electrical | 5d | 2026-06-03 A | 2026-06-08 A | QTS-42201, QTS-42231 | 100% |  |  |  |  | QTS-PHX3 DC1 - 6 day w/ Holidays | 4/21: Hard lid 90% framed |  |  | Electrical |  | BOH |  |  | Electrical |  | BAB |  |  |  | 01ADMIN |
|  | 8 | **L1 / BOH // Fire Riser Room #1063** |  | 2025-12-01 | 2026-08-22 |  |  |  |  |  |  |  |  |  |  |  |  |  |  |  |  |  |  |  |  |  |  |
| QTS-25931 |  | Fire Pump Room #1063 // Frame Walls | 2d | 2025-12-01 A | 2025-12-02 A | QTS-25751 | 100% |  |  |  |  |  |  | Construction | Phase 1 | Build Out | IGMP | BOH | Level 1 |  |  |  | BAB |  |  |  |  |
| QTS-26221 |  | Fire Pump Room #1063 // Rough In Electrical | 10d | 2025-12-03 A | 2025-12-05 A | QTS-25931 | 100% | 2025-12-03 | 2025-12-16 |  |  |  |  | Construction | Phase 1 | Electrical | IGMP | BOH | Level 1 |  |  |  | BAB |  |  |  |  |
| QTS-26231 |  | Fire Pump Room #1063 // In Wall Rough Plumbing | 5d | 2025-12-03 A | 2025-12-09 A | QTS-25931 | 100% |  |  |  |  |  |  | Construction | Phase 1 | Mechanical | IGMP | BOH | Level 1 |  |  |  | BAB |  |  |  | 01ADMIN |
| QTS-26681 |  | Fire Pump Room #1063 // In Wall Inspection | 5d | 2025-12-08 A | 2025-12-08 A | QTS-26221, QTS-26231 | 100% | 2025-12-08 | 2025-12-12 |  |  |  |  | Construction | Phase 1 | Mechanical | IGMP | BOH | Level 1 |  |  |  | BAB |  |  |  |  |
| QTS-27381 |  | Fire Pump Room #1063 // Hang Drywall | 5d | 2025-12-08 A | 2025-12-19 A | QTS-26681 | 100% | 2025-12-08 | 2025-12-12 |  |  |  |  | Construction | Phase 1 | Build Out | IGMP | BOH | Level 1 |  |  |  | BAB |  |  |  | 01ADMIN |
| QTS-26241 |  | Fire Pump Room #1063 // Set HM Frame | 1d | 2025-12-10 A | 2025-12-10 A | QTS-99620, QTS-25931 FF | 100% |  |  |  |  |  |  | Construction | Phase 1 | Build Out | IGMP | BOH | Level 1 |  |  |  | BAB |  |  |  | 01ADMIN |
| QTS-28091 |  | Fire Pump Room #1063 // Tape & Finish Drywall | 5d | 2025-12-29 A | 2025-12-31 A | QTS-27571, QTS-27381 | 100% | 2025-12-29 | 2026-01-06 |  |  |  |  | Construction | Phase 1 | Build Out | IGMP | BOH | Level 1 |  |  |  | BAB |  |  |  | 01ADMIN |
| QTS-28681 |  | Fire Pump Room #1063 // Prime & Paint | 5d | 2026-01-05 A | 2026-01-06 A | QTS-28091 | 100% | 2026-01-05 | 2026-01-09 |  |  |  |  | Construction | Phase 1 | Build Out | IGMP | BOH | Level 1 |  |  |  | BAB |  |  |  | 01ADMIN |
| QTS-1005210 |  | Fire Pump Room #1063 // Rough Overhead Fire Sprinkler | 6d | 2026-01-14 A | 2026-05-01 A | QTS-42221 | 100% | 2026-01-14 | 2026-01-22 |  |  |  |  | Construction | Phase 1 | Electrical | IGMP | BOH | Level 1 |  | Oscar Armenta |  | BAB |  |  |  | 01ADMIN |
| QTS-29301 |  | Fire Pump Room #1063 // Rough Overhead Fire Sprinkler | 6d | 2026-01-14 A | 2026-01-27 A | QTS-42221 | 100% | 2026-01-14 | 2026-01-22 |  |  |  |  | Construction | Phase 1 | Mechanical | IGMP | BOH | Level 1 |  |  |  | BAB |  |  |  | 01ADMIN |
| QTS-30281 |  | Fire Pump Room #1063 // Install Heater | 5d | 2026-01-15 A | 2026-01-16 A | QTS-27381 | 100% | 2026-01-21 | 2026-01-26 |  |  | QTS-PHX3 DC1 - 6 day w/ Holidays |  | Construction | Phase 1 | Mechanical | IGMP | BOH | Level 1 |  |  |  | BAB |  |  |  |  |
| QTS-29001 |  | Fire Pump Room #1063 // Install OH Electrical | 5d | 2026-03-02 A | 2026-03-03 A | QTS-28681 | 100% | 2026-03-04 | 2026-03-09 |  |  | QTS-PHX3 DC1 - 6 day w/ Holidays |  | Construction | Phase 1 | Electrical | IGMP | BOH | Level 1 |  |  |  | BAB |  |  |  |  |
| QTS-45641 |  | Fire Pump Room #1063 // Set Door & Hardware | 1d | 2026-05-04 A | 2026-05-04 A | QTS-99630, QTS-26241, QTS-99650, QTS-28091 | 100% | 2026-05-07 | 2026-05-07 |  |  | QTS-PHX3 DC1 - 6 day w/ Holidays | 3/2/26: Drywall is incomplete in room to install door. | Construction |  | Electrical | IGMP | BOH | Level 1 |  | Oscar Armenta |  | BAB |  | Phase 1 | Construction | 01ADMIN |
| QTS-29681 |  | Fire Pump Room #1063 // Build Fire Risers | 10d | 2026-05-05 A | 2026-05-12 A | QTS-29301, QTS-1005210 | 100% | 2026-05-08 | 2026-05-19 |  |  | QTS-PHX3 DC1 - 6 day w/ Holidays |  | Construction | Phase 1 | Electrical | IGMP | BOH | Level 1 |  | Oscar Armenta |  | BAB |  |  |  |  |
| QTS-30101 |  | Fire Pump Room #1063 // Air Test System | 2d | 2026-06-15 A | 2026-06-15 A | QTS-27271, QTS-26521, QTS-26381, QTS-29681 | 100% | 2026-07-15 | 2026-07-16 |  |  | QTS-PHX3 DC1 - 6 day w/ Holidays |  | Construction | Phase 1 | Mechanical | IGMP | BOH | Level 1 |  | Mechanical |  | BAB |  |  |  |  |
| QTS-1004010 |  | Fire Pump Room #1063 // Water Test System | 2d | 2026-08-19 | 2026-08-20 | QTS-30101 |  |  |  | -87d | 0d | QTS-PHX3 DC1 - 6 day w/ Holidays |  | Construction | Phase 1 | Mechanical | IGMP | BOH | Level 1 |  | Mechanical |  | BAB |  |  |  |  |
| QTS-1004000 |  | Fire Pump Room #1063 // City Inspection of Fire Pump/System | 2d | 2026-08-21 | 2026-08-22 | QTS-1004010 |  |  |  | -87d | 12d | QTS-PHX3 DC1 - 6 day w/ Holidays |  | Construction | Phase 1 | Mechanical | IGMP | FOH | Level 1 |  | Mechanical |  | BAB |  |  |  | 01ADMIN |

Notes:
- QTS-1009320: Scheduler Notes: 4/7: Manpower Delayed
- QTS-42231: allucent_notes_20251216_165335: Zack Goertz on 2025-12-09 10:50: Walls arent done being mudded and taped / allucent_notes_20251209_203830: Zack Goertz on 2025-12-09 10:50: Walls arent done being mudded and taped / allucent_notes: 2025-12-09 10:50 - User: Zack Goertz - Date Added: 2025-12-09 10:50 - Note: Walls arent done being mudded and taped
- QTS-1000690: Scheduler Notes: 4/21: Hard lid 90% framed
- QTS-27381: allucent_notes_20251216_165335: Zach Gioe on 2025-12-16 13:41: Work has been intermittent due to exterior framing completion. / allucent_notes_20251230_164549: Zach Gioe on 2025-12-16 13:41: Work has been intermittent due to exterior framing completion. / allucent_notes: 2025-12-16 13:41 - User: Zach Gioe - Date Added: 2025-12-16 13:41 - Note: Work has been intermittent due to exterior framing completion.
- QTS-45641: Scheduler Notes: 3/2/26: Drywall is incomplete in room to install door.

| ID | WBS | Activity | Duration | Start | Finish | Predecessors | Complete | Remaining | Planned start | Planned finish | Total float | Free float | Calendar | Last Period Finish | Last Period Start | Allucent CSI Group | Project Section | Phase-1 | Layton Discipline | Baseline | Location | Level | Contract | Phase-1-1 | Project Section-1 | Fragnet | Fragnet Responsible Party | Layton Super | Trade Partner |
| --- | --- | --- | --- | --- | --- | --- | --- | --- | --- | --- | --- | --- | --- | --- | --- | --- | --- | --- | --- | --- | --- | --- | --- | --- | --- | --- | --- | --- | --- |
|  | 4 | **L1 / BOH // Restrooms #1077/1078** |  | 2025-12-01 | 2026-09-05 |  |  |  |  |  |  |  |  |  |  |  |  |  |  |  |  |  |  |  |  |  |  |  |  |
| QTS-26631 |  | Restrooms #1078/1077 // Layout | 1d | 2025-12-01 A | 2025-12-01 A | QTS-25751 | 100% |  | 2025-11-20 | 2025-11-20 |  |  |  | 2023-01-05 | 2023-01-05 | 01ADMIN | Construction | Phase 1 | Build Out | IGMP | BOH | Level 1 | BAB |  |  |  |  |  |  |
| QTS-28311 |  | Restrooms #1078/1077 // Rough Overhead Fire Sprinkler | 1d | 2025-12-30 A | 2025-12-30 A | QTS-42221 SS | 100% |  |  |  |  |  | QTS-PHX3 DC1 - 6 day w/ Holidays | 2023-01-17 | 2023-01-13 |  | Construction | Phase 1 | Mechanical | IGMP | BOH | Level 1 | BAB |  |  |  |  |  |  |
|  | 1 | **Fragnet / RFI #817** |  | 2026-01-21 | 2026-02-04 |  |  |  |  |  |  |  |  |  |  |  |  |  |  |  |  |  |  |  |  |  |  |  |  |
| QTS-1004540 |  | Fragnet / Corgan Site Visit | 1d | 2026-01-21 A | 2026-01-21 A | QTS-1371 SS | 100% |  |  |  |  |  | QTS-PHX3 DC1 - 6 day w/ Holidays | 2023-04-21 | 2023-04-20 |  | Construction |  | Build Out | IGMP | BOH | Level 1 | BAB | Phase 1 | Construction | Fragnet | Performance Contracting Inc. |  |  |
| QTS-1004550 |  | Fragnet / Submission of RFI #817 for Restroom Walls | 4d | 2026-01-22 A | 2026-01-26 A | QTS-1004540 | 100% |  |  |  |  |  | QTS-PHX3 DC1 - 6 day w/ Holidays | 2023-04-21 | 2023-04-20 |  | Construction |  | Build Out | IGMP | BOH | Level 1 | BAB | Phase 1 | Construction | Fragnet | Performance Contracting Inc. |  |  |
| QTS-1004560 |  | Fragnet / Design Response on RFI #817 for Restroom Walls | 8d | 2026-01-27 A | 2026-02-04 A | QTS-1004550 | 100% |  |  |  |  |  | QTS-PHX3 DC1 - 6 day w/ Holidays | 2023-04-21 | 2023-04-20 |  | Construction |  | Build Out | IGMP | BOH | Level 1 | BAB | Phase 1 | Construction | Fragnet | Performance Contracting Inc. |  |  |
|  | 2 | **Remaining Scope** |  | 2026-02-09 | 2026-09-05 |  |  |  |  |  |  |  |  |  |  |  |  |  |  |  |  |  |  |  |  |  |  |  |  |
| QTS-26711 |  | Restrooms #1078/1077 // Frame Walls | 2d | 2026-02-09 A | 2026-02-17 A | QTS-28311, QTS-26401, QTS-26631, QTS-1004560 | 100% |  | 2026-02-12 | 2026-02-13 |  |  | QTS-PHX3 DC1 - 6 day w/ Holidays | 2023-01-09 | 2023-01-06 |  | Construction | Phase 1 | Build Out | IGMP | BOH | Level 1 | BAB |  |  |  |  |  |  |
| QTS-26971 |  | Restrooms #1078/1077 // Rough In-Wall Plumbing | 5d | 2026-02-12 A | 2026-03-20 A | QTS-26711 FF | 100% |  | 2026-02-12 | 2026-02-17 |  |  | QTS-PHX3 DC1 - 6 day w/ Holidays | 2023-01-13 | 2023-01-11 |  | Construction | Phase 1 | Mechanical | IGMP | BOH | Level 1 | BAB |  |  |  |  |  |  |
| QTS-1004060 |  | Restrooms #1078/1077 // Top Out Interior Walls | 1d | 2026-02-18 A | 2026-02-19 A | QTS-26711 | 100% |  | 2026-02-19 | 2026-02-19 |  |  | QTS-PHX3 DC1 - 6 day w/ Holidays | 2023-01-09 | 2023-01-06 |  | Construction | Phase 1 | Build Out | IGMP | BOH | Level 1 | BAB |  |  |  |  |  |  |
| QTS-26951 |  | Restrooms #1078/1077 // Rough Overhead Mechanical | 5d | 2026-02-18 A | 2026-02-23 A | QTS-26711 | 100% |  |  |  |  |  | QTS-PHX3 DC1 - 6 day w/ Holidays | 2023-01-26 | 2023-01-23 |  | Construction | Phase 1 | Mechanical | IGMP | BOH | Level 1 | BAB |  |  |  |  |  |  |
| QTS-27741 |  | Restrooms #1078/1077 // Rough Overhead Plumbing | 5d | 2026-02-18 A | 2026-02-23 A | QTS-26711, QTS-26951 | 100% |  | 2026-03-18 | 2026-03-23 |  |  | QTS-PHX3 DC1 - 6 day w/ Holidays | 2023-01-12 | 2023-01-10 |  | Construction | Phase 1 | Mechanical | IGMP | BOH | Level 1 | BAB |  |  |  |  |  |  |
| QTS-45661 |  | Restrooms #1078/1077 // Set HM Frame | 2d | 2026-02-23 A | 2026-02-23 A | QTS-99620, QTS-26711 SS | 100% |  | 2026-02-23 | 2026-02-24 |  |  | QTS-PHX3 DC1 - 6 day w/ Holidays | 2023-04-21 | 2023-04-20 |  | Construction |  | Build Out | IGMP | BOH | Level 1 | BAB | Phase 1 | Construction |  |  |  |  |
| QTS-26961 |  | Restrooms #1078/1077 // Rough In-Wall Electrical, Security, & Access Controls | 2d | 2026-03-11 A | 2026-03-12 A | QTS-26711, QTS-9871 | 100% |  |  |  |  |  | QTS-PHX3 DC1 - 6 day w/ Holidays | 2023-01-12 | 2023-01-10 |  | Construction | Phase 1 | Electrical | IGMP | BOH | Level 1 | BAB |  |  |  |  |  |  |
| QTS-1009260 |  | Restrooms #1078/1077 // MEP Inspection | 11d | 2026-03-18 A | 2026-04-17 A | QTS-26961 | 100% |  | 2026-03-18 | 2026-03-30 |  |  | QTS-PHX3 DC1 - 6 day w/ Holidays | 2023-01-09 | 2023-01-06 |  | Construction | Phase 1 | Build Out | IGMP | BOH | Level 1 | BAB |  |  |  |  |  |  |
| QTS-27751 |  | Restrooms #1078/1077 // In Wall Inspection | 1d | 2026-04-21 A | 2026-04-21 A | QTS-26961, QTS-26971 | 100% |  |  |  |  |  | QTS-PHX3 DC1 - 6 day w/ Holidays | 2023-01-17 | 2023-01-17 |  | Construction | Phase 1 | Mechanical | IGMP | BOH | Level 1 | BAB |  |  |  |  |  |  |
| QTS-45651 |  | Restrooms #1078/1077 // Frame Ceilings | 2d | 2026-04-21 A | 2026-05-19 A | QTS-27741, QTS-26971 | 100% |  | 2026-04-21 | 2026-04-22 |  |  | QTS-PHX3 DC1 - 6 day w/ Holidays | 2023-01-09 | 2023-01-06 |  | Construction |  | Build Out | IGMP | BOH | Level 1 | BAB | Phase 1 | Construction |  |  | Bobby Martinez |  |
| QTS-27771 |  | Restrooms #1078/1077 // Install Backing for Restroom Specialties | 1d | 2026-04-28 A | 2026-05-12 A | QTS-26971, QTS-1009260 | 100% |  | 2026-04-28 | 2026-04-28 |  |  | QTS-PHX3 DC1 - 6 day w/ Holidays | 2023-02-27 | 2023-02-27 |  | Construction | Phase 1 | Build Out | IGMP | BOH | Level 1 | BAB |  |  |  |  | Bobby Martinez |  |
| QTS-27901 |  | Restrooms #1078/1077 // Insulate Walls | 1d | 2026-05-12 A | 2026-05-12 A | QTS-27771 FF, QTS-27751 | 100% |  |  |  |  |  | QTS-PHX3 DC1 - 6 day w/ Holidays | 2023-02-24 | 2023-02-24 |  | Construction | Phase 1 | Build Out | IGMP | BOH | Level 1 | BAB |  |  |  |  | Bobby Martinez |  |
| QTS-1012000 |  | Restrooms #1078/1077 // Rough Overhead Electrical/ Light Fixtures Install | 2d | 2026-06-15 A | 2026-06-23 A | QTS-26951 | 100% |  | 2026-06-27 | 2026-06-29 |  |  | QTS-PHX3 DC1 - 6 day w/ Holidays | 2023-03-08 | 2023-03-07 |  | Construction | Phase 1 | Electrical | IGMP | BOH | Level 1 | BAB |  |  |  |  | Electrical |  |
| QTS-28431 |  | Restrooms #1078/1077 // Hang Drywall Walls | 2d | 2026-06-17 A | 2026-06-18 A | QTS-27751, QTS-27901, QTS-28311 | 100% |  | 2026-06-24 | 2026-06-25 |  |  | QTS-PHX3 DC1 - 6 day w/ Holidays | 2023-03-01 | 2023-02-28 |  | Construction | Phase 1 | Build Out | IGMP | BOH | Level 1 | BAB |  |  |  |  | Bobby Martinez |  |
| QTS-28441 |  | Restrooms #1078/1077 // Above Ceiling Inspection | 1d | 2026-06-29 A | 2026-06-29 A | QTS-45651, QTS-27741, QTS-27761, QTS-28311, QTS-1012000 | 100% |  | 2026-06-24 | 2026-06-24 |  |  | QTS-PHX3 DC1 - 6 day w/ Holidays | 2023-03-09 | 2023-03-09 |  | Construction | Phase 1 | Mechanical | IGMP | BOH | Level 1 | BAB |  |  |  |  | Mechanical |  |
| QTS-28551 |  | Restrooms #1078/1077 // Hang Drywall on Hard Lids | 1d | 2026-07-08 A | 2026-07-08 A | QTS-28441, QTS-28431 FF | 100% |  | 2026-07-15 | 2026-07-15 |  |  | QTS-PHX3 DC1 - 6 day w/ Holidays | 2023-03-13 | 2023-03-10 |  | Construction | Phase 1 | Build Out | IGMP | BOH | Level 1 | BAB |  |  |  |  | Bobby Martinez |  |
| QTS-28711 |  | Restrooms #1078/1077 // Tape & Finish Drywall | 3d | 2026-07-08 A | 2026-07-09 A | QTS-28551 SS, QTS-28431, QTS-28551 FF | 100% |  | 2026-07-15 | 2026-07-17 |  |  | QTS-PHX3 DC1 - 6 day w/ Holidays | 2023-03-20 | 2023-03-14 |  | Construction | Phase 1 | Build Out | IGMP | BOH | Level 1 | BAB |  |  |  |  | Bobby Martinez |  |
| QTS-1004070 |  | Restrooms #1078/1077 // Tape & Finish Interior Walls - Top Out | 2d | 2026-07-15 A | 2026-07-16 A | QTS-1004060, QTS-1009260, QTS-28431 | 100% |  | 2026-07-22 | 2026-07-23 |  |  | QTS-PHX3 DC1 - 6 day w/ Holidays | 2023-01-09 | 2023-01-06 |  | Construction | Phase 1 | Build Out | IGMP | BOH | Level 1 | BAB |  |  |  |  | Bobby Martinez | PCI |
| QTS-28911 |  | Restrooms #1078/1077 // Prime & Paint | 1d | 2026-07-15 A | 2026-07-15 A | QTS-28711 | 100% |  | 2026-07-22 | 2026-07-22 |  |  | QTS-PHX3 DC1 - 6 day w/ Holidays | 2023-04-12 | 2023-04-11 |  | Construction | Phase 1 | Build Out | IGMP | BOH | Level 1 | BAB |  |  |  |  | Bobby Martinez | PPC |
| QTS-1004080 |  | Restrooms #1078/1077 // Prime & Paint Interior Walls - Top Out | 1d | 2026-07-17 A | 2026-07-17 A | QTS-1004070 | 100% |  | 2026-07-24 | 2026-07-24 |  |  | QTS-PHX3 DC1 - 6 day w/ Holidays | 2023-01-09 | 2023-01-06 |  | Construction | Phase 1 | Build Out | IGMP | BOH | Level 1 | BAB |  |  |  |  | Bobby Martinez | PPC |
| QTS-28981 |  | Restrooms #1078/1077 // Install Wall & Floor Tile | 10d | 2026-08-03 A | 2026-08-20 | QTS-28911, QTS-28711, QTS-1005290, QTS-1004080 | 80% | 2d | 2026-08-12 | 2026-08-22 | -99d | 0d | QTS-PHX3 DC1 - 6 day w/ Holidays | 2023-04-10 | 2023-04-06 |  | Construction | Phase 1 | Build Out | IGMP | BOH | Level 1 | BAB |  |  |  |  | Jake Shimmin | Wholesale Flooring |
| QTS-29601 |  | Restrooms #1078/1077 // Install Mechanical Trim | 1d | 2026-08-04 A | 2026-08-04 A | QTS-28911 | 100% |  | 2026-08-19 | 2026-08-19 |  |  | QTS-PHX3 DC1 - 6 day w/ Holidays | 2023-04-14 | 2023-04-13 |  | Construction | Phase 1 | Mechanical | IGMP | BOH | Level 1 | BAB |  |  |  |  | Jorge Maldonado | Bel-Aire |
| QTS-29481 |  | Restrooms #1078/1077 // Plumbing Fixtures Install | 7d | 2026-08-21 | 2026-08-28 | QTS-28911, QTS-28981 |  |  |  |  | -96d | 3d | QTS-PHX3 DC1 - 6 day w/ Holidays | 2023-04-14 | 2023-04-13 |  | Construction | Phase 1 | Mechanical | IGMP | BOH | Level 1 | BAB |  |  |  |  | Jorge Maldonado | Bel-Aire |
| QTS-29491 |  | Restrooms #1078/1077 // Electrical Trim | 1d | 2026-08-21 | 2026-08-21 | QTS-28911, QTS-28981 |  |  |  |  | -91d | 3d | QTS-PHX3 DC1 - 6 day w/ Holidays | 2023-04-14 | 2023-04-13 |  | Construction | Phase 1 | Electrical | IGMP | BOH | Level 1 | BAB |  |  |  |  | Electrical | Rosendin Electric, Inc |
| QTS-29501 |  | Restrooms #1078/1077 // Field Measure for Countertops | 1d | 2026-08-21 | 2026-08-21 | QTS-28981 SS+4d, QTS-28711, QTS-28981 |  |  |  |  | -99d | 0d | QTS-PHX3 DC1 - 6 day w/ Holidays |  |  |  | Construction | Phase 1 | Build Out | IGMP | BOH | Level 1 | BAB |  |  |  |  | Bobby Martinez | ISEC |
| QTS-29551 |  | Restrooms #1078/1077 // Fabricate & Deliver Countertops | 3d | 2026-08-22 | 2026-08-25 | QTS-29501 |  |  |  |  | -99d | 0d | QTS-PHX3 DC1 - 6 day w/ Holidays |  |  |  | Construction | Phase 1 | Build Out | IGMP | BOH | Level 1 | BAB |  | Construction |  |  | Bobby Martinez | ISEC |
| QTS-29541 |  | Restrooms #1078/1077 // Final Coat of Paint | 1d | 2026-08-26 | 2026-08-26 | QTS-29491, QTS-29551 |  |  |  |  | -94d | 5d | QTS-PHX3 DC1 - 6 day w/ Holidays |  |  |  | Construction | Phase 1 | Build Out | IGMP | BOH | Level 1 | BAB |  |  |  |  | Bobby Martinez | PPC |
| QTS-29951 |  | Restrooms #1078/1077 // Set Countertops | 2d | 2026-08-26 | 2026-08-27 | QTS-29551 |  |  |  |  | -99d | 0d | QTS-PHX3 DC1 - 6 day w/ Holidays |  |  |  | Construction | Phase 1 | Build Out | IGMP | BOH | Level 1 | BAB |  | Construction |  |  | Bobby Martinez | ISEC |
| QTS-30001 |  | Restrooms #1078/1077 // Install Plumbing Trim at Countertops | 2d | 2026-08-28 | 2026-08-29 | QTS-29951 |  |  |  |  | -99d | 0d | QTS-PHX3 DC1 - 6 day w/ Holidays |  |  |  | Construction | Phase 1 | Mechanical | IGMP | BOH | Level 1 | BAB |  | Construction |  |  | Jorge Maldonado | Bel-Aire |
| QTS-29511 |  | Restrooms #1078/1077 // Set Lockers | 2d | 2026-08-31 | 2026-09-01 | QTS-28981, QTS-30001 |  |  |  |  | -99d | 0d | QTS-PHX3 DC1 - 6 day w/ Holidays |  |  |  | Construction | Phase 1 | Build Out | IGMP | BOH | Level 1 | BAB |  | Construction |  |  | Bobby Martinez |  |
| QTS-29661 |  | Restrooms #1078/1077 // Install Restroom Specialties/ ADA Trim | 2d | 2026-09-02 | 2026-09-03 | QTS-29481, QTS-29541, QTS-29511 |  |  |  |  | -99d | 0d | QTS-PHX3 DC1 - 6 day w/ Holidays | 2023-04-21 | 2023-04-20 |  | Construction | Phase 1 | Build Out | IGMP | BOH | Level 1 | BAB |  |  |  |  | Bobby Martinez | ISEC |
| QTS-29751 |  | Restrooms #1078/1077 // Set Doors & Hardware | 2d | 2026-09-04 | 2026-09-05 | QTS-99650, QTS-45661, QTS-29511, QTS-29661, QTS-29601 |  |  |  |  | -99d | 0d | QTS-PHX3 DC1 - 6 day w/ Holidays | 2023-04-21 | 2023-04-20 |  | Construction | Phase 1 | Build Out | IGMP | BOH | Level 1 | BAB |  |  |  |  | Bobby Martinez | ISEC |

Notes:
- QTS-1004540: Scheduler Notes: RFI-0817 - PCI - Clarification on Walls, Piping Obstructions, and I-Beam / Conflicts in RR 1077 & 1078 / Notes: Clarification on Walls, Piping Obstructions, and I-Beam Conflicts in RR 1077 & 1078
- QTS-1004550: Scheduler Notes: RFI-0817 - PCI - Clarification on Walls, Piping Obstructions, and I-Beam / Conflicts in RR 1077 & 1078_CORGAN_UPDATED
- QTS-27771: Scheduler Notes: 3/24: Waiting for MEP Inspection / Notes: 3/24: Waiting for MEP Inspection
- QTS-1012000: Scheduler Notes: 4/7: Ceiling incomplete. / Notes: 4/7: Ceiling incomplete.
- QTS-1004070: Scheduler Notes: 3/24: Waiting for MEP Inspection / Notes: 3/24: Waiting for MEP Inspection
- QTS-28981: Notes: pushed - do not have enough tile

| ID | WBS | Activity | Duration | Start | Finish | Predecessors | Complete | Planned start | Planned finish | Total float | Free float | Constraint | Calendar | Allucent CSI Group | Project Section | Layton Discipline | Baseline | Phase-1-1 | Project Section-1 | Location | Level | Contract | Notes | Phase-1 | Layton Super | Trade Partner |
| --- | --- | --- | --- | --- | --- | --- | --- | --- | --- | --- | --- | --- | --- | --- | --- | --- | --- | --- | --- | --- | --- | --- | --- | --- | --- | --- |
|  | 11 | **L1 / BOH // Elevator #E4** |  | 2025-12-09 | 2026-11-10 |  |  |  |  |  |  |  |  |  |  |  |  |  |  |  |  |  |  |  |  |  |
| QTS-27151 |  | Freight Elevator E4 // Safety Barricade Install & Netting | 4d | 2025-12-09 A | 2026-01-08 A | QTS-26091 | 100% | 2025-12-09 | 2025-12-12 |  |  |  | QTS-PHX3 DC1 - 6 day w/ Holidays | 01ADMIN | Construction | Build Out | IGMP | Phase 1 | Construction | BOH | Level 1 | BAB |  |  |  |  |
| QTS-27801 |  | Freight Elevator E4 // Provide Temp Power Box at Level 1 Elevator Entry | 2d | 2026-01-21 A | 2026-01-22 A | QTS-27151 | 100% |  |  |  |  |  | QTS-PHX3 DC1 - 6 day w/ Holidays | 01ADMIN | Construction | Build Out | IGMP | Phase 1 | Construction | BOH | Level 1 | BAB |  |  |  |  |
| QTS-28061 |  | Freight Elevator E4 // Temp Roof Above Elevator Shaft | 5d | 2026-02-25 A | 2026-03-02 A | QTS-27801 | 100% |  |  |  |  |  | QTS-PHX3 DC1 - 6 day w/ Holidays | 01ADMIN | Construction | Core & Shell | IGMP | Phase 1 | Construction | BOH | Level 1 | BAB |  |  |  |  |
| QTS-30781 |  | Freight Elevator E4 // Install Machine & Controller | 8d | 2026-07-27 A | 2026-08-04 A | QTS-27151, QTS-1002880, QTS-1002860, QTS-1002840 | 100% | 2026-07-29 | 2026-08-06 |  |  |  | QTS-PHX3 DC1 - 6 day w/ Holidays |  | Construction | Electrical | IGMP |  |  | BOH | Level 1 | BAB | Waiting for CO to do night work. Start 8/17 | Phase 1 | Ben Ribble | Otis Elevator Company |
|  | 1 | **Fragnet - L1 / BOH // Elevator #E4** |  | 2026-08-19 | 2026-08-27 |  |  |  |  |  |  |  |  |  |  |  |  |  |  |  |  |  |  |  |  |  |
| QTS-1014320 |  | Freight Elevator E4 // Install Machine & Controller | 8d | 2026-08-19 | 2026-08-27 | QTS-30781 |  |  |  | -59d | 0d | start on or after 2026-08-17 | QTS-PHX3 DC1 - 6 day w/ Holidays |  | Construction | Electrical | IGMP |  |  | BOH | Level 1 | BAB | Waiting for CO to do night work. Start 8/17 | Phase 1 | Ben Ribble | Otis Elevator Company |
|  | 2 | **Existing Scope - L1 / BOH // Elevator #E4** |  | 2026-08-28 | 2026-11-10 |  |  |  |  |  |  |  |  |  |  |  |  |  |  |  |  |  |  |  |  |  |
| QTS-30731 |  | Freight Elevator E4 // Install Rails | 6d | 2026-08-28 | 2026-09-03 | QTS-30751, QTS-18861, QTS-26091, QTS-28061, QTS-1014320 |  |  |  | -59d | 0d |  | QTS-PHX3 DC1 - 6 day w/ Holidays |  | Construction | Build Out | IGMP |  |  | BOH | Level 1 | BAB |  | Phase 1 | Ben Ribble | Otis Elevator Company |
| QTS-30841 |  | Freight Elevator E4 // Install Elevator Floor & Walls | 8d | 2026-09-04 | 2026-09-14 | QTS-30731, QTS-1014320 |  |  |  | -59d | 0d |  | QTS-PHX3 DC1 - 6 day w/ Holidays |  | Construction | Build Out | IGMP |  |  | BOH | Level 1 | BAB |  | Phase 1 | Ben Ribble | Otis Elevator Company |
| QTS-30871 |  | Freight Elevator E4 // Hoistway Equipment, Conduit & Wire | 7d | 2026-09-15 | 2026-09-22 | QTS-30841 |  |  |  | -59d | 0d |  | QTS-PHX3 DC1 - 6 day w/ Holidays |  | Construction | Electrical | IGMP |  |  | BOH | Level 1 | BAB |  | Phase 1 | Ben Ribble | Otis Elevator Company |
| QTS-30901 |  | Freight Elevator E4 // Install Elevator Thresholds & Grout | 5d | 2026-09-23 | 2026-09-28 | QTS-30871 |  |  |  | -59d | 0d |  | QTS-PHX3 DC1 - 6 day w/ Holidays |  | Construction | Build Out | IGMP | Phase 1 | Construction | BOH | Level 1 | BAB |  |  | Ben Ribble | Otis Elevator Company |
| QTS-30921 |  | Freight Elevator E4 // Install Conduit for Heat & Smoke Sensors Elevator Shaft | 5d | 2026-09-29 | 2026-10-03 | QTS-30901 |  |  |  | -59d | 0d |  | QTS-PHX3 DC1 - 6 day w/ Holidays |  | Construction | Electrical | IGMP | Phase 1 | Construction | BOH | Level 1 | BAB |  |  | Ben Ribble | Otis Elevator Company |
| QTS-30931 |  | Freight Elevator E4 // Install Entrances, Doors, Hardware | 6d | 2026-10-05 | 2026-10-10 | QTS-30871, QTS-30841, QTS-30901, QTS-30921 |  |  |  | -59d | 0d |  | QTS-PHX3 DC1 - 6 day w/ Holidays |  | Construction | Build Out | IGMP |  |  | BOH | Level 1 | BAB |  | Phase 1 | Ben Ribble | Otis Elevator Company |
| QTS-1009630 |  | Freight Elevator E4 // Install Fire Sprinkler | 1d | 2026-10-12 | 2026-10-12 | QTS-30841, QTS-30931 |  |  |  | -59d | 0d |  | QTS-PHX3 DC1 - 6 day w/ Holidays |  | Construction | Electrical | IGMP | Phase 1 | Construction | FOH | Level 1 | BAB |  |  | Mechanical | Olympic |
| QTS-1009610 |  | Freight Elevator E4 // Install Communications, & FA Conduits | 4d | 2026-10-13 | 2026-10-16 | QTS-1009630 |  |  |  | -59d | 0d |  | QTS-PHX3 DC1 - 6 day w/ Holidays |  | Construction | Electrical | IGMP | Phase 1 | Construction | FOH | Level 1 | BAB |  |  | Electrical | E2/Nexus |
| QTS-1009620 |  | Freight Elevator E4 // Rough In, Pull & Terminate Power & Lighting | 4d | 2026-10-13 | 2026-10-16 | QTS-1009610 SS |  |  |  | -59d | 0d |  | QTS-PHX3 DC1 - 6 day w/ Holidays |  | Construction | Electrical | IGMP | Phase 1 | Construction | FOH | Level 1 | BAB |  |  | Electrical | REI |
| QTS-1009640 |  | Freight Elevator E4 // Install FA Devices & Pull & Terminate FA Wire | 2d | 2026-10-17 | 2026-10-19 | QTS-1009610, QTS-1009620 |  |  |  | -59d | 0d |  | QTS-PHX3 DC1 - 6 day w/ Holidays |  | Construction | Electrical | IGMP | Phase 1 | Construction | FOH | Level 1 | BAB |  |  | Electrical | Nexus |
| QTS-1009650 |  | Freight Elevator E4 // Install SUMP Pump & Discharge Piping | 1d | 2026-10-20 | 2026-10-20 | QTS-1009640 |  |  |  | -59d | 0d |  | QTS-PHX3 DC1 - 6 day w/ Holidays |  | Construction | Mechanical | IGMP | Phase 1 | Construction | FOH | Level 1 | BAB |  |  | Mechanical | Bel-Aire |
| QTS-1009730 |  | Freight Elevator E4 // Pull Communications & Security Cable | 1d | 2026-10-21 | 2026-10-21 | QTS-1009650 |  |  |  | -59d | 0d |  | QTS-PHX3 DC1 - 6 day w/ Holidays |  | Construction | Electrical | IGMP | Phase 1 | Construction | FOH | Level 1 | BAB |  |  | Electrical | E2 |
| QTS-1009780 |  | Freight Elevator E4 // Install Security Devices | 1d | 2026-10-22 | 2026-10-22 | QTS-1009730 |  |  |  | -59d | 0d |  | QTS-PHX3 DC1 - 6 day w/ Holidays |  | Construction | LV | IGMP | Phase 1 | Construction | FOH | Level 1 | BAB |  |  | Low Voltage | Securitas |
| QTS-1009790 |  | Freight Elevator E4 // Install Elevator Flooring | 1d | 2026-10-23 | 2026-10-23 | QTS-1009780 |  |  |  | -59d | 0d |  | QTS-PHX3 DC1 - 6 day w/ Holidays |  | Construction | Build Out | IGMP | Phase 1 | Construction | FOH | Level 1 | BAB |  |  | Ben Ribble | Wholesale Flooring |
| QTS-30941 |  | Freight Elevator E4 // Pre-Adjustment Checklist | 3d | 2026-10-24 | 2026-10-27 | QTS-30931, QTS-30871 FF, QTS-1009790, QTS-1014010 |  |  |  | -59d | 0d |  | QTS-PHX3 DC1 - 6 day w/ Holidays |  | Construction | Build Out | IGMP |  |  | BOH | Level 1 | BAB |  | Phase 1 | Ben Ribble | Otis Elevator Company |
| QTS-30951 |  | Freight Elevator E4 // Adjust Freight Elevator E4 | 10d | 2026-10-28 | 2026-11-07 | QTS-30941 |  |  |  | -59d | 0d |  | QTS-PHX3 DC1 - 6 day w/ Holidays |  | Construction | Build Out | IGMP |  |  | BOH | Level 1 | BAB |  | Phase 1 | Ben Ribble | Otis Elevator Company |
| QTS-30961 |  | Freight Elevator E4 // State Elevator Inspection | 1d | 2026-11-09 | 2026-11-09 | QTS-30951 |  |  |  | -59d | 0d |  | QTS-PHX3 DC1 - 6 day w/ Holidays |  | Construction | Build Out | IGMP |  |  | BOH | Level 1 | BAB |  | Phase 1 | Ben Ribble | Otis Elevator Company |
| QTS-30971 |  | Freight Elevator E4 // City Inspection | 1d | 2026-11-10 | 2026-11-10 | QTS-30951, QTS-30961 |  |  |  | -59d | 8d |  | QTS-PHX3 DC1 - 6 day w/ Holidays |  | Construction | Build Out | IGMP |  |  | BOH | Level 1 | BAB |  | Phase 1 | Ben Ribble | Otis Elevator Company |

Notes:
- QTS-1014320: Scheduler Notes: Waiting for CO to do night work. Start 8/17

| ID | WBS | Activity | Duration | Start | Finish | Predecessors | Complete | Planned start | Planned finish | Calendar | Project Section | Layton Discipline | Baseline | Phase-1-1 | Project Section-1 | Location | Level | Contract | Allucent CSI Group | Layton Super | Trade Partner |
| --- | --- | --- | --- | --- | --- | --- | --- | --- | --- | --- | --- | --- | --- | --- | --- | --- | --- | --- | --- | --- | --- |
|  | 1 | **L1 / BOH // Elevator Machine Room** |  | 2026-01-14 | 2026-07-18 |  |  |  |  |  |  |  |  |  |  |  |  |  |  |  |  |
| QTS-1002680 |  | Elevator Machine Room #1062 // Frame Walls | 2d | 2026-01-14 A | 2026-01-19 A | QTS-28311 | 100% | 2026-01-14 | 2026-01-15 | QTS-PHX3 DC1 - 6 day w/ Holidays | Construction | Build Out | IGMP | Phase 1 | Construction | BOH | Level 1 | BAB |  |  |  |
| QTS-1002720 |  | Elevator Machine Room #1062 // Set HM Frame | 1d | 2026-01-17 A | 2026-01-17 A | QTS-1002680 | 100% | 2026-01-21 | 2026-01-21 | QTS-PHX3 DC1 - 6 day w/ Holidays | Construction | Build Out | IGMP | Phase 1 | Construction | BOH | Level 1 | BAB | 01ADMIN |  |  |
| QTS-1002830 |  | Elevator Machine Room #1062 // Insulate Walls | 1d | 2026-01-19 A | 2026-01-19 A | QTS-1002680 FF | 100% | 2026-01-24 | 2026-01-24 | QTS-PHX3 DC1 - 6 day w/ Holidays | Construction | Build Out | IGMP | Phase 1 | Construction | BOH | Level 1 | BAB |  |  |  |
| QTS-1002710 |  | Elevator Machine Room #1062 // Hang Drywall | 2d | 2026-01-20 A | 2026-01-21 A | QTS-1002830 | 100% | 2026-01-26 | 2026-01-27 | QTS-PHX3 DC1 - 6 day w/ Holidays | Construction | Build Out | IGMP | Phase 1 | Construction | BOH | Level 1 | BAB | 01ADMIN |  |  |
| QTS-1002740 |  | Elevator Machine Room #1062 // Tape & Finish Drywall | 4d | 2026-01-22 A | 2026-01-26 A | QTS-1002710 | 100% |  |  | QTS-PHX3 DC1 - 6 day w/ Holidays | Construction | Build Out | IGMP | Phase 1 | Construction | BOH | Level 1 | BAB | 01ADMIN |  |  |
| QTS-1002690 |  | Elevator Machine Room #1062 // Rough In Wall Electrical | 2d | 2026-01-28 A | 2026-02-10 A | QTS-1002680, QTS-1004790 FF | 100% | 2026-01-28 | 2026-01-29 | QTS-PHX3 DC1 - 6 day w/ Holidays | Construction | Electrical | IGMP | Phase 1 | Construction | BOH | Level 1 | BAB |  |  |  |
| QTS-1004790 |  | Elevator Machine Room #1062 // Remove Drywall to Complete In Wall Electrical | 8d | 2026-01-28 A | 2026-02-10 A | QTS-1002680 | 100% | 2026-01-28 | 2026-02-05 | QTS-PHX3 DC1 - 6 day w/ Holidays | Construction | Build Out | IGMP | Phase 1 | Construction | BOH | Level 1 | BAB |  |  |  |
| QTS-1002730 |  | Elevator Machine Room #1062 // Rough Overhead Linesets | 3d | 2026-02-03 A | 2026-02-05 A | QTS-1002680 | 100% |  |  | QTS-PHX3 DC1 - 6 day w/ Holidays | Construction | Mechanical | IGMP | Phase 1 | Construction | BOH | Level 1 | BAB | 01ADMIN |  |  |
| QTS-1005310 |  | Elevator Machine Room #1062 // Reinstall Drywall | 4d | 2026-02-25 A | 2026-02-26 A | QTS-1002740 | 100% | 2026-02-25 | 2026-02-28 | QTS-PHX3 DC1 - 6 day w/ Holidays | Construction | Build Out | IGMP | Phase 1 | Construction | BOH | Level 1 | BAB | 01ADMIN |  |  |
| QTS-1002750 |  | Elevator Machine Room #1062 // Prime & Paint | 2d | 2026-02-27 A | 2026-03-12 A | QTS-1002740, QTS-1002720, QTS-1002700 FF, QTS-1005310 | 100% | 2026-02-27 | 2026-02-28 | QTS-PHX3 DC1 - 6 day w/ Holidays | Construction | Build Out | IGMP | Phase 1 | Construction | BOH | Level 1 | BAB | 01ADMIN |  |  |
| QTS-1002700 |  | Elevator Machine Room #1062 // In Wall Inspection | 1d | 2026-03-02 A | 2026-03-02 A | QTS-1002690 | 100% |  |  | QTS-PHX3 DC1 - 6 day w/ Holidays | Construction | Electrical | IGMP | Phase 1 | Construction | BOH | Level 1 | BAB |  |  |  |
| QTS-1002880 |  | Elevator Machine Room #1062 // Install AC Unit | 2d | 2026-03-07 A | 2026-03-09 A | QTS-1002750 SS, QTS-1002730 | 100% |  |  | QTS-PHX3 DC1 - 6 day w/ Holidays | Construction | Build Out | IGMP | Phase 1 | Construction | BOH | Level 1 | BAB | 01ADMIN |  |  |
| QTS-1008890 |  | Elevator Machine Room #1062 // Demo Drywall | 1d | 2026-03-18 A | 2026-03-18 A | QTS-1002750 | 100% |  |  | QTS-PHX3 DC1 - 6 day w/ Holidays | Construction | Build Out | IGMP | Phase 1 | Construction | BOH | Level 1 | BAB | 01ADMIN |  |  |
| QTS-1008900 |  | Elevator Machine Room #1062 // Install Conduit for Exterior Lights | 2d | 2026-03-19 A | 2026-03-21 A | QTS-1008890 | 100% | 2026-03-19 | 2026-03-20 | QTS-PHX3 DC1 - 6 day w/ Holidays | Construction | Build Out | IGMP | Phase 1 | Construction | BOH | Level 1 | BAB | 01ADMIN |  |  |
| QTS-1008910 |  | Elevator Machine Room #1062 // Hang Drywall | 2d | 2026-03-21 A | 2026-03-23 A | QTS-1008900 | 100% |  |  | QTS-PHX3 DC1 - 6 day w/ Holidays | Construction | Build Out | IGMP | Phase 1 | Construction | BOH | Level 1 | BAB | 01ADMIN |  |  |
| QTS-1008920 |  | Elevator Machine Room #1062 // Tape & Finish Drywall | 4d | 2026-03-24 A | 2026-03-28 A | QTS-1008910 | 100% | 2026-03-24 | 2026-03-27 | QTS-PHX3 DC1 - 6 day w/ Holidays | Construction | Build Out | IGMP | Phase 1 | Construction | BOH | Level 1 | BAB | 01ADMIN |  |  |
| QTS-1008930 |  | Elevator Machine Room #1062 // Prime & Paint | 2d | 2026-03-29 A | 2026-03-30 A | QTS-1008920 | 100% | 2026-04-04 | 2026-04-06 | QTS-PHX3 DC1 - 6 day w/ Holidays | Construction | Build Out | IGMP | Phase 1 | Construction | BOH | Level 1 | BAB | 01ADMIN |  |  |
| QTS-1002840 |  | Elevator Machine Room #1062 // Install Wall Base | 1d | 2026-05-26 A | 2026-07-02 A | QTS-1002750, QTS-1002880, QTS-1008930 | 100% | 2026-05-26 | 2026-05-26 | QTS-PHX3 DC1 - 6 day w/ Holidays | Construction | Build Out | IGMP | Phase 1 | Construction | BOH | Level 1 | BAB | 01ADMIN | Ben Ribble |  |
| QTS-1011130 |  | Elevator Machine Room #1062 // Frame Hard Lid | 3d | 2026-05-26 A | 2026-06-09 A | QTS-1002750 | 100% | 2026-05-26 | 2026-05-28 | QTS-PHX3 DC1 - 6 day w/ Holidays | Construction | Build Out | IGMP | Phase 1 | Construction | BOH | Level 1 | BAB | 01ADMIN | Ben Ribble |  |
| QTS-1002850 |  | Elevator Machine Room #1062 // Rough OH Electrical | 2d | 2026-07-15 A | 2026-07-16 A | QTS-1002750, QTS-1008930, QTS-1011130, QTS-1002840 | 100% | 2026-07-22 | 2026-07-23 | QTS-PHX3 DC1 - 6 day w/ Holidays | Construction | Electrical | IGMP | Phase 1 | Construction | BOH | Level 1 | BAB | 01ADMIN | Electrical | REI |
| QTS-1002860 |  | Elevator Machine Room #1062 // Install Light Fixtures / Electrical Trim / Disconnects | 2d | 2026-07-17 A | 2026-07-18 A | QTS-1002850 | 100% | 2026-07-24 | 2026-07-25 | QTS-PHX3 DC1 - 6 day w/ Holidays | Construction | Electrical | IGMP | Phase 1 | Construction | BOH | Level 1 | BAB | 01ADMIN | Electrical | REI |
|  | 6 | **L1 / BOH // Loading Dock** |  | 2026-01-19 | 2026-08-19 |  |  |  |  |  |  |  |  |  |  |  |  |  |  |  |  |
| QTS-1002770 |  | BOH Loading Dock // Frame Walls | 2d | 2026-01-19 A | 2026-01-20 A | QTS-1002680 | 100% | 2026-01-16 | 2026-01-17 | QTS-PHX3 DC1 - 6 day w/ Holidays | Construction | Build Out | IGMP | Phase 1 | Construction | BOH | Level 1 | BAB |  |  |  |
| QTS-1002780 |  | BOH Loading Dock // Rough In Wall Electrical | 10d | 2026-02-02 A | 2026-03-04 A | QTS-1002770 | 100% | 2026-02-02 | 2026-02-12 | QTS-PHX3 DC1 - 6 day w/ Holidays | Construction | Electrical | IGMP | Phase 1 | Construction | BOH | Level 1 | BAB |  |  |  |
| QTS-1002790 |  | BOH Loading Dock // In Wall Inspection | 1d | 2026-03-05 A | 2026-03-05 A | QTS-1002780 | 100% |  |  | QTS-PHX3 DC1 - 6 day w/ Holidays | Construction | Mechanical | IGMP | Phase 1 | Construction | BOH | Level 1 | BAB |  |  |  |
| QTS-1002800 |  | BOH Loading Dock // Hang Drywall | 1d | 2026-03-06 A | 2026-03-10 A | QTS-1002790 | 100% | 2026-03-06 | 2026-03-06 | QTS-PHX3 DC1 - 6 day w/ Holidays | Construction | Build Out | IGMP | Phase 1 | Construction | BOH | Level 1 | BAB | 01ADMIN |  |  |
| QTS-1002610 |  | BOH Loading Dock // Hang OH Doors | 6d | 2026-03-12 A | 2026-03-24 A | QTS-1002800 | 100% | 2026-03-12 | 2026-03-18 | QTS-PHX3 DC1 - 6 day w/ Holidays | Construction | Core & Shell | IGMP | Phase 2 | Construction | BOH |  | BAB | 01ADMIN |  |  |
| QTS-1002630 |  | BOH Loading Dock // Install Dock Levelers | 2d | 2026-03-12 A | 2026-03-13 A | QTS-1002800 | 100% |  |  | QTS-PHX3 DC1 - 6 day w/ Holidays | Construction | Core & Shell | IGMP | Phase 2 | Construction | BOH |  | BAB | 01ADMIN |  |  |
| QTS-1002640 |  | BOH Loading Dock // Install Dock Scissor Lift | 3d | 2026-03-12 A | 2026-03-13 A | QTS-1002800 | 100% | 2026-03-12 | 2026-03-14 | QTS-PHX3 DC1 - 6 day w/ Holidays | Construction | Core & Shell | IGMP | Phase 2 | Construction | BOH |  | BAB | 01ADMIN |  |  |
| QTS-1002650 |  | BOH Loading Dock // Install Dock Bumpers | 1d | 2026-03-18 A | 2026-03-18 A | QTS-1002630 | 100% |  |  | QTS-PHX3 DC1 - 6 day w/ Holidays | Construction | Core & Shell | IGMP | Phase 2 | Construction | BOH |  | BAB | 01ADMIN |  |  |
| QTS-1008940 |  | BOH Loading Dock // Rough In Wall Electrical - North Wall | 5d | 2026-03-18 A | 2026-03-20 A | QTS-1002780 | 100% | 2026-03-18 | 2026-03-23 | QTS-PHX3 DC1 - 6 day w/ Holidays | Construction | Electrical | IGMP | Phase 1 | Construction | BOH | Level 1 | BAB |  |  |  |
| QTS-1008950 |  | BOH Loading Dock // Hang Drywall - North Wall | 1d | 2026-03-18 A | 2026-03-18 A | QTS-1008940 SS | 100% |  |  | QTS-PHX3 DC1 - 6 day w/ Holidays | Construction | Build Out | IGMP | Phase 1 | Construction | BOH | Level 1 | BAB | 01ADMIN |  |  |
| QTS-1002660 |  | BOH Loading Dock // Tie In Electrical Connections to Dock Equipment | 5d | 2026-03-19 A | 2026-07-21 A | QTS-1002650, QTS-1002640 | 100% | 2026-03-19 | 2026-03-24 | QTS-PHX3 DC1 - 6 day w/ Holidays | Construction | Electrical | IGMP | Phase 2 | Construction | BOH |  | BAB | 01ADMIN | Electrical | REI |
| QTS-1008710 |  | BOH Loading Dock // Demo Slurry Backfill | 5d | 2026-03-19 A | 2026-03-19 A | QTS-1371 SS | 100% | 2026-03-18 | 2026-03-23 | QTS-PHX3 DC1 - 6 day w/ Holidays | Construction | Core & Shell | IGMP | Phase 2 | Construction | BOH |  | BAB | 01ADMIN |  |  |
| QTS-1002810 |  | BOH Loading Dock // Tape & Finish Drywall | 3d | 2026-03-25 A | 2026-03-27 A | QTS-1002800 FF, QTS-1008950, QTS-1002610 | 100% |  |  | QTS-PHX3 DC1 - 6 day w/ Holidays | Construction | Build Out | IGMP | Phase 1 | Construction | BOH | Level 1 | BAB | 01ADMIN |  |  |
| QTS-1002820 |  | BOH Loading Dock // Prime & Paint | 2d | 2026-03-28 A | 2026-03-30 A | QTS-1002810 | 100% |  |  | QTS-PHX3 DC1 - 6 day w/ Holidays | Construction | Build Out | IGMP | Phase 1 | Construction | BOH | Level 1 | BAB | 01ADMIN |  |  |
| QTS-1002670 |  | BOH Loading Dock // Install CIP Stairs | 5d | 2026-04-13 A | 2026-06-22 A | QTS-12581, QTS-1008710 | 100% | 2026-04-13 | 2026-04-17 | QTS-PHX3 DC1 - 6 day w/ Holidays | Construction | Build Out | IGMP | Phase 2 | Construction | BOH |  | BAB | 01ADMIN | Ed Carter |  |

Notes:
- QTS-1002730: allucent_notes_20251216_165335: Zack Goertz on 2025-12-09 10:50: Walls arent done being mudded and taped / allucent_notes_20251209_203830: Zack Goertz on 2025-12-09 10:50: Walls arent done being mudded and taped / allucent_notes: 2025-12-09 10:50 - User: Zack Goertz - Date Added: 2025-12-09 10:50 - Note: Walls arent done being mudded and taped
- QTS-1002750: Scheduler Notes: 3/17: Closing will re-add line after drywall in demoed and / reinstalled. / Notes: 3/17: Closing will re-add line after drywall in demoed and reinstalled.
- QTS-1011130: Update Notes: 6/11 - Actualized by mistake, duplicated to track progress correctly
- QTS-1002780: Scheduler Notes: Started before 2/2 / Notes: Started before 2/2
- QTS-1002610: allucent_notes_20251216_165335: Ron Carroll on 2025-12-15T21:05:46.525Z: This activity belongs to Luis Vea / allucent_notes_20251230_164549: Ron Carroll on 2025-12-15T21:05:46.525Z: This activity belongs to Luis Vea / Scheduler Notes: 3/17: Rough opening for overhead door. PCI needs to reframe to fit the / door. Need to raise 3-4” / Notes: 3/17: Rough opening for overhead door. PCI needs to reframe to fit the door. Need to raise 3-4” / allucent_notes: 2025-12-15T21:05:46.525Z - User: Ron Carroll - Date Added: 2025-12-15T21:05:46.525Z - Note: This activity belongs to Luis Vea
- QTS-1008940: Scheduler Notes: 3/17: Re-adding due to incorrect actualization. Orginal was / QTS-1002780 / Notes: 3/17: Re-adding due to incorrect actualization. Orginal was QTS-1002780
- QTS-1008950: Scheduler Notes: 3/17: Re-adding due to incorrect actualization. Orginal was / QTS-1002800 / Notes: 3/17: Re-adding due to incorrect actualization. Orginal was QTS-1002800
- QTS-1002660: Scheduler Notes: 4/21: REI needs to pull wire for dock levers / Notes: 4/21: REI needs to pull wire for dock levers / 7/21-Manpower
- QTS-1002670: Scheduler Notes: 4/7: Suntec scheduled to pour 4/10. 3/24: Impacted by campus / underground scope / Notes: 4/7: Suntec scheduled to pour 4/10. 3/24: Impacted by campus underground scope

| ID | WBS | Activity | Duration | Start | Finish | Predecessors | Complete | Remaining | Planned start | Planned finish | Total float | Free float | Calendar | Notes | Allucent CSI Group | Project Section | Layton Discipline | Baseline | Phase-1-1 | Project Section-1 | Location | Fragnet | Layton Super | Fragnet Responsible Party | Contract | Trade Partner | Level | Phase-1 |
| --- | --- | --- | --- | --- | --- | --- | --- | --- | --- | --- | --- | --- | --- | --- | --- | --- | --- | --- | --- | --- | --- | --- | --- | --- | --- | --- | --- | --- |
|  | 1 | **Fragnet - L1 / BOH // Loading Dock** |  | 2026-07-28 | 2026-08-19 |  |  |  |  |  |  |  |  |  |  |  |  |  |  |  |  |  |  |  |  |  |  |  |
| QTS-1013650 |  | BOH Loading Dock // Fragnet Delay due to Manpower - Tie In Electrical Connections to Dock Equipment | 2d | 2026-07-28 A | 2026-08-19 | QTS-1002650, QTS-1002640, QTS-1002660 | 50% | 1d | 2026-07-29 | 2026-07-30 | -84d | 15d | QTS-PHX3 DC1 - 6 day w/ Holidays | Manpower directed to priority work | 01ADMIN | Construction | Electrical | IGMP | Phase 2 | Construction | BOH | Fragnet | Electrical | D.H. Pace Company, Inc. | BAB | REI |  |  |
|  | 2 | **Existing Scope - L1 / BOH // Loading Dock** |  |  |  |  |  |  |  |  |  |  |  |  |  |  |  |  |  |  |  |  |  |  |  |  |  |  |
|  | 9 | **L1 / BOH // Facilities Office #1070** |  | 2026-02-10 | 2026-08-04 |  |  |  |  |  |  |  |  |  |  |  |  |  |  |  |  |  |  |  |  |  |  |  |
| QTS-1005350 |  | Fragnet / Facilities Office #1070 // RFI #850 Submitted | 1d | 2026-02-10 A | 2026-02-10 A | QTS-1371 SS | 100% |  |  |  |  |  | QTS-PHX3 DC1 - 6 day w/ Holidays | Structural Cross Brace Beam Protruding Into 1011C Doorway | 01ADMIN | Construction | Build Out | IGMP | Phase 1 | Construction | Gen Yard | Fragnet |  | Rosendin Electric Inc. | BAB |  | Level 1 |  |
| QTS-1005360 |  | Fragnet / Facilities Office #1070 // RFI #850 Design Response #1 | 5d | 2026-02-11 A | 2026-02-16 A | QTS-1005350 | 100% |  | 2026-02-10 | 2026-02-14 |  |  | QTS-PHX3 DC1 - 6 day w/ Holidays |  | 01ADMIN | Construction | Build Out | IGMP | Phase 1 | Construction | Gen Yard | Fragnet |  | Rosendin Electric Inc. | BAB |  | Level 1 |  |
| QTS-1005370 |  | Fragnet / Facilities Office #1070 // RFI #850 Resubmitted | 7d | 2026-02-17 A | 2026-02-24 A | QTS-1005360 | 100% |  | 2026-02-10 | 2026-02-17 |  |  | QTS-PHX3 DC1 - 6 day w/ Holidays |  | 01ADMIN | Construction | Build Out | IGMP | Phase 1 | Construction | Gen Yard | Fragnet |  | Rosendin Electric Inc. | BAB |  | Level 1 |  |
| QTS-1005380 |  | Fragnet / Facilities Office #1070 // RFI #850 Design Response #2 | 6d | 2026-02-25 A | 2026-03-18 A | QTS-1005370 | 100% |  | 2026-02-25 | 2026-03-03 |  |  | QTS-PHX3 DC1 - 6 day w/ Holidays |  | 01ADMIN | Construction | Build Out | IGMP | Phase 1 | Construction | BOH | Fragnet |  | Rosendin Electric Inc. | BAB |  | Level 1 |  |
| QTS-1005390 |  | Fragnet / Facilities Office #1070 // RFI #850 Subcontractor Pricing | 5d | 2026-03-18 A | 2026-03-18 A | QTS-1005380 FF | 100% |  | 2026-03-25 | 2026-03-30 |  |  | QTS-PHX3 DC1 - 6 day w/ Holidays |  | 01ADMIN | Construction | Build Out | IGMP | Phase 1 | Construction | BOH | Fragnet |  | Rosendin Electric Inc. | BAB |  | Level 1 |  |
| QTS-1007160 |  | Fragnet / Facilities Office #1070 // RFI #850 Rerouting Electrical and Relocating Junction Box | 5d | 2026-03-30 A | 2026-07-27 A | QTS-1005390 | 100% |  | 2026-04-04 | 2026-04-09 |  |  | QTS-PHX3 DC1 - 6 day w/ Holidays | 4/7: 60% complete. | 01ADMIN | Construction | Electrical | IGMP | Phase 1 | Construction | BOH | Fragnet | Electrical | Rosendin Electric Inc. | BAB | REI | Level 1 |  |
| QTS-1007150 |  | Fragnet / Facilities Office #1070 // RFI #850 Demo and Reinstall Door Opening | 3d | 2026-04-01 A | 2026-04-03 A | QTS-1005390 | 100% |  |  |  |  |  | QTS-PHX3 DC1 - 6 day w/ Holidays |  | 01ADMIN | Construction | Build Out | IGMP | Phase 1 | Construction | BOH | Fragnet |  | Performance Contracting Inc. | BAB |  | Level 1 |  |
| QTS-1012300 |  | Facilities Office #1070 // Install Window Shade | 5d | 2026-07-29 A | 2026-08-04 A | A1020 | 100% |  | 2026-08-25 | 2026-08-29 |  |  | QTS-PHX3 DC1 - 6 day w/ Holidays |  | 01ADMIN | Construction | Electrical | IGMP | Phase 1 | Construction | BOH | Fragnet | Jake Shimmin | Rosendin Electric Inc. | BAB |  | Level 1 |  |
|  | 2 | **Level 2 Back of House** |  | 2025-10-08 | 2026-09-02 |  |  |  |  |  |  |  |  |  |  |  |  |  |  |  |  |  |  |  |  |  |  |  |
|  | 6 | **L2/ BOH // Tenant Improvement** |  | 2025-10-08 | 2026-03-30 |  |  |  |  |  |  |  |  |  |  |  |  |  |  |  |  |  |  |  |  |  |  |  |
| QTS-47031 |  | TI Area J & K // Prime & Paint Exposed Structure | 5d | 2025-10-08 A | 2025-10-15 A | QTS-2081, QTS-23381 | 100% |  | 2025-10-08 | 2025-10-14 |  |  |  |  | 01ADMIN | Construction | Build Out | IGMP | Phase 1 | Construction | FOH |  | Doug Hayes |  | BAB |  | Level 1 |  |
| QTS-23471 |  | TI Area J & K // Layout Walls | 3d | 2025-10-16 A | 2025-10-20 A | QTS-47031 | 100% |  |  |  |  |  |  |  | 01ADMIN | Construction | Build Out | IGMP | Phase 1 | Construction | BOH |  | Doug Hayes |  | BAB |  | Level 2 |  |
| QTS-26651 |  | TI Area J & K // Rough Overhead Fire Sprinkler | 7d | 2025-10-16 A | 2025-10-17 A | QTS-23471 SS | 100% |  | 2025-10-16 | 2025-10-24 |  |  |  |  | 01ADMIN | Construction | Mechanical | IGMP | Phase 1 | Construction | BOH |  |  |  | BAB |  | Level 2 |  |
| QTS-26111 |  | TI Area J & K // Frame Walls | 6d | 2025-10-27 A | 2025-11-03 A | QTS-26651 | 100% |  |  |  |  |  |  |  | 01ADMIN | Construction | Build Out | IGMP | Phase 1 | Construction | BOH |  | Doug Hayes |  | BAB |  | Level 2 |  |
| QTS-26641 |  | TI Area J & K // Rough In-Wall Electrical, Security, & Access Controls | 8d | 2025-11-04 A | 2025-12-01 A | QTS-26111, QTS-9871 | 100% |  | 2025-11-07 | 2025-11-18 |  |  |  |  | 01ADMIN | Construction | Electrical | IGMP | Phase 1 | Construction | BOH |  |  |  | BAB |  | Level 2 |  |
| QTS-27791 |  | TI Area J & K // MEP In Wall Inspection | 1d | 2026-03-05 A | 2026-03-05 A | QTS-26641 | 100% |  |  |  |  |  | QTS-PHX3 DC1 - 6 day w/ Holidays |  | 01ADMIN | Construction | Electrical | IGMP | Phase 1 | Construction | BOH |  |  |  | BAB |  | Level 2 |  |
| QTS-27911 |  | TI Area J & K // Insulate Walls | 5d | 2026-03-10 A | 2026-03-30 A | QTS-27791 | 100% |  | 2026-03-10 | 2026-03-14 |  |  | QTS-PHX3 DC1 - 6 day w/ Holidays | 3/17: Waiting for electrical to complete. | 01ADMIN | Construction | Build Out | IGMP | Phase 1 | Construction | BOH |  |  |  | BAB |  | Level 2 |  |
|  | 7 | **L2 / BOH // IDF Room #2064 (Early Access)** |  | 2025-10-29 | 2026-08-04 |  |  |  |  |  |  |  |  |  |  |  |  |  |  |  |  |  |  |  |  |  |  |  |
| QTS-27011 |  | IDF Room #2064 // Rough Overhead Fire Sprinkler | 2d | 2025-10-29 A | 2025-10-30 A | QTS-26651 | 100% |  | 2025-11-03 | 2025-11-04 |  |  |  |  | 01ADMIN | Construction | Mechanical | IGMP |  |  | BOH |  |  |  | BAB |  | Level 2 | Phase 1 |
| QTS-26761 |  | IDF Room #2064 // Frame Walls | 2d | 2025-11-04 A | 2025-11-05 A | QTS-27011, QTS-26111 | 100% |  | 2025-11-07 | 2025-11-10 |  |  |  |  | 01ADMIN | Construction | Build Out | IGMP |  |  | BOH |  | Doug Hayes |  | BAB |  | Level 2 | Phase 1 |
| QTS-26991 |  | IDF Room #2064 // Rough In Electrical | 10d | 2025-11-26 A | 2025-12-02 A | QTS-26761 | 100% |  | 2025-11-26 | 2025-12-11 |  |  |  |  | 01ADMIN | Construction | Electrical | IGMP |  |  | BOH |  |  |  | BAB |  | Level 2 | Phase 1 |
| QTS-27021 |  | IDF Room #2064 // Rough Overhead Linesets | 5d | 2025-11-26 A | 2025-12-04 A | QTS-26761 | 100% |  |  |  |  |  |  |  | 01ADMIN | Construction | Mechanical | IGMP |  |  | BOH |  |  |  | BAB |  | Level 2 | Phase 1 |
| QTS-27371 |  | IDF Room #2064 // In Wall Inspection | 1d | 2025-12-02 A | 2025-12-02 A | QTS-26991 | 100% |  |  |  |  |  |  |  | 01ADMIN | Construction | Mechanical | IGMP |  |  | BOH |  |  |  | BAB |  | Level 2 | Phase 1 |
| QTS-27511 |  | IDF Room #2064 // Hang Drywall | 1d | 2025-12-02 A | 2025-12-02 A | QTS-27371 | 100% |  |  |  |  |  |  |  | 01ADMIN | Construction | Build Out | IGMP |  |  | BOH |  |  |  | BAB |  | Level 2 | Phase 1 |

Notes:
- QTS-1013650: Scheduler Notes: 4/21: REI needs to pull wire for dock levers
- QTS-1005350: Scheduler Notes: RFI-0850 - PCI - Structural Cross Brace Beam Protruding Into 1011C Doorway / - CORGAN Response
- QTS-1007160: Scheduler Notes: 4/7: 60% complete.
- QTS-47031: allucent_notes_20251021_145627: Zack Goertz on 2025-09-30T21:45:30.556Z: Painting out Zone 3 exposed deck. Should get to BOH exposed deck next week / Zack Goertz on 2025-10-14T14:52:33.333Z: Started, Rain delayed finishing. SHould be done tomorrow. / -ZG 10/14 / Zack Goertz on 2025-10-14 07:10: Rain Delay / allucent_notes_20251014_152335: Zack Goertz on 2025-09-30T21:45:30.556Z: Painting out Zone 3 exposed deck. Should get to BOH exposed deck next week / Zack Goertz on 2025-10-14T14:52:33.333Z: Started, Rain delayed finishing. SHould be done tomorrow. / -ZG 10/14 / Zack Goertz on 2025-10-14 07:10: Rain Delay / allucent_notes: 2025-09-30T21:45:30.556Z - User: Zack Goertz - Date Added: 2025-09-30T21:45:30.556Z - Note: Painting out Zone 3 exposed deck. Should get to BOH exposed deck next week / 2025-10-14T14:52:33.333Z - User: Zack Goertz - Date Added: 2025-10-14T14:52:33.333Z -
- QTS-26651: allucent_notes_20251104_160200: Scott Masterson on 2025-10-27 16:10: STOP WORK ISSUED!!! / Jason Johnston on 2025-11-04 12:11: finished on time. / allucent_notes_20251028_163138: Scott Masterson on 2025-10-27 16:10: STOP WORK ISSUED!!! / allucent_notes_20251027_224008: Scott Masterson on 2025-10-27 16:10: STOP WORK ISSUED!!! / allucent_notes: 2025-10-27 16:10 - User: Scott Masterson - Date Added: 2025-10-27 16:10 - Note: STOP WORK ISSUED!!! / 2025-11-04 12:11 - User: Jason Johnston - Date Added: 2025-11-04 12:11 - Note: finished on time.
- QTS-26641: allucent_notes_20251202_153722: Zack Goertz on 2025-11-17 13:11: BOH is behind. All labor has been pulled to FOH level 1 and level 2. REI has yet to move back to BOH / allucent_notes_20251118_192630: Zack Goertz on 2025-11-17 13:11: BOH is behind. All labor has been pulled to FOH level 1 and level 2. REI has yet to move back to BOH / allucent_notes: 2025-11-17 13:11 - User: Zack Goertz - Date Added: 2025-11-17 13:11 - Note: BOH is behind. All labor has been pulled to FOH level 1 and level 2. REI has yet to move back to BOH
- QTS-27791: allucent_notes_20251216_165335: David Wiltberger on 2025-12-02 06:41: wall built late / allucent_notes_20251209_203830: David Wiltberger on 2025-12-02 06:41: wall built late / allucent_notes_20251202_153722: David Wiltberger on 2025-12-02 06:41: wall built late / allucent_notes_20251230_164549: David Wiltberger on 2025-12-02 06:41: wall built late / Sean Waisner on 2025-12-30 15:41: No rough in has begun / allucent_notes: 2025-12-02 06:41 - User: David Wiltberger - Date Added: 2025-12-02 06:41 - Note: wall built late / 2025-12-30 15:41 - User: Sean Waisner - Date Added: 2025-12-30 15:41 - Note: No rough in has begun
- QTS-27911: Scheduler Notes: 3/17: Waiting for electrical to complete.
- QTS-26991: allucent_notes_20251202_153722: Zack Goertz on 2025-11-11T18:26:57.952Z: REI is behind / Jason Johnston on 2025-11-11 15:11: REI Won't be there because we haven't sent them a schedule. / Zack Goertz on 2025-11-17 13:11: BOH is behind. All labor has been pulled to FOH level 1 and level 2. REI has yet to have anyone working in the BOH / allucent_notes_20251118_192630: Zack Goertz on 2025-11-11T18:26:57.952Z: REI is behind / Jason Johnston on 2025-11-11 15:11: REI Won't be there because we haven't sent them a schedule. / Zack Goertz on 2025-11-17 13:11: BOH is behind. All labor has been pulled to FOH level 1 and level 2. REI has yet to have anyone working in the BOH / allucent_notes_20251111_182405: Zack Goertz on 2025-11-11T18:26:57.952Z: REI is behind / Jason Johnston on 2025-11-11 15:11: REI Won't be there because we haven't sent them a schedule. / allucent_notes: 2025-11-11T18:26:57.952Z - User: Zack Goertz - Date Added: 2025-11-11T18:26:57.952Z - Note: REI is behind / 2025-11-11 15:11 - User: Jason Johnston - Date Added: 2025-11-11 15:11 - Note: REI Won't be there because we haven't sent them a schedule. / 2025
- QTS-27021: allucent_notes_20251202_153722: Zack Goertz on 2025-11-11T18:26:46.011Z: Bel-aire is behind / Jason Johnston on 2025-11-11 15:11: BOH is ready for overhead. / Zack Goertz on 2025-11-17 13:11: BOH is behind. All labor has been pulled to FOH level 1 and level 2. BAM has had between 2-4 people working in the BOH for the last few weeks. / allucent_notes_20251118_192630: Zack Goertz on 2025-11-11T18:26:46.011Z: Bel-aire is behind / Jason Johnston on 2025-11-11 15:11: BOH is ready for overhead. / Zack Goertz on 2025-11-17 13:11: BOH is behind. All labor has been pulled to FOH level 1 and level 2. BAM has had between 2-4 people working in the BOH for the last few weeks. / allucent_notes_20251111_182405: Zack Goertz on 2025-11-11T18:26:46.011Z: Bel-aire is behind / Jason Johnston on 2025-11-11 15:11: BOH is ready for overhead. / allucent_notes: 2025-11-11T18:26:46.011Z - User: Zack Goertz - Date Added: 2025-11-11T18:26:46.011Z - Note: Bel-aire is behind / 2025-11-11 15:11 - User: Jason Johnston - Date Added: 2025-11-11 15:11 - Note: BOH is ready for overhead. / 2025-11-17 13:11 - User: Zack Go

| ID | WBS | Activity | Duration | Start | Finish | Predecessors | Complete | Planned start | Planned finish | Calendar | Notes | Allucent CSI Group | Project Section | Phase-1 | Layton Discipline | Baseline | Location | Level | Fragnet | Fragnet Responsible Party | Contract | Phase-1-1 | Project Section-1 | Layton Super | Trade Partner |
| --- | --- | --- | --- | --- | --- | --- | --- | --- | --- | --- | --- | --- | --- | --- | --- | --- | --- | --- | --- | --- | --- | --- | --- | --- | --- |
|  | 1 | **Fragnet / IDF Room Wall Fire Rating Redesign** |  | 2025-12-03 | 2026-01-13 |  |  |  |  |  |  |  |  |  |  |  |  |  |  |  |  |  |  |  |  |
| QTS-1000740 |  | Fragnet / IDF Room #2064 // Submission of RFI 732 | 1d | 2025-12-03 A | 2025-12-03 A | QTS-1030 SS | 100% |  |  |  | Datahall TH Sensor Type and Layout | 01ADMIN | Construction | Phase 1 | Build Out | IGMP | BOH | Level 2 | Fragnet | Performance Contracting Inc. | BAB |  |  |  |  |
| QTS-1000750 |  | Fragnet / IDF Room #2064 // Design Response Received RFI 732 | 2d | 2025-12-04 A | 2025-12-05 A | QTS-1000740 | 100% |  |  |  |  | 01ADMIN | Construction | Phase 1 | Build Out | IGMP | BOH | Level 2 | Fragnet | Performance Contracting Inc. | BAB |  |  |  |  |
| QTS-1000830 |  | Fragnet / IDF Room #2064 // Demo North IDF Wall | 3d | 2025-12-08 A | 2025-12-09 A | QTS-1000750 | 100% | 2025-12-08 | 2025-12-10 |  |  | 01ADMIN | Construction | Phase 1 | Build Out | IGMP | BOH | Level 2 | Fragnet | Performance Contracting Inc. | BAB |  |  |  |  |
| QTS-1000770 |  | Fragnet / IDF Room #2064 // Frame North IDF Wall | 1d | 2025-12-12 A | 2025-12-15 A | QTS-1000830 | 100% | 2025-12-10 | 2025-12-10 |  |  | 01ADMIN | Construction | Phase 1 | Build Out | IGMP | BOH | Level 2 | Fragnet | Performance Contracting Inc. | BAB |  |  |  |  |
| QTS-1000760 |  | Fragnet / IDF Room #2064 // In Wall Electrical Rough In North IDF Wall | 1d | 2025-12-16 A | 2025-12-16 A | QTS-1000770 | 100% | 2025-12-11 | 2025-12-11 |  |  | 01ADMIN | Construction | Phase 1 | Build Out | IGMP | BOH | Level 2 | Fragnet | Performance Contracting Inc. | BAB |  |  |  |  |
| QTS-1000820 |  | Fragnet / IDF Room #2064 // In Wall Electrical Inspection for North IDF Wall | 1d | 2025-12-17 A | 2025-12-17 A | QTS-1000760 | 100% |  |  |  |  | 01ADMIN | Construction | Phase 1 | Build Out | IGMP | BOH | Level 2 | Fragnet | Performance Contracting Inc. | BAB |  |  |  |  |
| QTS-1000780 |  | Fragnet / IDF Room #2064 // Hang Drywall for North IDF Wall | 1d | 2025-12-18 A | 2025-12-18 A | QTS-1000820 | 100% |  |  |  |  | 01ADMIN | Construction | Phase 1 | Build Out | IGMP | BOH | Level 2 | Fragnet | Performance Contracting Inc. | BAB |  |  |  |  |
| QTS-1000790 |  | Fragnet / IDF Room #2064 // Tape & Finish for North IDF Wall | 5d | 2025-12-19 A | 2025-12-30 A | QTS-1000780, QTS-1000760 | 100% |  |  |  |  | 01ADMIN | Construction | Phase 1 | Build Out | IGMP | BOH | Level 2 | Fragnet | Performance Contracting Inc. | BAB |  |  |  |  |
| QTS-1000800 |  | Fragnet / IDF Room #2064 // Fire Caulking for North IDF Wall | 1d | 2026-01-07 A | 2026-01-07 A | QTS-1000790 | 100% |  |  | QTS-PHX3 DC1 - 6 day w/ Holidays |  | 01ADMIN | Construction | Phase 1 | Build Out | IGMP | BOH | Level 2 | Fragnet | Alpha Insulation & Waterproofing, Inc | BAB |  |  |  |  |
| QTS-1000810 |  | Fragnet / IDF Room #2064 // Prime & Paint for North IDF Wall | 1d | 2026-01-13 A | 2026-01-13 A | QTS-1000800 | 100% |  |  | QTS-PHX3 DC1 - 6 day w/ Holidays |  | 01ADMIN | Construction | Phase 1 | Build Out | IGMP | BOH | Level 2 | Fragnet | Pennington Painting Company, LLC | BAB |  |  |  |  |
|  | 2 | **Remaining Work** |  | 2025-12-03 | 2026-08-04 |  |  |  |  |  |  |  |  |  |  |  |  |  |  |  |  |  |  |  |  |
| QTS-27571 |  | IDF Room #2064 // Tape & Finish Drywall | 3d | 2025-12-03 A | 2025-12-23 A | QTS-27511 | 100% | 2025-12-03 | 2025-12-05 |  |  | 01ADMIN | Construction | Phase 1 | Build Out | IGMP | BOH | Level 2 |  |  | BAB |  |  |  |  |
| QTS-27001 |  | IDF Room #2064 // Set HM Frame | 1d | 2025-12-10 A | 2025-12-10 A | QTS-99620, QTS-26761 FF | 100% |  |  |  |  | 01ADMIN | Construction | Phase 1 | Build Out | IGMP | BOH | Level 2 |  |  | BAB |  |  |  |  |
| QTS-28081 |  | IDF Room #2064 // Prime & Paint | 2d | 2026-01-14 A | 2026-01-15 A | QTS-27571 | 100% |  |  | QTS-PHX3 DC1 - 6 day w/ Holidays |  | 01ADMIN | Construction | Phase 1 | Build Out | IGMP | BOH | Level 2 |  |  | BAB |  |  |  |  |
| QTS-28251 |  | IDF Room #2064 // Plywood Install Interior | 1d | 2026-01-16 A | 2026-01-16 A | QTS-27571, QTS-28081 | 100% |  |  | QTS-PHX3 DC1 - 6 day w/ Holidays |  | 01ADMIN | Construction | Phase 1 | Build Out | IGMP | BOH | Level 2 |  |  | BAB |  |  |  |  |
| QTS-28331 |  | IDF Room #2064 // Install AC Unit Interior | 2d | 2026-01-17 A | 2026-01-19 A | QTS-1000810, QTS-27021, QTS-28251, QTS-28081 | 100% | 2026-01-17 | 2026-01-20 | QTS-PHX3 DC1 - 6 day w/ Holidays |  | 01ADMIN | Construction | Phase 1 | Mechanical | IGMP | BOH | Level 2 |  |  | BAB |  |  |  |  |
| QTS-45521 |  | IDF Room #2064 // Rough Overhead Electrical | 2d | 2026-02-03 A | 2026-04-06 A | QTS-28081, QTS-26761 | 100% | 2026-02-11 | 2026-02-12 | QTS-PHX3 DC1 - 6 day w/ Holidays |  | 01ADMIN | Construction |  | Electrical | IGMP | BOH | Level 2 |  |  | BAB | Phase 1 | Construction |  |  |
| QTS-28671 |  | IDF Room #2064 // Install Light Fixtures | 2d | 2026-03-02 A | 2026-03-03 A | QTS-28331 | 100% |  |  | QTS-PHX3 DC1 - 6 day w/ Holidays |  | 01ADMIN | Construction | Phase 1 | Electrical | IGMP | BOH | Level 2 |  |  | BAB |  |  |  |  |
| QTS-1009460 |  | IDF Room #2064 // Frame Hard Lid | 3d | 2026-04-01 A | 2026-04-07 A | QTS-27511 | 100% | 2026-04-01 | 2026-04-03 | QTS-PHX3 DC1 - 6 day w/ Holidays |  | 01ADMIN | Construction |  | Build Out | IGMP | BOH | Level 2 |  |  | BAB | Phase 1 | Construction |  |  |
| QTS-45531 |  | IDF Room #2064 // Install Door & Hardware | 2d | 2026-04-15 A | 2026-04-16 A | QTS-99630, QTS-27001, QTS-99650, QTS-27511, QTS-27911, QTS-1009460 | 100% |  |  | QTS-PHX3 DC1 - 6 day w/ Holidays |  | 01ADMIN | Construction |  | Build Out | IGMP | BOH | Level 2 |  |  | BAB | Phase 1 | Construction |  |  |
| QTS-46951 |  | IDF Room #2064 // MEP Overhead Inspection | 1d | 2026-05-18 A | 2026-05-18 A | QTS-45521 | 100% |  |  | QTS-PHX3 DC1 - 6 day w/ Holidays | 4/14: Needs to be scheduled. | 01ADMIN | Construction |  | Mechanical | IGMP | BOH | Level 2 |  |  | BAB | Phase 1 | Construction |  |  |
| QTS-28821 |  | IDF Room #2064 // Install Cable Racks | 5d | 2026-07-29 A | 2026-08-04 A | QTS-28671, QTS-46951 | 100% | 2026-08-05 | 2026-08-10 | QTS-PHX3 DC1 - 6 day w/ Holidays | NEED UPDATE | 01ADMIN | Construction | Phase 1 | Electrical | IGMP | BOH | Level 2 |  |  | BAB |  |  | Low Voltage | E2 |
|  | 3 | **L2 / BOH // Electrical Room #2085 (Early Access)** |  | 2025-10-31 | 2026-07-20 |  |  |  |  |  |  |  |  |  |  |  |  |  |  |  |  |  |  |  |  |
| QTS-27431 |  | Electrical Room #2085 // Rough Overhead Fire Sprinkler | 2d | 2025-10-31 A | 2025-11-03 A | QTS-27011 | 100% | 2025-11-05 | 2025-11-06 |  |  | 01ADMIN | Construction | Phase 1 | Mechanical | IGMP | BOH | Level 2 |  |  | BAB |  |  |  |  |
| QTS-27041 |  | Electrical Room #2085 // Frame Walls | 2d | 2025-11-04 A | 2025-11-05 A | QTS-27431, QTS-26111 | 100% | 2025-11-07 | 2025-11-10 |  |  | 01ADMIN | Construction | Phase 1 | Build Out | IGMP | BOH | Level 2 |  |  | BAB |  |  | Doug Hayes |  |
| QTS-27411 |  | Electrical Room #2085 // Rough In Electrical | 10d | 2025-11-26 A | 2025-12-09 A | QTS-27041 | 100% | 2025-11-26 | 2025-12-11 |  |  | 01ADMIN | Construction | Phase 1 | Electrical | IGMP | BOH | Level 2 |  |  | BAB |  |  |  |  |
| QTS-27441 |  | Electrical Room #2085 // Rough Overhead Linesets | 5d | 2025-11-26 A | 2025-12-04 A | QTS-27041 | 100% |  |  |  |  | 01ADMIN | Construction | Phase 1 | Mechanical | IGMP | BOH | Level 2 |  |  | BAB |  |  |  |  |
| QTS-27641 |  | Electrical Room #2085 // In Wall Inspection | 1d | 2025-12-02 A | 2025-12-02 A | QTS-27411 | 100% |  |  |  |  | 01ADMIN | Construction | Phase 1 | Mechanical | IGMP | BOH | Level 2 |  |  | BAB |  |  |  |  |
| QTS-27851 |  | Electrical Room #2085 // Hang Drywall | 1d | 2025-12-02 A | 2025-12-02 A | QTS-27641 | 100% |  |  |  |  | 01ADMIN | Construction | Phase 1 | Build Out | IGMP | BOH | Level 2 |  |  | BAB |  |  |  |  |
| QTS-28011 |  | Electrical Room #2085 // Tape & Finish Drywall | 3d | 2025-12-03 A | 2025-12-24 A | QTS-27851 | 100% | 2025-12-03 | 2025-12-05 |  |  | 01ADMIN | Construction | Phase 1 | Build Out | IGMP | BOH | Level 2 |  |  | BAB |  |  |  |  |
| QTS-27421 |  | Electrical Room #2085 // Set HM Frame | 1d | 2025-12-10 A | 2025-12-10 A | QTS-99620, QTS-27041 FF | 100% |  |  |  |  | 01ADMIN | Construction | Phase 1 | Build Out | IGMP | BOH | Level 2 |  |  | BAB |  |  |  |  |
| QTS-1000730 |  | Electrical Room #2085 // Fire Caulking | 1d | 2025-12-22 A | 2025-12-22 A | QTS-1000720 | 100% |  |  | QTS-PHX3 DC1 - 6 day w/ Holidays |  | 01ADMIN | Construction | Phase 1 | Build Out | IGMP | BOH | Level 2 |  |  | BAB |  |  |  |  |
| QTS-28271 |  | Electrical Room #2085 // Prime & Paint | 2d | 2025-12-23 A | 2025-12-24 A | QTS-1000730, QTS-1000720, QTS-28011 | 100% |  |  | QTS-PHX3 DC1 - 6 day w/ Holidays |  | 01ADMIN | Construction | Phase 1 | Build Out | IGMP | BOH | Level 2 |  |  | BAB |  |  |  |  |
| QTS-1000720 |  | Electrical Room #2085 // Pour Equipment Pads | 2d | 2025-12-29 A | 2025-12-30 A | QTS-28011 | 100% |  |  |  |  | 01ADMIN | Construction | Phase 1 | Build Out | IGMP | BOH | Level 2 |  |  | BAB |  |  |  |  |
| QTS-28691 |  | Electrical Room #2085 // Install AC Unit | 2d | 2025-12-29 A | 2025-12-30 A | QTS-27441, QTS-28271 | 100% |  |  | QTS-PHX3 DC1 - 6 day w/ Holidays |  | 01ADMIN | Construction | Phase 1 | Mechanical | IGMP | BOH | Level 2 |  |  | BAB |  |  |  |  |
| QTS-1000840 |  | Electrical Room #2085 // Rough OH Electrical | 5d | 2026-01-28 A | 2026-02-02 A | QTS-28691 | 100% |  |  | QTS-PHX3 DC1 - 6 day w/ Holidays |  | 01ADMIN | Construction | Phase 1 | Electrical | IGMP | BOH | Level 2 |  |  | BAB |  |  |  |  |
| QTS-28591 |  | Electrical Room #2085 // Set Static Transfer Switch | 1d | 2026-01-28 A | 2026-01-28 A | QTS-24581, QTS-1000720, QTS-28271, QTS-28471 | 100% |  |  | QTS-PHX3 DC1 - 6 day w/ Holidays |  |  | Construction |  | Electrical | IGMP | BOH | Level 2 |  |  | BAB | Phase 1 | Construction |  |  |
| QTS-28601 |  | Electrical Room #2085 // Set UPS | 1d | 2026-01-28 A | 2026-01-28 A | QTS-24581, QTS-1000720, QTS-28271, QTS-28481 | 100% |  |  | QTS-PHX3 DC1 - 6 day w/ Holidays |  |  | Construction |  | Electrical | IGMP | BOH | Level 2 |  |  | BAB | Phase 1 | Construction |  |  |
| QTS-45541 |  | Electrical Room #2085 // Set Door & Hardware | 1d | 2026-04-04 A | 2026-04-04 A | QTS-99630, QTS-27421, QTS-99650, QTS-28011 | 100% |  |  | QTS-PHX3 DC1 - 6 day w/ Holidays |  | 01ADMIN | Construction |  | Build Out | IGMP | BOH | Level 2 |  |  | BAB | Phase 1 | Construction |  |  |
| QTS-28841 |  | Electrical Room #2085 // Install MEP Trim | 2d | 2026-06-03 A | 2026-06-04 A | QTS-1000840, QTS-28591, QTS-28601, QTS-28691 | 100% |  |  | QTS-PHX3 DC1 - 6 day w/ Holidays |  |  | Construction | Phase 1 | Electrical | IGMP | BOH | Level 2 |  |  | BAB |  |  | Electrical |  |
| QTS-1000880 |  | Electrical Room #2085 // Finish Flooring | 1d | 2026-07-08 A | 2026-07-08 A | QTS-28841 | 100% | 2026-07-15 | 2026-07-15 | QTS-PHX3 DC1 - 6 day w/ Holidays |  |  | Construction | Phase 1 | Build Out | IGMP | BOH | Level 2 |  |  | BAB |  |  | Ed Carter |  |
| QTS-1000860 |  | Electrical Room #2085 // Install Wall Base | 5d | 2026-07-15 A | 2026-07-20 A | QTS-28271, QTS-28601, QTS-28591, QTS-1000880 | 100% | 2026-07-22 | 2026-07-27 | QTS-PHX3 DC1 - 6 day w/ Holidays |  | 01ADMIN | Construction | Phase 1 | Build Out | IGMP | BOH | Level 2 |  |  | BAB |  |  | Bobby Martinez | Wholesale Flooring |

Notes:
- QTS-1000740: Scheduler Notes: RFI-0733 - Datahall TH Sensor Type and Layout
- QTS-27571: allucent_notes_20251216_165335: Zach Gioe on 2025-12-16 13:44: Drywall was held up due to RFI for the design change of the door wall and its rating. / allucent_notes_20251230_164549: Zach Gioe on 2025-12-16 13:44: Drywall was held up due to RFI for the design change of the door wall and its rating. / allucent_notes: 2025-12-16 13:44 - User: Zach Gioe - Date Added: 2025-12-16 13:44 - Note: Drywall was held up due to RFI for the design change of the door wall and its rating.
- QTS-28251: allucent_notes_20251230_164549: Sean Waisner on 2025-12-30 15:39: Man power issues / allucent_notes: 2025-12-30 15:39 - User: Sean Waisner - Date Added: 2025-12-30 15:39 - Note: Man power issues
- QTS-45521: allucent_notes_20251216_165335: Zack Goertz on 2025-11-11T18:26:27.539Z: REI is behind / Jason Johnston on 2025-11-11 15:11: REI says the schedule doesn't require them to be there because we haven't sent a schedule in over a month / Zack Goertz on 2025-11-17 13:11: BOH is behind. All labor has been pulled to FOH level 1 and level 2. REI has yet to move to BOH / Zack Goertz on 2025-12-01 10:35: REI is behind / allucent_notes_20251209_203830: Zack Goertz on 2025-11-11T18:26:27.539Z: REI is behind / Jason Johnston on 2025-11-11 15:11: REI says the schedule doesn't require them to be there because we haven't sent a schedule in over a month / Zack Goertz on 2025-11-17 13:11: BOH is behind. All labor has been pulled to FOH level 1 and level 2. REI has yet to move to BOH / Zack Goertz on 2025-12-01 10:35: REI is behind / allucent_notes_20251202_153722: Zack Goertz on 2025-11-11T18:26:27.539Z: REI is behind / Jason Johnston on 2025-11-11 15:11: REI says the schedule doesn't require them to be there because we haven't sent a schedule in over a month / Zack Goertz on 2025-11-17 13:11: BOH is behind. All labor has been pulled to FOH level 1 and level 2. REI has yet to move to BOH / Zack Goertz on 2025-12-01 10:35: REI is behind / allucent_notes_20251118_192630: Zack Goertz on 2025-11-11T18:26:27.539Z: REI is behind / Jason Johnston on 2025-11-11 15:11: REI says the schedule doesn't require them to be there because we haven't sent a schedule in over a month / Zack Goertz on 2025-11-17 13:11: BOH is behind. All labor has been pulled to FOH level 1 and level 2. REI has yet to move to BOH / allucent_notes_20251111_182405: Zack Goertz on 2025-11-11T18:26:27.539Z: REI is behind / Jason Johnston on 2025-11-11 15:11: REI says the schedule doesn't require them to be there because we haven't sent a schedule in over a month / allucent_notes_20251230_164549: Zack Goertz on 2025-11-11T18:26:27.539Z: REI is behind / Jason Johnston on 2025-11-11 15:11: REI says the schedule doesn't require them to be there because we haven't sent a schedule in over a month / Zack Goertz on 2025-11-17 13:11: BOH is behind. All labor has been pulled to FOH level 1 and level 2. REI has yet to move to BOH / Zack Goertz on 2025-12-01 10:35: REI is behind / allucent_notes: 2025-11-11T18:26:27.539Z - User: Zack Goertz - Date Added: 2025-11-11T18:26:27.539Z - Note: REI is behind / 2025-11-11 15:11 - User: Jason Johnston - Date Added: 2025-11-11 15:11 - Note: REI says the schedule doesn't require them to be there because we h
- QTS-46951: Scheduler Notes: 4/14: Needs to be scheduled.
- QTS-28821: Scheduler Notes: 4/14: 4/9: Need Hard Lid Complete before install can occur. / 4/9: Need Hard Lid Complete before install can occur.
- QTS-27411: allucent_notes_20251209_203830: Zack Goertz on 2025-11-11T18:27:38.820Z: MEP is behind / Jason Johnston on 2025-11-11 15:11: REI doesn't have a schedule that says to do work in BOH / Zack Goertz on 2025-11-17 13:11: BOH is behind. All labor has been pulled to FOH level 1 and level 2. REI has yet to move to BOH / allucent_notes_20251202_153722: Zack Goertz on 2025-11-11T18:27:38.820Z: MEP is behind / Jason Johnston on 2025-11-11 15:11: REI doesn't have a schedule that says to do work in BOH / Zack Goertz on 2025-11-17 13:11: BOH is behind. All labor has been pulled to FOH level 1 and level 2. REI has yet to move to BOH / allucent_notes_20251118_192630: Zack Goertz on 2025-11-11T18:27:38.820Z: MEP is behind / Jason Johnston on 2025-11-11 15:11: REI doesn't have a schedule that says to do work in BOH / Zack Goertz on 2025-11-17 13:11: BOH is behind. All labor has been pulled to FOH level 1 and level 2. REI has yet to move to BOH / allucent_notes_20251111_182405: Zack Goertz on 2025-11-11T18:27:38.820Z: MEP is behind / Jason Johnston on 2025-11-11 15:11: REI doesn't have a schedule that says to do work in BOH / allucent_notes: 2025-11-11T18:27:38.820Z - User: Zack Goertz - Date Added: 2025-11-11T18:27:38.820Z - Note: MEP is behind / 2025-11-11 15:11 - User: Jason Johnston - Date Added: 2025-11-11 15:11 - Note: REI doesn't have a schedule that says to do work in BOH / 2025-11-
- QTS-27441: allucent_notes_20251202_153722: Zack Goertz on 2025-11-11T18:27:25.343Z: MEP trades are behind / Jason Johnston on 2025-11-11 15:11: BAM has no man power. / Zack Goertz on 2025-11-17 13:11: BOH is behind. All labor has been pulled to FOH level 1 and level 2. BAM has had between 2-4 people working in the BOH for the last few weeks. / allucent_notes_20251118_192630: Zack Goertz on 2025-11-11T18:27:25.343Z: MEP trades are behind / Jason Johnston on 2025-11-11 15:11: BAM has no man power. / Zack Goertz on 2025-11-17 13:11: BOH is behind. All labor has been pulled to FOH level 1 and level 2. BAM has had between 2-4 people working in the BOH for the last few weeks. / allucent_notes_20251111_182405: Zack Goertz on 2025-11-11T18:27:25.343Z: MEP trades are behind / Jason Johnston on 2025-11-11 15:11: BAM has no man power. / allucent_notes: 2025-11-11T18:27:25.343Z - User: Zack Goertz - Date Added: 2025-11-11T18:27:25.343Z - Note: MEP trades are behind / 2025-11-11 15:11 - User: Jason Johnston - Date Added: 2025-11-11 15:11 - Note: BAM has no man power. / 2025-11-17 13:11 - User: Zack Goer
- QTS-28011: allucent_notes_20251216_165335: Zach Gioe on 2025-12-16 13:45: Drywall not complete in areas around elevator shaft walls. / allucent_notes_20251230_164549: Zach Gioe on 2025-12-16 13:45: Drywall not complete in areas around elevator shaft walls. / allucent_notes: 2025-12-16 13:45 - User: Zach Gioe - Date Added: 2025-12-16 13:45 - Note: Drywall not complete in areas around elevator shaft walls.

| ID | WBS | Activity | Duration | Start | Finish | Predecessors | Complete | Planned start | Planned finish | Calendar | Allucent CSI Group | Project Section | Phase-1 | Layton Discipline | Baseline | Location | Level | Layton Super | Contract | Trade Partner | Fragnet | Fragnet Responsible Party | TFO-CONST ONLY | NICK | Owner Impact Analysis | Schedule Note | Phase-1-1 | Project Section-1 |
| --- | --- | --- | --- | --- | --- | --- | --- | --- | --- | --- | --- | --- | --- | --- | --- | --- | --- | --- | --- | --- | --- | --- | --- | --- | --- | --- | --- | --- |
|  | 4 | **L2 / BOH // MMR #2068 (Early Access)** |  | 2025-11-03 | 2026-08-12 |  |  |  |  |  |  |  |  |  |  |  |  |  |  |  |  |  |  |  |  |  |  |  |
| QTS-27401 |  | MMR B Room #2068 // Frame Walls | 2d | 2025-11-03 A | 2025-11-04 A | QTS-27611, QTS-26111 | 100% | 2025-11-11 | 2025-11-12 |  | 01ADMIN | Construction | Phase 1 | Build Out | IGMP | BOH | Level 2 | Doug Hayes | BAB |  |  |  |  |  |  |  |  |  |
| QTS-27611 |  | MMR B Room #2068 // Rough Overhead Fire Sprinkler | 2d | 2025-11-03 A | 2025-11-04 A | QTS-27431 | 100% | 2025-11-07 | 2025-11-10 |  | 01ADMIN | Construction | Phase 1 | Mechanical | IGMP | BOH | Level 2 |  | BAB |  |  |  |  |  |  |  |  |  |
| QTS-27591 |  | MMR B Room #2068 // Rough In Electrical | 10d | 2025-11-26 A | 2025-12-02 A | QTS-27401 | 100% | 2025-11-26 | 2025-12-11 |  | 01ADMIN | Construction | Phase 1 | Electrical | IGMP | BOH | Level 2 |  | BAB |  |  |  |  |  |  |  |  |  |
| QTS-27621 |  | MMR B Room #2068 // Rough Overhead Linesets | 5d | 2025-11-26 A | 2025-12-04 A | QTS-27401 | 100% |  |  |  | 01ADMIN | Construction | Phase 1 | Mechanical | IGMP | BOH | Level 2 |  | BAB |  |  |  |  |  |  |  |  |  |
| QTS-27961 |  | MMR B Room #2068 // In Wall Inspection | 1d | 2025-12-02 A | 2025-12-02 A | QTS-27591 | 100% |  |  |  | 01ADMIN | Construction | Phase 1 | Mechanical | IGMP | BOH | Level 2 |  | BAB |  |  |  |  |  |  |  |  |  |
| QTS-28111 |  | MMR B Room #2068 // Hang Drywall | 1d | 2025-12-02 A | 2025-12-02 A | QTS-27961 | 100% |  |  |  | 01ADMIN | Construction | Phase 1 | Build Out | IGMP | BOH | Level 2 |  | BAB |  |  |  |  |  |  |  |  |  |
| QTS-28151 |  | MMR B Room #2068 // Tape & Finish Drywall | 3d | 2025-12-03 A | 2025-12-12 A | QTS-28111 | 100% | 2025-12-03 | 2025-12-05 |  | 01ADMIN | Construction | Phase 1 | Build Out | IGMP | BOH | Level 2 |  | BAB |  |  |  |  |  |  |  |  |  |
| QTS-27601 |  | MMR B Room #2068 // Set HM Frame | 1d | 2025-12-10 A | 2025-12-10 A | QTS-99620, QTS-27401 FF | 100% |  |  |  | 01ADMIN | Construction | Phase 1 | Build Out | IGMP | BOH | Level 2 |  | BAB |  |  |  |  |  |  |  |  |  |
| QTS-1000890 |  | MMR B Room #2068 // Install Fire Caulking | 1d | 2025-12-15 A | 2025-12-15 A | QTS-28151 | 100% |  |  |  | 01ADMIN | Construction | Phase 1 | Build Out | IGMP | BOH | Level 2 |  | BAB |  |  |  |  |  |  |  |  |  |
| QTS-28511 |  | MMR B Room #2068 // Prime & Paint | 2d | 2025-12-22 A | 2025-12-23 A | QTS-28151 | 100% |  |  |  | 01ADMIN | Construction | Phase 1 | Build Out | IGMP | BOH | Level 2 |  | BAB |  |  |  |  |  |  |  |  |  |
| QTS-28831 |  | MMR B Room #2068 // Install AC Unit | 2d | 2025-12-29 A | 2025-12-30 A | QTS-27621, QTS-28511 | 100% |  |  |  | 01ADMIN | Construction | Phase 1 | Mechanical | IGMP | BOH | Level 2 |  | BAB |  |  |  |  |  |  |  |  |  |
| QTS-28951 |  | MMR B Room #2068 // Install Light Fixtures | 2d | 2026-01-05 A | 2026-01-06 A | QTS-28831 | 100% |  |  | QTS-PHX3 DC1 - 6 day w/ Holidays | 01ADMIN | Construction | Phase 1 | Electrical | IGMP | BOH | Level 2 |  | BAB |  |  |  |  |  |  |  |  |  |
| QTS-1000900 |  | MMR B Room #2068 // Install OH Busway | 4d | 2026-01-14 A | 2026-01-17 A | QTS-28831 | 100% |  |  | QTS-PHX3 DC1 - 6 day w/ Holidays | 01ADMIN | Construction | Phase 1 | Electrical | IGMP | BOH | Level 2 |  | BAB |  |  |  |  |  |  |  |  |  |
| QTS-28751 |  | MMR B Room #2068 // Plywood Install | 1d | 2026-01-16 A | 2026-01-16 A | QTS-1000890, QTS-28151, QTS-28511 | 100% |  |  | QTS-PHX3 DC1 - 6 day w/ Holidays | 01ADMIN | Construction | Phase 1 | Build Out | IGMP | BOH | Level 2 |  | BAB |  |  |  |  |  |  |  |  |  |
| QTS-1012220 |  | MMR B Room #2068 // Install Cable Racks | 5d | 2026-08-05 A | 2026-08-11 A | QTS-28951, QTS-1007050 FF+2d, QTS-29081 | 100% | 2026-08-18 | 2026-08-22 | QTS-PHX3 DC1 - 6 day w/ Holidays | 01ADMIN | Construction | Phase 1 | LV | IGMP | BOH | Level 2 | Low Voltage | BAB | E2 |  |  |  |  |  |  |  |  |
|  | 1 | **Fragnet / TFO RFI 124 Additional Split Units** |  | 2026-02-19 | 2026-03-07 |  |  |  |  |  |  |  |  |  |  |  |  |  |  |  |  |  |  |  |  |  |  |  |
| QTS-1007060 |  | MMR B Room #2068 // Layton Receives Submits RFI #124 to Design Team | 1d | 2026-02-19 A | 2026-02-19 A | QTS-1371 SS | 100% |  |  | QTS-PHX3 DC1 - 6 day w/ Holidays | 01ADMIN | Construction | Phase 1 | Mechanical | IGMP | BOH | Level 2 |  | TFO |  | Fragnet | Bel-Aire Mechanical. LLC | TFO CONST | NICK |  |  |  |  |
| QTS-1007050 |  | MMR B Room #2068 // Layton Receives Response RFI #124 from Design Team | 10d | 2026-02-20 A | 2026-03-07 A | QTS-1007060 | 100% | 2026-02-19 | 2026-03-04 |  | 01ADMIN | Construction | Phase 1 | Mechanical | IGMP | BOH | Level 2 |  | TFO |  | Fragnet | Bel-Aire Mechanical. LLC | TFO CONST | NICK |  |  |  |  |
|  | 3 | **Fragnet / Man Power Issues** |  | 2026-04-14 | 2026-04-30 |  |  |  |  |  |  |  |  |  |  |  |  |  |  |  |  |  |  |  |  |  |  |  |
| QTS-1010130 |  | Fragnet / MMR B Room #2068 // Man Power Delay | 5d | 2026-04-14 A | 2026-04-30 A | QTS-1371 | 100% | 2026-04-14 | 2026-04-18 | QTS-PHX3 DC1 - 6 day w/ Holidays | 01ADMIN | Construction | Phase 1 | LV | IGMP | BOH | Level 2 |  | BAB |  | Fragnet | E2 Optics, LLC |  |  | Y |  |  |  |
|  | 2 | **Remaining Scope** |  | 2026-01-28 | 2026-08-12 |  |  |  |  |  |  |  |  |  |  |  |  |  |  |  |  |  |  |  |  |  |  |  |
| QTS-29041 |  | MMR B Room #2068 // Install Cable Racks | 5d | 2026-01-28 A | 2026-05-19 A | QTS-28951, QTS-1007050 FF+2d | 100% | 2026-01-28 | 2026-02-02 | QTS-PHX3 DC1 - 6 day w/ Holidays | 01ADMIN | Construction | Phase 1 | LV | IGMP | BOH | Level 2 |  | BAB |  |  |  |  |  |  | 5/20 - Activity has not started |  |  |
| QTS-1000920 |  | MMR B Room #2068 // Install Wall Base | 1d | 2026-08-10 A | 2026-08-10 A | QTS-28751 | 100% | 2026-08-15 | 2026-08-15 | QTS-PHX3 DC1 - 6 day w/ Holidays | 01ADMIN | Construction | Phase 1 | Build Out | IGMP | BOH | Level 2 | Ben Ribble | BAB | Wholesale Flooring |  |  |  |  |  |  |  |  |
| QTS-1000930 |  | MMR B Room #2068 // Install MEP Trim | 2d | 2026-08-10 A | 2026-08-11 A | QTS-29041, QTS-1000900, QTS-1010130, QTS-1012220 | 100% | 2026-08-12 | 2026-08-13 | QTS-PHX3 DC1 - 6 day w/ Holidays | 01ADMIN | Construction | Phase 1 | LV | IGMP | BOH | Level 2 | Mechanical | BAB | E2 |  |  |  |  |  |  |  |  |
| QTS-1000910 |  | MMR B Room #2068 // Finish Flooring | 1d | 2026-08-12 A | 2026-08-12 A | QTS-28951, QTS-29041, QTS-28751, QTS-1000930, QTS-1012220 | 100% |  |  | QTS-PHX3 DC1 - 6 day w/ Holidays | 01ADMIN | Construction | Phase 1 | Mechanical | IGMP | BOH | Level 2 | Ben Ribble | BAB | Bldg Solutions |  |  |  |  |  |  |  |  |
| QTS-45551 |  | MMR B Room #2068 // Set Door & Hardware | 1d | 2026-08-12 A | 2026-08-12 A | QTS-1000930, QTS-99630, QTS-27601, QTS-99650, QTS-28951 FF, QTS-28151 | 100% |  |  | QTS-PHX3 DC1 - 6 day w/ Holidays | 01ADMIN | Construction |  | Build Out | IGMP | BOH | Level 2 | Jake Shimmin | BAB | ISEC |  |  |  |  |  |  | Phase 1 | Construction |

Notes:
- QTS-27401: allucent_notes_20251104_160200: Jason Johnston on 2025-11-04 12:11: finished early / allucent_notes: 2025-11-04 12:11 - User: Jason Johnston - Date Added: 2025-11-04 12:11 - Note: finished early
- QTS-27611: allucent_notes_20251104_160200: Jason Johnston on 2025-11-04 12:11: finished early / allucent_notes: 2025-11-04 12:11 - User: Jason Johnston - Date Added: 2025-11-04 12:11 - Note: finished early
- QTS-27591: allucent_notes_20251202_153722: Zack Goertz on 2025-11-11T18:28:03.555Z: MEP is behind / Jason Johnston on 2025-11-11 15:11: REI doesn't have a schedule that says to do work in BOH / Zack Goertz on 2025-11-17 13:11: BOH is behind. All labor has been pulled to FOH level 1 and level 2. REI has yet to be in BOH / allucent_notes_20251118_192630: Zack Goertz on 2025-11-11T18:28:03.555Z: MEP is behind / Jason Johnston on 2025-11-11 15:11: REI doesn't have a schedule that says to do work in BOH / Zack Goertz on 2025-11-17 13:11: BOH is behind. All labor has been pulled to FOH level 1 and level 2. REI has yet to be in BOH / allucent_notes_20251111_182405: Zack Goertz on 2025-11-11T18:28:03.555Z: MEP is behind / Jason Johnston on 2025-11-11 15:11: REI doesn't have a schedule that says to do work in BOH / allucent_notes: 2025-11-11T18:28:03.555Z - User: Zack Goertz - Date Added: 2025-11-11T18:28:03.555Z - Note: MEP is behind / 2025-11-11 15:11 - User: Jason Johnston - Date Added: 2025-11-11 15:11 - Note: REI doesn't have a schedule that says to do work in BOH / 2025-11-
- QTS-27621: allucent_notes_20251202_153722: Zack Goertz on 2025-11-11T18:27:53.909Z: MEP is behind / Jason Johnston on 2025-11-11 15:11: REI doesn't have a schedule that says to do work in BOH / Zack Goertz on 2025-11-17 13:11: BOH is behind. All labor has been pulled to FOH level 1 and level 2. BAM has had between 2-4 people working in the BOH for the last few weeks. / allucent_notes_20251118_192630: Zack Goertz on 2025-11-11T18:27:53.909Z: MEP is behind / Jason Johnston on 2025-11-11 15:11: REI doesn't have a schedule that says to do work in BOH / Zack Goertz on 2025-11-17 13:11: BOH is behind. All labor has been pulled to FOH level 1 and level 2. BAM has had between 2-4 people working in the BOH for the last few weeks. / allucent_notes_20251111_182405: Zack Goertz on 2025-11-11T18:27:53.909Z: MEP is behind / Jason Johnston on 2025-11-11 15:11: REI doesn't have a schedule that says to do work in BOH / allucent_notes: 2025-11-11T18:27:53.909Z - User: Zack Goertz - Date Added: 2025-11-11T18:27:53.909Z - Note: MEP is behind / 2025-11-11 15:11 - User: Jason Johnston - Date Added: 2025-11-11 15:11 - Note: REI doesn't have a schedule that says to do work in BOH / 2025-11-
- QTS-28751: allucent_notes_20251216_165335: Zach Gioe on 2025-12-16 13:47: PCI does not have the material. / allucent_notes_20251230_164549: Zach Gioe on 2025-12-16 13:47: PCI does not have the material. / Sean Waisner on 2025-12-30 15:29: Man power issues / allucent_notes: 2025-12-16 13:47 - User: Zach Gioe - Date Added: 2025-12-16 13:47 - Note: PCI does not have the material. / 2025-12-30 15:29 - User: Sean Waisner - Date Added: 2025-12-30 15:29 - Note: Man power issues
- QTS-1012220: Scheduler Notes: 4/9: E2 man power focused in front of house and zone 1. Will wait for zone / 1 network live. 3/3: Driven out by TFO RFI 124
- QTS-1007060: Scheduler Notes: RFI-0124 - Provide Distance From The Center of Piers to The Outside / Wall / Notes: Provide Distance From The Center of Piers to The Outside Wall
- QTS-1010130: Scheduler Notes: Man Power Delay
- QTS-29041: Scheduler Notes: 3/3: Driven out by TFO RFI 124 / 4/9: E2 man power focused in front of house and zone 1. Will wait for zone 1 / network live. / Notes: 4/9: E2 man power focused in front of house and zone 1. Will wait for zone 1 network live. 3/3: Driven out by TFO RFI 124

| ID | WBS | Activity | Duration | Start | Finish | Predecessors | Complete | Planned start | Planned finish | Total float | Free float | Calendar | Allucent CSI Group | Project Section | Phase-1 | Layton Discipline | Baseline | Location | Level | Contract | Layton Super | Phase-1-1 | Project Section-1 | Fragnet | Owner Impact Analysis | Fragnet Responsible Party | Trade Partner |
| --- | --- | --- | --- | --- | --- | --- | --- | --- | --- | --- | --- | --- | --- | --- | --- | --- | --- | --- | --- | --- | --- | --- | --- | --- | --- | --- | --- |
|  | 5 | **L2 / BOH // Telecom Riser #2069 (Early Access)** |  | 2025-11-05 | 2026-08-10 |  |  |  |  |  |  |  |  |  |  |  |  |  |  |  |  |  |  |  |  |  |  |
| QTS-27991 |  | Telecom Riser #2069 // Rough Overhead Fire Sprinkler | 2d | 2025-11-05 A | 2025-11-06 A | QTS-27611 | 100% |  |  |  |  |  | 01ADMIN | Construction | Phase 1 | Mechanical | IGMP | BOH | Level 2 | BAB |  |  |  |  |  |  |  |
| QTS-27631 |  | Telecom Riser #2069 // Frame Walls | 2d | 2025-11-07 A | 2025-11-10 A | QTS-27991, QTS-26111 | 100% |  |  |  |  |  | 01ADMIN | Construction | Phase 1 | Build Out | IGMP | BOH | Level 2 | BAB | Doug Hayes |  |  |  |  |  |  |
| QTS-27971 |  | Telecom Riser #2069 // Rough In Electrical | 10d | 2025-11-26 A | 2025-12-01 A | QTS-27631 | 100% | 2025-11-26 | 2025-12-11 |  |  |  | 01ADMIN | Construction | Phase 1 | Electrical | IGMP | BOH | Level 2 | BAB |  |  |  |  |  |  |  |
| QTS-28001 |  | Telecom Riser #2069 // Rough Overhead Linesets | 5d | 2025-11-26 A | 2025-12-04 A | QTS-27631 | 100% |  |  |  |  |  | 01ADMIN | Construction | Phase 1 | Mechanical | IGMP | BOH | Level 2 | BAB |  |  |  |  |  |  |  |
| QTS-28161 |  | Telecom Riser #2069 // In Wall Inspection | 1d | 2025-12-02 A | 2025-12-02 A | QTS-27971 | 100% |  |  |  |  |  | 01ADMIN | Construction | Phase 1 | Mechanical | IGMP | BOH | Level 2 | BAB |  |  |  |  |  |  |  |
| QTS-28261 |  | Telecom Riser #2069 // Hang Drywall | 1d | 2025-12-02 A | 2025-12-02 A | QTS-28161 | 100% |  |  |  |  |  | 01ADMIN | Construction | Phase 1 | Build Out | IGMP | BOH | Level 2 | BAB |  |  |  |  |  |  |  |
| QTS-28351 |  | Telecom Riser #2069 // Tape & Finish Drywall | 3d | 2025-12-03 A | 2025-12-12 A | QTS-28261 | 100% | 2025-12-03 | 2025-12-05 |  |  |  | 01ADMIN | Construction | Phase 1 | Build Out | IGMP | BOH | Level 2 | BAB |  |  |  |  |  |  |  |
| QTS-27981 |  | Telecom Riser #2069 // Set HM Frame | 1d | 2025-12-10 A | 2025-12-10 A | QTS-99620, QTS-27631 FF | 100% |  |  |  |  |  | 01ADMIN | Construction | Phase 1 | Build Out | IGMP | BOH | Level 2 | BAB |  |  |  |  |  |  |  |
| QTS-28761 |  | Telecom Riser #2069 // Prime & Paint | 2d | 2026-01-14 A | 2026-01-15 A | QTS-28351 | 100% |  |  |  |  |  | 01ADMIN | Construction | Phase 1 | Build Out | IGMP | BOH | Level 2 | BAB |  |  |  |  |  |  |  |
| QTS-1004090 |  | Telecom Riser #2069 // Install Plywood | 2d | 2026-01-16 A | 2026-01-16 A | QTS-28351, QTS-28761 | 100% | 2026-01-14 | 2026-01-15 |  |  |  | 01ADMIN | Construction | Phase 1 | Build Out | IGMP | BOH | Level 2 | BAB |  |  |  |  |  |  |  |
| QTS-45561 |  | Telecom Riser #2069 // Set Door & Hardware | 1d | 2026-02-24 A | 2026-03-18 A | QTS-99630, QTS-27981, QTS-99650 | 100% | 2026-02-24 | 2026-02-24 |  |  | QTS-PHX3 DC1 - 6 day w/ Holidays | 01ADMIN | Construction |  | Build Out | IGMP | BOH | Level 2 | BAB |  | Phase 1 | Construction |  |  |  |  |
| QTS-29021 |  | Telecom Riser #2069 // Install OH Electrical | 3d | 2026-04-01 A | 2026-04-03 A | QTS-28761, QTS-28001, QTS-1004090 | 100% | 2026-04-08 | 2026-04-10 |  |  | QTS-PHX3 DC1 - 6 day w/ Holidays | 01ADMIN | Construction | Phase 1 | Electrical | IGMP | BOH | Level 2 | BAB |  |  |  |  |  |  |  |
|  | 1 | **Fragnet / Lack of Man Power** |  | 2026-04-11 | 2026-04-30 |  |  |  |  |  |  |  |  |  |  |  |  |  |  |  |  |  |  |  |  |  |  |
| QTS-1010140 |  | Fragnet / Telecom Riser #2069 // Man Power Delay | 5d | 2026-04-11 A | 2026-04-30 A | QTS-1371 | 100% | 2026-04-11 | 2026-04-16 |  |  | QTS-PHX3 DC1 - 6 day w/ Holidays | 01ADMIN | Construction | Phase 1 | LV | IGMP | BOH | Level 2 | BAB |  |  |  | Fragnet | Y | E2 Optics, LLC |  |
|  | 2 | **Remaining Scope** |  | 2026-08-05 | 2026-08-10 |  |  |  |  |  |  |  |  |  |  |  |  |  |  |  |  |  |  |  |  |  |  |
| QTS-29081 |  | Telecom Riser #2069 // Install Cable Racks | 5d | 2026-08-05 A | 2026-08-10 A | QTS-29021, QTS-1010140, QTS-28821 | 100% | 2026-08-12 | 2026-08-17 |  |  | QTS-PHX3 DC1 - 6 day w/ Holidays | 01ADMIN | Construction | Phase 1 | Electrical | IGMP | BOH | Level 2 | BAB | Low Voltage |  |  |  |  |  | E2 |
|  | 1 | **L2 / BOH // Fire Room #2063** |  | 2025-11-07 | 2026-08-22 |  |  |  |  |  |  |  |  |  |  |  |  |  |  |  |  |  |  |  |  |  |  |
| QTS-29571 |  | Fire Pump Room #2063 // Rough Overhead Fire Sprinkler | 10d | 2025-11-07 A | 2025-11-20 A | QTS-27991 | 100% |  |  |  |  |  | 01ADMIN | Construction | Phase 1 | Mechanical | IGMP | BOH | Level 2 | BAB |  |  |  |  |  |  |  |
| QTS-26461 |  | Fire Pump Room #2063 // Frame Walls | 2d | 2025-11-21 A | 2025-11-24 A | QTS-29571, QTS-26111 | 100% |  |  |  |  |  | 01ADMIN | Construction | Phase 1 | Build Out | IGMP | BOH | Level 2 | BAB |  |  |  |  |  |  |  |
| QTS-26731 |  | Fire Pump Room #2063 // Rough In Electrical | 10d | 2025-11-25 A | 2025-12-01 A | QTS-26461 | 100% | 2025-11-25 | 2025-12-10 |  |  |  | 01ADMIN | Construction | Phase 1 | Electrical | IGMP | BOH | Level 2 | BAB |  |  |  |  |  |  |  |
| QTS-26741 |  | Fire Pump Room #2063 // In Wall Rough Plumbing | 5d | 2025-12-01 A | 2025-12-01 A | QTS-26461 | 100% | 2025-12-05 | 2025-12-11 |  |  |  | 01ADMIN | Construction | Phase 1 | Mechanical | IGMP | BOH | Level 2 | BAB |  |  |  |  |  |  |  |
| QTS-27501 |  | Fire Pump Room #2063 // In Wall Inspection | 1d | 2025-12-02 A | 2025-12-02 A | QTS-26731, QTS-26741 | 100% |  |  |  |  |  | 01ADMIN | Construction | Phase 1 | Mechanical | IGMP | BOH | Level 2 | BAB |  |  |  |  |  |  |  |
| QTS-28131 |  | Fire Pump Room #2063 // Hang Drywall | 1d | 2025-12-02 A | 2025-12-02 A | QTS-27501 | 100% |  |  |  |  |  |  | Construction | Phase 1 | Build Out | IGMP | BOH | Level 2 | BAB |  |  |  |  |  |  |  |
| QTS-28741 |  | Fire Pump Room #2063 // Tape & Finish Drywall | 5d | 2025-12-03 A | 2026-01-05 A | QTS-28131 | 100% | 2025-12-03 | 2025-12-08 |  |  | QTS-PHX3 DC1 - 6 day w/ Holidays | 01ADMIN | Construction | Phase 1 | Build Out | IGMP | BOH | Level 2 | BAB |  |  |  |  |  |  |  |
| QTS-26751 |  | Fire Pump Room #2063 // Set HM Frame | 1d | 2025-12-19 A | 2025-12-19 A | QTS-99620, QTS-26461 FF | 100% |  |  |  |  |  | 01ADMIN | Construction | Phase 1 | Build Out | IGMP | BOH | Level 2 | BAB |  |  |  |  |  |  |  |
| QTS-29031 |  | Fire Pump Room #2063 // Prime & Paint | 5d | 2026-01-15 A | 2026-01-16 A | QTS-28741 | 100% | 2026-01-06 | 2026-01-10 |  |  | QTS-PHX3 DC1 - 6 day w/ Holidays | 01ADMIN | Construction | Phase 1 | Build Out | IGMP | BOH | Level 2 | BAB |  |  |  |  |  |  |  |
| QTS-30441 |  | Fire Pump Room #2063 // Install Heater | 5d | 2026-01-15 A | 2026-01-16 A | QTS-29031 FF | 100% | 2026-01-15 | 2026-01-21 |  |  | QTS-PHX3 DC1 - 6 day w/ Holidays | 01ADMIN | Construction | Phase 1 | Mechanical | IGMP | BOH | Level 2 | BAB |  |  |  |  |  |  |  |
| QTS-29321 |  | Fire Pump Room #2063 // Install Light Fixtures | 5d | 2026-01-28 A | 2026-02-02 A | QTS-29031 | 100% |  |  |  |  | QTS-PHX3 DC1 - 6 day w/ Holidays | 01ADMIN | Construction | Phase 1 | Electrical | IGMP | BOH | Level 2 | BAB |  |  |  |  |  |  |  |
| QTS-45571 |  | Fire Pump Room #2063 // Set Door & Frame | 1d | 2026-02-11 A | 2026-03-25 A | QTS-26751, QTS-29321, QTS-45561 FF+1d | 100% | 2026-02-11 | 2026-02-11 |  |  | QTS-PHX3 DC1 - 6 day w/ Holidays |  | Construction |  | Build Out | IGMP | BOH | Level 2 | BAB |  | Phase 1 | Construction |  |  |  |  |
| QTS-29961 |  | Fire Pump Room #2063 // Build Fire Risers | 10d | 2026-06-01 A | 2026-06-15 A | QTS-29571 | 100% | 2026-07-15 | 2026-07-25 |  |  | QTS-PHX3 DC1 - 6 day w/ Holidays | 01ADMIN | Construction | Phase 1 | Mechanical | IGMP | BOH | Level 2 | BAB | Mechanical |  |  |  |  |  |  |
| QTS-30341 |  | Fire Pump Room #2063 // Air Test System | 2d | 2026-06-29 A | 2026-07-01 A | QTS-27431, QTS-27991, QTS-27611, QTS-27011, QTS-27071, QTS-29961, QTS-30441 | 100% | 2026-07-15 | 2026-07-16 |  |  | QTS-PHX3 DC1 - 6 day w/ Holidays | 01ADMIN | Construction | Phase 1 | Mechanical | IGMP | BOH | Level 2 | BAB | Mechanical |  |  |  |  |  |  |
| QTS-1004020 |  | Fire Pump Room #2063 // Water Test System | 2d | 2026-08-19 | 2026-08-20 | QTS-30441, QTS-30341 |  |  |  | -87d | 0d | QTS-PHX3 DC1 - 6 day w/ Holidays |  | Construction | Phase 1 | Mechanical | IGMP | BOH | Level 1 | BAB | Mechanical |  |  |  |  |  | Olympic |
| QTS-1004030 |  | Fire Pump Room #2063 // City Inspection of Fire Pump/System | 2d | 2026-08-21 | 2026-08-22 | QTS-1004020 |  |  |  | -87d | 12d | QTS-PHX3 DC1 - 6 day w/ Holidays | 01ADMIN | Construction | Phase 1 | Mechanical | IGMP | FOH | Level 1 | BAB | Mechanical |  |  |  |  |  | Olympic |

Notes:
- QTS-27971: allucent_notes_20251209_203830: Zack Goertz on 2025-11-11T18:28:57.339Z: MEP is behind / Jason Johnston on 2025-11-11 15:11: REI doesn't have a schedule that says to do work in BOH / Zack Goertz on 2025-11-17 13:11: BOH is behind. All labor has been pulled to FOH level 1 and level 2. REI has yet to begin in BOH / allucent_notes_20251202_153722: Zack Goertz on 2025-11-11T18:28:57.339Z: MEP is behind / Jason Johnston on 2025-11-11 15:11: REI doesn't have a schedule that says to do work in BOH / Zack Goertz on 2025-11-17 13:11: BOH is behind. All labor has been pulled to FOH level 1 and level 2. REI has yet to begin in BOH / allucent_notes_20251118_192630: Zack Goertz on 2025-11-11T18:28:57.339Z: MEP is behind / Jason Johnston on 2025-11-11 15:11: REI doesn't have a schedule that says to do work in BOH / Zack Goertz on 2025-11-17 13:11: BOH is behind. All labor has been pulled to FOH level 1 and level 2. REI has yet to begin in BOH / allucent_notes_20251111_182405: Zack Goertz on 2025-11-11T18:28:57.339Z: MEP is behind / Jason Johnston on 2025-11-11 15:11: REI doesn't have a schedule that says to do work in BOH / allucent_notes: 2025-11-11T18:28:57.339Z - User: Zack Goertz - Date Added: 2025-11-11T18:28:57.339Z - Note: MEP is behind / 2025-11-11 15:11 - User: Jason Johnston - Date Added: 2025-11-11 15:11 - Note: REI doesn't have a schedule that says to do work in BOH / 2025-11-
- QTS-28001: allucent_notes_20251209_203830: Zack Goertz on 2025-11-11T18:28:45.787Z: MEP is behind / Jason Johnston on 2025-11-11 15:11: REI doesn't have a schedule that says to do work in BOH / Zack Goertz on 2025-11-17 13:11: BOH is behind. All labor has been pulled to FOH level 1 and level 2. / allucent_notes_20251202_153722: Zack Goertz on 2025-11-11T18:28:45.787Z: MEP is behind / Jason Johnston on 2025-11-11 15:11: REI doesn't have a schedule that says to do work in BOH / Zack Goertz on 2025-11-17 13:11: BOH is behind. All labor has been pulled to FOH level 1 and level 2. / allucent_notes_20251118_192630: Zack Goertz on 2025-11-11T18:28:45.787Z: MEP is behind / Jason Johnston on 2025-11-11 15:11: REI doesn't have a schedule that says to do work in BOH / Zack Goertz on 2025-11-17 13:11: BOH is behind. All labor has been pulled to FOH level 1 and level 2. / allucent_notes_20251111_182405: Zack Goertz on 2025-11-11T18:28:45.787Z: MEP is behind / Jason Johnston on 2025-11-11 15:11: REI doesn't have a schedule that says to do work in BOH / allucent_notes: 2025-11-11T18:28:45.787Z - User: Zack Goertz - Date Added: 2025-11-11T18:28:45.787Z - Note: MEP is behind / 2025-11-11 15:11 - User: Jason Johnston - Date Added: 2025-11-11 15:11 - Note: REI doesn't have a schedule that says to do work in BOH / 2025-11-
- QTS-29021: allucent_notes_20251230_164549: Sean Waisner on 2025-12-30 15:37: Need overhead electrical / allucent_notes: 2025-12-30 15:37 - User: Sean Waisner - Date Added: 2025-12-30 15:37 - Note: Need overhead electrical
- QTS-1010140: Scheduler Notes: Man Power Delay
- QTS-26741: allucent_notes_20251209_203830: David Wiltberger on 2025-12-02 06:41: wall built late / allucent_notes_20251202_153722: David Wiltberger on 2025-12-02 06:41: wall built late / allucent_notes: 2025-12-02 06:41 - User: David Wiltberger - Date Added: 2025-12-02 06:41 - Note: wall built late
- QTS-28741: allucent_notes_20251216_165335: Zach Gioe on 2025-12-16 13:47: Drywall not complete due to exterior wall not having spray foam insulation, drywall still not complete on exterior wall. / allucent_notes_20251230_164549: Zach Gioe on 2025-12-16 13:47: Drywall not complete due to exterior wall not having spray foam insulation, drywall still not complete on exterior wall. / Sean Waisner on 2025-12-30 15:38: Exterior wall not insulated / allucent_notes: 2025-12-16 13:47 - User: Zach Gioe - Date Added: 2025-12-16 13:47 - Note: Drywall not complete due to exterior wall not having spray foam insulation, drywall still not complete on exterior wall. / 2025-12-30 15:38 - User: Sean Waisner - Date Added: 2025-
- QTS-26751: allucent_notes_20251216_165335: Zach Gioe on 2025-12-16 13:48: Area not done due to exterior wall in room. / allucent_notes_20251230_164549: Zach Gioe on 2025-12-16 13:48: Area not done due to exterior wall in room. / allucent_notes: 2025-12-16 13:48 - User: Zach Gioe - Date Added: 2025-12-16 13:48 - Note: Area not done due to exterior wall in room.
- QTS-29961: allucent_notes_20251216_165335: Zack Goertz on 2025-12-01 10:33: Stop work has been recently released. Olympic is working on "other priority areas" / allucent_notes_20251209_203830: Zack Goertz on 2025-12-01 10:33: Stop work has been recently released. Olympic is working on "other priority areas" / allucent_notes_20251202_153722: Zack Goertz on 2025-12-01 10:33: Stop work has been recently released. Olympic is working on "other priority areas" / allucent_notes_20251230_164549: Zack Goertz on 2025-12-01 10:33: Stop work has been recently released. Olympic is working on "other priority areas" / allucent_notes: 2025-12-01 10:33 - User: Zack Goertz - Date Added: 2025-12-01 10:33 - Note: Stop work has been recently released. Olympic is working on "other priority areas"

| ID | WBS | Activity | Duration | Start | Finish | Predecessors | Complete | Planned start | Planned finish | Total float | Free float | Calendar | Last Period Finish | Last Period Start | Allucent CSI Group | Project Section | Layton Discipline | Baseline | Phase-1-1 | Project Section-1 | Location | Level | Contract | Layton Super | Trade Partner |
| --- | --- | --- | --- | --- | --- | --- | --- | --- | --- | --- | --- | --- | --- | --- | --- | --- | --- | --- | --- | --- | --- | --- | --- | --- | --- |
|  | 8 | **L2 / BOH // Restrooms #2071** |  | 2025-11-21 | 2026-09-02 |  |  |  |  |  |  |  |  |  |  |  |  |  |  |  |  |  |  |  |  |
| QTS-5751 |  | Restrooms #2071 // Rough Overhead Fire Sprinkler | 1d | 2025-11-21 A | 2025-11-21 A | QTS-29571 | 100% |  |  |  |  |  | 2023-01-17 | 2023-01-13 | 01ADMIN | Construction | Mechanical | IGMP | Phase 1 | Construction | BOH | Level 2 | BAB |  |  |
| QTS-1561 |  | Restrooms #2071 // Layout | 1d | 2025-11-24 A | 2025-11-24 A | QTS-5751, QTS-26111 | 100% |  |  |  |  |  | 2023-01-05 | 2023-01-05 | 01ADMIN | Construction | Build Out | IGMP | Phase 1 | Construction | BOH | Level 2 | BAB |  |  |
| QTS-2311 |  | Restrooms #2071 // Frame Walls | 2d | 2025-11-24 A | 2025-11-25 A | QTS-1561 SS | 100% |  |  |  |  |  | 2023-01-09 | 2023-01-06 | 01ADMIN | Construction | Build Out | IGMP | Phase 1 | Construction | BOH | Level 2 | BAB |  |  |
| QTS-2671 |  | Restrooms #2071 // Rough In-Wall Electrical, Security, & Access Controls | 2d | 2025-11-26 A | 2026-04-24 A | QTS-2311 | 100% | 2025-11-26 | 2025-11-29 |  |  | QTS-PHX3 DC1 - 6 day w/ Holidays | 2023-01-12 | 2023-01-10 | 01ADMIN | Construction | Electrical | IGMP | Phase 1 | Construction | BOH | Level 2 | BAB |  |  |
| QTS-2681 |  | Restrooms #2071 // Rough In-Wall Plumbing | 5d | 2025-11-26 A | 2025-12-04 A | QTS-2311 | 100% |  |  |  |  |  | 2023-01-13 | 2023-01-11 | 01ADMIN | Construction | Mechanical | IGMP | Phase 1 | Construction | BOH | Level 2 | BAB |  |  |
| QTS-3761 |  | Restrooms #2071 // Rough Overhead Plumbing | 5d | 2025-12-29 A | 2026-01-03 A | QTS-2311 | 100% |  |  |  |  | QTS-PHX3 DC1 - 6 day w/ Holidays | 2023-01-12 | 2023-01-10 | 01ADMIN | Construction | Mechanical | IGMP | Phase 1 | Construction | BOH | Level 2 | BAB |  |  |
| QTS-2661 |  | Restrooms #2071 // Rough Overhead Mechanical | 5d | 2026-01-15 A | 2026-05-18 A | QTS-2311, QTS-2671 FF | 100% | 2026-01-15 | 2026-01-21 |  |  | QTS-PHX3 DC1 - 6 day w/ Holidays | 2023-01-26 | 2023-01-23 | 01ADMIN | Construction | Mechanical | IGMP | Phase 1 | Construction | BOH | Level 2 | BAB |  |  |
| QTS-3791 |  | Restrooms #2071 // Install Backing for Restroom Specialties | 1d | 2026-01-19 A | 2026-01-21 A | QTS-2681 | 100% | 2026-01-14 | 2026-01-14 |  |  | QTS-PHX3 DC1 - 6 day w/ Holidays | 2023-02-27 | 2023-02-27 | 01ADMIN | Construction | Build Out | IGMP | Phase 1 | Construction | BOH | Level 2 | BAB |  |  |
| QTS-4411 |  | Restrooms #2071 // Insulate Walls | 1d | 2026-03-27 A | 2026-03-27 A | QTS-3791 | 100% |  |  |  |  | QTS-PHX3 DC1 - 6 day w/ Holidays | 2023-02-24 | 2023-02-24 | 01ADMIN | Construction | Build Out | IGMP | Phase 1 | Construction | BOH | Level 2 | BAB |  |  |
| QTS-6161 |  | Restrooms #2071 // Hang Drywall Walls | 1d | 2026-03-28 A | 2026-03-28 A | QTS-4411, QTS-5751 | 100% |  |  |  |  | QTS-PHX3 DC1 - 6 day w/ Holidays | 2023-03-01 | 2023-02-28 | 01ADMIN | Construction | Build Out | IGMP | Phase 1 | Construction | BOH | Level 2 | BAB |  |  |
| QTS-45581 |  | Restrooms #2071 // Frame Ceilings | 2d | 2026-03-30 A | 2026-03-31 A | QTS-6161 | 100% |  |  |  |  | QTS-PHX3 DC1 - 6 day w/ Holidays | 2023-01-09 | 2023-01-06 | 01ADMIN | Construction | Build Out | IGMP | Phase 1 | Construction | BOH | Level 2 | BAB |  |  |
| QTS-3771 |  | Restrooms #2071 // In Wall Inspection | 1d | 2026-05-26 A | 2026-05-26 A | QTS-2671, QTS-2681 | 100% | 2026-05-27 | 2026-05-27 |  |  | QTS-PHX3 DC1 - 6 day w/ Holidays | 2023-01-17 | 2023-01-17 | 01ADMIN | Construction | Mechanical | IGMP | Phase 1 | Construction | BOH | Level 2 | BAB |  |  |
| QTS-3781 |  | Restrooms #2071 // Rough Overhead Electrical/ Light Fixtures Install | 1d | 2026-06-26 A | 2026-06-26 A | QTS-2311, QTS-2661 | 100% | 2026-07-01 | 2026-07-01 |  |  | QTS-PHX3 DC1 - 6 day w/ Holidays | 2023-03-08 | 2023-03-07 | 01ADMIN | Construction | Electrical | IGMP | Phase 1 | Construction | BOH | Level 2 | BAB | Electrical |  |
| QTS-6171 |  | Restrooms #2071 // Above Ceiling Inspection | 1d | 2026-06-29 A | 2026-06-29 A | QTS-3761, QTS-3781, QTS-5751 | 100% | 2026-06-25 | 2026-06-25 |  |  | QTS-PHX3 DC1 - 6 day w/ Holidays | 2023-03-09 | 2023-03-09 | 01ADMIN | Construction | Mechanical | IGMP | Phase 1 | Construction | BOH | Level 2 | BAB | Mechanical |  |
| QTS-6331 |  | Restrooms #2071 // Hang Drywall on Hard Lids | 1d | 2026-06-30 A | 2026-06-30 A | QTS-45581, QTS-6171, QTS-6161 FF, QTS-3771 | 100% | 2026-07-01 | 2026-07-01 |  |  | QTS-PHX3 DC1 - 6 day w/ Holidays | 2023-03-13 | 2023-03-10 | 01ADMIN | Construction | Build Out | IGMP | Phase 1 | Construction | BOH | Level 2 | BAB | Jake Shimmin |  |
| QTS-6781 |  | Restrooms #2071 // Tape & Finish Drywall | 3d | 2026-07-08 A | 2026-07-10 A | QTS-6331, QTS-6161 | 100% | 2026-07-15 | 2026-07-17 |  |  | QTS-PHX3 DC1 - 6 day w/ Holidays | 2023-03-20 | 2023-03-14 | 01ADMIN | Construction | Build Out | IGMP | Phase 1 | Construction | BOH | Level 2 | BAB | Jake Shimmin |  |
| QTS-0400 |  | BOH RR 2071 / Fabricate & Delivery Countertops | 15d | 2026-07-09 A | 2026-07-16 A | QTS-0360 | 100% | 2026-07-16 | 2026-08-01 |  |  | **GLOBAL - 6 Day Workweek w/ Basic Holidays |  |  |  |  | Build Out |  |  |  |  |  | BAB | Ed Carter |  |
| QTS-0310 |  | BOH RR 2071 / Hang Drywall on Hard Lids | 1d | 2026-07-15 A | 2026-07-15 A | QTS-6781 | 100% |  |  |  |  | **GLOBAL - 6 Day Workweek w/ Basic Holidays |  |  |  |  | Build Out |  |  |  |  |  | BAB | Ed Carter |  |
| QTS-0360 |  | BOH RR 2071 / Field Measure for Countertops | 1d | 2026-07-15 A | 2026-07-15 A | QTS-0310 SS | 100% |  |  |  |  | **GLOBAL - 6 Day Workweek w/ Basic Holidays |  |  |  |  | Build Out |  |  |  |  |  | BAB | Ed Carter |  |
| QTS-0370 |  | BOH RR 2071 / Set Lockers | 3d | 2026-07-15 A | 2026-07-17 A | QTS-6781 | 100% | 2026-07-22 | 2026-07-24 |  |  | **GLOBAL - 6 Day Workweek w/ Basic Holidays |  |  |  |  | Build Out |  |  |  |  |  | BAB | Ed Carter | ISEC |
| QTS-0320 |  | BOH RR 2071 / Tape & Finish Drywall | 4d | 2026-07-16 A | 2026-07-20 A | QTS-0310 | 100% |  |  |  |  | **GLOBAL - 6 Day Workweek w/ Basic Holidays |  |  |  |  | Build Out |  |  |  |  |  | BAB | Ed Carter |  |
| QTS-0330 |  | BOH RR 2071 / Prime & Paint | 2d | 2026-07-16 A | 2026-07-17 A | QTS-0320 | 100% | 2026-07-22 | 2026-07-23 |  |  | **GLOBAL - 6 Day Workweek w/ Basic Holidays |  |  |  |  | Build Out |  |  |  |  |  | BAB | Ed Carter | PCI |
| QTS-0380 |  | BOH RR 2071 / Plumbing Fixtures Install | 2d | 2026-07-20 A | 2026-07-22 A | QTS-0310 | 100% | 2026-07-25 | 2026-07-27 |  |  | **GLOBAL - 6 Day Workweek w/ Basic Holidays |  |  |  |  | Build Out |  |  |  |  |  | BAB | Jorge Maldonado | Bel-Aire |
| QTS-0410 |  | BOH RR 2071 / Install Mechanical Trim | 2d | 2026-07-20 A | 2026-07-22 A | QTS-0380 SS, QTS-0310 | 100% | 2026-07-29 | 2026-07-30 |  |  | **GLOBAL - 6 Day Workweek w/ Basic Holidays |  |  |  |  | Build Out |  |  |  |  |  | BAB | Jorge Maldonado | Bel-Aire |
| QTS-0440 |  | BOH RR 2071 / Install Plumbing Trim at Countertops | 3d | 2026-07-20 A | 2026-07-22 A | QTS-0410 SS, QTS-0310 | 100% | 2026-07-31 | 2026-08-03 |  |  | **GLOBAL - 6 Day Workweek w/ Basic Holidays |  |  |  |  | Build Out |  |  |  |  |  | BAB | Jorge Maldonado | Bel-Aire |
| QTS-0340 |  | BOH RR 2071 / Install Wall & Floor Tile | 3d | 2026-08-05 A | 2026-08-07 A | QTS-0330 | 100% | 2026-08-19 | 2026-08-21 |  |  | **GLOBAL - 6 Day Workweek w/ Basic Holidays |  |  |  |  | Build Out |  |  |  |  |  | BAB | Jake Shimmin | Wholesale Flooring |
| QTS-1013940 |  | BOH RR 2071 / Plumbing Fixtures Install | 2d | 2026-08-19 | 2026-08-20 | QTS-0310, QTS-0340 |  |  |  | -90d | 0d | **GLOBAL - 6 Day Workweek w/ Basic Holidays |  |  |  |  | Build Out |  |  |  |  |  | BAB | Jorge Maldonado | Bel-Aire |
| QTS-1013950 |  | BOH RR 2071 / Install Mechanical Trim | 2d | 2026-08-19 | 2026-08-20 | QTS-0380 SS, QTS-0310, QTS-1013940 SS |  |  |  | -90d | 0d | **GLOBAL - 6 Day Workweek w/ Basic Holidays |  |  |  |  | Build Out |  |  |  |  |  | BAB | Jorge Maldonado | Bel-Aire |
| QTS-1013960 |  | BOH RR 2071 / Install Plumbing Trim at Countertops | 3d | 2026-08-19 | 2026-08-21 | QTS-0410 SS, QTS-0310, QTS-1013950 SS |  |  |  | -88d | 9d | **GLOBAL - 6 Day Workweek w/ Basic Holidays |  |  |  |  | Build Out |  |  |  |  |  | BAB | Jorge Maldonado | Bel-Aire |
| QTS-0420 |  | BOH RR 2071 / Install Restroom Specialties/ ADA Trim | 3d | 2026-08-21 | 2026-08-24 | QTS-0410, QTS-1013950 |  |  |  | -90d | 7d | **GLOBAL - 6 Day Workweek w/ Basic Holidays |  |  |  |  | Build Out |  |  |  |  |  | BAB | Jake Shimmin | ISEC |
| QTS-0430 |  | BOH RR 2071 / Set Countertops | 3d | 2026-08-28 | 2026-08-31 | QTS-0400, QTS-29951 |  |  |  | -97d | 0d | **GLOBAL - 6 Day Workweek w/ Basic Holidays |  |  |  |  | Build Out |  |  |  |  |  | BAB | Jake Shimmin | ISEC |
| QTS-0350 |  | BOH RR 2071 / Electrical Trim | 1d | 2026-09-01 | 2026-09-01 | QTS-0430, QTS-0340 |  |  |  | -97d | 0d | **GLOBAL - 6 Day Workweek w/ Basic Holidays |  |  |  |  | Build Out |  |  |  |  |  | BAB | Jake Shimmin | REI |
| QTS-0390 |  | BOH RR 2071 / Final Coat of Paint | 1d | 2026-09-02 | 2026-09-02 | QTS-0440, QTS-0420, QTS-0380, QTS-0370, QTS-0340, QTS-0350, QTS-1013940, QTS-1013960 |  |  |  | -97d | 3d | **GLOBAL - 6 Day Workweek w/ Basic Holidays |  |  |  |  | Build Out |  |  |  |  |  | BAB | Jake Shimmin | PPC |

Notes:
- QTS-2671: allucent_notes_20251216_165335: Zack Goertz on 2025-12-01 10:34: Had to do some rework for missed layout / Zack Goertz on 2025-12-09 10:52: Not a priority / allucent_notes_20251209_203830: Zack Goertz on 2025-12-01 10:34: Had to do some rework for missed layout / Zack Goertz on 2025-12-09 10:52: Not a priority / allucent_notes_20251202_153722: Zack Goertz on 2025-12-01 10:34: Had to do some rework for missed layout / allucent_notes_20251230_164549: Zack Goertz on 2025-12-01 10:34: Had to do some rework for missed layout / Zack Goertz on 2025-12-09 10:52: Not a priority / Sean Waisner on 2025-12-30 15:33: Needs to be not started / allucent_notes: 2025-12-01 10:34 - User: Zack Goertz - Date Added: 2025-12-01 10:34 - Note: Had to do some rework for missed layout / 2025-12-09 10:52 - User: Zack Goertz - Date Added: 2025-12-09 10:52 - Note: Not a priority / 2025-12-30 15:33 - User: Sean Waisner - Da
- QTS-2661: allucent_notes_20251216_165335: Zack Goertz on 2025-12-01 10:36: Bel-aire is behind. / Zack Goertz on 2025-12-09 10:52: Not a priority / allucent_notes_20251209_203830: Zack Goertz on 2025-12-01 10:36: Bel-aire is behind. / Zack Goertz on 2025-12-09 10:52: Not a priority / allucent_notes_20251202_153722: Zack Goertz on 2025-12-01 10:36: Bel-aire is behind. / allucent_notes_20251230_164549: Zack Goertz on 2025-12-01 10:36: Bel-aire is behind. / Zack Goertz on 2025-12-09 10:52: Not a priority / Sean Waisner on 2025-12-30 15:35: Not actually started / Scheduler Notes: Zack Goertz on 2025-12-01 10:36: Bel-aire is behind. / Zack Goertz on 2025-12-09 10:52: Not a priority / Sean Waisner on 2025-12-30 15:35: Not actually started / 1/20/26: Corridor wall is incomplete holding up completion of this line / item. / 4/14: Walls not complete. / 4/21 Walls not complete. / Notes: 4/21 Walls not complete. 4/14: Walls not complete. 1/20/26: Corridor wall is incomplete holding up completion of this line item. / allucent_notes: 2025-12-01 10:36 - User: Zack Goertz - Date Added: 2025-12-01 10:36 - Note: Bel-aire is behind. / 2025-12-09 10:52 - User: Zack Goertz - Date Added: 2025-12-09 10:52 - Note: Not a priority / 2025-12-30 15:35 - User: Sean Waisner - Date Added: 2025-12-3
- QTS-3791: allucent_notes_20251216_165335: Zack Goertz on 2025-12-09 10:52: Not a priority / Zack Goertz on 2025-12-09 10:52: Not a priority / Sean Waisner on 2025-12-16 15:04: Not priority due to sequencing / allucent_notes_20251209_203830: Zack Goertz on 2025-12-09 10:52: Not a priority / Zack Goertz on 2025-12-09 10:52: Not a priority / allucent_notes_20251230_164549: Zack Goertz on 2025-12-09 10:52: Not a priority / Zack Goertz on 2025-12-09 10:52: Not a priority / Sean Waisner on 2025-12-16 15:04: Not priority due to sequencing / Sean Waisner on 2025-12-30 15:34: Framer has not started / allucent_notes: 2025-12-09 10:52 - User: Zack Goertz - Date Added: 2025-12-09 10:52 - Note: Not a priority / 2025-12-09 10:52 - User: Zack Goertz - Date Added: 2025-12-09 10:52 - Note: Not a priority / 2025-12-16 15:04 - User: Sean Waisner - Date Added: 2025-12-16 15:0
- QTS-45581: allucent_notes_20251230_164549: Sean Waisner on 2025-12-30 15:34: Awaiting Mechanical / allucent_notes: 2025-12-30 15:34 - User: Sean Waisner - Date Added: 2025-12-30 15:34 - Note: Awaiting Mechanical
- QTS-0340: Scheduler Notes: 7/28-Manpower issue - working in 1077 RR

| ID | WBS | Activity | Duration | Start | Finish | Predecessors | Complete | Planned start | Planned finish | Total float | Free float | Calendar | Project Section | Layton Discipline | Baseline | Phase-1-1 | Project Section-1 | Location | Layton Super | Layton PM | Contract | Trade Partner | Level | Allucent CSI Group | Notes |
| --- | --- | --- | --- | --- | --- | --- | --- | --- | --- | --- | --- | --- | --- | --- | --- | --- | --- | --- | --- | --- | --- | --- | --- | --- | --- |
|  | 10 | **BOH / Commissioning** |  |  |  |  |  |  |  |  |  |  |  |  |  |  |  |  |  |  |  |  |  |  |  |
|  | 2 | **Energization & Prefunctional Testing** |  |  |  |  |  |  |  |  |  |  |  |  |  |  |  |  |  |  |  |  |  |  |  |
|  | 1 | **Electrical** |  |  |  |  |  |  |  |  |  |  |  |  |  |  |  |  |  |  |  |  |  |  |  |
|  | 2 | **Mechanical** |  |  |  |  |  |  |  |  |  |  |  |  |  |  |  |  |  |  |  |  |  |  |  |
|  | 4 | **Functional Testing** |  |  |  |  |  |  |  |  |  |  |  |  |  |  |  |  |  |  |  |  |  |  |  |
|  | 3 | **Final Commissioning** |  |  |  |  |  |  |  |  |  |  |  |  |  |  |  |  |  |  |  |  |  |  |  |
|  | 17 | **FOH / BOH Close Out** |  | 2026-09-08 | 2026-09-28 |  |  |  |  |  |  |  |  |  |  |  |  |  |  |  |  |  |  |  |  |
| QTS-30791 |  | FOH / BOH / Corridors / Common Areas // LCC Worklist | 5d | 2026-09-08 | 2026-09-14 | QTS-2521, QTS-45541, QTS-6311, QTS-45501, QTS-45491, QTS-26271, QTS-26311, QTS-27061, QTS-26791, QTS-25781, QTS-28231, QTS-50811, QTS-49351, QTS-45481, QTS-45641, QTS-45631, QTS-45621, QTS-45611, QTS-45571, QTS-45561, QTS-45551, QTS-45531, QTS-2501, QTS-24731, QTS-24651, QTS-24711, QTS-24671, QTS-24661, QTS-24141, QTS-24761, QTS-24751, QTS-26181, QTS-26161, QTS-26151, QTS-24121, QTS-24111, QTS-26131, QTS-26121, QTS-24721, QTS-24691, QTS-26141, QTS-29001, QTS-29321, QTS-10171, QTS-10181, QTS-21951, QTS-42251, QTS-12501, QTS-11431, QTS-38571, QTS-38561, QTS-21501, QTS-6731, QTS-13301, QTS-30811, QTS-12951, QTS-15731, QTS-29081, QTS-29041, QTS-28821, QTS-30441, QTS-28891, QTS-28371, QTS-28851, QTS-28041, QTS-27691, QTS-21731, QTS-30001, QTS-29751, QTS-30281, QTS-16751, QTS-15691, QTS-46461, QTS-30101, QTS-1003990, QTS-1004000, QTS-1004050, QTS-1004030, QTS-1000860, QTS-1002670, QTS-1002660, QTS-1001100, QTS-24021, QTS-1001080, QTS-1005220, QTS-1000690, QTS-1001090, QTS-1000920, QTS-1002820, QTS-1009330, QTS-1009340, QTS-1010270, QTS-1010310, QTS-45091, QTS-45141, QTS-1010370, QTS-26391, QTS-11031, QTS-1011620, QTS-1011590, QTS-1010300, QTS-1012220, QTS-1012330, QTS-10151, QTS-10861, QTS-10871, QTS-10141, QTS-23401, QTS-1011610, QTS-1012460, QTS-22921, QTS-0190, QTS-0160, QTS-0100, QTS-0210, QTS-0220, QTS-0300, QTS-0390, QTS-0150, QTS-11021, QTS-1009320, QTS-1013650, QTS-1011980, QTS-0110, QTS-1013840, QTS-30771, QTS-1000910 |  |  |  | -83d | 0d |  | Close Out | Closeout | IGMP | Phase 1 | Close Out | FOH | Jake Shimmin | TTodaro | BAB | Layton |  |  |  |
| QTS-30801 |  | FOH / BOH / Corridors / Common Areas // Final Clean | 5d | 2026-09-08 | 2026-09-14 | QTS-30791 FF, QTS-30791 SS, QTS-0170, QTS-0240 |  |  |  | -83d | 0d |  | Close Out | Closeout | IGMP | Phase 1 | Close Out | FOH | Jake Shimmin | TTodaro | BAB | Layton |  |  |  |
| QTS-30821 |  | FOH / BOH / Corridors / Common Areas // A/E Punch List | 5d | 2026-09-15 | 2026-09-21 | QTS-30801 |  |  |  | -83d | 0d |  | Close Out | Closeout | IGMP | Phase 1 | Close Out | FOH |  | TTodaro | BAB | Layton |  |  |  |
| QTS-99130 |  | FOH / BOH / Corridors / Common Areas // Turnover Float | 5d | 2026-09-22 | 2026-09-28 | QTS-30821 |  |  |  | -83d | 16d |  | Close Out | Closeout | IGMP | Phase 1 | Close Out |  |  | TTodaro | BAB | Layton | Level 2 |  |  |
|  | 5 | **Corridors/ Common Areas** |  |  |  |  |  |  |  |  |  |  |  |  |  |  |  |  |  |  |  |  |  |  |  |
|  | 1 | **Level 1 Corridors** |  |  |  |  |  |  |  |  |  |  |  |  |  |  |  |  |  |  |  |  |  |  |  |
|  | 2 | **Level 2 Corridors** |  |  |  |  |  |  |  |  |  |  |  |  |  |  |  |  |  |  |  |  |  |  |  |
|  | 4 | **Data Hall 1100 (9MW)** |  | 2025-07-14 | 2026-08-31 |  |  |  |  |  |  |  |  |  |  |  |  |  |  |  |  |  |  |  |  |
| QTS-1691 |  | DH 1100 // Prime & Paint Exposed Structure | 10d | 2025-07-14 A | 2025-07-22 A | QTS-15031 | 100% | 2025-07-07 | 2025-07-18 |  |  |  | Construction | Build Out | IGMP | Phase 1 | Construction | DH1100 | Doug Hayes |  | BAB |  | Level 1 |  |  |
| QTS-6891 |  | DH 1100 // Install Fire Caulking | 3d | 2025-08-21 A | 2025-08-25 A | QTS-1691 | 100% | 2025-09-04 | 2025-09-08 |  |  |  | Construction | Build Out | IGMP | Phase 1 | Construction | DH1100 | Doug Hayes |  | BAB |  | Level 1 | 01ADMIN |  |
| QTS-6881 |  | DH 1100 // Establish Control & Layout Walls | 3d | 2025-09-03 A | 2025-09-05 A | QTS-6891, QTS-1015, QTS-1691 | 100% |  |  |  |  |  | Construction | Build Out | IGMP | Phase 1 | Construction | DH1100 | Doug Hayes |  | BAB |  | Level 1 | 01ADMIN |  |
| QTS-8571 |  | DH 1100 // Perimeter Insulation | 7d | 2025-09-08 A | 2025-09-11 A | QTS-6881, QTS-6891 | 100% | 2025-09-08 | 2025-09-16 |  |  |  | Construction | Core & Shell | IGMP | Phase 1 | Construction | DH1100 |  |  | BAB |  | Level 1 | 01ADMIN |  |
| QTS-4541 |  | DH 1100 // Install Fire Sprinkler | 8d | 2025-09-24 A | 2025-10-03 A | QTS-99030, QTS-19631, QTS-1691 | 100% |  |  |  |  |  | Construction | Mechanical | IGMP | Phase 1 | Construction | DH1100 |  |  | BAB |  | Level 1 | 01ADMIN |  |
| QTS-1012230 |  | DH 1100 // Polish Floors | 2d | 2026-05-28 A | 2026-05-29 A | QTS-43591, QTS-17531, QTS-17521, QTS - 3690.1, QTS-99930, QTS-99950, QTS - 4730 | 100% |  |  |  |  |  | Construction | Build Out | IGMP | Phase 1 | Construction | DH1100 | Jay Perkins |  | BAB |  | Level 1 |  |  |
|  | 8 | **Zone 1 Corridor 1011** |  | 2025-09-12 | 2026-07-30 |  |  |  |  |  |  |  |  |  |  |  |  |  |  |  |  |  |  |  |  |
| QTS-19801 |  | Zone 1 Gridlines 10-21 / Corridor 1011 // Frame Corridor & Exterior Wall | 2d | 2025-09-12 A | 2025-09-15 A | QTS-8571, QTS-19631, QTS-6881, QTS-19261 | 100% |  |  |  |  |  | Construction | Build Out | IGMP |  |  |  | Doug Hayes |  | BAB |  | Level 1 | 01ADMIN |  |
| QTS-20361 |  | Zone 1 Gridlines 10-21 / Corridor 1011 // In Wall Rough Electrical | 10d | 2025-09-24 A | 2025-10-07 A | QTS-39041, QTS-19801 | 100% |  |  |  |  |  | Construction | Electrical | IGMP |  |  |  |  |  | BAB |  | Level 1 | 01ADMIN |  |
| QTS-20371 |  | Zone 1 Gridlines 10-21 / Corridor 1011 // In Wall Rough Plumbing | 10d | 2025-09-24 A | 2025-10-24 A | QTS-19801 | 100% | 2025-09-24 | 2025-10-07 |  |  |  | Construction | Mechanical | IGMP |  |  |  |  |  | BAB |  | Level 1 | 01ADMIN |  |
| QTS-20801 |  | Zone 1 Gridlines 10-21 / Corridor 1011 // In Wall Inspections | 1d | 2025-10-27 A | 2025-10-27 A | QTS-20361, QTS-20371 FF, QTS-20371 | 100% |  |  |  |  |  | Construction | Mechanical | IGMP |  |  |  |  |  | BAB |  | Level 1 | 01ADMIN |  |
| QTS-20931 |  | Zone 1 Gridlines 10-21 / Corridor 1011 // Insulate Corridor Walls | 2d | 2025-10-30 A | 2025-10-31 A | QTS-20801 | 100% |  |  |  |  |  | Construction | Build Out | IGMP |  |  |  | Doug Hayes |  | BAB |  | Level 1 | 01ADMIN |  |
| QTS-21011 |  | Zone 1 Gridlines 10-21 / Corridor 1011 // Hang Drywall | 7d | 2025-11-03 A | 2025-11-11 A | QTS-20931 | 100% |  |  |  |  |  | Construction | Build Out | IGMP |  |  |  | Doug Hayes |  | BAB |  | Level 1 | 01ADMIN |  |
| QTS-21671 |  | Zone 1 Gridlines 10-21 / Corridor 1011 // Tape & Finish Drywall Corridor Exterior Wall | 7d | 2025-11-12 A | 2026-01-06 A | QTS-21011 | 100% | 2025-11-12 | 2025-11-19 |  |  | QTS-PHX3 DC1 - 6 day w/ Holidays | Construction | Build Out | IGMP |  |  |  |  |  | BAB |  | Level 1 | 01ADMIN |  |
| QTS-22441 |  | Zone 1 Gridlines 10-21 / Corridor 1011 // Install VESDA | 5d | 2025-12-01 A | 2025-12-05 A | QTS-21011 | 100% |  |  |  |  |  | Construction | Mechanical | IGMP |  |  |  |  |  | BAB |  | Level 1 | 01ADMIN |  |
| QTS-22591 |  | Zone 1 Gridlines 10-21 / Corridor 1011 // Rough Fire Sprinklers | 5d | 2025-12-04 A | 2025-12-10 A | QTS-22441 FF+3d, QTS-22441 SS+3d | 100% |  |  |  |  |  | Construction | Mechanical | IGMP |  |  |  |  |  | BAB |  | Level 1 | 01ADMIN |  |
| QTS-23991 |  | Zone 1 Gridlines 10-21 / Corridor 1011 // HM Door Frame Install | 6d | 2025-12-15 A | 2025-12-22 A | QTS-16151 | 100% |  |  |  |  |  | Construction | Build Out | IGMP |  |  |  |  |  | BAB |  | Level 1 | 01ADMIN |  |
| QTS-25541 |  | Zone 1 Gridlines 10-21 / Corridor 1011 // Rough Overhead Ductwork Gridline 10-15 | 10d | 2025-12-17 A | 2026-01-10 A | QTS-120000, QTS-22811 SS+3d | 100% | 2025-12-17 | 2025-12-29 |  |  | QTS-PHX3 DC1 - 6 day w/ Holidays | Construction | Mechanical | IGMP |  |  |  |  |  | BAB |  | Level 1 | 01ADMIN |  |
| QTS-1005200 |  | Zone 1 Gridlines 10-21 / Corridor 1011 // Rough Overhead Conduit | 5d | 2025-12-22 A | 2026-02-20 A | QTS-22591 | 100% | 2025-12-22 | 2025-12-27 |  |  | QTS-PHX3 DC1 - 6 day w/ Holidays | Construction | Electrical | IGMP |  |  |  |  |  | BAB |  | Level 1 | 01ADMIN |  |
| QTS-22811 |  | Zone 1 Gridlines 10-21 / Corridor 1011 // Rough Overhead Conduit | 5d | 2025-12-22 A | 2026-01-27 A | QTS-120000, QTS-22591 SS+3d | 100% | 2025-12-22 | 2025-12-27 |  |  | QTS-PHX3 DC1 - 6 day w/ Holidays | Construction | Electrical | IGMP |  |  |  |  |  | BAB |  | Level 1 | 01ADMIN |  |
| QTS-24111 |  | Zone 1 Gridlines 10-21 / Corridor 1011 // Rough Electrical & Security to HM Door | 4d | 2025-12-23 A | 2025-12-31 A | QTS-23991 | 100% |  |  |  |  |  | Construction | Electrical | IGMP |  |  |  |  |  | BAB |  | Level 1 | 01ADMIN |  |
| QTS-43591 |  | Zone 1 Gridlines 10-21 / Corridor 1011 // Rough Overhead Ductwork Gridline 15-21 | 10d | 2026-01-12 A | 2026-01-23 A | QTS-25541 | 100% |  |  |  |  | QTS-PHX3 DC1 - 6 day w/ Holidays | Construction | Mechanical | IGMP |  | Construction |  |  |  | BAB |  | Level 1 |  |  |
| QTS-22071 |  | Zone 1 Gridlines 10-21 / Corridor 1011 // Prime & Paint Corridor Exterior Wall | 2d | 2026-01-27 A | 2026-01-28 A | QTS-21671 | 100% |  |  |  |  | QTS-PHX3 DC1 - 6 day w/ Holidays | Construction | Build Out | IGMP |  |  |  |  |  | BAB |  | Level 1 | 01ADMIN |  |
| QTS-26121 |  | Zone 1 Gridlines 10-21 / Corridor 1011 // Install Light Fixtures On Walls | 8d | 2026-01-28 A | 2026-03-31 A | QTS-43591 | 100% | 2026-01-28 | 2026-02-05 |  |  | QTS-PHX3 DC1 - 6 day w/ Holidays | Construction | Electrical | IGMP |  |  |  |  |  | BAB |  | Level 1 |  |  |
| QTS-26131 |  | Zone 1 Gridlines 10-21 / Corridor 1011 // Install Fire Alarm Devices | 4d | 2026-01-28 A | 2026-02-27 A | QTS-43591, QTS-22071 | 100% | 2026-01-28 | 2026-01-31 |  |  | QTS-PHX3 DC1 - 6 day w/ Holidays | Construction | Electrical | IGMP |  |  |  |  |  | BAB |  | Level 1 |  |  |
| QTS-26141 |  | Zone 1 Gridlines 10-21 / Corridor 1011 // Install Basket Tray | 8d | 2026-01-28 A | 2026-02-28 A | QTS-43591 FF+2d, QTS-1005200 FF | 100% | 2026-01-28 | 2026-02-05 |  |  | QTS-PHX3 DC1 - 6 day w/ Holidays | Construction | Electrical | IGMP |  |  |  |  |  | BAB |  | Level 1 |  |  |
| QTS-28231 |  | Zone 1 Gridlines 10-21 / Corridor 1011 // Install Wall Base | 2d | 2026-04-01 A | 2026-04-02 A | QTS-22071, QTS-19801, QTS-26141 | 100% |  |  |  |  | QTS-PHX3 DC1 - 6 day w/ Holidays | Construction | Build Out | IGMP |  |  |  | Bobby Martinez |  | BAB |  | Level 1 | 01ADMIN |  |
| QTS-0460 |  | DH 1100 / Corridor 1011 / Final Paint | 1d | 2026-07-15 A | 2026-07-15 A | QTS-28231 | 100% | 2026-07-22 | 2026-07-22 |  |  | **GLOBAL - 6 Day Workweek w/ Basic Holidays |  | Build Out |  |  |  |  | Jason Hendley |  | BAB | PPC |  |  |  |
| QTS-0450 |  | DH 1100 / Corridor 1011 / Install FEC's | 2d | 2026-07-16 A | 2026-07-17 A | QTS-0460 | 100% | 2026-07-22 | 2026-07-23 |  |  | **GLOBAL - 6 Day Workweek w/ Basic Holidays |  | Build Out |  |  |  |  | Ed Carter |  | BAB | ISEC |  |  |  |
| QTS-0470 |  | DH 1100 / Corridor 1011 / Burnish Concrete Floor | 1d | 2026-07-17 A | 2026-07-17 A | QTS-0460 | 100% | 2026-07-22 | 2026-07-22 |  |  | **GLOBAL - 6 Day Workweek w/ Basic Holidays |  | Build Out |  |  |  |  | Ben Ribble |  | BAB | Bldg Solutions |  |  |  |
| QTS-0480 |  | DH 1100 / Corridor 1011 / Install Rubber Base | 2d | 2026-07-18 A | 2026-07-18 A | QTS-0460 | 100% | 2026-07-23 | 2026-07-24 |  |  | **GLOBAL - 6 Day Workweek w/ Basic Holidays |  | Build Out |  |  |  |  | Ben Ribble |  | BAB | Wholesale Flooring |  |  |  |
| QTS-0490 |  | DH 1100 / Corridor 1011 / Final Clean | 2d | 2026-07-29 A | 2026-07-30 A | QTS-0480, QTS-0470 | 100% |  |  |  |  | **GLOBAL - 6 Day Workweek w/ Basic Holidays |  | Build Out |  |  |  |  | Ed Carter |  | BAB | AGDC |  |  | 7/30 |

Notes:
- QTS-6891: allucent_notes: Jason Johnston on 2025-08-26 15:08: Area was available earlier than expected and sub took advantage to complete work. / allucent_notes: 2025-08-26 15:08 - User: Jason Johnston - Date Added: 2025-08-26 15:08 - Note: Area was available earlier than expected and sub took advantage to complete work.
- QTS-6881: allucent_notes: Zack Goertz on 2025-09-02 12:09: PCI is falling behind. Build out team has requested PCI to work 10's and on Saturday. PCI did not have proper material and placed track down in the wrong spot / allucent_notes: 2025-09-02 12:09 - User: Zack Goertz - Date Added: 2025-09-02 12:09 - Note: PCI is falling behind. Build out team has requested PCI to work 10's and on Saturday. PCI did not have proper material and placed track down in the wrong spot
- QTS-20371: allucent_notes_20251027_224008: Luis Vea on 2025-10-21T14:46:22.276Z: pushing out due to spray insulation burying penetrations / David Wiltberger on 2025-10-21 13:10: Framing needed to be corrected before completion. PCI took 2 weeks to correct. / allucent_notes_20251021_145627: Luis Vea on 2025-10-21T14:46:22.276Z: pushing out due to spray insulation burying penetrations / David Wiltberger on 2025-10-21 13:10: Framing needed to be corrected before completion. PCI took 2 weeks to correct. / allucent_notes: 2025-10-21T14:46:22.276Z - User: Luis Vea - Date Added: 2025-10-21T14:46:22.276Z - Note: pushing out due to spray insulation burying penetrations / 2025-10-21 13:10 - User: David Wiltberger - Date Added: 2025-10-21 13:10 - Note: Framing needed to be corr
- QTS-20801: allucent_notes_20251027_224008: Luis Vea on 2025-10-21T14:47:29.169Z: needing roughin electricalmc whip, there is an RFI for in process for bulletin 4 on some changes for the rough in / allucent_notes_20251021_145627: Luis Vea on 2025-10-21T14:47:29.169Z: needing roughin electricalmc whip, there is an RFI for in process for bulletin 4 on some changes for the rough in / allucent_notes: 2025-10-21T14:47:29.169Z - User: Luis Vea - Date Added: 2025-10-21T14:47:29.169Z - Note: needing roughin electricalmc whip, there is an RFI for in process for bulletin 4 on some changes for the rough in
- QTS-20931: allucent_notes_20251104_160200: Luis Vea on 2025-10-21T14:48:52.010Z: waiting for electrical inspections and electrical rouhgin / Jason Johnston on 2025-10-21 12:10: Bulletin 4 changes impacting the completion of this work. / Jason Johnston on 2025-10-28 15:10: Starting Thursday Evening / allucent_notes_20251028_163138: Luis Vea on 2025-10-21T14:48:52.010Z: waiting for electrical inspections and electrical rouhgin / Jason Johnston on 2025-10-21 12:10: Bulletin 4 changes impacting the completion of this work. / Jason Johnston on 2025-10-28 15:10: Starting Thursday Evening / allucent_notes_20251027_224008: Luis Vea on 2025-10-21T14:48:52.010Z: waiting for electrical inspections and electrical rouhgin / Jason Johnston on 2025-10-21 12:10: Bulletin 4 changes impacting the completion of this work. / allucent_notes_20251021_145627: Luis Vea on 2025-10-21T14:48:52.010Z: waiting for electrical inspections and electrical rouhgin / Jason Johnston on 2025-10-21 12:10: Bulletin 4 changes impacting the completion of this work. / allucent_notes: 2025-10-21T14:48:52.010Z - User: Luis Vea - Date Added: 2025-10-21T14:48:52.010Z - Note: waiting for electrical inspections and electrical rouhgin / 2025-10-21 12:10 - User: Jason Johnston - Date Added: 2025-10-21 12:10 - Note: Bulletin 4 changes impacti
- QTS-21671: allucent_notes_20251216_165335: Luis Vea on 2025-12-01 09:34: EXT. wall is going to have be demoed due lighting being installed. but it is currently finished without paint. / Jason Johnston on 2025-12-16 07:45: Manpower reallocated to BOH. / allucent_notes_20251209_203830: Luis Vea on 2025-12-01 09:34: EXT. wall is going to have be demoed due lighting being installed. but it is currently finished without paint. / allucent_notes_20251202_153722: Luis Vea on 2025-12-01 09:34: EXT. wall is going to have be demoed due lighting being installed. but it is currently finished without paint. / allucent_notes_20251230_164549: Luis Vea on 2025-12-01 09:34: EXT. wall is going to have be demoed due lighting being installed. but it is currently finished without paint. / Jason Johnston on 2025-12-16 07:45: Manpower reallocated to BOH. / Jason Johnston on 2025-12-30 16:39: No update / allucent_notes: 2025-12-01 09:34 - User: Luis Vea - Date Added: 2025-12-01 09:34 - Note: EXT. wall is going to have be demoed due lighting being installed. but it is currently finished without paint. / 2025-12-16 07:45 - User: Jason Johnston - Date Added: 2025-12-16 07

| ID | WBS | Activity | Duration | Start | Finish | Predecessors | Complete | Planned start | Planned finish | Calendar | Project Section | Layton Discipline | Baseline | Level | Fragnet | Fragnet Responsible Party | Contract | Allucent CSI Group | Phase-1-1 | Project Section-1 | Location | Layton Super | Trade Partner |
| --- | --- | --- | --- | --- | --- | --- | --- | --- | --- | --- | --- | --- | --- | --- | --- | --- | --- | --- | --- | --- | --- | --- | --- |
|  | 1 | **Zone 1 Corridor 1011 - Fragnet Delays** |  | 2026-04-08 | 2026-04-13 |  |  |  |  |  |  |  |  |  |  |  |  |  |  |  |  |  |  |
| QTS-1009330 |  | Zone 1 Gridlines 10-21 / Corridor 1011 // Install Light Fixtures On Walls | 8d | 2026-04-08 A | 2026-04-13 A | QTS-26121 | 100% | 2026-04-08 | 2026-04-16 | QTS-PHX3 DC1 - 6 day w/ Holidays | Construction | Electrical | IGMP | Level 1 | Fragnet | Rosendin Electric Inc. | BAB |  |  |  |  |  |  |
|  | 3 | **Data Hall 1100** |  | 2025-11-10 | 2026-08-31 |  |  |  |  |  |  |  |  |  |  |  |  |  |  |  |  |  |  |
| QTS-10251 |  | DH 1100 // Frame Data Hall / Corridor Wall 1011 (West) | 5d | 2025-11-10 A | 2025-11-14 A | QTS-10291, QTS-11531, QTS-6891 | 100% |  |  |  | Construction | Build Out | IGMP | Level 1 |  |  | BAB | 01ADMIN | Phase 1 | Construction | DH1100 | Doug Hayes |  |
| QTS-10241 |  | DH 1100 // Frame Data Hall / Corridor Wall 1017-1018 (East) | 7d | 2025-11-12 A | 2025-12-10 A | QTS-10251, QTS-20771, QTS-8571, QTS-6891, QTS-4541, QTS-6881 | 100% | 2025-11-17 | 2025-11-25 |  | Construction | Build Out | IGMP | Level 1 |  |  | BAB | 01ADMIN | Phase 1 | Construction | DH1100 |  |  |
| QTS-11111 |  | DH 1100 // Install Hollow Metal Frames (West) | 1d | 2025-11-14 A | 2025-11-14 A | QTS-10251 | 100% | 2025-11-17 | 2025-11-17 |  | Construction | Build Out | IGMP | Level 1 |  |  | BAB | 01ADMIN | Phase 1 | Construction | DH1100 | Doug Hayes |  |
| QTS-14681 |  | DH 1100 // Install Security Screen Above Fan Wall - South | 3d | 2025-12-16 A | 2026-01-21 A | QTS-1001250, QTS-14661, QTS-99680, QTS-11531 | 100% | 2025-12-16 | 2025-12-18 | QTS-PHX3 DC1 - 6 day w/ Holidays | Construction | Build Out | IGMP | Level 1 |  |  | BAB | 01ADMIN | Phase 1 | Construction | DH1100 |  |  |
| QTS-1000560 |  | DH 1100 // Install Overhead Conduit - Electrical | 5d | 2025-12-22 A | 2025-12-31 A | QTS-120000 | 100% |  |  |  | Construction | Build Out | IGMP | Level 2 |  |  | BAB | 01ADMIN |  | Construction | DH2100 |  |  |
| QTS-1000570 |  | DH 1100 // Install Overhead Conduit - Controls | 5d | 2025-12-22 A | 2025-12-31 A | QTS-120000, QTS-1000560 SS | 100% |  |  |  | Construction | Build Out | IGMP | Level 2 |  |  | BAB | 01ADMIN |  | Construction | DH2100 |  |  |
| QTS-101980 |  | DH 1100 // Hang Drywall (West) - Corridor Side | 2d | 2026-01-05 A | 2026-01-06 A | QTS-11101, QTS-12381 | 100% |  |  | QTS-PHX3 DC1 - 6 day w/ Holidays | Construction | Build Out | IGMP | Level 2 |  |  | BAB | 01ADMIN |  | Construction | DH2100 |  |  |
| QTS-11101 |  | DH 1100 // Rough In-Wall Electrical (West) | 2d | 2026-01-05 A | 2026-01-06 A | QTS-39041, QTS-10251 | 100% |  |  |  | Construction | Electrical | IGMP | Level 1 |  |  | BAB | 01ADMIN | Phase 1 | Construction | DH1100 |  |  |
| QTS-14081 |  | DH 1100 // Install Structural Ceiling Grid - Inner | 10d | 2026-01-05 A | 2026-01-20 A | QTS-1000570, QTS-1000560, QTS-120000 | 100% | 2026-01-05 | 2026-01-15 | QTS-PHX3 DC1 - 6 day w/ Holidays | Construction | Build Out | IGMP | Level 1 |  |  | BAB | 01ADMIN | Phase 1 | Construction | DH1100 |  |  |
| QTS-101990 |  | DH 1100 // Tape & Finish Drywall (West) - Corridor Side | 5d | 2026-01-07 A | 2026-01-12 A | QTS-101980 | 100% |  |  | QTS-PHX3 DC1 - 6 day w/ Holidays | Construction | Build Out | IGMP | Level 2 |  |  | BAB | 01ADMIN |  | Construction | DH2100 |  |  |
| QTS-12141 |  | DH 1100 // In Wall Inspection (West) | 1d | 2026-01-12 A | 2026-01-12 A | QTS-11101 | 100% |  |  | QTS-PHX3 DC1 - 6 day w/ Holidays | Construction | Electrical | IGMP | Level 1 |  |  | BAB | 01ADMIN | Phase 1 | Construction | DH1100 |  |  |
| QTS-102060 |  | DH 1100 // Frame Data Hall / Corridor Wall 1017-1018 (East) - 14x14 Leave Outs | 1d | 2026-01-14 A | 2026-01-14 A | QTS - 2600, QTS-15261, QTS-46491, QTS-14131 | 100% |  |  | QTS-PHX3 DC1 - 6 day w/ Holidays | Construction | Build Out | IGMP | Level 2 |  |  | BAB | 01ADMIN |  | Construction | DH2100 |  |  |
| QTS-11121 |  | DH 1100 // Rough In-Wall Electrical (East) | 5d | 2026-01-14 A | 2026-01-15 A | QTS-10241 | 100% | 2026-01-14 | 2026-01-20 | QTS-PHX3 DC1 - 6 day w/ Holidays | Construction | Electrical | IGMP | Level 1 |  |  | BAB | 01ADMIN | Phase 1 | Construction | DH1100 |  |  |
| QTS-11131 |  | DH 1100 // Install Hollow Metal Frames (East) - 14x14 Leave Out | 1d | 2026-01-14 A | 2026-01-14 A | QTS-102060 FF, QTS-10241 | 100% |  |  | QTS-PHX3 DC1 - 6 day w/ Holidays | Construction | Build Out | IGMP | Level 1 |  |  | BAB | 01ADMIN | Phase 1 | Construction | DH1100 |  |  |
| QTS-12381 |  | DH 1100 // Hang Drywall (West) - Data Hall Side | 2d | 2026-01-14 A | 2026-01-15 A | QTS-12141, QTS-11111, QTS-10251, QTS-11101 | 100% |  |  | QTS-PHX3 DC1 - 6 day w/ Holidays | Construction | Build Out | IGMP | Level 1 |  |  | BAB | 01ADMIN | Phase 1 | Construction | DH1100 |  |  |
| QTS-14921 |  | DH 1100 // Install VESDA | 8d | 2026-01-14 A | 2026-04-15 A | QTS-14081 FF | 100% | 2026-01-14 | 2026-01-23 | QTS-PHX3 DC1 - 6 day w/ Holidays | Construction | Electrical | IGMP | Level 1 |  |  | BAB | 01ADMIN | Phase 1 | Construction | DH1100 |  |  |
| QTS-120420 |  | DH 1100 // In Wall Inspection (East) | 1d | 2026-01-16 A | 2026-01-16 A | QTS-11121 | 100% |  |  | QTS-PHX3 DC1 - 6 day w/ Holidays | Construction | Electrical | IGMP | Level 1 |  |  | BAB | 01ADMIN | Phase 1 | Construction | DH1100 |  |  |
| QTS-102000 |  | DH 1100 // Vapor Barrier & Insulation (West) | 2d | 2026-01-21 A | 2026-01-22 A | QTS-101990 | 100% |  |  | QTS-PHX3 DC1 - 6 day w/ Holidays | Construction | Build Out | IGMP | Level 2 |  |  | BAB | 01ADMIN |  | Construction | DH2100 |  |  |
| QTS-12661 |  | DH 1100 // Tape, & Finish Drywall (West) - Data Hall Side | 5d | 2026-01-21 A | 2026-01-26 A | QTS-12381 | 100% |  |  | QTS-PHX3 DC1 - 6 day w/ Holidays | Construction | Build Out | IGMP | Level 1 |  |  | BAB | 01ADMIN | Phase 1 | Construction | DH1100 |  |  |
| QTS-13691 |  | DH 1100 // Install Security Screen Above Fan Wall - North | 3d | 2026-01-21 A | 2026-01-23 A | QTS-1001250, QTS-15591, QTS-99680, QTS-10291, QTS-14681 | 100% |  |  | QTS-PHX3 DC1 - 6 day w/ Holidays | Construction | Build Out | IGMP | Level 1 |  |  | BAB | 01ADMIN | Phase 1 | Construction | DH1100 |  |  |
| QTS-102010 |  | DH 1100 // Top Out / Corridor Wall 1017-1018 (East) - Data Hall Side | 3d | 2026-01-22 A | 2026-01-26 A | QTS-120420, QTS-11121 | 100% | 2026-01-22 | 2026-01-24 | QTS-PHX3 DC1 - 6 day w/ Holidays | Construction | Build Out | IGMP | Level 2 |  |  | BAB | 01ADMIN |  | Construction | DH2100 |  |  |
| QTS-17531 |  | DH 1100 // Install Fire Sprinkler Heads | 3d | 2026-01-24 A | 2026-01-27 A | QTS-14081 | 100% |  |  | QTS-PHX3 DC1 - 6 day w/ Holidays | Construction | Mechanical | IGMP | Level 1 |  |  | BAB |  | Phase 1 | Construction | DH1100 |  |  |
| QTS-102620 |  | DH 1100 // Paint Wall (West) - Corridor Side | 2d | 2026-01-28 A | 2026-01-29 A | QTS-101990 | 100% |  |  | QTS-PHX3 DC1 - 6 day w/ Holidays | Construction | Build Out | IGMP | Level 2 |  |  | BAB | 01ADMIN |  | Construction | DH2100 |  |  |
| QTS-13321 |  | DH 1100 // Paint Walls (West) - Data Hall Side | 2d | 2026-01-28 A | 2026-01-29 A | QTS-12661, QTS-12381 | 100% |  |  | QTS-PHX3 DC1 - 6 day w/ Holidays | Construction | Build Out | IGMP | Level 1 |  |  | BAB | 01ADMIN | Phase 1 | Construction | DH1100 |  |  |
| QTS-102020 |  | DH 1100 // One Side Data Hall / Corridor Wall 1017-1018 (East) - Data Hall Side | 3d | 2026-02-05 A | 2026-02-07 A | QTS-102010 | 100% |  |  | QTS-PHX3 DC1 - 6 day w/ Holidays | Construction | Build Out | IGMP | Level 2 |  |  | BAB | 01ADMIN |  | Construction | DH2100 |  |  |
| QTS-1002360 |  | DH 1100 // Install Fire Alarm Devices | 3d | 2026-02-11 A | 2026-04-07 A | QTS-17531 | 100% | 2026-02-11 | 2026-02-13 | QTS-PHX3 DC1 - 6 day w/ Holidays | Construction | Electrical | IGMP | Level 1 |  |  | BAB |  | Phase 1 | Construction | DH1100 |  |  |
| QTS-1004530 |  | DH 1100 // Install Structural Ceiling Grid - Outer | 4d | 2026-02-18 A | 2026-02-21 A | QTS-13691 | 100% |  |  | QTS-PHX3 DC1 - 6 day w/ Holidays | Construction | Build Out | IGMP | Level 1 |  |  | BAB | 01ADMIN | Phase 1 | Construction | DH1100 |  |  |
| QTS-102040 |  | DH 1100 // Tape, & Finish Drywall (East) - Data Hall Side | 5d | 2026-02-18 A | 2026-02-26 A | QTS-102020 | 100% | 2026-02-18 | 2026-02-23 | QTS-PHX3 DC1 - 6 day w/ Holidays | Construction | Build Out | IGMP | Level 2 |  |  | BAB | 01ADMIN |  | Construction | DH2100 |  |  |
| QTS-16041 |  | DH 1100 // Install Overhead Lighting | 6d | 2026-02-19 A | 2026-03-30 A | QTS-14081 FF+5d, QTS-17531, QTS-1004530 | 100% | 2026-02-19 | 2026-02-25 | QTS-PHX3 DC1 - 6 day w/ Holidays | Construction | Electrical | IGMP | Level 1 |  |  | BAB | 01ADMIN | Phase 1 | Construction | DH1100 |  |  |
| QTS-1005260 |  | DH 1100 // Insulate Data Hall / Corridor Wall 2017-2018 (East) - 14x14 Leave Outs | 2d | 2026-02-20 A | 2026-02-20 A | QTS-102020 | 100% | 2026-02-18 | 2026-02-19 | QTS-PHX3 DC1 - 6 day w/ Holidays | Construction | Build Out | IGMP | Level 2 |  |  | BAB | 01ADMIN |  | Construction | DH2100 |  |  |
| QTS-102080 |  | DH 1100 // Hang Drywall Data Hall / Corridor Wall 2017-2018 (East) - 14x14 Leave Outs | 1d | 2026-02-23 A | 2026-02-23 A | QTS-11131, QTS-102060, QTS-1005260 | 100% |  |  | QTS-PHX3 DC1 - 6 day w/ Holidays | Construction | Build Out | IGMP | Level 2 |  |  | BAB | 01ADMIN |  | Construction | DH2100 |  |  |
| QTS-102090 |  | DH 1100 // Tape & Finish Drywall Data Hall / Corridor Wall 2017-2018 (East) - 14x14 Leave Outs | 5d | 2026-02-24 A | 2026-03-04 A | QTS-102080 | 100% | 2026-02-24 | 2026-02-28 | QTS-PHX3 DC1 - 6 day w/ Holidays | Construction | Build Out | IGMP | Level 2 |  |  | BAB | 01ADMIN |  | Construction | DH2100 |  |  |
| QTS-102030 |  | DH 1100 // Insulate & Vapor Barrier Data Hall / Corridor Wall 1017-1018 (East) | 2d | 2026-03-04 A | 2026-03-05 A | QTS-102040, QTS-102020 | 100% |  |  | QTS-PHX3 DC1 - 6 day w/ Holidays | Construction | Build Out | IGMP | Level 2 |  |  | BAB | 01ADMIN |  | Construction | DH2100 |  |  |
| QTS-102050 |  | DH 1100 // Paint Walls (East) - Data Hall Side | 1d | 2026-03-04 A | 2026-03-04 A | QTS-102040 | 100% |  |  | QTS-PHX3 DC1 - 6 day w/ Holidays | Construction | Build Out | IGMP | Level 2 |  |  | BAB | 01ADMIN |  | Construction | DH2100 |  |  |
| QTS-102100 |  | DH 1100 // Paint Data Hall / Corridor Wall 2017-2018 (East) - 14x14 Leave Outs | 1d | 2026-03-05 A | 2026-03-05 A | QTS-102090 | 100% |  |  | QTS-PHX3 DC1 - 6 day w/ Holidays | Construction | Build Out | IGMP | Level 2 |  |  | BAB | 01ADMIN |  | Construction | DH2100 |  |  |
| QTS-12391 |  | DH 1100 // Hang Drywall (East) - Corridor Side | 2d | 2026-03-06 A | 2026-03-07 A | QTS-102030 | 100% |  |  | QTS-PHX3 DC1 - 6 day w/ Holidays | Construction | Build Out | IGMP | Level 1 |  |  | BAB | 01ADMIN | Phase 1 | Construction | DH1100 |  |  |
| QTS-17521 |  | DH 1100 // Install Ceiling Tile | 7d | 2026-03-07 A | 2026-04-13 A | QTS-16041 FF, QTS-17531, QTS-1002350 FF | 100% | 2026-03-07 | 2026-03-14 | QTS-PHX3 DC1 - 6 day w/ Holidays | Construction | Build Out | IGMP | Level 1 |  |  | BAB |  | Phase 1 | Construction | DH1100 |  |  |
| QTS-12671 |  | DH 1100 // Tape, & Finish Drywall (East) - Corridor Side | 5d | 2026-03-11 A | 2026-03-16 A | QTS-12391 | 100% |  |  | QTS-PHX3 DC1 - 6 day w/ Holidays | Construction | Build Out | IGMP | Level 1 |  |  | BAB | 01ADMIN | Phase 1 | Construction | DH1100 |  |  |
| QTS-13331 |  | DH 1100 // Paint Walls (East) - Corridor Side | 2d | 2026-03-13 A | 2026-03-15 A | QTS-12671 | 100% | 2026-03-17 | 2026-03-18 | QTS-PHX3 DC1 - 6 day w/ Holidays | Construction | Build Out | IGMP | Level 1 |  |  | BAB | 01ADMIN | Phase 1 | Construction | DH1100 |  |  |
| QTS-13661 |  | DH 1100 // Install Telecom Sleeves | 3d | 2026-03-17 A | 2026-03-20 A | QTS-102050, QTS-13321, QTS-120000, QTS-102620 FF+1d, QTS-102000 | 100% | 2026-03-18 | 2026-03-20 | QTS-PHX3 DC1 - 6 day w/ Holidays | Construction | Electrical | IGMP | Level 1 |  |  | BAB | 01ADMIN | Phase 1 | Construction | DH1100 |  |  |
| QTS-1002350 |  | DH 1100 // Pressure Test Fire Sprinkler System | 2d | 2026-03-25 A | 2026-03-26 A | QTS-17531 | 100% | 2026-04-01 | 2026-04-02 | QTS-PHX3 DC1 - 6 day w/ Holidays | Construction | Mechanical | IGMP | Level 1 |  |  | BAB |  | Phase 1 | Construction | DH1100 |  |  |
| QTS-1002370 |  | DH 1100 // Inspect Overhead Grid | 1d | 2026-03-27 A | 2026-04-20 A | QTS-1002350, QTS-16041 SS, QTS-1009350 FF | 100% | 2026-04-07 | 2026-04-07 | QTS-PHX3 DC1 - 6 day w/ Holidays | Construction | Mechanical | IGMP | Level 1 |  |  | BAB |  | Phase 1 | Construction | DH1100 |  |  |
| QTS-1010190 |  | DH 1100 // Remove Ceiling Tile | 3d | 2026-04-14 A | 2026-04-17 A | QTS-17521 | 100% | 2026-04-14 | 2026-04-16 | QTS-PHX3 DC1 - 6 day w/ Holidays | Construction | Build Out | IGMP | Level 1 |  |  | BAB |  | Phase 1 | Construction | DH1100 |  |  |
| QTS-1010200 |  | DH 1100 // Re-Install Ceiling Tile | 3d | 2026-04-18 A | 2026-05-04 A | QTS-1010190, QTS-1002370 FF, QTS-14921 FF | 100% | 2026-04-18 | 2026-04-21 | QTS-PHX3 DC1 - 6 day w/ Holidays | Construction | Build Out | IGMP | Level 1 |  |  | BAB |  | Phase 1 | Construction | DH1100 | Bobby Martinez |  |
| QTS-1011250 |  | DH 1100 // Install Light Fixtures in Grid | 7d | 2026-04-18 A | 2026-04-25 A | QTS-1371 | 100% |  |  | QTS-PHX3 DC1 - 6 day w/ Holidays | Construction | Electrical | IGMP | Level 1 |  |  | BAB |  | Phase 1 | Construction | DH1100 |  |  |
| QTS-1011260 |  | DH 1100 // Install Controls for Light Fixtures | 8d | 2026-04-18 A | 2026-04-29 A | QTS-1371 | 100% | 2026-04-18 | 2026-04-27 | QTS-PHX3 DC1 - 6 day w/ Holidays | Construction | Electrical | IGMP | Level 1 |  |  | BAB |  | Phase 1 | Construction | DH1100 | Oscar Armenta |  |
| QTS-1011280 |  | DH 1100 // Terminate Branch Panels | 1d | 2026-04-22 A | 2026-04-22 A | QTS-1371 | 100% |  |  | QTS-PHX3 DC1 - 6 day w/ Holidays | Construction | Electrical | IGMP | Level 1 |  |  | BAB |  | Phase 1 | Construction | DH1100 |  |  |
| QTS-1011290 |  | DH 1100 // Controls Equipment Tie In | 2d | 2026-04-22 A | 2026-04-24 A | QTS-1371 | 100% | 2026-04-22 | 2026-04-23 | QTS-PHX3 DC1 - 6 day w/ Holidays | Construction | Electrical | IGMP | Level 1 |  |  | BAB |  | Phase 1 | Construction | DH1100 |  |  |
| QTS-1011270 |  | DH 1100 // Install Exit Signs | 3d | 2026-05-01 A | 2026-05-04 A | QTS-1011250, QTS-1011260 | 100% |  |  | QTS-PHX3 DC1 - 6 day w/ Holidays | Construction | Electrical | IGMP | Level 1 |  |  | BAB |  | Phase 1 | Construction | DH1100 | Oscar Armenta |  |
| QTS-0610 |  | DH 1100 / Data Hall 1100 // Install FE and FEC's | 3d | 2026-07-16 A | 2026-07-17 A | QTS-0560, QTS-0600 | 100% | 2026-07-29 | 2026-07-31 | **GLOBAL - 6 Day Workweek w/ Basic Holidays |  | Build Out |  |  |  |  | BAB |  |  |  |  | Ed Carter | ISEC |
| QTS-0600 |  | DH 1100 / Data Hall 1100 / Final Paint | 2d | 2026-07-17 A | 2026-07-18 A | QTS-0550 | 100% | 2026-07-24 | 2026-07-25 | **GLOBAL - 6 Day Workweek w/ Basic Holidays |  | Build Out |  |  |  |  | BAB |  |  |  |  | Jason Hendley | PPC |
| QTS-0630 |  | DH 1100 / Data Hall 1100 / Install Rubber Base | 2d | 2026-07-20 A | 2026-07-21 A | QTS-0600 | 100% | 2026-07-22 | 2026-07-23 | **GLOBAL - 6 Day Workweek w/ Basic Holidays |  | Build Out |  |  |  |  | BAB |  |  |  |  | Ben Ribble | Wholesale Flooring |
| QTS-5670 |  | DH 1100 / Data Hall 1100 / Final Clean | 2d | 2026-07-29 A | 2026-07-30 A | QTS-0630, QTS-0610 | 100% | 2026-08-05 | 2026-08-06 | **GLOBAL - 6 Day Workweek w/ Basic Holidays |  | Build Out |  |  |  |  | BAB |  |  |  |  | Ed Carter | AGDC |

Notes:
- QTS-1009330: Scheduler Notes: Manpower delay / Notes: Manpower delay
- QTS-10251: allucent_notes_20251118_192630: Jason Johnston on 2025-11-11 16:11: early access / allucent_notes_20251111_182405: Jason Johnston on 2025-11-11 16:11: early access / allucent_notes: 2025-11-11 16:11 - User: Jason Johnston - Date Added: 2025-11-11 16:11 - Note: early access
- QTS-10241: allucent_notes_20251216_165335: Jason Johnston on 2025-10-08 08:10: not done / Luis Vea on 2025-10-21T14:53:53.683Z: there was an RFI in process due to PCI missing in their bid the beam wraps, they are proceeding with this scope for the beam wraps / Jason Johnston on 2025-10-21 12:10: Awaiting for RFI response that would require additional work. / Jason Johnston on 2025-11-04 15:11: Update needed / Luis Vea on 2025-11-10 11:11: starting 11/10, had to first wrap top beam for fire rating completion / Luis Vea on 2025-12-01 10:07: needing leave outs tilt and closure pour backs to be poured to be able to complete wall / Jason Johnston on 2025-12-09 18:22: Need update from team / allucent_notes_20251209_203830: Jason Johnston on 2025-10-08 08:10: not done / Luis Vea on 2025-10-21T14:53:53.683Z: there was an RFI in process due to PCI missing in their bid the beam wraps, they are proceeding with this scope for the beam wraps / Jason Johnston on 2025-10-21 12:10: Awaiting for RFI response that would require additional work. / Jason Johnston on 2025-11-04 15:11: Update needed / Luis Vea on 2025-11-10 11:11: starting 11/10, had to first wrap top beam for fire rating completion / Luis Vea on 2025-12-01 10:07: needing leave outs tilt and closure pour backs to be poured to be able to complete wall / Jason Johnston on 2025-12-09 18:22: Need update from team / allucent_notes_20251202_153722: Jason Johnston on 2025-10-08 08:10: not done / Luis Vea on 2025-10-21T14:53:53.683Z: there was an RFI in process due to PCI missing in their bid the beam wraps, they are proceeding with this scope for the beam wraps / Jason Johnston on 2025-10-21 12:10: Awaiting for RFI response that would require additional work. / Jason Johnston on 2025-11-04 15:11: Update needed / Luis Vea on 2025-11-10 11:11: starting 11/10, had to first wrap top beam for fire rating completion / Luis Vea on 2025-12-01 10:07: needing leave outs tilt and closure pour backs to be poured to be able to complete wall / allucent_notes_20251118_192630: Jason Johnston on 2025-10-08 08:10: not done / Luis Vea on 2025-10-21T14:53:53.683Z: there was an RFI in process due to PCI missing in their bid the beam wraps, they are proceeding with this scope for the beam wraps / Jason Johnston on 2025-10-21 12:10: Awaiting for RFI response that would require additional work. / Jason Johnston on 2025-11-04 15:11: Update needed / Luis Vea on 2025-11-10 11:11: starting 11/10, had to first wrap top beam for fire rating completion / allucent_notes_20251111_182405: Jason Johnston on 2025-10-08 08:10: not done / Luis Vea on 2025-10-21T14:53:53.683Z: there was an RFI in process due to PCI missing in their bid the beam wraps, they are proceeding with this scope for the beam wraps / Jason Johnston on 2025-10-21 12:10: Awaiting for RFI response that would require additional work. / Jason Johnston on 2025-11-04 15:11: Update needed / Luis Vea on 2025-11-10 11:11: starting 11/10, had to first wrap top beam for fire rating completion / allucent_notes_20251104_160200: Jason Johnston on 2025-10-08 08:10: not done / Luis Vea on 2025-10-21T14:53:53.683Z: there was an RFI in process due to PCI missing in their bid the beam wraps, they are proceeding with this scope for the beam wraps / Jason Johnston on 2025-10-21 12:10: Awaiting for RFI response that would require additional work. / Jason Johnston on 2025-11-04 15:11: Update needed / allucent_notes_20251028_163138: Jason Johnston on 2025-10-08 08:10: not done / Luis Vea on 2025-10-21T14:53:53.683Z: there was an RFI in process due to PCI missing in their bid the beam wraps, they are proceeding with this scope for the beam wraps / Jason Johnston on 2025-10-21 12:10: Awaiting for RFI response that would require additional work. / allucent_notes_20251027_224008: Jason Johnston on 2025-10-08 08:10: not done / Luis Vea on 2025-10-21T14:53:53.683Z: there was an RFI in process due to PCI missing in their bid the beam wraps, they are proceeding with this scope for the beam wraps / Jason Johnston on 2025-10-21 12:10: Awaiting for RFI response that would require additional work. / allucent_notes_20251021_145627: Jason Johnston on 2025-10-08 08:10: not done / Luis Vea on 2025-10-21T14:53:53.683Z: there was an RFI in process due to PCI missing in their bid the beam wraps, they are proceeding with this scope for the beam wraps / Jason Johnston on 2025-10-21 12:10: Awaiting for RFI response that would require additional work. / allucent_notes_20251014_152335: Jason Johnston on 2025-10-08 08:10: not done / allucent_notes: 2025-10-08 08:10 - User: Jason Johnston - Date Added: 2025-10-08 08:10 - Note: not done / 2025-10-21T14:53:53.683Z - User: Luis Vea - Date Added: 2025-10-21T14:53:53.683Z - Note: there was an RFI in process due to PCI missing in their bid the beam wraps,
- QTS-14681: allucent_notes_20251216_165335: Jason Johnston on 2025-12-09 18:23: RFI for tamper proof clips needed / allucent_notes_20251209_203830: Jason Johnston on 2025-12-09 18:23: RFI for tamper proof clips needed / allucent_notes_20251230_164549: Jason Johnston on 2025-12-09 18:23: RFI for tamper proof clips needed / Jason Johnston on 2025-12-30 16:42: No update / allucent_notes: 2025-12-09 18:23 - User: Jason Johnston - Date Added: 2025-12-09 18:23 - Note: RFI for tamper proof clips needed / 2025-12-30 16:42 - User: Jason Johnston - Date Added: 2025-12-30 16:42 - Note: No update
- QTS-1000560: allucent_notes_20251230_164549: Jason Johnston on 2025-12-30 16:42: No update / allucent_notes: 2025-12-30 16:42 - User: Jason Johnston - Date Added: 2025-12-30 16:42 - Note: No update
- QTS-11101: allucent_notes_20251209_203830: Jason Johnston on 2025-11-19T02:23:58.637Z: undo / Luis Vea on 2025-12-01 10:10: no man power, REI is in early access rooms and priority rooms for FOH / allucent_notes_20251202_153722: Jason Johnston on 2025-11-19T02:23:58.637Z: undo / Luis Vea on 2025-12-01 10:10: no man power, REI is in early access rooms and priority rooms for FOH / allucent_notes_20251118_192630: Jason Johnston on 2025-11-19T02:23:58.637Z: undo / allucent_notes_20251230_164549: Jason Johnston on 2025-11-19T02:23:58.637Z: undo / Luis Vea on 2025-12-01 10:10: no man power, REI is in early access rooms and priority rooms for FOH / allucent_notes: 2025-11-19T02:23:58.637Z - User: Jason Johnston - Date Added: 2025-11-19T02:23:58.637Z - Note: undo / 2025-12-01 10:10 - User: Luis Vea - Date Added: 2025-12-01 10:10 - Note: no man power, REI is in early access rooms and priority rooms for FOH
- QTS-14081: allucent_notes_20251216_165335: Jason Johnston on 2025-12-16 08:54: adding new sequence to start ceiling grid earlier / allucent_notes_20251230_164549: Jason Johnston on 2025-12-16 08:54: adding new sequence to start ceiling grid earlier / allucent_notes: 2025-12-16 08:54 - User: Jason Johnston - Date Added: 2025-12-16 08:54 - Note: adding new sequence to start ceiling grid earlier
- QTS-102060: allucent_notes_20251014_152335: Zack Goertz on 2025-09-08T20:45:26.651Z: Not started. PCI has been put on notice that they are behind / Jason Johnston on 2025-10-08 08:10: not done / allucent_notes_20251230_164549: Jason Johnston on 2025-12-30 16:42: No update / allucent_notes: 2025-12-30 16:42 - User: Jason Johnston - Date Added: 2025-12-30 16:42 - Note: No update
- QTS-11121: allucent_notes_20251209_203830: Scott Masterson on 2025-10-21 11:10: Walls are not built yet I will work with Area Managers to get this work caught up. / Scott Masterson on 2025-11-04 14:11: Walls are not complete. / Luis Vea on 2025-11-10 11:11: walls are needed to be completed / allucent_notes_20251202_153722: Scott Masterson on 2025-10-21 11:10: Walls are not built yet I will work with Area Managers to get this work caught up. / Scott Masterson on 2025-11-04 14:11: Walls are not complete. / Luis Vea on 2025-11-10 11:11: walls are needed to be completed / allucent_notes_20251118_192630: Scott Masterson on 2025-10-21 11:10: Walls are not built yet I will work with Area Managers to get this work caught up. / Scott Masterson on 2025-11-04 14:11: Walls are not complete. / Luis Vea on 2025-11-10 11:11: walls are needed to be completed / allucent_notes_20251111_182405: Scott Masterson on 2025-10-21 11:10: Walls are not built yet I will work with Area Managers to get this work caught up. / Scott Masterson on 2025-11-04 14:11: Walls are not complete. / Luis Vea on 2025-11-10 11:11: walls are needed to be completed / allucent_notes_20251104_160200: Scott Masterson on 2025-10-21 11:10: Walls are not built yet I will work with Area Managers to get this work caught up. / Scott Masterson on 2025-11-04 14:11: Walls are not complete. / allucent_notes_20251028_163138: Scott Masterson on 2025-10-21 11:10: Walls are not built yet I will work with Area Managers to get this work caught up. / allucent_notes_20251027_224008: Scott Masterson on 2025-10-21 11:10: Walls are not built yet I will work with Area Managers to get this work caught up. / allucent_notes_20251021_145627: Scott Masterson on 2025-10-21 11:10: Walls are not built yet I will work with Area Managers to get this work caught up. / allucent_notes_20251230_164549: Scott Masterson on 2025-10-21 11:10: Walls are not built yet I will work with Area Managers to get this work caught up. / Scott Masterson on 2025-11-04 14:11: Walls are not complete. / Luis Vea on 2025-11-10 11:11: walls are needed to be completed / allucent_notes: 2025-10-21 11:10 - User: Scott Masterson - Date Added: 2025-10-21 11:10 - Note: Walls are not built yet I will work with Area Managers to get this work caught up. / 2025-11-04 14:11 - User: Scott Masterson - Date Added: 2025-11-04 14:11 - Note: Walls ar
- QTS-11131: allucent_notes_20251216_165335: Luis Vea on 2025-10-21T14:54:50.408Z: arriving on oct. 27 / allucent_notes_20251209_203830: Luis Vea on 2025-10-21T14:54:50.408Z: arriving on oct. 27 / allucent_notes_20251202_153722: Luis Vea on 2025-10-21T14:54:50.408Z: arriving on oct. 27 / allucent_notes_20251104_160200: Luis Vea on 2025-10-21T14:54:50.408Z: arriving on oct. 27 / allucent_notes_20251028_163138: Luis Vea on 2025-10-21T14:54:50.408Z: arriving on oct. 27 / allucent_notes_20251027_224008: Luis Vea on 2025-10-21T14:54:50.408Z: arriving on oct. 27 / allucent_notes_20251021_145627: Luis Vea on 2025-10-21T14:54:50.408Z: arriving on oct. 27 / allucent_notes_20251230_164549: Luis Vea on 2025-10-21T14:54:50.408Z: arriving on oct. 27 / allucent_notes: 2025-10-21T14:54:50.408Z - User: Luis Vea - Date Added: 2025-10-21T14:54:50.408Z - Note: arriving on oct. 27
- QTS-13691: allucent_notes_20251216_165335: Sean Waisner on 2025-12-02 15:29: Materials arrived / Jason Johnston on 2025-12-09 18:22: Need info on RFI for tamper proof clips / allucent_notes_20251209_203830: Sean Waisner on 2025-12-02 15:29: Materials arrived / Jason Johnston on 2025-12-09 18:22: Need info on RFI for tamper proof clips / allucent_notes_20251202_153722: Sean Waisner on 2025-12-02 15:29: Materials arrived / allucent_notes_20251230_164549: Sean Waisner on 2025-12-02 15:29: Materials arrived / Jason Johnston on 2025-12-09 18:22: Need info on RFI for tamper proof clips / Jason Johnston on 2025-12-30 16:42: No update / allucent_notes: 2025-12-02 15:29 - User: Sean Waisner - Date Added: 2025-12-02 15:29 - Note: Materials arrived / 2025-12-09 18:22 - User: Jason Johnston - Date Added: 2025-12-09 18:22 - Note: Need info on RFI for tamper proof clips / 2025-12-30 16:42 - User: Jason Joh
- QTS-102010: allucent_notes_20251014_152335: Zack Goertz on 2025-09-08T20:45:26.651Z: Not started. PCI has been put on notice that they are behind / Jason Johnston on 2025-10-08 08:10: not done / allucent_notes: 2025-09-08T20:45:26.651Z - User: Zack Goertz - Date Added: 2025-09-08T20:45:26.651Z - Note: Not started. PCI has been put on notice that they are behind / 2025-10-08 08:10 - User: Jason Johnston - Date Added: 2025-10-08 08:10 - Note: not done
- QTS-102020: allucent_notes_20251014_152335: Zack Goertz on 2025-09-08T20:45:26.651Z: Not started. PCI has been put on notice that they are behind / Jason Johnston on 2025-10-08 08:10: not done / Scheduler Notes: 2/3/26: In Wall Inspections / Notes: 2/3/26: In Wall Inspections / allucent_notes: 2025-09-08T20:45:26.651Z - User: Zack Goertz - Date Added: 2025-09-08T20:45:26.651Z - Note: Not started. PCI has been put on notice that they are behind / 2025-10-08 08:10 - User: Jason Johnston - Date Added: 2025-10-08 08:10 - Note: not done
- QTS-1002360: Scheduler Notes: 3/24: 75% complete / Notes: 3/24: 75% complete
- QTS-1004530: allucent_notes_20251216_165335: Jason Johnston on 2025-12-16 08:54: adding new sequence to start ceiling grid earlier / allucent_notes_20251230_164549: Jason Johnston on 2025-12-16 08:54: adding new sequence to start ceiling grid earlier / allucent_notes: 2025-12-16 08:54 - User: Jason Johnston - Date Added: 2025-12-16 08:54 - Note: adding new sequence to start ceiling grid earlier
- QTS-1005260: allucent_notes_20251014_152335: Zack Goertz on 2025-09-08T20:45:26.651Z: Not started. PCI has been put on notice that they are behind / Jason Johnston on 2025-10-08 08:10: not done / allucent_notes: 2025-09-08T20:45:26.651Z - User: Zack Goertz - Date Added: 2025-09-08T20:45:26.651Z - Note: Not started. PCI has been put on notice that they are behind / 2025-10-08 08:10 - User: Jason Johnston - Date Added: 2025-10-08 08:10 - Note: not done
- QTS-102080: allucent_notes_20251014_152335: Zack Goertz on 2025-09-08T20:45:26.651Z: Not started. PCI has been put on notice that they are behind / Jason Johnston on 2025-10-08 08:10: not done / allucent_notes: 2025-09-08T20:45:26.651Z - User: Zack Goertz - Date Added: 2025-09-08T20:45:26.651Z - Note: Not started. PCI has been put on notice that they are behind / 2025-10-08 08:10 - User: Jason Johnston - Date Added: 2025-10-08 08:10 - Note: not done
- QTS-102090: allucent_notes_20251014_152335: Zack Goertz on 2025-09-08T20:45:26.651Z: Not started. PCI has been put on notice that they are behind / Jason Johnston on 2025-10-08 08:10: not done / allucent_notes: 2025-09-08T20:45:26.651Z - User: Zack Goertz - Date Added: 2025-09-08T20:45:26.651Z - Note: Not started. PCI has been put on notice that they are behind / 2025-10-08 08:10 - User: Jason Johnston - Date Added: 2025-10-08 08:10 - Note: not done
- QTS-102030: allucent_notes_20251014_152335: Zack Goertz on 2025-09-08T20:45:26.651Z: Not started. PCI has been put on notice that they are behind / Jason Johnston on 2025-10-08 08:10: not done / allucent_notes: 2025-09-08T20:45:26.651Z - User: Zack Goertz - Date Added: 2025-09-08T20:45:26.651Z - Note: Not started. PCI has been put on notice that they are behind / 2025-10-08 08:10 - User: Jason Johnston - Date Added: 2025-10-08 08:10 - Note: not done
- QTS-102100: allucent_notes_20251014_152335: Zack Goertz on 2025-09-08T20:45:26.651Z: Not started. PCI has been put on notice that they are behind / Jason Johnston on 2025-10-08 08:10: not done / allucent_notes: 2025-09-08T20:45:26.651Z - User: Zack Goertz - Date Added: 2025-09-08T20:45:26.651Z - Note: Not started. PCI has been put on notice that they are behind / 2025-10-08 08:10 - User: Jason Johnston - Date Added: 2025-10-08 08:10 - Note: not done
- QTS-17521: Scheduler Notes: 3/17: Pipe insulation gating the completion of this activity. / 3/31: Pipe insulation gating the completion of this / activity. / Notes: 3/31: Pipe insulation gating the completion of this activity. 3/17: Pipe insulation gating the completion of this activity.
- QTS-1010190: Scheduler Notes: 4/14: MEP Removing Ceiling grid / Notes: 4/14: MEP Removing Ceiling grid
- QTS-1010200: Scheduler Notes: 4/14: MEP Removing Ceiling grid / Notes: 4/14: MEP Removing Ceiling grid
- QTS-5670: Notes: 7/30
