# QTS - PHX3 DC1 (54MW) Construction Schedule

Schedule from Primavera P6, 2024-11-13 to 2026-11-19, data date 2026-08-19, A marks actual dates.

| ID | WBS | Activity | Duration | Start | Finish | Predecessors | Complete | Planned start | Planned finish | Total float | Free float | Calendar | If Not Started or Finished Why? | Allucent CSI Group | Project Section | Layton Discipline | Baseline | Phase-1-1 | Project Section-1 | Location | Level | Fragnet | Fragnet Responsible Party | Contract | Notes | Owner Impact Analysis | Layton Super | Trade Partner | D |
| --- | --- | --- | --- | --- | --- | --- | --- | --- | --- | --- | --- | --- | --- | --- | --- | --- | --- | --- | --- | --- | --- | --- | --- | --- | --- | --- | --- | --- | --- |
|  | 1 | **Data Hall 1100 - Fragnet Delays** |  | 2026-03-31 | 2026-08-31 |  |  |  |  |  |  |  |  |  |  |  |  |  |  |  |  |  |  |  |  |  |  |  |  |
| QTS-1009350 |  | DH 1100 // Fragnet Delay due to Ceiling Grid - Install Overhead Lighting | 6d | 2026-03-31 A | 2026-04-17 A | QTS-16041 | 100% | 2026-02-19 | 2026-02-25 |  |  | QTS-PHX3 DC1 - 6 day w/ Holidays | 75% complete - waiting on Ceiling Grid to complete | 01ADMIN | Construction | Electrical | IGMP | Phase 1 | Construction | DH1100 | Level 1 | Fragnet | Performance Contracting Inc. | BAB |  |  |  |  |  |
| QTS-1014500 |  | DH 1100 // Fragnet delay due to L4 testing schedule - Install Remaining Fire Alarm Devices | 2d | 2026-08-19 | 2026-08-20 | QTS-0660 |  |  |  | -92d | 9d | QTS-PHX3 DC1 - 6 day w/ Holidays |  |  | Construction | Electrical | IGMP | Phase 1 | Construction | DH1100 | Level 1 | Fragnet | Quality Technology Services | BAB | 3/24: 75% complete | Y |  |  |  |
| QTS-1014510 |  | DH 1100 // Fragnet Delay due to L4 testing - Complete RPP Whip Burns | 13d | 2026-08-19 | 2026-08-31 | QTS-0660 |  |  |  | -120d | 0d | **GLOBAL - 7 Day Workweek w/ Basic Holidays |  |  |  | Electrical |  |  |  |  |  | Fragnet | Quality Technology Services | BAB | Delay due to AHU in PODs Failure | Y | Electrical | REI | DH1100 |
| QTS-1014520 |  | DH 1100 // Fragnet Delay due to L4 testing - Complete POD Testing for UPS Burns | 1d | 2026-08-19 | 2026-08-19 | QTS-0660 |  |  |  | -108d | 12d | **GLOBAL - 7 Day Workweek w/ Basic Holidays |  |  |  | Commissioning |  |  |  |  |  | Fragnet | Quality Technology Services | BAB | Delay due to AHU in PODs Failure | Y | Electrical | REI | DH1100 |
| QTS-1014530 |  | DH 1100 // Fragnet Delay due to L4 testing - 2 Activities for TFO scope within Data Hall | 5d | 2026-08-19 | 2026-08-23 | QTS-0660 |  |  |  | -112d | 8d | **GLOBAL - 7 Day Workweek w/ Basic Holidays |  |  |  | Commissioning |  |  |  |  |  | Fragnet | Quality Technology Services | TFO | Delay due to AHU in PODs Failure | Y | Electrical | ERS | DH1100 |
| QTS-1014540 |  | DH 1100 // Fragnet delay due to L4 testing schedule - BMS activities | 2d | 2026-08-19 | 2026-08-20 | QTS-0660 |  |  |  | -92d | 9d | QTS-PHX3 DC1 - 6 day w/ Holidays |  |  | Construction | Commissioning | IGMP | Phase 1 |  | DH1100 | Level 1 | Fragnet | Quality Technology Services | BAB | 3/24: 75% complete | Y |  |  |  |
| QTS-1014550 |  | DH 1100 // Fragnet delay due to L4 testing schedule - Cico Room - Security Cable Tray in Stairwell (1ST3) | 2d | 2026-08-19 | 2026-08-20 | QTS-0660 |  |  |  | -92d | 9d | QTS-PHX3 DC1 - 6 day w/ Holidays |  |  | Construction | Electrical | IGMP | Phase 1 |  | DH1100 | Level 1 | Fragnet | Quality Technology Services | BAB | 3/24: 75% complete | Y |  |  |  |
| QTS-1014560 |  | DH 1100 // Fragnet delay due to L4 testing schedule - Cico Room - Branch work associated w/Door Opener (no wall present) | 2d | 2026-08-19 | 2026-08-20 | QTS-0660 |  |  |  | -92d | 0d | QTS-PHX3 DC1 - 6 day w/ Holidays |  |  | Construction | Electrical | IGMP | Phase 1 |  | DH1100 | Level 1 | Fragnet | Quality Technology Services | BAB | 3/24: 75% complete | Y |  |  |  |
|  | 2 | **Gallery 1101 Mechanical** |  | 2025-09-04 | 2026-08-20 |  |  |  |  |  |  |  |  |  |  |  |  |  |  |  |  |  |  |  |  |  |  |  |  |
| QTS-44431 |  | DH 1100 / Mechanical Gallery 1101 // Install OH Mechanical Hangers | 7d | 2025-09-04 A | 2025-09-12 A | QTS-99030, QTS-19631, QTS-1691 | 100% |  |  |  |  |  |  | 01ADMIN | Construction | Mechanical | IGMP |  | Construction | DH2100 | Level 2 |  |  | BAB |  |  |  |  |  |
| QTS-13671 |  | DH 1100 / Mechanical Gallery 1101 // Install VESDA | 8d | 2025-09-15 A | 2025-09-30 A | QTS-99030, QTS-19631, QTS-1691 | 100% | 2025-09-15 | 2025-09-24 |  |  |  |  | 01ADMIN | Construction | Electrical | IGMP | Phase 1 | Construction | DH1100 | Level 1 |  |  | BAB |  |  |  |  |  |
| QTS-13681 |  | DH 1100 / Mechanical Gallery 1101 // Install OH Mechanical Piping | 10d | 2025-09-15 A | 2025-09-26 A | QTS-44431 | 100% |  |  |  |  |  |  | 01ADMIN | Construction | Mechanical | IGMP | Phase 1 | Construction | DH1100 | Level 1 |  |  | BAB |  |  |  |  |  |
| QTS-10281 |  | DH 1100 / Mechanical Gallery 1101 // In Wall Electrical Rough for 1101-1102 Wall | 2d | 2025-09-16 A | 2025-09-17 A | QTS-8581 | 100% |  |  |  |  |  |  |  | Construction | Electrical | IGMP | Phase 1 | Construction | DH1100 | Level 1 |  |  | BAB |  |  |  |  |  |
| QTS-11141 |  | DH 1100 / Mechanical Gallery 1101 // Hang, Tape, & Finish Drywall for 1101-1102 Wall | 10d | 2025-09-19 A | 2025-11-20 A | QTS-10881 FF+3d | 100% | 2025-09-19 | 2025-10-02 |  |  |  |  | 01ADMIN | Construction | Build Out | IGMP | Phase 1 | Construction | DH1100 | Level 1 |  |  | BAB |  |  |  |  |  |
| QTS-8581 |  | DH 1100 / Mechanical Gallery 1101 // Frame for 1101-1102 Wall | 5d | 2025-09-19 A | 2025-09-23 A | QTS-19801, QTS-6881 | 100% | 2025-09-19 | 2025-09-25 |  |  |  |  | 01ADMIN | Construction | Build Out | IGMP | Phase 1 | Construction | DH1100 | Level 1 |  |  | BAB |  |  | Doug Hayes |  |  |
| QTS-15591 |  | DH 1100 / Mechanical Gallery 1101 // Install OH Electrical, FA/EPMS/BMS Conduit & Grounding | 10d | 2025-09-29 A | 2025-11-12 A | QTS-13681 | 100% | 2025-09-29 | 2025-10-10 |  |  |  |  | 01ADMIN | Construction | Electrical | IGMP | Phase 1 | Construction | DH1100 | Level 1 |  |  | BAB |  |  |  |  |  |
| QTS-10291 |  | DH 1100 / Mechanical Gallery 1101 // Frame Fan Wall | 5d | 2025-10-08 A | 2025-10-15 A | QTS-10271, QTS-8581 SS | 100% | 2025-10-08 | 2025-10-14 |  |  |  |  | 01ADMIN | Construction | Build Out | IGMP | Phase 1 | Construction | DH1100 | Level 1 |  |  | BAB |  |  | Doug Hayes |  |  |
| QTS-12971 |  | DH 1100 / Mechanical Gallery 1101 // Paint for 1101-1102 Wall | 3d | 2025-10-13 A | 2025-12-15 A | QTS-11141 FF+1d | 100% | 2025-10-13 | 2025-10-15 |  |  | QTS-PHX3 DC1 - 6 day w/ Holidays |  | 01ADMIN | Construction | Build Out | IGMP | Phase 1 | Construction | DH1100 | Level 1 |  |  | BAB |  |  |  |  |  |
| QTS-99920 |  | DH 1100 / Mechanical Gallery 1101 // Hang, Tape, & Finish Drywall for Fan Wall - MG Side | 3d | 2025-10-16 A | 2025-10-20 A | QTS-10291 | 100% |  |  |  |  |  |  | 01ADMIN |  | Build Out |  |  |  |  |  |  |  | BAB |  |  |  |  |  |
| QTS-101940 |  | DH 1100 / Mechanical Gallery 1101 // Install Pipe Risers | 10d | 2025-10-20 A | 2025-10-28 A | QTS-13681 | 100% | 2025-11-03 | 2025-11-14 |  |  |  |  | 01ADMIN | Construction | Mechanical | IGMP |  | Construction | DH2100 | Level 2 |  |  | BAB |  |  |  |  |  |
| QTS-11541 |  | DH 1100 / Mechanical Gallery 1101 // In Wall Electrical Rough for Fan Wall | 2d | 2025-10-20 A | 2025-10-23 A | QTS-10291 | 100% | 2025-10-16 | 2025-10-17 |  |  |  |  | 01ADMIN | Construction | Electrical | IGMP | Phase 1 | Construction | DH1100 | Level 1 |  |  | BAB |  |  |  |  |  |
| QTS-101950 |  | DH 1100 / Mechanical Gallery 1101 // POC Rough In for CRAH Unit Mechanical Connections | 5d | 2025-10-23 A | 2025-10-29 A | QTS-120000, QTS-101940 FF+1d | 100% |  |  |  |  |  |  | 01ADMIN | Construction | Mechanical | IGMP |  | Construction | DH2100 | Level 2 |  |  | BAB |  |  |  |  |  |
| QTS-11941 |  | DH 1100 / Mechanical Gallery 1101 // In Wall Inspection for Fan Wall | 1d | 2025-10-28 A | 2025-10-28 A | QTS-11541 | 100% |  |  |  |  |  |  | 01ADMIN | Construction | Mechanical | IGMP | Phase 1 | Construction | DH1100 | Level 1 |  |  | BAB |  |  |  |  |  |
| QTS-99930 |  | DH 1100 / Mechanical Gallery 1101 // Paint for Fan Wall - MG Side | 3d | 2025-11-05 A | 2025-11-12 A | QTS-99920 FF+2d | 100% | 2025-11-05 | 2025-11-07 |  |  |  |  | 01ADMIN |  | Build Out |  |  |  |  |  |  |  | BAB |  |  | Doug Hayes |  |  |
| QTS-10881 |  | DH 1100 / Mechanical Gallery 1101 // In Wall Inspection for 1101-1102 Wall | 1d | 2025-11-07 A | 2025-11-07 A | QTS-10281 | 100% |  |  |  |  |  |  | 01ADMIN | Construction | Mechanical | IGMP | Phase 1 | Construction | DH1100 | Level 1 |  |  | BAB |  |  |  |  |  |
| QTS-12171 |  | DH 1100 / Mechanical Gallery 1101 // Hang, Tape, & Finish Fan Drywall - DH Side | 5d | 2025-11-19 A | 2025-11-25 A | QTS-11941 | 100% |  |  |  |  |  |  | 01ADMIN | Construction | Build Out | IGMP | Phase 1 | Construction | DH1100 | Level 1 |  |  | BAB |  |  |  |  |  |
| QTS-14131 |  | DH 1100 / Mechanical Gallery 1101 // OFCI - L2 SET IN PLACE - Eq Type # - DH CRAH - 14 units | 6d | 2025-11-20 A | 2025-12-01 A | QTS-101950, QTS-99930, QTS-13681, QTS-34381, QTS-34371, QTS-34361, QTS-34351, QTS-34341, QTS-34331, QTS-34321, QTS-34311, QTS-34301, QTS-34291, QTS-34281, QTS-34271, QTS-34261, QTS-34251 | 100% | 2025-11-21 | 2025-12-02 |  |  |  |  | 01ADMIN | Construction | Mechanical | IGMP | Phase 1 | Construction | DH1100 | Level 1 |  |  | BAB |  |  |  |  |  |
| QTS-15441 |  | DH 1100 / Mechanical Gallery 1101 // DH CRAH Unit Mechanical Connections | 10d | 2025-12-02 A | 2026-01-28 A | QTS-14131 | 100% | 2025-12-03 | 2025-12-13 |  |  | QTS-PHX3 DC1 - 6 day w/ Holidays |  | 01ADMIN | Construction | Mechanical | IGMP | Phase 1 | Construction | DH1100 | Level 1 |  |  | BAB |  |  |  |  |  |
| QTS-12981 |  | DH 1100 / Mechanical Gallery 1101 // Paint for Fan Wall - DH Side | 2d | 2025-12-08 A | 2025-12-09 A | QTS-12171 | 100% |  |  |  |  |  |  | 01ADMIN | Construction | Build Out | IGMP | Phase 1 | Construction | DH1100 | Level 1 |  |  | BAB |  |  |  |  |  |
| QTS-13341 |  | DH 1100 / Mechanical Gallery 1101 // Top of Wall Fire Stop for 1101-1102 Wall | 2d | 2025-12-11 A | 2025-12-12 A | QTS-8581 | 100% |  |  |  |  |  |  | 01ADMIN | Construction | Build Out | IGMP | Phase 1 | Construction | DH1100 | Level 1 |  |  | BAB |  |  |  |  |  |
| QTS-46501 |  | DH 1100 / Mechanical Gallery 1101 // Set EPMS/BMS Panels | 4d | 2025-12-11 A | 2025-12-16 A | QTS-12171 | 100% |  |  |  |  |  |  | 01ADMIN | Construction | Electrical | IGMP | Phase 1 | Construction | DH1100 | Level 1 |  |  | BAB |  |  |  |  |  |
| QTS-46491 |  | DH 1100 / Mechanical Gallery 1101 // OFCI - L2 SET IN PLACE - Eq Type # - EG CRAH - 4 units | 6d | 2026-01-09 A | 2026-01-09 A | QTS-101950, QTS-12971, QTS-34561, QTS-34551, QTS-34541, QTS-34531 | 100% | 2026-01-09 | 2026-01-15 |  |  | QTS-PHX3 DC1 - 6 day w/ Holidays |  | 01ADMIN | Construction | Mechanical | IGMP | Phase 1 | Construction | DH1100 | Level 1 |  |  | BAB |  |  |  |  |  |
| QTS-16201 |  | DH 1100 / Mechanical Gallery 1101 // OFCI - L2 SET IN PLACE - Eq Type # - MOD-03 - 7 units | 10d | 2026-01-12 A | 2026-01-12 A | QTS-46491, QTS-31691, QTS-31551, QTS-31541, QTS-31531, QTS-31521, QTS-31511, QTS-31501, QTS-13671 | 100% | 2026-01-12 | 2026-01-23 |  |  | QTS-PHX3 DC1 - 6 day w/ Holidays |  | 01ADMIN | Construction | Electrical | IGMP | Phase 1 | Construction | DH1100 | Level 1 |  |  | BAB |  |  |  |  |  |
| QTS-43911 |  | DH 1100 / Mechanical Gallery 1101 // OFCI - L2 SET IN PLACE - Eq Type # - MOD-02 - 7 units | 10d | 2026-01-12 A | 2026-01-12 A | QTS-46491 SS, QTS-13681, QTS-31761, QTS-31311, QTS-31301, QTS-31291, QTS-31281, QTS-31271, QTS-31261, QTS-13671 | 100% | 2026-01-12 | 2026-01-23 |  |  | QTS-PHX3 DC1 - 6 day w/ Holidays |  | 01ADMIN | Construction | Electrical | IGMP | Phase 1 | Construction | DH1100 | Level 1 |  |  | BAB |  |  |  |  |  |
| QTS-1005110 |  | DH 1100 / Mechanical Gallery 1101 // Install Raceway from UPS Pod to MOD-02/03 | 10d | 2026-01-13 A | 2026-02-20 A | QTS-13541 | 100% | 2026-01-13 | 2026-01-24 |  |  | QTS-PHX3 DC1 - 6 day w/ Holidays |  | 01ADMIN | Construction | Electrical | IGMP | Phase 1 | Construction | DH1100 | Level 1 |  |  | BAB |  |  |  |  |  |
| QTS-14471 |  | DH 1100 / Mechanical Gallery 1101 // Install Raceway from UPS Pod to MOD-02/03 | 10d | 2026-01-13 A | 2026-01-27 A | QTS-13541, QTS-13341, QTS-13671 | 100% | 2026-01-13 | 2026-01-24 |  |  | QTS-PHX3 DC1 - 6 day w/ Holidays |  | 01ADMIN | Construction | Electrical | IGMP | Phase 1 | Construction | DH1100 | Level 1 |  |  | BAB |  |  |  |  |  |
| QTS-46511 |  | DH 1100 / Mechanical Gallery 1101 // EG CRAH Unit Mechanical Connections | 10d | 2026-01-21 A | 2026-02-10 A | QTS-46491 | 100% | 2026-01-21 | 2026-01-31 |  |  | QTS-PHX3 DC1 - 6 day w/ Holidays |  | 01ADMIN | Construction | Mechanical | IGMP | Phase 1 | Construction | DH1100 | Level 1 |  |  | BAB |  |  |  |  |  |
| QTS-1002310 |  | DH 1100 / Mechanical Gallery 1101 // Install Duct Work | 5d | 2026-01-28 A | 2026-02-02 A | QTS-12971 | 100% |  |  |  |  | QTS-PHX3 DC1 - 6 day w/ Holidays |  |  | Construction | Mechanical | IGMP | Phase 1 | Construction | DH1100 | Level 1 |  |  | BAB |  |  |  |  |  |
| QTS-15581 |  | DH 1100 / Mechanical Gallery 1101 // Install Electrical Tray | 5d | 2026-02-03 A | 2026-02-19 A | QTS-14471, QTS-13681, QTS-1002310 | 100% | 2026-02-03 | 2026-02-07 |  |  | QTS-PHX3 DC1 - 6 day w/ Holidays |  | 01ADMIN | Construction | Electrical | IGMP | Phase 1 | Construction | DH1100 | Level 1 |  |  | BAB |  |  |  |  |  |
| QTS-16501 |  | DH 1100 / Mechanical Gallery 1101 // Install Basket Tray for LV | 2d | 2026-02-10 A | 2026-02-27 A | QTS-12981, QTS-99540 FF+3d, QTS-15581 FF, QTS-46501 | 100% | 2026-02-10 | 2026-02-11 |  |  | QTS-PHX3 DC1 - 6 day w/ Holidays |  |  | Construction | Electrical | IGMP | Phase 1 | Construction | DH1100 | Level 1 |  |  | BAB |  |  |  |  |  |
| QTS-99540 |  | DH 1100 / Mechanical Gallery 1101 // Final Connection of Electrical Tray | 2d | 2026-02-16 A | 2026-02-20 A | QTS-15441, QTS-99530 | 100% | 2026-02-16 | 2026-02-17 |  |  | QTS-PHX3 DC1 - 6 day w/ Holidays |  |  | Construction | Electrical | IGMP |  | Construction | DH2100 | Level 2 |  |  | BAB |  |  |  |  |  |
| QTS-99530 |  | DH 1100 / Mechanical Gallery 1101 // Final Connection of Raceway from UPS Pod to MOD-02/03 Boards | 6d | 2026-02-18 A | 2026-02-24 A | QTS-15441 | 100% |  |  |  |  | QTS-PHX3 DC1 - 6 day w/ Holidays |  |  | Construction | Electrical | IGMP |  |  | DH2100 | Level 2 |  |  | BAB |  |  |  |  |  |
| QTS-43691 |  | DH 1100 / Mechanical Gallery 1101 // Pull & Terminate from UPS Pod to MOD-02/03 | 10d | 2026-02-19 A | 2026-02-27 A | QTS-14471, QTS-16201, QTS-1005110 | 100% | 2026-02-19 | 2026-03-02 |  |  | QTS-PHX3 DC1 - 6 day w/ Holidays |  | 01ADMIN | Construction | Electrical | IGMP | Phase 1 | Construction | DH1100 | Level 1 |  |  | BAB |  |  |  |  |  |
| QTS-46521 |  | DH 1100 / Mechanical Gallery 1101 // Pull & Terminate from MOD-02 to CRAHs | 2d | 2026-02-25 A | 2026-02-27 A | QTS-43691, QTS-43911 | 100% | 2026-02-25 | 2026-02-26 |  |  | QTS-PHX3 DC1 - 6 day w/ Holidays |  |  | Construction | Electrical | IGMP | Phase 1 | Construction | DH1100 | Level 1 |  |  | BAB |  |  |  |  |  |
| QTS-16981 |  | DH 1100 / Mechanical Gallery 1101 // Set Humidifier | 1d | 2026-03-25 A | 2026-03-25 A | QTS-19491, QTS-15441 | 100% | 2026-04-01 | 2026-04-01 |  |  | QTS-PHX3 DC1 - 6 day w/ Holidays |  | 01ADMIN | Construction | Mechanical | IGMP | Phase 1 | Construction | DH1100 | Level 1 |  |  | BAB |  |  |  |  |  |
| QTS-44451 |  | DH 1100 / Mechanical Gallery 1101 // Install Lighting, Security, and Devices | 5d | 2026-03-25 A | 2026-04-08 A | QTS-43691 | 100% | 2026-04-01 | 2026-04-06 |  |  | QTS-PHX3 DC1 - 6 day w/ Holidays | Lighting and fire alarm devices are set not security |  | Construction | Electrical | IGMP |  | Construction | DH2100 | Level 2 |  |  | BAB |  |  |  |  |  |
| QTS-46531 |  | DH 1100 / Mechanical Gallery 1101 // Pull & Terminate from MOD-02 to DOAS | 4d | 2026-03-25 A | 2026-03-30 A | QTS-46521 | 100% | 2026-04-01 | 2026-04-04 |  |  | QTS-PHX3 DC1 - 6 day w/ Holidays |  |  | Construction | Electrical | IGMP | Phase 1 | Construction | DH1100 | Level 1 |  |  | BAB |  |  |  |  |  |
| QTS-15451 |  | DH 1100 / Mechanical Gallery 1101 // Install Angle Seal Around CRAH Units | 2d | 2026-03-27 A | 2026-03-28 A | QTS-14131, QTS-15441, QTS-1004880, QTS-24321 | 100% |  |  |  |  | QTS-PHX3 DC1 - 6 day w/ Holidays |  | 01ADMIN | Construction | Build Out | IGMP | Phase 1 | Construction | DH1100 | Level 1 |  |  | BAB |  |  |  |  |  |
| QTS-1011770 |  | DH 1100 / Mechanical Gallery 1101 // Install OH Branch Conduit | 3d | 2026-04-27 A | 2026-04-29 A | QTS-1371 | 100% |  |  |  |  | QTS-PHX3 DC1 - 6 day w/ Holidays |  | 01ADMIN | Construction | Electrical | IGMP | Phase 1 | Construction | DH1100 | Level 1 |  |  | BAB |  |  |  |  |  |
| QTS-1011780 |  | DH 1100 / Mechanical Gallery 1101 // Pull OH Branch Wire | 1d | 2026-04-30 A | 2026-04-30 A | QTS-1011770 | 100% |  |  |  |  | QTS-PHX3 DC1 - 6 day w/ Holidays |  | 01ADMIN | Construction | Electrical | IGMP | Phase 1 | Construction | DH1100 | Level 1 |  |  | BAB |  |  |  |  |  |
| QTS-17081 |  | DH 1100 / Mechanical Gallery 1101 // Tie-In MEP to Humidifiers | 6d | 2026-05-13 A | 2026-05-18 A | QTS-15451, QTS-13681 FF, QTS-14131, QTS-16981 | 100% | 2026-05-13 | 2026-05-19 |  |  | QTS-PHX3 DC1 - 6 day w/ Holidays |  | 01ADMIN | Construction | Mechanical | IGMP | Phase 1 | Construction | DH1100 | Level 1 |  |  | BAB |  |  |  |  |  |
| QTS-0570 |  | DH 1100 / Gallery 1101 / Sealed Concrete Flooring | 2d | 2026-07-10 A | 2026-07-10 A | QTS-0550 | 100% | 2026-07-22 | 2026-07-23 |  |  | **GLOBAL - 6 Day Workweek w/ Basic Holidays |  |  |  | Build Out |  |  |  |  |  |  |  | BAB |  |  | Ben Ribble | Bldg Solutions |  |
| QTS-0550 |  | DH 1100 / Gallery 1101 / Final Paint | 2d | 2026-07-15 A | 2026-07-16 A | QTS-0500 SS | 100% | 2026-07-22 | 2026-07-23 |  |  | **GLOBAL - 6 Day Workweek w/ Basic Holidays |  |  |  | Build Out |  |  |  |  |  |  |  | BAB |  |  | Jason Hendley | PPC |  |
| QTS-0560 |  | DH 1100 / Gallery 1101 / Install FE and FEC's | 2d | 2026-07-16 A | 2026-07-17 A | QTS-0510, QTS-0550 | 100% | 2026-07-27 | 2026-07-28 |  |  | **GLOBAL - 6 Day Workweek w/ Basic Holidays |  |  |  | Build Out |  |  |  |  |  |  |  | BAB |  |  | Ed Carter | ISEC |  |
| QTS-5660 |  | DH 1100 / Gallery 1101 / Final Clean | 2d | 2026-07-31 A | 2026-08-01 A | QTS-0560 | 100% | 2026-08-07 | 2026-08-08 |  |  | **GLOBAL - 6 Day Workweek w/ Basic Holidays |  |  |  | Build Out |  |  |  |  |  |  |  | BAB |  |  | Ed Carter | AGDC |  |
| QTS-0580 |  | DH 1100 / Gallery 1101 / Install Rubber Base | 2d | 2026-08-19 | 2026-08-20 | QTS-0570 |  |  |  | -93d | 9d | **GLOBAL - 6 Day Workweek w/ Basic Holidays |  |  |  | Build Out |  |  |  |  |  |  |  | BAB | Start 8/19 |  | Ben Ribble | Wholesale Flooring |  |

Notes:
- QTS-1009350: Scheduler Notes: Delay due to Ceiling Grid
- QTS-1014500: Scheduler Notes: 8/14/26-Per QTS direction (Jared Weatherhead), Base Build and TFO activities / stopped to have L4 testing completed Pre IST
- QTS-1014510: Scheduler Notes: 8/14/26-Per QTS / direction (Jared Weatherhead), Base Build and TFO activities stopped to have L4 / testing completed Pre IST
- QTS-1014520: Scheduler Notes: 8/14/26-Per QTS / direction (Jared Weatherhead), Base Build and TFO activities stopped to have L4 / testing completed Pre IST
- QTS-1014530: Scheduler Notes: 8/14/26-Per QTS / direction (Jared Weatherhead), Base Build and TFO activities stopped to have L4 / testing completed Pre IST
- QTS-1014540: Scheduler Notes: 8/14/26-Per QTS direction (Jared Weatherhead), Base Build and TFO activities / stopped to have L4 testing completed Pre IST
- QTS-1014550: Scheduler Notes: 8/14/26-Per QTS direction (Jared Weatherhead), Base Build and TFO activities / stopped to have L4 testing completed Pre IST
- QTS-1014560: Scheduler Notes: 8/14/26-Per QTS direction (Jared Weatherhead), Base Build and TFO activities / stopped to have L4 testing completed Pre IST
- QTS-11141: allucent_notes_20251202_153722: Zack Goertz on 2025-10-14T16:40:30.150Z: It is delayed. Pushing until End of Week / -ZG 10/14 / Zack Goertz on 2025-10-14 09:10: It is delayed. Pushing until End of Week. PCI is behind / Luis Vea on 2025-10-21T14:56:52.017Z: delayed, needing rough in and insulation to close up the walls / allucent_notes_20251118_192630: Zack Goertz on 2025-10-14T16:40:30.150Z: It is delayed. Pushing until End of Week / -ZG 10/14 / Zack Goertz on 2025-10-14 09:10: It is delayed. Pushing until End of Week. PCI is behind / Luis Vea on 2025-10-21T14:56:52.017Z: delayed, needing rough in and insulation to close up the walls / allucent_notes_20251111_182405: Zack Goertz on 2025-10-14T16:40:30.150Z: It is delayed. Pushing until End of Week / -ZG 10/14 / Zack Goertz on 2025-10-14 09:10: It is delayed. Pushing until End of Week. PCI is behind / Luis Vea on 2025-10-21T14:56:52.017Z: delayed, needing rough in and insulation to close up the walls / allucent_notes_20251104_160200: Zack Goertz on 2025-10-14T16:40:30.150Z: It is delayed. Pushing until End of Week / -ZG 10/14 / Zack Goertz on 2025-10-14 09:10: It is delayed. Pushing until End of Week. PCI is behind / Luis Vea on 2025-10-21T14:56:52.017Z: delayed, needing rough in and insulation to close up the walls / allucent_notes_20251028_163138: Zack Goertz on 2025-10-14T16:40:30.150Z: It is delayed. Pushing until End of Week / -ZG 10/14 / Zack Goertz on 2025-10-14 09:10: It is delayed. Pushing until End of Week. PCI is behind / Luis Vea on 2025-10-21T14:56:52.017Z: delayed, needing rough in and insulation to close up the walls / allucent_notes_20251027_224008: Zack Goertz on 2025-10-14T16:40:30.150Z: It is delayed. Pushing until End of Week / -ZG 10/14 / Zack Goertz on 2025-10-14 09:10: It is delayed. Pushing until End of Week. PCI is behind / Luis Vea on 2025-10-21T14:56:52.017Z: delayed, needing rough in and insulation to close up the walls / allucent_notes_20251021_145627: Zack Goertz on 2025-10-14T16:40:30.150Z: It is delayed. Pushing until End of Week / -ZG 10/14 / Zack Goertz on 2025-10-14 09:10: It is delayed. Pushing until End of Week. PCI is behind / Luis Vea on 2025-10-21T14:56:52.017Z: delayed, needing rough in and insulation to close up the walls / allucent_notes_20251014_152335: Zack Goertz on 2025-10-14T16:40:30.150Z: It is delayed. Pushing until End of Week / -ZG 10/14 / Zack Goertz on 2025-10-14 09:10: It is delayed. Pushing until End of Week. PCI is behind / allucent_notes: 2025-10-14T16:40:30.150Z - User: Zack Goertz - Date Added: 2025-10-14T16:40:30.150Z - Note: It is delayed. Pushing until End of Week -ZG 10/14 / 2025-10-14 09:10 - User: Zack Goertz - Date Added: 2025-10-14 09:10 - Note: It is delayed. Pushing until End
- QTS-15591: allucent_notes_20251118_192630: David Wiltberger on 2025-10-14 12:10: pushede out from framing / Scott Masterson on 2025-11-04 14:11: Need CRAHs set (higher work activities completed) before electrical can start. Need to get estimated date of set. / Jason Johnston on 2025-11-11 16:11: SWO / Jason Johnston on 2025-11-19T02:24:08.433Z: undo / allucent_notes_20251111_182405: David Wiltberger on 2025-10-14 12:10: pushede out from framing / Scott Masterson on 2025-11-04 14:11: Need CRAHs set (higher work activities completed) before electrical can start. Need to get estimated date of set. / Jason Johnston on 2025-11-11 16:11: SWO / allucent_notes_20251104_160200: David Wiltberger on 2025-10-14 12:10: pushede out from framing / Scott Masterson on 2025-11-04 14:11: Need CRAHs set (higher work activities completed) before electrical can start. Need to get estimated date of set. / allucent_notes_20251028_163138: David Wiltberger on 2025-10-14 12:10: pushede out from framing / allucent_notes_20251027_224008: David Wiltberger on 2025-10-14 12:10: pushede out from framing / allucent_notes_20251021_145627: David Wiltberger on 2025-10-14 12:10: pushede out from framing / allucent_notes_20251014_152335: David Wiltberger on 2025-10-14 12:10: pushede out from framing / allucent_notes: 2025-10-14 12:10 - User: David Wiltberger - Date Added: 2025-10-14 12:10 - Note: pushede out from framing / 2025-11-04 14:11 - User: Scott Masterson - Date Added: 2025-11-04 14:11 - Note: Need CRAHs set (higher work activities completed) before electrica
- QTS-10291: allucent_notes_20251021_145627: Jason Johnston on 2025-10-08 08:10: not done / Zack Goertz on 2025-10-14 09:10: It is delayed. Pushing until End of Week. PCI is behind / Luis Vea on 2025-10-21T14:57:47.802Z: finished Thursday the 16th. / allucent_notes_20251014_152335: Jason Johnston on 2025-10-08 08:10: not done / Zack Goertz on 2025-10-14 09:10: It is delayed. Pushing until End of Week. PCI is behind / allucent_notes: 2025-10-08 08:10 - User: Jason Johnston - Date Added: 2025-10-08 08:10 - Note: not done / 2025-10-14 09:10 - User: Zack Goertz - Date Added: 2025-10-14 09:10 - Note: It is delayed. Pushing until End of Week. PCI is behind / 2025-10-21T14:57:47.802Z - Us
- QTS-12971: allucent_notes_20251216_165335: Luis Vea on 2025-12-01 10:14: starting 12/04 / Jason Johnston on 2025-12-09 18:22: Need update from team / allucent_notes_20251209_203830: Luis Vea on 2025-12-01 10:14: starting 12/04 / Jason Johnston on 2025-12-09 18:22: Need update from team / allucent_notes_20251202_153722: Luis Vea on 2025-12-01 10:14: starting 12/04 / allucent_notes: 2025-12-01 10:14 - User: Luis Vea - Date Added: 2025-12-01 10:14 - Note: starting 12/04 / 2025-12-09 18:22 - User: Jason Johnston - Date Added: 2025-12-09 18:22 - Note: Need update from team
- QTS-99920: allucent_notes_20251021_145627: Luis Vea on 2025-10-21T15:04:17.174Z: electricians are delaying the second side, the rough in is going slow / allucent_notes: 2025-10-21T15:04:17.174Z - User: Luis Vea - Date Added: 2025-10-21T15:04:17.174Z - Note: electricians are delaying the second side, the rough in is going slow
- QTS-11541: allucent_notes_20251027_224008: Luis Vea on 2025-10-21T15:03:33.710Z: still on going / Scott Masterson on 2025-10-21 11:10: Walls are not built yet I will work with Area Managers to get this work caught up. / Scott Masterson on 2025-10-21 11:10: The fan was released out of sequence, REI is working on getting them caught up. additional the 20% remaining to complet from the 38' issue. RFI is answered so PCI know how to build but the material are not onsite yet. / allucent_notes_20251021_145627: Luis Vea on 2025-10-21T15:03:33.710Z: still on going / Scott Masterson on 2025-10-21 11:10: Walls are not built yet I will work with Area Managers to get this work caught up. / Scott Masterson on 2025-10-21 11:10: The fan was released out of sequence, REI is working on getting them caught up. additional the 20% remaining to complet from the 38' issue. RFI is answered so PCI know how to build but the material are not onsite yet. / allucent_notes: 2025-10-21T15:03:33.710Z - User: Luis Vea - Date Added: 2025-10-21T15:03:33.710Z - Note: still on going / 2025-10-21 11:10 - User: Scott Masterson - Date Added: 2025-10-21 11:10 - Note: Walls are not built yet I will work with Area Managers to get this
- QTS-11941: allucent_notes_20251028_163138: Luis Vea on 2025-10-21T15:05:22.366Z: not ready / Jason Johnston on 2025-10-27 09:10: Wall inspection scheduled for 10/28 / allucent_notes_20251027_224008: Luis Vea on 2025-10-21T15:05:22.366Z: not ready / Jason Johnston on 2025-10-27 09:10: Wall inspection scheduled for 10/28 / allucent_notes_20251021_145627: Luis Vea on 2025-10-21T15:05:22.366Z: not ready / allucent_notes: 2025-10-21T15:05:22.366Z - User: Luis Vea - Date Added: 2025-10-21T15:05:22.366Z - Note: not ready / 2025-10-27 09:10 - User: Jason Johnston - Date Added: 2025-10-27 09:10 - Note: Wall inspection scheduled for 10/28
- QTS-99930: allucent_notes_20251118_192630: Luis Vea on 2025-10-21T15:04:52.920Z: will be painted Friday, if not it will be delayed by the rough in / Jason Johnston on 2025-10-21 12:10: Trade stacking delaying the completion of this work / Jason Johnston on 2025-10-27 09:10: Moving to accommodate inspection time. / Jason Johnston on 2025-11-04 15:11: Update needed / Luis Vea on 2025-11-10 11:11: completed 11/10 / Jason Johnston on 2025-11-11 16:11: slow / allucent_notes_20251111_182405: Luis Vea on 2025-10-21T15:04:52.920Z: will be painted Friday, if not it will be delayed by the rough in / Jason Johnston on 2025-10-21 12:10: Trade stacking delaying the completion of this work / Jason Johnston on 2025-10-27 09:10: Moving to accommodate inspection time. / Jason Johnston on 2025-11-04 15:11: Update needed / Luis Vea on 2025-11-10 11:11: completed 11/10 / Jason Johnston on 2025-11-11 16:11: slow / allucent_notes_20251104_160200: Luis Vea on 2025-10-21T15:04:52.920Z: will be painted Friday, if not it will be delayed by the rough in / Jason Johnston on 2025-10-21 12:10: Trade stacking delaying the completion of this work / Jason Johnston on 2025-10-27 09:10: Moving to accommodate inspection time. / Jason Johnston on 2025-11-04 15:11: Update needed / allucent_notes_20251028_163138: Luis Vea on 2025-10-21T15:04:52.920Z: will be painted Friday, if not it will be delayed by the rough in / Jason Johnston on 2025-10-21 12:10: Trade stacking delaying the completion of this work / Jason Johnston on 2025-10-27 09:10: Moving to accommodate inspection time. / allucent_notes_20251027_224008: Luis Vea on 2025-10-21T15:04:52.920Z: will be painted Friday, if not it will be delayed by the rough in / Jason Johnston on 2025-10-21 12:10: Trade stacking delaying the completion of this work / Jason Johnston on 2025-10-27 09:10: Moving to accommodate inspection time. / allucent_notes_20251021_145627: Luis Vea on 2025-10-21T15:04:52.920Z: will be painted Friday, if not it will be delayed by the rough in / Jason Johnston on 2025-10-21 12:10: Trade stacking delaying the completion of this work / allucent_notes: 2025-10-21T15:04:52.920Z - User: Luis Vea - Date Added: 2025-10-21T15:04:52.920Z - Note: will be painted Friday, if not it will be delayed by the rough in / 2025-10-21 12:10 - User: Jason Johnston - Date Added: 2025-10-21 12:10 - Note: Trade stacking de
- QTS-10881: allucent_notes_20251118_192630: David Wiltberger on 2025-09-30 12:09: no ready / David Wiltberger on 2025-10-07 16:10: No putty packs / David Wiltberger on 2025-10-14 12:10: no walls / Luis Vea on 2025-10-21T15:05:08.408Z: not ready / David Wiltberger on 2025-10-21 13:10: Waiting on RFI#542 to complete wall / allucent_notes_20251111_182405: David Wiltberger on 2025-09-30 12:09: no ready / David Wiltberger on 2025-10-07 16:10: No putty packs / David Wiltberger on 2025-10-14 12:10: no walls / Luis Vea on 2025-10-21T15:05:08.408Z: not ready / David Wiltberger on 2025-10-21 13:10: Waiting on RFI#542 to complete wall / allucent_notes_20251104_160200: David Wiltberger on 2025-09-30 12:09: no ready / David Wiltberger on 2025-10-07 16:10: No putty packs / David Wiltberger on 2025-10-14 12:10: no walls / Luis Vea on 2025-10-21T15:05:08.408Z: not ready / David Wiltberger on 2025-10-21 13:10: Waiting on RFI#542 to complete wall / allucent_notes_20251028_163138: David Wiltberger on 2025-09-30 12:09: no ready / David Wiltberger on 2025-10-07 16:10: No putty packs / David Wiltberger on 2025-10-14 12:10: no walls / Luis Vea on 2025-10-21T15:05:08.408Z: not ready / David Wiltberger on 2025-10-21 13:10: Waiting on RFI#542 to complete wall / allucent_notes_20251027_224008: David Wiltberger on 2025-09-30 12:09: no ready / David Wiltberger on 2025-10-07 16:10: No putty packs / David Wiltberger on 2025-10-14 12:10: no walls / Luis Vea on 2025-10-21T15:05:08.408Z: not ready / David Wiltberger on 2025-10-21 13:10: Waiting on RFI#542 to complete wall / allucent_notes_20251021_145627: David Wiltberger on 2025-09-30 12:09: no ready / David Wiltberger on 2025-10-07 16:10: No putty packs / David Wiltberger on 2025-10-14 12:10: no walls / Luis Vea on 2025-10-21T15:05:08.408Z: not ready / David Wiltberger on 2025-10-21 13:10: Waiting on RFI#542 to complete wall / allucent_notes_20251014_152335: David Wiltberger on 2025-09-30 12:09: no ready / David Wiltberger on 2025-10-07 16:10: No putty packs / David Wiltberger on 2025-10-14 12:10: no walls / allucent_notes: 2025-09-30 12:09 - User: David Wiltberger - Date Added: 2025-09-30 12:09 - Note: no ready / 2025-10-07 16:10 - User: David Wiltberger - Date Added: 2025-10-07 16:10 - Note: No putty packs / 2025-10-14 12:10 - User: David Wiltberger - Date Added: 2025-10
- QTS-12171: allucent_notes_20251202_153722: Jason Johnston on 2025-11-04 15:11: Update needed / Jason Johnston on 2025-11-11 16:11: not done / allucent_notes_20251118_192630: Jason Johnston on 2025-11-04 15:11: Update needed / Jason Johnston on 2025-11-11 16:11: not done / allucent_notes_20251111_182405: Jason Johnston on 2025-11-04 15:11: Update needed / Jason Johnston on 2025-11-11 16:11: not done / allucent_notes_20251104_160200: Jason Johnston on 2025-11-04 15:11: Update needed / allucent_notes: 2025-11-04 15:11 - User: Jason Johnston - Date Added: 2025-11-04 15:11 - Note: Update needed / 2025-11-11 16:11 - User: Jason Johnston - Date Added: 2025-11-11 16:11 - Note: not done
- QTS-14131: allucent_notes_20251202_153722: David Wiltberger on 2025-11-17 16:11: out of sequence / allucent_notes_20251118_192630: David Wiltberger on 2025-11-17 16:11: out of sequence / allucent_notes: 2025-11-17 16:11 - User: David Wiltberger - Date Added: 2025-11-17 16:11 - Note: out of sequence
- QTS-15441: allucent_notes_20251216_165335: Jason Johnston on 2025-12-16 08:59: Need update / allucent_notes_20251230_164549: Jason Johnston on 2025-12-16 08:59: Need update / David Wiltberger on 2025-12-30 15:42: holiday delayed / allucent_notes: 2025-12-16 08:59 - User: Jason Johnston - Date Added: 2025-12-16 08:59 - Note: Need update / 2025-12-30 15:42 - User: David Wiltberger - Date Added: 2025-12-30 15:42 - Note: holiday delayed
- QTS-12981: allucent_notes_20251209_203830: Luis Vea on 2025-12-01 10:14: not in the green mile / allucent_notes_20251202_153722: Luis Vea on 2025-12-01 10:14: not in the green mile / allucent_notes: 2025-12-01 10:14 - User: Luis Vea - Date Added: 2025-12-01 10:14 - Note: not in the green mile
- QTS-46491: allucent_notes_20251216_165335: David Wiltberger on 2025-11-17 16:11: out of sequence / allucent_notes_20251209_203830: David Wiltberger on 2025-11-17 16:11: out of sequence / allucent_notes_20251202_153722: David Wiltberger on 2025-11-17 16:11: out of sequence / allucent_notes_20251118_192630: David Wiltberger on 2025-11-17 16:11: out of sequence / allucent_notes_20251230_164549: David Wiltberger on 2025-11-17 16:11: out of sequence / allucent_notes: 2025-11-17 16:11 - User: David Wiltberger - Date Added: 2025-11-17 16:11 - Note: out of sequence
- QTS-1005110: allucent_notes_20251230_164549: David Wiltberger on 2025-12-30 15:44: corridor impacted by fire stop work / allucent_notes: 2025-12-30 15:44 - User: David Wiltberger - Date Added: 2025-12-30 15:44 - Note: corridor impacted by fire stop work
- QTS-14471: allucent_notes_20251230_164549: David Wiltberger on 2025-12-30 15:44: corridor impacted by fire stop work / allucent_notes: 2025-12-30 15:44 - User: David Wiltberger - Date Added: 2025-12-30 15:44 - Note: corridor impacted by fire stop work
- QTS-46511: allucent_notes_20251230_164549: David Wiltberger on 2025-12-30 15:45: units not set / allucent_notes: 2025-12-30 15:45 - User: David Wiltberger - Date Added: 2025-12-30 15:45 - Note: units not set
- QTS-15451: allucent_notes_20251216_165335: Sean Waisner on 2025-12-02 15:28: Will install after security screen / Jason Johnston on 2025-12-16 09:00: non-critical item / allucent_notes_20251209_203830: Sean Waisner on 2025-12-02 15:28: Will install after security screen / allucent_notes_20251202_153722: Sean Waisner on 2025-12-02 15:28: Will install after security screen / allucent_notes_20251230_164549: Sean Waisner on 2025-12-02 15:28: Will install after security screen / Jason Johnston on 2025-12-16 09:00: non-critical item / Jason Johnston on 2025-12-30 16:42: No update / allucent_notes: 2025-12-02 15:28 - User: Sean Waisner - Date Added: 2025-12-02 15:28 - Note: Will install after security screen / 2025-12-16 09:00 - User: Jason Johnston - Date Added: 2025-12-16 09:00 - Note: non-critical item / 2025-12-30 16:42 - User: Jason Johnston

| ID | WBS | Activity | Duration | Start | Finish | Predecessors | Complete | Planned start | Planned finish | Calendar | Allucent CSI Group | Project Section | Layton Discipline | Baseline | Project Section-1 | Location | Level | Layton Super | Contract | Phase-1-1 | Trade Partner |
| --- | --- | --- | --- | --- | --- | --- | --- | --- | --- | --- | --- | --- | --- | --- | --- | --- | --- | --- | --- | --- | --- |
|  | 7 | **Gallery 1103 Mechanical** |  | 2025-09-03 | 2026-08-14 |  |  |  |  |  |  |  |  |  |  |  |  |  |  |  |  |
| QTS-44581 |  | DH 1100 / Mechanical Gallery 1103 // Install OH Mechanical Hangers | 7d | 2025-09-03 A | 2025-09-12 A | QTS-44431 SS | 100% | 2025-09-03 | 2025-09-11 |  | 01ADMIN | Construction | Build Out | IGMP | Construction | DH2100 | Level 2 | Doug Hayes | BAB |  |  |
| QTS-14671 |  | DH 1100 / Mechanical Gallery 1103 // OH Mechanical Piping | 10d | 2025-09-15 A | 2025-10-07 A | QTS-44581 | 100% | 2025-09-15 | 2025-09-26 |  | 01ADMIN | Construction | Mechanical | IGMP | Construction | DH1100 | Level 1 |  | BAB | Phase 1 |  |
| QTS-10271 |  | DH 1100 / Mechanical Gallery 1103 // Frame for 1103 Exterior Wall | 5d | 2025-09-24 A | 2025-09-30 A | QTS-8581, QTS-8571, QTS-6891, QTS-4541 SS, QTS-6881 | 100% |  |  |  |  | Construction | Build Out | IGMP | Construction | DH1100 | Level 1 | Doug Hayes | BAB | Phase 1 |  |
| QTS-11531 |  | DH 1100 / Mechanical Gallery 1103 // Frame Fan Wall | 5d | 2025-10-08 A | 2025-10-17 A | QTS-10271 | 100% | 2025-10-08 | 2025-10-14 |  | 01ADMIN | Construction | Build Out | IGMP | Construction | DH1100 | Level 1 | Doug Hayes | BAB | Phase 1 |  |
| QTS-12161 |  | DH 1100 / Mechanical Gallery 1103 // Hang, Tape, & Finish Drywall 1103 Exterior Wall | 10d | 2025-10-08 A | 2025-10-29 A | QTS-39041, QTS-10271 | 100% | 2025-10-08 | 2025-10-21 |  | 01ADMIN | Construction | Build Out | IGMP | Construction | DH1100 | Level 1 | Doug Hayes | BAB | Phase 1 |  |
| QTS-14661 |  | DH 1100 / Mechanical Gallery 1103 // Install VESDA | 8d | 2025-10-13 A | 2025-10-22 A | QTS-14651 | 100% |  |  |  | 01ADMIN | Construction | Electrical | IGMP | Construction | DH1100 | Level 1 |  | BAB | Phase 1 |  |
| QTS-101960 |  | DH 1100 / Mechanical Gallery 1103 // Install Pipe Risers | 10d | 2025-10-20 A | 2025-10-28 A | QTS-14671 | 100% | 2025-11-03 | 2025-11-14 |  | 01ADMIN | Construction | Mechanical | IGMP | Construction | DH2100 | Level 2 |  | BAB |  |  |
| QTS-12531 |  | DH 1100 / Mechanical Gallery 1103 // In Wall Electrical Rough for Fan Wall | 2d | 2025-10-20 A | 2025-10-23 A | QTS-11531 | 100% | 2025-10-20 | 2025-10-21 |  | 01ADMIN | Construction | Electrical | IGMP | Construction | DH1100 | Level 1 |  | BAB | Phase 1 |  |
| QTS-101970 |  | DH 1100 / Mechanical Gallery 1103 // POC Rough In for CRAH Unit Mechanical Connections | 5d | 2025-10-23 A | 2025-10-29 A | QTS-120000, QTS-101960 FF+1d | 100% | 2025-11-11 | 2025-11-17 |  | 01ADMIN | Construction | Mechanical | IGMP | Construction | DH2100 | Level 2 |  | BAB |  |  |
| QTS-12831 |  | DH 1100 / Mechanical Gallery 1103 // In Wall Inspection for Fan Wall | 1d | 2025-10-24 A | 2025-10-24 A | QTS-12531 | 100% |  |  |  | 01ADMIN | Construction | Electrical | IGMP | Construction | DH1100 | Level 1 |  | BAB | Phase 1 |  |
| QTS-12961 |  | DH 1100 / Mechanical Gallery 1103 // Hang, Tape, & Finish Fan Drywall - DH Side | 5d | 2025-10-27 A | 2025-10-31 A | QTS-12831 | 100% |  |  |  | 01ADMIN | Construction | Build Out | IGMP | Construction | DH1100 | Level 1 | Doug Hayes | BAB | Phase 1 |  |
| QTS-99940 |  | DH 1100 / Mechanical Gallery 1103 // Hang, Tape, & Finish Fan Drywall - MG Side | 3d | 2025-10-29 A | 2025-10-31 A | QTS-11531 | 100% |  |  |  | 01ADMIN |  | Build Out |  |  |  |  | Doug Hayes | BAB |  |  |
| QTS-13651 |  | DH 1100 / Mechanical Gallery 1103 // Paint Fan Walls - DH Side | 5d | 2025-12-08 A | 2025-12-09 A | QTS-12961 | 100% | 2025-12-08 | 2025-12-12 |  | 01ADMIN | Construction | Build Out | IGMP | Construction | DH1100 | Level 1 |  | BAB | Phase 1 |  |
| QTS-13641 |  | DH 1100 / Mechanical Gallery 1103 // Paint 1103 Exterior Wall | 1d | 2025-12-10 A | 2026-01-14 A | QTS-12161 | 100% | 2025-12-10 | 2025-12-10 | QTS-PHX3 DC1 - 6 day w/ Holidays | 01ADMIN | Construction | Build Out | IGMP | Construction | DH1100 | Level 1 |  | BAB | Phase 1 |  |
| QTS-99950 |  | DH 1100 / Mechanical Gallery 1103 // Paint Fan Walls - MG Side | 3d | 2025-12-10 A | 2026-01-14 A | QTS-99940 FF+2d | 100% | 2025-12-10 | 2025-12-12 | QTS-PHX3 DC1 - 6 day w/ Holidays | 01ADMIN |  | Build Out |  |  |  |  |  | BAB |  |  |
| QTS-46541 |  | DH 1100 / Mechanical Gallery 1103 // Set BMS & EPMS Panels | 4d | 2025-12-11 A | 2025-12-18 A | QTS-13641 SS | 100% | 2025-12-11 | 2025-12-16 |  | 01ADMIN | Construction | Electrical | IGMP | Construction | DH1100 | Level 1 |  | BAB | Phase 1 |  |
| QTS-15261 |  | DH 1100 / Mechanical Gallery 1103 // OFCI - L2 SET IN PLACE - Eq Type # - CRAH - 14 units | 6d | 2025-12-15 A | 2025-12-22 A | QTS-101970, QTS-99950 SS, QTS-14131, QTS-14671, QTS-34521, QTS-34511, QTS-34501, QTS-34491, QTS-34481, QTS-34471, QTS-34461, QTS-34451, QTS-34441, QTS-34431, QTS-34421, QTS-34411, QTS-34401, QTS-34391 | 100% |  |  |  | 01ADMIN | Construction | Mechanical | IGMP | Construction | DH1100 | Level 1 |  | BAB | Phase 1 |  |
| QTS-16231 |  | DH 1100 / Mechanical Gallery 1103 // CRAH Unit Mechanical Connections | 10d | 2025-12-23 A | 2026-01-19 A | QTS-15261 | 100% | 2025-12-23 | 2026-01-05 | QTS-PHX3 DC1 - 6 day w/ Holidays | 01ADMIN | Construction | Mechanical | IGMP | Construction | DH1100 | Level 1 |  | BAB | Phase 1 |  |
| QTS-16491 |  | DH 1100 / Mechanical Gallery 1103 // Install OH Electrical, FA/ EPMS/BMS Conduit & Grounding | 10d | 2025-12-23 A | 2026-03-04 A | QTS-120000, QTS-15261, QTS-13651, QTS-14671 | 100% | 2025-12-23 | 2026-01-05 | QTS-PHX3 DC1 - 6 day w/ Holidays | 01ADMIN | Construction | Electrical | IGMP | Construction | DH1100 | Level 1 |  | BAB | Phase 1 |  |
| QTS-16481 |  | DH 1100 / Mechanical Gallery 1103 // Install Electrical Tray | 5d | 2026-01-15 A | 2026-02-20 A | QTS-13651, QTS-16231, QTS-14671 | 100% | 2026-01-15 | 2026-01-21 | QTS-PHX3 DC1 - 6 day w/ Holidays |  | Construction | Electrical | IGMP | Construction | DH1100 | Level 1 |  | BAB | Phase 1 |  |
| QTS-17071 |  | DH 1100 / Mechanical Gallery 1103 // Install Basket Tray for LV | 5d | 2026-02-04 A | 2026-02-06 A | QTS-14681, QTS-16481 SS, QTS-46541 | 100% | 2026-02-04 | 2026-02-09 | QTS-PHX3 DC1 - 6 day w/ Holidays |  | Construction | Electrical | IGMP | Construction | DH1100 | Level 1 |  | BAB | Phase 1 |  |
| QTS-16241 |  | DH 1100 / Mechanical Gallery 1103 // Install Angle Seal Around CRAH Units | 2d | 2026-03-30 A | 2026-03-31 A | QTS-15261, QTS-1004880, QTS-15451 | 100% |  |  | QTS-PHX3 DC1 - 6 day w/ Holidays | 01ADMIN | Construction | Build Out | IGMP | Construction | DH1100 | Level 1 |  | BAB | Phase 1 |  |
| QTS-1011750 |  | DH 1100 / Mechanical Gallery 1103 // Install OH Branch Conduit | 1d | 2026-04-22 A | 2026-04-22 A | QTS-1371 | 100% |  |  | QTS-PHX3 DC1 - 6 day w/ Holidays | 01ADMIN | Construction | Mechanical | IGMP | Construction | DH1100 | Level 1 |  | BAB | Phase 1 |  |
| QTS-1011760 |  | DH 1100 / Mechanical Gallery 1103 // Pull OH Branch Wire | 1d | 2026-04-23 A | 2026-04-24 A | QTS-1011750 | 100% | 2026-04-23 | 2026-04-23 | QTS-PHX3 DC1 - 6 day w/ Holidays | 01ADMIN | Construction | Mechanical | IGMP | Construction | DH1100 | Level 1 |  | BAB | Phase 1 |  |
| QTS-0700 |  | DH 1100 / Gallery 1103 / Seal Concrete Flooring | 2d | 2026-07-10 A | 2026-07-10 A | QTS-0680, QTS-0690 | 100% | 2026-07-22 | 2026-07-23 | **GLOBAL - 6 Day Workweek w/ Basic Holidays |  |  | Build Out |  |  |  |  | Ben Ribble | BAB |  | Bldg Solutions |
| QTS-0690 |  | DH 1100 / Gallery 1103 / Install FE and FEC's | 2d | 2026-07-16 A | 2026-07-17 A | QTS-0560, QTS-0680 | 100% | 2026-07-29 | 2026-07-30 | **GLOBAL - 6 Day Workweek w/ Basic Holidays |  |  | Build Out |  |  |  |  | Ed Carter | BAB |  | ISEC |
| QTS-0680 |  | DH 1100 / Gallery 1103 / Final Paint | 2d | 2026-07-17 A | 2026-07-18 A | QTS-0600 SS | 100% | 2026-07-24 | 2026-07-25 | **GLOBAL - 6 Day Workweek w/ Basic Holidays |  |  | Build Out |  |  |  |  | Jason Hendley | BAB |  | PPC |
| QTS-0720 |  | DH 1100 / Gallery 1103 / Final Clean | 2d | 2026-07-31 A | 2026-08-01 A | QTS-0680 | 100% | 2026-08-07 | 2026-08-08 | **GLOBAL - 6 Day Workweek w/ Basic Holidays |  |  | Build Out |  |  |  |  | Ed Carter | BAB |  | AGDC |
| QTS-0710 |  | DH 1100 / Gallery 1103 / Install Rubber Base | 2d | 2026-08-13 A | 2026-08-14 A | QTS-0700 | 100% | 2026-08-12 | 2026-08-13 | **GLOBAL - 6 Day Workweek w/ Basic Holidays |  |  | Build Out |  |  |  |  | Ben Ribble | BAB |  | Wholesale Flooring |

Notes:
- QTS-11531: allucent_notes_20251021_145627: Jason Johnston on 2025-10-08 08:10: not done / Zack Goertz on 2025-10-14T16:35:56.872Z: Had to resequence because of size of fan walls, directed by Dave W to hold off. We got the go ahead now. / -ZG 10/14 / Zack Goertz on 2025-10-14 09:10: It is delayed. Pushing until End of Week. PCI is behind / Luis Vea on 2025-10-21T15:06:07.929Z: finished last Thursday the 16th / allucent_notes_20251014_152335: Jason Johnston on 2025-10-08 08:10: not done / Zack Goertz on 2025-10-14T16:35:56.872Z: Had to resequence because of size of fan walls, directed by Dave W to hold off. We got the go ahead now. / -ZG 10/14 / Zack Goertz on 2025-10-14 09:10: It is delayed. Pushing until End of Week. PCI is behind / allucent_notes: 2025-10-08 08:10 - User: Jason Johnston - Date Added: 2025-10-08 08:10 - Note: not done / 2025-10-14T16:35:56.872Z - User: Zack Goertz - Date Added: 2025-10-14T16:35:56.872Z - Note: Had to resequence because of size of fan walls, directed by Dave W to ho
- QTS-12161: allucent_notes_20251104_160200: Jason Johnston on 2025-10-08 08:10: not done / Luis Vea on 2025-10-21T15:06:46.796Z: needing rough plumbing need, material is not here yet. / Jason Johnston on 2025-10-21 12:10: Manpower reallocation to the fan walls. / allucent_notes_20251028_163138: Jason Johnston on 2025-10-08 08:10: not done / Luis Vea on 2025-10-21T15:06:46.796Z: needing rough plumbing need, material is not here yet. / Jason Johnston on 2025-10-21 12:10: Manpower reallocation to the fan walls. / allucent_notes_20251027_224008: Jason Johnston on 2025-10-08 08:10: not done / Luis Vea on 2025-10-21T15:06:46.796Z: needing rough plumbing need, material is not here yet. / Jason Johnston on 2025-10-21 12:10: Manpower reallocation to the fan walls. / allucent_notes_20251021_145627: Jason Johnston on 2025-10-08 08:10: not done / Luis Vea on 2025-10-21T15:06:46.796Z: needing rough plumbing need, material is not here yet. / Jason Johnston on 2025-10-21 12:10: Manpower reallocation to the fan walls. / allucent_notes_20251014_152335: Jason Johnston on 2025-10-08 08:10: not done / allucent_notes: 2025-10-08 08:10 - User: Jason Johnston - Date Added: 2025-10-08 08:10 - Note: not done / 2025-10-21T15:06:46.796Z - User: Luis Vea - Date Added: 2025-10-21T15:06:46.796Z - Note: needing rough plumbing need, material is not here yet. / 2025-10-21 12:10
- QTS-12531: allucent_notes_20251027_224008: Luis Vea on 2025-10-21T15:07:35.646Z: starting today, installing boxes. / Scott Masterson on 2025-10-21 11:10: The fan was released out of sequence, REI is working on getting them caught up. additional the 20% remaining to complet from the 38' issue. RFI is answered so PCI know how to build but the material are not onsite yet. / allucent_notes_20251021_145627: Luis Vea on 2025-10-21T15:07:35.646Z: starting today, installing boxes. / Scott Masterson on 2025-10-21 11:10: The fan was released out of sequence, REI is working on getting them caught up. additional the 20% remaining to complet from the 38' issue. RFI is answered so PCI know how to build but the material are not onsite yet. / allucent_notes: 2025-10-21T15:07:35.646Z - User: Luis Vea - Date Added: 2025-10-21T15:07:35.646Z - Note: starting today, installing boxes. / 2025-10-21 11:10 - User: Scott Masterson - Date Added: 2025-10-21 11:10 - Note: The fan was released out of sequence, REI is wor
- QTS-99940: allucent_notes_20251104_160200: Luis Vea on 2025-10-21T15:08:09.238Z: need rough in installed, can be delayed, stand by / Jason Johnston on 2025-10-21 12:10: Electrical rough in delayed two days. / Jason Johnston on 2025-10-27 09:10: Starting after 01 fan wall / Jason Johnston on 2025-10-28 15:10: Starts tomorrow after inspection / allucent_notes_20251028_163138: Luis Vea on 2025-10-21T15:08:09.238Z: need rough in installed, can be delayed, stand by / Jason Johnston on 2025-10-21 12:10: Electrical rough in delayed two days. / Jason Johnston on 2025-10-27 09:10: Starting after 01 fan wall / Jason Johnston on 2025-10-28 15:10: Starts tomorrow after inspection / allucent_notes_20251027_224008: Luis Vea on 2025-10-21T15:08:09.238Z: need rough in installed, can be delayed, stand by / Jason Johnston on 2025-10-21 12:10: Electrical rough in delayed two days. / Jason Johnston on 2025-10-27 09:10: Starting after 01 fan wall / allucent_notes_20251021_145627: Luis Vea on 2025-10-21T15:08:09.238Z: need rough in installed, can be delayed, stand by / Jason Johnston on 2025-10-21 12:10: Electrical rough in delayed two days. / allucent_notes: 2025-10-21T15:08:09.238Z - User: Luis Vea - Date Added: 2025-10-21T15:08:09.238Z - Note: need rough in installed, can be delayed, stand by / 2025-10-21 12:10 - User: Jason Johnston - Date Added: 2025-10-21 12:10 - Note: Electrical rough in delayed two d
- QTS-13651: allucent_notes_20251209_203830: Jason Johnston on 2025-11-04 15:11: Update needed / Luis Vea on 2025-11-10 11:11: need more tapers on site. / Jason Johnston on 2025-11-11 16:11: not started / Luis Vea on 2025-12-01 10:25: not in the green mile / Jason Johnston on 2025-12-09 18:23: Need update from team / allucent_notes_20251202_153722: Jason Johnston on 2025-11-04 15:11: Update needed / Luis Vea on 2025-11-10 11:11: need more tapers on site. / Jason Johnston on 2025-11-11 16:11: not started / Luis Vea on 2025-12-01 10:25: not in the green mile / allucent_notes_20251118_192630: Jason Johnston on 2025-11-04 15:11: Update needed / Luis Vea on 2025-11-10 11:11: need more tapers on site. / Jason Johnston on 2025-11-11 16:11: not started / allucent_notes_20251111_182405: Jason Johnston on 2025-11-04 15:11: Update needed / Luis Vea on 2025-11-10 11:11: need more tapers on site. / Jason Johnston on 2025-11-11 16:11: not started / allucent_notes_20251104_160200: Jason Johnston on 2025-11-04 15:11: Update needed / allucent_notes: 2025-11-04 15:11 - User: Jason Johnston - Date Added: 2025-11-04 15:11 - Note: Update needed / 2025-11-10 11:11 - User: Luis Vea - Date Added: 2025-11-10 11:11 - Note: need more tapers on site. / 2025-11-11 16:11 - User: Jason Johnston - Date Added: 20
- QTS-13641: allucent_notes_20251216_165335: Jason Johnston on 2025-11-04 15:11: Update needed / Jason Johnston on 2025-11-04 15:11: Update needed / Luis Vea on 2025-11-10 11:11: need more manpower for tapers, tapers are running behind / Jason Johnston on 2025-11-11 16:11: not started / Jason Johnston on 2025-11-18T20:46:50.004Z: lower priority wall. / Luis Vea on 2025-12-01 10:24: not enough tapers. / Scott Masterson on 2025-12-16 16:45: Need to break this apart. the exterior wall has the triagle shaft rated wall built infront of exterior wall. / allucent_notes_20251209_203830: Jason Johnston on 2025-11-04 15:11: Update needed / Jason Johnston on 2025-11-04 15:11: Update needed / Luis Vea on 2025-11-10 11:11: need more manpower for tapers, tapers are running behind / Jason Johnston on 2025-11-11 16:11: not started / Jason Johnston on 2025-11-18T20:46:50.004Z: lower priority wall. / Luis Vea on 2025-12-01 10:24: not enough tapers. / allucent_notes_20251202_153722: Jason Johnston on 2025-11-04 15:11: Update needed / Jason Johnston on 2025-11-04 15:11: Update needed / Luis Vea on 2025-11-10 11:11: need more manpower for tapers, tapers are running behind / Jason Johnston on 2025-11-11 16:11: not started / Jason Johnston on 2025-11-18T20:46:50.004Z: lower priority wall. / Luis Vea on 2025-12-01 10:24: not enough tapers. / allucent_notes_20251118_192630: Jason Johnston on 2025-11-04 15:11: Update needed / Jason Johnston on 2025-11-04 15:11: Update needed / Luis Vea on 2025-11-10 11:11: need more manpower for tapers, tapers are running behind / Jason Johnston on 2025-11-11 16:11: not started / Jason Johnston on 2025-11-18T20:46:50.004Z: lower priority wall. / allucent_notes_20251111_182405: Jason Johnston on 2025-11-04 15:11: Update needed / Jason Johnston on 2025-11-04 15:11: Update needed / Luis Vea on 2025-11-10 11:11: need more manpower for tapers, tapers are running behind / Jason Johnston on 2025-11-11 16:11: not started / allucent_notes_20251104_160200: Jason Johnston on 2025-11-04 15:11: Update needed / Jason Johnston on 2025-11-04 15:11: Update needed / allucent_notes_20251230_164549: Jason Johnston on 2025-11-04 15:11: Update needed / Jason Johnston on 2025-11-04 15:11: Update needed / Luis Vea on 2025-11-10 11:11: need more manpower for tapers, tapers are running behind / Jason Johnston on 2025-11-11 16:11: not started / Jason Johnston on 2025-11-18T20:46:50.004Z: lower priority wall. / Luis Vea on 2025-12-01 10:24: not enough tapers. / Scott Masterson on 2025-12-16 16:45: Need to break this apart. the exterior wall has the triagle shaft rated wall built infront of exterior wall. / Jason Johnston on 2025-12-30 16:42: No update / allucent_notes: 2025-11-04 15:11 - User: Jason Johnston - Date Added: 2025-11-04 15:11 - Note: Update needed / 2025-11-04 15:11 - User: Jason Johnston - Date Added: 2025-11-04 15:11 - Note: Update needed / 2025-11-10 11:11 - User: Luis Vea - Date Added: 2025-11-10 11:1
- QTS-99950: allucent_notes_20251216_165335: Jason Johnston on 2025-11-04 15:11: Update needed / Luis Vea on 2025-11-10 11:11: needs mud and tape, need more tapers from PCI / Jason Johnston on 2025-11-11 16:11: not started / Luis Vea on 2025-12-01 10:24: not in the green mile / Scott Masterson on 2025-12-16 16:45: Need to break this apart. the exterior wall has the triagle shaft rated wall built infront of exterior wall. / allucent_notes_20251209_203830: Jason Johnston on 2025-11-04 15:11: Update needed / Luis Vea on 2025-11-10 11:11: needs mud and tape, need more tapers from PCI / Jason Johnston on 2025-11-11 16:11: not started / Luis Vea on 2025-12-01 10:24: not in the green mile / allucent_notes_20251202_153722: Jason Johnston on 2025-11-04 15:11: Update needed / Luis Vea on 2025-11-10 11:11: needs mud and tape, need more tapers from PCI / Jason Johnston on 2025-11-11 16:11: not started / Luis Vea on 2025-12-01 10:24: not in the green mile / allucent_notes_20251118_192630: Jason Johnston on 2025-11-04 15:11: Update needed / Luis Vea on 2025-11-10 11:11: needs mud and tape, need more tapers from PCI / Jason Johnston on 2025-11-11 16:11: not started / allucent_notes_20251111_182405: Jason Johnston on 2025-11-04 15:11: Update needed / Luis Vea on 2025-11-10 11:11: needs mud and tape, need more tapers from PCI / Jason Johnston on 2025-11-11 16:11: not started / allucent_notes_20251104_160200: Jason Johnston on 2025-11-04 15:11: Update needed / allucent_notes_20251230_164549: Jason Johnston on 2025-11-04 15:11: Update needed / Luis Vea on 2025-11-10 11:11: needs mud and tape, need more tapers from PCI / Jason Johnston on 2025-11-11 16:11: not started / Luis Vea on 2025-12-01 10:24: not in the green mile / Scott Masterson on 2025-12-16 16:45: Need to break this apart. the exterior wall has the triagle shaft rated wall built infront of exterior wall. / Jason Johnston on 2025-12-30 16:42: No update / allucent_notes: 2025-11-04 15:11 - User: Jason Johnston - Date Added: 2025-11-04 15:11 - Note: Update needed / 2025-11-10 11:11 - User: Luis Vea - Date Added: 2025-11-10 11:11 - Note: needs mud and tape, need more tapers from PCI / 2025-11-11 16:11 - User: Jason Johnst
- QTS-46541: allucent_notes_20251216_165335: Scott Masterson on 2025-11-04 14:11: Walls are not painted so panels can not be installed. / Jason Johnston on 2025-11-11 16:11: walls incomplete. / Scott Masterson on 2025-12-16 16:43: need to finsh bolting in two panels. / allucent_notes_20251209_203830: Scott Masterson on 2025-11-04 14:11: Walls are not painted so panels can not be installed. / Jason Johnston on 2025-11-11 16:11: walls incomplete. / allucent_notes_20251202_153722: Scott Masterson on 2025-11-04 14:11: Walls are not painted so panels can not be installed. / Jason Johnston on 2025-11-11 16:11: walls incomplete. / allucent_notes_20251118_192630: Scott Masterson on 2025-11-04 14:11: Walls are not painted so panels can not be installed. / Jason Johnston on 2025-11-11 16:11: walls incomplete. / allucent_notes_20251111_182405: Scott Masterson on 2025-11-04 14:11: Walls are not painted so panels can not be installed. / Jason Johnston on 2025-11-11 16:11: walls incomplete. / allucent_notes_20251104_160200: Scott Masterson on 2025-11-04 14:11: Walls are not painted so panels can not be installed. / allucent_notes_20251230_164549: Scott Masterson on 2025-11-04 14:11: Walls are not painted so panels can not be installed. / Jason Johnston on 2025-11-11 16:11: walls incomplete. / Scott Masterson on 2025-12-16 16:43: need to finsh bolting in two panels. / allucent_notes: 2025-11-04 14:11 - User: Scott Masterson - Date Added: 2025-11-04 14:11 - Note: Walls are not painted so panels can not be installed. / 2025-11-11 16:11 - User: Jason Johnston - Date Added: 2025-11-11 16:11 - Note: walls incomplete. / 2025-12-16 16:43 -
- QTS-16491: allucent_notes_20251216_165335: Jason Johnston on 2025-10-08 08:10: not done / David Wiltberger on 2025-10-14 12:10: no walls / allucent_notes_20251209_203830: Jason Johnston on 2025-10-08 08:10: not done / David Wiltberger on 2025-10-14 12:10: no walls / allucent_notes_20251202_153722: Jason Johnston on 2025-10-08 08:10: not done / David Wiltberger on 2025-10-14 12:10: no walls / allucent_notes_20251104_160200: Jason Johnston on 2025-10-08 08:10: not done / David Wiltberger on 2025-10-14 12:10: no walls / allucent_notes_20251014_152335: David Wiltberger on 2025-10-14 12:10: no walls / allucent_notes_20251230_164549: Jason Johnston on 2025-10-08 08:10: not done / David Wiltberger on 2025-10-14 12:10: no walls / allucent_notes: 2025-10-08 08:10 - User: Jason Johnston - Date Added: 2025-10-08 08:10 - Note: not done / 2025-10-14 12:10 - User: David Wiltberger - Date Added: 2025-10-14 12:10 - Note: no walls
- QTS-16241: allucent_notes_20251230_164549: Jason Johnston on 2025-12-30 16:42: No update / allucent_notes: 2025-12-30 16:42 - User: Jason Johnston - Date Added: 2025-12-30 16:42 - Note: No update

| ID | WBS | Activity | Duration | Start | Finish | Predecessors | Complete | Planned start | Planned finish | Calendar | Allucent CSI Group | Project Section | Layton Discipline | Baseline | Phase-1-1 | Project Section-1 | Location | Level | Contract | Fragnet | Owner Impact Analysis | Fragnet Responsible Party | Delay Notice 07-26 | Layton Super | Trade Partner |
| --- | --- | --- | --- | --- | --- | --- | --- | --- | --- | --- | --- | --- | --- | --- | --- | --- | --- | --- | --- | --- | --- | --- | --- | --- | --- |
|  | 1 | **Gallery 1102 Electrical** |  | 2025-10-01 | 2026-08-11 |  |  |  |  |  |  |  |  |  |  |  |  |  |  |  |  |  |  |  |  |
| QTS-14651 |  | DH 1100 / Electrical Gallery 1102 // Install VESDA | 8d | 2025-10-01 A | 2025-10-10 A | QTS-13671 | 100% |  |  |  | 01ADMIN | Construction | Electrical | IGMP | Phase 1 | Construction | DH1100 | Level 1 | BAB |  |  |  |  |  |  |
| QTS-46551 |  | DH 1100 / Electrical Gallery 1102 // Install OH Electrical, FA/ EPMS/BMS Conduit & Grounding | 10d | 2025-10-22 A | 2025-11-12 A | QTS-14651 | 100% | 2025-10-31 | 2025-11-13 |  | 01ADMIN | Construction | Electrical | IGMP | Phase 1 | Construction | DH1100 | Level 1 | BAB |  |  |  |  |  |  |
| QTS-17671 |  | DH 1100 / Electrical Gallery 1102 // Install Conduit from UPS Pod to Chillers R-C | 6d | 2026-01-10 A | 2026-01-17 A | QTS-120000, QTS-14651, QTS-1631, QTS-25541 | 100% | 2026-01-10 | 2026-01-16 | QTS-PHX3 DC1 - 6 day w/ Holidays | 01ADMIN | Construction | Electrical | IGMP | Phase 1 | Construction | DH1100 | Level 1 | BAB |  |  |  |  |  |  |
| QTS-14111 |  | DH 1100 / Electrical Gallery 1102 // Install Electrical Tray | 5d | 2026-01-28 A | 2026-02-27 A | QTS-2761 FF, QTS-46551 | 100% | 2026-02-11 | 2026-02-16 | QTS-PHX3 DC1 - 6 day w/ Holidays | 01ADMIN | Construction | Electrical | IGMP | Phase 1 | Construction | DH1100 | Level 1 | BAB |  |  |  |  |  |  |
| QTS-43731 |  | DH 1100 / Electrical Gallery 1102 // Pull & Terminate from VFD to Chillers & Pumps Lineup D-F | 3d | 2026-01-31 A | 2026-02-13 A | QTS-18631 FF | 100% | 2026-01-31 | 2026-02-03 | QTS-PHX3 DC1 - 6 day w/ Holidays | 01ADMIN | Construction | Electrical | IGMP | Phase 1 | Construction | DH1100 | Level 1 | BAB |  |  |  |  |  |  |
| QTS-15251 |  | DH 1100 / Electrical Gallery 1102 // Install Basket Tray for LV | 5d | 2026-02-03 A | 2026-02-23 A | QTS-14111 SS | 100% | 2026-02-03 | 2026-02-07 | QTS-PHX3 DC1 - 6 day w/ Holidays | 01ADMIN | Construction | Electrical | IGMP | Phase 1 | Construction | DH1100 | Level 1 | BAB |  |  |  |  |  |  |
| QTS-18631 |  | DH 1100 / Electrical Gallery 1102 // Install Conduit from UPS Pod to Chillers Lineup D-F | 5d | 2026-02-04 A | 2026-02-08 A | QTS-17671, QTS-3411, QTS-43591 | 100% | 2026-02-04 | 2026-02-09 | QTS-PHX3 DC1 - 6 day w/ Holidays | 01ADMIN | Construction | Electrical | IGMP | Phase 1 | Construction | DH1100 | Level 1 | BAB |  |  |  |  |  |  |
| QTS-43701 |  | DH 1100 / Electrical Gallery 1102 // Install Conduit from UPS Pod to Pumps R-C | 9d | 2026-02-09 A | 2026-02-09 A | QTS-120000, QTS-17671 SS+2d | 100% | 2026-02-09 | 2026-02-18 | QTS-PHX3 DC1 - 6 day w/ Holidays | 01ADMIN | Construction | Electrical | IGMP | Phase 1 | Construction | DH1100 | Level 1 | BAB |  |  |  |  |  |  |
| QTS-18621 |  | DH 1100 / Electrical Gallery 1102 // Pull & Terminate from UPS Pod to VFD R-C | 4d | 2026-02-16 A | 2026-02-27 A | QTS-13541, QTS-17671, QTS-43701 | 100% | 2026-02-16 | 2026-02-19 | QTS-PHX3 DC1 - 6 day w/ Holidays | 01ADMIN | Construction | Electrical | IGMP | Phase 1 | Construction | DH1100 | Level 1 | BAB |  |  |  |  |  |  |
| QTS-18951 |  | DH 1100 / Electrical Gallery 1102 // Pull & Terminate from VFD to Chillers & Pumps R-C | 4d | 2026-02-16 A | 2026-03-20 A | QTS-43701, QTS-13541, QTS-18621 SS | 100% | 2026-02-16 | 2026-02-19 | QTS-PHX3 DC1 - 6 day w/ Holidays | 01ADMIN | Construction | Electrical | IGMP | Phase 1 | Construction | DH1100 | Level 1 | BAB |  |  |  |  |  |  |
| QTS-43721 |  | DH 1100 / Electrical Gallery 1102 // Pull & Terminate from UPS Pod to VFD Lineup D-F | 5d | 2026-02-16 A | 2026-03-11 A | QTS-18631 | 100% | 2026-02-16 | 2026-02-20 | QTS-PHX3 DC1 - 6 day w/ Holidays | 01ADMIN | Construction | Electrical | IGMP | Phase 1 | Construction | DH1100 | Level 1 | BAB |  |  |  |  |  |  |
| QTS-43711 |  | DH 1100 / Electrical Gallery 1102 // Install Conduit from UPS Pod to Pumps Lineup D-F | 6d | 2026-02-20 A | 2026-02-27 A | QTS-43701, QTS-18631 SS+2d | 100% | 2026-02-20 | 2026-02-26 | QTS-PHX3 DC1 - 6 day w/ Holidays | 01ADMIN | Construction | Electrical | IGMP | Phase 1 | Construction | DH1100 | Level 1 | BAB |  |  |  |  |  |  |
| QTS-1014030 |  | DH 1100 / Fragnet Delay - Bleed through Voltage on all Systems from improper grounding of Details & Equipment | 4d | 2026-06-22 A | 2026-06-25 A | QTS-18951 | 100% | 2026-02-16 | 2026-02-19 | QTS-PHX3 DC1 - 6 day w/ Holidays | 01ADMIN | Construction | Electrical | IGMP | Phase 1 | Construction | DH1100 | Level 1 | BAB | Fragnet | Y | Rosendin Electric Inc. | Delay 07-26 |  |  |
| QTS-0500 |  | DH 1100 / Gallery 1102 / Final Paint | 2d | 2026-07-15 A | 2026-07-16 A | QTS-0460 SS | 100% | 2026-07-22 | 2026-07-23 | **GLOBAL - 6 Day Workweek w/ Basic Holidays |  |  | Build Out |  |  |  |  |  | BAB |  |  |  |  | Jason Hendley | PPC |
| QTS-0510 |  | DH 1100 / Gallery 1102 / Install FE and FEC's | 2d | 2026-07-16 A | 2026-07-17 A | QTS-0450, QTS-0500 | 100% | 2026-07-24 | 2026-07-25 | **GLOBAL - 6 Day Workweek w/ Basic Holidays |  |  | Build Out |  |  |  |  |  | BAB |  |  |  |  | Ed Carter | ISEC |
| QTS-0520 |  | DH 1100 / Gallery 1102 / Sealed Concrete Flooring | 2d | 2026-07-29 A | 2026-07-30 A | QTS-0500 | 100% | 2026-08-05 | 2026-08-06 | **GLOBAL - 6 Day Workweek w/ Basic Holidays |  |  | Build Out |  |  |  |  |  | BAB |  |  |  |  | Jason Hendley | Bldg Solutions |
| QTS-0540 |  | DH 1100 / Gallery 1102 / Clean | 2d | 2026-08-04 A | 2026-08-11 A | QTS-0500, QTS-0510 | 100% | 2026-08-10 | 2026-08-11 | **GLOBAL - 6 Day Workweek w/ Basic Holidays |  |  | Build Out |  |  |  |  |  | BAB |  |  |  |  | Ed Carter | AGDC |
| QTS-0530 |  | DH 1100 / Gallery 1102 / Install Rubber Base | 2d | 2026-08-10 A | 2026-08-11 A | QTS-0520 | 100% | 2026-08-12 | 2026-08-13 | **GLOBAL - 6 Day Workweek w/ Basic Holidays |  |  | Build Out |  |  |  |  |  | BAB |  |  |  |  | Ben Ribble | Wholesale Flooring |
|  | 1 | **Electrical** |  | 2025-12-12 | 2026-04-17 |  |  |  |  |  |  |  |  |  |  |  |  |  |  |  |  |  |  |  |  |
|  | 8 | **DH 1100 IDF Cabinets** |  | 2026-02-18 | 2026-04-17 |  |  |  |  |  |  |  |  |  |  |  |  |  |  |  |  |  |  |  |  |
| QTS-43431 |  | DH 1100 / Electrical Gallery 1102/1101 // Install Fire Rated Plywood | 1d | 2026-02-18 A | 2026-02-18 A | QTS-13341 | 100% |  |  | QTS-PHX3 DC1 - 6 day w/ Holidays | 01ADMIN | Construction | Build Out | GMP | Phase 3 | Construction | DH2300 |  | BAB |  |  |  |  |  |  |
| QTS-43441 |  | DH 1100 / Electrical Gallery 1102/1101 // Set IDF Cabinet | 1d | 2026-02-19 A | 2026-02-20 A | QTS-43431 | 100% | 2026-02-19 | 2026-02-19 | QTS-PHX3 DC1 - 6 day w/ Holidays | 01ADMIN | Construction | Electrical | GMP | Phase 3 | Construction | DH2300 |  | BAB |  |  |  |  |  |  |
| QTS-43451 |  | DH 1100 / Electrical Gallery 1102/1101 // Set IDF Conduit | 2d | 2026-03-16 A | 2026-03-18 A | QTS-43441 | 100% | 2026-03-16 | 2026-03-17 | QTS-PHX3 DC1 - 6 day w/ Holidays | 01ADMIN | Construction | Electrical | GMP | Phase 3 | Construction | DH2300 |  | BAB |  |  |  |  |  |  |
| QTS-1009470 |  | DH 1100 / Electrical Gallery 1102/1101 // Install Grounding in IDF Cabinet | 4d | 2026-04-13 A | 2026-04-14 A | QTS-43451 | 100% | 2026-04-22 | 2026-04-25 | QTS-PHX3 DC1 - 6 day w/ Holidays | 01ADMIN | Construction | Electrical | GMP | Phase 3 | Construction | DH2300 |  | BAB |  |  |  |  |  |  |
| QTS-1009480 |  | DH 1100 / Electrical Gallery 1102/1101 // Terminate Power in IDF Cabinet | 3d | 2026-04-15 A | 2026-04-17 A | QTS-1009470 | 100% |  |  | QTS-PHX3 DC1 - 6 day w/ Holidays | 01ADMIN | Construction | Electrical | GMP | Phase 3 | Construction | DH2300 |  | BAB |  |  |  |  |  |  |

Notes:
- QTS-46551: allucent_notes_20251118_192630: David Wiltberger on 2025-10-14 12:10: no walls / Scott Masterson on 2025-11-04 14:11: Walls, delayed the cable buss installation so the cable buss will be completed this week so this task can be completed afterwards. / Jason Johnston on 2025-11-11 16:11: SWO / Jason Johnston on 2025-11-19T02:24:16.915Z: undo / allucent_notes_20251111_182405: David Wiltberger on 2025-10-14 12:10: no walls / Scott Masterson on 2025-11-04 14:11: Walls, delayed the cable buss installation so the cable buss will be completed this week so this task can be completed afterwards. / Jason Johnston on 2025-11-11 16:11: SWO / allucent_notes_20251104_160200: David Wiltberger on 2025-10-14 12:10: no walls / Scott Masterson on 2025-11-04 14:11: Walls, delayed the cable buss installation so the cable buss will be completed this week so this task can be completed afterwards. / allucent_notes_20251028_163138: David Wiltberger on 2025-10-14 12:10: no walls / allucent_notes_20251027_224008: David Wiltberger on 2025-10-14 12:10: no walls / allucent_notes_20251021_145627: David Wiltberger on 2025-10-14 12:10: no walls / allucent_notes_20251014_152335: David Wiltberger on 2025-10-14 12:10: no walls / allucent_notes: 2025-10-14 12:10 - User: David Wiltberger - Date Added: 2025-10-14 12:10 - Note: no walls / 2025-11-04 14:11 - User: Scott Masterson - Date Added: 2025-11-04 14:11 - Note: Walls, delayed the cable buss installation so the cable buss will be completed thi
- QTS-17671: allucent_notes_20251209_203830: Jason Johnston on 2025-11-11 16:11: swo / Jason Johnston on 2025-11-19T02:24:13.345Z: undo / David Wiltberger on 2025-12-02 13:58: impacted by Stop work / allucent_notes_20251202_153722: Jason Johnston on 2025-11-11 16:11: swo / Jason Johnston on 2025-11-19T02:24:13.345Z: undo / David Wiltberger on 2025-12-02 13:58: impacted by Stop work / allucent_notes_20251118_192630: Jason Johnston on 2025-11-11 16:11: swo / Jason Johnston on 2025-11-19T02:24:13.345Z: undo / allucent_notes_20251111_182405: Jason Johnston on 2025-11-11 16:11: swo / allucent_notes: 10/20/25 / Scott removed tie to corridor wall paint. / allucent_notes: 2025-11-11 16:11 - User: Jason Johnston - Date Added: 2025-11-11 16:11 - Note: swo / 2025-11-19T02:24:13.345Z - User: Jason Johnston - Date Added: 2025-11-19T02:24:13.345Z - Note: undo / 2025-12-02 13:58 - User: David Wiltberger - Date Added: 2025-12-02
- QTS-14111: allucent_notes_20251230_164549: David Wiltberger on 2025-12-30 15:46: TFO impacting install / allucent_notes: 2025-12-30 15:46 - User: David Wiltberger - Date Added: 2025-12-30 15:46 - Note: TFO impacting install
- QTS-43701: allucent_notes_20251209_203830: Jason Johnston on 2025-11-19T02:24:20.394Z: undo / allucent_notes_20251202_153722: Jason Johnston on 2025-11-19T02:24:20.394Z: undo / allucent_notes_20251118_192630: Jason Johnston on 2025-11-19T02:24:20.394Z: undo / allucent_notes: 2025-11-19T02:24:20.394Z - User: Jason Johnston - Date Added: 2025-11-19T02:24:20.394Z - Note: undo
- QTS-18621: allucent_notes_20251202_153722: Jason Johnston on 2025-11-19T02:24:24.571Z: undo / allucent_notes_20251118_192630: Jason Johnston on 2025-11-19T02:24:24.571Z: undo / allucent_notes: 2025-11-19T02:24:24.571Z - User: Jason Johnston - Date Added: 2025-11-19T02:24:24.571Z - Note: undo
- QTS-18951: allucent_notes_20251118_192630: Jason Johnston on 2025-11-19T02:24:29.365Z: undo / allucent_notes: 2025-11-19T02:24:29.365Z - User: Jason Johnston - Date Added: 2025-11-19T02:24:29.365Z - Note: undo
- QTS-1014030: allucent_notes_20251118_192630: Jason Johnston on 2025-11-19T02:24:29.365Z: undo / Scheduler Notes: Bleed through Voltage on all Systems from improper grounding of Details / & Equipment / allucent_notes: 2025-11-19T02:24:29.365Z - User: Jason Johnston - Date Added: 2025-11-19T02:24:29.365Z - Note: undo

| ID | WBS | Activity | Duration | Start | Finish | Predecessors | Complete | Planned start | Planned finish | Calendar | Allucent CSI Group | Project Section | Layton Discipline | Baseline | Phase-1-1 | Project Section-1 | Location | Level | Contract | If Not Started or Finished Why? |
| --- | --- | --- | --- | --- | --- | --- | --- | --- | --- | --- | --- | --- | --- | --- | --- | --- | --- | --- | --- | --- |
|  | 1 | **A1100 Lineup** |  | 2025-12-15 | 2026-04-15 |  |  |  |  |  |  |  |  |  |  |  |  |  |  |  |
| QTS-14091 |  | Gallery 1102 / Lineup A1100 // Install Hangers & Supports | 3d | 2025-12-15 A | 2025-12-17 A | QTS-13341 | 100% |  |  |  | 01ADMIN | Construction | Electrical | IGMP | Phase 1 | Construction | DH1100 | Level 1 | BAB |  |
| QTS-14931 |  | Gallery 1102 / Lineup A1100 // Install Raceways from LV POD to COD | 7d | 2026-01-14 A | 2026-02-11 A | QTS-14091 | 100% | 2026-01-14 | 2026-01-22 | QTS-PHX3 DC1 - 6 day w/ Holidays | 01ADMIN | Construction | Electrical | IGMP | Phase 1 | Construction | DH1100 | Level 1 | BAB |  |
| QTS-15741 |  | Gallery 1102 / Lineup A1100 // OFCI - L2 SET IN PLACE - Eq Type # - COD/ATS-210-A - Skid 1-3 | 1d | 2026-01-29 A | 2026-01-29 A | QTS-32991 | 100% |  |  | QTS-PHX3 DC1 - 6 day w/ Holidays | 01ADMIN | Construction | Electrical | IGMP | Phase 1 | Construction | DH1100 | Level 1 | BAB |  |
| QTS-16221 |  | Gallery 1102 / Lineup A1100 // Set Reserve Busway Segment | 2d | 2026-01-29 A | 2026-01-30 A | QTS-50021, QTS-15741, QTS-14931 SS | 100% |  |  | QTS-PHX3 DC1 - 6 day w/ Holidays | 01ADMIN | Construction | Electrical | IGMP | Phase 1 | Construction | DH1100 | Level 1 | BAB |  |
| QTS-45781 |  | Gallery 1102 / Lineup A1100 // OFCI - L2 SET IN PLACE - Eq Type # - COD/ATS-210-A - Skid 4-6 | 1d | 2026-01-30 A | 2026-01-30 A | QTS-15741 | 100% |  |  | QTS-PHX3 DC1 - 6 day w/ Holidays | 01ADMIN | Construction | Electrical | IGMP | Phase 1 | Construction | DH1100 | Level 1 | BAB |  |
| QTS-17691 |  | Gallery 1102 / Lineup A1100 // Pull LV Cables from Reserve Bus to ATS | 2d | 2026-02-12 A | 2026-02-17 A | QTS-16221, QTS-16821, QTS-14931 | 100% | 2026-02-12 | 2026-02-13 | QTS-PHX3 DC1 - 6 day w/ Holidays | 01ADMIN | Construction | Electrical | IGMP | Phase 1 | Construction | DH1100 | Level 1 | BAB |  |
| QTS-16821 |  | Gallery 1102 / Lineup A1100 // Pull LV Cables from POD to ATS | 1d | 2026-02-13 A | 2026-02-17 A | QTS-45781 FF+1d, QTS-13541, QTS-14931, QTS-15741 | 100% | 2026-02-13 | 2026-02-13 | QTS-PHX3 DC1 - 6 day w/ Holidays | 01ADMIN | Construction | Electrical | IGMP | Phase 1 | Construction | DH1100 | Level 1 | BAB |  |
| QTS-18091 |  | Gallery 1102 / Lineup A1100 // Terminate & Torque ATS | 1d | 2026-02-17 A | 2026-02-19 A | QTS-16821, QTS-17691 | 100% | 2026-02-18 | 2026-02-18 | QTS-PHX3 DC1 - 6 day w/ Holidays |  | Construction | Electrical | IGMP | Phase 1 | Construction | DH1100 | Level 1 | BAB |  |
| QTS-18101 |  | Gallery 1102 / Lineup A1100 // Terminate & Torque COD | 1d | 2026-02-20 A | 2026-02-20 A | QTS-18091 FF, QTS-16821 | 100% |  |  | QTS-PHX3 DC1 - 6 day w/ Holidays |  | Construction | Electrical | IGMP | Phase 1 | Construction | DH1100 | Level 1 | BAB |  |
|  | 1 | **A1100 Controls** |  | 2026-02-27 | 2026-04-15 |  |  |  |  |  |  |  |  |  |  |  |  |  |  |  |
| QTS-1005410 |  | DH 1100 / Chiller A11 // Terminate Controls | 4d | 2026-02-27 A | 2026-03-19 A | QTS-1371 SS | 100% | 2026-02-27 | 2026-03-03 | QTS-PHX3 DC1 - 6 day w/ Holidays | 01ADMIN | Construction | Electrical | GMP | Phase 1 | Construction | DH1100 |  | BAB |  |
| QTS-1005420 |  | DH 1100 / MOD-02-A11 // Wire Pull - Controls | 4d | 2026-02-28 A | 2026-03-06 A | QTS-1371 SS, QTS-15251 | 100% | 2026-02-27 | 2026-03-03 | QTS-PHX3 DC1 - 6 day w/ Holidays | 01ADMIN | Construction | Electrical | GMP | Phase 1 | Construction | DH1100 |  | BAB |  |
| QTS-1005440 |  | DH 1100 / COD-A11 // Wire Pull - Controls | 4d | 2026-02-28 A | 2026-03-06 A | QTS-1371 SS | 100% | 2026-02-27 | 2026-03-03 | QTS-PHX3 DC1 - 6 day w/ Holidays | 01ADMIN | Construction | Electrical | GMP | Phase 1 | Construction | DH1100 |  | BAB |  |
| QTS-1005460 |  | DH 1100 / POD-A11 // Wire Pull - Controls | 4d | 2026-02-28 A | 2026-03-04 A | QTS-1371 SS | 100% | 2026-02-27 | 2026-03-03 | QTS-PHX3 DC1 - 6 day w/ Holidays | 01ADMIN | Construction | Electrical | GMP | Phase 1 | Construction | DH1100 |  | BAB |  |
| QTS-1005480 |  | DH 1100 / GEN-A11 // Wire Pull - Controls | 4d | 2026-02-28 A | 2026-03-05 A | QTS-1371 SS | 100% | 2026-02-27 | 2026-03-03 | QTS-PHX3 DC1 - 6 day w/ Holidays | 01ADMIN | Construction | Electrical | GMP | Phase 1 | Construction | DH1100 |  | BAB |  |
| QTS-1006830 |  | DH 1100 / ATS-A11 // Wire Pull - Controls | 4d | 2026-02-28 A | 2026-03-06 A | QTS-1371 SS | 100% | 2026-02-27 | 2026-03-03 | QTS-PHX3 DC1 - 6 day w/ Holidays | 01ADMIN | Construction | Electrical | GMP | Phase 1 | Construction | DH1100 |  | BAB |  |
| QTS-1005490 |  | DH 1100 / GEN-A11 // Terminate Controls | 1d | 2026-03-02 A | 2026-03-05 A | QTS-1005480 FF | 100% | 2026-03-09 | 2026-03-09 | QTS-PHX3 DC1 - 6 day w/ Holidays | 01ADMIN | Construction | Electrical | GMP | Phase 1 | Construction | DH1100 |  | BAB |  |
| QTS-1005430 |  | DH 1100 / MOD-02-A11 // Terminate Controls | 1d | 2026-03-11 A | 2026-03-11 A | QTS-1005420 | 100% | 2026-03-19 | 2026-03-19 | QTS-PHX3 DC1 - 6 day w/ Holidays | 01ADMIN | Construction | Electrical | GMP | Phase 1 | Construction | DH1100 |  | BAB |  |
| QTS-1005470 |  | DH 1100 / POD-A11 // Terminate Controls | 1d | 2026-03-19 A | 2026-03-19 A | QTS-1005460 | 100% | 2026-04-14 | 2026-04-14 | QTS-PHX3 DC1 - 6 day w/ Holidays | 01ADMIN | Construction | Electrical | GMP | Phase 1 | Construction | DH1100 |  | BAB | Waiting on E2 optics |
| QTS-1005450 |  | DH 1100 / COD-A11 // Terminate Controls | 1d | 2026-04-14 A | 2026-04-15 A | QTS-1005440 | 100% | 2026-04-14 | 2026-04-14 | QTS-PHX3 DC1 - 6 day w/ Holidays | 01ADMIN | Construction | Electrical | GMP | Phase 1 | Construction | DH1100 |  | BAB | Waiting on E2 optics |
| QTS-1006840 |  | DH 1100 / ATS-A11 // Terminate Controls | 1d | 2026-04-14 A | 2026-04-15 A | QTS-1006830 | 100% | 2026-04-14 | 2026-04-14 | QTS-PHX3 DC1 - 6 day w/ Holidays | 01ADMIN | Construction | Electrical | GMP | Phase 1 | Construction | DH1100 |  | BAB | Waiting on E2 optics |
|  | 2 | **B1100 Lineup** |  | 2025-12-15 | 2026-04-15 |  |  |  |  |  |  |  |  |  |  |  |  |  |  |  |
| QTS-1711 |  | Gallery 1102 / Lineup B1100 // Install Hangers & Supports | 3d | 2025-12-15 A | 2025-12-17 A | QTS-14091 SS | 100% |  |  |  | 01ADMIN | Construction | Electrical | IGMP | Phase 1 | Construction | DH1100 | Level 1 | BAB |  |
| QTS-2771 |  | Gallery 1102 / Lineup B1100 // Install Raceways from LV POD to COD | 7d | 2026-01-14 A | 2026-02-17 A | QTS-14931 SS, QTS-1711 | 100% | 2026-01-14 | 2026-01-22 | QTS-PHX3 DC1 - 6 day w/ Holidays | 01ADMIN | Construction | Electrical | IGMP | Phase 1 | Construction | DH1100 | Level 1 | BAB |  |
| QTS-4951 |  | Gallery 1102 / Lineup B1100 // Set Reserve Busway Segment | 2d | 2026-01-28 A | 2026-02-01 A | QTS-50021, QTS-2771, QTS-3921 | 100% | 2026-01-28 | 2026-01-29 | QTS-PHX3 DC1 - 6 day w/ Holidays | 01ADMIN | Construction | Electrical | IGMP | Phase 1 | Construction | DH1100 | Level 1 | BAB |  |
| QTS-3921 |  | Gallery 1102 / Lineup B1100 // OFCI - L2 SET IN PLACE - Eq Type # - COD/ATS-210-A - Skid 1-3 | 1d | 2026-01-29 A | 2026-01-29 A | QTS-45781, QTS-33031 | 100% | 2026-01-28 | 2026-01-28 | QTS-PHX3 DC1 - 6 day w/ Holidays | 01ADMIN | Construction | Electrical | IGMP | Phase 1 | Construction | DH1100 | Level 1 | BAB |  |
| QTS-45791 |  | Gallery 1102 / Lineup B1100 // OFCI - L2 SET IN PLACE - Eq Type # - COD/ATS-210-A - Skid 4-6 | 1d | 2026-01-30 A | 2026-01-30 A | QTS-3921 | 100% |  |  | QTS-PHX3 DC1 - 6 day w/ Holidays | 01ADMIN | Construction | Electrical | IGMP | Phase 1 | Construction | DH1100 | Level 1 | BAB |  |
| QTS-8031 |  | Gallery 1102 / Lineup B1100 // Pull LV Cables from Reserve Bus to ATS | 2d | 2026-02-02 A | 2026-02-03 A | QTS-4951, QTS-2771 | 100% |  |  | QTS-PHX3 DC1 - 6 day w/ Holidays | 01ADMIN | Construction | Electrical | IGMP | Phase 1 | Construction | DH1100 | Level 1 | BAB |  |
| QTS-6401 |  | Gallery 1102 / Lineup B1100 // Pull LV Cables from POD to ATS | 1d | 2026-02-17 A | 2026-02-19 A | QTS-45791 FF+1d, QTS-13541, QTS-2771, QTS-3921 | 100% | 2026-02-18 | 2026-02-18 | QTS-PHX3 DC1 - 6 day w/ Holidays | 01ADMIN | Construction | Electrical | IGMP | Phase 1 | Construction | DH1100 | Level 1 | BAB |  |
| QTS-8911 |  | Gallery 1102 / Lineup B1100 // Terminate & Torque ATS | 1d | 2026-02-19 A | 2026-02-20 A | QTS-6401, QTS-8031 | 100% | 2026-02-19 | 2026-02-19 | QTS-PHX3 DC1 - 6 day w/ Holidays |  | Construction | Electrical | IGMP | Phase 1 | Construction | DH1100 | Level 1 | BAB |  |
| QTS-8921 |  | Gallery 1102 / Lineup B1100 // Terminate & Torque COD | 1d | 2026-02-20 A | 2026-02-21 A | QTS-8911 FF, QTS-6401 | 100% | 2026-02-19 | 2026-02-19 | QTS-PHX3 DC1 - 6 day w/ Holidays |  | Construction | Electrical | IGMP | Phase 1 | Construction | DH1100 | Level 1 | BAB |  |

Notes:
- QTS-14931: allucent_notes_20251230_164549: David Wiltberger on 2025-12-30 15:47: corridor impacted by fire stop work / allucent_notes: 2025-12-30 15:47 - User: David Wiltberger - Date Added: 2025-12-30 15:47 - Note: corridor impacted by fire stop work
- QTS-15741: allucent_notes_20251216_165335: Scott Masterson on 2025-11-04 14:11: Waiting to install skid due to overhead activities in the same area. These sets are not tied to anything at this time so we should be ok. / Jason Johnston on 2025-11-11 16:11: pushing / Jason Johnston on 2025-11-19T02:24:34.704Z: undo / David Wiltberger on 2025-12-02 13:59: update the ROJ dates / allucent_notes_20251209_203830: Scott Masterson on 2025-11-04 14:11: Waiting to install skid due to overhead activities in the same area. These sets are not tied to anything at this time so we should be ok. / Jason Johnston on 2025-11-11 16:11: pushing / Jason Johnston on 2025-11-19T02:24:34.704Z: undo / David Wiltberger on 2025-12-02 13:59: update the ROJ dates / allucent_notes_20251202_153722: Scott Masterson on 2025-11-04 14:11: Waiting to install skid due to overhead activities in the same area. These sets are not tied to anything at this time so we should be ok. / Jason Johnston on 2025-11-11 16:11: pushing / Jason Johnston on 2025-11-19T02:24:34.704Z: undo / David Wiltberger on 2025-12-02 13:59: update the ROJ dates / allucent_notes_20251118_192630: Scott Masterson on 2025-11-04 14:11: Waiting to install skid due to overhead activities in the same area. These sets are not tied to anything at this time so we should be ok. / Jason Johnston on 2025-11-11 16:11: pushing / Jason Johnston on 2025-11-19T02:24:34.704Z: undo / allucent_notes_20251111_182405: Scott Masterson on 2025-11-04 14:11: Waiting to install skid due to overhead activities in the same area. These sets are not tied to anything at this time so we should be ok. / Jason Johnston on 2025-11-11 16:11: pushing / allucent_notes_20251104_160200: Scott Masterson on 2025-11-04 14:11: Waiting to install skid due to overhead activities in the same area. These sets are not tied to anything at this time so we should be ok. / allucent_notes_20251230_164549: Scott Masterson on 2025-11-04 14:11: Waiting to install skid due to overhead activities in the same area. These sets are not tied to anything at this time so we should be ok. / Jason Johnston on 2025-11-11 16:11: pushing / Jason Johnston on 2025-11-19T02:24:34.704Z: undo / David Wiltberger on 2025-12-02 13:59: update the ROJ dates / allucent_notes: 2025-11-04 14:11 - User: Scott Masterson - Date Added: 2025-11-04 14:11 - Note: Waiting to install skid due to overhead activities in the same area. These sets are not tied to anything at this time so we should be ok. / 2025-11-11 16:11 - User: Jason Jo
- QTS-45781: allucent_notes_20251216_165335: Jason Johnston on 2025-11-19T02:24:39.144Z: undo / allucent_notes_20251209_203830: Jason Johnston on 2025-11-19T02:24:39.144Z: undo / allucent_notes_20251202_153722: Jason Johnston on 2025-11-19T02:24:39.144Z: undo / allucent_notes_20251118_192630: Jason Johnston on 2025-11-19T02:24:39.144Z: undo / allucent_notes_20251230_164549: Jason Johnston on 2025-11-19T02:24:39.144Z: undo / allucent_notes: 2025-11-19T02:24:39.144Z - User: Jason Johnston - Date Added: 2025-11-19T02:24:39.144Z - Note: undo

| ID | WBS | Activity | Duration | Start | Finish | Predecessors | Complete | Planned start | Planned finish | Calendar | Allucent CSI Group | Project Section | Layton Discipline | Baseline | Phase-1-1 | Project Section-1 | Location | Contract | If Not Started or Finished Why? | Level |
| --- | --- | --- | --- | --- | --- | --- | --- | --- | --- | --- | --- | --- | --- | --- | --- | --- | --- | --- | --- | --- |
|  | 1 | **B1100 Controls** |  | 2026-02-27 | 2026-04-15 |  |  |  |  |  |  |  |  |  |  |  |  |  |  |  |
| QTS-1005500 |  | DH 1100 / Chiller B11 // Terminate Controls | 4d | 2026-02-27 A | 2026-03-19 A | QTS-1371 SS | 100% | 2026-02-27 | 2026-03-03 | QTS-PHX3 DC1 - 6 day w/ Holidays | 01ADMIN | Construction | Electrical | GMP | Phase 1 | Construction | DH1100 | BAB |  |  |
| QTS-1005510 |  | DH 1100 / MOD-02-B11 // Wire Pull - Controls | 4d | 2026-02-28 A | 2026-03-06 A | QTS-1371 SS | 100% | 2026-02-27 | 2026-03-03 | QTS-PHX3 DC1 - 6 day w/ Holidays | 01ADMIN | Construction | Electrical | GMP | Phase 1 | Construction | DH1100 | BAB |  |  |
| QTS-1005520 |  | DH 1100 / COD-B11 // Wire Pull - Controls | 4d | 2026-02-28 A | 2026-03-06 A | QTS-1371 SS | 100% | 2026-02-27 | 2026-03-03 | QTS-PHX3 DC1 - 6 day w/ Holidays | 01ADMIN | Construction | Electrical | GMP | Phase 1 | Construction | DH1100 | BAB |  |  |
| QTS-1005530 |  | DH 1100 / POD-B11 // Wire Pull - Controls | 4d | 2026-02-28 A | 2026-03-04 A | QTS-1371 SS | 100% | 2026-02-27 | 2026-03-03 | QTS-PHX3 DC1 - 6 day w/ Holidays | 01ADMIN | Construction | Electrical | GMP | Phase 1 | Construction | DH1100 | BAB |  |  |
| QTS-1005540 |  | DH 1100 / GEN-B11 // Wire Pull - Controls | 4d | 2026-02-28 A | 2026-03-05 A | QTS-1371 SS | 100% | 2026-02-27 | 2026-03-03 | QTS-PHX3 DC1 - 6 day w/ Holidays | 01ADMIN | Construction | Electrical | GMP | Phase 1 | Construction | DH1100 | BAB |  |  |
| QTS-1006810 |  | DH 1100 / ATS-B11 // Wire Pull - Controls | 4d | 2026-02-28 A | 2026-03-06 A | QTS-1371 SS | 100% | 2026-02-27 | 2026-03-03 | QTS-PHX3 DC1 - 6 day w/ Holidays | 01ADMIN | Construction | Electrical | GMP | Phase 1 | Construction | DH1100 | BAB |  |  |
| QTS-1005580 |  | DH 1100 / GEN-B11 // Terminate Controls | 2d | 2026-03-02 A | 2026-03-05 A | QTS-1005540 FF | 100% | 2026-03-09 | 2026-03-10 | QTS-PHX3 DC1 - 6 day w/ Holidays | 01ADMIN | Construction | Electrical | GMP | Phase 1 | Construction | DH1100 | BAB |  |  |
| QTS-1005550 |  | DH 1100 / MOD-02-B11 // Terminate Controls | 1d | 2026-03-11 A | 2026-03-11 A | QTS-1005510 | 100% | 2026-03-19 | 2026-03-19 | QTS-PHX3 DC1 - 6 day w/ Holidays | 01ADMIN | Construction | Electrical | GMP | Phase 1 | Construction | DH1100 | BAB |  |  |
| QTS-1005570 |  | DH 1100 / POD-B11 // Terminate Controls | 1d | 2026-03-19 A | 2026-03-19 A | QTS-1005530 | 100% | 2026-04-14 | 2026-04-14 | QTS-PHX3 DC1 - 6 day w/ Holidays | 01ADMIN | Construction | Electrical | GMP | Phase 1 | Construction | DH1100 | BAB | Waiting on E2 optics |  |
| QTS-1005560 |  | DH 1100 / COD-B11 // Terminate Controls | 1d | 2026-04-14 A | 2026-04-15 A | QTS-1005520 | 100% | 2026-04-14 | 2026-04-14 | QTS-PHX3 DC1 - 6 day w/ Holidays | 01ADMIN | Construction | Electrical | GMP | Phase 1 | Construction | DH1100 | BAB | Waiting on E2 optics |  |
| QTS-1006820 |  | DH 1100 / ATS-B11 // Terminate Controls | 1d | 2026-04-14 A | 2026-04-15 A | QTS-1006810 | 100% | 2026-04-14 | 2026-04-14 | QTS-PHX3 DC1 - 6 day w/ Holidays | 01ADMIN | Construction | Electrical | GMP | Phase 1 | Construction | DH1100 | BAB | Waiting on E2 optics |  |
|  | 3 | **C1100 Lineup** |  | 2025-12-18 | 2026-04-15 |  |  |  |  |  |  |  |  |  |  |  |  |  |  |  |
| QTS-1721 |  | Gallery 1102 / Lineup C1100 // Install Hangers & Supports | 3d | 2025-12-18 A | 2025-12-22 A | QTS-1711 | 100% |  |  |  | 01ADMIN | Construction | Electrical | IGMP | Phase 1 | Construction | DH1100 | BAB |  | Level 1 |
| QTS-4971 |  | Gallery 1102 / Lineup C1100 // Set Reserve Busway Segment | 4d | 2026-01-28 A | 2026-02-01 A | QTS-50021, QTS-3931 FF | 100% | 2026-01-28 | 2026-01-31 | QTS-PHX3 DC1 - 6 day w/ Holidays |  | Construction | Electrical | IGMP | Phase 1 | Construction | DH1100 | BAB |  | Level 1 |
| QTS-3931 |  | Gallery 1102 / Lineup C1100 // OFCI - L2 SET IN PLACE - Eq Type # - COD/ATS-210-A - Skid 1-3 | 1d | 2026-01-29 A | 2026-01-29 A | QTS-45791, QTS-33071 | 100% |  |  |  | 01ADMIN | Construction | Electrical | IGMP | Phase 1 | Construction | DH1100 | BAB |  | Level 1 |
| QTS-45801 |  | Gallery 1102 / Lineup C1100 // OFCI - L2 SET IN PLACE - Eq Type # - COD/ATS-210-A - Skid 4-6 | 1d | 2026-01-30 A | 2026-01-30 A | QTS-3931 | 100% |  |  | QTS-PHX3 DC1 - 6 day w/ Holidays | 01ADMIN | Construction | Electrical | IGMP | Phase 1 | Construction | DH1100 | BAB |  | Level 1 |
| QTS-2781 |  | Gallery 1102 / Lineup C1100 // Install Raceways from LV POD to COD | 9d | 2026-02-09 A | 2026-02-19 A | QTS-2771 SS, QTS-1721 | 100% | 2026-02-09 | 2026-02-18 | QTS-PHX3 DC1 - 6 day w/ Holidays | 01ADMIN | Construction | Electrical | IGMP | Phase 1 | Construction | DH1100 | BAB |  | Level 1 |
| QTS-6411 |  | Gallery 1102 / Lineup C1100 // Pull LV Cables from POD to ATS | 1d | 2026-02-17 A | 2026-02-19 A | QTS-45801 FF+1d, QTS-13541, QTS-2781, QTS-3931 | 100% | 2026-02-17 | 2026-02-17 | QTS-PHX3 DC1 - 6 day w/ Holidays |  | Construction | Electrical | IGMP | Phase 1 | Construction | DH1100 | BAB |  | Level 1 |
| QTS-8941 |  | Gallery 1102 / Lineup C1100 // Terminate & Torque ATS | 1d | 2026-02-17 A | 2026-02-19 A | QTS-6411, QTS-8051 | 100% | 2026-03-02 | 2026-03-02 | QTS-PHX3 DC1 - 6 day w/ Holidays |  | Construction | Electrical | IGMP | Phase 1 | Construction | DH1100 | BAB |  | Level 1 |
| QTS-8051 |  | Gallery 1102 / Lineup C1100 // Pull LV Cables from Reserve Bus to ATS | 2d | 2026-02-18 A | 2026-02-20 A | QTS-4971, QTS-6411, QTS-2781 | 100% | 2026-02-18 | 2026-02-19 | QTS-PHX3 DC1 - 6 day w/ Holidays |  | Construction | Electrical | IGMP | Phase 1 | Construction | DH1100 | BAB |  | Level 1 |
| QTS-8951 |  | Gallery 1102 / Lineup C1100 // Terminate & Torque COD | 1d | 2026-02-25 A | 2026-02-26 A | QTS-8941 FF, QTS-6411 | 100% | 2026-02-25 | 2026-02-25 | QTS-PHX3 DC1 - 6 day w/ Holidays |  | Construction | Electrical | IGMP | Phase 1 | Construction | DH1100 | BAB |  | Level 1 |
|  | 1 | **C1100 Controls** |  | 2026-02-27 | 2026-04-15 |  |  |  |  |  |  |  |  |  |  |  |  |  |  |  |
| QTS-1005590 |  | DH 1100 / Chiller C11 // Terminate Controls | 4d | 2026-02-27 A | 2026-03-19 A | QTS-1371 SS | 100% | 2026-02-27 | 2026-03-03 | QTS-PHX3 DC1 - 6 day w/ Holidays | 01ADMIN | Construction | Electrical | GMP | Phase 1 | Construction | DH1100 | BAB |  |  |
| QTS-1005600 |  | DH 1100 / MOD-02-C11 // Wire Pull - Controls | 4d | 2026-02-28 A | 2026-03-06 A | QTS-1371 SS | 100% | 2026-02-27 | 2026-03-03 | QTS-PHX3 DC1 - 6 day w/ Holidays | 01ADMIN | Construction | Electrical | GMP | Phase 1 | Construction | DH1100 | BAB |  |  |
| QTS-1005610 |  | DH 1100 / COD-C11 // Wire Pull - Controls | 4d | 2026-02-28 A | 2026-03-06 A | QTS-1371 SS | 100% | 2026-02-27 | 2026-03-03 | QTS-PHX3 DC1 - 6 day w/ Holidays | 01ADMIN | Construction | Electrical | GMP | Phase 1 | Construction | DH1100 | BAB |  |  |
| QTS-1005620 |  | DH 1100 / POD-C11 // Wire Pull - Controls | 4d | 2026-02-28 A | 2026-03-04 A | QTS-1371 SS | 100% | 2026-02-27 | 2026-03-03 | QTS-PHX3 DC1 - 6 day w/ Holidays | 01ADMIN | Construction | Electrical | GMP | Phase 1 | Construction | DH1100 | BAB |  |  |
| QTS-1005630 |  | DH 1100 / GEN-C11 // Wire Pull - Controls | 4d | 2026-02-28 A | 2026-03-05 A | QTS-1371 SS | 100% | 2026-02-27 | 2026-03-03 | QTS-PHX3 DC1 - 6 day w/ Holidays | 01ADMIN | Construction | Electrical | GMP | Phase 1 | Construction | DH1100 | BAB |  |  |
| QTS-1006790 |  | DH 1100 / ATS-C11 // Wire Pull - Controls | 4d | 2026-02-28 A | 2026-03-06 A | QTS-1371 SS | 100% | 2026-02-27 | 2026-03-03 | QTS-PHX3 DC1 - 6 day w/ Holidays | 01ADMIN | Construction | Electrical | GMP | Phase 1 | Construction | DH1100 | BAB |  |  |
| QTS-1005670 |  | DH 1100 / GEN-C11 // Terminate Controls | 2d | 2026-03-02 A | 2026-03-05 A | QTS-1005630 FF | 100% | 2026-03-09 | 2026-03-10 | QTS-PHX3 DC1 - 6 day w/ Holidays | 01ADMIN | Construction | Electrical | GMP | Phase 1 | Construction | DH1100 | BAB |  |  |
| QTS-1005640 |  | DH 1100 / MOD-02-C11 // Terminate Controls | 1d | 2026-03-12 A | 2026-03-12 A | QTS-1005600 | 100% | 2026-03-19 | 2026-03-19 | QTS-PHX3 DC1 - 6 day w/ Holidays | 01ADMIN | Construction | Electrical | GMP | Phase 1 | Construction | DH1100 | BAB |  |  |
| QTS-1005660 |  | DH 1100 / POD-C11 // Terminate Controls | 1d | 2026-03-19 A | 2026-03-19 A | QTS-1005620 | 100% | 2026-04-15 | 2026-04-15 | QTS-PHX3 DC1 - 6 day w/ Holidays | 01ADMIN | Construction | Electrical | GMP | Phase 1 | Construction | DH1100 | BAB | Waiting on E2 optics |  |
| QTS-1005650 |  | DH 1100 / COD-C11 // Terminate Controls | 1d | 2026-04-15 A | 2026-04-15 A | QTS-1005610 | 100% |  |  | QTS-PHX3 DC1 - 6 day w/ Holidays | 01ADMIN | Construction | Electrical | GMP | Phase 1 | Construction | DH1100 | BAB | Waiting on E2 optics |  |
| QTS-1006800 |  | DH 1100 / ATS-C11 // Terminate Controls | 1d | 2026-04-15 A | 2026-04-15 A | QTS-1006790 | 100% |  |  | QTS-PHX3 DC1 - 6 day w/ Holidays | 01ADMIN | Construction | Electrical | GMP | Phase 1 | Construction | DH1100 | BAB | Waiting on E2 optics |  |

| ID | WBS | Activity | Duration | Start | Finish | Predecessors | Complete | Planned start | Planned finish | Calendar | Allucent CSI Group | Project Section | Layton Discipline | Baseline | Phase-1-1 | Project Section-1 | Location | Level | Contract | If Not Started or Finished Why? |
| --- | --- | --- | --- | --- | --- | --- | --- | --- | --- | --- | --- | --- | --- | --- | --- | --- | --- | --- | --- | --- |
|  | 4 | **D1100 Lineup** |  | 2025-12-23 | 2026-04-15 |  |  |  |  |  |  |  |  |  |  |  |  |  |  |  |
| QTS-1731 |  | Gallery 1102 / Lineup D1100 // Install Hangers & Supports | 3d | 2025-12-23 A | 2025-12-30 A | QTS-1721 | 100% |  |  |  | 01ADMIN | Construction | Electrical | IGMP | Phase 1 | Construction | DH1100 | Level 1 | BAB |  |
| QTS-4991 |  | Gallery 1102 / Lineup D1100 // Set Reserve Busway Segment | 4d | 2026-01-28 A | 2026-02-01 A | QTS-50021, QTS-3941 FF | 100% | 2026-01-28 | 2026-01-31 | QTS-PHX3 DC1 - 6 day w/ Holidays |  | Construction | Electrical | IGMP | Phase 1 | Construction | DH1100 | Level 1 | BAB |  |
| QTS-3941 |  | Gallery 1102 / Lineup D1100 // OFCI - L2 SET IN PLACE - Eq Type # - COD/ATS-210-A - Skid 1-3 | 1d | 2026-01-29 A | 2026-01-29 A | QTS-45801, QTS-33111 | 100% |  |  | QTS-PHX3 DC1 - 6 day w/ Holidays | 01ADMIN | Construction | Electrical | IGMP | Phase 1 | Construction | DH1100 | Level 1 | BAB |  |
| QTS-45811 |  | Gallery 1102 / Lineup D1100 // OFCI - L2 SET IN PLACE - Eq Type # - COD/ATS-210-A - Skid 4-6 | 1d | 2026-01-30 A | 2026-01-30 A | QTS-3941 | 100% |  |  | QTS-PHX3 DC1 - 6 day w/ Holidays | 01ADMIN | Construction | Electrical | IGMP | Phase 1 | Construction | DH1100 | Level 1 | BAB |  |
| QTS-2791 |  | Gallery 1102 / Lineup D1100 // Install Raceways from LV POD to COD | 7d | 2026-02-09 A | 2026-02-20 A | QTS-2781 SS, QTS-1731 | 100% | 2026-02-09 | 2026-02-16 | QTS-PHX3 DC1 - 6 day w/ Holidays | 01ADMIN | Construction | Electrical | IGMP | Phase 1 | Construction | DH1100 | Level 1 | BAB |  |
| QTS-8071 |  | Gallery 1102 / Lineup D1100 // Pull LV Cables from Reserve Bus to ATS | 2d | 2026-02-16 A | 2026-02-27 A | QTS-4991, QTS-6421 FF, QTS-2791 SS | 100% | 2026-02-16 | 2026-02-17 | QTS-PHX3 DC1 - 6 day w/ Holidays |  | Construction | Electrical | IGMP | Phase 1 | Construction | DH1100 | Level 1 | BAB |  |
| QTS-8971 |  | Gallery 1102 / Lineup D1100 // Terminate & Torque ATS | 1d | 2026-02-17 A | 2026-02-20 A | QTS-6421, QTS-8071 SS | 100% | 2026-02-17 | 2026-02-17 | QTS-PHX3 DC1 - 6 day w/ Holidays |  | Construction | Electrical | IGMP | Phase 1 | Construction | DH1100 | Level 1 | BAB |  |
| QTS-6421 |  | Gallery 1102 / Lineup D1100 // Pull LV Cables from POD to ATS | 1d | 2026-02-20 A | 2026-02-20 A | QTS-45811 FF+1d, QTS-13541, QTS-2791, QTS-3941 | 100% |  |  | QTS-PHX3 DC1 - 6 day w/ Holidays |  | Construction | Electrical | IGMP | Phase 1 | Construction | DH1100 | Level 1 | BAB |  |
| QTS-8981 |  | Gallery 1102 / Lineup D1100 // Terminate & Torque COD | 1d | 2026-02-25 A | 2026-02-25 A | QTS-8971 FF, QTS-6421 | 100% |  |  | QTS-PHX3 DC1 - 6 day w/ Holidays |  | Construction | Electrical | IGMP | Phase 1 | Construction | DH1100 | Level 1 | BAB |  |
|  | 1 | **D1100 Controls** |  | 2026-02-27 | 2026-04-15 |  |  |  |  |  |  |  |  |  |  |  |  |  |  |  |
| QTS-1005680 |  | DH 1100 / Chiller D11 // Terminate Controls | 4d | 2026-02-27 A | 2026-03-20 A | QTS-1371 SS | 100% | 2026-02-27 | 2026-03-03 | QTS-PHX3 DC1 - 6 day w/ Holidays | 01ADMIN | Construction | Electrical | GMP | Phase 1 | Construction | DH1100 |  | BAB |  |
| QTS-1005690 |  | DH 1100 / MOD-02-D11 // Wire Pull - Controls | 4d | 2026-02-28 A | 2026-03-06 A | QTS-1371 SS | 100% | 2026-02-27 | 2026-03-03 | QTS-PHX3 DC1 - 6 day w/ Holidays | 01ADMIN | Construction | Electrical | GMP | Phase 1 | Construction | DH1100 |  | BAB |  |
| QTS-1005700 |  | DH 1100 / COD-D11 // Wire Pull - Controls | 4d | 2026-02-28 A | 2026-03-06 A | QTS-1371 SS | 100% | 2026-02-27 | 2026-03-03 | QTS-PHX3 DC1 - 6 day w/ Holidays | 01ADMIN | Construction | Electrical | GMP | Phase 1 | Construction | DH1100 |  | BAB |  |
| QTS-1005710 |  | DH 1100 / POD-D11 // Wire Pull - Controls | 4d | 2026-02-28 A | 2026-03-04 A | QTS-1371 SS | 100% | 2026-02-27 | 2026-03-03 | QTS-PHX3 DC1 - 6 day w/ Holidays | 01ADMIN | Construction | Electrical | GMP | Phase 1 | Construction | DH1100 |  | BAB |  |
| QTS-1005720 |  | DH 1100 / GEN-D11 // Wire Pull - Controls | 4d | 2026-02-28 A | 2026-03-05 A | QTS-1371 SS | 100% | 2026-02-27 | 2026-03-03 | QTS-PHX3 DC1 - 6 day w/ Holidays | 01ADMIN | Construction | Electrical | GMP | Phase 1 | Construction | DH1100 |  | BAB |  |
| QTS-1006770 |  | DH 1100 / ATS-D11 // Wire Pull - Controls | 4d | 2026-02-28 A | 2026-03-06 A | QTS-1371 SS | 100% | 2026-02-27 | 2026-03-03 | QTS-PHX3 DC1 - 6 day w/ Holidays | 01ADMIN | Construction | Electrical | GMP | Phase 1 | Construction | DH1100 |  | BAB |  |
| QTS-1005760 |  | DH 1100 / GEN-D11 // Terminate Controls | 3d | 2026-03-02 A | 2026-03-05 A | QTS-1005720 FF | 100% | 2026-03-09 | 2026-03-11 | QTS-PHX3 DC1 - 6 day w/ Holidays | 01ADMIN | Construction | Electrical | GMP | Phase 1 | Construction | DH1100 |  | BAB |  |
| QTS-1005730 |  | DH 1100 / MOD-02-D11 // Terminate Controls | 1d | 2026-03-12 A | 2026-03-12 A | QTS-1005690 | 100% | 2026-03-19 | 2026-03-19 | QTS-PHX3 DC1 - 6 day w/ Holidays | 01ADMIN | Construction | Electrical | GMP | Phase 1 | Construction | DH1100 |  | BAB |  |
| QTS-1005750 |  | DH 1100 / POD-D11 // Terminate Controls | 1d | 2026-03-19 A | 2026-03-19 A | QTS-1005710 | 100% | 2026-04-15 | 2026-04-15 | QTS-PHX3 DC1 - 6 day w/ Holidays | 01ADMIN | Construction | Electrical | GMP | Phase 1 | Construction | DH1100 |  | BAB | Waiting on E2 optics |
| QTS-1005740 |  | DH 1100 / COD-D11 // Terminate Controls | 1d | 2026-04-15 A | 2026-04-15 A | QTS-1005700 | 100% |  |  | QTS-PHX3 DC1 - 6 day w/ Holidays | 01ADMIN | Construction | Electrical | GMP | Phase 1 | Construction | DH1100 |  | BAB | Waiting on E2 optics |
| QTS-1006780 |  | DH 1100 / ATS-D11 // Terminate Controls | 1d | 2026-04-15 A | 2026-04-15 A | QTS-1006770 | 100% |  |  | QTS-PHX3 DC1 - 6 day w/ Holidays | 01ADMIN | Construction | Electrical | GMP | Phase 1 | Construction | DH1100 |  | BAB | Waiting on E2 optics |
|  | 5 | **E1100 Lineup** |  | 2026-01-14 | 2026-04-15 |  |  |  |  |  |  |  |  |  |  |  |  |  |  |  |
| QTS-1741 |  | Gallery 1102 / Lineup E1100 // Install Hangers & Supports | 3d | 2026-01-14 A | 2026-01-16 A | QTS-1731 | 100% |  |  | QTS-PHX3 DC1 - 6 day w/ Holidays | 01ADMIN | Construction | Electrical | IGMP | Phase 1 | Construction | DH1100 | Level 1 | BAB |  |
| QTS-5011 |  | Gallery 1102 / Lineup E1100 // Set Reserve Busway Segment | 4d | 2026-01-28 A | 2026-02-01 A | QTS-50021, QTS-3951 FF | 100% | 2026-01-28 | 2026-01-31 | QTS-PHX3 DC1 - 6 day w/ Holidays |  | Construction | Electrical | IGMP | Phase 1 | Construction | DH1100 | Level 1 | BAB |  |
| QTS-3951 |  | Gallery 1102 / Lineup E1100 // OFCI - L2 SET IN PLACE - Eq Type # - COD/ATS-210-A - Skid 1-3 | 1d | 2026-01-29 A | 2026-01-29 A | QTS-45811, QTS-33151 | 100% |  |  | QTS-PHX3 DC1 - 6 day w/ Holidays | 01ADMIN | Construction | Electrical | IGMP | Phase 1 | Construction | DH1100 | Level 1 | BAB |  |
| QTS-45821 |  | Gallery 1102 / Lineup E1100 // OFCI - L2 SET IN PLACE - Eq Type # - COD/ATS-210-A - Skid 4-6 | 1d | 2026-01-30 A | 2026-01-30 A | QTS-3951 | 100% |  |  | QTS-PHX3 DC1 - 6 day w/ Holidays | 01ADMIN | Construction | Electrical | IGMP | Phase 1 | Construction | DH1100 | Level 1 | BAB |  |
| QTS-2801 |  | Gallery 1102 / Lineup E1100 // Install Raceways from LV POD to COD | 7d | 2026-02-10 A | 2026-02-13 A | QTS-2791 SS, QTS-1741 | 100% | 2026-02-10 | 2026-02-17 | QTS-PHX3 DC1 - 6 day w/ Holidays |  | Construction | Electrical | IGMP | Phase 1 | Construction | DH1100 | Level 1 | BAB |  |
| QTS-6431 |  | Gallery 1102 / Lineup E1100 // Pull LV Cables from POD to ATS | 1d | 2026-02-19 A | 2026-02-20 A | QTS-45821 FF+1d, QTS-13541, QTS-2801, QTS-3951 | 100% | 2026-02-19 | 2026-02-19 | QTS-PHX3 DC1 - 6 day w/ Holidays |  | Construction | Electrical | IGMP | Phase 1 | Construction | DH1100 | Level 1 | BAB |  |
| QTS-9001 |  | Gallery 1102 / Lineup E1100 // Terminate & Torque ATS | 1d | 2026-02-20 A | 2026-02-27 A | QTS-6431 FF, QTS-8091 FF | 100% | 2026-02-20 | 2026-02-20 | QTS-PHX3 DC1 - 6 day w/ Holidays |  | Construction | Electrical | IGMP | Phase 1 | Construction | DH1100 | Level 1 | BAB |  |
| QTS-8091 |  | Gallery 1102 / Lineup E1100 // Pull LV Cables from Reserve Bus to ATS | 2d | 2026-02-26 A | 2026-02-27 A | QTS-5011, QTS-6431, QTS-2801 | 100% |  |  | QTS-PHX3 DC1 - 6 day w/ Holidays |  | Construction | Electrical | IGMP | Phase 1 | Construction | DH1100 | Level 1 | BAB |  |
| QTS-9011 |  | Gallery 1102 / Lineup E1100 // Terminate & Torque COD | 1d | 2026-02-26 A | 2026-02-27 A | QTS-9001 SS+4d, QTS-6431 | 100% | 2026-02-26 | 2026-02-26 | QTS-PHX3 DC1 - 6 day w/ Holidays |  | Construction | Electrical | IGMP | Phase 1 | Construction | DH1100 | Level 1 | BAB |  |

| ID | WBS | Activity | Duration | Start | Finish | Predecessors | Complete | Planned start | Planned finish | Calendar | Allucent CSI Group | Project Section | Layton Discipline | Baseline | Phase-1-1 | Project Section-1 | Location | Contract | If Not Started or Finished Why? | Level |
| --- | --- | --- | --- | --- | --- | --- | --- | --- | --- | --- | --- | --- | --- | --- | --- | --- | --- | --- | --- | --- |
|  | 1 | **E1100 Controls** |  | 2026-02-28 | 2026-04-15 |  |  |  |  |  |  |  |  |  |  |  |  |  |  |  |
| QTS-1005780 |  | DH 1100 / MOD-02-E11 // Wire Pull - Controls | 4d | 2026-02-28 A | 2026-03-06 A | QTS-1371 SS | 100% | 2026-02-27 | 2026-03-03 | QTS-PHX3 DC1 - 6 day w/ Holidays | 01ADMIN | Construction | Electrical | GMP | Phase 1 | Construction | DH1100 | BAB |  |  |
| QTS-1005790 |  | DH 1100 / COD-E11 // Wire Pull - Controls | 4d | 2026-02-28 A | 2026-03-06 A | QTS-1371 SS | 100% | 2026-02-27 | 2026-03-03 | QTS-PHX3 DC1 - 6 day w/ Holidays | 01ADMIN | Construction | Electrical | GMP | Phase 1 | Construction | DH1100 | BAB |  |  |
| QTS-1005800 |  | DH 1100 / POD-E11 // Wire Pull - Controls | 4d | 2026-02-28 A | 2026-03-04 A | QTS-1371 SS | 100% | 2026-02-27 | 2026-03-03 | QTS-PHX3 DC1 - 6 day w/ Holidays | 01ADMIN | Construction | Electrical | GMP | Phase 1 | Construction | DH1100 | BAB |  |  |
| QTS-1005810 |  | DH 1100 / GEN-E11 // Wire Pull - Controls | 4d | 2026-02-28 A | 2026-03-05 A | QTS-1371 SS | 100% | 2026-02-27 | 2026-03-03 | QTS-PHX3 DC1 - 6 day w/ Holidays | 01ADMIN | Construction | Electrical | GMP | Phase 1 | Construction | DH1100 | BAB |  |  |
| QTS-1006750 |  | DH 1100 / ATS-E11 // Wire Pull - Controls | 4d | 2026-02-28 A | 2026-03-06 A | QTS-1371 SS | 100% | 2026-02-27 | 2026-03-03 | QTS-PHX3 DC1 - 6 day w/ Holidays | 01ADMIN | Construction | Electrical | GMP | Phase 1 | Construction | DH1100 | BAB |  |  |
| QTS-1005850 |  | DH 1100 / GEN-E11 // Terminate Controls | 4d | 2026-03-02 A | 2026-03-05 A | QTS-1005810 FF | 100% | 2026-03-09 | 2026-03-12 | QTS-PHX3 DC1 - 6 day w/ Holidays | 01ADMIN | Construction | Electrical | GMP | Phase 1 | Construction | DH1100 | BAB |  |  |
| QTS-1005860 |  | DH 1100 / Chiller E11 // Wire Pull - Controls | 4d | 2026-03-03 A | 2026-03-05 A | QTS-1371 SS | 100% | 2026-02-27 | 2026-03-03 | QTS-PHX3 DC1 - 6 day w/ Holidays | 01ADMIN | Construction | Electrical | GMP | Phase 1 | Construction | DH1100 | BAB |  |  |
| QTS-1005770 |  | DH 1100 / Chiller E11 // Terminate Controls | 4d | 2026-03-10 A | 2026-03-20 A | QTS-1005860 | 100% | 2026-03-10 | 2026-03-13 | QTS-PHX3 DC1 - 6 day w/ Holidays | 01ADMIN | Construction | Electrical | GMP | Phase 1 | Construction | DH1100 | BAB |  |  |
| QTS-1005820 |  | DH 1100 / MOD-02-E11 // Terminate Controls | 1d | 2026-03-12 A | 2026-03-12 A | QTS-1005780 | 100% | 2026-03-19 | 2026-03-19 | QTS-PHX3 DC1 - 6 day w/ Holidays | 01ADMIN | Construction | Electrical | GMP | Phase 1 | Construction | DH1100 | BAB |  |  |
| QTS-1005840 |  | DH 1100 / POD-E11 // Terminate Controls | 1d | 2026-03-19 A | 2026-03-19 A | QTS-1005800 | 100% | 2026-04-15 | 2026-04-15 | QTS-PHX3 DC1 - 6 day w/ Holidays | 01ADMIN | Construction | Electrical | GMP | Phase 1 | Construction | DH1100 | BAB | Waiting on E2 optics |  |
| QTS-1005830 |  | DH 1100 / COD-E11 // Terminate Controls | 1d | 2026-04-15 A | 2026-04-15 A | QTS-1005790 | 100% |  |  | QTS-PHX3 DC1 - 6 day w/ Holidays | 01ADMIN | Construction | Electrical | GMP | Phase 1 | Construction | DH1100 | BAB | Waiting on E2 optics |  |
| QTS-1006760 |  | DH 1100 / ATS-E11 // Terminate Controls | 1d | 2026-04-15 A | 2026-04-15 A | QTS-1006750 | 100% |  |  | QTS-PHX3 DC1 - 6 day w/ Holidays | 01ADMIN | Construction | Electrical | GMP | Phase 1 | Construction | DH1100 | BAB | Waiting on E2 optics |  |
|  | 6 | **F1100 Lineup** |  | 2026-01-17 | 2026-04-15 |  |  |  |  |  |  |  |  |  |  |  |  |  |  |  |
| QTS-1751 |  | Gallery 1102 / Lineup F1100 // Install Hangers & Supports | 3d | 2026-01-17 A | 2026-02-09 A | QTS-1741 | 100% | 2026-01-17 | 2026-01-21 | QTS-PHX3 DC1 - 6 day w/ Holidays | 01ADMIN | Construction | Electrical | IGMP | Phase 1 | Construction | DH1100 | BAB |  | Level 1 |
| QTS-5031 |  | Gallery 1102 / Lineup F1100 // Set Reserve Busway Segment | 4d | 2026-01-28 A | 2026-02-01 A | QTS-50021, QTS-2811 SS, QTS-3961 FF | 100% | 2026-01-28 | 2026-01-31 | QTS-PHX3 DC1 - 6 day w/ Holidays |  | Construction | Electrical | IGMP | Phase 1 | Construction | DH1100 | BAB |  | Level 1 |
| QTS-3961 |  | Gallery 1102 / Lineup F1100 // OFCI - L2 SET IN PLACE - Eq Type # - COD/ATS-210-A - Skid 1-3 | 1d | 2026-01-29 A | 2026-01-29 A | QTS-45821, QTS-33191 | 100% |  |  | QTS-PHX3 DC1 - 6 day w/ Holidays | 01ADMIN | Construction | Electrical | IGMP | Phase 1 | Construction | DH1100 | BAB |  | Level 1 |
| QTS-45831 |  | Gallery 1102 / Lineup F1100 // OFCI - L2 SET IN PLACE - Eq Type # - COD/ATS-210-A - Skid 4-6 | 1d | 2026-01-30 A | 2026-01-30 A | QTS-3961 | 100% |  |  | QTS-PHX3 DC1 - 6 day w/ Holidays | 01ADMIN | Construction | Electrical | IGMP | Phase 1 | Construction | DH1100 | BAB |  | Level 1 |
| QTS-2811 |  | Gallery 1102 / Lineup F1100 // Install Raceways from LV POD to COD | 7d | 2026-02-10 A | 2026-02-13 A | QTS-2801 SS, QTS-1751 | 100% | 2026-02-10 | 2026-02-17 | QTS-PHX3 DC1 - 6 day w/ Holidays |  | Construction | Electrical | IGMP | Phase 1 | Construction | DH1100 | BAB |  | Level 1 |
| QTS-6441 |  | Gallery 1102 / Lineup F1100 // Pull LV Cables from POD to ATS | 1d | 2026-02-20 A | 2026-02-27 A | QTS-45831 FF+1d, QTS-13541, QTS-2811 | 100% | 2026-02-20 | 2026-02-20 | QTS-PHX3 DC1 - 6 day w/ Holidays |  | Construction | Electrical | IGMP | Phase 1 | Construction | DH1100 | BAB |  | Level 1 |
| QTS-8111 |  | Gallery 1102 / Lineup F1100 // Pull LV Cables from Reserve Bus to ATS | 2d | 2026-02-27 A | 2026-03-02 A | QTS-5031, QTS-6441, QTS-2811 | 100% | 2026-02-27 | 2026-02-28 | QTS-PHX3 DC1 - 6 day w/ Holidays |  | Construction | Electrical | IGMP | Phase 1 | Construction | DH1100 | BAB |  | Level 1 |
| QTS-9031 |  | Gallery 1102 / Lineup F1100 // Terminate & Torque ATS | 1d | 2026-02-27 A | 2026-03-02 A | QTS-6441, QTS-8111 | 100% | 2026-02-27 | 2026-02-27 | QTS-PHX3 DC1 - 6 day w/ Holidays |  | Construction | Electrical | IGMP | Phase 1 | Construction | DH1100 | BAB |  | Level 1 |
| QTS-9041 |  | Gallery 1102 / Lineup F1100 // Terminate & Torque COD | 1d | 2026-03-25 A | 2026-03-31 A | QTS-9031 SS+4d, QTS-6441 | 100% | 2026-04-01 | 2026-04-01 | QTS-PHX3 DC1 - 6 day w/ Holidays |  | Construction | Electrical | IGMP | Phase 1 | Construction | DH1100 | BAB |  | Level 1 |
|  | 1 | **F1100 Controls** |  | 2026-02-28 | 2026-04-15 |  |  |  |  |  |  |  |  |  |  |  |  |  |  |  |
| QTS-1005880 |  | DH 1100 / MOD-02-F11 // Wire Pull - Controls | 4d | 2026-02-28 A | 2026-03-06 A | QTS-1371 SS | 100% | 2026-02-27 | 2026-03-03 | QTS-PHX3 DC1 - 6 day w/ Holidays | 01ADMIN | Construction | Electrical | GMP | Phase 1 | Construction | DH1100 | BAB |  |  |
| QTS-1005890 |  | DH 1100 / COD-F11 // Wire Pull - Controls | 4d | 2026-02-28 A | 2026-03-04 A | QTS-1371 SS | 100% | 2026-02-27 | 2026-03-03 | QTS-PHX3 DC1 - 6 day w/ Holidays | 01ADMIN | Construction | Electrical | GMP | Phase 1 | Construction | DH1100 | BAB |  |  |
| QTS-1005900 |  | DH 1100 / POD-F11 // Wire Pull - Controls | 4d | 2026-02-28 A | 2026-03-06 A | QTS-1371 SS | 100% | 2026-02-27 | 2026-03-03 | QTS-PHX3 DC1 - 6 day w/ Holidays | 01ADMIN | Construction | Electrical | GMP | Phase 1 | Construction | DH1100 | BAB |  |  |
| QTS-1005910 |  | DH 1100 / GEN-F11 // Wire Pull - Controls | 4d | 2026-02-28 A | 2026-03-05 A | QTS-1371 SS | 100% | 2026-02-27 | 2026-03-03 | QTS-PHX3 DC1 - 6 day w/ Holidays | 01ADMIN | Construction | Electrical | GMP | Phase 1 | Construction | DH1100 | BAB |  |  |
| QTS-1006730 |  | DH 1100 / ATS-F11 // Wire Pull - Controls | 4d | 2026-02-28 A | 2026-03-20 A | QTS-1371 SS | 100% | 2026-02-27 | 2026-03-03 | QTS-PHX3 DC1 - 6 day w/ Holidays | 01ADMIN | Construction | Electrical | GMP | Phase 1 | Construction | DH1100 | BAB |  |  |
| QTS-1005950 |  | DH 1100 / GEN-F11 // Terminate Controls | 4d | 2026-03-02 A | 2026-03-05 A | QTS-1005910 FF | 100% | 2026-03-09 | 2026-03-12 | QTS-PHX3 DC1 - 6 day w/ Holidays | 01ADMIN | Construction | Electrical | GMP | Phase 1 | Construction | DH1100 | BAB |  |  |
| QTS-1005960 |  | DH 1100 / Chiller F11 // Wire Pull - Controls | 4d | 2026-03-02 A | 2026-03-05 A | QTS-1371 SS | 100% | 2026-02-27 | 2026-03-03 | QTS-PHX3 DC1 - 6 day w/ Holidays | 01ADMIN | Construction | Electrical | GMP | Phase 1 | Construction | DH1100 | BAB |  |  |
| QTS-1005870 |  | DH 1100 / Chiller F11 // Terminate Controls | 5d | 2026-03-12 A | 2026-03-12 A | QTS-1005960 | 100% | 2026-03-18 | 2026-03-23 | QTS-PHX3 DC1 - 6 day w/ Holidays | 01ADMIN | Construction | Electrical | GMP | Phase 1 | Construction | DH1100 | BAB |  |  |
| QTS-1005920 |  | DH 1100 / MOD-02-F11 // Terminate Controls | 1d | 2026-03-12 A | 2026-03-12 A | QTS-1005880 | 100% | 2026-03-19 | 2026-03-19 | QTS-PHX3 DC1 - 6 day w/ Holidays | 01ADMIN | Construction | Electrical | GMP | Phase 1 | Construction | DH1100 | BAB |  |  |
| QTS-1005940 |  | DH 1100 / POD-F11 // Terminate Controls | 1d | 2026-03-19 A | 2026-03-19 A | QTS-1005900 | 100% | 2026-04-15 | 2026-04-15 | QTS-PHX3 DC1 - 6 day w/ Holidays | 01ADMIN | Construction | Electrical | GMP | Phase 1 | Construction | DH1100 | BAB | Waiting on E2 optics |  |
| QTS-1005930 |  | DH 1100 / COD-F11 // Terminate Controls | 1d | 2026-04-15 A | 2026-04-15 A | QTS-1005890 | 100% |  |  | QTS-PHX3 DC1 - 6 day w/ Holidays | 01ADMIN | Construction | Electrical | GMP | Phase 1 | Construction | DH1100 | BAB | Waiting on E2 optics |  |
| QTS-1006740 |  | DH 1100 / ATS-F11 // Terminate Controls | 1d | 2026-04-15 A | 2026-04-15 A | QTS-1006730 | 100% |  |  | QTS-PHX3 DC1 - 6 day w/ Holidays | 01ADMIN | Construction | Electrical | GMP | Phase 1 | Construction | DH1100 | BAB | Waiting on E2 optics |  |

| ID | WBS | Activity | Duration | Start | Finish | Predecessors | Complete | Planned start | Planned finish | Calendar | Allucent CSI Group | Project Section | Layton Discipline | Baseline | Phase-1-1 | Project Section-1 | Location | Level | Contract | If Not Started or Finished Why? | Phase-1 |
| --- | --- | --- | --- | --- | --- | --- | --- | --- | --- | --- | --- | --- | --- | --- | --- | --- | --- | --- | --- | --- | --- |
|  | 9 | **R1100 Lineup** |  | 2025-12-12 | 2026-04-01 |  |  |  |  |  |  |  |  |  |  |  |  |  |  |  |  |
| QTS-1701 |  | Gallery 1102 / Lineup R1100 // Install Hangers & Supports | 3d | 2025-12-12 A | 2025-12-16 A | QTS-13341 SS+1d | 100% |  |  |  | 01ADMIN | Construction | Electrical | IGMP | Phase 1 | Construction | DH1100 | Level 1 | BAB |  |  |
| QTS-2761 |  | Gallery 1102 / Lineup R1100 // Install Raceways from LV POD to Reserve Busway | 5d | 2026-01-13 A | 2026-02-10 A | QTS-1701 | 100% | 2026-01-13 | 2026-01-17 | QTS-PHX3 DC1 - 6 day w/ Holidays | 01ADMIN | Construction | Electrical | IGMP | Phase 1 | Construction | DH1100 | Level 1 | BAB |  |  |
| QTS-3911 |  | Gallery 1102 / Lineup R1100 // Set Reserve Busway Segment | 4d | 2026-02-01 A | 2026-02-02 A | QTS-50021, QTS-2761 | 100% | 2026-02-02 | 2026-02-05 | QTS-PHX3 DC1 - 6 day w/ Holidays | 01ADMIN | Construction | Electrical | IGMP | Phase 1 | Construction | DH1100 | Level 1 | BAB |  |  |
| QTS-6191 |  | Gallery 1102 / Lineup R1100 // Pull LV Cables from POD to Reserve Busway | 4d | 2026-02-24 A | 2026-03-25 A | QTS-3911, QTS-2761 | 100% | 2026-02-24 | 2026-02-27 | QTS-PHX3 DC1 - 6 day w/ Holidays | 01ADMIN | Construction | Electrical | IGMP | Phase 1 | Construction | DH1100 | Level 1 | BAB |  |  |
| QTS-7081 |  | Gallery 1102 / Lineup R1100 // Terminate Reserve Busway | 2d | 2026-03-26 A | 2026-03-27 A | QTS-6191 | 100% | 2026-04-02 | 2026-04-03 | QTS-PHX3 DC1 - 6 day w/ Holidays |  | Construction | Electrical | IGMP | Phase 1 | Construction | DH1100 | Level 1 | BAB |  |  |
|  | 1 | **R1100 Controls** |  | 2026-02-28 | 2026-04-01 |  |  |  |  |  |  |  |  |  |  |  |  |  |  |  |  |
| QTS-1005980 |  | DH 1100 / MOD-02-R11 // Wire Pull - Controls | 4d | 2026-02-28 A | 2026-03-09 A | QTS-1371 SS | 100% | 2026-02-27 | 2026-03-03 | QTS-PHX3 DC1 - 6 day w/ Holidays | 01ADMIN | Construction | Electrical | GMP | Phase 1 | Construction | DH1100 |  | BAB |  |  |
| QTS-1006000 |  | DH 1100 / POD-R11 // Wire Pull - Controls | 4d | 2026-02-28 A | 2026-03-09 A | QTS-1371 SS | 100% | 2026-02-27 | 2026-03-03 | QTS-PHX3 DC1 - 6 day w/ Holidays | 01ADMIN | Construction | Electrical | GMP | Phase 1 | Construction | DH1100 |  | BAB |  |  |
| QTS-1006010 |  | DH 1100 / GEN-R11 // Wire Pull - Controls | 4d | 2026-02-28 A | 2026-03-05 A | QTS-1371 SS | 100% | 2026-02-27 | 2026-03-03 | QTS-PHX3 DC1 - 6 day w/ Holidays | 01ADMIN | Construction | Electrical | GMP | Phase 1 | Construction | DH1100 |  | BAB |  |  |
| QTS-1006060 |  | DH 1100 / GEN-R11 // Terminate Controls | 4d | 2026-03-02 A | 2026-03-05 A | QTS-1006010 FF | 100% | 2026-03-09 | 2026-03-12 | QTS-PHX3 DC1 - 6 day w/ Holidays | 01ADMIN | Construction | Electrical | GMP | Phase 1 | Construction | DH1100 |  | BAB |  |  |
| QTS-1006030 |  | DH 1100 / MOD-02-R11 // Terminate Controls | 1d | 2026-03-13 A | 2026-03-13 A | QTS-1005980 | 100% | 2026-03-19 | 2026-03-19 | QTS-PHX3 DC1 - 6 day w/ Holidays | 01ADMIN | Construction | Electrical | GMP | Phase 1 | Construction | DH1100 |  | BAB |  |  |
| QTS-1005970 |  | DH 1100 / Chiller R11 // Terminate Controls | 1d | 2026-03-16 A | 2026-03-20 A | QTS-1371 SS | 100% | 2026-03-18 | 2026-03-18 | QTS-PHX3 DC1 - 6 day w/ Holidays | 01ADMIN | Construction | Electrical | GMP | Phase 1 | Construction | DH1100 |  | BAB |  |  |
| QTS-1006050 |  | DH 1100 / POD-R11 // Terminate Controls | 1d | 2026-04-01 A | 2026-04-01 A | QTS-1006000 | 100% |  |  | QTS-PHX3 DC1 - 6 day w/ Holidays | 01ADMIN | Construction | Electrical | GMP | Phase 1 | Construction | DH1100 |  | BAB | Waiting on E2 optics |  |
|  | 4 | **DH 1100 / Rooftop Mechanical** |  | 2025-08-12 | 2026-08-19 |  |  |  |  |  |  |  |  |  |  |  |  |  |  |  |  |
| QTS-1631 |  | DH 1100 / Rooftop Mechanical // OFCI - L2 SET IN PLACE - Eq Type # - Chiller #1RT40 - 7 units | 5d | 2025-08-12 A | 2025-08-12 A | QTS-20761, QTS-35391, QTS-35381, QTS-35371, QTS-35361, QTS-35351, QTS-35341, QTS-35331, QTS-19811 | 100% | 2025-08-18 | 2025-08-22 |  | 01ADMIN | Construction | Mechanical | IGMP | Phase 1 | Construction | DH1100 | Level 1 | BAB |  |  |
| QTS-1661 |  | DH 1100 / Rooftop Mechanical // Set Doghouse Curbs | 8d | 2025-09-04 A | 2025-09-08 A | QTS-20771 | 100% | 2025-09-04 | 2025-09-15 |  | 01ADMIN | Construction | Mechanical | IGMP | Phase 1 | Construction | DH1100 | Level 1 | BAB |  |  |
| QTS-1641 |  | DH 1100 / Rooftop Mechanical // Set Doghouses | 5d | 2025-09-09 A | 2025-09-16 A | QTS-19911, QTS-1661 | 100% | 2025-09-16 | 2025-09-22 |  | 01ADMIN | Construction | Mechanical | IGMP | Phase 1 | Construction | DH1100 | Level 1 | BAB |  |  |
| QTS-100360 |  | DH 1100 / Rooftop Mechanical // Install Roof Protection | 2d | 2025-10-22 A | 2025-10-23 A | QTS-42661 | 100% |  |  |  | 01ADMIN | Construction | Mechanical | IGMP |  |  | DH2100 | Level 2 | BAB |  | Phase 1 |
| QTS-100370 |  | DH 1100 / Rooftop Mechanical // Install 12" CHWS/R Run-Outs to RPH Vaults | 13d | 2025-10-24 A | 2025-11-11 A | QTS-100360 | 100% |  |  |  | 01ADMIN | Construction | Mechanical | IGMP |  |  | DH2100 | Level 2 | BAB |  | Phase 1 |
| QTS-100380 |  | DH 1100 / Rooftop Mechanical // Assemble & Install CHWS/R Piping from Mainline Piping to ACC Deck | 23d | 2025-10-24 A | 2025-12-19 A | QTS-100370 SS | 100% | 2025-10-24 | 2025-11-25 |  | 01ADMIN | Construction | Mechanical | IGMP |  |  | DH2100 | Level 2 | BAB |  | Phase 1 |
| QTS-100390 |  | DH 1100 / Rooftop Mechanical // Assemble & Install CHW Pump Assemblies at ACC Deck to Chillers | 28d | 2025-10-24 A | 2025-12-10 A | QTS-100380 SS | 100% | 2025-10-24 | 2025-12-04 |  | 01ADMIN | Construction | Mechanical | IGMP |  |  | DH2100 | Level 2 | BAB |  | Phase 1 |
| QTS-100410 |  | DH 1100 / Rooftop Mechanical // Install Mainline Piping from RPH Vaults to Galleries (Risers) L2 / L1 | 10d | 2025-11-12 A | 2025-11-25 A | QTS-100390 SS+8d | 100% | 2025-11-05 | 2025-11-18 |  | 01ADMIN | Construction | Mechanical | IGMP |  |  | DH2100 | Level 2 | BAB |  | Phase 1 |
| QTS-100430 |  | DH 1100 / Rooftop Mechanical // Install Grating, Toe Kicks, Hand Rails for TES Tanks | 4d | 2025-11-17 A | 2025-11-18 A | QTS-100330 | 100% | 2025-11-17 | 2025-11-20 |  | 01ADMIN | Construction | Mechanical | IGMP |  |  | DH2100 | Level 2 | BAB |  | Phase 1 |
| QTS-100440 |  | DH 1100 / Rooftop Mechanical // Set RPH Vault Housings | 5d | 2025-11-21 A | 2025-12-01 A | QTS-100410 FF+2d | 100% |  |  |  | 01ADMIN | Construction | Mechanical | IGMP |  |  | DH2100 | Level 2 | BAB |  | Phase 1 |
| QTS-100450 |  | DH 1100 / Rooftop Mechanical // OFCI - ROOF SET IN PLACE - Eq Type # - TES Tanks - 7 units | 1d | 2025-12-23 A | 2025-12-23 A | QTS-100200, QTS-100430 | 100% |  |  |  | 01ADMIN | Construction | Mechanical | IGMP |  |  | DH2100 | Level 2 | BAB |  | Phase 1 |
| QTS-3411 |  | DH 1100 / Rooftop Mechanical // Set Vertical Inline Centrifugal Pumps | 5d | 2025-12-23 A | 2025-12-23 A | QTS-100390 SS, QTS-21241, QTS-1631 | 100% | 2026-01-21 | 2026-01-26 | QTS-PHX3 DC1 - 6 day w/ Holidays | 01ADMIN | Construction | Mechanical | IGMP | Phase 1 | Construction | DH1100 | Level 1 | BAB |  |  |
| QTS-1681 |  | DH 1100 / Rooftop Mechanical // OFCI - L2 SET IN PLACE - Eq Type # - DOAS-RT1100 - 2 units | 2d | 2026-01-12 A | 2026-01-13 A | QTS-21651, QTS-25381, QTS-22261, QTS-20771 | 100% |  |  | QTS-PHX3 DC1 - 6 day w/ Holidays | 01ADMIN | Construction | Mechanical | IGMP | Phase 1 | Construction | DH1100 | Level 1 | BAB |  |  |
| QTS-100460 |  | DH 1100 / Rooftop Mechanical // Finalize Detailing for TES Tank CHW Piping/ Fabrication | 7d | 2026-01-21 A | 2026-02-04 A | QTS-100450 | 100% | 2026-01-21 | 2026-01-28 | QTS-PHX3 DC1 - 6 day w/ Holidays | 01ADMIN | Construction | Mechanical | IGMP |  |  | DH2100 | Level 2 | BAB |  | Phase 1 |
| QTS-100480 |  | DH 1100 / Rooftop Mechanical // Pressure Test (Air) Industrial Loop (L1) | 1d | 2026-02-02 A | 2026-02-02 A | QTS-15441, QTS-16231, QTS-100410 | 100% |  |  | QTS-PHX3 DC1 - 7 day No Holidays | 01ADMIN | Construction | Mechanical | IGMP |  |  | DH2100 | Level 2 | BAB |  | Phase 1 |
| QTS-100490 |  | DH 1100 / Rooftop Mechanical // Pressure Test (Air) Industrial Loop (L2) | 1d | 2026-02-02 A | 2026-02-02 A | QTS-100480 | 100% |  |  | QTS-PHX3 DC1 - 7 day No Holidays | 01ADMIN | Construction | Mechanical | IGMP |  |  | DH2100 | Level 2 | BAB |  | Phase 1 |
| QTS-100470 |  | DH 1100 / Rooftop Mechanical // Install CHW Piping - 7 Units | 10d | 2026-02-03 A | 2026-02-23 A | QTS-100440, QTS-100460 FF+8d | 100% | 2026-02-03 | 2026-02-13 | QTS-PHX3 DC1 - 6 day w/ Holidays | 01ADMIN | Construction | Mechanical | IGMP |  |  | DH2100 | Level 2 | BAB |  | Phase 1 |
| QTS-50131 |  | DH 1100 / Rooftop Mechanical // Rough In Plumbing from to DOAS | 1d | 2026-02-18 A | 2026-02-23 A | QTS-1681 | 100% | 2026-02-18 | 2026-02-18 | QTS-PHX3 DC1 - 6 day w/ Holidays | 01ADMIN | Construction | Mechanical | DC | Phase 1 | Construction | FOH | Roof | BAB |  |  |
| QTS-100500 |  | DH 1100 / Rooftop Mechanical // Pressure Test (Air) Industrial Loop (Roof) | 1d | 2026-02-24 A | 2026-02-24 A | QTS-100490, QTS-100470 | 100% |  |  | QTS-PHX3 DC1 - 6 day w/ Holidays | 01ADMIN | Construction | Mechanical | IGMP |  |  | DH2100 | Level 2 | BAB |  | Phase 1 |
| QTS-1005400 |  | DH 1100 / Rooftop Mechanical // Fill System | 3d | 2026-02-25 A | 2026-02-27 A | QTS-100500 | 100% |  |  | QTS-PHX3 DC1 - 6 day w/ Holidays | 01ADMIN | Construction | Mechanical | IGMP |  |  | DH2100 | Level 2 | BAB |  | Phase 1 |
| QTS-100520 |  | DH 1100 / Rooftop Mechanical // Hydro-Test (Water) Industrial Loop (L1) | 1d | 2026-03-02 A | 2026-03-02 A | QTS-100490, QTS-100500, QTS-1005400 | 100% |  |  | QTS-PHX3 DC1 - 6 day w/ Holidays | 01ADMIN | Construction | Mechanical | IGMP |  |  | DH2100 | Level 2 | BAB |  | Phase 1 |
| QTS-100530 |  | DH 1100 / Rooftop Mechanical // Hydro-Test (Water) Industrial Loop (L2) | 1d | 2026-03-03 A | 2026-03-03 A | QTS-100520 | 100% |  |  | QTS-PHX3 DC1 - 6 day w/ Holidays | 01ADMIN | Construction | Mechanical | IGMP |  |  | DH2100 | Level 2 | BAB |  | Phase 1 |
| QTS-100550 |  | DH 1100 / Rooftop Mechanical // Fill and Flush Industrial Loop (Zone 1 - All Levels) | 10d | 2026-03-04 A | 2026-03-30 A | QTS-100530 | 100% | 2026-03-04 | 2026-03-13 | QTS-PHX3 DC1 - 7 day No Holidays | 01ADMIN | Construction | Mechanical | IGMP |  |  | DH2100 | Level 2 | BAB |  | Phase 1 |
| QTS-100400 |  | DH 1100 / Rooftop Mechanical // Rough In Condensate Drain from DOAS | 2d | 2026-03-30 A | 2026-03-31 A | QTS-50131, QTS-1681 | 100% |  |  | QTS-PHX3 DC1 - 6 day w/ Holidays | 01ADMIN | Construction | Mechanical | IGMP |  |  | DH2100 | Level 2 | BAB |  | Phase 1 |
| QTS-50141 |  | DH 1100 / Rooftop Mechanical // Rough In Power from to DOAS | 3d | 2026-04-22 A | 2026-04-24 A | QTS-50131 | 100% |  |  | QTS-PHX3 DC1 - 6 day w/ Holidays | 01ADMIN | Construction | Mechanical | DC | Phase 1 | Construction | FOH | Roof | BAB |  |  |

Notes:
- QTS-2761: allucent_notes_20251230_164549: David Wiltberger on 2025-12-30 15:49: impacted by corridor / allucent_notes: 2025-12-30 15:49 - User: David Wiltberger - Date Added: 2025-12-30 15:49 - Note: impacted by corridor
- QTS-1631: allucent_notes: David Wiltberger on 2025-08-12 10:08: started early / John Capriotti on 2025-08-12 10:08: DH 1100 Chiller sets started 8/12, following DH 2100 sets completing. / John Capriotti on 2025-08-12 10:08: DH 1100 Chillers sets continuing 8/12 and plan to be completed 8/13. / John Capriotti on 2025-08-12 15:08: Chiller set on 8/12. / allucent_notes: 2025-08-12 10:08 - User: David Wiltberger - Date Added: 2025-08-12 10:08 - Note: started early / 2025-08-12 10:08 - User: John Capriotti - Date Added: 2025-08-12 10:08 - Note: DH 1100 Chiller sets started 8/12, following DH 2100 sets completing. / 2025-
- QTS-100360: allucent_notes_20251014_152335: David Wiltberger on 2025-08-19 09:08: changed pick order / David Wiltberger on 2025-09-02 10:09: Moving to accommodate roofing in Zone 1 / David Wiltberger on 2025-09-24 04:09: BAM not completed Potential Delay / David Wiltberger on 2025-09-30 12:09: BAM did not complete / David Wiltberger on 2025-10-14 10:10: set on recovery schedule / allucent_notes: David Wiltberger on 2025-08-19 09:08: changed pick order / allucent_notes: 2025-08-19 09:08 - User: David Wiltberger - Date Added: 2025-08-19 09:08 - Note: changed pick order / 2025-09-02 10:09 - User: David Wiltberger - Date Added: 2025-09-02 10:09 - Note: Moving to accommodate roofing in Zone 1 / 2025-09-24 04:09 - User: Dav
- QTS-100370: allucent_notes_20251014_152335: David Wiltberger on 2025-08-19 09:08: changed pick order / David Wiltberger on 2025-09-02 10:09: Moving to accommodate roofing in Zone 1 / David Wiltberger on 2025-09-24 04:09: BAM not completed Potential Delay / David Wiltberger on 2025-09-30 12:09: BAM did not complete / David Wiltberger on 2025-10-14 10:10: set on recovery schedule / allucent_notes: David Wiltberger on 2025-08-19 09:08: changed pick order / allucent_notes: 2025-08-19 09:08 - User: David Wiltberger - Date Added: 2025-08-19 09:08 - Note: changed pick order / 2025-09-02 10:09 - User: David Wiltberger - Date Added: 2025-09-02 10:09 - Note: Moving to accommodate roofing in Zone 1 / 2025-09-24 04:09 - User: Dav
- QTS-100380: allucent_notes_20251216_165335: David Wiltberger on 2025-12-01 10:14: Having to crane up piping. Area impacted from setting TES tanks / allucent_notes_20251209_203830: David Wiltberger on 2025-12-01 10:14: Having to crane up piping. Area impacted from setting TES tanks / allucent_notes_20251202_153722: David Wiltberger on 2025-12-01 10:14: Having to crane up piping. Area impacted from setting TES tanks / allucent_notes_20251014_152335: David Wiltberger on 2025-08-19 09:08: changed pick order / David Wiltberger on 2025-09-02 10:09: Moving to accommodate roofing in Zone 1 / David Wiltberger on 2025-09-24 04:09: BAM not completed Potential Delay / David Wiltberger on 2025-09-30 12:09: BAM did not complete / David Wiltberger on 2025-10-14 10:10: set on recovery schedule / allucent_notes: David Wiltberger on 2025-08-19 09:08: changed pick order / allucent_notes_20251230_164549: David Wiltberger on 2025-12-01 10:14: Having to crane up piping. Area impacted from setting TES tanks / allucent_notes: 2025-12-01 10:14 - User: David Wiltberger - Date Added: 2025-12-01 10:14 - Note: Having to crane up piping. Area impacted from setting TES tanks
- QTS-100390: allucent_notes_20251216_165335: Jason Johnston on 2025-12-09 20:30: Need update from team / allucent_notes_20251209_203830: Jason Johnston on 2025-12-09 20:30: Need update from team / allucent_notes_20251014_152335: David Wiltberger on 2025-08-19 09:08: changed pick order / David Wiltberger on 2025-09-02 10:09: Moving to accommodate roofing in Zone 1 / David Wiltberger on 2025-09-24 04:09: BAM not completed Potential Delay / David Wiltberger on 2025-09-30 12:09: BAM did not complete / David Wiltberger on 2025-10-14 10:10: set on recovery schedule / allucent_notes: David Wiltberger on 2025-08-19 09:08: changed pick order / allucent_notes: 2025-12-09 20:30 - User: Jason Johnston - Date Added: 2025-12-09 20:30 - Note: Need update from team
- QTS-100410: allucent_notes_20251202_153722: Jason Johnston on 2025-11-11 16:11: Need update / allucent_notes_20251118_192630: Jason Johnston on 2025-11-11 16:11: Need update / allucent_notes_20251111_182405: Jason Johnston on 2025-11-11 16:11: Need update / allucent_notes_20251014_152335: David Wiltberger on 2025-08-19 09:08: changed pick order / David Wiltberger on 2025-09-02 10:09: Moving to accommodate roofing in Zone 1 / David Wiltberger on 2025-09-24 04:09: BAM not completed Potential Delay / David Wiltberger on 2025-09-30 12:09: BAM did not complete / David Wiltberger on 2025-10-14 10:10: set on recovery schedule / allucent_notes: David Wiltberger on 2025-08-19 09:08: changed pick order / allucent_notes: 2025-11-11 16:11 - User: Jason Johnston - Date Added: 2025-11-11 16:11 - Note: Need update
- QTS-100430: allucent_notes_20251118_192630: David Wiltberger on 2025-11-17 16:11: out of sequence / allucent_notes_20251014_152335: David Wiltberger on 2025-08-19 09:08: changed pick order / David Wiltberger on 2025-09-02 10:09: Moving to accommodate roofing in Zone 1 / David Wiltberger on 2025-09-24 04:09: BAM not completed Potential Delay / David Wiltberger on 2025-09-30 12:09: BAM did not complete / David Wiltberger on 2025-10-14 10:10: set on recovery schedule / allucent_notes: David Wiltberger on 2025-08-19 09:08: changed pick order / allucent_notes: 2025-11-17 16:11 - User: David Wiltberger - Date Added: 2025-11-17 16:11 - Note: out of sequence
- QTS-100440: allucent_notes_20251014_152335: David Wiltberger on 2025-08-19 09:08: changed pick order / David Wiltberger on 2025-09-02 10:09: Moving to accommodate roofing in Zone 1 / David Wiltberger on 2025-09-24 04:09: BAM not completed Potential Delay / David Wiltberger on 2025-09-30 12:09: BAM did not complete / David Wiltberger on 2025-10-14 10:10: set on recovery schedule / allucent_notes: David Wiltberger on 2025-08-19 09:08: changed pick order / allucent_notes: 2025-08-19 09:08 - User: David Wiltberger - Date Added: 2025-08-19 09:08 - Note: changed pick order / 2025-09-02 10:09 - User: David Wiltberger - Date Added: 2025-09-02 10:09 - Note: Moving to accommodate roofing in Zone 1 / 2025-09-24 04:09 - User: Dav
- QTS-100450: allucent_notes_20251014_152335: David Wiltberger on 2025-08-19 09:08: changed pick order / David Wiltberger on 2025-09-02 10:09: Moving to accommodate roofing in Zone 1 / David Wiltberger on 2025-09-24 04:09: BAM not completed Potential Delay / David Wiltberger on 2025-09-30 12:09: BAM did not complete / David Wiltberger on 2025-10-14 10:10: set on recovery schedule / allucent_notes: David Wiltberger on 2025-08-19 09:08: changed pick order / allucent_notes: 2025-08-19 09:08 - User: David Wiltberger - Date Added: 2025-08-19 09:08 - Note: changed pick order / 2025-09-02 10:09 - User: David Wiltberger - Date Added: 2025-09-02 10:09 - Note: Moving to accommodate roofing in Zone 1 / 2025-09-24 04:09 - User: Dav
- QTS-3411: allucent_notes_20251216_165335: David Wiltberger on 2025-08-19 09:08: Set different order for lift / David Wiltberger on 2025-08-26 06:08: Need to set sequence to start after 2100 set / David Wiltberger on 2025-09-02 10:09: Moving date to accommodate roofing in Zone 1 / David Wiltberger on 2025-10-14 10:10: Set on recovery schedule / David Wiltberger on 2025-12-01 10:15: Work inpacted by installing TES tanks / allucent_notes_20251209_203830: David Wiltberger on 2025-08-19 09:08: Set different order for lift / David Wiltberger on 2025-08-26 06:08: Need to set sequence to start after 2100 set / David Wiltberger on 2025-09-02 10:09: Moving date to accommodate roofing in Zone 1 / David Wiltberger on 2025-10-14 10:10: Set on recovery schedule / David Wiltberger on 2025-12-01 10:15: Work inpacted by installing TES tanks / allucent_notes_20251202_153722: David Wiltberger on 2025-08-19 09:08: Set different order for lift / David Wiltberger on 2025-08-26 06:08: Need to set sequence to start after 2100 set / David Wiltberger on 2025-09-02 10:09: Moving date to accommodate roofing in Zone 1 / David Wiltberger on 2025-10-14 10:10: Set on recovery schedule / David Wiltberger on 2025-12-01 10:15: Work inpacted by installing TES tanks / allucent_notes_20251118_192630: David Wiltberger on 2025-08-19 09:08: Set different order for lift / David Wiltberger on 2025-08-26 06:08: Need to set sequence to start after 2100 set / David Wiltberger on 2025-09-02 10:09: Moving date to accommodate roofing in Zone 1 / David Wiltberger on 2025-10-14 10:10: Set on recovery schedule / allucent_notes_20251111_182405: David Wiltberger on 2025-08-19 09:08: Set different order for lift / David Wiltberger on 2025-08-26 06:08: Need to set sequence to start after 2100 set / David Wiltberger on 2025-09-02 10:09: Moving date to accommodate roofing in Zone 1 / David Wiltberger on 2025-10-14 10:10: Set on recovery schedule / allucent_notes_20251104_160200: David Wiltberger on 2025-08-19 09:08: Set different order for lift / David Wiltberger on 2025-08-26 06:08: Need to set sequence to start after 2100 set / David Wiltberger on 2025-09-02 10:09: Moving date to accommodate roofing in Zone 1 / David Wiltberger on 2025-10-14 10:10: Set on recovery schedule / allucent_notes_20251028_163138: David Wiltberger on 2025-08-19 09:08: Set different order for lift / David Wiltberger on 2025-08-26 06:08: Need to set sequence to start after 2100 set / David Wiltberger on 2025-09-02 10:09: Moving date to accommodate roofing in Zone 1 / David Wiltberger on 2025-10-14 10:10: Set on recovery schedule / allucent_notes_20251027_224008: David Wiltberger on 2025-08-19 09:08: Set different order for lift / David Wiltberger on 2025-08-26 06:08: Need to set sequence to start after 2100 set / David Wiltberger on 2025-09-02 10:09: Moving date to accommodate roofing in Zone 1 / David Wiltberger on 2025-10-14 10:10: Set on recovery schedule / allucent_notes_20251021_145627: David Wiltberger on 2025-08-19 09:08: Set different order for lift / David Wiltberger on 2025-08-26 06:08: Need to set sequence to start after 2100 set / David Wiltberger on 2025-09-02 10:09: Moving date to accommodate roofing in Zone 1 / David Wiltberger on 2025-10-14 10:10: Set on recovery schedule / allucent_notes_20251014_152335: David Wiltberger on 2025-08-19 09:08: Set different order for lift / David Wiltberger on 2025-08-26 06:08: Need to set sequence to start after 2100 set / David Wiltberger on 2025-09-02 10:09: Moving date to accommodate roofing in Zone 1 / David Wiltberger on 2025-10-14 10:10: Set on recovery schedule / allucent_notes: David Wiltberger on 2025-08-19 09:08: Set different order for lift / allucent_notes_20251230_164549: David Wiltberger on 2025-08-19 09:08: Set different order for lift / David Wiltberger on 2025-08-26 06:08: Need to set sequence to start after 2100 set / David Wiltberger on 2025-09-02 10:09: Moving date to accommodate roofing in Zone 1 / David Wiltberger on 2025-10-14 10:10: Set on recovery schedule / David Wiltberger on 2025-12-01 10:15: Work inpacted by installing TES tanks / allucent_notes: 2025-08-19 09:08 - User: David Wiltberger - Date Added: 2025-08-19 09:08 - Note: Set different order for lift / 2025-08-26 06:08 - User: David Wiltberger - Date Added: 2025-08-26 06:08 - Note: Need to set sequence to start after 2100 set / 2025-09-02 10
- QTS-1681: allucent_notes_20251230_164549: David Wiltberger on 2025-12-30 16:02: crane access limited / allucent_notes: 2025-12-30 16:02 - User: David Wiltberger - Date Added: 2025-12-30 16:02 - Note: crane access limited
- QTS-100460: allucent_notes_20251014_152335: David Wiltberger on 2025-08-19 09:08: changed pick order / David Wiltberger on 2025-09-02 10:09: Moving to accommodate roofing in Zone 1 / David Wiltberger on 2025-09-24 04:09: BAM not completed Potential Delay / David Wiltberger on 2025-09-30 12:09: BAM did not complete / David Wiltberger on 2025-10-14 10:10: set on recovery schedule / allucent_notes: David Wiltberger on 2025-08-19 09:08: changed pick order / allucent_notes_20251230_164549: David Wiltberger on 2025-12-30 16:03: put tanks on backwards / allucent_notes: 2025-12-30 16:03 - User: David Wiltberger - Date Added: 2025-12-30 16:03 - Note: put tanks on backwards
- QTS-100480: allucent_notes_20251014_152335: David Wiltberger on 2025-08-19 09:08: changed pick order / David Wiltberger on 2025-09-02 10:09: Moving to accommodate roofing in Zone 1 / David Wiltberger on 2025-09-24 04:09: BAM not completed Potential Delay / David Wiltberger on 2025-09-30 12:09: BAM did not complete / David Wiltberger on 2025-10-14 10:10: set on recovery schedule / allucent_notes: David Wiltberger on 2025-08-19 09:08: changed pick order / allucent_notes: 2025-08-19 09:08 - User: David Wiltberger - Date Added: 2025-08-19 09:08 - Note: changed pick order / 2025-09-02 10:09 - User: David Wiltberger - Date Added: 2025-09-02 10:09 - Note: Moving to accommodate roofing in Zone 1 / 2025-09-24 04:09 - User: Dav
- QTS-100490: allucent_notes_20251014_152335: David Wiltberger on 2025-08-19 09:08: changed pick order / David Wiltberger on 2025-09-02 10:09: Moving to accommodate roofing in Zone 1 / David Wiltberger on 2025-09-24 04:09: BAM not completed Potential Delay / David Wiltberger on 2025-09-30 12:09: BAM did not complete / David Wiltberger on 2025-10-14 10:10: set on recovery schedule / allucent_notes: David Wiltberger on 2025-08-19 09:08: changed pick order / allucent_notes: 2025-08-19 09:08 - User: David Wiltberger - Date Added: 2025-08-19 09:08 - Note: changed pick order / 2025-09-02 10:09 - User: David Wiltberger - Date Added: 2025-09-02 10:09 - Note: Moving to accommodate roofing in Zone 1 / 2025-09-24 04:09 - User: Dav
- QTS-100470: allucent_notes_20251014_152335: David Wiltberger on 2025-08-19 09:08: changed pick order / David Wiltberger on 2025-09-02 10:09: Moving to accommodate roofing in Zone 1 / David Wiltberger on 2025-09-24 04:09: BAM not completed Potential Delay / David Wiltberger on 2025-09-30 12:09: BAM did not complete / David Wiltberger on 2025-10-14 10:10: set on recovery schedule / allucent_notes: David Wiltberger on 2025-08-19 09:08: changed pick order / allucent_notes: 2025-08-19 09:08 - User: David Wiltberger - Date Added: 2025-08-19 09:08 - Note: changed pick order / 2025-09-02 10:09 - User: David Wiltberger - Date Added: 2025-09-02 10:09 - Note: Moving to accommodate roofing in Zone 1 / 2025-09-24 04:09 - User: Dav
- QTS-100500: allucent_notes_20251014_152335: David Wiltberger on 2025-08-19 09:08: changed pick order / David Wiltberger on 2025-09-02 10:09: Moving to accommodate roofing in Zone 1 / David Wiltberger on 2025-09-24 04:09: BAM not completed Potential Delay / David Wiltberger on 2025-09-30 12:09: BAM did not complete / David Wiltberger on 2025-10-14 10:10: set on recovery schedule / allucent_notes: David Wiltberger on 2025-08-19 09:08: changed pick order / allucent_notes: 2025-08-19 09:08 - User: David Wiltberger - Date Added: 2025-08-19 09:08 - Note: changed pick order / 2025-09-02 10:09 - User: David Wiltberger - Date Added: 2025-09-02 10:09 - Note: Moving to accommodate roofing in Zone 1 / 2025-09-24 04:09 - User: Dav
- QTS-1005400: allucent_notes_20251014_152335: David Wiltberger on 2025-08-19 09:08: changed pick order / David Wiltberger on 2025-09-02 10:09: Moving to accommodate roofing in Zone 1 / David Wiltberger on 2025-09-24 04:09: BAM not completed Potential Delay / David Wiltberger on 2025-09-30 12:09: BAM did not complete / David Wiltberger on 2025-10-14 10:10: set on recovery schedule / allucent_notes: David Wiltberger on 2025-08-19 09:08: changed pick order / allucent_notes: 2025-08-19 09:08 - User: David Wiltberger - Date Added: 2025-08-19 09:08 - Note: changed pick order / 2025-09-02 10:09 - User: David Wiltberger - Date Added: 2025-09-02 10:09 - Note: Moving to accommodate roofing in Zone 1 / 2025-09-24 04:09 - User: Dav
- QTS-100520: allucent_notes_20251014_152335: David Wiltberger on 2025-08-19 09:08: changed pick order / David Wiltberger on 2025-09-02 10:09: Moving to accommodate roofing in Zone 1 / David Wiltberger on 2025-09-24 04:09: BAM not completed Potential Delay / David Wiltberger on 2025-09-30 12:09: BAM did not complete / David Wiltberger on 2025-10-14 10:10: set on recovery schedule / allucent_notes: David Wiltberger on 2025-08-19 09:08: changed pick order / allucent_notes: 2025-08-19 09:08 - User: David Wiltberger - Date Added: 2025-08-19 09:08 - Note: changed pick order / 2025-09-02 10:09 - User: David Wiltberger - Date Added: 2025-09-02 10:09 - Note: Moving to accommodate roofing in Zone 1 / 2025-09-24 04:09 - User: Dav
- QTS-100530: allucent_notes_20251014_152335: David Wiltberger on 2025-08-19 09:08: changed pick order / David Wiltberger on 2025-09-02 10:09: Moving to accommodate roofing in Zone 1 / David Wiltberger on 2025-09-24 04:09: BAM not completed Potential Delay / David Wiltberger on 2025-09-30 12:09: BAM did not complete / David Wiltberger on 2025-10-14 10:10: set on recovery schedule / allucent_notes: David Wiltberger on 2025-08-19 09:08: changed pick order / allucent_notes: 2025-08-19 09:08 - User: David Wiltberger - Date Added: 2025-08-19 09:08 - Note: changed pick order / 2025-09-02 10:09 - User: David Wiltberger - Date Added: 2025-09-02 10:09 - Note: Moving to accommodate roofing in Zone 1 / 2025-09-24 04:09 - User: Dav
- QTS-100550: allucent_notes_20251014_152335: David Wiltberger on 2025-08-19 09:08: changed pick order / David Wiltberger on 2025-09-02 10:09: Moving to accommodate roofing in Zone 1 / David Wiltberger on 2025-09-24 04:09: BAM not completed Potential Delay / David Wiltberger on 2025-09-30 12:09: BAM did not complete / David Wiltberger on 2025-10-14 10:10: set on recovery schedule / allucent_notes: David Wiltberger on 2025-08-19 09:08: changed pick order / allucent_notes: 2025-08-19 09:08 - User: David Wiltberger - Date Added: 2025-08-19 09:08 - Note: changed pick order / 2025-09-02 10:09 - User: David Wiltberger - Date Added: 2025-09-02 10:09 - Note: Moving to accommodate roofing in Zone 1 / 2025-09-24 04:09 - User: Dav
- QTS-100400: allucent_notes_20251014_152335: David Wiltberger on 2025-08-19 09:08: changed pick order / David Wiltberger on 2025-09-02 10:09: Moving to accommodate roofing in Zone 1 / David Wiltberger on 2025-09-24 04:09: BAM not completed Potential Delay / David Wiltberger on 2025-09-30 12:09: BAM did not complete / David Wiltberger on 2025-10-14 10:10: set on recovery schedule / allucent_notes: David Wiltberger on 2025-08-19 09:08: changed pick order / allucent_notes: 2025-08-19 09:08 - User: David Wiltberger - Date Added: 2025-08-19 09:08 - Note: changed pick order / 2025-09-02 10:09 - User: David Wiltberger - Date Added: 2025-09-02 10:09 - Note: Moving to accommodate roofing in Zone 1 / 2025-09-24 04:09 - User: Dav

| ID | WBS | Activity | Duration | Start | Finish | Predecessors | Complete | Remaining | Planned start | Planned finish | Total float | Free float | Constraint | Calendar | Allucent CSI Group | Project Section | Phase-1 | Layton Discipline | Baseline | Location | Level | Fragnet | Owner Impact Analysis | Fragnet Responsible Party | Contract | Notes | Layton Super | Trade Partner | Phase-1-1 | Project Section-1 | TFO-CONST ONLY | NICK |
| --- | --- | --- | --- | --- | --- | --- | --- | --- | --- | --- | --- | --- | --- | --- | --- | --- | --- | --- | --- | --- | --- | --- | --- | --- | --- | --- | --- | --- | --- | --- | --- | --- |
|  | 1 | **Fragnet Bulletin 4 Grating** |  | 2025-10-10 | 2026-08-19 |  |  |  |  |  |  |  |  |  |  |  |  |  |  |  |  |  |  |  |  |  |  |  |  |  |  |  |
| QTS-1001710 |  | Fragnet / DH 1100 / Rooftop Mechanical // Bulletin 4 Received by Layton | 1d | 2025-10-10 A | 2025-10-10 A | QTS-1371 SS | 100% |  |  |  |  |  |  |  | 01ADMIN | Construction | Phase 1 | Mechanical | IGMP | DH2100 | Level 2 | Fragnet | Y | Bel-Aire Mechanical. LLC | BAB |  |  |  |  |  |  |  |
| QTS-1001730 |  | Fragnet / DH 1100 / Rooftop Mechanical // Updated Bulletin 4 Received by Layton | 3d | 2025-10-13 A | 2025-10-15 A | QTS-1001710 | 100% |  | 2025-10-10 | 2025-10-14 |  |  |  |  | 01ADMIN | Construction | Phase 1 | Mechanical | IGMP | DH2100 | Level 2 | Fragnet | Y | Bel-Aire Mechanical. LLC | BAB |  |  |  |  |  |  |  |
| QTS-1001740 |  | Fragnet / DH 1100 / Rooftop Mechanical // Layton Submitting Shop Drawings to QTS Design (DLB) | 23d | 2025-10-16 A | 2025-11-17 A | QTS-1001730 | 100% |  | 2025-10-10 | 2025-11-11 |  |  |  |  | 01ADMIN | Construction | Phase 1 | Mechanical | IGMP | DH2100 | Level 2 | Fragnet | Y | Bel-Aire Mechanical. LLC | BAB |  |  |  |  |  |  |  |
| QTS-1001750 |  | Fragnet / DH 1100 / Rooftop Mechanical // Layton Submitting Shop Drawings to QTS Design (Corgan) | 23d | 2025-11-18 A | 2025-12-09 A | QTS-1001740 | 100% |  | 2025-10-10 | 2025-11-11 |  |  |  |  | 01ADMIN | Construction | Phase 1 | Mechanical | IGMP | DH2100 | Level 2 | Fragnet | Y | Bel-Aire Mechanical. LLC | BAB |  |  |  |  |  |  |  |
| QTS-1001760 |  | Fragnet / DH 1100 / Rooftop Mechanical // QTS Design Response for Grating | 10d | 2025-12-10 A | 2026-01-27 A | QTS-1001750 | 100% |  | 2025-10-10 | 2025-10-23 |  |  |  |  | 01ADMIN | Construction | Phase 1 | Mechanical | IGMP | DH2100 | Level 2 | Fragnet | Y | Bel-Aire Mechanical. LLC | BAB |  |  |  |  |  |  |  |
| QTS-1004810 |  | Fragnet / DH 1100 / Rooftop Mechanical // Procure Grating, Toe Kicks, And Hand Rails | 25d | 2026-02-03 A | 2026-04-30 A | QTS-1001760, QTS-1009900 FF+4d | 100% |  | 2026-02-03 | 2026-03-09 |  |  |  |  | 01ADMIN | Construction | Phase 1 | Build Out | IGMP | DH2100 | Level 2 | Fragnet | Y | SteelFab Texas Inc. | BAB | 04/21: Tracking April 30 | Sage Fundingsland |  |  |  |  |  |
| QTS-1001720 |  | Fragnet / DH 1100 / Rooftop Mechanical // Install Grating, Toe Kicks, Hand Rails to Complete Chiller Deck | 7d | 2026-07-14 A | 2026-08-19 | QTS-1001760, QTS-1004810, QTS-1001660 SS | 86% | 1d | 2026-08-12 | 2026-08-19 | 11d | 78d | start on or after 2026-08-12 | QTS-PHX3 DC1 - 6 day w/ Holidays | 01ADMIN | Construction | Phase 1 | Build Out | IGMP | DH2100 | Level 2 | Fragnet | Y | SteelFab Texas Inc. | BAB | 8/12 | Bobby Martinez | Steel Fab |  |  |  |  |
|  | 5 | **DH 1100 / Mechanical Yard Buildout** |  | 2025-09-05 | 2026-08-19 |  |  |  |  |  |  |  |  |  |  |  |  |  |  |  |  |  |  |  |  |  |  |  |  |  |  |  |
| QTS-42341 |  | DH 1100 / Mechanical Yard // Excavate for MV Conduits | 5d | 2025-09-05 A | 2025-09-11 A | QTS-42271 SS, QTS-19811 | 100% |  |  |  |  |  |  |  | 01ADMIN | Construction |  | Core & Shell | IGMP | Gen Yard | Level 2 |  |  |  | BAB |  |  |  | Phase 1 | Construction |  |  |
| QTS-1651 |  | DH 1100 / Mechanical Yard // Prep for Pier Footings | 3d | 2025-09-09 A | 2025-09-11 A | QTS-1631 | 100% |  |  |  |  |  |  |  |  | Construction |  | Core & Shell | IGMP | Gen Yard | Level 1 |  |  |  | BAB |  |  |  | Phase 1 | Construction |  |  |
| QTS-3881 |  | DH 1100 / Mechanical Yard // Form, Reinforce, & Pour 24" Diameter Piers #1 | 6d | 2025-09-12 A | 2025-09-19 A | QTS-1651 | 100% |  |  |  |  |  |  |  |  | Construction |  | Core & Shell | IGMP | Gen Yard | Level 1 |  |  |  | BAB |  |  |  | Phase 1 | Construction |  |  |
| QTS-42351 |  | DH 1100 / Mechanical Yard // Install Conduit for MV Cables | 7d | 2025-09-12 A | 2025-09-22 A | QTS-42341 | 100% |  |  |  |  |  |  |  | 01ADMIN | Construction |  | Core & Shell | IGMP | Gen Yard | Level 2 |  |  |  | BAB |  |  |  | Phase 1 | Construction |  |  |
| QTS-42771 |  | DH 1100 / Mechanical Yard // Form, Reinforce, & Pour 24" Diameter Piers #2 | 5d | 2025-09-22 A | 2025-10-07 A | QTS-3881 | 100% |  | 2025-09-22 | 2025-09-26 |  |  |  |  |  | Construction |  | Core & Shell | IGMP | Gen Yard | Level 1 |  |  |  | BAB |  |  |  | Phase 1 | Construction |  |  |
| QTS-11091 |  | DH 1100 / Mechanical Yard // Form, Reinforce, & Pour Thickened Slab On Grade for Transformer | 9d | 2025-09-23 A | 2025-10-13 A | QTS-42771 SS+1d | 100% |  | 2025-09-23 | 2025-10-03 |  |  |  |  | 01ADMIN | Construction |  | Core & Shell | IGMP | Gen Yard | Level 1 |  |  |  | BAB |  |  |  | Phase 1 | Construction |  |  |
| QTS-42361 |  | DH 1100 / Mechanical Yard // Slurry for MV Conduits | 5d | 2025-09-24 A | 2025-09-30 A | QTS-42351 | 100% |  |  |  |  |  |  |  |  | Construction |  | Core & Shell | IGMP | Gen Yard | Level 2 |  |  |  | BAB |  |  |  | Phase 1 | Construction |  |  |
| QTS-42371 |  | DH 1100 / Mechanical Yard // Backfill Conduit for MV Cables | 5d | 2025-09-25 A | 2025-10-01 A | QTS-42361 FF+1d | 100% |  |  |  |  |  |  |  |  | Construction |  | Core & Shell | IGMP | Gen Yard | Level 2 |  |  |  | BAB |  |  |  | Phase 1 | Construction |  |  |
| QTS-9921 |  | DH 1100 / Mechanical Yard // Form, Reinforce, & Pour Thickened Slab On Grade for UPS Pods | 5d | 2025-10-06 A | 2025-10-10 A | QTS-11091 FF, QTS-42771 FF | 100% |  |  |  |  |  |  |  | 01ADMIN | Construction |  | Core & Shell | IGMP | Gen Yard | Level 1 |  |  |  | BAB |  |  |  | Phase 1 | Construction |  |  |
| QTS-12521 |  | DH 1100 / Mechanical Yard // Form, Reinforce, & Pour Thickened Slab On Grade for Generators | 10d | 2025-10-14 A | 2025-10-24 A | QTS-9921, QTS-11091 | 100% |  | 2025-10-13 | 2025-10-24 |  |  |  |  | 01ADMIN | Construction |  | Core & Shell | IGMP | Gen Yard | Level 1 |  |  |  | BAB |  |  |  | Phase 1 | Construction |  |  |
| QTS-6391 |  | DH 1100 / Mechanical Yard // Place Gen Yard Gravel | 5d | 2025-10-15 A | 2025-10-21 A | QTS-9921, QTS-11091, QTS-42771 | 100% |  |  |  |  |  |  |  | 01ADMIN | Construction |  | Core & Shell | IGMP | Gen Yard | Level 1 |  |  |  | BAB |  |  |  | Phase 1 | Construction |  |  |
| QTS-49971 |  | DH 1100 / Mechanical Yard // Install Cable Bus | 10d | 2025-10-22 A | 2025-11-04 A | QTS-49691, QTS-6391 | 100% |  |  |  |  |  |  |  | 01ADMIN | Construction |  | Core & Shell | IGMP | Gen Yard | Level 2 |  |  |  | BAB |  |  |  | Phase 1 | Construction |  |  |
| QTS-13541 |  | DH 1100 / Mechanical Yard // OFCI - L2 SET IN PLACE - Eq Type # - 3000A UPS Pods - 7 units | 5d | 2025-10-27 A | 2025-11-06 A | QTS-9921, QTS-33741 FF, QTS-33731 FF, QTS-33721 FF, QTS-33711, QTS-33701, QTS-33691, QTS-33681, QTS-12521 SS+4d | 100% |  | 2025-10-27 | 2025-10-31 |  |  |  |  | 01ADMIN | Construction |  | Electrical | IGMP | Gen Yard | Level 1 |  |  |  | BAB |  |  |  | Phase 1 | Construction |  |  |
| QTS-14481 |  | DH 1100 / Mechanical Yard // OFCI - L2 SET IN PLACE - Eq Type # - 2500KVA Transformers - 7 units | 3d | 2025-10-31 A | 2025-11-04 A | QTS-24281, QTS-35841, QTS-35831, QTS-35821, QTS-35811, QTS-35801, QTS-35791, QTS-35781, QTS-12521 | 100% |  |  |  |  |  |  |  | 01ADMIN | Construction |  | Electrical | IGMP | Gen Yard | Level 1 |  |  |  | BAB |  |  |  | Phase 1 | Construction |  |  |
| QTS-41241 |  | DH 1100 / Mechanical Yard // OFCI - L2 SET IN PLACE - Eq Type # - 2500KW Generator #R-11 - 1 unit | 1d | 2025-11-10 A | 2025-11-10 A | QTS-40981, QTS-41011, QTS-40991 | 100% |  | 2025-11-14 | 2025-11-14 |  |  |  |  | 01ADMIN | Construction |  | Electrical |  | Gen Yard | Level 1 |  |  |  | BAB |  |  |  | Phase 1 | Construction |  |  |
| QTS-41181 |  | DH 1100 / Mechanical Yard // OFCI - L2 SET IN PLACE - Eq Type # - 2500KW Generator #A-11 - 1 unit | 1d | 2025-11-11 A | 2025-11-11 A | QTS-14481, QTS-39781, QTS-39811, QTS-39791 | 100% |  | 2025-11-06 | 2025-11-06 |  |  |  |  | 01ADMIN | Construction |  | Electrical |  | Gen Yard | Level 1 |  |  |  | BAB |  |  |  | Phase 1 | Construction |  |  |
| QTS-15861 |  | DH 1100 / Mechanical Yard // Measure for FRP Platforms | 1d | 2025-11-12 A | 2025-11-12 A | QTS-41231 FF, QTS-41241 | 100% |  | 2025-11-17 | 2025-11-17 |  |  |  |  | 01ADMIN | Construction |  | Core & Shell | IGMP | Gen Yard | Level 1 |  |  |  | TFO |  |  |  | Phase 1 | Construction | TFO CONST | NICK |
| QTS-41191 |  | DH 1100 / Mechanical Yard // OFCI - L2 SET IN PLACE - Eq Type # - 2500KW Generator #B-11 - 1 unit | 1d | 2025-11-12 A | 2025-11-12 A | QTS-39821, QTS-39851, QTS-39831, QTS-41181 | 100% |  |  |  |  |  |  |  | 01ADMIN | Construction |  | Electrical |  | Gen Yard | Level 1 |  |  |  | BAB |  |  |  | Phase 1 | Construction |  |  |
| QTS-41201 |  | DH 1100 / Mechanical Yard // OFCI - L2 SET IN PLACE - Eq Type # - 2500KW Generator #C-11 - 1 unit | 1d | 2025-11-12 A | 2025-11-12 A | QTS-39861, QTS-39891, QTS-39871, QTS-41191 SS | 100% |  |  |  |  |  |  |  | 01ADMIN | Construction |  | Electrical |  | Gen Yard | Level 1 |  |  |  | BAB |  |  |  | Phase 1 | Construction |  |  |
| QTS-41221 |  | DH 1100 / Mechanical Yard // OFCI - L2 SET IN PLACE - Eq Type # - 2500KW Generator #E-11 - 1 unit | 1d | 2025-11-12 A | 2025-11-12 A | QTS-41201 SS, QTS-40581, QTS-40611, QTS-40591 | 100% |  |  |  |  |  |  |  | 01ADMIN | Construction |  | Electrical |  | Gen Yard | Level 1 |  |  |  | BAB |  |  |  | Phase 1 | Construction |  |  |
| QTS-41231 |  | DH 1100 / Mechanical Yard // OFCI - L2 SET IN PLACE - Eq Type # - 2500KW Generator #F-11 - 1 unit | 1d | 2025-11-12 A | 2025-11-12 A | QTS-40781, QTS-40811, QTS-40791, QTS-41221 SS | 100% |  |  |  |  |  |  |  | 01ADMIN | Construction |  | Electrical |  | Gen Yard | Level 1 |  |  |  | BAB |  |  |  | Phase 1 | Construction |  |  |
| QTS-41211 |  | DH 1100 / Mechanical Yard // OFCI - L2 SET IN PLACE - Eq Type # - 2500KW Generator #D-11 - 1 unit | 1d | 2025-11-20 A | 2025-11-20 A | QTS-40381, QTS-40411, QTS-40391, QTS-41201 SS | 100% |  |  |  |  |  |  |  | 01ADMIN | Construction |  | Electrical |  | Gen Yard | Level 1 |  |  |  | BAB |  |  |  | Phase 1 | Construction |  |  |

Notes:
- QTS-1001710: allucent_notes_20251216_165335: David Wiltberger on 2025-12-02 06:45: Grating install not complete for installation / allucent_notes_20251209_203830: David Wiltberger on 2025-12-02 06:45: Grating install not complete for installation / allucent_notes_20251202_153722: David Wiltberger on 2025-12-02 06:45: Grating install not complete for installation / allucent_notes_20251014_152335: David Wiltberger on 2025-08-19 09:08: changed pick order / David Wiltberger on 2025-09-02 10:09: Moving to accommodate roofing in Zone 1 / David Wiltberger on 2025-09-24 04:09: BAM not completed Potential Delay / David Wiltberger on 2025-09-30 12:09: BAM did not complete / David Wiltberger on 2025-10-14 10:10: set on recovery schedule / allucent_notes: David Wiltberger on 2025-08-19 09:08: changed pick order / Scheduler Notes: David Wiltberger on 2025-08-19 09:08: changed pick order / David Wiltberger on 2025-09-02 10:09: Moving to accommodate roofing in Zone / 1 / David Wiltberger on 2025-09-24 04:09: BAM not completed Potential Delay / David Wiltberger on 2025-09-30 12:09: BAM did not complete / David Wiltberger on 2025-10-14 10:10: set on recovery / schedule / allucent_notes: 2025-12-02 06:45 - User: David Wiltberger - Date Added: 2025-12-02 06:45 - Note: Grating install not complete for installation
- QTS-1001730: allucent_notes_20251216_165335: David Wiltberger on 2025-12-02 06:45: Grating install not complete for installation / allucent_notes_20251209_203830: David Wiltberger on 2025-12-02 06:45: Grating install not complete for installation / allucent_notes_20251202_153722: David Wiltberger on 2025-12-02 06:45: Grating install not complete for installation / allucent_notes_20251014_152335: David Wiltberger on 2025-08-19 09:08: changed pick order / David Wiltberger on 2025-09-02 10:09: Moving to accommodate roofing in Zone 1 / David Wiltberger on 2025-09-24 04:09: BAM not completed Potential Delay / David Wiltberger on 2025-09-30 12:09: BAM did not complete / David Wiltberger on 2025-10-14 10:10: set on recovery schedule / allucent_notes: David Wiltberger on 2025-08-19 09:08: changed pick order / allucent_notes: 2025-12-02 06:45 - User: David Wiltberger - Date Added: 2025-12-02 06:45 - Note: Grating install not complete for installation
- QTS-1001740: allucent_notes_20251216_165335: David Wiltberger on 2025-12-02 06:45: Grating install not complete for installation / allucent_notes_20251209_203830: David Wiltberger on 2025-12-02 06:45: Grating install not complete for installation / allucent_notes_20251202_153722: David Wiltberger on 2025-12-02 06:45: Grating install not complete for installation / allucent_notes_20251014_152335: David Wiltberger on 2025-08-19 09:08: changed pick order / David Wiltberger on 2025-09-02 10:09: Moving to accommodate roofing in Zone 1 / David Wiltberger on 2025-09-24 04:09: BAM not completed Potential Delay / David Wiltberger on 2025-09-30 12:09: BAM did not complete / David Wiltberger on 2025-10-14 10:10: set on recovery schedule / allucent_notes: David Wiltberger on 2025-08-19 09:08: changed pick order / allucent_notes: 2025-12-02 06:45 - User: David Wiltberger - Date Added: 2025-12-02 06:45 - Note: Grating install not complete for installation
- QTS-1001750: allucent_notes_20251216_165335: David Wiltberger on 2025-12-02 06:45: Grating install not complete for installation / allucent_notes_20251209_203830: David Wiltberger on 2025-12-02 06:45: Grating install not complete for installation / allucent_notes_20251202_153722: David Wiltberger on 2025-12-02 06:45: Grating install not complete for installation / allucent_notes_20251014_152335: David Wiltberger on 2025-08-19 09:08: changed pick order / David Wiltberger on 2025-09-02 10:09: Moving to accommodate roofing in Zone 1 / David Wiltberger on 2025-09-24 04:09: BAM not completed Potential Delay / David Wiltberger on 2025-09-30 12:09: BAM did not complete / David Wiltberger on 2025-10-14 10:10: set on recovery schedule / allucent_notes: David Wiltberger on 2025-08-19 09:08: changed pick order / allucent_notes: 2025-12-02 06:45 - User: David Wiltberger - Date Added: 2025-12-02 06:45 - Note: Grating install not complete for installation
- QTS-1001760: allucent_notes_20251216_165335: David Wiltberger on 2025-12-02 06:45: Grating install not complete for installation / allucent_notes_20251209_203830: David Wiltberger on 2025-12-02 06:45: Grating install not complete for installation / allucent_notes_20251202_153722: David Wiltberger on 2025-12-02 06:45: Grating install not complete for installation / allucent_notes_20251014_152335: David Wiltberger on 2025-08-19 09:08: changed pick order / David Wiltberger on 2025-09-02 10:09: Moving to accommodate roofing in Zone 1 / David Wiltberger on 2025-09-24 04:09: BAM not completed Potential Delay / David Wiltberger on 2025-09-30 12:09: BAM did not complete / David Wiltberger on 2025-10-14 10:10: set on recovery schedule / allucent_notes: David Wiltberger on 2025-08-19 09:08: changed pick order / allucent_notes: 2025-12-02 06:45 - User: David Wiltberger - Date Added: 2025-12-02 06:45 - Note: Grating install not complete for installation
- QTS-1004810: allucent_notes_20251216_165335: David Wiltberger on 2025-12-02 06:45: Grating install not complete for installation / allucent_notes_20251209_203830: David Wiltberger on 2025-12-02 06:45: Grating install not complete for installation / allucent_notes_20251202_153722: David Wiltberger on 2025-12-02 06:45: Grating install not complete for installation / allucent_notes_20251014_152335: David Wiltberger on 2025-08-19 09:08: changed pick order / David Wiltberger on 2025-09-02 10:09: Moving to accommodate roofing in Zone / 1 / David Wiltberger on 2025-09-24 04:09: BAM not completed Potential Delay / David Wiltberger on 2025-09-30 12:09: BAM did not complete / David Wiltberger on 2025-10-14 10:10: set on recovery / schedule / allucent_notes: David Wiltberger on 2025-08-19 09:08: changed pick order / Scheduler Notes: David Wiltberger on 2025-08-19 09:08: changed pick order / David Wiltberger on 2025-09-02 10:09: Moving to accommodate roofing in Zone / 1 / David Wiltberger on 2025-09-24 04:09: BAM not completed Potential Delay / David Wiltberger on 2025-09-30 12:09: BAM did not complete / David Wiltberger on 2025-10-14 10:10: set on recovery schedule / 04/21: Tracking April 30 / allucent_notes: 2025-12-02 06:45 - User: David Wiltberger - Date Added: 2025-12-02 06:45 - Note: Grating install not complete for installation
- QTS-1001720: allucent_notes_20251216_165335: David Wiltberger on 2025-12-02 06:45: Grating install not complete for installation / allucent_notes_20251209_203830: David Wiltberger on 2025-12-02 06:45: Grating install not complete for installation / allucent_notes_20251202_153722: David Wiltberger on 2025-12-02 06:45: Grating install not complete for installation / allucent_notes_20251014_152335: David Wiltberger on 2025-08-19 09:08: changed pick order / David Wiltberger on 2025-09-02 10:09: Moving to accommodate roofing in Zone 1 / David Wiltberger on 2025-09-24 04:09: BAM not completed Potential Delay / David Wiltberger on 2025-09-30 12:09: BAM did not complete / David Wiltberger on 2025-10-14 10:10: set on recovery schedule / allucent_notes: David Wiltberger on 2025-08-19 09:08: changed pick order / allucent_notes: 2025-12-02 06:45 - User: David Wiltberger - Date Added: 2025-12-02 06:45 - Note: Grating install not complete for installation
- QTS-11091: allucent_notes_20251014_152335: Jason Johnston on 2025-09-30 14:09: Aligning with 2100 / Jason Johnston on 2025-10-14 09:10: Rain delay / allucent_notes: 2025-09-30 14:09 - User: Jason Johnston - Date Added: 2025-09-30 14:09 - Note: Aligning with 2100 / 2025-10-14 09:10 - User: Jason Johnston - Date Added: 2025-10-14 09:10 - Note: Rain delay
- QTS-9921: allucent_notes_20251014_152335: Jason Johnston on 2025-10-14 09:10: Done early / allucent_notes: 2025-10-14 09:10 - User: Jason Johnston - Date Added: 2025-10-14 09:10 - Note: Done early
- QTS-12521: allucent_notes_20251027_224008: Jason Johnston on 2025-10-14 09:10: First half of generator pads pouring / Jason Johnston on 2025-10-14T16:30:46.458Z: Second half of generator pads pouring / allucent_notes_20251021_145627: Jason Johnston on 2025-10-14 09:10: First half of generator pads pouring / Jason Johnston on 2025-10-14T16:30:46.458Z: Second half of generator pads pouring / allucent_notes_20251014_152335: Jason Johnston on 2025-10-14 09:10: First half of generator pads pouring / Jason Johnston on 2025-10-14T16:30:46.458Z: Second half of generator pads pouring / allucent_notes: 2025-10-14 09:10 - User: Jason Johnston - Date Added: 2025-10-14 09:10 - Note: First half of generator pads pouring / 2025-10-14T16:30:46.458Z - User: Jason Johnston - Date Added: 2025-10-14T16:30:46.458Z - Note: Second half of generator pads pouring
- QTS-6391: allucent_notes_20251021_145627: Jason Johnston on 2025-10-14 09:10: rain delay / allucent_notes_20251014_152335: Jason Johnston on 2025-10-14 09:10: rain delay / allucent_notes: 2025-10-14 09:10 - User: Jason Johnston - Date Added: 2025-10-14 09:10 - Note: rain delay
- QTS-13541: allucent_notes_20251118_192630: Jason Johnston on 2025-11-04 10:11: Last 5 PODs to be set 11/5 and 11/6. / allucent_notes_20251111_182405: Jason Johnston on 2025-11-04 10:11: Last 5 PODs to be set 11/5 and 11/6. / allucent_notes_20251104_160200: Jason Johnston on 2025-11-04 10:11: Last 5 PODs to be set 11/5 and 11/6. / allucent_notes: 2025-11-04 10:11 - User: Jason Johnston - Date Added: 2025-11-04 10:11 - Note: Last 5 PODs to be set 11/5 and 11/6.
- QTS-41241: allucent_notes_20251118_192630: Jason Johnston on 2025-11-11 14:11: Set early. / allucent_notes_20251111_182405: Jason Johnston on 2025-11-11 14:11: Set early. / allucent_notes: 2025-11-11 14:11 - User: Jason Johnston - Date Added: 2025-11-11 14:11 - Note: Set early.
- QTS-15861: allucent_notes_20251118_192630: Jason Johnston on 2025-11-11 14:11: Tie to F gen. / allucent_notes_20251111_182405: Jason Johnston on 2025-11-11 14:11: Tie to F gen. / allucent_notes: 2025-11-11 14:11 - User: Jason Johnston - Date Added: 2025-11-11 14:11 - Note: Tie to F gen.

| ID | WBS | Activity | Duration | Start | Finish | Predecessors | Complete | Remaining | Planned start | Planned finish | Total float | Free float | Calendar | Allucent CSI Group | Project Section | Phase-1 | Layton Discipline | Baseline | Location | Level | Fragnet | Fragnet Responsible Party | Contract | Phase-1-1 | Project Section-1 | TFO-CONST ONLY | NICK | Layton Super | Trade Partner | Delay Notice 07-26 | Vendor Responsible Party | Owner Impact Analysis |
| --- | --- | --- | --- | --- | --- | --- | --- | --- | --- | --- | --- | --- | --- | --- | --- | --- | --- | --- | --- | --- | --- | --- | --- | --- | --- | --- | --- | --- | --- | --- | --- | --- |
|  | 1 | **Fragnet Install of Top Hats in PODs** |  | 2025-11-03 | 2026-01-29 |  |  |  |  |  |  |  |  |  |  |  |  |  |  |  |  |  |  |  |  |  |  |  |  |  |  |  |
| QTS-1001420 |  | Received Pods Without Top Hats Installed or Present | 1d | 2025-11-03 A | 2025-11-03 A | QTS-1030 SS | 100% |  |  |  |  |  |  | 01ADMIN | Construction | Phase 1 | Electrical | IGMP | Gen Yard | Level 2 | Fragnet | Rosendin Electric Inc. | BAB |  |  |  |  |  |  |  |  |  |
| QTS-1001430 |  | Procure Missing Top Hats | 26d | 2025-11-04 A | 2025-12-11 A | QTS-1001420 | 100% |  |  |  |  |  |  | 01ADMIN | Construction | Phase 1 | Electrical | IGMP | Gen Yard | Level 2 | Fragnet | Rosendin Electric Inc. | BAB |  |  |  |  |  |  |  |  |  |
| QTS-1001630 |  | Pull Wire from Transformer to POD | 5d | 2025-11-19 A | 2025-11-25 A | QTS-1001450 | 100% |  |  |  |  |  |  | 01ADMIN | Construction | Phase 1 | Electrical | IGMP | Gen Yard | Level 2 | Fragnet | Rosendin Electric Inc. | BAB |  |  |  |  |  |  |  |  |  |
| QTS-1001440 |  | Vendor On Site to Install Top Hats | 11d | 2025-12-12 A | 2026-01-02 A | QTS-1001430 | 100% |  | 2025-12-12 | 2025-12-31 |  |  |  | 01ADMIN | Construction | Phase 1 | Electrical | IGMP | Gen Yard | Level 2 | Fragnet | Rosendin Electric Inc. | BAB |  |  |  |  |  |  |  |  |  |
| QTS-1001450 |  | Install Top Hats (Tie to Wire pull) | 5d | 2026-01-05 A | 2026-01-09 A | QTS-1001440 | 100% |  |  |  |  |  |  | 01ADMIN | Construction | Phase 1 | Electrical | IGMP | Gen Yard | Level 2 | Fragnet | Rosendin Electric Inc. | BAB |  |  |  |  |  |  |  |  |  |
| QTS-1001640 |  | Pull Wire from Generator to POD | 10d | 2026-01-28 A | 2026-01-29 A | QTS-1001630 FF, QTS-1001630 | 100% |  | 2026-01-28 | 2026-02-10 |  |  |  | 01ADMIN | Construction | Phase 1 | Electrical | IGMP | Gen Yard | Level 2 | Fragnet | Rosendin Electric Inc. | BAB |  |  |  |  |  |  |  |  |  |
|  | 2 | **Remaining Scope** |  | 2025-12-08 | 2026-08-19 |  |  |  |  |  |  |  |  |  |  |  |  |  |  |  |  |  |  |  |  |  |  |  |  |  |  |  |
| QTS-1671 |  | DH 1100 / Mechanical Yard // Install FRP Platforms | 10d | 2025-12-08 A | 2026-01-07 A | QTS-1321, QTS-15861, QTS-13541 | 100% |  | 2025-12-08 | 2025-12-18 |  |  | QTS-PHX3 DC1 - 6 day w/ Holidays | 01ADMIN | Construction |  | Core & Shell | IGMP | Gen Yard | Level 1 |  |  | TFO | Phase 1 | Construction | TFO CONST | NICK |  |  |  |  |  |
| QTS-42381 |  | DH 1100 / Mechanical Yard // Wire Pull for MV | 6d | 2025-12-10 A | 2025-12-17 A | QTS-41231, QTS-41241, QTS-42371 | 100% |  |  |  |  |  |  | 01ADMIN | Construction |  | Electrical | IGMP | Gen Yard | Level 2 |  |  | BAB | Phase 1 | Construction |  |  |  |  |  |  |  |
| QTS-15111 |  | DH 1100 / Mechanical Yard // Install Raceway from Transformers to UPS Pods | 5d | 2025-12-12 A | 2025-12-18 A | QTS-41241, QTS-14481 | 100% |  |  |  |  |  |  | 01ADMIN | Construction |  | Electrical | IGMP | Gen Yard | Level 1 |  |  | BAB | Phase 1 | Construction |  |  |  |  |  |  |  |
| QTS-42781 |  | DH 1100 / Mechanical Yard // Terminate MV at Transformers | 10d | 2025-12-18 A | 2026-01-10 A | QTS-42381 | 100% |  | 2025-12-18 | 2025-12-30 |  |  | QTS-PHX3 DC1 - 6 day w/ Holidays | 01ADMIN | Construction |  | Electrical | IGMP | Gen Yard | Level 2 |  |  | BAB | Phase 1 | Construction |  |  |  |  |  |  |  |
| QTS-15851 |  | DH 1100 / Mechanical Yard // Install Raceway from Generators to UPS Pods | 5d | 2026-01-09 A | 2026-02-24 A | QTS-41211 FF, QTS-41231, QTS-49971, QTS-41241 | 100% |  | 2026-01-09 | 2026-01-14 |  |  | QTS-PHX3 DC1 - 6 day w/ Holidays | 01ADMIN | Construction |  | Electrical | IGMP | Gen Yard | Level 1 |  |  | BAB | Phase 1 | Construction |  |  |  |  |  |  |  |
| QTS-15841 |  | DH 1100 / Mechanical Yard // Terminate from Transformers to UPS Pods | 10d | 2026-01-12 A | 2026-01-14 A | QTS-1001630, QTS-42381, QTS-15111 | 100% |  | 2026-01-12 | 2026-01-23 |  |  | QTS-PHX3 DC1 - 6 day w/ Holidays | 01ADMIN | Construction |  | Electrical | IGMP | Gen Yard | Level 1 |  |  | BAB | Phase 1 | Construction |  |  |  |  |  |  |  |
| QTS-1000280 |  | DH 1100 / Mechanical Yard // OFCI - L2 SET IN PLACE - Eq Type # - 2500KW Generator SCR - 7 units | 5d | 2026-02-06 A | 2026-02-13 A | QTS-41001, QTS-40801, QTS-40601, QTS-40401, QTS-39881, QTS-39841, QTS-39801 | 100% |  | 2026-02-06 | 2026-02-11 |  |  | QTS-PHX3 DC1 - 6 day w/ Holidays | 01ADMIN | Construction |  | Electrical |  | Gen Yard | Level 2 |  |  | BAB | Phase 1 | Construction |  |  |  |  |  |  |  |
| QTS-1001190 |  | DH 1100 / Mechanical Yard // Pressure Test Generator Tanks | 2d | 2026-02-07 A | 2026-02-08 A | QTS-41211 | 100% |  | 2026-02-07 | 2026-02-09 |  |  | QTS-PHX3 DC1 - 6 day w/ Holidays | 01ADMIN | Construction | Phase 1 | Mechanical | IGMP | Gen Yard | Level 2 |  |  | BAB |  |  |  |  |  |  |  |  |  |
| QTS-17351 |  | DH 1100 / Mechanical Yard // Terminate from Generators to UPS Pods | 10d | 2026-02-16 A | 2026-03-10 A | QTS-1001640, QTS-15851 FF | 100% |  | 2026-02-16 | 2026-02-26 |  |  | QTS-PHX3 DC1 - 6 day w/ Holidays | 01ADMIN | Construction |  | Electrical | IGMP | Gen Yard | Level 1 |  |  | BAB | Phase 1 | Construction |  |  |  |  |  |  |  |
| QTS-1007080 |  | DH 1100 / Mechanical Yard // OFCI - L2 SET IN PLACE - Eq Type # - 2500KW Generator SCR - 7 units | 2d | 2026-03-10 A | 2026-03-20 A | QTS-39801, QTS-39841, QTS-39881, QTS-40401, QTS-40601, QTS-40801, QTS-41001 | 100% |  | 2026-03-10 | 2026-03-11 |  |  | QTS-PHX3 DC1 - 6 day w/ Holidays | 01ADMIN | Construction |  | Electrical |  | Gen Yard | Level 2 |  |  | BAB | Phase 1 | Construction |  |  |  |  |  |  |  |
| QTS-1012500 |  | POD Compressor Failure - Waiting on resolution from vendor | 10d | 2026-06-05 A | 2026-08-19 | QTS-1001450, QTS-17351 | 90% | 1d | 2026-01-28 | 2026-02-10 | -76d | 8d |  | 01ADMIN | Construction | Phase 1 | Electrical | IGMP | Gen Yard | Level 2 | Fragnet | Quality Technology Services | BAB |  |  |  |  | Travis Todaro | QTS Vendor | Delay 07-26 |  |  |
|  | 6 | **Data Hall 1100 TFO** |  | 2025-11-05 | 2026-08-03 |  |  |  |  |  |  |  |  |  |  |  |  |  |  |  |  |  |  |  |  |  |  |  |  |  |  |  |
|  | 8 | **DH 1100 - TFO Scope Buildout (9MW)** |  | 2025-11-05 | 2026-08-03 |  |  |  |  |  |  |  |  |  |  |  |  |  |  |  |  |  |  |  |  |  |  |  |  |  |  |  |
|  | 4 | **DH 1100 - TFO Fragnet Delays** |  | 2026-07-13 | 2026-07-14 |  |  |  |  |  |  |  |  |  |  |  |  |  |  |  |  |  |  |  |  |  |  |  |  |  |  |  |
| QTS - 26561 |  | Fragnet - CDU Reduced Pressure Flow - RFI 186 | 13d | 2026-07-13 A | 2026-07-14 A | QTS-1012560 SS, QTS-1012540 | 100% |  | 2026-07-22 | 2026-08-05 |  |  | QTS-PHX3 DC1 - 6 day w/ Holidays |  |  |  | LV |  | DH1100 |  | Fragnet | Prime Controls LP | TFO |  |  | TFO CONST | NICK | Low Voltage | Prime |  | PRM | Y |
|  | 1 | **1100 - TFO Scope Buildout (3MW) - Lineup A - B** |  | 2025-11-05 | 2026-08-03 |  |  |  |  |  |  |  |  |  |  |  |  |  |  |  |  |  |  |  |  |  |  |  |  |  |  |  |
| QTS - 3680 |  | TFO Scope // DH 1100 / Lineup A - B / Install HAC Support Steel | 4d | 2025-11-05 A | 2025-11-05 A | QTS - 1980 | 100% |  | 2025-11-05 | 2025-11-10 |  |  | **GLOBAL - 5 Day Workweek w/ Basic Holidays |  |  |  | Build Out |  |  |  |  |  | TFO |  |  | TFO CONST | NICK |  |  |  |  |  |
| QTS - 3690 |  | TFO Scope // DH 1100 / Lineup A - B / Install Stainless Steel Piping Hangers (North Half) | 4d | 2025-11-10 A | 2025-11-11 A | QTS - 3680 | 100% |  | 2025-11-10 | 2025-11-13 |  |  | **GLOBAL - 5 Day Workweek w/ Basic Holidays |  |  |  | Mechanical |  |  |  |  |  | TFO |  |  | TFO CONST | NICK |  |  |  |  |  |
| QTS - 3690.1 |  | TFO Scope // DH 1100 / Lineup A - B / Install Stainless Steel Piping Hangers (South Half) | 2d | 2025-12-03 A | 2025-12-04 A | QTS - 3690 | 100% |  |  |  |  |  |  |  |  |  | Mechanical |  |  |  |  |  | TFO |  |  | TFO CONST | NICK |  |  |  |  |  |
| QTS - 3840 |  | TFO Scope // DH 1100 / Lineup A - B / Stainless Steel 6" Fan Wall - QCool | 10d | 2025-12-10 A | 2026-02-10 A | QTS - 24731, QTS - 3690.1, QTS - 4820 FF, QTS - 2590, QTS - 3730 FF+2d | 100% |  | 2025-12-10 | 2025-12-20 |  |  | QTS-PHX3 DC1 - 6 day w/ Holidays |  |  |  | Mechanical |  |  |  |  |  | TFO |  |  | TFO CONST | NICK |  |  |  |  |  |
| QTS - 3740 |  | TFO Scope // DH 1100 / Lineup A - B / Install OH Trapeze - Screen Wall to RPPs | 14d | 2025-12-26 A | 2026-01-05 A | QTS - 3890 SS | 100% |  | 2025-12-29 | 2026-01-20 |  |  |  | 01ADMIN |  |  | Electrical |  |  |  |  |  | TFO |  |  | TFO CONST | NICK |  |  |  |  |  |
| QTS - 3890 |  | TFO Scope // DH 1100 / Lineup A - B / Install OH Trapeze - Screen Wall to CODs | 10d | 2025-12-26 A | 2026-01-05 A | QTS - 3850 | 100% |  | 2025-12-30 | 2026-01-14 |  |  |  | 01ADMIN |  |  | Electrical |  |  |  |  |  | TFO |  |  | TFO CONST | NICK |  |  |  |  |  |
| QTS - 3730 |  | TFO Scope // DH 1100 / Lineup A - B / Raise HAC & QCool | 5d | 2025-12-29 A | 2026-01-02 A | QTS - 3690.1, QTS - 3850 | 100% |  | 2025-12-29 | 2026-01-06 |  |  |  |  |  |  | Mechanical |  |  |  |  |  | TFO |  |  | TFO CONST | NICK |  |  |  |  |  |
| QTS - 3850 |  | TFO Scope // DH 1100 / Lineup A - B / Uncrate QCools with HACs | 1d | 2025-12-29 A | 2025-12-29 A | QTS - 1020, QTS - 2600 | 100% |  |  |  |  |  |  | 01ADMIN |  |  | Mechanical |  |  |  |  |  | TFO |  |  | TFO CONST | NICK |  |  |  |  |  |
| QTS - 24831 |  | TFO Scope // DH 1100 / Lineup A - B / Detail Ceiling Grid to QCools | 10d | 2026-01-05 A | 2026-04-27 A | QTS - 3730 | 100% |  | 2026-01-05 | 2026-01-15 |  |  | QTS-PHX3 DC1 - 6 day w/ Holidays | 01ADMIN |  |  | Build Out |  | DH1100 |  |  |  | TFO |  |  | TFO CONST | NICK |  |  |  |  |  |
| QTS - 3760 |  | TFO Scope // DH 1100 / Lineup A - B / Pull MC Feeders - CODs to RPPs | 12d | 2026-02-04 A | 2026-02-13 A | QTS - 3890, QTS - 3740 | 100% |  | 2026-02-11 | 2026-02-24 |  |  | QTS-PHX3 DC1 - 6 day w/ Holidays |  |  |  | Electrical |  |  |  |  |  | TFO |  |  | TFO CONST | NICK |  |  |  |  |  |
| QTS - 25721 |  | TFO Scope // DH 1100 / Lineup A - B / Terminate Feeder at CODs | 5d | 2026-03-09 A | 2026-03-10 A | QTS - 3760 | 100% |  | 2026-03-09 | 2026-03-13 |  |  | QTS-PHX3 DC1 - 6 day w/ Holidays |  |  |  | Electrical |  | DH1100 |  |  |  | TFO |  |  | TFO CONST | NICK |  |  |  |  |  |
| QTS - 26031 |  | TFO Scope // DH 1100 / Lineup A - B / Build HACs | 3d | 2026-03-10 A | 2026-03-19 A | QTS - 3730 | 100% |  | 2026-03-10 | 2026-03-12 |  |  | QTS-PHX3 DC1 - 6 day w/ Holidays | 01ADMIN |  |  | Electrical |  | DH1100 |  |  |  | TFO |  |  | TFO CONST | NICK |  |  |  |  |  |
| QTS - 3720 |  | TFO Scope // DH 1100 / Lineup A - B / Set RPP # 12 Units | 5d | 2026-03-11 A | 2026-03-16 A | QTS - 3730, QTS - 1030, QTS-1004530 | 100% |  |  |  |  |  | QTS-PHX3 DC1 - 6 day w/ Holidays |  |  |  | Electrical |  | DH1100 |  |  |  | TFO |  |  | TFO CONST | NICK |  |  |  |  |  |
| QTS - 3860 |  | TFO Scope // DH 1100 / Lineup A - B / Install QCool Arms | 5d | 2026-03-11 A | 2026-03-12 A | QTS - 3850, QTS - 3680, QTS-14081 | 100% |  | 2026-03-11 | 2026-03-16 |  |  | QTS-PHX3 DC1 - 6 day w/ Holidays | 01ADMIN |  |  | Electrical |  | DH1100 |  |  |  | TFO |  |  | TFO CONST | NICK |  |  |  |  |  |
| QTS - 25071 |  | TFO Scope // DH 1100 / Lineup A - B / Install Grid Hangers | 5d | 2026-03-25 A | 2026-03-26 A | QTS - 3860, QTS-14081 | 100% |  | 2026-04-01 | 2026-04-06 |  |  | QTS-PHX3 DC1 - 6 day w/ Holidays |  |  |  | Electrical |  | DH1100 |  |  |  | TFO |  |  | TFO CONST | NICK |  |  |  |  |  |
| QTS - 3780 |  | TFO Scope // DH 1100 / Lineup A - B / Terminate Feeder at RPPs | 10d | 2026-03-31 A | 2026-04-05 A | QTS - 3760 FF+3d, QTS - 3720 | 100% |  | 2026-04-01 | 2026-04-11 |  |  | QTS-PHX3 DC1 - 6 day w/ Holidays |  |  |  | Electrical |  | DH1100 |  |  |  | TFO |  |  | TFO CONST | NICK |  |  |  |  |  |
| QTS - 3790 |  | TFO Scope // DH 1100 / Lineup A - B / Pull I&C | 10d | 2026-03-31 A | 2026-04-01 A | QTS - 3720 | 100% |  | 2026-04-07 | 2026-04-17 |  |  | QTS-PHX3 DC1 - 6 day w/ Holidays |  |  |  | LV |  | DH1100 |  |  |  | TFO |  |  | TFO CONST | NICK | Low Voltage |  |  |  |  |
| QTS - 3800 |  | TFO Scope // DH 1100 / Lineup A - B / Install Fire Alarm & Security | 7d | 2026-04-09 A | 2026-05-01 A | QTS - 3790 | 100% |  | 2026-04-09 | 2026-04-16 |  |  | QTS-PHX3 DC1 - 6 day w/ Holidays |  |  |  | Electrical |  | DH1100 |  |  |  | TFO |  |  | TFO CONST | NICK | Oscar Armenta |  |  |  |  |
| QTS - 3820 |  | TFO Scope // DH 1100 / Lineup A - B / Terminate - BMS & EPMS Connections | 7d | 2026-04-15 A | 2026-05-21 A | QTS - 4800 | 100% |  | 2026-05-27 | 2026-06-03 |  |  | QTS-PHX3 DC1 - 6 day w/ Holidays |  |  |  | LV |  | DH1100 |  |  |  | TFO |  |  | TFO CONST | NICK |  |  |  | PRM |  |
| QTS - 3710 |  | TFO Scope // DH 1100 / Lineup A - B / Install LV Cable Tray Racks | 4d | 2026-04-16 A | 2026-05-08 A | QTS - 1020, QTS - 3850, QTS - 3730, QTS - 3860, QTS - 25151 | 100% |  | 2026-04-16 | 2026-04-20 |  |  | QTS-PHX3 DC1 - 6 day w/ Holidays | ROSEN |  |  | Electrical |  | DH1100 |  |  |  | TFO |  |  | TFO CONST | NICK | Oscar Armenta |  |  |  |  |
| QTS - 3870 |  | TFO Scope // DH 1100 / Lineup A - B / Install Power Cable Tray Racks | 4d | 2026-04-16 A | 2026-05-20 A | QTS - 3730, QTS - 3710 SS | 100% |  | 2026-04-16 | 2026-04-20 |  |  | QTS-PHX3 DC1 - 6 day w/ Holidays | ROSEN |  |  | Electrical |  | DH1100 |  |  |  | TFO |  |  | TFO CONST | NICK | Oscar Armenta |  |  |  |  |
| QTS - 4430 |  | TFO Scope // DH 1100 / Lineup A - B / Install Power Cable Tray | 19d | 2026-04-20 A | 2026-05-20 A | QTS - 3730, QTS - 3870 SS | 100% |  | 2026-04-20 | 2026-05-11 |  |  | QTS-PHX3 DC1 - 6 day w/ Holidays | ROSEN |  |  | Electrical |  | DH1100 |  |  |  | TFO |  |  | TFO CONST | NICK | Oscar Armenta |  |  |  |  |
| QTS - 4440 |  | TFO Scope // DH 1100 / Lineup A - B / Install LV Cable Tray | 19d | 2026-04-20 A | 2026-05-20 A | QTS - 4430 FF | 100% |  | 2026-04-20 | 2026-05-11 |  |  | QTS-PHX3 DC1 - 6 day w/ Holidays | ROSEN |  |  | Electrical |  | DH1100 |  |  |  | TFO |  |  | TFO CONST | NICK | Oscar Armenta |  |  |  |  |
| QTS - 25081 |  | TFO Scope // DH 1100 / Lineup A - B / Install Telecom Trays - Grid | 10d | 2026-05-06 A | 2026-06-05 A | QTS - 25071 | 100% |  | 2026-05-13 | 2026-05-23 |  |  | QTS-PHX3 DC1 - 6 day w/ Holidays | ROSEN |  |  | Electrical |  | DH1100 |  |  |  | TFO |  |  | TFO CONST | NICK | Oscar Armenta |  |  |  |  |
| QTS - 3880 |  | TFO Scope // DH 1100 / Lineup A - B / Install Cable Tray | 4d | 2026-05-06 A | 2026-06-08 A | QTS - 3870 FF+1d, QTS - 3870 SS+1d | 100% |  | 2026-05-06 | 2026-05-09 |  |  | QTS-PHX3 DC1 - 6 day w/ Holidays | ROSEN |  |  | Electrical |  | DH1100 |  |  |  | TFO |  |  | TFO CONST | NICK | Oscar Armenta |  |  |  |  |
| QTS - 10370 |  | TFO Scope // DH 1100 / Lineup A - B / Pull RPP Whips - RPP to Racks | 5d | 2026-05-24 A | 2026-06-03 A | QTS - 4440, QTS - 4430, QTS - 24791, DC1-DH1100-TAB-1000 | 100% |  | 2026-07-14 | 2026-07-18 |  |  | QTS-PHX3 DC1 - 6 day w/ Holidays | ROSEN |  |  | Electrical |  | DH1100 |  |  |  | TFO |  |  | TFO CONST | NICK | Oscar Armenta |  |  |  |  |
| QTS - 10380 |  | TFO Scope // DH 1100 / Lineup A - B / Terminate Whips at RPP | 5d | 2026-07-08 A | 2026-07-14 A | QTS - 10370 FF+3d | 100% |  | 2026-07-18 | 2026-07-23 |  |  | QTS-PHX3 DC1 - 6 day w/ Holidays | ROSEN |  |  | Electrical |  | DH1100 |  |  |  | TFO |  |  | TFO CONST | NICK |  |  |  |  |  |
| QTS - 3750 |  | TFO Scope // DH 1100 / Lineup A - B / Pull LV Wire | 2d | 2026-07-22 A | 2026-07-23 A | QTS - 4440, QTS - 4430, QTS - 3880, QTS - 3730, QTS - 25081 | 100% |  | 2026-07-29 | 2026-07-30 |  |  | QTS-PHX3 DC1 - 6 day w/ Holidays |  |  |  | LV |  | DH1100 |  |  |  | TFO |  |  | TFO CONST | NICK | Low Voltage | Prime |  | PRM |  |
| QTS - 25961 |  | TFO Scope // DH 1100 / Lineup A - B / Install Liquid Cooled Control Panels | 3d | 2026-07-23 A | 2026-07-24 A | QTS - 25881 | 100% |  | 2026-07-31 | 2026-08-03 |  |  | QTS-PHX3 DC1 - 6 day w/ Holidays |  |  |  | Electrical |  | DH1100 |  |  |  | TFO |  |  | TFO CONST | NICK | Electrical | Prime |  | PRM |  |
| QTS - 3770 |  | TFO Scope // DH 1100 / Lineup A - B / Terminate LV | 10d | 2026-07-23 A | 2026-08-03 A | QTS - 3750 | 100% |  | 2026-07-29 | 2026-08-08 |  |  | QTS-PHX3 DC1 - 6 day w/ Holidays |  |  |  | LV |  | DH1100 |  |  |  | TFO |  |  | TFO CONST | NICK | Low Voltage | Prime |  | PRM |  |
| QTS - 3810 |  | TFO Scope // DH 1100 / Lineup A - B / Test & Terminate I&C | 2d | 2026-07-27 A | 2026-07-28 A | QTS - 2620, QTS - 4810, QTS - 3790, QTS - 3800, QTS - 25961 | 100% |  | 2026-08-04 | 2026-08-05 |  |  | QTS-PHX3 DC1 - 6 day w/ Holidays |  |  |  | LV |  | DH1100 |  |  |  | TFO |  |  | TFO CONST | NICK | Low Voltage | Prime |  | PRM |  |

Notes:
- QTS-1001420: allucent_notes_20251209_203830: Jason Johnston on 2025-12-09 20:30: Need update from team / Scheduler Notes: Received Pods Without Top Hats Installed or Present / allucent_notes: 2025-12-09 20:30 - User: Jason Johnston - Date Added: 2025-12-09 20:30 - Note: Need update from team
- QTS-1001430: allucent_notes_20251209_203830: Jason Johnston on 2025-12-09 20:30: Need update from team / allucent_notes: 2025-12-09 20:30 - User: Jason Johnston - Date Added: 2025-12-09 20:30 - Note: Need update from team
- QTS-1001630: allucent_notes_20251209_203830: Jason Johnston on 2025-12-09 20:30: Need update from team / allucent_notes: 2025-12-09 20:30 - User: Jason Johnston - Date Added: 2025-12-09 20:30 - Note: Need update from team
- QTS-1001440: allucent_notes_20251209_203830: Jason Johnston on 2025-12-09 20:30: Need update from team / allucent_notes: 2025-12-09 20:30 - User: Jason Johnston - Date Added: 2025-12-09 20:30 - Note: Need update from team
- QTS-1001450: allucent_notes_20251209_203830: Jason Johnston on 2025-12-09 20:30: Need update from team / allucent_notes: 2025-12-09 20:30 - User: Jason Johnston - Date Added: 2025-12-09 20:30 - Note: Need update from team
- QTS-1001640: allucent_notes_20251209_203830: Jason Johnston on 2025-12-09 20:30: Need update from team / allucent_notes: 2025-12-09 20:30 - User: Jason Johnston - Date Added: 2025-12-09 20:30 - Note: Need update from team
- QTS-1671: allucent_notes_20251230_164549: Jason Johnston on 2025-12-30 16:42: No update / allucent_notes: 2025-12-30 16:42 - User: Jason Johnston - Date Added: 2025-12-30 16:42 - Note: No update
- QTS-42381: allucent_notes_20251216_165335: Jason Johnston on 2025-11-11 14:11: Tie to F gen. / Jason Johnston on 2025-11-19T02:24:46.307Z: undo / Jason Johnston on 2025-12-09 20:30: Need update from team / allucent_notes_20251209_203830: Jason Johnston on 2025-11-11 14:11: Tie to F gen. / Jason Johnston on 2025-11-19T02:24:46.307Z: undo / Jason Johnston on 2025-12-09 20:30: Need update from team / allucent_notes_20251202_153722: Jason Johnston on 2025-11-11 14:11: Tie to F gen. / Jason Johnston on 2025-11-19T02:24:46.307Z: undo / allucent_notes_20251118_192630: Jason Johnston on 2025-11-11 14:11: Tie to F gen. / Jason Johnston on 2025-11-19T02:24:46.307Z: undo / allucent_notes_20251111_182405: Jason Johnston on 2025-11-11 14:11: Tie to F gen. / allucent_notes_20251230_164549: Jason Johnston on 2025-11-11 14:11: Tie to F gen. / Jason Johnston on 2025-11-19T02:24:46.307Z: undo / Jason Johnston on 2025-12-09 20:30: Need update from team / allucent_notes: 2025-11-11 14:11 - User: Jason Johnston - Date Added: 2025-11-11 14:11 - Note: Tie to F gen. / 2025-11-19T02:24:46.307Z - User: Jason Johnston - Date Added: 2025-11-19T02:24:46.307Z - Note: undo / 2025-12-09 20:30 - User: Jason Johnston - Date Added: 20
- QTS-15111: allucent_notes_20251216_165335: Jason Johnston on 2025-11-19T02:24:50.297Z: undo / allucent_notes_20251209_203830: Jason Johnston on 2025-11-19T02:24:50.297Z: undo / allucent_notes_20251118_192630: Jason Johnston on 2025-11-19T02:24:50.297Z: undo / allucent_notes_20251230_164549: Jason Johnston on 2025-11-19T02:24:50.297Z: undo / allucent_notes: 2025-11-19T02:24:50.297Z - User: Jason Johnston - Date Added: 2025-11-19T02:24:50.297Z - Note: undo
- QTS-15851: allucent_notes_20251216_165335: Jason Johnston on 2025-11-11 14:11: Tie to F gen. / Jason Johnston on 2025-11-19T02:24:42.865Z: undo / Jason Johnston on 2025-12-09 20:30: Need update from team / Scott Masterson on 2025-12-16 16:48: Need to identify the number of conduits and the durations. but this has not started yet. Scott owes dates and durations. / allucent_notes_20251209_203830: Jason Johnston on 2025-11-11 14:11: Tie to F gen. / Jason Johnston on 2025-11-19T02:24:42.865Z: undo / Jason Johnston on 2025-12-09 20:30: Need update from team / allucent_notes_20251202_153722: Jason Johnston on 2025-11-11 14:11: Tie to F gen. / Jason Johnston on 2025-11-19T02:24:42.865Z: undo / allucent_notes_20251118_192630: Jason Johnston on 2025-11-11 14:11: Tie to F gen. / Jason Johnston on 2025-11-19T02:24:42.865Z: undo / allucent_notes_20251111_182405: Jason Johnston on 2025-11-11 14:11: Tie to F gen. / allucent_notes_20251230_164549: Jason Johnston on 2025-11-11 14:11: Tie to F gen. / Jason Johnston on 2025-11-19T02:24:42.865Z: undo / Jason Johnston on 2025-12-09 20:30: Need update from team / Scott Masterson on 2025-12-16 16:48: Need to identify the number of conduits and the durations. but this has not started yet. Scott owes dates and durations. / David Wiltberger on 2025-12-30 16:04: prefab late / allucent_notes: 2025-11-11 14:11 - User: Jason Johnston - Date Added: 2025-11-11 14:11 - Note: Tie to F gen. / 2025-11-19T02:24:42.865Z - User: Jason Johnston - Date Added: 2025-11-19T02:24:42.865Z - Note: undo / 2025-12-09 20:30 - User: Jason Johnston - Date Added: 20
- QTS-17351: Scheduler Notes: 3/2: 90% completed. Ten sets of neutral to installed. Was not able to / complete 3/2 due the trade partners did not show up / Notes: 3/2: 90% completed. Ten sets of neutral to installed. Was not able to complete 3/2 due the trade partners did not show up
- QTS-1007080: Scheduler Notes: Mistakenly actualized. Replacing QTS-1000280 / Notes: Mistakenly actualized. Replacing QTS-1000280
- QTS-1012500: allucent_notes_20251209_203830: Jason Johnston on 2025-12-09 20:30: Need update from team / Scheduler Notes: POD Compressor Failure - Waiting on resolution from vendor / allucent_notes: 2025-12-09 20:30 - User: Jason Johnston - Date Added: 2025-12-09 20:30 - Note: Need update from team
- QTS - 26561: Scheduler Notes: CDU Reduced Pressure Flow - RFI 186
- QTS - 3690: Scheduler Notes: North Half installed on 11/10. / Notes: North Half installed on 11/10.
- QTS - 3690.1: Scheduler Notes: South Half wainting on FP / Notes: South Half wainting on FP
- QTS - 3740: allucent_notes_20251230_164549: David Wiltberger on 2025-12-30 16:30: no update / Scheduler Notes: Changed from Conduit to Tray / Notes: Changed from Conduit to Tray / allucent_notes: 2025-12-30 16:30 - User: David Wiltberger - Date Added: 2025-12-30 16:30 - Note: no update
- QTS - 3890: Scheduler Notes: Changed from Conduit to Tray / Notes: Changed from Conduit to Tray
- QTS - 3850: Scheduler Notes: Changed Duration from 10 to 5 / Notes: Changed Duration from 10 to 5
- QTS - 24831: Scheduler Notes: Waiting on MEP / Notes: Waiting on MEP

| ID | WBS | Activity | Duration | Start | Finish | Predecessors | Complete | Planned start | Planned finish | Calendar | Allucent CSI Group | Layton Discipline | TFO-CONST ONLY | Contract | NICK | Location | Notes | Layton Super | Trade Partner |
| --- | --- | --- | --- | --- | --- | --- | --- | --- | --- | --- | --- | --- | --- | --- | --- | --- | --- | --- | --- |
|  | 2 | **1100 - TFO Scope Buildout (3MW) - Lineup C - D** |  | 2026-02-11 | 2026-08-03 |  |  |  |  |  |  |  |  |  |  |  |  |  |  |
| QTS - 15040 |  | TFO Scope // DH 1100 / Lineup C - D / Install OH Trapeze - Screen Wall to CODs | 3d | 2026-02-11 A | 2026-02-13 A | QTS - 3740 | 100% |  |  | QTS-PHX3 DC1 - 6 day w/ Holidays | 01ADMIN | Electrical | TFO CONST | TFO | NICK |  |  |  |  |
| QTS - 15050 |  | TFO Scope // DH 1100 / Lineup C - D / Install OH Trapeze - Screen Wall to RPPs | 3d | 2026-02-11 A | 2026-02-13 A | QTS - 15040 SS | 100% |  |  | QTS-PHX3 DC1 - 6 day w/ Holidays | 01ADMIN | Electrical | TFO CONST | TFO | NICK |  |  |  |  |
| QTS - 15150 |  | TFO Scope // DH 1100 / Lineup C - D / Pull MC Feeders - CODs to RPPs | 1d | 2026-03-07 A | 2026-03-11 A | QTS - 15040, QTS - 15050 | 100% | 2026-03-07 | 2026-03-07 | QTS-PHX3 DC1 - 6 day w/ Holidays |  | Electrical | TFO CONST | TFO | NICK | DH1100 |  |  |  |
| QTS - 15190 |  | TFO Scope // DH 1100 / Lineup C - D / Set RPP # 12 Units | 5d | 2026-03-13 A | 2026-03-17 A | QTS - 15050 | 100% | 2026-03-13 | 2026-03-18 | QTS-PHX3 DC1 - 6 day w/ Holidays |  | Electrical | TFO CONST | TFO | NICK | DH1100 |  |  |  |
| QTS - 25731 |  | TFO Scope // DH 1100 / Lineup C - D / Terminate Feeder at CODs | 5d | 2026-03-17 A | 2026-03-31 A | QTS - 15150 | 100% | 2026-03-17 | 2026-03-21 | QTS-PHX3 DC1 - 6 day w/ Holidays |  | Electrical | TFO CONST | TFO | NICK | DH1100 | 3/24: 50% complete. |  |  |
| QTS - 15230 |  | TFO Scope // DH 1100 / Lineup C - D / Terminate Feeder at RPPs | 5d | 2026-03-25 A | 2026-04-07 A | QTS - 15150 FF+3d, QTS - 15190 | 100% | 2026-04-01 | 2026-04-06 | QTS-PHX3 DC1 - 6 day w/ Holidays |  | Electrical | TFO CONST | TFO | NICK | DH1100 |  |  |  |
| QTS - 25111 |  | TFO Scope // DH 1100 / Lineup C - D / Install Grid Hangers | 5d | 2026-03-25 A | 2026-03-26 A | QTS - 25071 | 100% | 2026-04-01 | 2026-04-06 | QTS-PHX3 DC1 - 6 day w/ Holidays |  | Electrical | TFO CONST | TFO | NICK | DH1100 |  |  |  |
| QTS - 15180 |  | TFO Scope // DH 1100 / Lineup C - D / Rough-In I&C | 10d | 2026-04-02 A | 2026-04-06 A | QTS - 15190 | 100% | 2026-04-01 | 2026-04-11 | QTS-PHX3 DC1 - 6 day w/ Holidays |  | LV | TFO CONST | TFO | NICK | DH1100 |  | Low Voltage |  |
| QTS - 15000 |  | TFO Scope // DH 1100 / Lineup C - D / Build HACs | 3d | 2026-04-06 A | 2026-04-08 A | QTS - 26031 | 100% |  |  | QTS-PHX3 DC1 - 6 day w/ Holidays |  | Build Out | TFO CONST | TFO | NICK | DH1100 |  |  |  |
| QTS - 15020 |  | TFO Scope // DH 1100 / Lineup C - D / Install Fire Alarm & Security | 7d | 2026-04-09 A | 2026-05-08 A | QTS - 15180 | 100% | 2026-04-09 | 2026-04-16 | QTS-PHX3 DC1 - 6 day w/ Holidays |  | Electrical | TFO CONST | TFO | NICK | DH1100 |  | Oscar Armenta |  |
| QTS - 15240 |  | TFO Scope // DH 1100 / Lineup C - D / Terminate I&C | 5d | 2026-04-14 A | 2026-05-08 A | QTS - 15180, QTS - 15020 FF+2d | 100% | 2026-04-14 | 2026-04-18 | QTS-PHX3 DC1 - 6 day w/ Holidays |  | Electrical | TFO CONST | TFO | NICK | DH1100 |  | Oscar Armenta |  |
| QTS - 15140 |  | TFO Scope // DH 1100 / Lineup C - D / Pull RPP Whips - RPP to Racks | 5d | 2026-05-24 A | 2026-06-03 A | QTS - 24791, QTS - 10370 | 100% | 2026-07-20 | 2026-07-24 | QTS-PHX3 DC1 - 6 day w/ Holidays |  | Electrical | TFO CONST | TFO | NICK | DH1100 |  | Oscar Armenta |  |
| QTS - 15210 |  | TFO Scope // DH 1100 / Lineup C - D / Terminate - BMS & EPMS Connections | 7d | 2026-06-18 A | 2026-06-27 A | QTS - 3820, QTS - 15240 | 100% | 2026-07-01 | 2026-07-10 | QTS-PHX3 DC1 - 6 day w/ Holidays |  | LV | TFO CONST | TFO | NICK | DH1100 |  | Low Voltage |  |
| QTS - 15220 |  | TFO Scope // DH 1100 / Lineup C - D / Terminate Whips at RPP | 5d | 2026-07-08 A | 2026-07-14 A | QTS - 15140 FF+3d | 100% | 2026-07-18 | 2026-07-23 | QTS-PHX3 DC1 - 6 day w/ Holidays |  | Electrical | TFO CONST | TFO | NICK | DH1100 |  |  |  |
| QTS - 15160 |  | TFO Scope // DH 1100 / Lineup C - D / Pull LV Wire | 2d | 2026-07-24 A | 2026-07-25 A | QTS - 3690.1, QTS - 3750 | 100% | 2026-07-31 | 2026-08-01 | QTS-PHX3 DC1 - 6 day w/ Holidays |  | LV | TFO CONST | TFO | NICK | DH1100 |  | Low Voltage | Prime |
| QTS - 15250 |  | TFO Scope // DH 1100 / Lineup C - D / Terminate LV | 7d | 2026-07-27 A | 2026-08-03 A | QTS - 15160 | 100% | 2026-08-05 | 2026-08-12 | QTS-PHX3 DC1 - 6 day w/ Holidays |  | LV | TFO CONST | TFO | NICK | DH1100 |  | Low Voltage | Prime |
|  | 3 | **1100 - TFO Scope Buildout (3MW) - Lineup E - F** |  | 2026-02-09 | 2026-08-03 |  |  |  |  |  |  |  |  |  |  |  |  |  |  |
| QTS - 24501 |  | TFO Scope // DH 1100 / Lineup E - F / Install OH Trapeze - Screen Wall to CODs | 3d | 2026-02-09 A | 2026-02-11 A | QTS - 15050 | 100% |  |  | QTS-PHX3 DC1 - 6 day w/ Holidays |  | Electrical | TFO CONST | TFO | NICK |  |  |  |  |
| QTS - 24511 |  | TFO Scope // DH 1100 / Lineup E - F / Install OH Trapeze - Screen Wall to RPPs | 3d | 2026-02-09 A | 2026-02-11 A | QTS - 24501 SS | 100% |  |  | QTS-PHX3 DC1 - 6 day w/ Holidays |  | Electrical | TFO CONST | TFO | NICK |  |  |  |  |
| QTS - 24611 |  | TFO Scope // DH 1100 / Lineup E - F / Pull MC Feeders - CODs to RPPs | 5d | 2026-03-02 A | 2026-03-06 A | QTS - 24501, QTS - 24511, QTS - 15150 SS | 100% |  |  | QTS-PHX3 DC1 - 6 day w/ Holidays |  | Electrical | TFO CONST | TFO | NICK | DH1100 |  |  |  |
| QTS - 24651 |  | TFO Scope // DH 1100 / Lineup E - F / Set RPP # 12 Units | 5d | 2026-03-12 A | 2026-03-18 A | QTS - 3690.1, QTS - 24511 | 100% | 2026-03-12 | 2026-03-17 | QTS-PHX3 DC1 - 6 day w/ Holidays |  | Electrical | TFO CONST | TFO | NICK | DH1100 |  |  |  |
| QTS - 25741 |  | TFO Scope // DH 1100 / Lineup E - F / Terminate Feeder at CODs | 5d | 2026-03-23 A | 2026-04-02 A | QTS - 24611 | 100% | 2026-03-23 | 2026-03-27 | QTS-PHX3 DC1 - 6 day w/ Holidays |  | Electrical | TFO CONST | TFO | NICK | DH1100 | 3/24: Line up E started 3/23. |  |  |
| QTS - 24691 |  | TFO Scope // DH 1100 / Lineup E - F / Terminate Feeder at RPPs | 5d | 2026-03-25 A | 2026-04-07 A | QTS - 24611 FF+3d, QTS - 24651 | 100% | 2026-04-01 | 2026-04-06 | QTS-PHX3 DC1 - 6 day w/ Holidays |  | Electrical | TFO CONST | TFO | NICK | DH1100 |  |  |  |
| QTS - 25151 |  | TFO Scope // DH 1100 / Lineup E - F / Install Grid Hangers | 5d | 2026-03-30 A | 2026-04-03 A | QTS - 25111 | 100% |  |  | QTS-PHX3 DC1 - 6 day w/ Holidays |  | Electrical | TFO CONST | TFO | NICK | DH1100 |  |  |  |
| QTS - 24641 |  | TFO Scope // DH 1100 / Lineup E - F / Rough-In I&C | 10d | 2026-04-06 A | 2026-04-07 A | QTS - 24651 | 100% | 2026-04-01 | 2026-04-11 | QTS-PHX3 DC1 - 6 day w/ Holidays |  | LV | TFO CONST | TFO | NICK | DH1100 |  | Low Voltage |  |
| QTS - 24461 |  | TFO Scope // DH 1100 / Lineup E - F / Build HACs | 3d | 2026-04-09 A | 2026-04-11 A | QTS - 15000 | 100% |  |  | QTS-PHX3 DC1 - 6 day w/ Holidays |  | Build Out | TFO CONST | TFO | NICK | DH1100 |  |  |  |
| QTS - 24481 |  | TFO Scope // DH 1100 / Lineup E - F / Install Fire Alarm & Security | 7d | 2026-04-09 A | 2026-05-08 A | QTS - 24641 | 100% | 2026-04-09 | 2026-04-16 | QTS-PHX3 DC1 - 6 day w/ Holidays |  | Electrical | TFO CONST | TFO | NICK | DH1100 |  | Oscar Armenta |  |
| QTS - 24701 |  | TFO Scope // DH 1100 / Lineup E - F / Terminate I&C | 5d | 2026-04-20 A | 2026-07-24 A | QTS - 24641, QTS - 24481 FF | 100% | 2026-04-20 | 2026-04-24 | QTS-PHX3 DC1 - 6 day w/ Holidays |  | LV | TFO CONST | TFO | NICK | DH1100 |  | Low Voltage | Prime |
| QTS - 24671 |  | TFO Scope // DH 1100 / Lineup E - F / Terminate - BMS & EPMS Connections | 7d | 2026-06-17 A | 2026-06-28 A | QTS - 15210 SS, QTS - 15210 FF | 100% | 2026-07-07 | 2026-07-14 | QTS-PHX3 DC1 - 6 day w/ Holidays |  | LV | TFO CONST | TFO | NICK | DH1100 |  | Low Voltage |  |
| QTS - 24601 |  | TFO Scope // DH 1100 / Lineup E - F / Pull RPP Whips - RPP to Racks | 2d | 2026-07-06 A | 2026-07-07 A | QTS - 24791, QTS - 15140 | 100% | 2026-08-05 | 2026-08-06 | QTS-PHX3 DC1 - 6 day w/ Holidays |  | Electrical | TFO CONST | TFO | NICK | DH1100 |  |  |  |
| QTS - 24681 |  | TFO Scope // DH 1100 / Lineup E - F / Terminate Whips at RPP | 3d | 2026-07-08 A | 2026-07-14 A | QTS - 24601 FF+3d | 100% | 2026-08-07 | 2026-08-10 | QTS-PHX3 DC1 - 6 day w/ Holidays |  | Electrical | TFO CONST | TFO | NICK | DH1100 |  |  |  |
| QTS - 24621 |  | TFO Scope // DH 1100 / Lineup E - F / Pull LV Wire | 2d | 2026-07-27 A | 2026-07-28 A | QTS - 3690.1, QTS - 15160 | 100% | 2026-07-29 | 2026-07-30 | QTS-PHX3 DC1 - 6 day w/ Holidays |  | LV | TFO CONST | TFO | NICK | DH1100 |  | Low Voltage | Prime |
| QTS - 24711 |  | TFO Scope // DH 1100 / Lineup E - F / Terminate LV | 10d | 2026-07-27 A | 2026-08-03 A | QTS - 24621 | 100% | 2026-08-05 | 2026-08-15 | QTS-PHX3 DC1 - 6 day w/ Holidays |  | LV | TFO CONST | TFO | NICK | DH1100 |  | Low Voltage | Prime |

Notes:
- QTS - 25731: Scheduler Notes: 3/24: 50% complete.
- QTS - 15230: If Not Started or Finished Why?: They started on line C 9 has been terminated. A total of 3 are left for termination. Line D has 9 termination completed and 2 are left
- QTS - 25741: Scheduler Notes: 3/24: Line up E started 3/23.
- QTS - 24691: If Not Started or Finished Why?: They started on line E 5 has been terminated. A total of 7 are left for termination

| ID | WBS | Activity | Duration | Start | Finish | Predecessors | Complete | Planned start | Planned finish | Calendar | Allucent CSI Group | Layton Discipline | TFO-CONST ONLY | Contract | NICK | Location | Layton Super | Project Section | Baseline | Phase-1-1 | Project Section-1 | Level | Notes | Fragnet | Fragnet Responsible Party | Delay Notice 07-26 |
| --- | --- | --- | --- | --- | --- | --- | --- | --- | --- | --- | --- | --- | --- | --- | --- | --- | --- | --- | --- | --- | --- | --- | --- | --- | --- | --- |
|  | 10 | **Gallery 1101 Mechanical TFO** |  | 2025-12-04 | 2026-05-23 |  |  |  |  |  |  |  |  |  |  |  |  |  |  |  |  |  |  |  |  |  |
|  | 9 | **TFO 1101 - CDU Mechanical Gallery** |  | 2025-12-04 | 2026-05-23 |  |  |  |  |  |  |  |  |  |  |  |  |  |  |  |  |  |  |  |  |  |
| QTS - 4900 |  | TFO Scope // DH 1100 - 1101 Mechanical Gallery / Install OH Technical Loop Hangers | 5d | 2025-12-04 A | 2025-12-10 A | QTS - 2250 | 100% | 2025-12-03 | 2025-12-09 |  | 01ADMIN | Mechanical | TFO CONST | TFO | NICK |  |  |  |  |  |  |  |  |  |  |  |
| QTS - 4820 |  | TFO Scope // DH 1100 - 1101 Mechanical Gallery / Install OH 8" Technical Loop CDU Piping | 10d | 2026-01-28 A | 2026-02-03 A | QTS - 24731, QTS - 2250, QTS - 2590, QTS - 4900 | 100% | 2026-01-28 | 2026-02-07 | QTS-PHX3 DC1 - 6 day w/ Holidays | 01ADMIN | Mechanical | TFO CONST | TFO | NICK |  |  |  |  |  |  |  |  |  |  |  |
| QTS - 4840 |  | TFO Scope // DH 1100 - 1101 Mechanical Gallery / Pull Branches From MOD-03 to CDUs | 8d | 2026-02-16 A | 2026-02-20 A | QTS - 4650 SS | 100% | 2026-02-16 | 2026-02-24 | QTS-PHX3 DC1 - 6 day w/ Holidays |  | Electrical | TFO CONST | TFO | NICK |  |  |  |  |  |  |  |  |  |  |  |
| QTS - 4790 |  | TFO Scope // DH 1100 - 1101 Mechanical Gallery / OFCI - L2 SET IN PLACE - CDU - 3 units | 3d | 2026-03-02 A | 2026-03-04 A | QTS - 1040, QTS - 4820 | 100% |  |  | QTS-PHX3 DC1 - 6 day w/ Holidays |  | Mechanical | TFO CONST | TFO | NICK | DH1100 |  |  |  |  |  |  |  |  |  |  |
| QTS - 4800 |  | TFO Scope // DH 1100 - 1101 Mechanical Gallery / Pull LV Main / IDF Cabinet to Basket Tray | 7d | 2026-03-02 A | 2026-03-10 A | QTS-16501 | 100% | 2026-03-02 | 2026-03-09 | QTS-PHX3 DC1 - 6 day w/ Holidays |  | Electrical | TFO CONST | TFO | NICK | DH1100 |  |  |  |  |  |  |  |  |  |  |
| QTS - 4810 |  | TFO Scope // DH 1100 - 1101 Mechanical Gallery / Terminate & Torque - CDU Connections | 5d | 2026-03-11 A | 2026-03-19 A | QTS - 4790, QTS - 4840 | 100% | 2026-03-11 | 2026-03-16 | QTS-PHX3 DC1 - 6 day w/ Holidays |  | Electrical | TFO CONST | TFO | NICK | DH1100 |  |  |  |  |  |  |  |  |  |  |
| QTS - 4870 |  | TFO Scope // DH 1100 - 1101 Mechanical Gallery / Detail & Fabricate CDU Mechanical Connections | 10d | 2026-03-16 A | 2026-03-27 A | QTS - 4790 | 100% | 2026-03-09 | 2026-03-19 | QTS-PHX3 DC1 - 6 day w/ Holidays |  | Mechanical | TFO CONST | TFO | NICK | DH1100 |  |  |  |  |  |  |  |  |  |  |
| QTS - 24721 |  | TFO Scope // DH 1100 - 1101 Mechanical Gallery / CDU Unit 4" Mechanical Connections Lineup - A - B | 7d | 2026-03-30 A | 2026-04-14 A | QTS - 4870, QTS - 4790 | 100% | 2026-03-30 | 2026-04-06 | QTS-PHX3 DC1 - 6 day w/ Holidays |  | Mechanical | TFO CONST | TFO | NICK | DH1100 |  |  |  |  |  |  |  |  |  |  |
| QTS - 4850 |  | TFO Scope // DH 1100 - 1101 Mechanical Gallery / Fill & Flush Technical Loop A - B | 5d | 2026-04-15 A | 2026-04-24 A | QTS - 24721, QTS - 3840 | 100% | 2026-04-15 | 2026-04-19 | QTS-PHX3 DC1 - 7 day No Holidays |  | Mechanical | TFO CONST | TFO | NICK | DH1100 | Jorge Maldonado |  |  |  |  |  |  |  |  |  |
| QTS - 4920 |  | TFO Scope // DH 1100 - 1101 Mechanical Gallery / BMS & EPMS Terminations | 2d | 2026-04-21 A | 2026-04-23 A | QTS - 4800 | 100% | 2026-04-22 | 2026-04-23 | QTS-PHX3 DC1 - 6 day w/ Holidays |  | LV | TFO CONST | TFO | NICK | DH1100 |  |  |  |  |  |  |  |  |  |  |
| QTS-1011300 |  | TFO Scope // DH 1100 - 1101 Mechanical Gallery / Install Raceway for CDU Grounding | 8d | 2026-04-21 A | 2026-04-27 A | QTS - 4800 | 100% | 2026-04-21 | 2026-04-29 | QTS-PHX3 DC1 - 6 day w/ Holidays |  | Electrical | TFO CONST | TFO | NICK | DH1100 |  | Construction | IGMP | Phase 1 | Construction | Level 1 |  |  |  |  |
| QTS-1011790 |  | TFO Scope // DH 1100 - 1101 Mechanical Gallery / Pull Wire for CDU Controls | 2d | 2026-04-21 A | 2026-04-23 A | QTS - 4800 | 100% | 2026-04-21 | 2026-04-22 | QTS-PHX3 DC1 - 6 day w/ Holidays |  | Electrical | TFO CONST | TFO | NICK | DH1100 |  | Construction | IGMP | Phase 1 | Construction | Level 1 |  |  |  |  |
| QTS-1011310 |  | TFO Scope // DH 1100 - 1101 Mechanical Gallery / Pull Wire for CDU Grounding | 2d | 2026-04-27 A | 2026-04-29 A | QTS-1011300 | 100% | 2026-04-27 | 2026-04-28 | QTS-PHX3 DC1 - 6 day w/ Holidays |  | Electrical | TFO CONST | TFO | NICK | DH1100 | Oscar Armenta | Construction | IGMP | Phase 1 | Construction | Level 1 |  |  |  |  |
| QTS - 4910 |  | TFO Scope // DH 1100 - 1101 Mechanical Gallery / Clean Walk & PEI - Electrical | 2d | 2026-04-28 A | 2026-04-29 A | QTS - 4920, QTS - 4810, QTS-1011790 | 100% |  |  | QTS-PHX3 DC1 - 6 day w/ Holidays |  | Electrical | TFO CONST | TFO | NICK | DH1100 | Oscar Armenta |  |  |  |  |  |  |  |  |  |
| QTS-1011320 |  | TFO Scope // DH 1100 - 1101 Mechanical Gallery / Terminate Wire for CDU Grounding | 2d | 2026-04-29 A | 2026-05-04 A | QTS-1011310 FF | 100% | 2026-04-29 | 2026-04-30 | QTS-PHX3 DC1 - 6 day w/ Holidays |  | Electrical | TFO CONST | TFO | NICK | DH1100 | Oscar Armenta | Construction | IGMP | Phase 1 | Construction | Level 1 |  |  |  |  |
| QTS - 4930 |  | TFO Scope // DH 1100 - 1101 Mechanical Gallery / Final Connection Tie-In to CDU Lineup - A - B | 1d | 2026-05-04 A | 2026-05-04 A | QTS - 4850 | 100% |  |  | QTS-PHX3 DC1 - 6 day w/ Holidays |  | Mechanical | TFO CONST | TFO | NICK | DH1100 | Jorge Maldonado |  |  |  |  |  |  |  |  |  |
| QTS - 4860 |  | TFO Scope // DH 1100 - 1101 Mechanical Gallery / Clean Walk & PEI - Mechanical | 5d | 2026-05-05 A | 2026-05-09 A | QTS - 4930 | 100% |  |  | QTS-PHX3 DC1 - 6 day w/ Holidays |  | Mechanical | TFO CONST | TFO | NICK | DH1100 | Jorge Maldonado |  |  |  |  |  |  |  |  |  |
|  | 1 | **Fragnet / Gasket Failure in Technical Loop** |  | 2026-05-14 | 2026-05-23 |  |  |  |  |  |  |  |  |  |  |  |  |  |  |  |  |  |  |  |  |  |
| QTS - 26391 |  | Fragnet // DH1100 Gasket Failure on Technical Loop - Mobilization | 1d | 2026-05-14 A | 2026-05-14 A | QTS - 4850, QTS - 3840, DC1-DH1100-TAB-1010 | 100% |  |  | QTS-PHX3 DC1 - 7 day No Holidays |  | Mechanical | TFO CONST | TFO | NICK | DH1100 |  |  |  |  |  |  | Gasket Failure on Technical Loop | Fragnet | Bel-Aire Mechanical. LLC | Delay 07-26 |
| QTS - 26411 |  | Fragnet // DH1100 Gasket Failure on Technical Loop - Repair | 7d | 2026-05-15 A | 2026-05-19 A | QTS - 26391 | 100% | 2026-05-15 | 2026-05-21 | QTS-PHX3 DC1 - 7 day No Holidays |  | Mechanical | TFO CONST | TFO | NICK | DH1100 | Mechanical |  |  |  |  |  |  | Fragnet | Bel-Aire Mechanical. LLC | Delay 07-26 |
| QTS - 26421 |  | Fragnet // DH1100 Gasket Failure on Technical Loop - Glycol Delivery | 1d | 2026-05-19 A | 2026-05-19 A | QTS - 26411 | 100% | 2026-07-16 | 2026-07-16 | QTS-PHX3 DC1 - 7 day No Holidays |  | Mechanical | TFO CONST | TFO | NICK | DH1100 | Mechanical |  |  |  |  |  |  | Fragnet | Bel-Aire Mechanical. LLC | Delay 07-26 |
| QTS - 26401 |  | Fragnet // DH1100 Gasket Failure on Technical Loop - Re-Do Fill and Flush | 10d | 2026-05-21 A | 2026-05-23 A | QTS - 26421, QTS-1012560 | 100% | 2026-07-17 | 2026-07-26 | QTS-PHX3 DC1 - 7 day No Holidays |  | Mechanical | TFO CONST | TFO | NICK | DH1100 | Mechanical |  |  |  |  |  |  | Fragnet | Bel-Aire Mechanical. LLC | Delay 07-26 |

Notes:
- QTS - 26391: Scheduler Notes: Gasket Failure on Technical Loop

| ID | WBS | Activity | Duration | Start | Finish | Predecessors | Complete | Remaining | Planned start | Planned finish | Total float | Free float | Calendar | Allucent CSI Group | Layton Discipline | TFO-CONST ONLY | Contract | NICK | Location | Layton Super | Project Section | Phase-1 | Baseline | Level | Layton PM | Trade Partner | D | No PreUp | Fragnet | Owner Impact Analysis | Fragnet Responsible Party | Delay Notice 07-26 |
| --- | --- | --- | --- | --- | --- | --- | --- | --- | --- | --- | --- | --- | --- | --- | --- | --- | --- | --- | --- | --- | --- | --- | --- | --- | --- | --- | --- | --- | --- | --- | --- | --- |
|  | 11 | **Gallery 1103 Mechanical TFO** |  | 2025-12-11 | 2026-07-10 |  |  |  |  |  |  |  |  |  |  |  |  |  |  |  |  |  |  |  |  |  |  |  |  |  |  |  |
|  | 10 | **TFO 1103 - CDU Mechanical Gallery** |  | 2025-12-11 | 2026-07-10 |  |  |  |  |  |  |  |  |  |  |  |  |  |  |  |  |  |  |  |  |  |  |  |  |  |  |  |
| QTS - 4710 |  | TFO Scope // DH 1100 - 1103 Mechanical Gallery / Install OH Technical Loop Hangers | 5d | 2025-12-11 A | 2025-12-17 A | QTS - 4900, QTS - 2250 | 100% |  |  |  |  |  |  | 01ADMIN | Mechanical | TFO CONST | TFO | NICK |  |  |  |  |  |  |  |  |  |  |  |  |  |  |
| QTS - 4600 |  | TFO Scope // DH 1100 - 1103 Mechanical Gallery / OFCI - L2 SET IN PLACE - CDU - 3 units | 3d | 2026-01-17 A | 2026-01-19 A | QTS - 1040, QTS - 4630 | 100% |  | 2026-01-17 | 2026-01-21 |  |  | QTS-PHX3 DC1 - 6 day w/ Holidays |  | Mechanical | TFO CONST | TFO | NICK |  |  |  |  |  |  |  |  |  |  |  |  |  |  |
| QTS - 4630 |  | TFO Scope // DH 1100 - 1103 Mechanical Gallery / Install OH 8" Technical Loop CDU Piping | 10d | 2026-01-28 A | 2026-02-03 A | QTS - 24731, QTS - 2250, QTS - 2590, QTS - 4710 | 100% |  | 2026-01-28 | 2026-02-07 |  |  | QTS-PHX3 DC1 - 6 day w/ Holidays | 01ADMIN | Mechanical | TFO CONST | TFO | NICK |  |  |  |  |  |  |  |  |  |  |  |  |  |  |
| QTS - 4650 |  | TFO Scope // DH 1100 - 1103 Mechanical Gallery / Pull Branches From MOD-03 to CDUs | 8d | 2026-02-16 A | 2026-02-20 A | QTS - 4630 | 100% |  | 2026-02-16 | 2026-02-24 |  |  | QTS-PHX3 DC1 - 6 day w/ Holidays |  | Electrical | TFO CONST | TFO | NICK |  |  |  |  |  |  |  |  |  |  |  |  |  |  |
| QTS - 4610 |  | TFO Scope // DH 1100 - 1103 Mechanical Gallery / Pull LV Main / IDF Cabinet to Basket Tray | 7d | 2026-03-02 A | 2026-03-10 A | QTS-17071, QTS-16491 | 100% |  | 2026-03-02 | 2026-03-09 |  |  | QTS-PHX3 DC1 - 6 day w/ Holidays |  | Electrical | TFO CONST | TFO | NICK | DH1100 |  |  |  |  |  |  |  |  |  |  |  |  |  |
| QTS - 4620 |  | TFO Scope // DH 1100 - 1103 Mechanical Gallery / Terminate & Torque - CDU Connections | 5d | 2026-03-11 A | 2026-03-19 A | QTS - 4600, QTS - 4650 | 100% |  | 2026-03-11 | 2026-03-16 |  |  | QTS-PHX3 DC1 - 6 day w/ Holidays |  | Electrical | TFO CONST | TFO | NICK | DH1100 |  |  |  |  |  |  |  |  |  |  |  |  |  |
| QTS - 4680 |  | TFO Scope // DH 1100 - 1103 Mechanical Gallery / Detail & Fabricate CDU Mechanical Connections | 10d | 2026-03-11 A | 2026-04-13 A | QTS - 4600 | 100% |  | 2026-03-11 | 2026-03-21 |  |  | QTS-PHX3 DC1 - 6 day w/ Holidays |  | Mechanical | TFO CONST | TFO | NICK | DH1100 | Mechanical |  |  |  |  |  |  |  |  |  |  |  |  |
| QTS - 4640 |  | TFO Scope // DH 1100 - 1103 Mechanical Gallery / CDU Unit 4" Mechanical Connections Lineup - A - B | 4d | 2026-04-21 A | 2026-04-24 A | QTS - 3840, QTS - 4600, QTS - 4630, QTS - 4680 | 100% |  | 2026-07-20 | 2026-07-23 |  |  | QTS-PHX3 DC1 - 6 day w/ Holidays |  | Mechanical | TFO CONST | TFO | NICK | DH1100 | Mechanical |  |  |  |  |  |  |  |  |  |  |  |  |
| QTS - 4730 |  | TFO Scope // DH 1100 - 1103 Mechanical Gallery / BMS & EPMS Terminations | 2d | 2026-04-21 A | 2026-04-23 A | QTS - 4620, QTS - 4610 | 100% |  | 2026-04-22 | 2026-04-23 |  |  | QTS-PHX3 DC1 - 6 day w/ Holidays |  | LV | TFO CONST | TFO | NICK | DH1100 |  |  |  |  |  |  |  |  |  |  |  |  |  |
| QTS - 4660 |  | TFO Scope // DH 1100 - 1103 Mechanical Gallery / Fill & Flush Technical Loop A - B | 5d | 2026-04-27 A | 2026-05-01 A | QTS - 3840, QTS - 4640 | 100% |  | 2026-07-24 | 2026-07-28 |  |  | QTS-PHX3 DC1 - 7 day No Holidays |  | Mechanical | TFO CONST | TFO | NICK | DH1100 | Mechanical |  |  |  |  |  |  |  |  |  |  |  |  |
| QTS - 4720 |  | TFO Scope // DH 1100 - 1103 Mechanical Gallery / Clean Walk & PEI - Electrical | 2d | 2026-04-28 A | 2026-04-29 A | QTS - 4730, QTS - 4620 | 100% |  |  |  |  |  | QTS-PHX3 DC1 - 6 day w/ Holidays |  | Electrical | TFO CONST | TFO | NICK | DH1100 | Oscar Armenta |  |  |  |  |  |  |  |  |  |  |  |  |
| QTS - 4740 |  | TFO Scope // DH 1100 - 1103 Mechanical Gallery / Final Connection to CDU Lineup - A - B | 5d | 2026-07-06 A | 2026-07-10 A | QTS - 4660 | 100% |  | 2026-07-15 | 2026-07-20 |  |  | QTS-PHX3 DC1 - 6 day w/ Holidays |  | Mechanical | TFO CONST | TFO | NICK | DH1100 | Mechanical |  |  |  |  |  |  |  |  |  |  |  |  |
|  | 19 | **DH 1100 Close Out** |  | 2026-07-22 | 2026-08-25 |  |  |  |  |  |  |  |  |  |  |  |  |  |  |  |  |  |  |  |  |  |  |  |  |  |  |  |
| QTS-1231 |  | DH 1100 / Closeout // LCC Worklist | 15d | 2026-07-22 A | 2026-08-19 | QTS-13331, QTS-1641, QTS-1002360, QTS-13321, QTS-102620, QTS-102050, QTS-102100, QTS-13331 FF, QTS-99930, QTS-12981, QTS-12971, QTS-13651, QTS-13641, QTS-99950, QTS-M4220 | 93% | 1d | 2026-07-29 | 2026-08-18 | -80d | 0d |  |  | Closeout |  | BAB |  |  | Jake Shimmin | Close Out | Phase 1 | IGMP | Level 1 | TTodaro | Layton |  |  |  |  |  |  |
| QTS-3211 |  | DH 1100 / Closeout // Final Clean | 5d | 2026-08-11 A | 2026-08-24 | QTS-1231 FF, QTS-1231 SS, QTS - 4740, QTS-0540 | 20% | 4d | 2026-08-12 | 2026-08-18 | -80d | 0d |  |  | Closeout |  | BAB |  |  | Jake Shimmin | Close Out | Phase 1 | IGMP | Level 1 | TTodaro | Layton |  |  |  |  |  |  |
| QTS-4431 |  | DH 1100 / Closeout // A/E Punch List | 1d | 2026-08-25 | 2026-08-25 | QTS-102100, QTS-3211 |  |  |  |  | -80d | 4d |  |  | Closeout |  | BAB |  |  | Jake Shimmin | Close Out | Phase 1 | IGMP | Level 1 | TTodaro | Layton |  |  |  |  |  |  |
|  | 14 | **Data Hall 1100 Commissioning** |  | 2026-04-25 | 2026-08-18 |  |  |  |  |  |  |  |  |  |  |  |  |  |  |  |  |  |  |  |  |  |  |  |  |  |  |  |
| QTS-100420 |  | DH 1100 / Rooftop Mechanical // Pre Energization Inspection DOAS | 1d | 2026-04-25 A | 2026-04-25 A | QTS-50141, QTS-100400 | 100% |  |  |  |  |  | QTS-PHX3 DC1 - 6 day w/ Holidays | 01ADMIN | Commissioning |  | BAB |  | DH2100 |  | Construction | Phase 1 | IGMP | Level 2 |  |  | DH1100 |  |  |  |  |  |
| QTS-1012540 |  | DH 1100 / Data Hall 1100 / L2 Checklist CDU | 5d | 2026-06-05 A | 2026-06-06 A | QTS - 4810, QTS - 4620 | 100% |  | 2026-07-21 | 2026-07-25 |  |  | **GLOBAL - 6 Day Workweek w/ Basic Holidays |  | Commissioning |  |  |  |  | Electrical |  |  |  |  |  |  | DH1100 | NO |  |  |  |  |
| QTS-1012550 |  | DH 1100 / Data Hall 1100 / Pre Energization Inspection CDU | 5d | 2026-06-08 A | 2026-06-08 A | QTS-1012540 | 100% |  | 2026-07-28 | 2026-08-01 |  |  | **GLOBAL - 6 Day Workweek w/ Basic Holidays |  | Commissioning |  |  |  |  | Electrical |  |  |  |  |  |  | DH1100 |  |  |  |  |  |
| QTS-1012560 |  | DH 1100 / Data Hall 1100 / First Time Energization CDU | 5d | 2026-07-01 A | 2026-07-14 A | QTS-1012550, DC1-CDU-L2-2000, DC1-CDU-L2-2010, DC1-CDU-L2-2020, DC1-CDU-L2-2030, DC1-CDU-L2-2040 | 100% |  | 2026-08-03 | 2026-08-07 |  |  | **GLOBAL - 6 Day Workweek w/ Basic Holidays |  | Commissioning |  |  |  |  | Electrical |  |  |  |  |  |  | DH1100 |  |  |  |  |  |
|  | 1 | **1100 Path to Power (FTE)** |  |  |  |  |  |  |  |  |  |  |  |  |  |  |  |  |  |  |  |  |  |  |  |  |  |  |  |  |  |  |
|  | 3 | **Fragnet - DH 1100 Commissioning Impacts** |  | 2026-07-23 | 2026-08-17 |  |  |  |  |  |  |  |  |  |  |  |  |  |  |  |  |  |  |  |  |  |  |  |  |  |  |  |
| QTS-1013720 |  | DH 1100 / L4 Mechanical - Fragnet Delay - UMAS Reprogramming the POD - CRAHs | 5d | 2026-07-23 A | 2026-07-28 A | QTS-0640 SS, QTS - 26401, QTS-0650 | 100% |  | 2026-07-22 | 2026-07-26 |  |  | **GLOBAL - 7 Day Workweek w/ Basic Holidays |  | Commissioning |  | BAB |  |  | Mechanical |  |  |  |  |  | ERS | DH1100 |  | Fragnet | Y | UMAS | Delay 07-26 |
| QTS-1013740 |  | DH 1100 / L4 Electrical - Fragnet Delay due to AHU in PODs Failure | 2d | 2026-07-23 A | 2026-08-10 A | QTS-0640 | 100% |  | 2026-07-29 | 2026-07-30 |  |  | **GLOBAL - 7 Day Workweek w/ Basic Holidays |  | Commissioning |  | BAB |  |  | Electrical |  |  |  |  |  | ERS | DH1100 |  | Fragnet | Y | CAPS | Delay 07-26 |
| QTS-1013760 |  | DH 1100 / Data Hall 1100 / Fragnet delay - CDU-01 Not visible on QTS Network - Holding up Mech/Elec L4's | 5d | 2026-07-23 A | 2026-08-03 A | QTS-1013500 | 100% |  | 2026-08-08 | 2026-08-12 |  |  | **GLOBAL - 7 Day Workweek w/ Basic Holidays |  | Commissioning |  | BAB |  |  | Electrical |  |  |  |  |  | QTS Vendor | DH1100 |  | Fragnet | Y | Quality Technology Services | Delay 07-26 |
| QTS-1013810 |  | DH 1100 / Data Hall 1100 / Fragnet Delay due to Vertiv failing to show on 4 occasions to support L3/L4 Air & Water Tab | 5d | 2026-07-24 A | 2026-07-28 A | QTS-0650 | 100% |  | 2026-07-29 | 2026-08-03 |  |  | **GLOBAL - 6 Day Workweek w/ Basic Holidays |  | Commissioning |  | BAB |  |  | Electrical |  |  |  |  |  | QTS Vendor | DH1100 |  | Fragnet | Y | Vertiv | Delay 07-26 |
| QTS-1014060 |  | DH 1100 / Data Hall 1100 / Fragnet - POD Temporary Cooling | 1d | 2026-07-30 A | 2026-08-04 A | QTS-1013500, QTS-1013760, QTS-1013720, QTS-1013810 | 100% |  | 2026-08-07 | 2026-08-07 |  |  | **GLOBAL - 7 Day Workweek w/ Basic Holidays |  | Commissioning |  | BAB |  |  | Mechanical |  |  |  |  |  | ERS | DH1100 |  | Fragnet | Y | CAPS |  |
| QTS-1013770 |  | TFO Scope / DH 1100 / Data Hall 1100 / Startup CDU - Fragnet - Delayed due to not being visible on QTS Network | 1d | 2026-08-03 A | 2026-08-03 A | QTS-1013760 FF, QTS-0640 | 100% |  | 2026-07-29 | 2026-07-29 |  |  | **GLOBAL - 7 Day Workweek w/ Basic Holidays |  | Commissioning |  | TFO |  |  | Electrical |  |  |  |  |  | QTS Vendor | DH1100 |  | Fragnet | Y | Quality Technology Services | Delay 07-26 |
| QTS-1014080 |  | DH 1100 / Data Hall 1100 / Fragnet - Burn E11 UPS | 4d | 2026-08-04 A | 2026-08-04 A | QTS-1014060, QTS-1014090 SS | 100% |  | 2026-08-06 | 2026-08-09 |  |  | **GLOBAL - 7 Day Workweek w/ Basic Holidays |  | Commissioning |  | BAB |  |  | Mechanical |  |  |  |  |  | ERS | DH1100 |  | Fragnet | Y | CAPS |  |
| QTS-1014090 |  | Data Hall 1100 / Fragnet - L4 TFO without AHU | 4d | 2026-08-04 A | 2026-08-12 A | QTS-1014060 | 100% |  | 2026-08-07 | 2026-08-10 |  |  | **GLOBAL - 7 Day Workweek w/ Basic Holidays |  | Commissioning |  | BAB |  |  | Mechanical |  |  |  |  |  | ERS | DH1100 |  | Fragnet | Y | CAPS |  |
| QTS-1014410 |  | Data Hall 1100 / L4 Electrical - Fragnet Delay due to Change in BSWY BRKR to LSI | 4d | 2026-08-11 A | 2026-08-12 A | QTS-0640 | 100% |  | 2026-08-12 | 2026-08-15 |  |  | **GLOBAL - 7 Day Workweek w/ Basic Holidays |  | Commissioning |  | BAB |  |  | Electrical |  |  |  |  |  | ERS | DH1100 |  | Fragnet | Y | Quality Technology Services | Delay 07-26 |
| QTS-1014420 |  | Data Hall 1100 / L4 Electrical - Fragnet Delay due to AHU in PODs Failure - Replace & Test Compressors | 2d | 2026-08-11 A | 2026-08-14 A | QTS-1013740 | 100% |  | 2026-07-29 | 2026-07-30 |  |  | **GLOBAL - 7 Day Workweek w/ Basic Holidays |  | Commissioning |  | BAB |  |  | Electrical |  |  |  |  |  | ERS | DH1100 |  | Fragnet | Y | CAPS | Delay 07-26 |
| QTS-1014100 |  | Data Hall 1100 / Fragnet - Finish Base Build L4 RVT without AHU | 2d | 2026-08-13 A | 2026-08-13 A | QTS-1014090, QTS-1014080 | 100% |  | 2026-08-13 | 2026-08-14 |  |  | **GLOBAL - 7 Day Workweek w/ Basic Holidays |  | Commissioning |  | BAB |  |  | Mechanical |  |  |  |  |  | ERS | DH1100 |  | Fragnet | Y | CAPS |  |
| QTS-1014110 |  | Data Hall 1100 / Fragnet - IST Complete without AHU | 1d | 2026-08-14 A | 2026-08-14 A | QTS-1014100 | 100% |  | 2026-08-15 | 2026-08-15 |  |  | **GLOBAL - 7 Day Workweek w/ Basic Holidays |  | Commissioning |  | BAB |  |  | Mechanical |  |  |  |  |  | ERS | DH1100 |  | Fragnet | Y | CAPS |  |
| QTS-1013750 |  | Data Hall 1100 / Fragnet Delay - Complete L4 Electrical Remaining | 1d | 2026-08-15 A | 2026-08-17 A | QTS-1013740, QTS-1013760, QTS-1013770, QTS-1014410, QTS-1014420 | 100% |  | 2026-08-15 | 2026-08-15 |  |  | **GLOBAL - 7 Day Workweek w/ Basic Holidays |  | Commissioning |  | BAB |  |  | Electrical |  |  |  |  |  | ERS | DH1100 |  | Fragnet | Y | CAPS |  |
| QTS-1013780 |  | Data Hall 1100 / Fragnet Delay - Complete L4 Mechanical Remaining | 1d | 2026-08-15 A | 2026-08-17 A | QTS-1013500, QTS-1013760, QTS-1013720, QTS-1013750 SS, QTS-1013810 | 100% |  | 2026-08-15 | 2026-08-15 |  |  | **GLOBAL - 7 Day Workweek w/ Basic Holidays |  | Commissioning |  | BAB |  |  | Mechanical |  |  |  |  |  | ERS | DH1100 |  | Fragnet | Y | Quality Technology Services |  |

Notes:
- QTS-100420: allucent_notes_20251014_152335: David Wiltberger on 2025-08-19 09:08: changed pick order / David Wiltberger on 2025-09-02 10:09: Moving to accommodate roofing in Zone 1 / David Wiltberger on 2025-09-24 04:09: BAM not completed Potential Delay / David Wiltberger on 2025-09-30 12:09: BAM did not complete / David Wiltberger on 2025-10-14 10:10: set on recovery schedule / allucent_notes: David Wiltberger on 2025-08-19 09:08: changed pick order / allucent_notes: 2025-08-19 09:08 - User: David Wiltberger - Date Added: 2025-08-19 09:08 - Note: changed pick order / 2025-09-02 10:09 - User: David Wiltberger - Date Added: 2025-09-02 10:09 - Note: Moving to accommodate roofing in Zone 1 / 2025-09-24 04:09 - User: Dav
- QTS-1013720: Scheduler Notes: 7/24/26 - Fragnet Delay - UMAS Reprogramming the PID - CRAHs / Notes: Delay due to UMAS Reprogramming the PID - CRAHs
- QTS-1013740: Scheduler Notes: 7/24/26 - Delay due to AHU in PODs - Compressor Failures CAPS / troubleshooting R11, B11, E11 programming issue - may have to reset all / units / Notes: Delay due to AHU in PODs Failure
- QTS-1013760: Scheduler Notes: 7/23/26 - CDU-01 Not visible on QTS Network - holkding up Mechanical and / Electrical L4's
- QTS-1013810: Scheduler Notes: 7/27/26 - Vertiv did not show on 4 occasions to support L3/L4 Air & / Water Tab / Notes: Vertiv did not show on 4 occasions to support L3/L4 Air & Water Tab
- QTS-1014060: Scheduler Notes: Delay due to CDU-01 QTS Network visibility
- QTS-1013770: Scheduler Notes: 7/23/26 - CDU-01 Not visible on QTS Network - holkding up Mechanical / L4's
- QTS-1014080: Scheduler Notes: Delay due to CDU-01 QTS Network visibility
- QTS-1014090: Scheduler Notes: 7/24/26 - Delay due to AHU in PODs - Compressor Failures CAPS / troubleshooting R11, B11, E11 programming issue - may have to reset all units
- QTS-1014410: Scheduler Notes: Need to change Busway Breakers from LSIG to LSI / Notes: Delay due to AHU in PODs Failure
- QTS-1014420: Scheduler Notes: 7/24/26 - Delay due to AHU in PODs - Compressor Failures CAPS / troubleshooting R11, B11, E11 programming issue - may have to reset all / units / Notes: Delay due to AHU in PODs Failure
- QTS-1014100: Scheduler Notes: 7/24/26 - Delay due to AHU in PODs - Compressor Failures CAPS / troubleshooting R11, B11, E11 programming issue - may have to reset all units
- QTS-1014110: Scheduler Notes: Delay due to CDU-01 QTS Network visibility / 7/24/26 - Delay due to AHU in PODs - Compressor Failures CAPS / troubleshooting R11, B11, E11 programming issue - may have to reset all units
- QTS-1013750: Scheduler Notes: 7/24/26 - Delay due to AHU in PODs - Compressor Failures CAPS / troubleshooting R11, B11, E11 programming issue - may have to reset all / units / Notes: Delay due to AHU in PODs Failure
- QTS-1013780: Scheduler Notes: 7/24/26 - Delay due to AHU in PODs - Compressor Failures CAPS / troubleshooting R11, B11, E11 programming issue - may have to reset all units

| ID | WBS | Activity | Duration | Start | Finish | Predecessors | Complete | Planned start | Planned finish | Calendar | Layton Discipline | Layton Super | Contract | Trade Partner | D | Owner Impact Analysis | Fragnet Responsible Party | TFO-CONST ONLY | NICK | Allucent CSI Group | Project Section | Baseline | Project Section-1 | Location | Level | Notes |
| --- | --- | --- | --- | --- | --- | --- | --- | --- | --- | --- | --- | --- | --- | --- | --- | --- | --- | --- | --- | --- | --- | --- | --- | --- | --- | --- |
|  | 2 | **DH 1100 Commissioning Existing Scope** |  | 2026-07-07 | 2026-08-18 |  |  |  |  |  |  |  |  |  |  |  |  |  |  |  |  |  |  |  |  |  |
| QTS-0640 |  | DH 1100 / Data Hall 1100 / L4 Electrical | 18d | 2026-07-07 A | 2026-07-22 A | QTS-M4220, QTS - 10380, QTS - 15220, QTS - 24681, QTS - 26171, QTS - 3820, QTS - 4920 | 100% | 2026-07-21 | 2026-08-10 | **GLOBAL - 6 Day Workweek w/ Basic Holidays | Commissioning | Electrical | BAB | ERS | DH1100 |  |  |  |  |  |  |  |  |  |  |  |
| QTS-0650 |  | DH 1100 / Data Hall 1100 / L4 Mechanical | 18d | 2026-07-07 A | 2026-07-22 A | QTS - 26401, QTS - 4720, QTS - 4860, QTS - 4910, QTS-1011320, QTS-1014030 | 100% | 2026-08-04 | 2026-08-24 | **GLOBAL - 6 Day Workweek w/ Basic Holidays | Commissioning | Mechanical | BAB | ERS | DH1100 |  |  |  |  |  |  |  |  |  |  |  |
| QTS-1013500 |  | TFO Scope / DH 1100 / Data Hall 1100 / Startup CDU - Delayed due to not being visible on QTS Network | 5d | 2026-07-15 A | 2026-07-23 A | QTS-1012560, QTS - 26561 | 100% | 2026-08-08 | 2026-08-13 | **GLOBAL - 6 Day Workweek w/ Basic Holidays | Commissioning | Electrical | TFO | QTS Vendor | DH1100 | Y | Quality Technology Services |  |  |  |  |  |  |  |  |  |
| QTS-0670 |  | Data Hall 1100 / L4 TFO Liquid Cooled AHU | 3d | 2026-08-12 A | 2026-08-13 A | QTS - 24701, QTS - 3770, QTS - 15250, QTS - 24711 | 100% | 2026-08-18 | 2026-08-20 | **GLOBAL - 7 Day Workweek w/ Basic Holidays | Commissioning | Mechanical | TFO | ERS | DH1100 |  |  | TFO CONST | NICK |  |  |  |  |  |  |  |
| QTS-0660 |  | Data Hall 1100 / Air Cooled RVT/ IST AHU | 2d | 2026-08-17 A | 2026-08-18 A | QTS-0650, QTS-0640, QTS-1011760, QTS-1011780, QTS-1091, DC1-RPP-L3-CX-2005, DC1-RPP-L3-CX-2020, DC1-RPP-L3-CX-2035, DC1-RPP-L3-CX-2050, DC1-RPP-L3-CX-2065, DC1-RPP-L3-CX-2080, DC1-RPP-L3-CX-2095, DC1-RPP-L3-CX-2110, DC1-RPP-L3-CX-2125, DC1-RPP-L3-CX-2140, DC1-RPP-L3-CX-2155, DC1-RPP-L3-CX-2170, DC1-RPP-L3-CX-2185, DC1-RPP-L3-CX-2200, DC1-RPP-L3-CX-2215, DC1-RPP-L3-CX-2230, DC1-RPP-L3-CX-2245, DC1-RPP-L3-CX-2260, DC1-RPP-L3-CX-2275, DC1-RPP-L3-CX-2290, DC1-RPP-L3-CX-2305, DC1-RPP-L3-CX-2320, DC1-RPP-L3-CX-2335, DC1-RPP-L3-CX-2350, DC1-RPP-L3-CX-2365, DC1-RPP-L3-CX-2380, DC1-RPP-L3-CX-2395, DC1-RPP-L3-CX-2410, DC1-RPP-L3-CX-2425, DC1-RPP-L3-CX-2440, DC1-RPP-L3-CX-2455, DC1-RPP-L3-CX-2470, DC1-RPP-L3-CX-2485, DC1-RPP-L3-CX-2500, DC1-RPP-L3-CX-2515, DC1-RPP-L3-CX-2530, QTS-1013720, QTS-1013750, QTS-1013780, QTS-1014110 | 100% |  |  | **GLOBAL - 6 Day Workweek w/ Basic Holidays | Commissioning | Mechanical | BAB | ERS | DH1100 |  |  |  |  |  |  |  |  |  |  |  |
|  | 3 | **Data Hall 2100 (9MW)** |  | 2025-01-17 | 2026-09-11 |  |  |  |  |  |  |  |  |  |  |  |  |  |  |  |  |  |  |  |  |  |
| QTS-19841 |  | DH 2100 // Prime & Paint Exposed Structure | 10d | 2025-07-24 A | 2025-08-06 A | QTS-46921, QTS-1033, QTS-19811 SS+3d | 100% |  |  |  | Build Out |  | BAB |  |  |  |  |  |  | 01ADMIN | Construction | IGMP | Construction | DH2100 | Level 2 |  |
| QTS-20921 |  | DH 2100 // Install Fire Sprinkler | 8d | 2025-08-07 A | 2025-08-27 A | QTS-19841 | 100% | 2025-08-07 | 2025-08-18 |  | Mechanical |  | BAB |  |  |  |  |  |  | 01ADMIN | Construction | IGMP | Construction | DH2100 | Level 2 |  |
| QTS-21471 |  | DH 2100 // Install Fire Caulking | 3d | 2025-08-12 A | 2025-08-20 A | QTS-19841 | 100% | 2025-08-12 | 2025-08-14 |  | Build Out |  | BAB |  |  |  |  |  |  | 01ADMIN | Construction | IGMP | Construction | DH2100 | Level 2 |  |
| QTS-21461 |  | DH 2100 // Establish Control & Layout Walls | 3d | 2025-08-25 A | 2025-08-27 A | QTS-25441, QTS-21471, QTS-19841 | 100% | 2025-08-27 | 2025-08-29 |  | Build Out |  | BAB |  |  |  |  |  |  | 01ADMIN | Construction | IGMP | Construction | DH2100 | Level 2 |  |
| QTS-21801 |  | DH 2100 // Perimeter Insulation | 7d | 2025-08-28 A | 2025-09-05 A | QTS-21461, QTS-21471 | 100% | 2025-08-28 | 2025-09-08 |  | Core & Shell |  | BAB |  |  |  |  |  |  | 01ADMIN | Construction | IGMP | Construction | DH2100 | Level 2 |  |
|  | 8 | **Zone 1 Corridor 2010** |  | 2025-09-02 | 2026-08-11 |  |  |  |  |  |  |  |  |  |  |  |  |  |  |  |  |  |  |  |  |  |
| QTS-19271 |  | Zone 1 Gridlines 10-21 / Corridor 2010 // Frame Corridor Walls | 2d | 2025-09-02 A | 2025-09-24 A | QTS-21801 FF+1d, QTS-21461, QTS-19021 | 100% | 2025-09-08 | 2025-09-09 |  | Build Out | Doug Hayes | BAB |  |  |  |  |  |  | 01ADMIN | Construction | IGMP |  |  | Level 2 |  |
| QTS-19591 |  | Zone 1 Gridlines 10-21 / Corridor 2010 // In Wall Rough Electrical | 5d | 2025-09-25 A | 2025-10-20 A | QTS-38981, QTS-19271 | 100% | 2025-09-25 | 2025-10-01 |  | Electrical |  | BAB |  |  |  |  |  |  | 01ADMIN | Construction | IGMP |  |  | Level 2 |  |
| QTS-19601 |  | Zone 1 Gridlines 10-21 / Corridor 2010 // In Wall Rough Plumbing | 5d | 2025-09-25 A | 2025-10-01 A | QTS-19271 | 100% |  |  |  | Mechanical |  | BAB |  |  |  |  |  |  | 01ADMIN | Construction | IGMP |  |  | Level 2 |  |
| QTS-20041 |  | Zone 1 Gridlines 10-21 / Corridor 2010 // Insulate Corridor Walls | 2d | 2025-10-03 A | 2025-10-06 A | QTS-19601 | 100% |  |  |  | Build Out | Doug Hayes | BAB |  |  |  |  |  |  | 01ADMIN | Construction | IGMP |  |  | Level 2 |  |
| QTS-20351 |  | Zone 1 Gridlines 10-21 / Corridor 2010 // Hang Drywall on Exterior and 2010-2102 Walls | 7d | 2025-10-17 A | 2025-10-28 A | QTS-19991 FF+3d, QTS-20041 | 100% | 2025-10-17 | 2025-10-27 |  | Build Out | Doug Hayes | BAB |  |  |  |  |  |  | 01ADMIN | Construction | IGMP |  |  | Level 2 |  |
| QTS-19991 |  | Zone 1 Gridlines 10-21 / Corridor 2010 // In Wall Inspections | 1d | 2025-10-23 A | 2025-10-23 A | QTS-19591, QTS-19601 | 100% |  |  |  | Mechanical |  | BAB |  |  |  |  |  |  | 01ADMIN | Construction | IGMP |  |  | Level 2 |  |
| QTS-20971 |  | Zone 1 Gridlines 10-21 / Corridor 2010 // Tape & Finish Drywall on Exterior and 2010-2102 Walls | 7d | 2025-10-29 A | 2025-11-06 A | QTS-20351 | 100% |  |  |  | Build Out | Doug Hayes | BAB |  |  |  |  |  |  | 01ADMIN | Construction | IGMP |  |  | Level 2 |  |
| QTS-21601 |  | Zone 1 Gridlines 10-21 / Corridor 2010 // Prime & Paint Exterior & Corridor Walls | 4d | 2025-11-05 A | 2025-11-12 A | QTS-20971 FF+2d | 100% | 2025-11-05 | 2025-11-10 |  | Build Out | Doug Hayes | BAB |  |  |  |  |  |  | 01ADMIN | Construction | IGMP |  |  | Level 2 |  |
| QTS-21821 |  | Zone 1 Gridlines 10-21 / Corridor 2010 // Install VESDA | 5d | 2025-11-19 A | 2025-11-25 A | QTS-21601 | 100% |  |  |  | Mechanical |  | BAB |  |  |  |  |  |  | 01ADMIN | Construction | IGMP |  |  | Level 2 |  |
| QTS-25781 |  | Zone 1 Gridlines 10-21 / Corridor 2010 // Install Wall Base | 2d | 2025-11-26 A | 2025-12-01 A | QTS-21601, QTS-19271 | 100% |  |  |  | Build Out |  | BAB |  |  |  |  |  |  | 01ADMIN | Construction | IGMP |  |  | Level 2 |  |
| QTS-22461 |  | Zone 1 Gridlines 10-21 / Corridor 2010 // Rough Overhead Ductwork Gridlines A-C | 5d | 2025-12-01 A | 2025-12-05 A | QTS-120000, QTS-21601 | 100% |  |  |  | Mechanical |  | BAB |  |  |  |  |  |  | 01ADMIN | Construction | IGMP |  |  | Level 2 |  |
| QTS-43631 |  | Zone 1 Gridlines 10-21 / Corridor 2010 // Rough Overhead Ductwork Gridlines D-F | 10d | 2025-12-02 A | 2025-12-08 A | QTS-22461 FF | 100% | 2025-12-02 | 2025-12-15 |  | Mechanical |  | BAB |  |  |  |  |  |  |  | Construction | IGMP | Construction |  | Level 2 |  |
| QTS-22031 |  | Zone 1 Gridlines 10-21 / Corridor 2010 // Rough Fire Sprinklers | 5d | 2025-12-04 A | 2025-12-10 A | QTS-21821 FF+3d, QTS-21821 SS+3d | 100% |  |  |  | Mechanical |  | BAB |  |  |  |  |  |  | 01ADMIN | Construction | IGMP |  |  | Level 2 |  |
| QTS-22211 |  | Zone 1 Gridlines 10-21 / Corridor 2010 // Rough Overhead Conduit | 5d | 2026-01-30 A | 2026-02-28 A | QTS-43631, QTS-120000, QTS-22031 SS+3d | 100% | 2026-01-30 | 2026-02-04 | QTS-PHX3 DC1 - 6 day w/ Holidays | Electrical |  | BAB |  |  |  |  |  |  | 01ADMIN | Construction | IGMP |  |  | Level 2 |  |
| QTS-24141 |  | Zone 1 Gridlines 10-21 / Corridor 2010 // Rough Electrical & Security to Exterior Door | 4d | 2026-02-04 A | 2026-02-04 A | QTS-21601 | 100% | 2026-02-04 | 2026-02-07 | QTS-PHX3 DC1 - 6 day w/ Holidays | Electrical |  | BAB |  |  |  |  |  |  | 01ADMIN | Construction | IGMP |  |  | Level 2 |  |
| QTS-24711 |  | Zone 1 Gridlines 10-21 / Corridor 2010 // Install Basket Tray | 8d | 2026-02-25 A | 2026-03-05 A | QTS-22211, QTS-43631 | 100% |  |  | QTS-PHX3 DC1 - 6 day w/ Holidays | Electrical |  | BAB |  |  |  |  |  |  | 01ADMIN | Construction | IGMP |  |  | Level 2 |  |
| QTS-24671 |  | Zone 1 Gridlines 10-21 / Corridor 2010 // Install Fire Alarm Devices | 4d | 2026-02-27 A | 2026-03-26 A | QTS-43631, QTS-24711 | 100% | 2026-02-27 | 2026-03-03 | QTS-PHX3 DC1 - 6 day w/ Holidays | Electrical |  | BAB |  |  |  |  |  |  | 01ADMIN | Construction | IGMP |  |  | Level 2 |  |
| QTS-24661 |  | Zone 1 Gridlines 10-21 / Corridor 2010 // Install Light Fixtures On Walls | 8d | 2026-03-25 A | 2026-06-16 A | QTS-43631 | 100% | 2026-03-25 | 2026-04-02 | QTS-PHX3 DC1 - 6 day w/ Holidays | Electrical | Oscar Armenta | BAB |  |  |  |  |  |  | 01ADMIN | Construction | IGMP |  | DH2100 | Level 2 | 4/14: 95% complete. needs O-senor & 1 light. |
| QTS-1012330 |  | Zone 1 Gridlines 10-21 / Corridor 2010 // Install O Sensors | 5d | 2026-06-17 A | 2026-06-22 A | QTS-24661 | 100% | 2026-06-24 | 2026-06-29 | QTS-PHX3 DC1 - 6 day w/ Holidays | Electrical | Oscar Armenta | BAB |  |  |  |  |  |  | 01ADMIN | Construction | IGMP |  | DH2100 | Level 2 | 4/14: 95% complete. needs O-senor & 1 light. |
| QTS-1009270 |  | Zone 1 Gridlines 10-21 / Corridor 2010 // Install Exterior Door Frame | 2d | 2026-06-24 A | 2026-06-25 A | QTS-21601 | 100% |  |  | QTS-PHX3 DC1 - 6 day w/ Holidays | Build Out | Ed Carter | BAB |  |  |  |  |  |  | 01ADMIN | Construction | IGMP |  | DH2100 | Level 2 |  |
| QTS-24021 |  | Zone 1 Gridlines 10-21 / Corridor 2010 // Install Exterior Door | 6d | 2026-06-26 A | 2026-06-27 A | QTS-16151, QTS-21601, QTS-24141, QTS-1009270 | 100% | 2026-06-26 | 2026-07-02 | QTS-PHX3 DC1 - 6 day w/ Holidays | Build Out | Ed Carter | BAB |  |  |  |  |  |  | 01ADMIN | Construction | IGMP |  | DH2100 | Level 2 |  |
| QTS-6020 |  | DH 2100 / Corridor 2010 / Final Paint | 2d | 2026-07-20 A | 2026-07-21 A | QTS-24021 | 100% | 2026-07-27 | 2026-07-28 | **GLOBAL - 6 Day Workweek w/ Basic Holidays | Build Out | Jason Hendley | BAB | PPC |  |  |  |  |  |  |  |  |  |  |  |  |
| QTS-1170 |  | DH 2100 / Corridor 2010 / Install Remaining Security and Fire Alarm Device | 4d | 2026-07-21 A | 2026-07-24 A | QTS-24021 | 100% | 2026-07-22 | 2026-07-25 | **GLOBAL - 6 Day Workweek w/ Basic Holidays | Electrical | Electrical | BAB | Bldg Solutions |  |  |  |  |  |  |  |  |  |  |  | 7/21-Missing cameras (need update from Keith) |
| QTS-1130 |  | DH 2100 / Corridor 2010 / Install FEC's | 2d | 2026-07-29 A | 2026-07-30 A | QTS-0680, QTS-6020 | 100% | 2026-08-05 | 2026-08-06 | **GLOBAL - 6 Day Workweek w/ Basic Holidays | Build Out | Ed Carter | BAB | ISEC |  |  |  |  |  |  |  |  |  |  |  |  |
| QTS-6030 |  | DH 2100 / Corridor 2010 / Seal Concrete Floor | 2d | 2026-07-31 A | 2026-08-01 A | QTS-1130 | 100% | 2026-08-05 | 2026-08-06 | **GLOBAL - 6 Day Workweek w/ Basic Holidays | Build Out | Jason Hendley | BAB | Bldg Solutions |  |  |  |  |  |  |  |  |  |  |  | NEED UPDATE |
| QTS-6040 |  | DH 2100 / Corridor 2010 / Install Rubber Base | 2d | 2026-08-03 A | 2026-08-04 A | QTS-6020 | 100% | 2026-08-10 | 2026-08-11 | **GLOBAL - 6 Day Workweek w/ Basic Holidays | Build Out | Ben Ribble | BAB | Wholesale Flooring |  |  |  |  |  |  |  |  |  |  |  |  |
| QTS-6050 |  | DH 2100 / Corridor 2010 / Clean | 2d | 2026-08-11 A | 2026-08-11 A | QTS-6040, QTS-1170, QTS-6030 | 100% | 2026-08-12 | 2026-08-13 | **GLOBAL - 6 Day Workweek w/ Basic Holidays | Build Out | Ed Carter | BAB | AGDC |  |  |  |  |  |  |  |  |  |  |  |  |

Notes:
- QTS-1013500: Scheduler Notes: 7/23/26 - CDU-01 Not visible on QTS Network - holkding up Mechanical / L4's
- QTS-20921: allucent_notes: David Wiltberger on 2025-08-19 09:08: TFO changes impact finishing / allucent_notes: 2025-08-19 09:08 - User: David Wiltberger - Date Added: 2025-08-19 09:08 - Note: TFO changes impact finishing / 2025-08-26 06:08 - User: David Wiltberger - Date Added: 2025-08-26 06:08 - Note: had tpo move piping due to conflicts
- QTS-21471: allucent_notes: Zack Goertz on 2025-08-05T18:31:37.247Z: We are changing the seqence of this task. We will be polishing floors towards the end of the job. / allucent_notes: 2025-08-05T18:31:37.247Z - User: Zack Goertz - Date Added: 2025-08-05T18:31:37.247Z - Note: We are changing the seqence of this task. We will be polishing floors towards the end of the job. / 2025-08-19 14:08 - User: Zack Goertz - Date Added: 2025-08-19
- QTS-21461: allucent_notes: Zack Goertz on 2025-08-19 14:08: Issue in schedule. / allucent_notes: 2025-08-19 14:08 - User: Zack Goertz - Date Added: 2025-08-19 14:08 - Note: Issue in schedule.
- QTS-21801: allucent_notes: Jason Johnston on 2025-09-02 13:09: Pulled in due to increased shift duration for installers. / allucent_notes: 2025-09-02 13:09 - User: Jason Johnston - Date Added: 2025-09-02 13:09 - Note: Pulled in due to increased shift duration for installers.
- QTS-19271: allucent_notes: Jason Johnston on 2025-09-02 13:09: Corrected logic / allucent_notes: 2025-09-02 13:09 - User: Jason Johnston - Date Added: 2025-09-02 13:09 - Note: Corrected logic
- QTS-19591: allucent_notes_20251021_145627: David Wiltberger on 2025-09-09 14:09: walls not completed / David Wiltberger on 2025-10-07 16:10: Wall not completed dur to RFI / Scott Masterson on 2025-10-21 11:10: 80% of the wall is complete. The remaining 20% is the 38' leave out. A fragnet needs to be built into schedule. PCI has the RFI reply to how to build it but are waiting for materials procurement, to get wall started and finished. / Scott Masterson on 2025-10-21 11:10: 80% of the wall is complete. The remaining 20% is the 38' leave out. A fragnet needs to be built into schedule. PCI has the RFI reply to how to build it but are waiting for materials procurement, to get wall started and finished. / allucent_notes_20251014_152335: David Wiltberger on 2025-09-09 14:09: walls not completed / David Wiltberger on 2025-10-07 16:10: Wall not completed dur to RFI / allucent_notes: 2025-09-09 14:09 - User: David Wiltberger - Date Added: 2025-09-09 14:09 - Note: walls not completed / 2025-10-07 16:10 - User: David Wiltberger - Date Added: 2025-10-07 16:10 - Note: Wall not completed dur to RFI / 2025-10-21 11:10 - User: Scott Master
- QTS-19991: allucent_notes_20251027_224008: David Wiltberger on 2025-10-07 15:10: Insulation has not been completed / allucent_notes_20251021_145627: David Wiltberger on 2025-10-07 15:10: Insulation has not been completed / allucent_notes_20251014_152335: David Wiltberger on 2025-10-07 15:10: Insulation has not been completed / allucent_notes: 2025-10-07 15:10 - User: David Wiltberger - Date Added: 2025-10-07 15:10 - Note: Insulation has not been completed
- QTS-20971: allucent_notes_20251118_192630: Jason Johnston on 2025-11-10 14:11: Focusing on early access / allucent_notes_20251111_182405: Jason Johnston on 2025-11-10 14:11: Focusing on early access / allucent_notes: 2025-11-10 14:11 - User: Jason Johnston - Date Added: 2025-11-10 14:11 - Note: Focusing on early access
- QTS-21601: allucent_notes_20251118_192630: Jason Johnston on 2025-11-11 15:11: Slow production. / Jason Johnston on 2025-11-18T20:30:40.532Z: Closing item because of bulletin 4 now requires the lights be put in wall so the drywall needs to be ripped out. / allucent_notes_20251111_182405: Jason Johnston on 2025-11-11 15:11: Slow production. / allucent_notes: 2025-11-11 15:11 - User: Jason Johnston - Date Added: 2025-11-11 15:11 - Note: Slow production. / 2025-11-18T20:30:40.532Z - User: Jason Johnston - Date Added: 2025-11-18T20:30:40.532Z - Note: Closing item because of bulletin 4 now requires the lights be
- QTS-21821: allucent_notes_20251202_153722: David Wiltberger on 2025-11-17 16:11: out of sequence / allucent_notes_20251118_192630: David Wiltberger on 2025-11-17 16:11: out of sequence / allucent_notes: 2025-11-17 16:11 - User: David Wiltberger - Date Added: 2025-11-17 16:11 - Note: out of sequence
- QTS-22031: allucent_notes_20251216_165335: David Wiltberger on 2025-12-02 06:42: wall built late acted by Stop Work / allucent_notes_20251209_203830: David Wiltberger on 2025-12-02 06:42: wall built late acted by Stop Work / allucent_notes_20251202_153722: David Wiltberger on 2025-12-02 06:42: wall built late acted by Stop Work / allucent_notes: 2025-12-02 06:42 - User: David Wiltberger - Date Added: 2025-12-02 06:42 - Note: wall built late acted by Stop Work
- QTS-22211: allucent_notes_20251230_164549: David Wiltberger on 2025-12-30 16:09: corridor impacted by fire stop work / allucent_notes: 2025-12-30 16:09 - User: David Wiltberger - Date Added: 2025-12-30 16:09 - Note: corridor impacted by fire stop work
- QTS-24141: allucent_notes_20251230_164549: David Wiltberger on 2025-12-30 16:09: corridor impacted by fire stop work / allucent_notes: 2025-12-30 16:09 - User: David Wiltberger - Date Added: 2025-12-30 16:09 - Note: corridor impacted by fire stop work
- QTS-24671: allucent_notes_20251216_165335: Jason Johnston on 2025-12-16 08:21: Not started / allucent_notes_20251230_164549: Jason Johnston on 2025-12-16 08:21: Not started / David Wiltberger on 2025-12-30 16:08: Bad tie / allucent_notes: 2025-12-16 08:21 - User: Jason Johnston - Date Added: 2025-12-16 08:21 - Note: Not started / 2025-12-30 16:08 - User: David Wiltberger - Date Added: 2025-12-30 16:08 - Note: Bad tie
- QTS-24661: allucent_notes_20251216_165335: Jason Johnston on 2025-12-16 08:23: Tie to pod to chiller conduit runs / allucent_notes_20251230_164549: Jason Johnston on 2025-12-16 08:23: Tie to pod to chiller conduit runs / David Wiltberger on 2025-12-30 16:09: corridor impacted by fire stop / work / Scheduler Notes: 4/14: 95% complete. needs O-senor & 1 light. / Jason Johnston on 2025-12-16 08:23: Tie to pod to chiller conduit runs / David Wiltberger on 2025-12-30 16:09: corridor impacted by fire stop / work / allucent_notes: 2025-12-16 08:23 - User: Jason Johnston - Date Added: 2025-12-16 08:23 - Note: Tie to pod to chiller conduit runs / 2025-12-30 16:09 - User: David Wiltberger - Date Added: 2025-12-30 16:09 - Note: corridor impacted by fire stop work
- QTS-1012330: allucent_notes_20251216_165335: Jason Johnston on 2025-12-16 08:23: Tie to pod to chiller conduit runs / allucent_notes_20251230_164549: Jason Johnston on 2025-12-16 08:23: Tie to pod to chiller conduit runs / David Wiltberger on 2025-12-30 16:09: corridor impacted by fire stop / work / Scheduler Notes: Jason Johnston on 2025-12-16 08:23: Tie to pod to chiller conduit runs / David Wiltberger on 2025-12-30 16:09: corridor impacted by fire stop work / 4/14: 95% complete. needs O-senor & 1 light. / allucent_notes: 2025-12-16 08:23 - User: Jason Johnston - Date Added: 2025-12-16 08:23 - Note: Tie to pod to chiller conduit runs / 2025-12-30 16:09 - User: David Wiltberger - Date Added: 2025-12-30 16:09 - Note: corridor impacted by fire stop work
- QTS-1009270: allucent_notes_20251216_165335: Jason Johnston on 2025-12-16 08:23: Door not installed. / allucent_notes_20251230_164549: Jason Johnston on 2025-12-16 08:23: Door not installed. / Jason Johnston on 2025-12-30 16:40: No update / allucent_notes: 2025-12-16 08:23 - User: Jason Johnston - Date Added: 2025-12-16 08:23 - Note: Door not installed. / 2025-12-30 16:40 - User: Jason Johnston - Date Added: 2025-12-30 16:40 - Note: No update
- QTS-24021: allucent_notes_20251216_165335: Jason Johnston on 2025-12-16 08:23: Door not installed. / allucent_notes_20251230_164549: Jason Johnston on 2025-12-16 08:23: Door not installed. / Jason Johnston on 2025-12-30 16:40: No update / allucent_notes: 2025-12-16 08:23 - User: Jason Johnston - Date Added: 2025-12-16 08:23 - Note: Door not installed. / 2025-12-30 16:40 - User: Jason Johnston - Date Added: 2025-12-30 16:40 - Note: No update

| ID | WBS | Activity | Duration | Start | Finish | Predecessors | Complete | Remaining | Planned start | Planned finish | Total float | Free float | Calendar | Allucent CSI Group | Project Section | Layton Discipline | Baseline | Project Section-1 | Location | Level | Layton Super | Contract | Trade Partner | NICK | Notes | TFO-CONST ONLY |
| --- | --- | --- | --- | --- | --- | --- | --- | --- | --- | --- | --- | --- | --- | --- | --- | --- | --- | --- | --- | --- | --- | --- | --- | --- | --- | --- |
|  | 3 | **Data Hall 2100** |  | 2025-01-17 | 2026-08-28 |  |  |  |  |  |  |  |  |  |  |  |  |  |  |  |  |  |  |  |  |  |
| QTS-22101 |  | DH 2100 // Frame Data Hall / Corridor Wall 2010 (West) | 5d | 2025-09-17 A | 2025-09-23 A | QTS-20771, QTS-21471 | 100% |  |  |  |  |  |  | 01ADMIN | Construction | Build Out | IGMP | Construction | DH2100 | Level 2 | Doug Hayes | BAB |  |  |  |  |
| QTS-0900 |  | DH 2100 / Data Hall 2100 / Install Ceiling Tiles | 5d | 2026-07-13 A | 2026-07-17 A | QTS-0890 (other project) SS, QTS-0910 (other project) SS, QTS-1011800 | 100% |  |  |  |  |  | **GLOBAL - 6 Day Workweek w/ Basic Holidays |  |  | Build Out |  |  |  |  | Jason Hendley | BAB | PCI |  |  |  |
| QTS-0920 |  | TFO Scope // DH 2100 / Data Hall 2100 / Terminate RPP Whips Remaining | 4d | 2026-07-13 A | 2026-07-24 A | QTS-0890 (other project) SS, QTS - 25691 | 100% |  | 2026-07-13 | 2026-07-16 |  |  | **GLOBAL - 6 Day Workweek w/ Basic Holidays |  |  | Electrical |  |  |  |  | Electrical | TFO | REI | NICK |  |  |
| QTS-0930 |  | DH 2100 / Data Hall 2100 / Final paint | 2d | 2026-07-15 A | 2026-07-16 A | QTS-0920 SS | 100% |  | 2026-07-22 | 2026-07-23 |  |  | **GLOBAL - 6 Day Workweek w/ Basic Holidays |  |  | Build Out |  |  |  |  | Jason Hendley | BAB | PPC |  |  |  |
| QTS-0970 |  | DH 2100 / Data Hall 2100 / Install FE and FEC's | 3d | 2026-07-29 A | 2026-07-31 A | QTS-0900, QTS-0930 | 100% |  | 2026-08-05 | 2026-08-07 |  |  | **GLOBAL - 6 Day Workweek w/ Basic Holidays |  |  | Build Out |  |  |  |  | Ed Carter | BAB | ISEC |  |  |  |
| QTS-0960 |  | DH 2100 / Clean | 3d | 2026-08-04 A | 2026-08-19 | QTS-0970 | 67% | 1d | 2026-08-15 | 2026-08-18 | -83d | 0d | **GLOBAL - 6 Day Workweek w/ Basic Holidays |  |  | Build Out |  |  |  |  | Jason Hendley | BAB | AGDC |  |  |  |
| QTS-0990 |  | TFO Scope // DH 2100 / Data Hall 2100 / Install Liquid Cooled Manifold Panels | 4d | 2026-08-05 A | 2026-08-07 A | QTS-0900 | 100% |  | 2026-08-12 | 2026-08-15 |  |  | **GLOBAL - 6 Day Workweek w/ Basic Holidays |  |  | Mechanical |  |  |  |  | Jason Hendley | TFO | Prime | NICK | NEED UPDATE | TFO CONST |
| QTS-1060 |  | TFO SCOPE \\ DH 2100 / Burn in RPP's | 3d | 2026-08-19 | 2026-08-21 | QTS-0900 |  |  |  |  | -75d | 7d | **GLOBAL - 6 Day Workweek w/ Basic Holidays |  |  | Electrical |  |  |  |  | Electrical | TFO | Bldg Solutions | NICK |  | TFO CONST |
| QTS-0940 |  | DH 2100 / Burnish Flooring | 3d | 2026-08-24 | 2026-08-26 | QTS-0930, QTS-6030, QTS-1014560 FS+2d |  |  |  |  | -75d | 0d | **GLOBAL - 6 Day Workweek w/ Basic Holidays |  |  | Build Out |  |  |  |  | Ben Ribble | BAB | Bldg Solutions |  | Pushed due to Load Testing - Start 8/24 |  |
| QTS-0950 |  | DH 2100 / Install Rubber Base | 2d | 2026-08-27 | 2026-08-28 | QTS-0940 |  |  |  |  | -75d | 11d | **GLOBAL - 6 Day Workweek w/ Basic Holidays |  |  | Build Out |  |  |  |  | Ben Ribble | BAB | Wholesale Flooring |  |  |  |
|  | 2 | **Remaining Work** |  | 2025-01-17 | 2026-07-14 |  |  |  |  |  |  |  |  |  |  |  |  |  |  |  |  |  |  |  |  |  |
| QTS-23751 |  | DH 2100 // Install VESDA | 10d | 2025-01-17 A | 2025-01-17 A | QTS-23561 SS+3d | 100% |  | 2025-12-18 | 2026-01-07 |  |  |  | 01ADMIN | Construction | Electrical | IGMP | Construction | DH2100 | Level 2 |  | BAB |  |  |  |  |
| QTS-22391 |  | DH 2100 // Install Hollow Metal Frames (West) | 1d | 2025-10-27 A | 2025-11-05 A | QTS-22101 | 100% |  | 2025-10-27 | 2025-10-27 |  |  |  | 01ADMIN | Construction | Build Out | IGMP | Construction | DH2100 | Level 2 | Doug Hayes | BAB |  |  |  |  |
| QTS-22791 |  | DH 2100 // Hang Drywall (West) - Corridor Side | 2d | 2025-11-06 A | 2025-11-07 A | QTS-20771, QTS-22391, QTS-22101 | 100% |  |  |  |  |  |  | 01ADMIN | Construction | Build Out | IGMP | Construction | DH2100 | Level 2 | Doug Hayes | BAB |  |  |  |  |
| QTS-101750 |  | DH 2100 // Tape & Finish Drywall (West) - Corridor Side | 5d | 2025-11-12 A | 2025-12-05 A | QTS-22791 | 100% |  | 2025-11-10 | 2025-11-14 |  |  |  | 01ADMIN | Construction | Build Out | IGMP | Construction | DH2100 | Level 2 |  | BAB |  |  |  |  |
| QTS-22091 |  | DH 2100 // Frame Data Hall / Corridor Wall 2017-2018 (East) | 5d | 2025-11-14 A | 2025-11-18 A | QTS-22101, QTS-20771, QTS-21801, QTS-21471, QTS-20921, QTS-21461 | 100% |  | 2025-11-10 | 2025-11-14 |  |  |  | 01ADMIN | Construction | Build Out | IGMP | Construction | DH2100 | Level 2 | Doug Hayes | BAB |  |  |  |  |
| QTS-102630 |  | DH 2100 // Paint Walls (West) - Corridor Side | 2d | 2025-12-10 A | 2025-12-11 A | QTS-101750 | 100% |  |  |  |  |  |  | 01ADMIN | Construction | Build Out | IGMP | Construction | DH2100 | Level 2 |  | BAB |  |  |  |  |
| QTS-23561 |  | DH 2100 // Install Structural Ceiling Grid - QCool | 10d | 2025-12-15 A | 2025-12-31 A | QTS-22091 | 100% |  | 2025-12-17 | 2026-01-06 |  |  |  | 01ADMIN | Construction | Build Out | IGMP | Construction | DH2100 | Level 2 |  | BAB |  |  |  |  |
| QTS-22381 |  | DH 2100 // Rough In-Wall Electrical (West) | 5d | 2026-01-05 A | 2026-01-06 A | QTS-39101, QTS-38981, QTS-22101 | 100% |  | 2026-01-05 | 2026-01-09 |  |  | QTS-PHX3 DC1 - 6 day w/ Holidays | 01ADMIN | Construction | Electrical | IGMP | Construction | DH2100 | Level 2 |  | BAB |  |  |  |  |
| QTS-101760 |  | DH 2100 // Vapor Barrier & Insulation (West) | 2d | 2026-01-07 A | 2026-01-08 A | QTS-22381, QTS-101750 | 100% |  | 2026-01-10 | 2026-01-12 |  |  | QTS-PHX3 DC1 - 6 day w/ Holidays | 01ADMIN | Construction | Build Out | IGMP | Construction | DH2100 | Level 2 |  | BAB |  |  |  |  |
| QTS-22411 |  | DH 2100 // Install Hollow Metal Frames (East) - 14x14 Leave Out | 1d | 2026-01-07 A | 2026-01-07 A | QTS-101780, QTS-22091 | 100% |  |  |  |  |  | QTS-PHX3 DC1 - 6 day w/ Holidays | 01ADMIN | Construction | Build Out | IGMP | Construction | DH2100 | Level 2 |  | BAB |  |  |  |  |
| QTS-101770 |  | DH 2100 // Hang Drywall (West) - Data Hall Side | 2d | 2026-01-09 A | 2026-01-10 A | QTS-22701, QTS-101760 | 100% |  |  |  |  |  | QTS-PHX3 DC1 - 6 day w/ Holidays | 01ADMIN | Construction | Build Out | IGMP | Construction | DH2100 | Level 2 |  | BAB |  |  |  |  |
| QTS-22901 |  | DH 2100 // Tape, & Finish Drywall (West) - Data Hall Side | 5d | 2026-01-09 A | 2026-01-14 A | QTS-101770, QTS-22791 | 100% |  |  |  |  |  | QTS-PHX3 DC1 - 6 day w/ Holidays | 01ADMIN | Construction | Build Out | IGMP | Construction | DH2100 | Level 2 |  | BAB |  |  |  |  |
| QTS-22401 |  | DH 2100 // Rough In-Wall Electrical (East) | 5d | 2026-01-12 A | 2026-01-15 A | QTS-22381 SS | 100% |  | 2026-01-12 | 2026-01-16 |  |  | QTS-PHX3 DC1 - 6 day w/ Holidays | 01ADMIN | Construction | Electrical | IGMP | Construction | DH2100 | Level 2 |  | BAB |  |  |  |  |
| QTS-22701 |  | DH 2100 // In Wall Inspection for Data Hall Wall (West) | 1d | 2026-01-12 A | 2026-01-12 A | QTS-22381 FF, QTS-22381 | 100% |  |  |  |  |  | QTS-PHX3 DC1 - 6 day w/ Holidays | 01ADMIN | Construction | Electrical | IGMP | Construction | DH2100 | Level 2 |  | BAB |  |  |  |  |
| QTS-101780 |  | DH 2100 // Frame Data Hall / Corridor Wall 2017-2018 (East) - 14x14 Leave Outs | 1d | 2026-01-15 A | 2026-01-15 A | QTS - 2600, QTS-23831, QTS-46421, QTS-23611 | 100% |  |  |  |  |  | QTS-PHX3 DC1 - 6 day w/ Holidays | 01ADMIN | Construction | Build Out | IGMP | Construction | DH2100 | Level 2 |  | BAB |  |  |  |  |
| QTS-1001270 |  | DH 2100 // In Wall Inspection for Data Hall Wall (East) | 1d | 2026-01-16 A | 2026-01-16 A | QTS-22401 | 100% |  |  |  |  |  | QTS-PHX3 DC1 - 6 day w/ Holidays | 01ADMIN | Construction | Electrical | IGMP | Construction | DH2100 | Level 2 |  | BAB |  |  |  |  |
| QTS-101790 |  | DH 2100 // Top Out Data Hall / Corridor Wall 2017-2018 (East) | 3d | 2026-01-28 A | 2026-01-29 A | QTS-22091 | 100% |  | 2026-01-28 | 2026-01-30 |  |  | QTS-PHX3 DC1 - 6 day w/ Holidays | 01ADMIN | Construction | Build Out | IGMP | Construction | DH2100 | Level 2 |  | BAB |  |  |  |  |
| QTS-101800 |  | DH 2100 // One Side Data Hall / Corridor Wall 2017-2018 (East) - Data Hall Side | 3d | 2026-01-28 A | 2026-01-29 A | QTS-1001270, QTS-101790 | 100% |  | 2026-01-28 | 2026-01-30 |  |  | QTS-PHX3 DC1 - 6 day w/ Holidays | 01ADMIN | Construction | Build Out | IGMP | Construction | DH2100 | Level 2 |  | BAB |  |  |  |  |
| QTS-101860 |  | DH 2100 // Hang Drywall Data Hall / Corridor Wall 2017-2018 (East) - 14x14 Leave Outs | 1d | 2026-01-28 A | 2026-01-29 A | QTS-101780 | 100% |  | 2026-01-28 | 2026-01-28 |  |  | QTS-PHX3 DC1 - 6 day w/ Holidays | 01ADMIN | Construction | Build Out | IGMP | Construction | DH2100 | Level 2 |  | BAB |  |  |  |  |
| QTS-24171 |  | DH 2100 // Install Overhead Lighting | 10d | 2026-01-28 A | 2026-05-01 A | QTS-23751 FF+2d, QTS-23561 | 100% |  | 2026-01-28 | 2026-02-07 |  |  | QTS-PHX3 DC1 - 6 day w/ Holidays | 01ADMIN | Construction | Electrical | IGMP | Construction | DH2100 | Level 2 |  | BAB |  |  | 4/14: 65% complete. Needs emergency |  |
| QTS-1000530 |  | DH 2100 // Install Overhead Conduit - Electrical | 5d | 2026-02-04 A | 2026-03-18 A | QTS-23561, QTS-120000 | 100% |  | 2026-02-11 | 2026-02-16 |  |  | QTS-PHX3 DC1 - 6 day w/ Holidays | 01ADMIN | Construction | Electrical | IGMP | Construction | DH2100 | Level 2 |  | BAB |  |  |  |  |
| QTS-22801 |  | DH 2100 // Hang Drywall (East) - Corridor Side | 2d | 2026-02-05 A | 2026-02-12 A | QTS-20771, QTS-22701, QTS-22411, QTS-22401 | 100% |  | 2026-02-05 | 2026-02-06 |  |  | QTS-PHX3 DC1 - 6 day w/ Holidays | 01ADMIN | Construction | Build Out | IGMP | Construction | DH2100 | Level 2 |  | BAB |  |  |  |  |
| QTS-101810 |  | DH 2100 // Insulate & Vapor Barrier Data Hall / Corridor Wall 2017-2018 (East) | 2d | 2026-02-10 A | 2026-02-12 A | QTS-101800 | 100% |  | 2026-02-11 | 2026-02-12 |  |  | QTS-PHX3 DC1 - 6 day w/ Holidays | 01ADMIN | Construction | Build Out | IGMP | Construction | DH2100 | Level 2 |  | BAB |  |  |  |  |
| QTS-23321 |  | DH 2100 // Install Telecom Sleeves | 3d | 2026-02-12 A | 2026-02-26 A | QTS-120000, QTS-102630 FF+1d | 100% |  | 2026-02-12 | 2026-02-14 |  |  | QTS-PHX3 DC1 - 6 day w/ Holidays | 01ADMIN | Construction | Electrical | IGMP | Construction | DH2100 | Level 2 |  | BAB |  |  |  |  |
| QTS-22911 |  | DH 2100 // Tape, & Finish Drywall (East) - Corridor Side | 5d | 2026-02-13 A | 2026-03-24 A | QTS-22801 | 100% |  | 2026-02-13 | 2026-02-18 |  |  | QTS-PHX3 DC1 - 6 day w/ Holidays | 01ADMIN | Construction | Build Out | IGMP | Construction | DH2100 | Level 2 |  | BAB |  |  |  |  |
| QTS-1002230 |  | DH 2100 // Install Structural Ceiling Grid - Outside of Qcools | 10d | 2026-03-03 A | 2026-03-25 A | QTS-23351 | 100% |  | 2026-03-03 | 2026-03-13 |  |  | QTS-PHX3 DC1 - 6 day w/ Holidays | 01ADMIN | Construction | Build Out | IGMP | Construction | DH2100 | Level 2 |  | BAB |  |  | 3/17: Pending over head electrical and piping insulation |  |
| QTS-23171 |  | DH 2100 // Paint Walls (West) - Data Hall Side | 2d | 2026-03-04 A | 2026-03-05 A | QTS-22901, QTS-22791, QTS-23321 | 100% |  |  |  |  |  | QTS-PHX3 DC1 - 6 day w/ Holidays | 01ADMIN | Construction | Build Out | IGMP | Construction | DH2100 | Level 2 |  | BAB |  |  |  |  |
| QTS-101820 |  | DH 2100 // Tape, & Finish Drywall (East) - Data Hall Side | 5d | 2026-03-10 A | 2026-03-16 A | QTS-101810 | 100% |  | 2026-03-10 | 2026-03-14 |  |  | QTS-PHX3 DC1 - 6 day w/ Holidays | 01ADMIN | Construction | Build Out | IGMP | Construction | DH2100 | Level 2 |  | BAB |  |  |  |  |
| QTS-23181 |  | DH 2100 // Paint Walls (East) - Data Hall Side | 1d | 2026-03-17 A | 2026-03-17 A | QTS-101820 | 100% |  |  |  |  |  | QTS-PHX3 DC1 - 6 day w/ Holidays | 01ADMIN | Construction | Build Out | IGMP | Construction | DH2100 | Level 2 |  | BAB |  |  |  |  |
| QTS-1002240 |  | DH 2100 // Install VESDA | 5d | 2026-03-18 A | 2026-05-13 A | QTS-1002230 FF, QTS-1011800 FF | 100% |  | 2026-03-18 | 2026-03-23 |  |  | QTS-PHX3 DC1 - 6 day w/ Holidays |  | Construction | Electrical | IGMP | Construction | DH2100 | Level 2 |  | BAB |  |  |  |  |
| QTS-101870 |  | DH 2100 // Tape & Finish Drywall Data Hall / Corridor Wall 2017-2018 (East) - 14x14 Leave Outs | 5d | 2026-03-25 A | 2026-04-02 A | QTS-101860 | 100% |  | 2026-03-25 | 2026-03-30 |  |  | QTS-PHX3 DC1 - 6 day w/ Holidays | 01ADMIN | Construction | Build Out | IGMP | Construction | DH2100 | Level 2 | Jay Perkins | BAB |  |  |  |  |
| QTS-1000540 |  | DH 2100 // Install Overhead Conduit - Controls | 5d | 2026-04-22 A | 2026-07-14 A | QTS-1000530, QTS-120000, QTS-1011800 FF+3d | 100% |  | 2026-04-22 | 2026-04-27 |  |  | QTS-PHX3 DC1 - 6 day w/ Holidays | 01ADMIN | Construction | Electrical | IGMP | Construction | DH2100 | Level 2 | Oscar Armenta | BAB |  |  |  |  |
| QTS-1011800 |  | DH 2100 // Install Structural Ceiling Grid | 2d | 2026-05-12 A | 2026-05-13 A | QTS-23561, QTS-24171 | 100% |  |  |  |  |  |  | 01ADMIN | Construction | Build Out | IGMP | Construction | DH2100 | Level 2 | Jay Perkins | BAB |  |  |  |  |
| QTS-1002250 |  | DH 2100 // Install Overhead Lighting - Inside of Qcools | 5d | 2026-05-20 A | 2026-05-27 A | QTS-1002240 FF+2d, QTS-1011800, QTS-25001 FF, QTS-25001 SS | 100% |  | 2026-06-05 | 2026-06-10 |  |  | QTS-PHX3 DC1 - 6 day w/ Holidays |  | Construction | Electrical | IGMP | Construction | DH2100 | Level 2 |  | BAB |  |  |  |  |
| QTS-25001 |  | DH 2100 // Install Fire Sprinkler Heads - Above QCool | 3d | 2026-05-20 A | 2026-05-27 A | QTS-24171 | 100% |  | 2026-05-20 | 2026-05-22 |  |  | QTS-PHX3 DC1 - 6 day w/ Holidays |  | Construction | Mechanical | IGMP | Construction | DH2100 | Level 2 |  | BAB |  |  |  |  |
| QTS-101880 |  | DH 2100 // Paint Data Hall / Corridor Wall 2017-2018 (East) - 14x14 Leave Outs | 1d | 2026-06-24 A | 2026-06-24 A | QTS-101870, QTS-23181 | 100% |  |  |  |  |  | QTS-PHX3 DC1 - 6 day w/ Holidays | 01ADMIN | Construction | Build Out | IGMP | Construction | DH2100 | Level 2 | Ed Carter | BAB |  |  |  |  |
| QTS-101890 |  | DH 2100 // Paint Walls (East) - Corridor Side | 1d | 2026-06-24 A | 2026-06-24 A | QTS-22911 | 100% |  |  |  |  |  | QTS-PHX3 DC1 - 6 day w/ Holidays | 01ADMIN | Construction | Build Out | IGMP | Construction | DH2100 | Level 2 | Ed Carter | BAB |  |  |  |  |
| QTS-25521 |  | DH 2100 // Install Hot Aisle Containment (QCool) | 6d | 2026-07-09 A | 2026-07-14 A | QTS-1002250 | 100% |  | 2026-07-15 | 2026-07-21 |  |  | QTS-PHX3 DC1 - 6 day w/ Holidays |  | Construction | Build Out | IGMP | Construction | DH2100 | Level 2 | Ed Carter | BAB |  |  |  |  |
| QTS-1002260 |  | DH 2100 // Install Fire Sprinkler Heads - Outside of Qcools | 3d | 2026-07-14 A | 2026-07-14 A | QTS-1002250 | 100% |  | 2026-07-15 | 2026-07-17 |  |  | QTS-PHX3 DC1 - 6 day w/ Holidays |  | Construction | Mechanical | IGMP | Construction | DH2100 | Level 2 | Mechanical | BAB |  |  |  |  |

Notes:
- QTS-23751: allucent_notes_20251230_164549: David Wiltberger on 2025-12-30 14:58: Need to install ceiling grid first / David Wiltberger on 2025-12-30 15:02: Same As Start / allucent_notes: 2025-12-30 14:58 - User: David Wiltberger - Date Added: 2025-12-30 14:58 - Note: Need to install ceiling grid first / 2025-12-30 15:02 - User: David Wiltberger - Date Added: 2025-12-30 15:02 - Note: Same As Start
- QTS-22391: allucent_notes_20251118_192630: Zack Goertz on 2025-09-30T21:44:03.756Z: We have an issue with the doors. We do not have any HM Door frames for DH / Jason Johnston on 2025-10-08 08:10: not done / Jason Johnston on 2025-10-14 15:10: Move until equipment set in 2100 is complete / Jake Shimmin on 2025-10-21 08:10: door frames to arrive 10/27 / Jake Shimmin on 2025-10-27 10:10: Waiting on door frame delivery. / Jason Johnston on 2025-11-04 12:11: waiting on delivery and installation. / allucent_notes_20251111_182405: Zack Goertz on 2025-09-30T21:44:03.756Z: We have an issue with the doors. We do not have any HM Door frames for DH / Jason Johnston on 2025-10-08 08:10: not done / Jason Johnston on 2025-10-14 15:10: Move until equipment set in 2100 is complete / Jake Shimmin on 2025-10-21 08:10: door frames to arrive 10/27 / Jake Shimmin on 2025-10-27 10:10: Waiting on door frame delivery. / Jason Johnston on 2025-11-04 12:11: waiting on delivery and installation. / allucent_notes_20251104_160200: Zack Goertz on 2025-09-30T21:44:03.756Z: We have an issue with the doors. We do not have any HM Door frames for DH / Jason Johnston on 2025-10-08 08:10: not done / Jason Johnston on 2025-10-14 15:10: Move until equipment set in 2100 is complete / Jake Shimmin on 2025-10-21 08:10: door frames to arrive 10/27 / Jake Shimmin on 2025-10-27 10:10: Waiting on door frame delivery. / Jason Johnston on 2025-11-04 12:11: waiting on delivery and installation. / allucent_notes_20251028_163138: Zack Goertz on 2025-09-30T21:44:03.756Z: We have an issue with the doors. We do not have any HM Door frames for DH / Jason Johnston on 2025-10-08 08:10: not done / Jason Johnston on 2025-10-14 15:10: Move until equipment set in 2100 is complete / Jake Shimmin on 2025-10-21 08:10: door frames to arrive 10/27 / Jake Shimmin on 2025-10-27 10:10: Waiting on door frame delivery. / allucent_notes_20251027_224008: Zack Goertz on 2025-09-30T21:44:03.756Z: We have an issue with the doors. We do not have any HM Door frames for DH / Jason Johnston on 2025-10-08 08:10: not done / Jason Johnston on 2025-10-14 15:10: Move until equipment set in 2100 is complete / Jake Shimmin on 2025-10-21 08:10: door frames to arrive 10/27 / Jake Shimmin on 2025-10-27 10:10: Waiting on door frame delivery. / allucent_notes_20251021_145627: Zack Goertz on 2025-09-30T21:44:03.756Z: We have an issue with the doors. We do not have any HM Door frames for DH / Jason Johnston on 2025-10-08 08:10: not done / Jason Johnston on 2025-10-14 15:10: Move until equipment set in 2100 is complete / Jake Shimmin on 2025-10-21 08:10: door frames to arrive 10/27 / allucent_notes_20251014_152335: Zack Goertz on 2025-09-30T21:44:03.756Z: We have an issue with the doors. We do not have any HM Door frames for DH / Jason Johnston on 2025-10-08 08:10: not done / Jason Johnston on 2025-10-14 15:10: Move until equipment set in 2100 is complete / allucent_notes: 2025-09-30T21:44:03.756Z - User: Zack Goertz - Date Added: 2025-09-30T21:44:03.756Z - Note: We have an issue with the doors. We do not have any HM Door frames for DH / 2025-10-08 08:10 - User: Jason Johnston - Date Added: 2025-10-08 08:10 - Note: not don
- QTS-22791: allucent_notes_20251118_192630: Jason Johnston on 2025-11-10 14:11: Delayed finish / allucent_notes_20251111_182405: Jason Johnston on 2025-11-10 14:11: Delayed finish / allucent_notes: 2025-11-10 14:11 - User: Jason Johnston - Date Added: 2025-11-10 14:11 - Note: Delayed finish
- QTS-101750: allucent_notes_20251209_203830: Jason Johnston on 2025-11-11 16:11: Tapers are behind / Luis Vea on 2025-12-01 09:57: rough in is not complete, manpower for rei is not enough. / allucent_notes_20251202_153722: Jason Johnston on 2025-11-11 16:11: Tapers are behind / Luis Vea on 2025-12-01 09:57: rough in is not complete, manpower for rei is not enough. / allucent_notes_20251118_192630: Jason Johnston on 2025-11-11 16:11: Tapers are behind / allucent_notes_20251111_182405: Jason Johnston on 2025-11-11 16:11: Tapers are behind / allucent_notes: 2025-11-11 16:11 - User: Jason Johnston - Date Added: 2025-11-11 16:11 - Note: Tapers are behind / 2025-12-01 09:57 - User: Luis Vea - Date Added: 2025-12-01 09:57 - Note: rough in is not complete, manpower for rei is not enough.
- QTS-22091: allucent_notes_20251118_192630: Zack Goertz on 2025-09-08T20:45:26.651Z: Not started. PCI has been put on notice that they are behind / Jason Johnston on 2025-10-08 08:10: not done / Jason Johnston on 2025-11-11 16:11: Need to recover the recovery / allucent_notes_20251111_182405: Zack Goertz on 2025-09-08T20:45:26.651Z: Not started. PCI has been put on notice that they are behind / Jason Johnston on 2025-10-08 08:10: not done / Jason Johnston on 2025-11-11 16:11: Need to recover the recovery / allucent_notes_20251014_152335: Zack Goertz on 2025-09-08T20:45:26.651Z: Not started. PCI has been put on notice that they are behind / Jason Johnston on 2025-10-08 08:10: not done / allucent_notes: 2025-09-08T20:45:26.651Z - User: Zack Goertz - Date Added: 2025-09-08T20:45:26.651Z - Note: Not started. PCI has been put on notice that they are behind / 2025-10-08 08:10 - User: Jason Johnston - Date Added: 2025-10-08 08:10 - Note: not done / 2025-11-
- QTS-23561: allucent_notes_20251216_165335: Jason Johnston on 2025-12-16 08:30: Coordination with PCI / allucent_notes_20251230_164549: Jason Johnston on 2025-12-16 08:30: Coordination with PCI / allucent_notes: 2025-12-16 08:30 - User: Jason Johnston - Date Added: 2025-12-16 08:30 - Note: Coordination with PCI
- QTS-22381: allucent_notes_20251021_145627: David Wiltberger on 2025-09-24 03:09: No wall built yet / David Wiltberger on 2025-10-07 16:10: Wall not built / David Wiltberger on 2025-10-14 12:10: no walls / allucent_notes_20251014_152335: David Wiltberger on 2025-09-24 03:09: No wall built yet / David Wiltberger on 2025-10-07 16:10: Wall not built / David Wiltberger on 2025-10-14 12:10: no walls / allucent_notes_20251230_164549: David Wiltberger on 2025-09-24 03:09: No wall built yet / David Wiltberger on 2025-10-07 16:10: Wall not built / David Wiltberger on 2025-10-14 12:10: no walls / allucent_notes: 2025-09-24 03:09 - User: David Wiltberger - Date Added: 2025-09-24 03:09 - Note: No wall built yet / 2025-10-07 16:10 - User: David Wiltberger - Date Added: 2025-10-07 16:10 - Note: Wall not built / 2025-10-14 12:10 - User: David Wiltberger - Date Added
- QTS-22411: allucent_notes_20251104_160200: Jason Johnston on 2025-10-14 15:10: Move until equipment set in 2100 is complete / Jake Shimmin on 2025-10-21 08:10: Door frames to arrive 10/27 / Jake Shimmin on 2025-10-27 10:10: Waiting on door frame delivery / Jason Johnston on 2025-11-04 12:11: being used to move equipment into DH. tie to final eq set. / allucent_notes_20251028_163138: Jason Johnston on 2025-10-14 15:10: Move until equipment set in 2100 is complete / Jake Shimmin on 2025-10-21 08:10: Door frames to arrive 10/27 / Jake Shimmin on 2025-10-27 10:10: Waiting on door frame delivery / allucent_notes_20251027_224008: Jason Johnston on 2025-10-14 15:10: Move until equipment set in 2100 is complete / Jake Shimmin on 2025-10-21 08:10: Door frames to arrive 10/27 / Jake Shimmin on 2025-10-27 10:10: Waiting on door frame delivery / allucent_notes_20251021_145627: Jason Johnston on 2025-10-14 15:10: Move until equipment set in 2100 is complete / Jake Shimmin on 2025-10-21 08:10: Door frames to arrive 10/27 / allucent_notes_20251014_152335: Jason Johnston on 2025-10-14 15:10: Move until equipment set in 2100 is complete / allucent_notes: 2025-10-14 15:10 - User: Jason Johnston - Date Added: 2025-10-14 15:10 - Note: Move until equipment set in 2100 is complete / 2025-10-21 08:10 - User: Jake Shimmin - Date Added: 2025-10-21 08:10 - Note: Door frames to arrive 10/27 / 2025-10-27 10:10 -
- QTS-22401: allucent_notes_20251021_145627: David Wiltberger on 2025-09-24 03:09: No wall built yet / David Wiltberger on 2025-10-07 16:10: Wall not built / David Wiltberger on 2025-10-14 12:10: no walls / allucent_notes_20251014_152335: David Wiltberger on 2025-09-24 03:09: No wall built yet / David Wiltberger on 2025-10-07 16:10: Wall not built / David Wiltberger on 2025-10-14 12:10: no walls / allucent_notes_20251230_164549: David Wiltberger on 2025-09-24 03:09: No wall built yet / David Wiltberger on 2025-10-07 16:10: Wall not built / David Wiltberger on 2025-10-14 12:10: no walls / allucent_notes: 2025-09-24 03:09 - User: David Wiltberger - Date Added: 2025-09-24 03:09 - Note: No wall built yet / 2025-10-07 16:10 - User: David Wiltberger - Date Added: 2025-10-07 16:10 - Note: Wall not built / 2025-10-14 12:10 - User: David Wiltberger - Date Added
- QTS-101780: allucent_notes_20251014_152335: Zack Goertz on 2025-09-08T20:45:26.651Z: Not started. PCI has been put on notice that they are behind / Jason Johnston on 2025-10-08 08:10: not done / allucent_notes: 2025-09-08T20:45:26.651Z - User: Zack Goertz - Date Added: 2025-09-08T20:45:26.651Z - Note: Not started. PCI has been put on notice that they are behind / 2025-10-08 08:10 - User: Jason Johnston - Date Added: 2025-10-08 08:10 - Note: not done
- QTS-101790: allucent_notes_20251209_203830: Luis Vea on 2025-12-01 09:58: started 11/21 / Luis Vea on 2025-12-01 09:59: incorrect last comment. wrapping the beams. should be starting next monday to topout / Jason Johnston on 2025-12-09 16:44: No update from team / allucent_notes_20251202_153722: Luis Vea on 2025-12-01 09:58: started 11/21 / Luis Vea on 2025-12-01 09:59: incorrect last comment. wrapping the beams. should be starting next monday to topout / allucent_notes_20251014_152335: Zack Goertz on 2025-09-08T20:45:26.651Z: Not started. PCI has been put on notice that they are behind / Jason Johnston on 2025-10-08 08:10: not done / allucent_notes_20251230_164549: Luis Vea on 2025-12-01 09:58: started 11/21 / Luis Vea on 2025-12-01 09:59: incorrect last comment. wrapping the beams. should be starting next monday to topout / Jason Johnston on 2025-12-09 16:44: No update from team / allucent_notes: 2025-12-01 09:58 - User: Luis Vea - Date Added: 2025-12-01 09:58 - Note: started 11/21 / 2025-12-01 09:59 - User: Luis Vea - Date Added: 2025-12-01 09:59 - Note: incorrect last comment. wrapping the beams. should be starting next monday to topout / 202
- QTS-101800: allucent_notes_20251014_152335: Zack Goertz on 2025-09-08T20:45:26.651Z: Not started. PCI has been put on notice that they are behind / Jason Johnston on 2025-10-08 08:10: not done / allucent_notes: 2025-09-08T20:45:26.651Z - User: Zack Goertz - Date Added: 2025-09-08T20:45:26.651Z - Note: Not started. PCI has been put on notice that they are behind / 2025-10-08 08:10 - User: Jason Johnston - Date Added: 2025-10-08 08:10 - Note: not done
- QTS-101860: allucent_notes_20251014_152335: Zack Goertz on 2025-09-08T20:45:26.651Z: Not started. PCI has been put on notice that they are behind / Jason Johnston on 2025-10-08 08:10: not done / allucent_notes: 2025-09-08T20:45:26.651Z - User: Zack Goertz - Date Added: 2025-09-08T20:45:26.651Z - Note: Not started. PCI has been put on notice that they are behind / 2025-10-08 08:10 - User: Jason Johnston - Date Added: 2025-10-08 08:10 - Note: not done
- QTS-24171: Scheduler Notes: 4/14: 65% complete. Needs emergency
- QTS-101810: allucent_notes_20251014_152335: Zack Goertz on 2025-09-08T20:45:26.651Z: Not started. PCI has been put on notice that they are behind / Jason Johnston on 2025-10-08 08:10: not done / allucent_notes: 2025-09-08T20:45:26.651Z - User: Zack Goertz - Date Added: 2025-09-08T20:45:26.651Z - Note: Not started. PCI has been put on notice that they are behind / 2025-10-08 08:10 - User: Jason Johnston - Date Added: 2025-10-08 08:10 - Note: not done
- QTS-1002230: allucent_notes_20251216_165335: Jason Johnston on 2025-12-16 08:30: Coordination with PCI / Scheduler Notes: Jason Johnston on 2025-12-16 08:30: Coordination with PCI / 3/17: Pending over head electrical and piping insulation / allucent_notes: 2025-12-16 08:30 - User: Jason Johnston - Date Added: 2025-12-16 08:30 - Note: Coordination with PCI
- QTS-101870: allucent_notes_20251014_152335: Zack Goertz on 2025-09-08T20:45:26.651Z: Not started. PCI has been put on notice that they are behind / Jason Johnston on 2025-10-08 08:10: not done / allucent_notes: 2025-09-08T20:45:26.651Z - User: Zack Goertz - Date Added: 2025-09-08T20:45:26.651Z - Note: Not started. PCI has been put on notice that they are behind / 2025-10-08 08:10 - User: Jason Johnston - Date Added: 2025-10-08 08:10 - Note: not done
- QTS-1011800: allucent_notes_20251216_165335: Jason Johnston on 2025-12-16 08:30: Coordination with PCI / allucent_notes_20251230_164549: Jason Johnston on 2025-12-16 08:30: Coordination with PCI / allucent_notes: 2025-12-16 08:30 - User: Jason Johnston - Date Added: 2025-12-16 08:30 - Note: Coordination with PCI
- QTS-101880: allucent_notes_20251014_152335: Zack Goertz on 2025-09-08T20:45:26.651Z: Not started. PCI has been put on notice that they are behind / Jason Johnston on 2025-10-08 08:10: not done / allucent_notes: 2025-09-08T20:45:26.651Z - User: Zack Goertz - Date Added: 2025-09-08T20:45:26.651Z - Note: Not started. PCI has been put on notice that they are behind / 2025-10-08 08:10 - User: Jason Johnston - Date Added: 2025-10-08 08:10 - Note: not done

| ID | WBS | Activity | Duration | Start | Finish | Predecessors | Complete | Planned start | Planned finish | Total float | Free float | Calendar | Layton Discipline | Contract | Allucent CSI Group | Project Section | Baseline | Project Section-1 | Location | Level | Layton Super | Trade Partner | NICK | Notes |
| --- | --- | --- | --- | --- | --- | --- | --- | --- | --- | --- | --- | --- | --- | --- | --- | --- | --- | --- | --- | --- | --- | --- | --- | --- |
|  | 1 | **RFI #543** |  | 2025-09-15 | 2025-09-18 |  |  |  |  |  |  |  |  |  |  |  |  |  |  |  |  |  |  |  |
| QTS- 255211 |  | RFI #543 Submitted | 2d | 2025-09-15 A | 2025-09-16 A | QTS-1371 SS | 100% |  |  |  |  |  | Build Out | BAB |  |  |  |  |  |  |  |  |  |  |
| QTS- 255221 |  | RFI #543 Resolved | 2d | 2025-09-17 A | 2025-09-18 A | QTS- 255211 | 100% |  |  |  |  |  | Build Out | BAB |  |  |  |  |  |  |  |  |  |  |
|  | 2 | **Gallery 2101 Mechanical** |  | 2025-08-07 | 2026-08-20 |  |  |  |  |  |  |  |  |  |  |  |  |  |  |  |  |  |  |  |
| QTS-23331 |  | DH 2100 / Mechanical Gallery 2101 // Install VESDA | 8d | 2025-08-07 A | 2025-09-19 A | QTS-19841 | 100% | 2025-08-07 | 2025-08-18 |  |  |  | Electrical | BAB | 01ADMIN | Construction | IGMP | Construction | DH2100 | Level 2 |  |  |  |  |
| QTS-44371 |  | DH 2100 / Mechanical Gallery 2101 // Install OH Mechanical Hangers | 7d | 2025-08-07 A | 2025-08-15 A | QTS-19841 | 100% |  |  |  |  |  | Mechanical | BAB | 01ADMIN | Construction | IGMP | Construction | DH2100 | Level 2 |  |  |  |  |
| QTS-23341 |  | DH 2100 / Mechanical Gallery 2101 // Install OH Mechanical Piping | 10d | 2025-08-18 A | 2025-10-03 A | QTS-44371 | 100% | 2025-08-18 | 2025-08-29 |  |  |  | Mechanical | BAB | 01ADMIN | Construction | IGMP | Construction | DH2100 | Level 2 |  |  |  |  |
| QTS-21811 |  | DH 2100 / Mechanical Gallery 2101 // Frame 2101-2102 Wall | 5d | 2025-09-09 A | 2025-09-19 A | QTS-19271 SS, QTS-21461 | 100% | 2025-09-09 | 2025-09-15 |  |  |  | Build Out | BAB | 01ADMIN | Construction | IGMP | Construction | DH2100 | Level 2 | Doug Hayes |  |  |  |
| QTS-22131 |  | DH 2100 / Mechanical Gallery 2101 // In Wall Electrical Rough for 2101-2102 Wall | 2d | 2025-10-01 A | 2025-10-02 A | QTS-21811, QTS-38981 | 100% |  |  |  |  |  | Electrical | BAB | 01ADMIN | Construction | IGMP | Construction | DH2100 | Level 2 |  |  |  |  |
| QTS-22141 |  | DH 2100 / Mechanical Gallery 2101 // Frame Fan Wall | 5d | 2025-10-13 A | 2025-10-17 A | QTS-22121, QTS-21811, QTS-21801 | 100% | 2025-10-09 | 2025-10-15 |  |  |  | Build Out | BAB | 01ADMIN | Construction | IGMP | Construction | DH2100 | Level 2 | Doug Hayes |  |  |  |
| QTS-24081 |  | DH 2100 / Mechanical Gallery 2101 // Install OH Electrical, FA/ EPMS/BMS Conduit & Grounding | 10d | 2025-10-15 A | 2025-10-28 A | QTS-120000, QTS-23341 | 100% |  |  |  |  |  | Electrical | BAB | 01ADMIN | Construction | IGMP | Construction | DH2100 | Level 2 |  |  |  |  |
| QTS-22421 |  | DH 2100 / Mechanical Gallery 2101 // Hang, Tape, & Finish Drywall for 2101-2102 Wall | 8d | 2025-10-16 A | 2025-10-27 A | QTS-22231 FF | 100% |  |  |  |  |  | Build Out | BAB | 01ADMIN | Construction | IGMP | Construction | DH2100 | Level 2 | Doug Hayes |  |  |  |
| QTS-22511 |  | DH 2100 / Mechanical Gallery 2101 // In Wall Electrical Rough for Fan Wall | 2d | 2025-10-20 A | 2025-10-24 A | QTS-22131, QTS-22141 | 100% | 2025-10-20 | 2025-10-21 |  |  |  | Electrical | BAB | 01ADMIN | Construction | IGMP | Construction | DH2100 | Level 2 |  |  |  |  |
| QTS-99880 |  | DH 2100 / Mechanical Gallery 2101 // Hang, Tape, & Finish Drywall for Fan Wall - MG Side | 3d | 2025-10-20 A | 2025-10-22 A | QTS-22141 | 100% |  |  |  |  |  | Build Out | BAB | 01ADMIN |  |  |  |  |  |  |  |  |  |
| QTS-99890 |  | DH 2100 / Mechanical Gallery 2101 // Paint for Fan Walls - MG Side | 3d | 2025-10-22 A | 2025-10-28 A | QTS-99880 FF+2d | 100% | 2025-10-22 | 2025-10-24 |  |  |  | Build Out | BAB | 01ADMIN |  |  |  |  |  |  |  |  |  |
| QTS-22231 |  | DH 2100 / Mechanical Gallery 2101 // In Wall Inspection for 2101-2102 Wall | 1d | 2025-10-23 A | 2025-10-23 A | QTS-22131 | 100% |  |  |  |  |  | Mechanical | BAB | 01ADMIN | Construction | IGMP | Construction | DH2100 | Level 2 |  |  |  |  |
| QTS-22651 |  | DH 2100 / Mechanical Gallery 2101 // In Wall Inspection for Fan Wall | 1d | 2025-10-27 A | 2025-10-27 A | QTS-22511 | 100% |  |  |  |  |  | Mechanical | BAB | 01ADMIN | Construction | IGMP | Construction | DH2100 | Level 2 |  |  |  |  |
| QTS-101720 |  | DH 2100 / Mechanical Gallery 2101 // Hang Drywall for 2101-2102 Wall - 12x38 Opening | 10d | 2025-10-28 A | 2025-11-14 A | QTS-22231 | 100% | 2025-10-28 | 2025-11-10 |  |  |  | Build Out | BAB | 01ADMIN | Construction | IGMP | Construction | DH2100 | Level 2 | Doug Hayes |  |  |  |
| QTS-22731 |  | DH 2100 / Mechanical Gallery 2101 // Hang, Tape, & Finish Drywall for Fan Wall - DH Side | 5d | 2025-10-28 A | 2025-11-03 A | QTS-22651 | 100% |  |  |  |  |  | Build Out | BAB | 01ADMIN | Construction | IGMP | Construction | DH2100 | Level 2 | Doug Hayes |  |  |  |
| QTS-23051 |  | DH 2100 / Mechanical Gallery 2101 // Paint for 2101-2102 Wall | 3d | 2025-10-28 A | 2025-10-30 A | QTS-22421 | 100% |  |  |  |  |  | Build Out | BAB | 01ADMIN | Construction | IGMP | Construction | DH2100 | Level 2 | Doug Hayes |  |  |  |
| QTS-23061 |  | DH 2100 / Mechanical Gallery 2101 // Paint for Fan Walls - DH Side | 5d | 2025-11-04 A | 2025-11-12 A | QTS-22731 | 100% | 2025-11-04 | 2025-11-10 |  |  |  | Build Out | BAB | 01ADMIN | Construction | IGMP | Construction | DH2100 | Level 2 | Doug Hayes |  |  |  |
| QTS-102640 |  | DH 2100 / Mechanical Gallery 2101 // Demo Basket Tray for Pipe Risers | 4d | 2025-11-05 A | 2025-11-10 A | QTS-23341 | 100% |  |  |  |  |  | Mechanical | BAB | 01ADMIN | Construction | IGMP | Construction | DH2100 | Level 2 |  |  |  |  |
| QTS-101900 |  | DH 2100 / Mechanical Gallery 2101 // Install Pipe Risers | 10d | 2025-11-11 A | 2025-11-24 A | QTS-102640, QTS-23341 | 100% |  |  |  |  |  | Mechanical | BAB | 01ADMIN | Construction | IGMP | Construction | DH2100 | Level 2 |  |  |  |  |
| QTS-101730 |  | DH 2100 / Mechanical Gallery 2101 // Tape and Finish Drywall for 2101-2102 Wall - 12x38 Opening | 5d | 2025-11-19 A | 2025-11-25 A | QTS-101720 | 100% |  |  |  |  |  | Build Out | BAB | 01ADMIN | Construction | IGMP | Construction | DH2100 | Level 2 |  |  |  |  |
| QTS-101740 |  | DH 2100 / Mechanical Gallery 2101 // Paint for 2101-2102 Wall - 12x38 Opening | 2d | 2025-12-04 A | 2025-12-05 A | QTS-101730 | 100% |  |  |  |  |  | Build Out | BAB | 01ADMIN | Construction | IGMP | Construction | DH2100 | Level 2 |  |  |  |  |
| QTS-0880 |  | TFO Scope // DH 2100 / Gallery 2101 / Technical Loop Fill and Flush | 12d | 2026-07-06 A | 2026-07-25 A | QTS - 1100 | 100% | 2026-07-07 | 2026-07-18 |  |  | **GLOBAL - 7 Day Workweek w/ Basic Holidays | Mechanical | TFO |  |  |  |  |  |  | Mechanical | Bel-Aire | NICK |  |
| QTS-0830 |  | DH 2100 / Gallery 2101 / Trim Out Electrical | 2d | 2026-07-13 A | 2026-07-21 A | QTS-101740 | 100% | 2026-07-08 | 2026-07-09 |  |  | **GLOBAL - 6 Day Workweek w/ Basic Holidays | Electrical | BAB |  |  |  |  |  |  | Electrical | REI |  |  |
| QTS-0820 |  | DH 2100 / Gallery 2101 / Resupport LV Conduits | 4d | 2026-07-18 A | 2026-07-21 A | QTS-101730 | 100% | 2026-08-19 | 2026-08-22 |  |  | **GLOBAL - 6 Day Workweek w/ Basic Holidays | LV | BAB |  |  |  |  |  |  | Low Voltage | Prime |  |  |
| QTS-0840 |  | DH 2100 / Gallery 2101 / Final Paint | 2d | 2026-07-20 A | 2026-07-21 A | QTS-101740 | 100% | 2026-07-27 | 2026-07-28 |  |  | **GLOBAL - 6 Day Workweek w/ Basic Holidays | Build Out | BAB |  |  |  |  |  |  | Jason Hendley | PPC |  |  |
| QTS-0850 |  | DH 2100 / Gallery 2101 / Remove Temp lights and Temp Power | 2d | 2026-07-28 A | 2026-07-30 A | QTS-0830, QTS-1013660 | 100% | 2026-08-07 | 2026-08-08 |  |  | **GLOBAL - 6 Day Workweek w/ Basic Holidays | Electrical | BAB |  |  |  |  |  |  | Electrical | REI |  |  |
| QTS-1013660 |  | DH 2100 / Gallery 2101 / Fragnet delay - After Tab - Complete Trim Out Electrical | 2d | 2026-07-28 A | 2026-07-30 A | QTS-101740, QTS-0980 | 100% | 2026-08-05 | 2026-08-06 |  |  | **GLOBAL - 6 Day Workweek w/ Basic Holidays | Electrical | BAB |  |  |  |  |  |  | Electrical | REI |  | Fragnet delay - After Tab |
| QTS-0860 |  | DH 2100 / Gallery 2101 / Seal Concrete Floor | 2d | 2026-07-29 A | 2026-07-30 A | QTS-0840 | 100% | 2026-08-05 | 2026-08-06 |  |  | **GLOBAL - 6 Day Workweek w/ Basic Holidays | Build Out | BAB |  |  |  |  |  |  | Jason Hendley | Bldg Solutions |  | NEED UPDATE |
| QTS-5730 |  | DH 2100 / Gallery 2101 / Install Fire Extinguishers and Fire Extinguisher Cabinet's | 2d | 2026-08-03 A | 2026-08-04 A | QTS-0840 | 100% | 2026-08-11 | 2026-08-12 |  |  | **GLOBAL - 6 Day Workweek w/ Basic Holidays | Build Out | BAB |  |  |  |  |  |  | Jake Shimmin | ISEC |  |  |
| QTS-5710 |  | DH 2100 / Gallery 2101 / Clean | 2d | 2026-08-11 A | 2026-08-11 A | QTS-5730 | 100% | 2026-08-12 | 2026-08-13 |  |  | **GLOBAL - 6 Day Workweek w/ Basic Holidays | Build Out | BAB |  |  |  |  |  |  | Ed Carter | AGDC |  |  |
| QTS-0870 |  | DH 2100 / Gallery 2101 / Install Rubber Base | 2d | 2026-08-19 | 2026-08-20 | QTS-0860 |  |  |  | -68d | 18d | **GLOBAL - 6 Day Workweek w/ Basic Holidays | Build Out | BAB |  |  |  |  |  |  | Ben Ribble | Wholesale Flooring |  |  |

Notes:
- QTS-23331: allucent_notes: David Wiltberger on 2025-08-12T17:01:33.873Z: Started Vesda FA early to get ahead odf schedule / allucent_notes: 2025-08-12T17:01:33.873Z - User: David Wiltberger - Date Added: 2025-08-12T17:01:33.873Z - Note: Started Vesda FA early to get ahead odf schedule / 2025-08-19 09:08 - User: David Wiltberger - Date Added: 2025-08-19 09:08 - Note: TFO layout impact / 2025
- QTS-44371: allucent_notes: David Wiltberger on 2025-08-12T17:00:13.412Z: Starting early access / allucent_notes: 2025-08-12T17:00:13.412Z - User: David Wiltberger - Date Added: 2025-08-12T17:00:13.412Z - Note: Starting early access
- QTS-23341: allucent_notes: David Wiltberger on 2025-09-02 10:09: BAM could not get forklift to 2nd floor when needed. Will attempt to get on 2nd floor 9-3 / allucent_notes: 2025-09-02 10:09 - User: David Wiltberger - Date Added: 2025-09-02 10:09 - Note: BAM could not get forklift to 2nd floor when needed. Will attempt to get on 2nd floor 9-3
- QTS-22141: allucent_notes_20251021_145627: Zack Goertz on 2025-10-07T21:29:11.214Z: Framing fan wall is being postponed per Dave W / Jason Johnston on 2025-10-08 08:10: not done / Jason Johnston on 2025-10-14 15:10: rain delay / allucent_notes_20251014_152335: Zack Goertz on 2025-10-07T21:29:11.214Z: Framing fan wall is being postponed per Dave W / Jason Johnston on 2025-10-08 08:10: not done / Jason Johnston on 2025-10-14 15:10: rain delay / allucent_notes: 2025-10-07T21:29:11.214Z - User: Zack Goertz - Date Added: 2025-10-07T21:29:11.214Z - Note: Framing fan wall is being postponed per Dave W / 2025-10-08 08:10 - User: Jason Johnston - Date Added: 2025-10-08 08:10 - Note: not done / 2025-10-14 15:10 - Use
- QTS-24081: allucent_notes_20251028_163138: David Wiltberger on 2025-09-02 10:09: No required walls have been built to start installation / David Wiltberger on 2025-10-07 16:10: BAM not completed with Overheead and Screen wall needs to be built / allucent_notes_20251027_224008: David Wiltberger on 2025-09-02 10:09: No required walls have been built to start installation / David Wiltberger on 2025-10-07 16:10: BAM not completed with Overheead and Screen wall needs to be built / allucent_notes_20251021_145627: David Wiltberger on 2025-09-02 10:09: No required walls have been built to start installation / David Wiltberger on 2025-10-07 16:10: BAM not completed with Overheead and Screen wall needs to be built / allucent_notes_20251014_152335: David Wiltberger on 2025-09-02 10:09: No required walls have been built to start installation / David Wiltberger on 2025-10-07 16:10: BAM not completed with Overheead and Screen wall needs to be built / allucent_notes: David Wiltberger on 2025-09-02 10:09: No required walls have been built to start installation / allucent_notes: 2025-09-02 10:09 - User: David Wiltberger - Date Added: 2025-09-02 10:09 - Note: No required walls have been built to start installation / 2025-10-07 16:10 - User: David Wiltberger - Date Added: 2025-10-07 16:10 - Note: BAM not completed with Overheead
- QTS-22421: allucent_notes_20251027_224008: Jason Johnston on 2025-10-08 08:10: not done / Jason Johnston on 2025-10-08 08:10: not done / allucent_notes_20251021_145627: Jason Johnston on 2025-10-08 08:10: not done / Jason Johnston on 2025-10-08 08:10: not done / allucent_notes_20251014_152335: Jason Johnston on 2025-10-08 08:10: not done / Jason Johnston on 2025-10-08 08:10: not done / allucent_notes: 2025-10-08 08:10 - User: Jason Johnston - Date Added: 2025-10-08 08:10 - Note: not done / 2025-10-08 08:10 - User: Jason Johnston - Date Added: 2025-10-08 08:10 - Note: not done
- QTS-22511: allucent_notes_20251027_224008: Scott Masterson on 2025-10-21 11:10: The fan walls are taking a bit longer than expected. REI will be making up for this time. / allucent_notes_20251021_145627: Scott Masterson on 2025-10-21 11:10: The fan walls are taking a bit longer than expected. REI will be making up for this time. / allucent_notes: 2025-10-21 11:10 - User: Scott Masterson - Date Added: 2025-10-21 11:10 - Note: The fan walls are taking a bit longer than expected. REI will be making up for this time.
- QTS-99890: allucent_notes_20251028_163138: Jake Shimmin on 2025-10-27 09:10: Paint delayed due to Electrical rough. / allucent_notes_20251027_224008: Jake Shimmin on 2025-10-27 09:10: Paint delayed due to Electrical rough. / allucent_notes: 2025-10-27 09:10 - User: Jake Shimmin - Date Added: 2025-10-27 09:10 - Note: Paint delayed due to Electrical rough.
- QTS-22231: allucent_notes_20251027_224008: David Wiltberger on 2025-10-07 16:10: only schedules T,TH / David Wiltberger on 2025-10-14 12:10: inspection only happens tues, thurs / David Wiltberger on 2025-10-21 13:10: Waiting on RFI #542 to correctly build the wall first / allucent_notes_20251021_145627: David Wiltberger on 2025-10-07 16:10: only schedules T,TH / David Wiltberger on 2025-10-14 12:10: inspection only happens tues, thurs / David Wiltberger on 2025-10-21 13:10: Waiting on RFI #542 to correctly build the wall first / allucent_notes_20251014_152335: David Wiltberger on 2025-10-07 16:10: only schedules T,TH / David Wiltberger on 2025-10-14 12:10: inspection only happens tues, thurs / allucent_notes: 2025-10-07 16:10 - User: David Wiltberger - Date Added: 2025-10-07 16:10 - Note: only schedules T,TH / 2025-10-14 12:10 - User: David Wiltberger - Date Added: 2025-10-14 12:10 - Note: inspection only happens tues, thurs / 2025-10-21 13:10 - User: David
- QTS-101720: allucent_notes_20251118_192630: Jason Johnston on 2025-11-11 16:11: Failed / allucent_notes_20251111_182405: Jason Johnston on 2025-11-11 16:11: Failed / allucent_notes: 2025-11-11 16:11 - User: Jason Johnston - Date Added: 2025-11-11 16:11 - Note: Failed
- QTS-23061: allucent_notes_20251118_192630: Jason Johnston on 2025-11-11 16:11: painting walls currently. / allucent_notes_20251111_182405: Jason Johnston on 2025-11-11 16:11: painting walls currently. / allucent_notes: 2025-11-11 16:11 - User: Jason Johnston - Date Added: 2025-11-11 16:11 - Note: painting walls currently.
- QTS-101900: allucent_notes_20251202_153722: Joseph Gyurko on 2025-11-25T21:28:09.670Z: Tue 11/25/2025 / All risers installed in north gallery / allucent_notes: 2025-11-25T21:28:09.670Z - User: Joseph Gyurko - Date Added: 2025-11-25T21:28:09.670Z - Note: Tue 11/25/2025All risers installed in north gallery
- QTS-101740: allucent_notes_20251209_203830: Luis Vea on 2025-12-01 10:03: starting on the 12/4 / allucent_notes_20251202_153722: Luis Vea on 2025-12-01 10:03: starting on the 12/4 / allucent_notes: 2025-12-01 10:03 - User: Luis Vea - Date Added: 2025-12-01 10:03 - Note: starting on the 12/4

| ID | WBS | Activity | Duration | Start | Finish | Predecessors | Complete | Planned start | Planned finish | Calendar | Allucent CSI Group | Project Section | Layton Discipline | Baseline | Project Section-1 | Location | Level | Fragnet | Fragnet Responsible Party | Contract | Phase-1-1 | Notes | If Not Started or Finished Why? | Layton Super |
| --- | --- | --- | --- | --- | --- | --- | --- | --- | --- | --- | --- | --- | --- | --- | --- | --- | --- | --- | --- | --- | --- | --- | --- | --- |
|  | 1 | **Fragnet / CRAH Assembly** |  |  |  |  |  |  |  |  |  |  |  |  |  |  |  |  |  |  |  |  |  |  |
|  | 3 | **Fragnet / RFI #751** |  | 2025-12-02 | 2025-12-12 |  |  |  |  |  |  |  |  |  |  |  |  |  |  |  |  |  |  |  |
| QTS-1001260 |  | Fragnet / DH 2100 / Mechanical Gallery 2101 // Security Screen Mesh Design Change to Tamper Proof Fasteners | 6d | 2025-12-02 A | 2025-12-09 A | QTS-1030 SS | 100% |  |  |  | 01ADMIN | Construction | Build Out | IGMP | Construction | DH2100 | Level 2 | Fragnet | Performance Contracting Inc. | BAB |  |  |  |  |
| QTS-1001240 |  | Fragnet / DH 2100 / Mechanical Gallery 2101 // Confirming RFI #751 for Security Screen Tamper Proof Fasteners Submission | 1d | 2025-12-10 A | 2025-12-10 A | QTS-1001260 | 100% |  |  |  | 01ADMIN | Construction | Build Out | IGMP | Construction | DH2100 | Level 2 | Fragnet | Performance Contracting Inc. | BAB |  |  |  |  |
| QTS-1001250 |  | Fragnet / DH 2100 / Mechanical Gallery 2101 // RFI #751 Tamper Proof Fasteners Procurment | 3d | 2025-12-11 A | 2025-12-12 A | QTS-1001240 | 100% | 2025-12-11 | 2025-12-13 | QTS-PHX3 DC1 - 6 day w/ Holidays | 01ADMIN | Construction | Build Out | IGMP | Construction | DH2100 | Level 2 | Fragnet | Performance Contracting Inc. | BAB |  |  |  |  |
|  | 2 | **Remaining Work** |  | 2025-11-19 | 2026-07-06 |  |  |  |  |  |  |  |  |  |  |  |  |  |  |  |  |  |  |  |
| QTS-46441 |  | DH 2100 / Mechanical Gallery 2101 // Set EPMS/BMS Panels | 4d | 2025-11-19 A | 2025-12-12 A | QTS-23051 | 100% | 2025-11-19 | 2025-11-24 |  | 01ADMIN | Construction | Electrical | IGMP | Construction | DH2100 | Level 2 |  |  | BAB |  |  |  |  |
| QTS-23611 |  | DH 2100 / Mechanical Gallery 2101 // OFCI - L2 SET IN PLACE - Eq Type # - DH CRAH - 14 units | 6d | 2025-12-04 A | 2025-12-08 A | QTS-99890, QTS-23341, QTS-34021, QTS-34011, QTS-34001, QTS-33991, QTS-33981, QTS-33971, QTS-33961, QTS-33951, QTS-33941, QTS-33931, QTS-33921, QTS-33911, QTS-33901, QTS-33891 | 100% | 2025-11-20 | 2025-11-26 | QTS-PHX3 DC1 - 6 day w/ Holidays | 01ADMIN | Construction | Mechanical | IGMP | Construction | DH2100 | Level 2 |  |  | BAB |  |  |  |  |
| QTS-46421 |  | DH 2100 / Mechanical Gallery 2101 // OFCI - L2 SET IN PLACE - Eq Type # - EG CRAH - 4 units | 6d | 2025-12-04 A | 2025-12-08 A | QTS-34171, QTS-34181, QTS-34191, QTS-34201, QTS-23051 | 100% | 2025-11-20 | 2025-11-26 | QTS-PHX3 DC1 - 6 day w/ Holidays | 01ADMIN | Construction | Mechanical | IGMP | Construction | DH2100 | Level 2 |  |  | BAB |  |  |  |  |
| QTS-23191 |  | DH 2100 / Mechanical Gallery 2101 // Top of Wall Fire Stop for 2101-2102 Wall | 2d | 2025-12-10 A | 2025-12-11 A | QTS-101740, QTS-23051 | 100% |  |  |  | 01ADMIN | Construction | Build Out | IGMP | Construction | DH2100 | Level 2 |  |  | BAB |  |  |  |  |
| QTS-101910 |  | DH 2100 / Mechanical Gallery 2101 // POC Rough In for CRAH Unit Mechanical Connections | 5d | 2025-12-22 A | 2026-01-19 A | QTS-120000, QTS-101900 FF+1d | 100% | 2025-12-22 | 2025-12-27 | QTS-PHX3 DC1 - 6 day w/ Holidays | 01ADMIN | Construction | Mechanical | IGMP | Construction | DH2100 | Level 2 |  |  | BAB |  |  |  |  |
| QTS-23351 |  | DH 2100 / Mechanical Gallery 2101 // Install Security Screen Above Fan Wall | 3d | 2026-01-05 A | 2026-01-09 A | QTS-1001250, QTS-99680, QTS-22141 | 100% | 2026-01-05 | 2026-01-07 | QTS-PHX3 DC1 - 6 day w/ Holidays | 01ADMIN | Construction | Build Out | IGMP | Construction | DH2100 | Level 2 |  |  | BAB |  |  |  |  |
| QTS-43741 |  | DH 2100 / Mechanical Gallery 2101 // OFCI - L2 SET IN PLACE - Eq Type # - MOD-03 - 7 units | 10d | 2026-01-12 A | 2026-01-12 A | QTS-23051, QTS-31681, QTS-36491, QTS-36421, QTS-36351, QTS-36281, QTS-36211, QTS-31441 | 100% | 2025-12-17 | 2025-12-29 | QTS-PHX3 DC1 - 6 day w/ Holidays | 01ADMIN | Construction | Electrical | IGMP | Construction | DH1100 | Level 1 |  |  | BAB | Phase 1 |  |  |  |
| QTS-43891 |  | DH 2100 / Mechanical Gallery 2101 // OFCI - L2 SET IN PLACE - Eq Type # - MOD-02 - 7 units | 10d | 2026-01-12 A | 2026-01-12 A | QTS-23051, QTS-31781, QTS-36481, QTS-36411, QTS-36341, QTS-36271, QTS-36201, QTS-25011 | 100% | 2025-12-17 | 2025-12-29 | QTS-PHX3 DC1 - 6 day w/ Holidays | 01ADMIN | Construction | Electrical | IGMP | Construction | DH1100 | Level 1 |  |  | BAB | Phase 1 |  |  |  |
| QTS-1005130 |  | DH 2100 / Mechanical Gallery 2101 // Install Raceway from UPS Pod to MOD-02/03 Boards | 10d | 2026-01-13 A | 2026-02-10 A | QTS-43891, QTS-43741 | 100% | 2026-01-13 | 2026-01-24 | QTS-PHX3 DC1 - 6 day w/ Holidays | 01ADMIN | Construction | Electrical | IGMP |  | DH2100 | Level 2 |  |  | BAB |  |  |  |  |
| QTS-24271 |  | DH 2100 / Mechanical Gallery 2101 // Install Raceway from UPS Pod to MOD-02/03 Boards | 10d | 2026-01-13 A | 2026-01-27 A | QTS-23191, QTS-23931, QTS-43891 SS+3d, QTS-43741 SS+3d, QTS-23671 | 100% | 2026-01-13 | 2026-01-24 | QTS-PHX3 DC1 - 6 day w/ Holidays | 01ADMIN | Construction | Electrical | IGMP |  | DH2100 | Level 2 |  |  | BAB |  |  |  |  |
| QTS-1005140 |  | DH 2100 / Mechanical Gallery 2101 // Install Electrical Tray | 5d | 2026-01-15 A | 2026-02-10 A | QTS-23061 | 100% | 2026-01-15 | 2026-01-21 | QTS-PHX3 DC1 - 6 day w/ Holidays |  | Construction | Electrical | IGMP | Construction | DH2100 | Level 2 |  |  | BAB |  |  |  |  |
| QTS-24071 |  | DH 2100 / Mechanical Gallery 2101 // Install Electrical Tray | 5d | 2026-01-15 A | 2026-01-27 A | QTS-23061, QTS-24271 FF, QTS-23341, QTS-1005130 FF | 100% | 2026-01-15 | 2026-01-21 | QTS-PHX3 DC1 - 6 day w/ Holidays |  | Construction | Electrical | IGMP | Construction | DH2100 | Level 2 |  |  | BAB |  |  |  |  |
| QTS-23971 |  | DH 2100 / Mechanical Gallery 2101 // DH CRAH Unit Mechanical Connections | 5d | 2026-01-20 A | 2026-01-27 A | QTS-101900, QTS-23611 SS+4d, QTS-101910 | 100% | 2026-01-20 | 2026-01-24 | QTS-PHX3 DC1 - 6 day w/ Holidays | 01ADMIN | Construction | Mechanical | IGMP | Construction | DH2100 | Level 2 |  |  | BAB |  |  |  |  |
| QTS-46431 |  | DH 2100 / Mechanical Gallery 2101 // EG CRAH Unit Mechanical Connections | 5d | 2026-01-26 A | 2026-02-17 A | QTS-101900, QTS-46421, QTS-23971 FF | 100% | 2026-01-26 | 2026-01-30 | QTS-PHX3 DC1 - 6 day w/ Holidays | 01ADMIN | Construction | Mechanical | IGMP | Construction | DH2100 | Level 2 |  |  | BAB |  |  |  |  |
| QTS-1005100 |  | DH 2100 / Mechanical Gallery 2101 // DH CRAH Unit Mechanical Connections | 5d | 2026-01-28 A | 2026-02-02 A | QTS-23971 | 100% | 2026-01-20 | 2026-01-24 | QTS-PHX3 DC1 - 6 day w/ Holidays | 01ADMIN | Construction | Mechanical | IGMP | Construction | DH2100 | Level 2 |  |  | BAB |  |  |  |  |
| QTS-99510 |  | DH 2100 / Mechanical Gallery 2101 // Final Connection of Raceway from UPS Pod to MOD-02/03 Boards | 4d | 2026-02-11 A | 2026-02-13 A | QTS-46431, QTS-23971, QTS-1005100 | 100% | 2026-02-11 | 2026-02-14 | QTS-PHX3 DC1 - 6 day w/ Holidays |  | Construction | Electrical | IGMP |  | DH2100 | Level 2 |  |  | BAB |  |  |  |  |
| QTS-99520 |  | DH 2100 / Mechanical Gallery 2101 // Final Connection of Electrical Tray | 2d | 2026-02-23 A | 2026-03-11 A | QTS-99510 | 100% | 2026-02-23 | 2026-02-24 | QTS-PHX3 DC1 - 6 day w/ Holidays |  | Construction | Electrical | IGMP | Construction | DH2100 | Level 2 |  |  | BAB |  |  |  |  |
| QTS-43681 |  | DH 2100 / Mechanical Gallery 2101 // Pull Wire from UPS Pod to MOD-02/03 Boards | 5d | 2026-02-27 A | 2026-03-11 A | QTS-24271, QTS-1005130 | 100% | 2026-02-27 | 2026-03-04 | QTS-PHX3 DC1 - 6 day w/ Holidays | 01ADMIN | Construction | Electrical | IGMP | Construction | DH2100 | Level 2 |  |  | BAB |  |  |  |  |
| QTS-24371 |  | DH 2100 / Mechanical Gallery 2101 // Install Basket Tray for LV | 5d | 2026-03-03 A | 2026-04-30 A | QTS-24081, QTS-99520 FF, QTS-46441, QTS-24071, QTS-1005140 | 100% | 2026-03-03 | 2026-03-07 | QTS-PHX3 DC1 - 6 day w/ Holidays |  | Construction | LV | IGMP | Construction | DH2100 | Level 2 |  |  | BAB |  | 4/14: 95% complete. Needs liner & pass through |  |  |
| QTS-24771 |  | DH 2100 / Mechanical Gallery 2101 // Set Humidifiers | 4d | 2026-03-04 A | 2026-03-17 A | QTS-43891, QTS-19481, QTS-46431 | 100% | 2026-03-04 | 2026-03-07 | QTS-PHX3 DC1 - 6 day w/ Holidays | 01ADMIN | Construction | Mechanical | IGMP | Construction | DH2100 | Level 2 |  |  | BAB |  |  |  |  |
| QTS-45721 |  | DH 2100 / Mechanical Gallery 2101 // Pull & Terminate from MOD-02 to CRAHs | 4d | 2026-03-12 A | 2026-04-27 A | QTS-43681, QTS-1008720 FF | 100% | 2026-03-12 | 2026-03-16 | QTS-PHX3 DC1 - 6 day w/ Holidays |  | Construction | Electrical | IGMP | Construction | DH2100 | Level 2 |  |  | BAB |  |  |  |  |
| QTS-24811 |  | DH 2100 / Mechanical Gallery 2101 // Tie-In MEP to Humidifiers | 6d | 2026-03-16 A | 2026-03-30 A | QTS-23341 FF, QTS-24771 FF | 100% | 2026-03-16 | 2026-03-21 | QTS-PHX3 DC1 - 6 day w/ Holidays | 01ADMIN | Construction | Mechanical | IGMP | Construction | DH2100 | Level 2 |  |  | BAB |  |  | Internal Issues with Pipe Routing |  |
| QTS-23981 |  | DH 2100 / Mechanical Gallery 2101 // Install Angle Seal Around CRAH Units | 2d | 2026-03-25 A | 2026-03-26 A | QTS-23611, QTS-1004880 | 100% |  |  | QTS-PHX3 DC1 - 6 day w/ Holidays | 01ADMIN | Construction | Build Out | IGMP | Construction | DH2100 | Level 2 |  |  | BAB |  | 1/20/26: Material needs to be procured. |  |  |
| QTS-1009390 |  | DH 2100 / Mechanical Gallery 2101 // Fragnet Delay - Internal Issues w Pipe Routing - Tie-In MEP to Humidifiers | 6d | 2026-03-31 A | 2026-07-06 A | QTS-24811 | 100% | 2026-03-16 | 2026-03-21 | QTS-PHX3 DC1 - 6 day w/ Holidays | 01ADMIN | Construction | Mechanical | IGMP | Construction | DH2100 | Level 2 | Fragnet | Bel-Aire Mechanical. LLC | BAB |  | Internal Issues with Pipe Routing | Internal Issues with Pipe Routing | Mechanical |
| QTS-1008720 |  | DH 2100 / Mechanical Gallery 2101 // Terminate Wire from UPS Pod to MOD-02/03 Boards | 5d | 2026-04-22 A | 2026-04-27 A | QTS-43681 | 100% |  |  | QTS-PHX3 DC1 - 6 day w/ Holidays | 01ADMIN | Construction | Electrical | IGMP | Construction | DH2100 | Level 2 |  |  | BAB |  |  |  |  |
| QTS-45711 |  | DH 2100 / Mechanical Gallery 2101 // Pull & Terminate from MOD-02 to DOAS | 4d | 2026-04-28 A | 2026-05-01 A | QTS-45721 | 100% |  |  | QTS-PHX3 DC1 - 6 day w/ Holidays |  | Construction | Electrical | IGMP | Construction | DH2100 | Level 2 |  |  | BAB |  |  |  |  |
| QTS-44381 |  | DH 2100 / Mechanical Gallery 2101 // Install Security and Devices | 5d | 2026-05-20 A | 2026-05-26 A | QTS-43681, QTS-1008720 | 100% |  |  | QTS-PHX3 DC1 - 6 day w/ Holidays |  | Construction | Electrical | IGMP | Construction | DH2100 | Level 2 |  |  | BAB |  |  |  |  |

Notes:
- QTS-1001260: allucent_notes_20251209_203830: Jason Johnston on 2025-11-04 15:11: pushed by 12x38 / Jason Johnston on 2025-11-10 15:11: not started. / Jason Johnston on 2025-12-09 18:21: Need update from team / allucent_notes_20251202_153722: Jason Johnston on 2025-11-04 15:11: pushed by 12x38 / Jason Johnston on 2025-11-10 15:11: not started. / allucent_notes_20251118_192630: Jason Johnston on 2025-11-04 15:11: pushed by 12x38 / Jason Johnston on 2025-11-10 15:11: not started. / allucent_notes_20251111_182405: Jason Johnston on 2025-11-04 15:11: pushed by 12x38 / Jason Johnston on 2025-11-10 15:11: not started. / allucent_notes_20251104_160200: Jason Johnston on 2025-11-04 15:11: pushed by 12x38 / Scheduler Notes: Jason Johnston on 2025-11-04 15:11: pushed by 12x38 / Jason Johnston on 2025-11-10 15:11: not started. / Jason Johnston on 2025-12-09 18:21: Need update from team / RFI-0751 - PCI - Confirming Stainless-Steel Tamper-Proof Fasteners - CORGAN / RESPONSE / allucent_notes: 2025-11-04 15:11 - User: Jason Johnston - Date Added: 2025-11-04 15:11 - Note: pushed by 12x38 / 2025-11-10 15:11 - User: Jason Johnston - Date Added: 2025-11-10 15:11 - Note: not started. / 2025-12-09 18:21 - User: Jason Johnston - Date Added: 2025-12-
- QTS-1001240: allucent_notes_20251209_203830: Jason Johnston on 2025-11-04 15:11: pushed by 12x38 / Jason Johnston on 2025-11-10 15:11: not started. / Jason Johnston on 2025-12-09 18:21: Need update from team / allucent_notes_20251202_153722: Jason Johnston on 2025-11-04 15:11: pushed by 12x38 / Jason Johnston on 2025-11-10 15:11: not started. / allucent_notes_20251118_192630: Jason Johnston on 2025-11-04 15:11: pushed by 12x38 / Jason Johnston on 2025-11-10 15:11: not started. / allucent_notes_20251111_182405: Jason Johnston on 2025-11-04 15:11: pushed by 12x38 / Jason Johnston on 2025-11-10 15:11: not started. / allucent_notes_20251104_160200: Jason Johnston on 2025-11-04 15:11: pushed by 12x38 / allucent_notes: 2025-11-04 15:11 - User: Jason Johnston - Date Added: 2025-11-04 15:11 - Note: pushed by 12x38 / 2025-11-10 15:11 - User: Jason Johnston - Date Added: 2025-11-10 15:11 - Note: not started. / 2025-12-09 18:21 - User: Jason Johnston - Date Added: 2025-12-
- QTS-1001250: allucent_notes_20251216_165335: Scott Masterson on 2025-12-16 16:49: I need to verify if they have the screws but I know they are not install 100% yet. / allucent_notes_20251209_203830: Jason Johnston on 2025-11-04 15:11: pushed by 12x38 / Jason Johnston on 2025-11-10 15:11: not started. / Jason Johnston on 2025-12-09 18:21: Need update from team / allucent_notes_20251202_153722: Jason Johnston on 2025-11-04 15:11: pushed by 12x38 / Jason Johnston on 2025-11-10 15:11: not started. / allucent_notes_20251118_192630: Jason Johnston on 2025-11-04 15:11: pushed by 12x38 / Jason Johnston on 2025-11-10 15:11: not started. / allucent_notes_20251111_182405: Jason Johnston on 2025-11-04 15:11: pushed by 12x38 / Jason Johnston on 2025-11-10 15:11: not started. / allucent_notes_20251104_160200: Jason Johnston on 2025-11-04 15:11: pushed by 12x38 / allucent_notes_20251230_164549: Scott Masterson on 2025-12-16 16:49: I need to verify if they have the screws but I know they are not install 100% yet. / Jason Johnston on 2025-12-30 16:41: No update / allucent_notes: 2025-12-16 16:49 - User: Scott Masterson - Date Added: 2025-12-16 16:49 - Note: I need to verify if they have the screws but I know they are not install 100% yet. / 2025-12-30 16:41 - User: Jason Johnston - Date Added: 2025-12-30 16:41 - Note: No update
- QTS-46441: allucent_notes_20251216_165335: Scott Masterson on 2025-11-04 14:11: Walls were not painted for electrical to start. / Jason Johnston on 2025-11-11 16:11: need update / David Wiltberger on 2025-12-02 13:48: waiting for paint / allucent_notes_20251209_203830: Scott Masterson on 2025-11-04 14:11: Walls were not painted for electrical to start. / Jason Johnston on 2025-11-11 16:11: need update / David Wiltberger on 2025-12-02 13:48: waiting for paint / allucent_notes_20251202_153722: Scott Masterson on 2025-11-04 14:11: Walls were not painted for electrical to start. / Jason Johnston on 2025-11-11 16:11: need update / David Wiltberger on 2025-12-02 13:48: waiting for paint / allucent_notes_20251118_192630: Scott Masterson on 2025-11-04 14:11: Walls were not painted for electrical to start. / Jason Johnston on 2025-11-11 16:11: need update / allucent_notes_20251111_182405: Scott Masterson on 2025-11-04 14:11: Walls were not painted for electrical to start. / Jason Johnston on 2025-11-11 16:11: need update / allucent_notes_20251104_160200: Scott Masterson on 2025-11-04 14:11: Walls were not painted for electrical to start. / allucent_notes: 2025-11-04 14:11 - User: Scott Masterson - Date Added: 2025-11-04 14:11 - Note: Walls were not painted for electrical to start. / 2025-11-11 16:11 - User: Jason Johnston - Date Added: 2025-11-11 16:11 - Note: need update / 2025-12-02 13:48 - User: David
- QTS-23191: allucent_notes_20251216_165335: Jason Johnston on 2025-11-04 15:11: pushed by 12x38 / Jason Johnston on 2025-11-10 15:11: not started. / Jason Johnston on 2025-12-09 18:21: Need update from team / allucent_notes_20251209_203830: Jason Johnston on 2025-11-04 15:11: pushed by 12x38 / Jason Johnston on 2025-11-10 15:11: not started. / Jason Johnston on 2025-12-09 18:21: Need update from team / allucent_notes_20251202_153722: Jason Johnston on 2025-11-04 15:11: pushed by 12x38 / Jason Johnston on 2025-11-10 15:11: not started. / allucent_notes_20251118_192630: Jason Johnston on 2025-11-04 15:11: pushed by 12x38 / Jason Johnston on 2025-11-10 15:11: not started. / allucent_notes_20251111_182405: Jason Johnston on 2025-11-04 15:11: pushed by 12x38 / Jason Johnston on 2025-11-10 15:11: not started. / allucent_notes_20251104_160200: Jason Johnston on 2025-11-04 15:11: pushed by 12x38 / allucent_notes: 2025-11-04 15:11 - User: Jason Johnston - Date Added: 2025-11-04 15:11 - Note: pushed by 12x38 / 2025-11-10 15:11 - User: Jason Johnston - Date Added: 2025-11-10 15:11 - Note: not started. / 2025-12-09 18:21 - User: Jason Johnston - Date Added: 2025-12-
- QTS-101910: allucent_notes_20251216_165335: David Wiltberger on 2025-12-02 06:43: CRAHs delivered Late / Jason Johnston on 2025-12-09 20:29: Need update from team / Jason Johnston on 2025-12-16 08:37: POC pieces are being detailed and fabricated. / allucent_notes_20251209_203830: David Wiltberger on 2025-12-02 06:43: CRAHs delivered Late / Jason Johnston on 2025-12-09 20:29: Need update from team / allucent_notes_20251202_153722: David Wiltberger on 2025-12-02 06:43: CRAHs delivered Late / allucent_notes_20251230_164549: David Wiltberger on 2025-12-02 06:43: CRAHs delivered Late / Jason Johnston on 2025-12-09 20:29: Need update from team / Jason Johnston on 2025-12-16 08:37: POC pieces are being detailed and fabricated. / allucent_notes: 2025-12-02 06:43 - User: David Wiltberger - Date Added: 2025-12-02 06:43 - Note: CRAHs delivered Late / 2025-12-09 20:29 - User: Jason Johnston - Date Added: 2025-12-09 20:29 - Note: Need update from team / 2025-12-16 08:37 - User: Jason Johnston - Date
- QTS-23351: allucent_notes_20251216_165335: Jason Johnston on 2025-12-09 16:47: RFI changed clips and procurement will delay install of security screen. / allucent_notes_20251209_203830: Jason Johnston on 2025-12-09 16:47: RFI changed clips and procurement will delay install of security screen. / allucent_notes_20251230_164549: Jason Johnston on 2025-12-09 16:47: RFI changed clips and procurement will delay install of security screen. / allucent_notes: 2025-12-09 16:47 - User: Jason Johnston - Date Added: 2025-12-09 16:47 - Note: RFI changed clips and procurement will delay install of security screen.
- QTS-43741: allucent_notes_20251216_165335: Scott Masterson on 2025-11-04 14:11: Walls were not painted for electrical to start. / Jason Johnston on 2025-11-11 16:11: need update / David Wiltberger on 2025-12-02 13:50: change sequence for build / Jason Johnston on 2025-12-09 20:29: Need update from team / Jason Johnston on 2025-12-16 08:39: Coordinating delivery and set with other OFCI items / allucent_notes_20251209_203830: Scott Masterson on 2025-11-04 14:11: Walls were not painted for electrical to start. / Jason Johnston on 2025-11-11 16:11: need update / David Wiltberger on 2025-12-02 13:50: change sequence for build / Jason Johnston on 2025-12-09 20:29: Need update from team / allucent_notes_20251202_153722: Scott Masterson on 2025-11-04 14:11: Walls were not painted for electrical to start. / Jason Johnston on 2025-11-11 16:11: need update / David Wiltberger on 2025-12-02 13:50: change sequence for build / allucent_notes_20251118_192630: Scott Masterson on 2025-11-04 14:11: Walls were not painted for electrical to start. / Jason Johnston on 2025-11-11 16:11: need update / allucent_notes_20251111_182405: Scott Masterson on 2025-11-04 14:11: Walls were not painted for electrical to start. / Jason Johnston on 2025-11-11 16:11: need update / allucent_notes_20251104_160200: Scott Masterson on 2025-11-04 14:11: Walls were not painted for electrical to start. / allucent_notes_20251230_164549: Scott Masterson on 2025-11-04 14:11: Walls were not painted for electrical to start. / Jason Johnston on 2025-11-11 16:11: need update / David Wiltberger on 2025-12-02 13:50: change sequence for build / Jason Johnston on 2025-12-09 20:29: Need update from team / Jason Johnston on 2025-12-16 08:39: Coordinating delivery and set with other OFCI items / allucent_notes: 2025-11-04 14:11 - User: Scott Masterson - Date Added: 2025-11-04 14:11 - Note: Walls were not painted for electrical to start. / 2025-11-11 16:11 - User: Jason Johnston - Date Added: 2025-11-11 16:11 - Note: need update / 2025-12-02 13:50 - User: David
- QTS-43891: allucent_notes_20251216_165335: Scott Masterson on 2025-11-04 14:11: Walls were not painted for electrical to start. / Jason Johnston on 2025-11-11 16:11: need update / David Wiltberger on 2025-12-02 13:51: change sequence for build / Jason Johnston on 2025-12-09 20:29: Need update from team / Jason Johnston on 2025-12-16 08:39: Coordinating delivery and set with other OFCI items / allucent_notes_20251209_203830: Scott Masterson on 2025-11-04 14:11: Walls were not painted for electrical to start. / Jason Johnston on 2025-11-11 16:11: need update / David Wiltberger on 2025-12-02 13:51: change sequence for build / Jason Johnston on 2025-12-09 20:29: Need update from team / allucent_notes_20251202_153722: Scott Masterson on 2025-11-04 14:11: Walls were not painted for electrical to start. / Jason Johnston on 2025-11-11 16:11: need update / David Wiltberger on 2025-12-02 13:51: change sequence for build / allucent_notes_20251118_192630: Scott Masterson on 2025-11-04 14:11: Walls were not painted for electrical to start. / Jason Johnston on 2025-11-11 16:11: need update / allucent_notes_20251111_182405: Scott Masterson on 2025-11-04 14:11: Walls were not painted for electrical to start. / Jason Johnston on 2025-11-11 16:11: need update / allucent_notes_20251104_160200: Scott Masterson on 2025-11-04 14:11: Walls were not painted for electrical to start. / allucent_notes_20251230_164549: Scott Masterson on 2025-11-04 14:11: Walls were not painted for electrical to start. / Jason Johnston on 2025-11-11 16:11: need update / David Wiltberger on 2025-12-02 13:51: change sequence for build / Jason Johnston on 2025-12-09 20:29: Need update from team / Jason Johnston on 2025-12-16 08:39: Coordinating delivery and set with other OFCI items / allucent_notes: 2025-11-04 14:11 - User: Scott Masterson - Date Added: 2025-11-04 14:11 - Note: Walls were not painted for electrical to start. / 2025-11-11 16:11 - User: Jason Johnston - Date Added: 2025-11-11 16:11 - Note: need update / 2025-12-02 13:51 - User: David
- QTS-24371: Scheduler Notes: 4/14: 95% complete. Needs liner & pass through
- QTS-23981: Scheduler Notes: 1/20/26: Material needs to be procured.
- QTS-1009390: Scheduler Notes: Internal Issues with Pipe Routing

| ID | WBS | Activity | Duration | Start | Finish | Predecessors | Complete | Planned start | Planned finish | Calendar | Layton Discipline | Location | Fragnet | Layton Super | Fragnet Responsible Party | TFO-CONST ONLY | Contract | NICK | Delay Notice 07-26 | Vendor Responsible Party | Owner Impact Analysis | Allucent CSI Group | Notes | Project Section | Baseline | Level |
| --- | --- | --- | --- | --- | --- | --- | --- | --- | --- | --- | --- | --- | --- | --- | --- | --- | --- | --- | --- | --- | --- | --- | --- | --- | --- | --- |
|  | 4 | **Gallery 2101 Mechanical TFO** |  | 2025-11-24 | 2026-07-14 |  |  |  |  |  |  |  |  |  |  |  |  |  |  |  |  |  |  |  |  |  |
|  | 9 | **TFO 2101 - CDU Mechanical Gallery** |  | 2025-11-24 | 2026-07-14 |  |  |  |  |  |  |  |  |  |  |  |  |  |  |  |  |  |  |  |  |  |
|  | 2 | **Fragnet Delays - TFO 2101 - CDU Mechanical Gallery** |  | 2026-04-26 | 2026-06-17 |  |  |  |  |  |  |  |  |  |  |  |  |  |  |  |  |  |  |  |  |  |
| QTS - 26551 |  | TFO Scope // DH 2100 - 2101 Mechanical Gallery / Fragnet Delay due to Gasket Replacement - Technical Loop | 7d | 2026-04-26 A | 2026-06-06 A | QTS - 1730 | 100% | 2026-07-08 | 2026-07-15 | QTS-PHX3 DC1 - 6 day w/ Holidays | Mechanical | DH2100 | Fragnet | Mechanical | Quality Technology Services | TFO CONST | TFO | NICK | Delay 07-26 |  |  |  |  |  |  |  |
| QTS - 26611 |  | Fragnet Delay due to PHE off site | 7d | 2026-06-10 A | 2026-06-17 A | QTS - 1730, QTS - 26551 | 100% | 2026-07-15 | 2026-07-21 | QTS-PHX3 DC1 - 7 day No Holidays | Mechanical | DH2100 | Fragnet | Mechanical | Parrish-Hare Electrical Supply | TFO CONST | TFO | NICK | Delay 07-26 | PHE | Y |  |  |  |  |  |
|  | 1 | **Existing Scope - TFO 2101 - CDU Mechanical Gallery** |  | 2025-11-24 | 2026-07-14 |  |  |  |  |  |  |  |  |  |  |  |  |  |  |  |  |  |  |  |  |  |
| QTS - 1770 |  | TFO Scope // DH 2100 - 2101 Mechanical Gallery / Install OH Technical Loop Hangers | 5d | 2025-11-24 A | 2025-12-05 A | QTS - 2240 | 100% | 2025-11-24 | 2025-12-02 |  | Mechanical |  |  |  |  | TFO CONST | TFO | NICK |  |  |  |  |  |  |  |  |
| QTS - 1100 |  | TFO Scope // DH 2100 - 2101 Mechanical Gallery / Install OH 8" Technical Loop CDU Piping | 9d | 2025-12-08 A | 2026-03-11 A | QTS - 2610, QTS - 2240 FF+5d, QTS - 2590, QTS - 1770 | 100% | 2025-12-08 | 2025-12-17 | QTS-PHX3 DC1 - 6 day w/ Holidays | Mechanical | DH2100 |  |  |  | TFO CONST | TFO | NICK |  |  |  | 01ADMIN |  |  |  |  |
| QTS - 1170 |  | TFO Scope // DH 2100 - 2101 Mechanical Gallery / OFCI - L2 SET IN PLACE - CDU - 9 units | 3d | 2025-12-15 A | 2025-12-15 A | QTS - 1100 SS, QTS - 1040 | 100% | 2025-12-15 | 2025-12-17 |  | Mechanical |  |  |  |  | TFO CONST | TFO | NICK |  |  |  | 01ADMIN |  |  |  |  |
| QTS - 1230 |  | TFO Scope // DH 2100 - 2101 Mechanical Gallery / Pull Branches From MOD-03 to CDUs | 8d | 2026-04-01 A | 2026-04-09 A | QTS - 1170 | 100% |  |  | QTS-PHX3 DC1 - 6 day w/ Holidays | Electrical | DH2100 |  |  |  | TFO CONST | TFO | NICK |  |  |  | 01ADMIN |  |  |  |  |
| QTS - 1700 |  | TFO Scope // DH 2100 - 2101 Mechanical Gallery / Detail & Fabricate CDU Mechanical Connections | 10d | 2026-04-09 A | 2026-05-18 A | QTS - 1100 FF, QTS - 1170 | 100% | 2026-04-09 | 2026-04-20 | QTS-PHX3 DC1 - 6 day w/ Holidays | Mechanical | DH2100 |  |  |  | TFO CONST | TFO | NICK |  |  |  | 01ADMIN |  |  |  |  |
| QTS - 10170 |  | TFO Scope // DH 2100 - 2101 Mechanical Gallery / Pull Telecom Wire from MMR to IDF Cabinet | 10d | 2026-04-15 A | 2026-05-21 A | QTS - 10160 | 100% | 2026-05-27 | 2026-06-06 | QTS-PHX3 DC1 - 6 day w/ Holidays | LV | DH2100 |  |  |  | TFO CONST | TFO | NICK |  |  |  |  |  |  |  |  |
| QTS - 1340 |  | TFO Scope // DH 2100 - 2101 Mechanical Gallery / Pull LV Main / DCIM Cabinet to Basket Tray | 7d | 2026-05-01 A | 2026-05-08 A | QTS-24371 | 100% |  |  | QTS-PHX3 DC1 - 6 day w/ Holidays | LV | DH2100 |  |  |  | TFO CONST | TFO | NICK |  |  |  |  | 4/28: No Access |  |  |  |
| QTS - 3440 |  | TFO Scope // DH 2100 - 2101 Mechanical Gallery / BMS & EPMS Terminations | 2d | 2026-05-22 A | 2026-05-26 A | QTS - 10170, QTS - 1340 | 100% | 2026-06-03 | 2026-06-04 | QTS-PHX3 DC1 - 6 day w/ Holidays | LV | DH2100 |  |  |  | TFO CONST | TFO | NICK |  |  |  |  |  |  |  |  |
| QTS - 10160 |  | TFO Scope // DH 2100 - 2101 Mechanical Gallery / Install Telecom Conduit from MMR to IDF Cabinet | 10d | 2026-05-27 A | 2026-06-02 A | QTS-24371 | 100% | 2026-05-27 | 2026-06-06 | QTS-PHX3 DC1 - 6 day w/ Holidays | LV | DH2100 |  |  |  | TFO CONST | TFO | NICK |  |  |  |  |  |  |  |  |
| QTS - 1210 |  | TFO Scope // DH 2100 - 2101 Mechanical Gallery / Fill & Flush Technical Loop A - B | 7d | 2026-06-30 A | 2026-07-07 A | QTS - 1730, QTS - 1180, QTS - 26551, QTS - 26611 | 100% | 2026-07-15 | 2026-07-21 | QTS-PHX3 DC1 - 7 day No Holidays | Mechanical | DH2100 |  | Mechanical |  | TFO CONST | TFO | NICK |  |  |  |  |  |  |  |  |
| QTS - 1710 |  | TFO Scope // DH 2100 - 2101 Mechanical Gallery / CDU Unit 4" Mechanical Connections Lineup - C - D | 7d | 2026-07-01 A | 2026-07-07 A | QTS - 2880, QTS - 1180, QTS - 26551, QTS - 3440 | 100% | 2026-07-15 | 2026-07-22 | QTS-PHX3 DC1 - 6 day w/ Holidays | Mechanical | DH2100 |  | Mechanical |  | TFO CONST | TFO | NICK |  |  |  |  |  |  |  |  |
| QTS - 1180 |  | TFO Scope // DH 2100 - 2101 Mechanical Gallery / CDU Unit 4" Mechanical Connections Lineup - A - B | 7d | 2026-07-06 A | 2026-07-14 A | QTS - 1170, QTS - 1730, QTS - 1700 | 100% | 2026-07-15 | 2026-07-22 | QTS-PHX3 DC1 - 6 day w/ Holidays | Mechanical | DH2100 |  | Mechanical |  | TFO CONST | TFO | NICK |  |  |  |  |  |  |  |  |
| QTS - 1270 |  | TFO Scope // DH 2100 - 2101 Mechanical Gallery / Terminate & Torque - CDU Connections | 5d | 2026-07-08 A | 2026-07-14 A | QTS - 1170, QTS - 1230 | 100% | 2026-07-15 | 2026-07-20 | QTS-PHX3 DC1 - 6 day w/ Holidays | Electrical | DH2100 |  | Oscar Armenta |  | TFO CONST | TFO | NICK |  |  |  |  |  |  |  |  |
| QTS - 1360 |  | TFO Scope // DH 2100 - 2101 Mechanical Gallery / Final Connection Tie-In to CDU Lineup - A - B | 1d | 2026-07-08 A | 2026-07-08 A | QTS - 1210 | 100% | 2026-07-15 | 2026-07-15 | QTS-PHX3 DC1 - 6 day w/ Holidays | Mechanical | DH2100 |  | Mechanical |  | TFO CONST | TFO | NICK |  |  |  |  |  |  |  |  |
| QTS - 3650 |  | TFO Scope // DH 2100 - 2101 Mechanical Gallery / Fill & Flush Technical Loop C - D | 5d | 2026-07-08 A | 2026-07-14 A | QTS - 2880, QTS - 1710, QTS - 1210, QTS - 26611 | 100% | 2026-07-23 | 2026-07-27 | QTS-PHX3 DC1 - 7 day No Holidays | Mechanical | DH2100 |  | Mechanical |  | TFO CONST | TFO | NICK |  |  |  |  |  |  |  |  |
| QTS - 3640 |  | TFO Scope // DH 2100 - 2101 Mechanical Gallery / Final Connection Tie-In to CDU Lineup - C - D | 1d | 2026-07-14 A | 2026-07-14 A | QTS - 3650, QTS - 1360 | 100% | 2026-07-15 | 2026-07-15 | QTS-PHX3 DC1 - 6 day w/ Holidays | Mechanical | DH2100 |  | Mechanical |  | TFO CONST | TFO | NICK |  |  |  |  |  |  |  |  |
|  | 1 | **Gallery 2102 Electrical** |  | 2025-08-19 | 2026-08-25 |  |  |  |  |  |  |  |  |  |  |  |  |  |  |  |  |  |  |  |  |  |
|  | 2 | **Fragnet Delays - Gallery 2102 Electrical** |  | 2026-06-22 | 2026-06-25 |  |  |  |  |  |  |  |  |  |  |  |  |  |  |  |  |  |  |  |  |  |
| QTS-1014020 |  | DH 2100 / Fragnet - Bleed through Voltage on all Systems from improper grounding of Details & Equipment | 1d | 2026-06-22 A | 2026-06-25 A | QTS-27361 FF | 100% | 2026-02-26 | 2026-02-26 | QTS-PHX3 DC1 - 6 day w/ Holidays | Electrical | DH2100 | Fragnet |  | Rosendin Electric Inc. |  | BAB |  | Delay 07-26 |  | Y | 01ADMIN | corridor impacted by fire stop work | Construction | IGMP | Level 2 |

Notes:
- QTS - 26551: Scheduler Notes: Delay due to Gasket Replacement - Technical Loop
- QTS - 1100: allucent_notes_20251230_164549: David Wiltberger on 2025-12-30 16:29: bulletin 1 impact / allucent_notes: 2025-12-30 16:29 - User: David Wiltberger - Date Added: 2025-12-30 16:29 - Note: bulletin 1 impact
- QTS - 1340: Scheduler Notes: 4/28: No Access
- QTS-1014020: allucent_notes_20251230_164549: David Wiltberger on 2025-12-30 15:04: corridor impacted by fire stop work / David Wiltberger on 2025-12-30 15:07: Corridor impacted by fire stop work / Scheduler Notes: David Wiltberger on 2025-12-30 15:04: corridor impacted by fire stop work / David Wiltberger on 2025-12-30 15:07: Corridor impacted by fire stop / work / allucent_notes: 2025-12-30 15:04 - User: David Wiltberger - Date Added: 2025-12-30 15:04 - Note: corridor impacted by fire stop work / 2025-12-30 15:07 - User: David Wiltberger - Date Added: 2025-12-30 15:07 - Note: Corridor impacted by fire stop work

| ID | WBS | Activity | Duration | Start | Finish | Predecessors | Complete | Planned start | Planned finish | Total float | Free float | Calendar | Allucent CSI Group | Project Section | Layton Discipline | Baseline | Project Section-1 | Location | Level | Contract | Layton Super | Trade Partner | Notes | Phase-1-1 |
| --- | --- | --- | --- | --- | --- | --- | --- | --- | --- | --- | --- | --- | --- | --- | --- | --- | --- | --- | --- | --- | --- | --- | --- | --- |
|  | 3 | **Existing Scope - Gallery 2102 Electrical** |  | 2025-08-19 | 2026-08-25 |  |  |  |  |  |  |  |  |  |  |  |  |  |  |  |  |  |  |  |
| QTS-23671 |  | DH 2100 / Electrical Gallery 2102 // Install VESDA | 8d | 2025-08-19 A | 2025-09-30 A | QTS-23331 SS | 100% | 2025-08-19 | 2025-08-28 |  |  |  | 01ADMIN | Construction | Electrical | IGMP | Construction | DH2100 | Level 2 | BAB |  |  |  |  |
| QTS-45671 |  | DH 2100 / Electrical Gallery 2102 // Install OH Electrical, FA/ EPMS/BMS Conduit & Grounding | 10d | 2025-10-01 A | 2025-11-07 A | QTS-23671 | 100% | 2025-10-01 | 2025-10-14 |  |  |  | 01ADMIN | Construction | Electrical | IGMP | Construction | DH2100 | Level 2 | BAB |  |  |  |  |
| QTS-23591 |  | DH 2100 / Electrical Gallery 2102 // Install Electrical Tray | 5d | 2025-11-21 A | 2025-12-01 A | QTS-120000, QTS-45671 | 100% |  |  |  |  |  | 01ADMIN | Construction | Electrical | IGMP | Construction | DH2100 | Level 2 | BAB |  |  |  |  |
| QTS-23821 |  | DH 2100 / Electrical Gallery 2102 // Install Basket Tray for LV | 5d | 2025-12-10 A | 2026-03-04 A | QTS-23591 | 100% | 2025-12-10 | 2025-12-15 |  |  | QTS-PHX3 DC1 - 6 day w/ Holidays | 01ADMIN | Construction | Electrical | IGMP | Construction | DH2100 | Level 2 | BAB |  |  |  |  |
| QTS-39742 |  | DH 2100 / Electrical Gallery 2102 // Install Conduit from UPS Pod to Chillers Lineup A-D | 6d | 2026-01-10 A | 2026-01-31 A | QTS-120000 | 100% | 2025-12-29 | 2026-01-05 |  |  | QTS-PHX3 DC1 - 6 day w/ Holidays | 01ADMIN | Construction | Electrical | IGMP | Construction | DH2100 | Level 2 | BAB |  |  |  |  |
| QTS-25671 |  | DH 2100 / Electrical Gallery 2102 // Install Conduit from UPS Pod to Chillers Line Up E-R | 6d | 2026-02-02 A | 2026-02-04 A | QTS-120000, QTS-21601, QTS-23671, QTS-20761, QTS-25541, QTS-39742, QTS-43591 | 100% | 2026-02-02 | 2026-02-07 |  |  | QTS-PHX3 DC1 - 6 day w/ Holidays | 01ADMIN | Construction | Electrical | IGMP |  | DH2100 | Level 2 | BAB |  |  |  |  |
| QTS-39762 |  | DH 2100 / Electrical Gallery 2102 // Install Conduit from UPS Pod to Pumps Line Up A-D | 6d | 2026-02-02 A | 2026-02-04 A | QTS-120000, QTS-39742 SS+2d | 100% | 2026-02-02 | 2026-02-07 |  |  | QTS-PHX3 DC1 - 6 day w/ Holidays | 01ADMIN | Construction | Electrical | IGMP | Construction | DH2100 | Level 2 | BAB |  |  |  |  |
| QTS-26201 |  | DH 2100 / Electrical Gallery 2102 // Install Conduit from UPS Pod to Pumps Line Up E-R | 6d | 2026-02-03 A | 2026-02-04 A | QTS-120000, QTS-25671 SS+2d | 100% | 2026-02-11 | 2026-02-18 |  |  |  | 01ADMIN | Construction | Electrical | IGMP |  | DH2100 | Level 2 | BAB |  |  |  |  |
| QTS-39752 |  | DH 2100 / Electrical Gallery 2102 // Pull & Terminate from UPS Pod to Chillers VFD Lineup A-D | 1d | 2026-02-17 A | 2026-02-17 A | QTS-39742, QTS-26201, QTS-43731 | 100% |  |  |  |  |  | 01ADMIN | Construction | Electrical | IGMP | Construction | DH2100 | Level 2 | BAB |  |  |  |  |
| QTS-39772 |  | DH 2100 / Electrical Gallery 2102 // Pull & Terminate from UPS Pod to Pumps VFD Line Up A-D | 1d | 2026-02-17 A | 2026-02-17 A | QTS-39762, QTS-39752 FF+1d | 100% |  |  |  |  | QTS-PHX3 DC1 - 6 day w/ Holidays |  | Construction | Electrical | IGMP | Construction | DH2100 | Level 2 | BAB |  |  |  |  |
| QTS-1004910 |  | DH 2100 / Electrical Gallery 2102 // Pull & Terminate from VFD to Chillers & Pumps Line Up A-D | 9d | 2026-02-18 A | 2026-02-26 A | QTS-39762 | 100% | 2026-02-18 | 2026-02-27 |  |  | QTS-PHX3 DC1 - 6 day w/ Holidays | 01ADMIN | Construction | Electrical | IGMP |  | DH2100 | Level 2 | BAB |  |  |  |  |
| QTS-27361 |  | DH 2100 / Electrical Gallery 2102 // Pull & Terminate from UPS Pod to Pumps VFD Line Up E-R | 1d | 2026-02-21 A | 2026-02-26 A | QTS-23931, QTS-26201 | 100% | 2026-02-21 | 2026-02-21 |  |  | QTS-PHX3 DC1 - 6 day w/ Holidays | 01ADMIN | Construction | Electrical | IGMP |  | DH2100 | Level 2 | BAB |  |  |  |  |
| QTS-1004900 |  | DH 2100 / Electrical Gallery 2102 // Pull & Terminate from VFD to Chillers & Pumps Line Up E-R | 1d | 2026-02-26 A | 2026-02-26 A | QTS-27361 FF | 100% |  |  |  |  | QTS-PHX3 DC1 - 6 day w/ Holidays | 01ADMIN | Construction | Electrical | IGMP |  | DH2100 | Level 2 | BAB |  |  |  |  |
| QTS-26191 |  | DH 2100 / Electrical Gallery 2102 // Pull & Terminate from UPS Pod to Chillers VFD Line Up E-R | 1d | 2026-02-26 A | 2026-02-26 A | QTS-23931, QTS-25671, QTS-43731 | 100% | 2026-03-11 | 2026-03-11 |  |  | QTS-PHX3 DC1 - 6 day w/ Holidays | 01ADMIN | Construction | Electrical | IGMP |  | DH2100 | Level 2 | BAB |  |  |  |  |
| QTS-0790 |  | DH 2100 / Gallery 2102 / Final Paint | 2d | 2026-07-20 A | 2026-07-21 A | QTS-6020 SS | 100% | 2026-07-27 | 2026-07-28 |  |  | **GLOBAL - 6 Day Workweek w/ Basic Holidays |  |  | Build Out |  |  |  |  | BAB | Jason Hendley | PPC |  |  |
| QTS-0800 |  | DH 2100 / Gallery 2102 / Seal Concrete Floor | 2d | 2026-07-29 A | 2026-07-30 A | QTS-0790 | 100% | 2026-08-05 | 2026-08-06 |  |  | **GLOBAL - 6 Day Workweek w/ Basic Holidays |  |  | Build Out |  |  |  |  | BAB | Jason Hendley | Bldg Solutions | NEED UPDATE |  |
| QTS-5700 |  | DH 2100 / Gallery 2102 / Clean | 2d | 2026-08-11 A | 2026-08-11 A | QTS-0790 | 100% | 2026-08-12 | 2026-08-13 |  |  | **GLOBAL - 6 Day Workweek w/ Basic Holidays |  |  | Build Out |  |  |  |  | BAB | Ed Carter | AGDC |  |  |
| QTS-0810 |  | DH 2100 / Gallery 2102 / Install Rubber Base | 2d | 2026-08-24 | 2026-08-25 | QTS-0800, QTS-0940 SS |  |  |  | -74d | 0d | **GLOBAL - 6 Day Workweek w/ Basic Holidays |  |  | Build Out |  |  |  |  | BAB | Ben Ribble | Wholesale Flooring |  |  |
|  | 1 | **Electrical** |  | 2025-11-06 | 2026-04-27 |  |  |  |  |  |  |  |  |  |  |  |  |  |  |  |  |  |  |  |
|  | 8 | **DH 2100 IDF Cabinets** |  | 2026-01-26 | 2026-03-05 |  |  |  |  |  |  |  |  |  |  |  |  |  |  |  |  |  |  |  |
| QTS-43461 |  | DH 2100 / Electrical Gallery 2101/2102 // Install Fire Rated Plywood | 1d | 2026-01-26 A | 2026-01-27 A | QTS-23301, QTS-23191 | 100% | 2026-01-26 | 2026-01-26 |  |  | QTS-PHX3 DC1 - 6 day w/ Holidays | 01ADMIN | Construction | Build Out | GMP | Construction | DH2300 |  | BAB |  |  |  | Phase 3 |
| QTS-43471 |  | DH 2100 / Electrical Gallery 2101/2102 // Set IDF Cabinet | 1d | 2026-01-30 A | 2026-02-03 A | QTS-43461 | 100% | 2026-01-30 | 2026-01-30 |  |  | QTS-PHX3 DC1 - 6 day w/ Holidays | 01ADMIN | Construction | Electrical | GMP | Construction | DH2300 |  | BAB |  |  |  | Phase 3 |
| QTS-43481 |  | DH 2100 / Electrical Gallery 2101/2102 // Set IDF Conduit | 2d | 2026-03-05 A | 2026-03-05 A | QTS-43471 | 100% | 2026-03-04 | 2026-03-05 |  |  | QTS-PHX3 DC1 - 6 day w/ Holidays | 01ADMIN | Construction | Electrical | GMP | Construction | DH2300 |  | BAB |  |  |  | Phase 3 |

Notes:
- QTS-23671: allucent_notes: David Wiltberger on 2025-09-02 10:09: Moved to due clashes with ceiling grid / allucent_notes: 2025-09-02 10:09 - User: David Wiltberger - Date Added: 2025-09-02 10:09 - Note: Moved to due clashes with ceiling grid
- QTS-45671: allucent_notes_20251118_192630: David Wiltberger on 2025-09-02 10:09: Could not start installation due to no wall being built. Installation would impede wall build / David Wiltberger on 2025-09-24 04:09: Walls are not completed due to electrical rough / David Wiltberger on 2025-10-14 12:10: walls not complete / Scott Masterson on 2025-11-04 14:11: Installing the cable buss which it the higher activity. This will completed by eow so this task can be completed. / Jason Johnston on 2025-11-11T23:15:40.847Z: SWO / allucent_notes_20251111_182405: David Wiltberger on 2025-09-02 10:09: Could not start installation due to no wall being built. Installation would impede wall build / David Wiltberger on 2025-09-24 04:09: Walls are not completed due to electrical rough / David Wiltberger on 2025-10-14 12:10: walls not complete / Scott Masterson on 2025-11-04 14:11: Installing the cable buss which it the higher activity. This will completed by eow so this task can be completed. / Jason Johnston on 2025-11-11T23:15:40.847Z: SWO / allucent_notes_20251104_160200: David Wiltberger on 2025-09-02 10:09: Could not start installation due to no wall being built. Installation would impede wall build / David Wiltberger on 2025-09-24 04:09: Walls are not completed due to electrical rough / David Wiltberger on 2025-10-14 12:10: walls not complete / Scott Masterson on 2025-11-04 14:11: Installing the cable buss which it the higher activity. This will completed by eow so this task can be completed. / allucent_notes_20251028_163138: David Wiltberger on 2025-09-02 10:09: Could not start installation due to no wall being built. Installation would impede wall build / David Wiltberger on 2025-09-24 04:09: Walls are not completed due to electrical rough / David Wiltberger on 2025-10-14 12:10: walls not complete / allucent_notes_20251027_224008: David Wiltberger on 2025-09-02 10:09: Could not start installation due to no wall being built. Installation would impede wall build / David Wiltberger on 2025-09-24 04:09: Walls are not completed due to electrical rough / David Wiltberger on 2025-10-14 12:10: walls not complete / allucent_notes_20251021_145627: David Wiltberger on 2025-09-02 10:09: Could not start installation due to no wall being built. Installation would impede wall build / David Wiltberger on 2025-09-24 04:09: Walls are not completed due to electrical rough / David Wiltberger on 2025-10-14 12:10: walls not complete / allucent_notes_20251014_152335: David Wiltberger on 2025-09-02 10:09: Could not start installation due to no wall being built. Installation would impede wall build / David Wiltberger on 2025-09-24 04:09: Walls are not completed due to electrical rough / David Wiltberger on 2025-10-14 12:10: walls not complete / allucent_notes: David Wiltberger on 2025-09-02 10:09: Could not start installation due to no wall being built. Installation would impede wall build / allucent_notes: 2025-09-02 10:09 - User: David Wiltberger - Date Added: 2025-09-02 10:09 - Note: Could not start installation due to no wall being built. Installation would impede wall build / 2025-09-24 04:09 - User: David Wiltberger - Date Added: 2025-09-24 04:09 - No
- QTS-23591: allucent_notes_20251202_153722: Jason Johnston on 2025-11-11 16:11: SWO / allucent_notes_20251118_192630: Jason Johnston on 2025-11-11 16:11: SWO / allucent_notes_20251111_182405: Jason Johnston on 2025-11-11 16:11: SWO / allucent_notes: 2025-11-11 16:11 - User: Jason Johnston - Date Added: 2025-11-11 16:11 - Note: SWO
- QTS-23821: allucent_notes_20251216_165335: Sean Waisner on 2025-12-02 15:36: Awaiting for ceiling strong backing / Jason Johnston on 2025-12-09 18:21: Need update from team / Jason Johnston on 2025-12-16 08:45: late completion / allucent_notes_20251209_203830: Sean Waisner on 2025-12-02 15:36: Awaiting for ceiling strong backing / Jason Johnston on 2025-12-09 18:21: Need update from team / allucent_notes_20251202_153722: Sean Waisner on 2025-12-02 15:36: Awaiting for ceiling strong backing / allucent_notes_20251230_164549: Sean Waisner on 2025-12-02 15:36: Awaiting for ceiling strong backing / Jason Johnston on 2025-12-09 18:21: Need update from team / Jason Johnston on 2025-12-16 08:45: late completion / Jason Johnston on 2025-12-30 16:41: No update / allucent_notes: 2025-12-02 15:36 - User: Sean Waisner - Date Added: 2025-12-02 15:36 - Note: Awaiting for ceiling strong backing / 2025-12-09 18:21 - User: Jason Johnston - Date Added: 2025-12-09 18:21 - Note: Need update from team / 2025-12-16 08:45 - User: Jason Joh
- QTS-39742: allucent_notes_20251230_164549: David Wiltberger on 2025-12-30 15:05: Corridor impacted by fire stop work / David Wiltberger on 2025-12-30 15:07: Corridor impacted by fire stop work / allucent_notes: 2025-12-30 15:05 - User: David Wiltberger - Date Added: 2025-12-30 15:05 - Note: Corridor impacted by fire stop work / 2025-12-30 15:07 - User: David Wiltberger - Date Added: 2025-12-30 15:07 - Note: Corridor impacted by fire stop work
- QTS-25671: allucent_notes_20251216_165335: Jason Johnston on 2025-11-19T02:23:38.897Z: undo / David Wiltberger on 2025-12-02 13:54: Impacted by stop work / allucent_notes_20251209_203830: Jason Johnston on 2025-11-19T02:23:38.897Z: undo / David Wiltberger on 2025-12-02 13:54: Impacted by stop work / allucent_notes_20251202_153722: Jason Johnston on 2025-11-19T02:23:38.897Z: undo / David Wiltberger on 2025-12-02 13:54: Impacted by stop work / allucent_notes_20251118_192630: Jason Johnston on 2025-11-19T02:23:38.897Z: undo / allucent_notes_20251230_164549: Jason Johnston on 2025-11-19T02:23:38.897Z: undo / David Wiltberger on 2025-12-02 13:54: Impacted by stop work / David Wiltberger on 2025-12-30 15:03: Corridor impacted by fire stop work / allucent_notes: 2025-11-19T02:23:38.897Z - User: Jason Johnston - Date Added: 2025-11-19T02:23:38.897Z - Note: undo / 2025-12-02 13:54 - User: David Wiltberger - Date Added: 2025-12-02 13:54 - Note: Impacted by stop work / 2025-12-30 15:03 - User: David Wiltberger - D
- QTS-39762: allucent_notes_20251230_164549: David Wiltberger on 2025-12-30 15:08: Corridor impacted by fire stop work / allucent_notes: 2025-12-30 15:08 - User: David Wiltberger - Date Added: 2025-12-30 15:08 - Note: Corridor impacted by fire stop work
- QTS-26201: allucent_notes_20251230_164549: David Wiltberger on 2025-12-30 15:06: Corridor impacted by fire stop work / allucent_notes: 2025-12-30 15:06 - User: David Wiltberger - Date Added: 2025-12-30 15:06 - Note: Corridor impacted by fire stop work
- QTS-39752: allucent_notes_20251230_164549: David Wiltberger on 2025-12-30 15:05: Corridor impacted by fire stop work / David Wiltberger on 2025-12-30 15:06: Corridor impacted by fire stop work / allucent_notes: 2025-12-30 15:05 - User: David Wiltberger - Date Added: 2025-12-30 15:05 - Note: Corridor impacted by fire stop work / 2025-12-30 15:06 - User: David Wiltberger - Date Added: 2025-12-30 15:06 - Note: Corridor impacted by fire stop work
- QTS-1004910: allucent_notes_20251230_164549: David Wiltberger on 2025-12-30 15:04: corridor impacted by fire stop work / David Wiltberger on 2025-12-30 15:07: Corridor impacted by fire stop work / allucent_notes: 2025-12-30 15:04 - User: David Wiltberger - Date Added: 2025-12-30 15:04 - Note: corridor impacted by fire stop work / 2025-12-30 15:07 - User: David Wiltberger - Date Added: 2025-12-30 15:07 - Note: Corridor impacted by fire stop work
- QTS-1004900: allucent_notes_20251230_164549: David Wiltberger on 2025-12-30 15:04: corridor impacted by fire stop work / David Wiltberger on 2025-12-30 15:07: Corridor impacted by fire stop work / allucent_notes: 2025-12-30 15:04 - User: David Wiltberger - Date Added: 2025-12-30 15:04 - Note: corridor impacted by fire stop work / 2025-12-30 15:07 - User: David Wiltberger - Date Added: 2025-12-30 15:07 - Note: Corridor impacted by fire stop work
- QTS-26191: allucent_notes_20251230_164549: David Wiltberger on 2025-12-30 15:04: corridor impacted by fire stop work / David Wiltberger on 2025-12-30 15:07: Corridor impacted by fire stop work / allucent_notes: 2025-12-30 15:04 - User: David Wiltberger - Date Added: 2025-12-30 15:04 - Note: corridor impacted by fire stop work / 2025-12-30 15:07 - User: David Wiltberger - Date Added: 2025-12-30 15:07 - Note: Corridor impacted by fire stop work
- QTS-43461: allucent_notes_20251216_165335: Jason Johnston on 2025-12-16 08:48: Need to review line item and identify what is means / allucent_notes_20251230_164549: Jason Johnston on 2025-12-16 08:48: Need to review line item and identify what is means / Jason Johnston on 2025-12-30 16:41: No update / allucent_notes: 2025-12-16 08:48 - User: Jason Johnston - Date Added: 2025-12-16 08:48 - Note: Need to review line item and identify what is means / 2025-12-30 16:41 - User: Jason Johnston - Date Added: 2025-12-30 16:41 - Note: No update
- QTS-43471: allucent_notes_20251230_164549: David Wiltberger on 2025-12-30 15:09: delayed for TFO / allucent_notes: 2025-12-30 15:09 - User: David Wiltberger - Date Added: 2025-12-30 15:09 - Note: delayed for TFO

| ID | WBS | Activity | Duration | Start | Finish | Predecessors | Complete | Planned start | Planned finish | Calendar | Allucent CSI Group | Project Section | Layton Discipline | Baseline | Phase-1-1 | Project Section-1 | Location | Level | Contract |
| --- | --- | --- | --- | --- | --- | --- | --- | --- | --- | --- | --- | --- | --- | --- | --- | --- | --- | --- | --- |
|  | 1 | **A2100 Lineup** |  | 2025-11-06 | 2026-04-27 |  |  |  |  |  |  |  |  |  |  |  |  |  |  |
| QTS-23571 |  | Gallery 2102 / Lineup A2100 // Install Hangers & Supports | 3d | 2025-11-06 A | 2025-11-10 A | QTS-23051 | 100% |  |  |  | 01ADMIN | Construction | Electrical | IGMP | Phase 1 | Construction | DH2100 | Level 2 | BAB |
| QTS-24091 |  | Gallery 2102 / Lineup A2100 // OFCI - L2 SET IN PLACE - Eq Type # - COD/ATS-210-A - Skid 1-3 | 1d | 2025-12-01 A | 2025-12-01 A | QTS-32751 | 100% |  |  |  | 01ADMIN | Construction | Electrical | IGMP | Phase 1 | Construction | DH2100 | Level 2 | BAB |
| QTS-45691 |  | Gallery 2102 / Lineup A2100 // OFCI - L2 SET IN PLACE - Eq Type # - COD/ATS-210-A - Skid 4-6 | 1d | 2025-12-02 A | 2025-12-02 A | QTS-24091 | 100% |  |  |  | 01ADMIN | Construction | Electrical | IGMP | Phase 1 | Construction | DH2100 | Level 2 | BAB |
| QTS-23761 |  | Gallery 2102 / Lineup A2100 // Install Raceways from LV POD to COD | 7d | 2026-01-13 A | 2026-02-06 A | QTS-120000, QTS-23571 | 100% | 2025-12-22 | 2025-12-30 | QTS-PHX3 DC1 - 6 day w/ Holidays | 01ADMIN | Construction | Electrical | IGMP | Phase 1 | Construction | DH2100 | Level 2 | BAB |
| QTS-24301 |  | Gallery 2102 / Lineup A2100 // Set Reserve Busway Segment | 2d | 2026-01-23 A | 2026-01-24 A | QTS-49611, QTS-23761 SS, QTS-24091 | 100% |  |  | QTS-PHX3 DC1 - 6 day w/ Holidays | 01ADMIN | Construction | Electrical | IGMP | Phase 1 | Construction | DH2100 | Level 2 | BAB |
| QTS-25231 |  | Gallery 2102 / Lineup A2100 // Terminate & Torque COD | 1d | 2026-02-21 A | 2026-02-21 A | QTS-23761 | 100% |  |  | QTS-PHX3 DC1 - 6 day w/ Holidays |  | Construction | Electrical | IGMP | Phase 1 | Construction | DH2100 | Level 2 | BAB |
| QTS-24571 |  | Gallery 2102 / Lineup A2100 // Pull LV Cables from POD to ATS | 1d | 2026-02-26 A | 2026-02-26 A | QTS-45691 FF+1d, QTS-23931, QTS-23761, QTS-24091 | 100% |  |  | QTS-PHX3 DC1 - 6 day w/ Holidays | 01ADMIN | Construction | Electrical | IGMP | Phase 1 | Construction | DH2100 | Level 2 | BAB |
| QTS-25111 |  | Gallery 2102 / Lineup A2100 // Pull LV Cables from Reserve Bus to ATS | 2d | 2026-02-26 A | 2026-02-27 A | QTS-24301, QTS-23761 | 100% |  |  | QTS-PHX3 DC1 - 6 day w/ Holidays | 01ADMIN | Construction | Electrical | IGMP | Phase 1 | Construction | DH2100 | Level 2 | BAB |
| QTS-43941 |  | Gallery 2102 / Lineup A2100 // Terminate & Torque ATS | 1d | 2026-03-05 A | 2026-03-20 A | QTS-24571, QTS-25111 | 100% | 2026-03-05 | 2026-03-05 | QTS-PHX3 DC1 - 6 day w/ Holidays | 01ADMIN | Construction | Electrical | IGMP | Phase 1 | Construction | DH2100 | Level 2 | BAB |
|  | 1 | **A2100 Controls** |  | 2026-02-27 | 2026-04-27 |  |  |  |  |  |  |  |  |  |  |  |  |  |  |
| QTS-1006070 |  | DH 2100 / Chiller A21 // Terminate Controls | 4d | 2026-02-27 A | 2026-03-10 A | QTS-1371 SS | 100% | 2026-02-27 | 2026-03-03 | QTS-PHX3 DC1 - 6 day w/ Holidays | 01ADMIN | Construction | Electrical | GMP | Phase 1 | Construction | DH1100 |  | BAB |
| QTS-1006080 |  | DH 2100 / MOD-02-A21 // Wire Pull - Controls | 4d | 2026-02-28 A | 2026-04-27 A | QTS-1371 SS, QTS-23821 SS | 100% | 2026-02-27 | 2026-03-03 | QTS-PHX3 DC1 - 6 day w/ Holidays | 01ADMIN | Construction | Electrical | GMP | Phase 1 | Construction | DH2100 |  | BAB |
| QTS-1006090 |  | DH 2100 / COD-A21 // Wire Pull - Controls | 4d | 2026-02-28 A | 2026-03-27 A | QTS-1371 SS | 100% | 2026-02-27 | 2026-03-03 | QTS-PHX3 DC1 - 6 day w/ Holidays | 01ADMIN | Construction | Electrical | GMP | Phase 1 | Construction | DH1100 |  | BAB |
| QTS-1006100 |  | DH 2100 / POD-A21 // Wire Pull - Controls | 4d | 2026-02-28 A | 2026-03-27 A | QTS-1371 SS | 100% | 2026-02-27 | 2026-03-03 | QTS-PHX3 DC1 - 6 day w/ Holidays | 01ADMIN | Construction | Electrical | GMP | Phase 1 | Construction | DH1100 |  | BAB |
| QTS-1006110 |  | DH 2100 / GEN-A21 // Wire Pull - Controls | 4d | 2026-02-28 A | 2026-03-05 A | QTS-1371 SS | 100% | 2026-02-27 | 2026-03-03 | QTS-PHX3 DC1 - 6 day w/ Holidays | 01ADMIN | Construction | Electrical | GMP | Phase 1 | Construction | DH1100 |  | BAB |
| QTS-1006970 |  | DH 2100 / ATS-A21 // Wire Pull - Controls | 4d | 2026-02-28 A | 2026-03-30 A | QTS-1371 SS | 100% | 2026-02-27 | 2026-03-03 | QTS-PHX3 DC1 - 6 day w/ Holidays | 01ADMIN | Construction | Electrical | GMP | Phase 1 | Construction | DH1100 |  | BAB |
| QTS-1006150 |  | DH 2100 / GEN-A21 // Terminate Controls | 1d | 2026-03-02 A | 2026-03-05 A | QTS-1006110 FF | 100% | 2026-03-02 | 2026-03-02 | QTS-PHX3 DC1 - 6 day w/ Holidays | 01ADMIN | Construction | Electrical | GMP | Phase 1 | Construction | DH1100 |  | BAB |
| QTS-1006130 |  | DH 2100 / COD-A21 // Terminate Controls | 1d | 2026-03-28 A | 2026-03-28 A | QTS-1006090 | 100% |  |  | QTS-PHX3 DC1 - 6 day w/ Holidays | 01ADMIN | Construction | Electrical | GMP | Phase 1 | Construction | DH1100 |  | BAB |
| QTS-1006140 |  | DH 2100 / POD-A21 // Terminate Controls | 1d | 2026-03-28 A | 2026-03-28 A | QTS-1006100 | 100% |  |  | QTS-PHX3 DC1 - 6 day w/ Holidays | 01ADMIN | Construction | Electrical | GMP | Phase 1 | Construction | DH1100 |  | BAB |
| QTS-1006980 |  | DH 2100 / ATS-A21 // Terminate Controls | 1d | 2026-04-01 A | 2026-04-01 A | QTS-1006970 | 100% |  |  | QTS-PHX3 DC1 - 6 day w/ Holidays | 01ADMIN | Construction | Electrical | GMP | Phase 1 | Construction | DH1100 |  | BAB |
| QTS-1006120 |  | DH 2100 / MOD-02-A21 // Terminate Controls | 1d | 2026-04-10 A | 2026-04-10 A | QTS-1006080 FF+2d | 100% |  |  | QTS-PHX3 DC1 - 6 day w/ Holidays | 01ADMIN | Construction | Electrical | GMP | Phase 1 | Construction | DH2100 |  | BAB |
|  | 2 | **B2100 Lineup** |  | 2025-11-06 | 2026-04-27 |  |  |  |  |  |  |  |  |  |  |  |  |  |  |
| QTS-1581 |  | Gallery 2102 / Lineup B2100 // Install Hangers & Supports | 3d | 2025-11-06 A | 2025-11-10 A | QTS-23571 SS | 100% |  |  |  | 01ADMIN | Construction | Electrical | IGMP | Phase 1 | Construction | DH2100 | Level 2 | BAB |
| QTS-3831 |  | Gallery 2102 / Lineup B2100 // OFCI - L2 SET IN PLACE - Eq Type # - COD/ATS-210-A - Skid 1-3 | 1d | 2025-12-10 A | 2025-12-10 A | QTS-45691, QTS-36221 | 100% |  |  |  | 01ADMIN | Construction | Electrical | IGMP | Phase 1 | Construction | DH2100 | Level 2 | BAB |
| QTS-45731 |  | Gallery 2102 / Lineup B2100 // OFCI - L2 SET IN PLACE - Eq Type # - COD/ATS-210-A - Skid 4-6 | 1d | 2025-12-11 A | 2025-12-11 A | QTS-3831 | 100% |  |  |  | 01ADMIN | Construction | Electrical | IGMP | Phase 1 | Construction | DH2100 | Level 2 | BAB |
| QTS-2701 |  | Gallery 2102 / Lineup B2100 // Install Raceways from LV POD to COD | 7d | 2026-01-28 A | 2026-02-25 A | QTS-23761 SS, QTS-1581 | 100% | 2026-01-28 | 2026-02-04 | QTS-PHX3 DC1 - 6 day w/ Holidays | 01ADMIN | Construction | Electrical | IGMP | Phase 1 | Construction | DH2100 | Level 2 | BAB |
| QTS-4851 |  | Gallery 2102 / Lineup B2100 // Set Reserve Busway Segment | 2d | 2026-01-28 A | 2026-01-30 A | QTS-49611, QTS-2701 SS, QTS-3831 | 100% | 2026-02-19 | 2026-02-20 | QTS-PHX3 DC1 - 6 day w/ Holidays | 01ADMIN | Construction | Electrical | IGMP | Phase 1 | Construction | DH2100 | Level 2 | BAB |
| QTS-8751 |  | Gallery 2102 / Lineup B2100 // Terminate & Torque COD | 1d | 2026-02-23 A | 2026-02-23 A | QTS-45731 | 100% |  |  | QTS-PHX3 DC1 - 6 day w/ Holidays |  | Construction | Electrical | IGMP | Phase 1 | Construction | DH2100 | Level 2 | BAB |
| QTS-7921 |  | Gallery 2102 / Lineup B2100 // Pull LV Cables from POD to ATS | 1d | 2026-02-26 A | 2026-02-26 A | QTS-45731 FF+1d, QTS-23931, QTS-3831, QTS-2701 | 100% |  |  | QTS-PHX3 DC1 - 6 day w/ Holidays | 01ADMIN | Construction | Electrical | IGMP | Phase 1 | Construction | DH2100 | Level 2 | BAB |
| QTS-8761 |  | Gallery 2102 / Lineup B2100 // Terminate & Torque ATS | 1d | 2026-03-17 A | 2026-03-21 A | QTS-7931, QTS-7921 | 100% | 2026-03-17 | 2026-03-17 | QTS-PHX3 DC1 - 6 day w/ Holidays | 01ADMIN | Construction | Electrical | IGMP | Phase 1 | Construction | DH2100 | Level 2 | BAB |
| QTS-7931 |  | Gallery 2102 / Lineup B2100 // Pull LV Cables from Reserve Bus to ATS | 2d | 2026-03-18 A | 2026-03-19 A | QTS-4851, QTS-2701 | 100% |  |  | QTS-PHX3 DC1 - 6 day w/ Holidays | 01ADMIN | Construction | Electrical | IGMP | Phase 1 | Construction | DH2100 | Level 2 | BAB |

Notes:
- QTS-23571: allucent_notes_20251118_192630: Scott Masterson on 2025-11-04 14:11: The wall is not painted yet to start installing hangers. Wall is supposed to be painted by tomorrow. / allucent_notes_20251111_182405: Scott Masterson on 2025-11-04 14:11: The wall is not painted yet to start installing hangers. Wall is supposed to be painted by tomorrow. / allucent_notes_20251104_160200: Scott Masterson on 2025-11-04 14:11: The wall is not painted yet to start installing hangers. Wall is supposed to be painted by tomorrow. / allucent_notes: 2025-11-04 14:11 - User: Scott Masterson - Date Added: 2025-11-04 14:11 - Note: The wall is not painted yet to start installing hangers. Wall is supposed to be painted by tomorrow.
- QTS-24091: allucent_notes_20251202_153722: Jason Johnston on 2025-11-19T02:23:42.768Z: undo / allucent_notes_20251118_192630: Jason Johnston on 2025-11-19T02:23:42.768Z: undo / allucent_notes: 2025-11-19T02:23:42.768Z - User: Jason Johnston - Date Added: 2025-11-19T02:23:42.768Z - Note: undo
- QTS-45691: allucent_notes_20251202_153722: Jason Johnston on 2025-11-19T02:23:46.667Z: undo / allucent_notes_20251118_192630: Jason Johnston on 2025-11-19T02:23:46.667Z: undo / allucent_notes: 2025-11-19T02:23:46.667Z - User: Jason Johnston - Date Added: 2025-11-19T02:23:46.667Z - Note: undo
- QTS-23761: allucent_notes_20251216_165335: Jason Johnston on 2025-11-11 16:11: SWO / David Wiltberger on 2025-12-02 13:55: impacted by Stop work / Jason Johnston on 2025-12-16 08:49: Not started yet / allucent_notes_20251209_203830: Jason Johnston on 2025-11-11 16:11: SWO / David Wiltberger on 2025-12-02 13:55: impacted by Stop work / allucent_notes_20251202_153722: Jason Johnston on 2025-11-11 16:11: SWO / David Wiltberger on 2025-12-02 13:55: impacted by Stop work / allucent_notes_20251118_192630: Jason Johnston on 2025-11-11 16:11: SWO / allucent_notes_20251111_182405: Jason Johnston on 2025-11-11 16:11: SWO / allucent_notes_20251230_164549: Jason Johnston on 2025-11-11 16:11: SWO / David Wiltberger on 2025-12-02 13:55: impacted by Stop work / Jason Johnston on 2025-12-16 08:49: Not started yet / allucent_notes: 2025-11-11 16:11 - User: Jason Johnston - Date Added: 2025-11-11 16:11 - Note: SWO / 2025-12-02 13:55 - User: David Wiltberger - Date Added: 2025-12-02 13:55 - Note: impacted by Stop work / 2025-12-16 08:49 - User: Jason Johnston - Date Added: 2025-12-1
- QTS-3831: allucent_notes_20251216_165335: Jason Johnston on 2025-12-09 20:30: Need update from team / allucent_notes_20251209_203830: Jason Johnston on 2025-12-09 20:30: Need update from team / allucent_notes: 2025-12-09 20:30 - User: Jason Johnston - Date Added: 2025-12-09 20:30 - Note: Need update from team
- QTS-2701: allucent_notes_20251230_164549: David Wiltberger on 2025-12-30 15:37: corridor impacted by fire stop work / allucent_notes: 2025-12-30 15:37 - User: David Wiltberger - Date Added: 2025-12-30 15:37 - Note: corridor impacted by fire stop work

| ID | WBS | Activity | Duration | Start | Finish | Predecessors | Complete | Planned start | Planned finish | Calendar | Allucent CSI Group | Project Section | Layton Discipline | Baseline | Phase-1-1 | Project Section-1 | Location | Contract | Notes | Level |
| --- | --- | --- | --- | --- | --- | --- | --- | --- | --- | --- | --- | --- | --- | --- | --- | --- | --- | --- | --- | --- |
|  | 1 | **B2100 Controls** |  | 2026-02-27 | 2026-04-27 |  |  |  |  |  |  |  |  |  |  |  |  |  |  |  |
| QTS-1006160 |  | DH 2100 / Chiller B21 // Terminate Controls | 4d | 2026-02-27 A | 2026-03-10 A | QTS-1371 SS | 100% | 2026-02-27 | 2026-03-03 | QTS-PHX3 DC1 - 6 day w/ Holidays | 01ADMIN | Construction | Electrical | GMP | Phase 1 | Construction | DH1100 | BAB |  |  |
| QTS-1006170 |  | DH 2100 / MOD-02-B21 // Wire Pull - Controls | 4d | 2026-02-28 A | 2026-04-27 A | QTS-1371 SS | 100% | 2026-02-27 | 2026-03-03 | QTS-PHX3 DC1 - 6 day w/ Holidays | 01ADMIN | Construction | Electrical | GMP | Phase 1 | Construction | DH2100 | BAB |  |  |
| QTS-1006180 |  | DH 2100 / COD-B21 // Wire Pull - Controls | 4d | 2026-02-28 A | 2026-03-30 A | QTS-1371 SS | 100% | 2026-02-27 | 2026-03-03 | QTS-PHX3 DC1 - 6 day w/ Holidays | 01ADMIN | Construction | Electrical | GMP | Phase 1 | Construction | DH1100 | BAB | 3/24: Prime pulled. E2 still to pull. |  |
| QTS-1006190 |  | DH 2100 / POD-B21 // Wire Pull - Controls | 4d | 2026-02-28 A | 2026-03-27 A | QTS-1371 SS | 100% | 2026-02-27 | 2026-03-03 | QTS-PHX3 DC1 - 6 day w/ Holidays | 01ADMIN | Construction | Electrical | GMP | Phase 1 | Construction | DH1100 | BAB |  |  |
| QTS-1006200 |  | DH 2100 / GEN-B21 // Wire Pull - Controls | 4d | 2026-02-28 A | 2026-03-05 A | QTS-1371 SS | 100% | 2026-02-27 | 2026-03-03 | QTS-PHX3 DC1 - 6 day w/ Holidays | 01ADMIN | Construction | Electrical | GMP | Phase 1 | Construction | DH1100 | BAB |  |  |
| QTS-1006950 |  | DH 2100 / ATS-B21 // Wire Pull - Controls | 4d | 2026-02-28 A | 2026-03-30 A | QTS-1371 SS | 100% | 2026-02-27 | 2026-03-03 | QTS-PHX3 DC1 - 6 day w/ Holidays | 01ADMIN | Construction | Electrical | GMP | Phase 1 | Construction | DH1100 | BAB |  |  |
| QTS-1006240 |  | DH 2100 / GEN-B21 // Terminate Controls | 2d | 2026-03-02 A | 2026-03-05 A | QTS-1006200 FF | 100% | 2026-03-02 | 2026-03-03 | QTS-PHX3 DC1 - 6 day w/ Holidays | 01ADMIN | Construction | Electrical | GMP | Phase 1 | Construction | DH1100 | BAB |  |  |
| QTS-1006230 |  | DH 2100 / POD-B21 // Terminate Controls | 1d | 2026-03-28 A | 2026-03-28 A | QTS-1006190 | 100% | 2026-04-21 | 2026-04-21 | QTS-PHX3 DC1 - 6 day w/ Holidays | 01ADMIN | Construction | Electrical | GMP | Phase 1 | Construction | DH1100 | BAB |  |  |
| QTS-1006220 |  | DH 2100 / COD-B21 // Terminate Controls | 1d | 2026-04-01 A | 2026-04-01 A | QTS-1006180 | 100% | 2026-04-14 | 2026-04-14 | QTS-PHX3 DC1 - 6 day w/ Holidays | 01ADMIN | Construction | Electrical | GMP | Phase 1 | Construction | DH1100 | BAB |  |  |
| QTS-1006960 |  | DH 2100 / ATS-B21 // Terminate Controls | 1d | 2026-04-01 A | 2026-04-01 A | QTS-1006950 | 100% | 2026-04-14 | 2026-04-14 | QTS-PHX3 DC1 - 6 day w/ Holidays | 01ADMIN | Construction | Electrical | GMP | Phase 1 | Construction | DH1100 | BAB |  |  |
| QTS-1006210 |  | DH 2100 / MOD-02-B21 // Terminate Controls | 1d | 2026-04-10 A | 2026-04-10 A | QTS-1006170 | 100% |  |  | QTS-PHX3 DC1 - 6 day w/ Holidays | 01ADMIN | Construction | Electrical | GMP | Phase 1 | Construction | DH2100 | BAB |  |  |
|  | 3 | **C2100 Lineup** |  | 2025-11-11 | 2026-04-27 |  |  |  |  |  |  |  |  |  |  |  |  |  |  |  |
| QTS-1591 |  | Gallery 2102 / Lineup C2100 // Install Hangers & Supports | 3d | 2025-11-11 A | 2025-11-13 A | QTS-1581 | 100% |  |  |  | 01ADMIN | Construction | Electrical | IGMP | Phase 1 | Construction | DH2100 | BAB |  | Level 2 |
| QTS-3841 |  | Gallery 2102 / Lineup C2100 // OFCI - L2 SET IN PLACE - Eq Type # - COD/ATS-210-A - Skid 1-3 | 1d | 2025-12-12 A | 2025-12-12 A | QTS-45731, QTS-36291 | 100% |  |  |  | 01ADMIN | Construction | Electrical | IGMP | Phase 1 | Construction | DH2100 | BAB |  | Level 2 |
| QTS-45741 |  | Gallery 2102 / Lineup C2100 // OFCI - L2 SET IN PLACE - Eq Type # - COD/ATS-210-A - Skid 4-6 | 1d | 2025-12-15 A | 2025-12-15 A | QTS-3841 | 100% |  |  |  | 01ADMIN | Construction | Electrical | IGMP | Phase 1 | Construction | DH2100 | BAB |  | Level 2 |
| QTS-2711 |  | Gallery 2102 / Lineup C2100 // Install Raceways from LV POD to COD | 7d | 2026-01-28 A | 2026-02-06 A | QTS-2701 SS, QTS-1591 | 100% | 2026-01-28 | 2026-02-04 | QTS-PHX3 DC1 - 6 day w/ Holidays | 01ADMIN | Construction | Electrical | IGMP | Phase 1 | Construction | DH2100 | BAB |  | Level 2 |
| QTS-4871 |  | Gallery 2102 / Lineup C2100 // Set Reserve Busway Segment | 2d | 2026-01-28 A | 2026-01-30 A | QTS-49611, QTS-2711, QTS-3841 | 100% | 2026-02-19 | 2026-02-20 | QTS-PHX3 DC1 - 6 day w/ Holidays | 01ADMIN | Construction | Electrical | IGMP | Phase 1 | Construction | DH2100 | BAB |  | Level 2 |
| QTS-8781 |  | Gallery 2102 / Lineup C2100 // Terminate & Torque COD | 1d | 2026-02-21 A | 2026-02-21 A | QTS-45741 | 100% |  |  | QTS-PHX3 DC1 - 6 day w/ Holidays |  | Construction | Electrical | IGMP | Phase 1 | Construction | DH2100 | BAB |  | Level 2 |
| QTS-6351 |  | Gallery 2102 / Lineup C2100 // Pull LV Cables from POD to ATS | 1d | 2026-02-25 A | 2026-02-25 A | QTS-45741 FF+1d, QTS-23931, QTS-2711, QTS-3841 | 100% |  |  | QTS-PHX3 DC1 - 6 day w/ Holidays | 01ADMIN | Construction | Electrical | IGMP | Phase 1 | Construction | DH2100 | BAB |  | Level 2 |
| QTS-7951 |  | Gallery 2102 / Lineup C2100 // Pull LV Cables from Reserve Bus to ATS | 2d | 2026-03-02 A | 2026-03-20 A | QTS-4871, QTS-6351, QTS-2711 | 100% | 2026-03-02 | 2026-03-03 | QTS-PHX3 DC1 - 6 day w/ Holidays |  | Construction | Electrical | IGMP | Phase 1 | Construction | DH2100 | BAB |  | Level 2 |
| QTS-8791 |  | Gallery 2102 / Lineup C2100 // Terminate & Torque ATS | 1d | 2026-03-19 A | 2026-04-01 A | QTS-7951, QTS-6351 | 100% | 2026-03-19 | 2026-03-19 | QTS-PHX3 DC1 - 6 day w/ Holidays |  | Construction | Electrical | IGMP | Phase 1 | Construction | DH2100 | BAB | 3/24: 95% complete. | Level 2 |
|  | 1 | **C2100 Controls** |  | 2026-02-27 | 2026-04-27 |  |  |  |  |  |  |  |  |  |  |  |  |  |  |  |
| QTS-1006250 |  | DH 2100 / Chiller C21 // Terminate Controls | 4d | 2026-02-27 A | 2026-03-10 A | QTS-1371 SS | 100% | 2026-02-27 | 2026-03-03 | QTS-PHX3 DC1 - 6 day w/ Holidays | 01ADMIN | Construction | Electrical | GMP | Phase 1 | Construction | DH1100 | BAB |  |  |
| QTS-1006260 |  | DH 2100 / MOD-02-C21 // Wire Pull - Controls | 4d | 2026-02-28 A | 2026-04-27 A | QTS-1371 SS | 100% | 2026-02-27 | 2026-03-03 | QTS-PHX3 DC1 - 6 day w/ Holidays | 01ADMIN | Construction | Electrical | GMP | Phase 1 | Construction | DH2100 | BAB |  |  |
| QTS-1006270 |  | DH 2100 / COD-C21 // Wire Pull - Controls | 4d | 2026-02-28 A | 2026-03-30 A | QTS-1371 SS | 100% | 2026-02-27 | 2026-03-03 | QTS-PHX3 DC1 - 6 day w/ Holidays | 01ADMIN | Construction | Electrical | GMP | Phase 1 | Construction | DH1100 | BAB | 3/24: Prime pulled. E2 still to pull. |  |
| QTS-1006280 |  | DH 2100 / POD-C21 // Wire Pull - Controls | 4d | 2026-02-28 A | 2026-03-27 A | QTS-1371 SS | 100% | 2026-02-27 | 2026-03-03 | QTS-PHX3 DC1 - 6 day w/ Holidays | 01ADMIN | Construction | Electrical | GMP | Phase 1 | Construction | DH1100 | BAB |  |  |
| QTS-1006930 |  | DH 2100 / ATS-C21 // Wire Pull - Controls | 4d | 2026-02-28 A | 2026-03-30 A | QTS-1371 SS | 100% | 2026-02-27 | 2026-03-03 | QTS-PHX3 DC1 - 6 day w/ Holidays | 01ADMIN | Construction | Electrical | GMP | Phase 1 | Construction | DH1100 | BAB |  |  |
| QTS-1006290 |  | DH 2100 / GEN-C21 // Wire Pull - Controls | 4d | 2026-03-02 A | 2026-03-05 A | QTS-1371 SS | 100% | 2026-02-27 | 2026-03-03 | QTS-PHX3 DC1 - 6 day w/ Holidays | 01ADMIN | Construction | Electrical | GMP | Phase 1 | Construction | DH1100 | BAB |  |  |
| QTS-1006330 |  | DH 2100 / GEN-C21 // Terminate Controls | 2d | 2026-03-02 A | 2026-03-05 A | QTS-1006290 | 100% | 2026-03-02 | 2026-03-03 | QTS-PHX3 DC1 - 6 day w/ Holidays | 01ADMIN | Construction | Electrical | GMP | Phase 1 | Construction | DH1100 | BAB |  |  |
| QTS-1006320 |  | DH 2100 / POD-C21 // Terminate Controls | 1d | 2026-03-28 A | 2026-03-28 A | QTS-1006280 | 100% | 2026-04-21 | 2026-04-21 | QTS-PHX3 DC1 - 6 day w/ Holidays | 01ADMIN | Construction | Electrical | GMP | Phase 1 | Construction | DH1100 | BAB |  |  |
| QTS-1006310 |  | DH 2100 / COD-C21 // Terminate Controls | 1d | 2026-04-01 A | 2026-04-01 A | QTS-1006270 | 100% |  |  | QTS-PHX3 DC1 - 6 day w/ Holidays | 01ADMIN | Construction | Electrical | GMP | Phase 1 | Construction | DH1100 | BAB |  |  |
| QTS-1006940 |  | DH 2100 / ATS-C21 // Terminate Controls | 1d | 2026-04-01 A | 2026-04-01 A | QTS-1006930 | 100% |  |  | QTS-PHX3 DC1 - 6 day w/ Holidays | 01ADMIN | Construction | Electrical | GMP | Phase 1 | Construction | DH1100 | BAB |  |  |
| QTS-1006300 |  | DH 2100 / MOD-02-C21 // Terminate Controls | 1d | 2026-04-10 A | 2026-04-10 A | QTS-1006260 | 100% |  |  | QTS-PHX3 DC1 - 6 day w/ Holidays | 01ADMIN | Construction | Electrical | GMP | Phase 1 | Construction | DH2100 | BAB |  |  |

Notes:
- QTS-1006180: Scheduler Notes: 3/24: Prime pulled. E2 still to pull.
- QTS-8791: Scheduler Notes: 3/24: 95% complete.
- QTS-1006270: Scheduler Notes: 3/24: Prime pulled. E2 still to pull.

| ID | WBS | Activity | Duration | Start | Finish | Predecessors | Complete | Planned start | Planned finish | Calendar | Allucent CSI Group | Project Section | Layton Discipline | Baseline | Phase-1-1 | Project Section-1 | Location | Level | Contract |
| --- | --- | --- | --- | --- | --- | --- | --- | --- | --- | --- | --- | --- | --- | --- | --- | --- | --- | --- | --- |
|  | 4 | **D2100 Lineup** |  | 2025-11-11 | 2026-04-27 |  |  |  |  |  |  |  |  |  |  |  |  |  |  |
| QTS-1601 |  | Gallery 2102 / Lineup D2100 // Install Hangers & Supports | 3d | 2025-11-11 A | 2025-11-13 A | QTS-1591 SS | 100% |  |  |  | 01ADMIN | Construction | Electrical | IGMP | Phase 1 | Construction | DH2100 | Level 2 | BAB |
| QTS-3851 |  | Gallery 2102 / Lineup D2100 // OFCI - L2 SET IN PLACE - Eq Type # - COD/ATS-210-A - Skid 1-3 | 1d | 2025-12-16 A | 2025-12-16 A | QTS-45741, QTS-36361 | 100% |  |  |  | 01ADMIN | Construction | Electrical | IGMP | Phase 1 | Construction | DH2100 | Level 2 | BAB |
| QTS-45751 |  | Gallery 2102 / Lineup D2100 // OFCI - L2 SET IN PLACE - Eq Type # - COD/ATS-210-A - Skid 4-6 | 1d | 2025-12-17 A | 2025-12-17 A | QTS-3851 | 100% |  |  |  | 01ADMIN | Construction | Electrical | IGMP | Phase 1 | Construction | DH2100 | Level 2 | BAB |
| QTS-2721 |  | Gallery 2102 / Lineup D2100 // Install Raceways from LV POD to COD | 7d | 2026-01-28 A | 2026-02-06 A | QTS-2711 SS, QTS-1601 | 100% | 2026-01-28 | 2026-02-04 | QTS-PHX3 DC1 - 6 day w/ Holidays | 01ADMIN | Construction | Electrical | IGMP | Phase 1 | Construction | DH2100 | Level 2 | BAB |
| QTS-4891 |  | Gallery 2102 / Lineup D2100 // Set Reserve Busway Segment | 2d | 2026-01-28 A | 2026-01-30 A | QTS-49611, QTS-2721, QTS-3851 | 100% | 2026-02-19 | 2026-02-20 | QTS-PHX3 DC1 - 6 day w/ Holidays | 01ADMIN | Construction | Electrical | IGMP | Phase 1 | Construction | DH2100 | Level 2 | BAB |
| QTS-6361 |  | Gallery 2102 / Lineup D2100 // Pull LV Cables from POD to ATS | 4d | 2026-02-26 A | 2026-02-28 A | QTS-45751 FF+1d, QTS-23931, QTS-2721, QTS-3851 | 100% | 2026-02-26 | 2026-03-02 | QTS-PHX3 DC1 - 6 day w/ Holidays | 01ADMIN | Construction | Electrical | IGMP | Phase 1 | Construction | DH2100 | Level 2 | BAB |
| QTS-8821 |  | Gallery 2102 / Lineup D2100 // Terminate & Torque COD | 1d | 2026-02-27 A | 2026-03-02 A | QTS-6361 FF | 100% | 2026-02-27 | 2026-02-27 | QTS-PHX3 DC1 - 6 day w/ Holidays |  | Construction | Electrical | IGMP | Phase 1 | Construction | DH2100 | Level 2 | BAB |
| QTS-7971 |  | Gallery 2102 / Lineup D2100 // Pull LV Cables from Reserve Bus to ATS | 2d | 2026-03-16 A | 2026-03-17 A | QTS-4891, QTS-6361, QTS-2721 | 100% |  |  | QTS-PHX3 DC1 - 6 day w/ Holidays |  | Construction | Electrical | IGMP | Phase 1 | Construction | DH2100 | Level 2 | BAB |
| QTS-8811 |  | Gallery 2102 / Lineup D2100 // Terminate & Torque ATS | 1d | 2026-03-20 A | 2026-04-03 A | QTS-6361, QTS-7971 | 100% | 2026-03-20 | 2026-03-20 | QTS-PHX3 DC1 - 6 day w/ Holidays |  | Construction | Electrical | IGMP | Phase 1 | Construction | DH2100 | Level 2 | BAB |
|  | 1 | **D2100 Controls** |  | 2026-02-28 | 2026-04-27 |  |  |  |  |  |  |  |  |  |  |  |  |  |  |
| QTS-1006350 |  | DH 2100 / MOD-02-D21 // Wire Pull - Controls | 4d | 2026-02-28 A | 2026-04-27 A | QTS-1371 SS | 100% | 2026-02-27 | 2026-03-03 | QTS-PHX3 DC1 - 6 day w/ Holidays | 01ADMIN | Construction | Electrical | GMP | Phase 1 | Construction | DH2100 |  | BAB |
| QTS-1006360 |  | DH 2100 / COD-D21 // Wire Pull - Controls | 4d | 2026-02-28 A | 2026-03-30 A | QTS-1371 SS | 100% | 2026-02-27 | 2026-03-03 | QTS-PHX3 DC1 - 6 day w/ Holidays | 01ADMIN | Construction | Electrical | GMP | Phase 1 | Construction | DH1100 |  | BAB |
| QTS-1006370 |  | DH 2100 / POD-D21 // Wire Pull - Controls | 4d | 2026-02-28 A | 2026-03-27 A | QTS-1371 SS | 100% | 2026-02-27 | 2026-03-03 | QTS-PHX3 DC1 - 6 day w/ Holidays | 01ADMIN | Construction | Electrical | GMP | Phase 1 | Construction | DH1100 |  | BAB |
| QTS-1006380 |  | DH 2100 / GEN-D21 // Wire Pull - Controls | 4d | 2026-02-28 A | 2026-03-05 A | QTS-1371 SS | 100% | 2026-02-27 | 2026-03-03 | QTS-PHX3 DC1 - 6 day w/ Holidays | 01ADMIN | Construction | Electrical | GMP | Phase 1 | Construction | DH1100 |  | BAB |
| QTS-1006910 |  | DH 2100 / ATS-D21 // Wire Pull - Controls | 4d | 2026-02-28 A | 2026-03-30 A | QTS-1371 SS | 100% | 2026-02-27 | 2026-03-03 | QTS-PHX3 DC1 - 6 day w/ Holidays | 01ADMIN | Construction | Electrical | GMP | Phase 1 | Construction | DH1100 |  | BAB |
| QTS-1006340 |  | DH 2100 / Chiller D21 // Terminate Controls | 4d | 2026-03-02 A | 2026-03-10 A | QTS-1371 SS | 100% | 2026-02-27 | 2026-03-03 | QTS-PHX3 DC1 - 6 day w/ Holidays | 01ADMIN | Construction | Electrical | GMP | Phase 1 | Construction | DH1100 |  | BAB |
| QTS-1006420 |  | DH 2100 / GEN-D21 // Terminate Controls | 3d | 2026-03-02 A | 2026-03-05 A | QTS-1006380 FF | 100% | 2026-03-02 | 2026-03-04 | QTS-PHX3 DC1 - 6 day w/ Holidays | 01ADMIN | Construction | Electrical | GMP | Phase 1 | Construction | DH1100 |  | BAB |
| QTS-1006410 |  | DH 2100 / POD-D21 // Terminate Controls | 1d | 2026-03-28 A | 2026-03-28 A | QTS-1006370 | 100% | 2026-04-21 | 2026-04-21 | QTS-PHX3 DC1 - 6 day w/ Holidays | 01ADMIN | Construction | Electrical | GMP | Phase 1 | Construction | DH1100 |  | BAB |
| QTS-1006400 |  | DH 2100 / COD-D21 // Terminate Controls | 1d | 2026-04-01 A | 2026-04-02 A | QTS-1006360 | 100% | 2026-04-01 | 2026-04-01 | QTS-PHX3 DC1 - 6 day w/ Holidays | 01ADMIN | Construction | Electrical | GMP | Phase 1 | Construction | DH1100 |  | BAB |
| QTS-1006920 |  | DH 2100 / ATS-D21 // Terminate Controls | 1d | 2026-04-01 A | 2026-04-02 A | QTS-1006910 | 100% | 2026-04-01 | 2026-04-01 | QTS-PHX3 DC1 - 6 day w/ Holidays | 01ADMIN | Construction | Electrical | GMP | Phase 1 | Construction | DH1100 |  | BAB |
| QTS-1006390 |  | DH 2100 / MOD-02-D21 // Terminate Controls | 1d | 2026-04-10 A | 2026-04-10 A | QTS-1006350 | 100% |  |  | QTS-PHX3 DC1 - 6 day w/ Holidays | 01ADMIN | Construction | Electrical | GMP | Phase 1 | Construction | DH2100 |  | BAB |
|  | 5 | **E2100 Lineup** |  | 2025-11-14 | 2026-04-27 |  |  |  |  |  |  |  |  |  |  |  |  |  |  |
| QTS-1611 |  | Gallery 2102 / Lineup E2100 // Install Hangers & Supports | 3d | 2025-11-14 A | 2025-11-18 A | QTS-1601 | 100% |  |  |  | 01ADMIN | Construction | Electrical | IGMP | Phase 1 | Construction | DH2100 | Level 2 | BAB |
| QTS-3861 |  | Gallery 2102 / Lineup E2100 // OFCI - L2 SET IN PLACE - Eq Type # - COD/ATS-210-A - Skid 1-3 | 1d | 2025-12-18 A | 2025-12-18 A | QTS-45751, QTS-36431 | 100% |  |  |  | 01ADMIN | Construction | Electrical | IGMP | Phase 1 | Construction | DH2100 | Level 2 | BAB |
| QTS-45761 |  | Gallery 2102 / Lineup E2100 // OFCI - L2 SET IN PLACE - Eq Type # - COD/ATS-210-A - Skid 4-6 | 1d | 2025-12-19 A | 2025-12-19 A | QTS-3861 | 100% |  |  |  | 01ADMIN | Construction | Electrical | IGMP | Phase 1 | Construction | DH2100 | Level 2 | BAB |
| QTS-2731 |  | Gallery 2102 / Lineup E2100 // Install Raceways from LV POD to COD | 7d | 2026-01-28 A | 2026-02-06 A | QTS-2721 SS, QTS-1611 | 100% | 2026-02-11 | 2026-02-18 | QTS-PHX3 DC1 - 6 day w/ Holidays | 01ADMIN | Construction | Electrical | IGMP | Phase 1 | Construction | DH2100 | Level 2 | BAB |
| QTS-4911 |  | Gallery 2102 / Lineup E2100 // Set Reserve Busway Segment | 3d | 2026-01-28 A | 2026-01-30 A | QTS-49611, QTS-2731, QTS-3861 | 100% |  |  | QTS-PHX3 DC1 - 6 day w/ Holidays |  | Construction | Electrical | IGMP | Phase 1 | Construction | DH2100 | Level 2 | BAB |
| QTS-6371 |  | Gallery 2102 / Lineup E2100 // Pull LV Cables from POD to ATS | 1d | 2026-02-25 A | 2026-02-25 A | QTS-45761 FF+1d, QTS-23931, QTS-2731, QTS-3861 | 100% |  |  | QTS-PHX3 DC1 - 6 day w/ Holidays |  | Construction | Electrical | IGMP | Phase 1 | Construction | DH2100 | Level 2 | BAB |
| QTS-8851 |  | Gallery 2102 / Lineup E2100 // Terminate & Torque COD | 1d | 2026-03-02 A | 2026-04-15 A | QTS-6371 | 100% | 2026-03-02 | 2026-03-02 | QTS-PHX3 DC1 - 6 day w/ Holidays |  | Construction | Electrical | IGMP | Phase 1 | Construction | DH2100 | Level 2 | BAB |
| QTS-7991 |  | Gallery 2102 / Lineup E2100 // Pull LV Cables from Reserve Bus to ATS | 2d | 2026-03-16 A | 2026-03-17 A | QTS-4911, QTS-6371, QTS-2731 | 100% |  |  | QTS-PHX3 DC1 - 6 day w/ Holidays |  | Construction | Electrical | IGMP | Phase 1 | Construction | DH2100 | Level 2 | BAB |
| QTS-8841 |  | Gallery 2102 / Lineup E2100 // Terminate & Torque ATS | 1d | 2026-04-09 A | 2026-04-13 A | QTS-6371, QTS-7991, QTS-8811 SS | 100% | 2026-04-09 | 2026-04-09 | QTS-PHX3 DC1 - 6 day w/ Holidays |  | Construction | Electrical | IGMP | Phase 1 | Construction | DH2100 | Level 2 | BAB |

Notes:
- QTS-1006360: Scheduler Notes: 3/24: Prime pulled. E2 still to pull. / Notes: 3/24: Prime pulled. E2 still to pull.
- QTS-8851: Scheduler Notes: 4/14: 80% Complete. ground & re-megger tested. 3/24: 60% / complete / Notes: 4/14: 80% Complete. ground & re-megger tested. 3/24: 60% complete

| ID | WBS | Activity | Duration | Start | Finish | Predecessors | Complete | Planned start | Planned finish | Calendar | Allucent CSI Group | Project Section | Layton Discipline | Baseline | Phase-1-1 | Project Section-1 | Location | Contract | Notes | Level |
| --- | --- | --- | --- | --- | --- | --- | --- | --- | --- | --- | --- | --- | --- | --- | --- | --- | --- | --- | --- | --- |
|  | 1 | **E2100 Controls** |  | 2026-02-28 | 2026-04-27 |  |  |  |  |  |  |  |  |  |  |  |  |  |  |  |
| QTS-1006430 |  | DH 2100 / MOD-02-E21 // Wire Pull - Controls | 4d | 2026-02-28 A | 2026-04-27 A | QTS-1371 SS | 100% | 2026-02-27 | 2026-03-03 | QTS-PHX3 DC1 - 6 day w/ Holidays | 01ADMIN | Construction | Electrical | GMP | Phase 1 | Construction | DH2100 | BAB |  |  |
| QTS-1006440 |  | DH 2100 / COD-E21 // Wire Pull - Controls | 4d | 2026-02-28 A | 2026-03-30 A | QTS-1371 SS | 100% | 2026-02-27 | 2026-03-03 | QTS-PHX3 DC1 - 6 day w/ Holidays | 01ADMIN | Construction | Electrical | GMP | Phase 1 | Construction | DH1100 | BAB | 3/24: Prime pulled. E2 still to pull. |  |
| QTS-1006450 |  | DH 2100 / POD-E21 // Wire Pull - Controls | 4d | 2026-02-28 A | 2026-03-27 A | QTS-1371 SS | 100% | 2026-02-27 | 2026-03-03 | QTS-PHX3 DC1 - 6 day w/ Holidays | 01ADMIN | Construction | Electrical | GMP | Phase 1 | Construction | DH1100 | BAB |  |  |
| QTS-1006460 |  | DH 2100 / GEN-E21 // Wire Pull - Controls | 4d | 2026-02-28 A | 2026-03-05 A | QTS-1371 SS | 100% | 2026-02-27 | 2026-03-03 | QTS-PHX3 DC1 - 6 day w/ Holidays | 01ADMIN | Construction | Electrical | GMP | Phase 1 | Construction | DH1100 | BAB |  |  |
| QTS-1006890 |  | DH 2100 / ATS-E21 // Wire Pull - Controls | 4d | 2026-02-28 A | 2026-03-30 A | QTS-1371 SS | 100% | 2026-02-27 | 2026-03-03 | QTS-PHX3 DC1 - 6 day w/ Holidays | 01ADMIN | Construction | Electrical | GMP | Phase 1 | Construction | DH1100 | BAB |  |  |
| QTS-1006470 |  | DH 2100 / Chiller E21 // Terminate Controls | 4d | 2026-03-02 A | 2026-03-16 A | QTS-1371 SS | 100% | 2026-02-27 | 2026-03-03 | QTS-PHX3 DC1 - 6 day w/ Holidays | 01ADMIN | Construction | Electrical | GMP | Phase 1 | Construction | DH2100 | BAB |  |  |
| QTS-1006510 |  | DH 2100 / GEN-E21 // Terminate Controls | 4d | 2026-03-02 A | 2026-03-05 A | QTS-1006460 FF | 100% | 2026-03-10 | 2026-03-13 | QTS-PHX3 DC1 - 6 day w/ Holidays | 01ADMIN | Construction | Electrical | GMP | Phase 1 | Construction | DH1100 | BAB |  |  |
| QTS-1006500 |  | DH 2100 / POD-E21 // Terminate Controls | 1d | 2026-03-28 A | 2026-03-28 A | QTS-1006450 | 100% | 2026-04-21 | 2026-04-21 | QTS-PHX3 DC1 - 6 day w/ Holidays | 01ADMIN | Construction | Electrical | GMP | Phase 1 | Construction | DH1100 | BAB |  |  |
| QTS-1006490 |  | DH 2100 / COD-E21 // Terminate Controls | 1d | 2026-04-03 A | 2026-04-03 A | QTS-1006440 | 100% |  |  | QTS-PHX3 DC1 - 6 day w/ Holidays | 01ADMIN | Construction | Electrical | GMP | Phase 1 | Construction | DH1100 | BAB |  |  |
| QTS-1006900 |  | DH 2100 / ATS-E21 // Terminate Controls | 1d | 2026-04-03 A | 2026-04-03 A | QTS-1006890, QTS-1009400 | 100% |  |  | QTS-PHX3 DC1 - 6 day w/ Holidays | 01ADMIN | Construction | Electrical | GMP | Phase 1 | Construction | DH1100 | BAB |  |  |
| QTS-1006480 |  | DH 2100 / MOD-02-E21 // Terminate Controls | 1d | 2026-04-10 A | 2026-04-10 A | QTS-1006430 | 100% |  |  | QTS-PHX3 DC1 - 6 day w/ Holidays | 01ADMIN | Construction | Electrical | GMP | Phase 1 | Construction | DH2100 | BAB |  |  |
|  | 6 | **F2100 Lineup** |  | 2025-11-14 | 2026-04-27 |  |  |  |  |  |  |  |  |  |  |  |  |  |  |  |
| QTS-1621 |  | Gallery 2102 / Lineup F2100 // Install Hangers & Supports | 3d | 2025-11-14 A | 2025-11-18 A | QTS-1611 SS | 100% |  |  |  | 01ADMIN | Construction | Electrical | IGMP | Phase 1 | Construction | DH2100 | BAB |  | Level 2 |
| QTS-3871 |  | Gallery 2102 / Lineup F2100 // OFCI - L2 SET IN PLACE - Eq Type # - COD/ATS-210-A - Skid 1-3 | 1d | 2025-12-22 A | 2025-12-22 A | QTS-45761, QTS-36501 | 100% |  |  |  | 01ADMIN | Construction | Electrical | IGMP | Phase 1 | Construction | DH2100 | BAB |  | Level 2 |
| QTS-45771 |  | Gallery 2102 / Lineup F2100 // OFCI - L2 SET IN PLACE - Eq Type # - COD/ATS-210-A - Skid 4-6 | 1d | 2025-12-23 A | 2025-12-23 A | QTS-3871 | 100% |  |  |  | 01ADMIN | Construction | Electrical | IGMP | Phase 1 | Construction | DH2100 | BAB |  | Level 2 |
| QTS-2741 |  | Gallery 2102 / Lineup F2100 // Install Raceways from LV POD to COD | 7d | 2026-01-28 A | 2026-02-06 A | QTS-2731 SS, QTS-1621 | 100% | 2026-02-11 | 2026-02-18 | QTS-PHX3 DC1 - 6 day w/ Holidays | 01ADMIN | Construction | Electrical | IGMP | Phase 1 | Construction | DH2100 | BAB |  | Level 2 |
| QTS-4931 |  | Gallery 2102 / Lineup F2100 // Set Reserve Busway Segment | 3d | 2026-01-28 A | 2026-01-30 A | QTS-49611, QTS-2741, QTS-3871 | 100% |  |  | QTS-PHX3 DC1 - 6 day w/ Holidays |  | Construction | Electrical | IGMP | Phase 1 | Construction | DH2100 | BAB |  | Level 2 |
| QTS-6381 |  | Gallery 2102 / Lineup F2100 // Pull LV Cables from POD to ATS | 1d | 2026-02-25 A | 2026-02-25 A | QTS-45771 FF+1d, QTS-23931, QTS-2741 | 100% |  |  | QTS-PHX3 DC1 - 6 day w/ Holidays |  | Construction | Electrical | IGMP | Phase 1 | Construction | DH2100 | BAB |  | Level 2 |
| QTS-8011 |  | Gallery 2102 / Lineup F2100 // Pull LV Cables from Reserve Bus to ATS | 2d | 2026-03-16 A | 2026-03-17 A | QTS-4931, QTS-6381, QTS-2741 | 100% |  |  | QTS-PHX3 DC1 - 6 day w/ Holidays |  | Construction | Electrical | IGMP | Phase 1 | Construction | DH2100 | BAB |  | Level 2 |
| QTS-8871 |  | Gallery 2102 / Lineup F2100 // Terminate & Torque ATS | 1d | 2026-04-08 A | 2026-04-13 A | QTS-6381, QTS-8011 | 100% | 2026-04-08 | 2026-04-08 | QTS-PHX3 DC1 - 6 day w/ Holidays |  | Construction | Electrical | IGMP | Phase 1 | Construction | DH2100 | BAB |  | Level 2 |
| QTS-8881 |  | Gallery 2102 / Lineup F2100 // Terminate & Torque COD | 1d | 2026-04-09 A | 2026-04-15 A | QTS-8871 SS+4d, QTS-6381, QTS-8841 | 100% | 2026-05-20 | 2026-05-20 | QTS-PHX3 DC1 - 6 day w/ Holidays |  | Construction | Electrical | IGMP | Phase 1 | Construction | DH2100 | BAB | 4/14: 90% Complete. ground & re-megger tested. | Level 2 |
|  | 1 | **F2100 Controls** |  | 2026-02-28 | 2026-04-27 |  |  |  |  |  |  |  |  |  |  |  |  |  |  |  |
| QTS-1006520 |  | DH 2100 / MOD-02-F21 // Wire Pull - Controls | 4d | 2026-02-28 A | 2026-04-27 A | QTS-1371 SS | 100% | 2026-02-27 | 2026-03-03 | QTS-PHX3 DC1 - 6 day w/ Holidays | 01ADMIN | Construction | Electrical | GMP | Phase 1 | Construction | DH2100 | BAB |  |  |
| QTS-1006530 |  | DH 2100 / COD-F21 // Wire Pull - Controls | 4d | 2026-02-28 A | 2026-03-30 A | QTS-1371 SS | 100% | 2026-02-27 | 2026-03-03 | QTS-PHX3 DC1 - 6 day w/ Holidays | 01ADMIN | Construction | Electrical | GMP | Phase 1 | Construction | DH1100 | BAB |  |  |
| QTS-1006540 |  | DH 2100 / POD-F21 // Wire Pull - Controls | 4d | 2026-02-28 A | 2026-03-27 A | QTS-1371 SS | 100% | 2026-02-27 | 2026-03-03 | QTS-PHX3 DC1 - 6 day w/ Holidays | 01ADMIN | Construction | Electrical | GMP | Phase 1 | Construction | DH1100 | BAB |  |  |
| QTS-1006550 |  | DH 2100 / GEN-F21 // Wire Pull - Controls | 4d | 2026-02-28 A | 2026-03-05 A | QTS-1371 SS | 100% | 2026-02-27 | 2026-03-03 | QTS-PHX3 DC1 - 6 day w/ Holidays | 01ADMIN | Construction | Electrical | GMP | Phase 1 | Construction | DH1100 | BAB |  |  |
| QTS-1006870 |  | DH 2100 / ATS-F21 // Wire Pull - Controls | 4d | 2026-02-28 A | 2026-03-30 A | QTS-1371 SS | 100% | 2026-02-27 | 2026-03-03 | QTS-PHX3 DC1 - 6 day w/ Holidays | 01ADMIN | Construction | Electrical | GMP | Phase 1 | Construction | DH1100 | BAB |  |  |
| QTS-1006560 |  | DH 2100 / Chiller F21 // Terminate Controls | 4d | 2026-03-02 A | 2026-03-16 A | QTS-1371 SS | 100% | 2026-02-27 | 2026-03-03 | QTS-PHX3 DC1 - 6 day w/ Holidays | 01ADMIN | Construction | Electrical | GMP | Phase 1 | Construction | DH2100 | BAB |  |  |
| QTS-1006600 |  | DH 2100 / GEN-F21 // Terminate Controls | 4d | 2026-03-02 A | 2026-03-05 A | QTS-1006550 FF | 100% | 2026-03-10 | 2026-03-13 | QTS-PHX3 DC1 - 6 day w/ Holidays | 01ADMIN | Construction | Electrical | GMP | Phase 1 | Construction | DH1100 | BAB |  |  |
| QTS-1006590 |  | DH 2100 / POD-F21 // Terminate Controls | 1d | 2026-03-28 A | 2026-03-28 A | QTS-1006540 | 100% | 2026-04-21 | 2026-04-21 | QTS-PHX3 DC1 - 6 day w/ Holidays | 01ADMIN | Construction | Electrical | GMP | Phase 1 | Construction | DH1100 | BAB |  |  |
| QTS-1006580 |  | DH 2100 / COD-F21 // Terminate Controls | 1d | 2026-04-04 A | 2026-04-04 A | QTS-1006530 | 100% |  |  | QTS-PHX3 DC1 - 6 day w/ Holidays | 01ADMIN | Construction | Electrical | GMP | Phase 1 | Construction | DH1100 | BAB |  |  |
| QTS-1006880 |  | DH 2100 / ATS-F21 // Terminate Controls | 1d | 2026-04-04 A | 2026-04-04 A | QTS-1006870 | 100% |  |  | QTS-PHX3 DC1 - 6 day w/ Holidays | 01ADMIN | Construction | Electrical | GMP | Phase 1 | Construction | DH1100 | BAB |  |  |
| QTS-1006570 |  | DH 2100 / MOD-02-F21 // Terminate Controls | 1d | 2026-04-10 A | 2026-04-10 A | QTS-1006520 | 100% |  |  | QTS-PHX3 DC1 - 6 day w/ Holidays | 01ADMIN | Construction | Electrical | GMP | Phase 1 | Construction | DH2100 | BAB |  |  |

Notes:
- QTS-1006440: Scheduler Notes: 3/24: Prime pulled. E2 still to pull.
- QTS-8881: Scheduler Notes: 4/14: 90% Complete. ground & re-megger tested.

| ID | WBS | Activity | Duration | Start | Finish | Predecessors | Complete | Planned start | Planned finish | Total float | Free float | Calendar | Allucent CSI Group | Project Section | Layton Discipline | Baseline | Phase-1-1 | Project Section-1 | Location | Level | Contract | Layton Super | Notes | Trade Partner |
| --- | --- | --- | --- | --- | --- | --- | --- | --- | --- | --- | --- | --- | --- | --- | --- | --- | --- | --- | --- | --- | --- | --- | --- | --- |
|  | 9 | **R2100 Lineup** |  | 2025-11-19 | 2026-04-27 |  |  |  |  |  |  |  |  |  |  |  |  |  |  |  |  |  |  |  |
| QTS-1571 |  | Gallery 2102 / Lineup R2100 // Install Hangers & Supports | 3d | 2025-11-19 A | 2025-11-21 A | QTS-1621 | 100% |  |  |  |  |  | 01ADMIN | Construction | Electrical | IGMP | Phase 1 | Construction | DH2100 | Level 2 | BAB |  |  |  |
| QTS-2691 |  | Gallery 2102 / Lineup R2100 // Install Raceways from LV POD to Reserve Busway | 5d | 2026-01-28 A | 2026-02-06 A | QTS-2741 SS, QTS-1571 | 100% | 2026-02-11 | 2026-02-16 |  |  | QTS-PHX3 DC1 - 6 day w/ Holidays |  | Construction | Electrical | IGMP | Phase 1 | Construction | DH2100 | Level 2 | BAB |  |  |  |
| QTS-3821 |  | Gallery 2102 / Lineup R2100 // Set Reserve Busway Segment | 3d | 2026-01-28 A | 2026-01-30 A | QTS-49611, QTS-2691, QTS-1571 | 100% |  |  |  |  | QTS-PHX3 DC1 - 6 day w/ Holidays |  | Construction | Electrical | IGMP | Phase 1 | Construction | DH2100 | Level 2 | BAB |  |  |  |
| QTS-6181 |  | Gallery 2102 / Lineup R2100 // Pull LV Cables from POD to Reserve Busway | 1d | 2026-02-28 A | 2026-02-28 A | QTS-3821, QTS-2691 | 100% |  |  |  |  | QTS-PHX3 DC1 - 6 day w/ Holidays |  | Construction | Electrical | IGMP | Phase 1 | Construction | DH2100 | Level 2 | BAB |  |  |  |
| QTS-7031 |  | Gallery 2102 / Lineup R2100 // Terminate Reserve Busway | 2d | 2026-03-19 A | 2026-03-27 A | QTS-6181 | 100% | 2026-03-19 | 2026-03-20 |  |  | QTS-PHX3 DC1 - 6 day w/ Holidays |  | Construction | Electrical | IGMP | Phase 1 | Construction | DH2100 | Level 2 | BAB |  |  |  |
|  | 1 | **R2100 Controls** |  | 2026-02-28 | 2026-04-27 |  |  |  |  |  |  |  |  |  |  |  |  |  |  |  |  |  |  |  |
| QTS-1006610 |  | DH 2100 / MOD-02-R21 // Wire Pull - Controls | 4d | 2026-02-28 A | 2026-04-27 A | QTS-1371 SS | 100% | 2026-02-27 | 2026-03-03 |  |  | QTS-PHX3 DC1 - 6 day w/ Holidays | 01ADMIN | Construction | Electrical | GMP | Phase 1 | Construction | DH2100 |  | BAB |  |  |  |
| QTS-1006630 |  | DH 2100 / POD-R21 // Wire Pull - Controls | 4d | 2026-02-28 A | 2026-03-27 A | QTS-1371 SS | 100% | 2026-02-27 | 2026-03-03 |  |  | QTS-PHX3 DC1 - 6 day w/ Holidays | 01ADMIN | Construction | Electrical | GMP | Phase 1 | Construction | DH1100 |  | BAB |  |  |  |
| QTS-1006640 |  | DH 2100 / GEN-R21 // Wire Pull - Controls | 4d | 2026-02-28 A | 2026-03-05 A | QTS-1371 SS | 100% | 2026-02-27 | 2026-03-03 |  |  | QTS-PHX3 DC1 - 6 day w/ Holidays | 01ADMIN | Construction | Electrical | GMP | Phase 1 | Construction | DH1100 |  | BAB |  |  |  |
| QTS-1006700 |  | DH 2100 / Chiller R21 // Wire Pull - Controls | 4d | 2026-02-28 A | 2026-03-06 A | QTS-1371 SS | 100% | 2026-02-27 | 2026-03-03 |  |  | QTS-PHX3 DC1 - 6 day w/ Holidays | 01ADMIN | Construction | Electrical | GMP | Phase 1 | Construction | DH1100 |  | BAB |  |  |  |
| QTS-1006690 |  | DH 2100 / GEN-R21 // Terminate Controls | 5d | 2026-03-02 A | 2026-03-05 A | QTS-1006640 FF | 100% | 2026-03-02 | 2026-03-06 |  |  | QTS-PHX3 DC1 - 6 day w/ Holidays | 01ADMIN | Construction | Electrical | GMP | Phase 1 | Construction | DH1100 |  | BAB |  |  |  |
| QTS-1006650 |  | DH 2100 / Chiller R21 // Terminate Controls | 4d | 2026-03-10 A | 2026-03-16 A | QTS-1006700 | 100% | 2026-03-10 | 2026-03-13 |  |  | QTS-PHX3 DC1 - 6 day w/ Holidays | 01ADMIN | Construction | Electrical | GMP | Phase 1 | Construction | DH2100 |  | BAB |  |  |  |
| QTS-1006680 |  | DH 2100 / POD-R21 // Terminate Controls | 1d | 2026-03-28 A | 2026-03-28 A | QTS-1006630 | 100% | 2026-04-21 | 2026-04-21 |  |  | QTS-PHX3 DC1 - 6 day w/ Holidays | 01ADMIN | Construction | Electrical | GMP | Phase 1 | Construction | DH1100 |  | BAB |  |  |  |
| QTS-1006660 |  | DH 2100 / MOD-02-R21 // Terminate Controls | 1d | 2026-04-10 A | 2026-04-10 A | QTS-1006610 | 100% |  |  |  |  | QTS-PHX3 DC1 - 6 day w/ Holidays | 01ADMIN | Construction | Electrical | GMP | Phase 1 | Construction | DH2100 |  | BAB |  |  |  |
|  | 7 | **Gallery 2103 Mechanical** |  | 2025-08-07 | 2026-08-27 |  |  |  |  |  |  |  |  |  |  |  |  |  |  |  |  |  |  |  |
| QTS-44401 |  | DH 2100 / Mechanical Gallery 2103 // Install OH Mechanical Hangers | 7d | 2025-08-07 A | 2025-08-15 A | QTS-44371 SS | 100% |  |  |  |  |  | 01ADMIN | Construction | Mechanical | IGMP |  | Construction | DH2100 | Level 2 | BAB |  |  |  |
| QTS-23691 |  | DH 2100 / Mechanical Gallery 2103 // Install OH Mechanical Piping | 10d | 2025-08-19 A | 2025-10-06 A | QTS-44401 | 100% | 2025-08-18 | 2025-08-29 |  |  |  | 01ADMIN | Construction | Mechanical | IGMP |  | Construction | DH2100 | Level 2 | BAB |  |  |  |
| QTS-23681 |  | DH 2100 / Mechanical Gallery 2103 // Install VESDA | 8d | 2025-09-22 A | 2025-10-01 A | QTS-23671 SS, QTS-23331 | 100% |  |  |  |  |  | 01ADMIN | Construction | Electrical | IGMP |  | Construction | DH2100 | Level 2 | BAB |  |  |  |
| QTS-22121 |  | DH 2100 / Mechanical Gallery 2103 // Frame 2103 Exterior Wall | 3d | 2025-09-24 A | 2025-09-26 A | QTS-21811, QTS-21801, QTS-21471, QTS-20921, QTS-21461 | 100% |  |  |  |  |  | 01ADMIN | Construction | Build Out | IGMP |  | Construction | DH2100 | Level 2 | BAB | Doug Hayes |  |  |
| QTS-24361 |  | DH 2100 / Mechanical Gallery 2103 // Install OH Electrical, FA/ EPMS/BMS Conduit & Grounding | 10d | 2025-10-07 A | 2025-11-14 A | QTS-120000, QTS-23691 | 100% | 2025-10-07 | 2025-10-20 |  |  |  | 01ADMIN | Construction | Electrical | IGMP |  | Construction | DH2100 | Level 2 | BAB |  |  |  |
| QTS-22721 |  | DH 2100 / Mechanical Gallery 2103 // Hang, Tape, & Finish Drywall for Exterior Wall | 10d | 2025-10-09 A | 2025-10-22 A | QTS-38981, QTS-22121 | 100% |  |  |  |  |  | 01ADMIN | Construction | Build Out | IGMP |  | Construction | DH2100 | Level 2 | BAB | Doug Hayes |  |  |
| QTS-22501 |  | DH 2100 / Mechanical Gallery 2103 // Frame Fan Wall | 5d | 2025-10-13 A | 2025-10-17 A | QTS-22121, QTS-21811 | 100% | 2025-10-09 | 2025-10-15 |  |  |  | 01ADMIN | Construction | Build Out | IGMP |  | Construction | DH2100 | Level 2 | BAB | Doug Hayes |  |  |
| QTS-101920 |  | DH 2100 / Mechanical Gallery 2103 // Install Pipe Risers | 10d | 2025-10-20 A | 2025-10-28 A | QTS-23681, QTS-23691 | 100% | 2025-11-03 | 2025-11-14 |  |  |  | 01ADMIN | Construction | Mechanical | IGMP |  | Construction | DH2100 | Level 2 | BAB |  |  |  |
| QTS-22851 |  | DH 2100 / Mechanical Gallery 2103 // In Wall Electrical Rough for Fan Wall | 3d | 2025-10-20 A | 2025-10-24 A | QTS-22501 FF+2d | 100% | 2025-10-17 | 2025-10-21 |  |  |  | 01ADMIN | Construction | Electrical | IGMP |  | Construction | DH2100 | Level 2 | BAB |  |  |  |
| QTS-24351 |  | DH 2100 / Mechanical Gallery 2103 // Install Electrical Tray | 5d | 2025-10-20 A | 2025-11-14 A | QTS-23691 | 100% | 2025-10-15 | 2025-10-21 |  |  |  | 01ADMIN | Construction | Electrical | IGMP |  | Construction | DH2100 | Level 2 | BAB |  |  |  |
| QTS-99900 |  | DH 2100 / Mechanical Gallery 2103 // Hang, Tape, & Finish Fan Drywall - MG Side | 3d | 2025-10-20 A | 2025-10-24 A | QTS-22501 | 100% | 2025-10-20 | 2025-10-22 |  |  |  | 01ADMIN |  | Build Out |  |  |  |  |  | BAB |  |  |  |
| QTS-101930 |  | DH 2100 / Mechanical Gallery 2103 // POC Rough In for CRAH Unit Mechanical Connections | 5d | 2025-10-23 A | 2025-10-29 A | QTS-120000, QTS-101920 FF+1d | 100% |  |  |  |  |  | 01ADMIN | Construction | Mechanical | IGMP |  | Construction | DH2100 | Level 2 | BAB |  |  |  |
| QTS-23301 |  | DH 2100 / Mechanical Gallery 2103 // Paint Walls | 3d | 2025-10-23 A | 2025-10-27 A | QTS-22721 | 100% |  |  |  |  |  | 01ADMIN | Construction | Build Out | IGMP |  | Construction | DH2100 | Level 2 | BAB | Doug Hayes |  |  |
| QTS-99910 |  | DH 2100 / Mechanical Gallery 2103 // Paint Fan Walls - MG Side | 3d | 2025-10-24 A | 2025-10-28 A | QTS-99900 FF+2d | 100% |  |  |  |  |  | 01ADMIN |  | Build Out |  |  |  |  |  | BAB |  |  |  |
| QTS-22991 |  | DH 2100 / Mechanical Gallery 2103 // In Wall Inspection for Fan Wall | 2d | 2025-10-27 A | 2025-10-28 A | QTS-22851 | 100% |  |  |  |  |  | 01ADMIN | Construction | Electrical | IGMP |  | Construction | DH2100 | Level 2 | BAB |  |  |  |
| QTS-23041 |  | DH 2100 / Mechanical Gallery 2103 // Hang, Tape, & Finish Fan Drywall - DH Side | 5d | 2025-10-29 A | 2025-11-04 A | QTS-22991 | 100% |  |  |  |  |  | 01ADMIN | Construction | Build Out | IGMP |  | Construction | DH2100 | Level 2 | BAB | Doug Hayes |  |  |
| QTS-23311 |  | DH 2100 / Mechanical Gallery 2103 // Paint Fan Wall - DH Side | 5d | 2025-11-05 A | 2025-11-11 A | QTS-23041 | 100% |  |  |  |  |  | 01ADMIN | Construction | Build Out | IGMP |  | Construction | DH2100 | Level 2 | BAB | Doug Hayes |  |  |
| QTS-46481 |  | DH 2100 / Mechanical Gallery 2103 // Set EPMS/BMS Panels | 4d | 2025-12-08 A | 2026-01-21 A | QTS-23311 | 100% | 2025-12-08 | 2025-12-11 |  |  | QTS-PHX3 DC1 - 6 day w/ Holidays | 01ADMIN | Construction | Electrical | IGMP |  | Construction | DH2100 | Level 2 | BAB |  |  |  |
| QTS-1001040 |  | DH 2100 / Mechanical Gallery 2103 // Install Cap for Security Screen on Fan Wall | 3d | 2025-12-09 A | 2025-12-11 A | QTS-23311 | 100% |  |  |  |  |  | 01ADMIN | Construction | Build Out | IGMP |  | Construction | DH2100 | Level 2 | BAB |  |  |  |
| QTS-23831 |  | DH 2100 / Mechanical Gallery 2103 // OFCI - L2 SET IN PLACE - Eq Type # - CRAH - 14 units | 6d | 2025-12-09 A | 2025-12-15 A | QTS-101930, QTS-99910, QTS-23611, QTS-23691, QTS-34161, QTS-34151, QTS-34141, QTS-34131, QTS-34121, QTS-34111, QTS-34101, QTS-34091, QTS-34081, QTS-34071, QTS-34061, QTS-34051, QTS-34041, QTS-34031 | 100% |  |  |  |  | QTS-PHX3 DC1 - 6 day w/ Holidays | 01ADMIN | Construction | Mechanical | IGMP |  | Construction | DH2100 | Level 2 | BAB |  |  |  |
| QTS-23701 |  | DH 2100 / Mechanical Gallery 2103 // Install Security Screen Above Fan Wall | 3d | 2025-12-15 A | 2025-12-24 A | QTS-1001250, QTS-1001040, QTS-99680, QTS-22501 | 100% | 2025-12-16 | 2025-12-18 |  |  | QTS-PHX3 DC1 - 6 day w/ Holidays | 01ADMIN | Construction | Build Out | IGMP |  | Construction | DH2100 | Level 2 | BAB |  |  |  |
| QTS-24311 |  | DH 2100 / Mechanical Gallery 2103 // CRAH Unit Mechanical Connections | 10d | 2026-01-20 A | 2026-02-02 A | QTS-23831 FF+5d | 100% | 2026-01-20 | 2026-01-30 |  |  | QTS-PHX3 DC1 - 6 day w/ Holidays | 01ADMIN | Construction | Mechanical | IGMP |  | Construction | DH2100 | Level 2 | BAB |  |  |  |
| QTS-24801 |  | DH 2100 / Mechanical Gallery 2103 // Install Basket Tray for LV | 5d | 2026-01-31 A | 2026-02-18 A | QTS-24361, QTS-24311, QTS-120000, QTS-24351, QTS-23701, QTS-46481 | 100% | 2026-01-31 | 2026-02-05 |  |  | QTS-PHX3 DC1 - 6 day w/ Holidays | 01ADMIN | Construction | Electrical | IGMP |  | Construction | DH2100 | Level 2 | BAB |  |  |  |
| QTS-24321 |  | DH 2100 / Mechanical Gallery 2103 // Install Angle Seal Around CRAH Units | 2d | 2026-03-25 A | 2026-03-26 A | QTS-23831, QTS-1004880 | 100% |  |  |  |  | QTS-PHX3 DC1 - 6 day w/ Holidays |  | Construction | Build Out | IGMP |  | Construction | DH2100 | Level 2 | BAB |  | 1/20/26: Material needs to be procured. |  |
| QTS-1180 |  | DH 2100 / Gallery 2103 / Final Paint | 2d | 2026-07-29 A | 2026-07-30 A | QTS-0790, QTS-6020 | 100% | 2026-08-05 | 2026-08-06 |  |  | **GLOBAL - 6 Day Workweek w/ Basic Holidays |  |  | Build Out |  |  |  |  |  | BAB | Jason Hendley | NEED UPDATE | PPC |
| QTS-1190 |  | DH 2100 / Gallery 2103 / Sealed Concrete flooring | 2d | 2026-07-31 A | 2026-08-01 A | QTS-1180 | 100% | 2026-08-07 | 2026-08-08 |  |  | **GLOBAL - 6 Day Workweek w/ Basic Holidays |  |  | Build Out |  |  |  |  |  | BAB | Jason Hendley |  | Bldg Solutions |
| QTS-1210 |  | DH 2100 / Gallery 2103 / Clean | 2d | 2026-08-11 A | 2026-08-11 A | QTS-24321 | 100% | 2026-08-14 | 2026-08-15 |  |  | **GLOBAL - 6 Day Workweek w/ Basic Holidays |  |  | Build Out |  |  |  |  |  | BAB | Ed Carter |  | AGDC |
| QTS-5720 |  | DH 2100 / Gallery 2103 / Install Fire Extinguishers and Cabinets | 2d | 2026-08-19 | 2026-08-20 | QTS-5730, QTS-1180 |  |  |  | -68d | 18d | **GLOBAL - 6 Day Workweek w/ Basic Holidays |  |  | Build Out |  |  |  |  |  | BAB | Jake Shimmin |  | ISEC |
| QTS-1200 |  | DH 2100 / Gallery 2103 / Install Ruber Base | 2d | 2026-08-26 | 2026-08-27 | QTS-1190, QTS-0810 |  |  |  | -74d | 12d | **GLOBAL - 6 Day Workweek w/ Basic Holidays |  |  | Build Out |  |  |  |  |  | BAB | Ben Ribble |  | Wholesale Flooring |

Notes:
- QTS-23691: allucent_notes: David Wiltberger on 2025-08-19 09:08: Access from Chiller activity / allucent_notes: 2025-08-19 09:08 - User: David Wiltberger - Date Added: 2025-08-19 09:08 - Note: Access from Chiller activity / 2025-09-02 10:09 - User: David Wiltberger - Date Added: 2025-09-02 10:09 - Note: BAM could not get required fork lift to 2nd floor
- QTS-24361: allucent_notes_20251118_192630: Scott Masterson on 2025-10-21 11:10: Walls are not 100% complete. REI is requiring additional time to bounce around a bit to compencate for this activity. Esspencially at the 38' leave out area. / Scott Masterson on 2025-10-27 16:10: Need walls topped out so the Overhead can start. / Scott Masterson on 2025-11-04 14:11: Need CRAHs set (higher work activities completed) before electrical can start. Need to get estimated date of set. / Jason Johnston on 2025-11-19T02:23:31.757Z: undo / allucent_notes_20251111_182405: Scott Masterson on 2025-10-21 11:10: Walls are not 100% complete. REI is requiring additional time to bounce around a bit to compencate for this activity. Esspencially at the 38' leave out area. / Scott Masterson on 2025-10-27 16:10: Need walls topped out so the Overhead can start. / Scott Masterson on 2025-11-04 14:11: Need CRAHs set (higher work activities completed) before electrical can start. Need to get estimated date of set. / allucent_notes_20251104_160200: Scott Masterson on 2025-10-21 11:10: Walls are not 100% complete. REI is requiring additional time to bounce around a bit to compencate for this activity. Esspencially at the 38' leave out area. / Scott Masterson on 2025-10-27 16:10: Need walls topped out so the Overhead can start. / Scott Masterson on 2025-11-04 14:11: Need CRAHs set (higher work activities completed) before electrical can start. Need to get estimated date of set. / allucent_notes_20251028_163138: Scott Masterson on 2025-10-21 11:10: Walls are not 100% complete. REI is requiring additional time to bounce around a bit to compencate for this activity. Esspencially at the 38' leave out area. / Scott Masterson on 2025-10-27 16:10: Need walls topped out so the Overhead can start. / allucent_notes_20251027_224008: Scott Masterson on 2025-10-21 11:10: Walls are not 100% complete. REI is requiring additional time to bounce around a bit to compencate for this activity. Esspencially at the 38' leave out area. / Scott Masterson on 2025-10-27 16:10: Need walls topped out so the Overhead can start. / allucent_notes_20251021_145627: Scott Masterson on 2025-10-21 11:10: Walls are not 100% complete. REI is requiring additional time to bounce around a bit to compencate for this activity. Esspencially at the 38' leave out area. / allucent_notes: 2025-10-21 11:10 - User: Scott Masterson - Date Added: 2025-10-21 11:10 - Note: Walls are not 100% complete. REI is requiring additional time to bounce around a bit to compencate for this activity. Esspencially at the 38' leave out area. / 2025-10-27 16
- QTS-22721: allucent_notes_20251027_224008: Jason Johnston on 2025-10-08 08:10: not done / allucent_notes_20251021_145627: Jason Johnston on 2025-10-08 08:10: not done / allucent_notes_20251014_152335: Jason Johnston on 2025-10-08 08:10: not done / allucent_notes: 2025-10-08 08:10 - User: Jason Johnston - Date Added: 2025-10-08 08:10 - Note: not done
- QTS-22501: allucent_notes_20251021_145627: Jason Johnston on 2025-10-08 08:10: not done / Jason Johnston on 2025-10-14 15:10: rain delay / allucent_notes_20251014_152335: Jason Johnston on 2025-10-08 08:10: not done / Jason Johnston on 2025-10-14 15:10: rain delay / allucent_notes: 2025-10-08 08:10 - User: Jason Johnston - Date Added: 2025-10-08 08:10 - Note: not done / 2025-10-14 15:10 - User: Jason Johnston - Date Added: 2025-10-14 15:10 - Note: rain delay
- QTS-22851: allucent_notes_20251027_224008: Scott Masterson on 2025-10-21 11:10: The fan walls released out of sequence. REI is working on getting them completed. / Scott Masterson on 2025-10-21 11:10: Fan walls weere released out of sequence so REI is getting a late start / allucent_notes_20251021_145627: Scott Masterson on 2025-10-21 11:10: The fan walls released out of sequence. REI is working on getting them completed. / Scott Masterson on 2025-10-21 11:10: Fan walls weere released out of sequence so REI is getting a late start / allucent_notes: 2025-10-21 11:10 - User: Scott Masterson - Date Added: 2025-10-21 11:10 - Note: The fan walls released out of sequence. REI is working on getting them completed. / 2025-10-21 11:10 - User: Scott Masterson - Date Added: 2025-10-21 11:10 - Note: Fan walls
- QTS-24351: allucent_notes_20251118_192630: Scott Masterson on 2025-10-21 11:10: The fan walls were released out of sequence. REI is working on getting the caoght up. / Scott Masterson on 2025-10-21 11:10: Fan walls were released out of sequence so REI is getting a late start / Scott Masterson on 2025-10-27 16:10: Need walls topped out so the Overhead can start. / Scott Masterson on 2025-11-04 14:11: Need CRAHs set (higher work activities completed) before electrical can start. Need to get estimated date of set. / Jason Johnston on 2025-11-19T02:23:35.424Z: undo / allucent_notes_20251111_182405: Scott Masterson on 2025-10-21 11:10: The fan walls were released out of sequence. REI is working on getting the caoght up. / Scott Masterson on 2025-10-21 11:10: Fan walls were released out of sequence so REI is getting a late start / Scott Masterson on 2025-10-27 16:10: Need walls topped out so the Overhead can start. / Scott Masterson on 2025-11-04 14:11: Need CRAHs set (higher work activities completed) before electrical can start. Need to get estimated date of set. / allucent_notes_20251104_160200: Scott Masterson on 2025-10-21 11:10: The fan walls were released out of sequence. REI is working on getting the caoght up. / Scott Masterson on 2025-10-21 11:10: Fan walls were released out of sequence so REI is getting a late start / Scott Masterson on 2025-10-27 16:10: Need walls topped out so the Overhead can start. / Scott Masterson on 2025-11-04 14:11: Need CRAHs set (higher work activities completed) before electrical can start. Need to get estimated date of set. / allucent_notes_20251028_163138: Scott Masterson on 2025-10-21 11:10: The fan walls were released out of sequence. REI is working on getting the caoght up. / Scott Masterson on 2025-10-21 11:10: Fan walls were released out of sequence so REI is getting a late start / Scott Masterson on 2025-10-27 16:10: Need walls topped out so the Overhead can start. / allucent_notes_20251027_224008: Scott Masterson on 2025-10-21 11:10: The fan walls were released out of sequence. REI is working on getting the caoght up. / Scott Masterson on 2025-10-21 11:10: Fan walls were released out of sequence so REI is getting a late start / Scott Masterson on 2025-10-27 16:10: Need walls topped out so the Overhead can start. / allucent_notes_20251021_145627: Scott Masterson on 2025-10-21 11:10: The fan walls were released out of sequence. REI is working on getting the caoght up. / Scott Masterson on 2025-10-21 11:10: Fan walls were released out of sequence so REI is getting a late start / allucent_notes: 2025-10-21 11:10 - User: Scott Masterson - Date Added: 2025-10-21 11:10 - Note: The fan walls were released out of sequence. REI is working on getting the caoght up. / 2025-10-21 11:10 - User: Scott Masterson - Date Added: 2025-10-21 11:10 - Note: Fan wa
- QTS-99900: allucent_notes_20251027_224008: Jake Shimmin on 2025-10-21 09:10: Man power issues / allucent_notes_20251021_145627: Jake Shimmin on 2025-10-21 09:10: Man power issues / allucent_notes: 2025-10-21 09:10 - User: Jake Shimmin - Date Added: 2025-10-21 09:10 - Note: Man power issues
- QTS-46481: allucent_notes_20251216_165335: David Wiltberger on 2025-12-02 13:53: Change sequence for build / Jason Johnston on 2025-12-16 08:43: not started / allucent_notes_20251209_203830: David Wiltberger on 2025-12-02 13:53: Change sequence for build / allucent_notes_20251202_153722: David Wiltberger on 2025-12-02 13:53: Change sequence for build / allucent_notes_20251230_164549: David Wiltberger on 2025-12-02 13:53: Change sequence for build / Jason Johnston on 2025-12-16 08:43: not started / David Wiltberger on 2025-12-30 15:08: Corridor impacted by fire stop work / allucent_notes: 2025-12-02 13:53 - User: David Wiltberger - Date Added: 2025-12-02 13:53 - Note: Change sequence for build / 2025-12-16 08:43 - User: Jason Johnston - Date Added: 2025-12-16 08:43 - Note: not started / 2025-12-30 15:08 - User: David Wiltberger - Date Ad
- QTS-1001040: allucent_notes_20251209_203830: Jason Johnston on 2025-12-09 16:48: RFI changed clips and procurement will delay install of security screen. / allucent_notes: 2025-12-09 16:48 - User: Jason Johnston - Date Added: 2025-12-09 16:48 - Note: RFI changed clips and procurement will delay install of security screen.
- QTS-23701: allucent_notes_20251216_165335: Jason Johnston on 2025-12-09 16:48: RFI changed clips and procurement will delay install of security screen. / Jason Johnston on 2025-12-16 08:41: Started early / Jason Johnston on 2025-12-16 08:41: Taking longer than expected. / allucent_notes_20251209_203830: Jason Johnston on 2025-12-09 16:48: RFI changed clips and procurement will delay install of security screen. / allucent_notes_20251230_164549: Jason Johnston on 2025-12-09 16:48: RFI changed clips and procurement will delay install of security screen. / Jason Johnston on 2025-12-16 08:41: Started early / Jason Johnston on 2025-12-16 08:41: Taking longer than expected. / Jason Johnston on 2025-12-30 16:41: No update / allucent_notes: 2025-12-09 16:48 - User: Jason Johnston - Date Added: 2025-12-09 16:48 - Note: RFI changed clips and procurement will delay install of security screen. / 2025-12-16 08:41 - User: Jason Johnston - Date Added: 2025-12-16 08:41 - Note: Started early / 2025
- QTS-24801: allucent_notes_20251209_203830: Scott Masterson on 2025-11-04 14:11: Need CRAHs set (higher work activities completed) before electrical can start. Need to get estimated date of set. / Jason Johnston on 2025-11-11 16:11: delayed by SWO / David Wiltberger on 2025-12-02 13:53: Change sequence for build / allucent_notes_20251202_153722: Scott Masterson on 2025-11-04 14:11: Need CRAHs set (higher work activities completed) before electrical can start. Need to get estimated date of set. / Jason Johnston on 2025-11-11 16:11: delayed by SWO / David Wiltberger on 2025-12-02 13:53: Change sequence for build / allucent_notes_20251118_192630: Scott Masterson on 2025-11-04 14:11: Need CRAHs set (higher work activities completed) before electrical can start. Need to get estimated date of set. / Jason Johnston on 2025-11-11 16:11: delayed by SWO / allucent_notes_20251111_182405: Scott Masterson on 2025-11-04 14:11: Need CRAHs set (higher work activities completed) before electrical can start. Need to get estimated date of set. / Jason Johnston on 2025-11-11 16:11: delayed by SWO / allucent_notes_20251104_160200: Scott Masterson on 2025-11-04 14:11: Need CRAHs set (higher work activities completed) before electrical can start. Need to get estimated date of set. / allucent_notes: 2025-11-04 14:11 - User: Scott Masterson - Date Added: 2025-11-04 14:11 - Note: Need CRAHs set (higher work activities completed) before electrical can start. Need to get estimated date of set. / 2025-11-11 16:11 - User: Jason Johnston - Date Added: 202
- QTS-24321: Scheduler Notes: 1/20/26: Material needs to be procured.

| ID | WBS | Activity | Duration | Start | Finish | Predecessors | Complete | Planned start | Planned finish | Calendar | Notes | Layton Discipline | Location | Fragnet | Layton Super | Fragnet Responsible Party | TFO-CONST ONLY | Contract | NICK | Allucent CSI Group | Project Section | Phase-1 | Baseline | Level | Phase-1-1 | Project Section-1 | Sort |
| --- | --- | --- | --- | --- | --- | --- | --- | --- | --- | --- | --- | --- | --- | --- | --- | --- | --- | --- | --- | --- | --- | --- | --- | --- | --- | --- | --- |
|  | 1 | **Gallery 2103 Mechanical TFO** |  | 2026-05-07 | 2026-07-01 |  |  |  |  |  |  |  |  |  |  |  |  |  |  |  |  |  |  |  |  |  |  |
|  | 1 | **Fragnet / Glycol Flush** |  | 2026-05-07 | 2026-07-01 |  |  |  |  |  |  |  |  |  |  |  |  |  |  |  |  |  |  |  |  |  |  |
| QTS - 26531 |  | Fragnet // TFO Scope // DH 2100 - 2103 Mechanical Gallery / Glycol Flush | 10d | 2026-05-07 A | 2026-07-01 A | QTS - 3310, QTS - 3320 | 100% | 2026-05-07 | 2026-05-18 | QTS-PHX3 DC1 - 6 day w/ Holidays | Added activity - Glycol Flush | Electrical | DH2100 | Fragnet | Oscar Armenta | Bel-Aire Mechanical. LLC | TFO CONST | TFO | NICK |  |  |  |  |  |  |  |  |
|  | 7 | **Remaining Scope** |  | 2025-12-12 | 2026-07-14 |  |  |  |  |  |  |  |  |  |  |  |  |  |  |  |  |  |  |  |  |  |  |
|  | 10 | **TFO 2103 - CDU Mechanical Gallery** |  | 2025-12-12 | 2026-07-14 |  |  |  |  |  |  |  |  |  |  |  |  |  |  |  |  |  |  |  |  |  |  |
| QTS - 3290 |  | TFO Scope // DH 2100 - 2103 Mechanical Gallery / Install OH Technical Loop Hangers | 5d | 2025-12-12 A | 2025-12-18 A | QTS - 1770, QTS - 2240 | 100% |  |  |  |  | Mechanical |  |  |  |  | TFO CONST | TFO | NICK | 01ADMIN |  |  |  |  |  |  |  |
| QTS - 3310 |  | TFO Scope // DH 2100 - 2103 Mechanical Gallery / OFCI - L2 SET IN PLACE - CDU - 9 units | 3d | 2025-12-16 A | 2025-12-16 A | QTS - 1040 | 100% | 2025-12-16 | 2025-12-18 |  |  | Mechanical |  |  |  |  | TFO CONST | TFO | NICK | 01ADMIN |  |  |  |  |  |  |  |
| QTS - 3330 |  | TFO Scope // DH 2100 - 2103 Mechanical Gallery / Detail & Fabricate CDU Mechanical Connections | 10d | 2026-01-21 A | 2026-02-03 A | QTS - 3310 | 100% | 2026-01-21 | 2026-01-31 | QTS-PHX3 DC1 - 6 day w/ Holidays |  | Mechanical |  |  |  |  | TFO CONST | TFO | NICK |  |  |  |  |  |  |  |  |
| QTS - 3300 |  | TFO Scope // DH 2100 - 2103 Mechanical Gallery / Install OH 8" Technical Loop CDU Piping | 10d | 2026-01-23 A | 2026-05-14 A | QTS - 2610, QTS - 2240, QTS - 2590, QTS - 3290 | 100% | 2026-01-23 | 2026-02-03 | QTS-PHX3 DC1 - 6 day w/ Holidays |  | Mechanical | DH2100 |  |  |  | TFO CONST | TFO | NICK | 01ADMIN |  |  |  |  |  |  |  |
| QTS - 3400 |  | TFO Scope // DH 2100 - 2103 Mechanical Gallery / Pull LV Main / IDF Cabinet to Basket Tray | 7d | 2026-04-15 A | 2026-05-21 A | QTS-24801 | 100% | 2026-04-15 | 2026-04-22 | QTS-PHX3 DC1 - 6 day w/ Holidays |  | LV | DH2100 |  |  |  | TFO CONST | TFO | NICK |  |  |  |  |  |  |  |  |
| QTS - 3320 |  | TFO Scope // DH 2100 - 2103 Mechanical Gallery / Pull Branches From MOD-03 to CDUs | 8d | 2026-04-22 A | 2026-05-14 A | QTS - 3310 | 100% | 2026-04-22 | 2026-04-30 | QTS-PHX3 DC1 - 6 day w/ Holidays |  | Electrical | DH2100 |  |  |  | TFO CONST | TFO | NICK |  |  |  |  |  |  |  |  |
| QTS - 3380 |  | TFO Scope // DH 2100 - 2103 Mechanical Gallery / Fill & Flush Technical Loop A - B | 5d | 2026-06-30 A | 2026-07-07 A | QTS - 3340 | 100% | 2026-07-15 | 2026-07-19 | QTS-PHX3 DC1 - 7 day No Holidays |  | Mechanical | DH2100 |  | Mechanical |  | TFO CONST | TFO | NICK |  |  |  |  |  |  |  |  |
| QTS - 3350 |  | TFO Scope // DH 2100 - 2103 Mechanical Gallery / CDU Unit 4" Mechanical Connections Lineup - C - D | 7d | 2026-07-01 A | 2026-07-07 A | QTS - 3340, QTS - 24931 | 100% | 2026-07-15 | 2026-07-22 | QTS-PHX3 DC1 - 6 day w/ Holidays |  | Mechanical | DH2100 |  | Mechanical |  | TFO CONST | TFO | NICK |  |  |  |  |  |  |  |  |
| QTS - 3340 |  | TFO Scope // DH 2100 - 2103 Mechanical Gallery / CDU Unit 4" Mechanical Connections Lineup - A - B | 7d | 2026-07-06 A | 2026-07-14 A | QTS - 3310, QTS - 3300, QTS - 3330, QTS - 24921 | 100% | 2026-07-15 | 2026-07-22 | QTS-PHX3 DC1 - 6 day w/ Holidays |  | Mechanical | DH2100 |  | Mechanical |  | TFO CONST | TFO | NICK |  |  |  |  |  |  |  |  |
| QTS - 3370 |  | TFO Scope // DH 2100 - 2103 Mechanical Gallery / Terminate & Torque - CDU Connections | 5d | 2026-07-08 A | 2026-07-14 A | QTS - 26531 | 100% | 2026-07-21 | 2026-07-25 | QTS-PHX3 DC1 - 6 day w/ Holidays |  | Electrical | DH2100 |  | Oscar Armenta |  | TFO CONST | TFO | NICK |  |  |  |  |  |  |  |  |
| QTS - 3510 |  | TFO Scope // DH 2100 - 2103 Mechanical Gallery / Final Connection to CDU Lineup - A - B | 1d | 2026-07-08 A | 2026-07-08 A | QTS - 3380 | 100% | 2026-07-20 | 2026-07-20 | QTS-PHX3 DC1 - 6 day w/ Holidays |  | Mechanical | DH2100 |  | Mechanical |  | TFO CONST | TFO | NICK |  |  |  |  |  |  |  |  |
| QTS - 3520 |  | TFO Scope // DH 2100 - 2103 Mechanical Gallery / Fill & Flush Technical Loop C - D | 5d | 2026-07-08 A | 2026-07-14 A | QTS - 3350, QTS - 24931, QTS - 3380 | 100% | 2026-07-23 | 2026-07-27 | QTS-PHX3 DC1 - 7 day No Holidays |  | Mechanical | DH2100 |  | Mechanical |  | TFO CONST | TFO | NICK |  |  |  |  |  |  |  |  |
| QTS - 3530 |  | TFO Scope // DH 2100 - 2103 Mechanical Gallery / Final Connection to CDU Lineup - C - D | 1d | 2026-07-14 A | 2026-07-14 A | QTS - 3520, QTS - 3510 | 100% | 2026-07-15 | 2026-07-15 | QTS-PHX3 DC1 - 6 day w/ Holidays |  | Mechanical | DH2100 |  | Mechanical |  | TFO CONST | TFO | NICK |  |  |  |  |  |  |  |  |
|  | 4 | **DH 2100 / Rooftop Mechanical** |  | 2025-08-11 | 2026-08-28 |  |  |  |  |  |  |  |  |  |  |  |  |  |  |  |  |  |  |  |  |  |  |
| QTS-20761 |  | DH 2100 / Rooftop Mechanical // OFCI - L2 SET IN PLACE - Eq Type # - Chiller #1RT40 - 7 units | 5d | 2025-08-11 A | 2025-08-12 A | QTS-36441, QTS-36371, QTS-36301, QTS-36231, QTS-36161, QTS-19811 FF+2d, QTS-20751, QTS-20691 | 100% | 2025-08-11 | 2025-08-15 |  |  | Mechanical | DH2100 |  |  |  |  | BAB |  | 01ADMIN | Construction | Phase 1 | IGMP | Level 2 |  |  |  |
| QTS-21701 |  | DH 2100 / Rooftop Mechanical // Set Doghouse Curbs | 8d | 2025-09-04 A | 2025-09-08 A | QTS-20771 | 100% | 2025-09-04 | 2025-09-15 |  |  | Electrical | DH2100 |  |  |  |  | BAB |  | 01ADMIN | Construction |  | IGMP | Level 2 | Phase 1 | Construction |  |
| QTS-25191 |  | DH 2100 / Rooftop Mechanical // Set Doghouses | 5d | 2025-09-09 A | 2025-09-16 A | QTS-21701, QTS-19561, QTS-19911 | 100% | 2025-09-16 | 2025-09-22 |  |  | Electrical | DH2100 |  |  |  |  | BAB |  |  | Construction | Phase 1 | IGMP | Level 2 |  |  |  |
| QTS-100110 |  | DH 2100 / Rooftop Mechanical // Install Roof Protection | 2d | 2025-10-22 A | 2025-10-23 A | QTS-42661 | 100% |  |  |  |  | Mechanical | DH2100 |  |  |  |  | BAB |  | 01ADMIN | Construction | Phase 1 | IGMP | Level 2 |  |  |  |
| QTS-100130 |  | DH 2100 / Rooftop Mechanical // Install 12" CHWS/R Run-Outs to RPH Vaults | 13d | 2025-10-24 A | 2025-11-11 A | QTS-100110 | 100% |  |  |  |  | Mechanical | DH2100 |  |  |  |  | BAB |  | 01ADMIN | Construction | Phase 1 | IGMP | Level 2 |  |  |  |
| QTS-100140 |  | DH 2100 / Rooftop Mechanical // Assemble & Install CHWS/R Piping from Mainline Piping to ACC Deck | 23d | 2025-10-24 A | 2026-01-16 A | QTS-100130 SS | 100% | 2025-10-24 | 2025-11-19 | QTS-PHX3 DC1 - 6 day w/ Holidays |  | Mechanical | DH2100 |  |  |  |  | BAB |  | 01ADMIN | Construction | Phase 1 | IGMP | Level 2 |  |  |  |
| QTS-100150 |  | DH 2100 / Rooftop Mechanical // Assemble & Install CHW Pump Assemblies at ACC Deck to Chillers | 28d | 2025-10-24 A | 2025-12-10 A | QTS-100140 SS | 100% | 2025-10-24 | 2025-12-04 |  |  | Mechanical | DH2100 |  |  |  |  | BAB |  | 01ADMIN | Construction | Phase 1 | IGMP | Level 2 |  |  |  |
| QTS-21241 |  | DH 2100 / Rooftop Mechanical // Set Vertical Inline Centrifugal Pumps | 5d | 2025-10-24 A | 2025-12-22 A | QTS-100150 SS, QTS-20761 | 100% | 2025-10-24 | 2025-10-29 | QTS-PHX3 DC1 - 6 day w/ Holidays |  | Mechanical | DH2100 |  |  |  |  | BAB |  | 01ADMIN | Construction | Phase 1 | IGMP | Level 2 |  |  |  |
| QTS-100160 |  | DH 2100 / Rooftop Mechanical // Install Mainline Piping from RPH Vaults to Galleries (Risers) L2 / L1 | 10d | 2025-11-05 A | 2025-11-19 A | QTS-100150 SS+8d | 100% | 2025-11-05 | 2025-11-18 |  |  | Mechanical | DH2100 |  |  |  |  | BAB |  | 01ADMIN | Construction | Phase 1 | IGMP | Level 2 |  |  |  |
| QTS-100190 |  | DH 2100 / Rooftop Mechanical // Install Grating, Toe Kicks, Hand Rails for TES Tanks | 4d | 2025-11-17 A | 2025-12-19 A | QTS-100330 | 100% | 2025-11-17 | 2025-11-20 | QTS-PHX3 DC1 - 6 day w/ Holidays |  | Mechanical | DH2100 |  |  |  |  | BAB |  | 01ADMIN | Construction | Phase 1 | IGMP | Level 2 |  |  |  |
| QTS-100120 |  | DH 2100 / Rooftop Mechanical // Set RPH Vault Housings | 5d | 2025-11-19 A | 2025-11-25 A | QTS-100160 FF+2d | 100% |  |  |  |  | Mechanical | DH2100 |  |  |  |  | BAB |  | 01ADMIN | Construction | Phase 1 | IGMP | Level 2 |  |  |  |
| QTS-100200 |  | DH 2100 / Rooftop Mechanical // OFCI - ROOF SET IN PLACE - Eq Type # - TES Tanks - 7 units | 1d | 2025-12-22 A | 2025-12-22 A | QTS-100190 | 100% |  |  |  |  | Mechanical | DH2100 |  |  |  |  | BAB |  | 01ADMIN | Construction | Phase 1 | IGMP | Level 2 |  |  |  |
| QTS-22371 |  | DH 2100 / Rooftop Mechanical // OFCI - L2 SET IN PLACE - Eq Type # - DOAS-RT2100 - 2 units | 1d | 2026-01-12 A | 2026-01-12 A | QTS-100150 SS+5d, QTS-22251, QTS-22241, QTS-20771, QTS-21651 | 100% |  |  | QTS-PHX3 DC1 - 6 day w/ Holidays |  | Mechanical | DH2100 |  |  |  |  | BAB |  | 01ADMIN | Construction |  | IGMP | Level 2 | Phase 1 | Construction |  |
| QTS-100210 |  | DH 2100 / Rooftop Mechanical // Finalize Detailing for TES Tank CHW Piping/ Fabrication | 7d | 2026-01-21 A | 2026-02-10 A | QTS-100200 | 100% | 2026-01-21 | 2026-01-28 | QTS-PHX3 DC1 - 6 day w/ Holidays |  | Mechanical | DH2100 |  |  |  |  | BAB |  | 01ADMIN | Construction | Phase 1 | IGMP | Level 2 |  |  |  |
| QTS-100170 |  | DH 2100 / Rooftop Mechanical // Rough In Condensate Drain from DOAS | 2d | 2026-02-02 A | 2026-03-30 A | QTS-49411 SS, QTS-22371 | 100% | 2026-02-02 | 2026-02-03 | QTS-PHX3 DC1 - 6 day w/ Holidays |  | Mechanical | DH2100 |  |  |  |  | BAB |  | 01ADMIN | Construction | Phase 1 | IGMP | Level 2 |  |  |  |
| QTS-100230 |  | DH 2100 / Rooftop Mechanical // Pressure Test (Air) Industrial Loop (L1) | 1d | 2026-02-02 A | 2026-02-02 A | QTS-24311, QTS-23971, QTS-100480 FF, QTS-100160, QTS-1005100 FF | 100% |  |  | QTS-PHX3 DC1 - 7 day No Holidays |  | Mechanical | DH2100 |  |  |  |  | BAB |  | 01ADMIN | Construction | Phase 1 | IGMP | Level 2 |  |  |  |
| QTS-100240 |  | DH 2100 / Rooftop Mechanical // Pressure Test (Air) Industrial Loop (L2) | 1d | 2026-02-02 A | 2026-02-02 A | QTS-100230 | 100% |  |  | QTS-PHX3 DC1 - 7 day No Holidays |  | Mechanical | DH2100 |  |  |  |  | BAB |  | 01ADMIN | Construction | Phase 1 | IGMP | Level 2 |  |  |  |
| QTS-49411 |  | DH 2100 / Rooftop Mechanical // Rough In Power from to DOAS | 3d | 2026-02-02 A | 2026-02-06 A | QTS-22371 | 100% | 2026-02-02 | 2026-02-04 | QTS-PHX3 DC1 - 6 day w/ Holidays |  | Mechanical | DH2100 |  |  |  |  | BAB |  | 01ADMIN |  |  |  |  |  |  |  |
| QTS-100260 |  | DH 2100 / Rooftop Mechanical // Install Temp Flush Pump, Power Source for Pump & Other Associated Components | 3d | 2026-02-12 A | 2026-02-23 A | QTS-100110 | 100% | 2026-02-12 | 2026-02-14 | QTS-PHX3 DC1 - 6 day w/ Holidays |  | Mechanical | DH2100 |  |  |  |  | BAB |  | 01ADMIN | Construction | Phase 1 | IGMP | Level 2 |  |  |  |
| QTS-100220 |  | DH 2100 / Rooftop Mechanical // Install CHW Piping - 7 Units | 7d | 2026-02-18 A | 2026-02-23 A | QTS-100120, QTS-100210 FF+7d | 100% | 2026-02-18 | 2026-02-25 | QTS-PHX3 DC1 - 6 day w/ Holidays |  | Mechanical | DH2100 |  |  |  |  | BAB |  | 01ADMIN | Construction | Phase 1 | IGMP | Level 2 |  |  |  |
| QTS-100250 |  | DH 2100 / Rooftop Mechanical // Pressure Test (Air) Industrial Loop (Roof) | 1d | 2026-02-24 A | 2026-02-24 A | QTS-100240, QTS-100220 | 100% |  |  | QTS-PHX3 DC1 - 6 day w/ Holidays |  | Mechanical | DH2100 |  |  |  |  | BAB |  | 01ADMIN | Construction | Phase 1 | IGMP | Level 2 |  |  |  |
| QTS-100270 |  | DH 2100 / Rooftop Mechanical // Hydro-Test (Water) Industrial Loop (L1) | 1d | 2026-03-02 A | 2026-03-02 A | QTS-100260, QTS-100240, QTS-100250 | 100% |  |  | QTS-PHX3 DC1 - 6 day w/ Holidays |  | Mechanical | DH2100 |  |  |  |  | BAB |  | 01ADMIN | Construction | Phase 1 | IGMP | Level 2 |  |  |  |
| QTS-100280 |  | DH 2100 / Rooftop Mechanical // Hydro-Test (Water) Industrial Loop (L2) | 1d | 2026-03-03 A | 2026-03-03 A | QTS-100270 | 100% |  |  | QTS-PHX3 DC1 - 6 day w/ Holidays |  | Mechanical | DH2100 |  |  |  |  | BAB |  | 01ADMIN | Construction | Phase 1 | IGMP | Level 2 |  |  |  |
| QTS-100300 |  | DH 2100 / Rooftop Mechanical // Fill and Flush Industrial Loop (Zone 1 - All Levels) | 10d | 2026-03-04 A | 2026-03-31 A | QTS-100280 | 100% | 2026-03-04 | 2026-03-13 | QTS-PHX3 DC1 - 7 day No Holidays |  | Mechanical | DH2100 |  |  |  |  | BAB |  | 01ADMIN | Construction | Phase 1 | IGMP | Level 2 |  |  | x |
| QTS-1005240 |  | DH 2100 / Rooftop Mechanical // De-install Temp Flush Pump - Zone 1 | 3d | 2026-05-13 A | 2026-06-01 A | QTS-100300 | 100% | 2026-05-13 | 2026-05-15 | QTS-PHX3 DC1 - 6 day w/ Holidays |  | Mechanical | DH2100 |  | Mechanical |  |  | BAB |  | 01ADMIN | Construction | Phase 1 | IGMP | Level 2 |  |  |  |

Notes:
- QTS - 26531: Scheduler Notes: Added activity - Glycol Flush
- QTS - 3290: allucent_notes_20251216_165335: David Wiltberger on 2025-12-09 16:02: adjust to hang Qcools in 1100 / allucent_notes_20251209_203830: David Wiltberger on 2025-12-09 16:02: adjust to hang Qcools in 1100 / allucent_notes_20251230_164549: David Wiltberger on 2025-12-09 16:02: adjust to hang Qcools in 1100 / allucent_notes: 2025-12-09 16:02 - User: David Wiltberger - Date Added: 2025-12-09 16:02 - Note: adjust to hang Qcools in 1100
- QTS - 3300: allucent_notes_20251230_164549: David Wiltberger on 2025-12-30 16:29: bulletin 1 impact / allucent_notes: 2025-12-30 16:29 - User: David Wiltberger - Date Added: 2025-12-30 16:29 - Note: bulletin 1 impact
- QTS-20761: allucent_notes: David Wiltberger on 2025-07-31T11:10:41.432Z: Crane will not be on site until 8-5 with some assembly required / allucent_notes: 2025-07-31T11:10:41.432Z - User: David Wiltberger - Date Added: 2025-07-31T11:10:41.432Z - Note: Crane will not be on site until 8-5 with some assembly required / 2025-08-12 10:08 - User: David Wiltberger - Date Added: 2025-08-12 10:08 - Note: Started ea
- QTS-100110: allucent_notes_20251014_152335: David Wiltberger on 2025-08-19 09:08: changed pick order / David Wiltberger on 2025-09-02 10:09: Moving to accommodate roofing in Zone 1 / David Wiltberger on 2025-09-24 04:09: BAM not completed Potential Delay / David Wiltberger on 2025-09-30 12:09: BAM did not complete / David Wiltberger on 2025-10-14 10:10: set on recovery schedule / allucent_notes: David Wiltberger on 2025-08-19 09:08: changed pick order / allucent_notes: 2025-08-19 09:08 - User: David Wiltberger - Date Added: 2025-08-19 09:08 - Note: changed pick order / 2025-09-02 10:09 - User: David Wiltberger - Date Added: 2025-09-02 10:09 - Note: Moving to accommodate roofing in Zone 1 / 2025-09-24 04:09 - User: Dav
- QTS-100130: allucent_notes_20251014_152335: David Wiltberger on 2025-08-19 09:08: changed pick order / David Wiltberger on 2025-09-02 10:09: Moving to accommodate roofing in Zone 1 / David Wiltberger on 2025-09-24 04:09: BAM not completed Potential Delay / David Wiltberger on 2025-09-30 12:09: BAM did not complete / David Wiltberger on 2025-10-14 10:10: set on recovery schedule / allucent_notes: David Wiltberger on 2025-08-19 09:08: changed pick order / allucent_notes: 2025-08-19 09:08 - User: David Wiltberger - Date Added: 2025-08-19 09:08 - Note: changed pick order / 2025-09-02 10:09 - User: David Wiltberger - Date Added: 2025-09-02 10:09 - Note: Moving to accommodate roofing in Zone 1 / 2025-09-24 04:09 - User: Dav
- QTS-100140: allucent_notes_20251216_165335: David Wiltberger on 2025-12-02 06:44: BAM install impacted by TES tank TFO / allucent_notes_20251209_203830: David Wiltberger on 2025-12-02 06:44: BAM install impacted by TES tank TFO / allucent_notes_20251202_153722: David Wiltberger on 2025-12-02 06:44: BAM install impacted by TES tank TFO / allucent_notes_20251014_152335: David Wiltberger on 2025-08-19 09:08: changed pick order / David Wiltberger on 2025-09-02 10:09: Moving to accommodate roofing in Zone 1 / David Wiltberger on 2025-09-24 04:09: BAM not completed Potential Delay / David Wiltberger on 2025-09-30 12:09: BAM did not complete / David Wiltberger on 2025-10-14 10:10: set on recovery schedule / allucent_notes: David Wiltberger on 2025-08-19 09:08: changed pick order / allucent_notes_20251230_164549: David Wiltberger on 2025-12-02 06:44: BAM install impacted by TES tank TFO / David Wiltberger on 2025-12-30 15:24: roof install impacted time / allucent_notes: 2025-12-02 06:44 - User: David Wiltberger - Date Added: 2025-12-02 06:44 - Note: BAM install impacted by TES tank TFO / 2025-12-30 15:24 - User: David Wiltberger - Date Added: 2025-12-30 15:24 - Note: roof install impacted time
- QTS-100150: allucent_notes_20251216_165335: Jason Johnston on 2025-12-09 20:30: Need update from team / allucent_notes_20251209_203830: Jason Johnston on 2025-12-09 20:30: Need update from team / allucent_notes_20251014_152335: David Wiltberger on 2025-08-19 09:08: changed pick order / David Wiltberger on 2025-09-02 10:09: Moving to accommodate roofing in Zone 1 / David Wiltberger on 2025-09-24 04:09: BAM not completed Potential Delay / David Wiltberger on 2025-09-30 12:09: BAM did not complete / David Wiltberger on 2025-10-14 10:10: set on recovery schedule / allucent_notes: David Wiltberger on 2025-08-19 09:08: changed pick order / allucent_notes: 2025-12-09 20:30 - User: Jason Johnston - Date Added: 2025-12-09 20:30 - Note: Need update from team
- QTS-21241: allucent_notes_20251216_165335: David Wiltberger on 2025-08-19 09:08: changed pick order / David Wiltberger on 2025-09-02 10:09: Moving to accommodate roofing in Zone 1 / David Wiltberger on 2025-09-24 04:09: BAM not completed Potential Delay / David Wiltberger on 2025-09-30 12:09: BAM did not complete / David Wiltberger on 2025-10-14 10:10: set on recovery schedule / David Wiltberger on 2025-11-04 14:11: impacted by lack of roof protection / Jason Johnston on 2025-11-11 16:11: tie to acc deck assemble and install. / David Wiltberger on 2025-12-02 06:44: BAM timing with crane pick impacted by TES tanks / allucent_notes_20251209_203830: David Wiltberger on 2025-08-19 09:08: changed pick order / David Wiltberger on 2025-09-02 10:09: Moving to accommodate roofing in Zone 1 / David Wiltberger on 2025-09-24 04:09: BAM not completed Potential Delay / David Wiltberger on 2025-09-30 12:09: BAM did not complete / David Wiltberger on 2025-10-14 10:10: set on recovery schedule / David Wiltberger on 2025-11-04 14:11: impacted by lack of roof protection / Jason Johnston on 2025-11-11 16:11: tie to acc deck assemble and install. / David Wiltberger on 2025-12-02 06:44: BAM timing with crane pick impacted by TES tanks / allucent_notes_20251202_153722: David Wiltberger on 2025-08-19 09:08: changed pick order / David Wiltberger on 2025-09-02 10:09: Moving to accommodate roofing in Zone 1 / David Wiltberger on 2025-09-24 04:09: BAM not completed Potential Delay / David Wiltberger on 2025-09-30 12:09: BAM did not complete / David Wiltberger on 2025-10-14 10:10: set on recovery schedule / David Wiltberger on 2025-11-04 14:11: impacted by lack of roof protection / Jason Johnston on 2025-11-11 16:11: tie to acc deck assemble and install. / David Wiltberger on 2025-12-02 06:44: BAM timing with crane pick impacted by TES tanks / allucent_notes_20251118_192630: David Wiltberger on 2025-08-19 09:08: changed pick order / David Wiltberger on 2025-09-02 10:09: Moving to accommodate roofing in Zone 1 / David Wiltberger on 2025-09-24 04:09: BAM not completed Potential Delay / David Wiltberger on 2025-09-30 12:09: BAM did not complete / David Wiltberger on 2025-10-14 10:10: set on recovery schedule / David Wiltberger on 2025-11-04 14:11: impacted by lack of roof protection / Jason Johnston on 2025-11-11 16:11: tie to acc deck assemble and install. / allucent_notes_20251111_182405: David Wiltberger on 2025-08-19 09:08: changed pick order / David Wiltberger on 2025-09-02 10:09: Moving to accommodate roofing in Zone 1 / David Wiltberger on 2025-09-24 04:09: BAM not completed Potential Delay / David Wiltberger on 2025-09-30 12:09: BAM did not complete / David Wiltberger on 2025-10-14 10:10: set on recovery schedule / David Wiltberger on 2025-11-04 14:11: impacted by lack of roof protection / Jason Johnston on 2025-11-11 16:11: tie to acc deck assemble and install. / allucent_notes_20251104_160200: David Wiltberger on 2025-08-19 09:08: changed pick order / David Wiltberger on 2025-09-02 10:09: Moving to accommodate roofing in Zone 1 / David Wiltberger on 2025-09-24 04:09: BAM not completed Potential Delay / David Wiltberger on 2025-09-30 12:09: BAM did not complete / David Wiltberger on 2025-10-14 10:10: set on recovery schedule / David Wiltberger on 2025-11-04 14:11: impacted by lack of roof protection / allucent_notes_20251028_163138: David Wiltberger on 2025-08-19 09:08: changed pick order / David Wiltberger on 2025-09-02 10:09: Moving to accommodate roofing in Zone 1 / David Wiltberger on 2025-09-24 04:09: BAM not completed Potential Delay / David Wiltberger on 2025-09-30 12:09: BAM did not complete / David Wiltberger on 2025-10-14 10:10: set on recovery schedule / allucent_notes_20251027_224008: David Wiltberger on 2025-08-19 09:08: changed pick order / David Wiltberger on 2025-09-02 10:09: Moving to accommodate roofing in Zone 1 / David Wiltberger on 2025-09-24 04:09: BAM not completed Potential Delay / David Wiltberger on 2025-09-30 12:09: BAM did not complete / David Wiltberger on 2025-10-14 10:10: set on recovery schedule / allucent_notes_20251021_145627: David Wiltberger on 2025-08-19 09:08: changed pick order / David Wiltberger on 2025-09-02 10:09: Moving to accommodate roofing in Zone 1 / David Wiltberger on 2025-09-24 04:09: BAM not completed Potential Delay / David Wiltberger on 2025-09-30 12:09: BAM did not complete / David Wiltberger on 2025-10-14 10:10: set on recovery schedule / allucent_notes_20251014_152335: David Wiltberger on 2025-08-19 09:08: changed pick order / David Wiltberger on 2025-09-02 10:09: Moving to accommodate roofing in Zone 1 / David Wiltberger on 2025-09-24 04:09: BAM not completed Potential Delay / David Wiltberger on 2025-09-30 12:09: BAM did not complete / David Wiltberger on 2025-10-14 10:10: set on recovery schedule / allucent_notes: David Wiltberger on 2025-08-19 09:08: changed pick order / allucent_notes_20251230_164549: David Wiltberger on 2025-08-19 09:08: changed pick order / David Wiltberger on 2025-09-02 10:09: Moving to accommodate roofing in Zone 1 / David Wiltberger on 2025-09-24 04:09: BAM not completed Potential Delay / David Wiltberger on 2025-09-30 12:09: BAM did not complete / David Wiltberger on 2025-10-14 10:10: set on recovery schedule / David Wiltberger on 2025-11-04 14:11: impacted by lack of roof protection / Jason Johnston on 2025-11-11 16:11: tie to acc deck assemble and install. / David Wiltberger on 2025-12-02 06:44: BAM timing with crane pick impacted by TES tanks / David Wiltberger on 2025-12-30 15:24: roof install impacted time / allucent_notes: 2025-08-19 09:08 - User: David Wiltberger - Date Added: 2025-08-19 09:08 - Note: changed pick order / 2025-09-02 10:09 - User: David Wiltberger - Date Added: 2025-09-02 10:09 - Note: Moving to accommodate roofing in Zone 1 / 2025-09-24 04:09 - User: Dav
- QTS-100160: allucent_notes_20251014_152335: David Wiltberger on 2025-08-19 09:08: changed pick order / David Wiltberger on 2025-09-02 10:09: Moving to accommodate roofing in Zone 1 / David Wiltberger on 2025-09-24 04:09: BAM not completed Potential Delay / David Wiltberger on 2025-09-30 12:09: BAM did not complete / David Wiltberger on 2025-10-14 10:10: set on recovery schedule / allucent_notes: David Wiltberger on 2025-08-19 09:08: changed pick order / allucent_notes: 2025-08-19 09:08 - User: David Wiltberger - Date Added: 2025-08-19 09:08 - Note: changed pick order / 2025-09-02 10:09 - User: David Wiltberger - Date Added: 2025-09-02 10:09 - Note: Moving to accommodate roofing in Zone 1 / 2025-09-24 04:09 - User: Dav
- QTS-100190: allucent_notes_20251216_165335: David Wiltberger on 2025-12-02 06:45: Grating install not complete for installation / allucent_notes_20251209_203830: David Wiltberger on 2025-12-02 06:45: Grating install not complete for installation / allucent_notes_20251202_153722: David Wiltberger on 2025-12-02 06:45: Grating install not complete for installation / allucent_notes_20251014_152335: David Wiltberger on 2025-08-19 09:08: changed pick order / David Wiltberger on 2025-09-02 10:09: Moving to accommodate roofing in Zone 1 / David Wiltberger on 2025-09-24 04:09: BAM not completed Potential Delay / David Wiltberger on 2025-09-30 12:09: BAM did not complete / David Wiltberger on 2025-10-14 10:10: set on recovery schedule / allucent_notes: David Wiltberger on 2025-08-19 09:08: changed pick order / allucent_notes_20251230_164549: David Wiltberger on 2025-12-02 06:45: Grating install not complete for installation / David Wiltberger on 2025-12-30 15:39: TES tanks put on backwards / allucent_notes: 2025-12-02 06:45 - User: David Wiltberger - Date Added: 2025-12-02 06:45 - Note: Grating install not complete for installation / 2025-12-30 15:39 - User: David Wiltberger - Date Added: 2025-12-30 15:39 - Note: TES tanks put on backwards
- QTS-100120: allucent_notes_20251202_153722: David Wiltberger on 2025-11-17 16:11: out of sequence / allucent_notes_20251118_192630: David Wiltberger on 2025-11-17 16:11: out of sequence / allucent_notes_20251014_152335: David Wiltberger on 2025-08-19 09:08: changed pick order / David Wiltberger on 2025-09-02 10:09: Moving to accommodate roofing in Zone 1 / David Wiltberger on 2025-09-24 04:09: BAM not completed Potential Delay / David Wiltberger on 2025-09-30 12:09: BAM did not complete / David Wiltberger on 2025-10-14 10:10: set on recovery schedule / allucent_notes: David Wiltberger on 2025-08-19 09:08: changed pick order / allucent_notes: 2025-11-17 16:11 - User: David Wiltberger - Date Added: 2025-11-17 16:11 - Note: out of sequence
- QTS-100200: allucent_notes_20251014_152335: David Wiltberger on 2025-08-19 09:08: changed pick order / David Wiltberger on 2025-09-02 10:09: Moving to accommodate roofing in Zone 1 / David Wiltberger on 2025-09-24 04:09: BAM not completed Potential Delay / David Wiltberger on 2025-09-30 12:09: BAM did not complete / David Wiltberger on 2025-10-14 10:10: set on recovery schedule / allucent_notes: David Wiltberger on 2025-08-19 09:08: changed pick order / allucent_notes: 2025-08-19 09:08 - User: David Wiltberger - Date Added: 2025-08-19 09:08 - Note: changed pick order / 2025-09-02 10:09 - User: David Wiltberger - Date Added: 2025-09-02 10:09 - Note: Moving to accommodate roofing in Zone 1 / 2025-09-24 04:09 - User: Dav
- QTS-22371: allucent_notes_20251216_165335: David Wiltberger on 2025-11-17 16:11: out of sequence / allucent_notes_20251209_203830: David Wiltberger on 2025-11-17 16:11: out of sequence / allucent_notes_20251202_153722: David Wiltberger on 2025-11-17 16:11: out of sequence / allucent_notes_20251118_192630: David Wiltberger on 2025-11-17 16:11: out of sequence / allucent_notes_20251230_164549: David Wiltberger on 2025-11-17 16:11: out of sequence / David Wiltberger on 2025-12-30 15:23: Ability to set with Crane restricted Task does not impact Data Hall work / allucent_notes: 2025-11-17 16:11 - User: David Wiltberger - Date Added: 2025-11-17 16:11 - Note: out of sequence / 2025-12-30 15:23 - User: David Wiltberger - Date Added: 2025-12-30 15:23 - Note: Ability to set with Crane restricted Task does not impact Data Hall work
- QTS-100210: allucent_notes_20251014_152335: David Wiltberger on 2025-08-19 09:08: changed pick order / David Wiltberger on 2025-09-02 10:09: Moving to accommodate roofing in Zone 1 / David Wiltberger on 2025-09-24 04:09: BAM not completed Potential Delay / David Wiltberger on 2025-09-30 12:09: BAM did not complete / David Wiltberger on 2025-10-14 10:10: set on recovery schedule / allucent_notes: David Wiltberger on 2025-08-19 09:08: changed pick order / allucent_notes_20251230_164549: David Wiltberger on 2025-12-30 15:25: delayed for improper tes install / allucent_notes: 2025-12-30 15:25 - User: David Wiltberger - Date Added: 2025-12-30 15:25 - Note: delayed for improper tes install
- QTS-100170: allucent_notes_20251014_152335: David Wiltberger on 2025-08-19 09:08: changed pick order / David Wiltberger on 2025-09-02 10:09: Moving to accommodate roofing in Zone 1 / David Wiltberger on 2025-09-24 04:09: BAM not completed Potential Delay / David Wiltberger on 2025-09-30 12:09: BAM did not complete / David Wiltberger on 2025-10-14 10:10: set on recovery schedule / allucent_notes: David Wiltberger on 2025-08-19 09:08: changed pick order / allucent_notes: 2025-08-19 09:08 - User: David Wiltberger - Date Added: 2025-08-19 09:08 - Note: changed pick order / 2025-09-02 10:09 - User: David Wiltberger - Date Added: 2025-09-02 10:09 - Note: Moving to accommodate roofing in Zone 1 / 2025-09-24 04:09 - User: Dav
- QTS-100230: allucent_notes_20251014_152335: David Wiltberger on 2025-08-19 09:08: changed pick order / David Wiltberger on 2025-09-02 10:09: Moving to accommodate roofing in Zone 1 / David Wiltberger on 2025-09-24 04:09: BAM not completed Potential Delay / David Wiltberger on 2025-09-30 12:09: BAM did not complete / David Wiltberger on 2025-10-14 10:10: set on recovery schedule / allucent_notes: David Wiltberger on 2025-08-19 09:08: changed pick order / allucent_notes: 2025-08-19 09:08 - User: David Wiltberger - Date Added: 2025-08-19 09:08 - Note: changed pick order / 2025-09-02 10:09 - User: David Wiltberger - Date Added: 2025-09-02 10:09 - Note: Moving to accommodate roofing in Zone 1 / 2025-09-24 04:09 - User: Dav
- QTS-100240: allucent_notes_20251014_152335: David Wiltberger on 2025-08-19 09:08: changed pick order / David Wiltberger on 2025-09-02 10:09: Moving to accommodate roofing in Zone 1 / David Wiltberger on 2025-09-24 04:09: BAM not completed Potential Delay / David Wiltberger on 2025-09-30 12:09: BAM did not complete / David Wiltberger on 2025-10-14 10:10: set on recovery schedule / allucent_notes: David Wiltberger on 2025-08-19 09:08: changed pick order / allucent_notes: 2025-08-19 09:08 - User: David Wiltberger - Date Added: 2025-08-19 09:08 - Note: changed pick order / 2025-09-02 10:09 - User: David Wiltberger - Date Added: 2025-09-02 10:09 - Note: Moving to accommodate roofing in Zone 1 / 2025-09-24 04:09 - User: Dav
- QTS-100260: allucent_notes_20251014_152335: David Wiltberger on 2025-08-19 09:08: changed pick order / David Wiltberger on 2025-09-02 10:09: Moving to accommodate roofing in Zone 1 / David Wiltberger on 2025-09-24 04:09: BAM not completed Potential Delay / David Wiltberger on 2025-09-30 12:09: BAM did not complete / David Wiltberger on 2025-10-14 10:10: set on recovery schedule / allucent_notes: David Wiltberger on 2025-08-19 09:08: changed pick order / allucent_notes: 2025-08-19 09:08 - User: David Wiltberger - Date Added: 2025-08-19 09:08 - Note: changed pick order / 2025-09-02 10:09 - User: David Wiltberger - Date Added: 2025-09-02 10:09 - Note: Moving to accommodate roofing in Zone 1 / 2025-09-24 04:09 - User: Dav
- QTS-100220: allucent_notes_20251014_152335: David Wiltberger on 2025-08-19 09:08: changed pick order / David Wiltberger on 2025-09-02 10:09: Moving to accommodate roofing in Zone 1 / David Wiltberger on 2025-09-24 04:09: BAM not completed Potential Delay / David Wiltberger on 2025-09-30 12:09: BAM did not complete / David Wiltberger on 2025-10-14 10:10: set on recovery schedule / allucent_notes: David Wiltberger on 2025-08-19 09:08: changed pick order / allucent_notes: 2025-08-19 09:08 - User: David Wiltberger - Date Added: 2025-08-19 09:08 - Note: changed pick order / 2025-09-02 10:09 - User: David Wiltberger - Date Added: 2025-09-02 10:09 - Note: Moving to accommodate roofing in Zone 1 / 2025-09-24 04:09 - User: Dav
- QTS-100250: allucent_notes_20251014_152335: David Wiltberger on 2025-08-19 09:08: changed pick order / David Wiltberger on 2025-09-02 10:09: Moving to accommodate roofing in Zone 1 / David Wiltberger on 2025-09-24 04:09: BAM not completed Potential Delay / David Wiltberger on 2025-09-30 12:09: BAM did not complete / David Wiltberger on 2025-10-14 10:10: set on recovery schedule / allucent_notes: David Wiltberger on 2025-08-19 09:08: changed pick order / allucent_notes: 2025-08-19 09:08 - User: David Wiltberger - Date Added: 2025-08-19 09:08 - Note: changed pick order / 2025-09-02 10:09 - User: David Wiltberger - Date Added: 2025-09-02 10:09 - Note: Moving to accommodate roofing in Zone 1 / 2025-09-24 04:09 - User: Dav
- QTS-100270: allucent_notes_20251014_152335: David Wiltberger on 2025-08-19 09:08: changed pick order / David Wiltberger on 2025-09-02 10:09: Moving to accommodate roofing in Zone 1 / David Wiltberger on 2025-09-24 04:09: BAM not completed Potential Delay / David Wiltberger on 2025-09-30 12:09: BAM did not complete / David Wiltberger on 2025-10-14 10:10: set on recovery schedule / allucent_notes: David Wiltberger on 2025-08-19 09:08: changed pick order / allucent_notes: 2025-08-19 09:08 - User: David Wiltberger - Date Added: 2025-08-19 09:08 - Note: changed pick order / 2025-09-02 10:09 - User: David Wiltberger - Date Added: 2025-09-02 10:09 - Note: Moving to accommodate roofing in Zone 1 / 2025-09-24 04:09 - User: Dav
- QTS-100280: allucent_notes_20251014_152335: David Wiltberger on 2025-08-19 09:08: changed pick order / David Wiltberger on 2025-09-02 10:09: Moving to accommodate roofing in Zone 1 / David Wiltberger on 2025-09-24 04:09: BAM not completed Potential Delay / David Wiltberger on 2025-09-30 12:09: BAM did not complete / David Wiltberger on 2025-10-14 10:10: set on recovery schedule / allucent_notes: David Wiltberger on 2025-08-19 09:08: changed pick order / allucent_notes: 2025-08-19 09:08 - User: David Wiltberger - Date Added: 2025-08-19 09:08 - Note: changed pick order / 2025-09-02 10:09 - User: David Wiltberger - Date Added: 2025-09-02 10:09 - Note: Moving to accommodate roofing in Zone 1 / 2025-09-24 04:09 - User: Dav
- QTS-100300: allucent_notes_20251014_152335: David Wiltberger on 2025-08-19 09:08: changed pick order / David Wiltberger on 2025-09-02 10:09: Moving to accommodate roofing in Zone 1 / David Wiltberger on 2025-09-24 04:09: BAM not completed Potential Delay / David Wiltberger on 2025-09-30 12:09: BAM did not complete / David Wiltberger on 2025-10-14 10:10: set on recovery schedule / allucent_notes: David Wiltberger on 2025-08-19 09:08: changed pick order / allucent_notes: 2025-08-19 09:08 - User: David Wiltberger - Date Added: 2025-08-19 09:08 - Note: changed pick order / 2025-09-02 10:09 - User: David Wiltberger - Date Added: 2025-09-02 10:09 - Note: Moving to accommodate roofing in Zone 1 / 2025-09-24 04:09 - User: Dav
- QTS-1005240: allucent_notes_20251014_152335: David Wiltberger on 2025-08-19 09:08: changed pick order / David Wiltberger on 2025-09-02 10:09: Moving to accommodate roofing in Zone 1 / David Wiltberger on 2025-09-24 04:09: BAM not completed Potential Delay / David Wiltberger on 2025-09-30 12:09: BAM did not complete / David Wiltberger on 2025-10-14 10:10: set on recovery schedule / allucent_notes: David Wiltberger on 2025-08-19 09:08: changed pick order / allucent_notes: 2025-08-19 09:08 - User: David Wiltberger - Date Added: 2025-08-19 09:08 - Note: changed pick order / 2025-09-02 10:09 - User: David Wiltberger - Date Added: 2025-09-02 10:09 - Note: Moving to accommodate roofing in Zone 1 / 2025-09-24 04:09 - User: Dav

| ID | WBS | Activity | Duration | Start | Finish | Predecessors | Complete | Remaining | Planned start | Planned finish | Total float | Free float | Allucent CSI Group | Project Section | Phase-1 | Layton Discipline | Baseline | Location | Level | Fragnet | Owner Impact Analysis | Fragnet Responsible Party | Contract | Layton Super | Phase-1-1 | Project Section-1 | TFO-CONST ONLY | NICK |
| --- | --- | --- | --- | --- | --- | --- | --- | --- | --- | --- | --- | --- | --- | --- | --- | --- | --- | --- | --- | --- | --- | --- | --- | --- | --- | --- | --- | --- |
|  | 1 | **Fragnet Bulletin 4 Grating** |  | 2025-10-10 | 2026-08-28 |  |  |  |  |  |  |  |  |  |  |  |  |  |  |  |  |  |  |  |  |  |  |  |
| QTS-1001650 |  | Fragnet / DH 2100 / Rooftop Mechanical // Bulletin 4 Received by Layton | 1d | 2025-10-10 A | 2025-10-10 A | QTS-1371 SS | 100% |  |  |  |  |  | 01ADMIN | Construction | Phase 1 | Mechanical | IGMP | DH2100 | Level 2 | Fragnet | Y | Bel-Aire Mechanical. LLC | BAB |  |  |  |  |  |
| QTS-1001670 |  | Fragnet / DH 2100 / Rooftop Mechanical // Updated Bulletin 4 Received by Layton | 3d | 2025-10-13 A | 2025-10-15 A | QTS-1001650 | 100% |  | 2025-10-10 | 2025-10-14 |  |  | 01ADMIN | Construction | Phase 1 | Mechanical | IGMP | DH2100 | Level 2 | Fragnet | Y | Bel-Aire Mechanical. LLC | BAB |  |  |  |  |  |
| QTS-1001680 |  | Fragnet / DH 2100 / Rooftop Mechanical // Layton Submitting Shop Drawings to QTS Design (DLB) | 23d | 2025-10-16 A | 2025-11-17 A | QTS-1001670 | 100% |  | 2025-10-10 | 2025-11-11 |  |  | 01ADMIN | Construction | Phase 1 | Mechanical | IGMP | DH2100 | Level 2 | Fragnet | Y | Bel-Aire Mechanical. LLC | BAB |  |  |  |  |  |
| QTS-1001690 |  | Fragnet / DH 2100 / Rooftop Mechanical // Layton Submitting Shop Drawings to QTS Design (Corgan) | 23d | 2025-11-18 A | 2025-12-09 A | QTS-1001680 | 100% |  | 2025-10-10 | 2025-11-11 |  |  | 01ADMIN | Construction | Phase 1 | Mechanical | IGMP | DH2100 | Level 2 | Fragnet | Y | Bel-Aire Mechanical. LLC | BAB |  |  |  |  |  |
| QTS-1001700 |  | Fragnet / DH 2100 / Rooftop Mechanical // QTS Design Response for Grating | 10d | 2025-12-10 A | 2026-01-27 A | QTS-1001690 | 100% |  | 2025-10-10 | 2025-10-23 |  |  | 01ADMIN | Construction | Phase 1 | Core & Shell | IGMP | DH2100 | Level 2 | Fragnet | Y | Bel-Aire Mechanical. LLC | BAB |  |  |  |  |  |
| QTS-1004860 |  | Fragnet / DH 2100 / Rooftop Mechanical // Procure Grating, Toe Kicks, And Hand Rails | 25d | 2026-02-03 A | 2026-04-30 A | QTS-1001700, QTS-1009900 FF+4d | 100% |  | 2026-02-03 | 2026-03-09 |  |  | 01ADMIN | Construction | Phase 1 | Build Out | IGMP | DH2100 | Level 2 | Fragnet | Y | SteelFab Texas Inc. | BAB | Sage Fundingsland |  |  |  |  |
| QTS-1009900 |  | Fragnet / DH 2100 / Rooftop Mechanical // Change Order for Grating Install | 25d | 2026-04-01 A | 2026-04-24 A | QTS-1371 SS | 100% |  | 2026-02-03 | 2026-03-09 |  |  | 01ADMIN | Construction | Phase 1 | Core & Shell | IGMP | DH2100 | Level 2 | Fragnet | Y | SteelFab Texas Inc. | BAB |  |  |  |  |  |
| QTS-1009930 |  | Fragnet / DH 2100 / Rooftop Mechanical // Subcontractor and Crane Mobilization | 15d | 2026-04-27 A | 2026-06-01 A | QTS-1009900 | 100% |  | 2026-04-27 | 2026-05-15 |  |  | 01ADMIN | Construction | Phase 1 | Mechanical | IGMP | DH2100 | Level 2 | Fragnet | Y | SteelFab Texas Inc. | BAB | Mechanical |  |  |  |  |
| QTS-1001660 |  | Fragnet / DH 2100 / Rooftop Mechanical // Install Grating, Toe Kicks, Hand Rails to Complete Chiller Deck | 10d | 2026-07-14 A | 2026-08-28 | QTS-1001700, QTS-1004860, QTS-1009900, QTS-1009930 | 20% | 8d | 2026-07-15 | 2026-07-28 | -63d | 0d | 01ADMIN | Construction | Phase 1 | Mechanical | IGMP | DH2100 | Level 2 | Fragnet | Y | SteelFab Texas Inc. | BAB | Bobby Martinez |  |  |  |  |
|  | 2 | **Remaining Scope** |  |  |  |  |  |  |  |  |  |  |  |  |  |  |  |  |  |  |  |  |  |  |  |  |  |  |
|  | 5 | **DH 2100 / Mechanical Yard Buildout** |  | 2025-09-05 | 2026-03-30 |  |  |  |  |  |  |  |  |  |  |  |  |  |  |  |  |  |  |  |  |  |  |  |
| QTS-42271 |  | DH 2100 / Mechanical Yard // Excavate for MV Conduits | 5d | 2025-09-05 A | 2025-09-11 A | QTS-42681 SS+7d, QTS-49441, QTS-19811 | 100% |  |  |  |  |  | 01ADMIN | Construction |  | Core & Shell | IGMP | Gen Yard | Level 2 |  |  |  | BAB |  | Phase 1 | Construction |  |  |
| QTS-20781 |  | DH 2100 / Mechanical Yard // Prep for Pier Footings | 3d | 2025-09-09 A | 2025-09-11 A | QTS-19811 | 100% |  |  |  |  |  |  | Construction | Phase 1 | Core & Shell | IGMP | Gen Yard | Level 2 |  |  |  | BAB |  |  |  |  |  |
| QTS-21481 |  | DH 2100 / Mechanical Yard // Form, Reinforce, & Pour 24" Diameter Piers #1 | 6d | 2025-09-12 A | 2025-09-19 A | QTS-20781 | 100% |  |  |  |  |  |  | Construction | Phase 1 | Core & Shell | IGMP | Gen Yard | Level 2 |  |  |  | BAB |  |  |  |  |  |
| QTS-42281 |  | DH 2100 / Mechanical Yard // Install Conduit for MV Cables | 7d | 2025-09-12 A | 2025-09-24 A | QTS-42271 | 100% |  | 2025-09-12 | 2025-09-22 |  |  | 01ADMIN | Construction |  | Core & Shell | IGMP | Gen Yard | Level 2 |  |  |  | BAB |  | Phase 1 | Construction |  |  |
| QTS-42791 |  | DH 2100 / Mechanical Yard // Form, Reinforce, & Pour 24" Diameter Piers #2 | 5d | 2025-09-22 A | 2025-10-07 A | QTS-21481 | 100% |  | 2025-09-22 | 2025-09-26 |  |  |  | Construction |  | Core & Shell | IGMP | Gen Yard | Level 2 |  |  |  | BAB |  | Phase 1 | Construction |  |  |
| QTS-23001 |  | DH 2100 / Mechanical Yard // Form, Reinforce, & Pour Thickened Slab On Grade for Transformers | 9d | 2025-09-23 A | 2025-10-13 A | QTS-42791 SS+1d | 100% |  | 2025-09-23 | 2025-10-03 |  |  | 01ADMIN | Construction | Phase 1 | Core & Shell | IGMP | Gen Yard | Level 2 |  |  |  | BAB |  |  |  |  |  |
| QTS-42291 |  | DH 2100 / Mechanical Yard // Slurry for MV Conduits | 5d | 2025-09-24 A | 2025-09-30 A | QTS-42281 FF+3d | 100% |  |  |  |  |  | 01ADMIN | Construction |  | Core & Shell | IGMP | Gen Yard | Level 2 |  |  |  | BAB |  | Phase 1 | Construction |  |  |
| QTS-42301 |  | DH 2100 / Mechanical Yard // Backfill Conduit for MV Cables | 5d | 2025-09-25 A | 2025-10-01 A | QTS-42291 FF+1d | 100% |  |  |  |  |  |  | Construction |  | Core & Shell | IGMP | Gen Yard | Level 2 |  |  |  | BAB |  | Phase 1 | Construction |  |  |
| QTS-99360 |  | DH 2100 / Mechanical Yard // Form, Reinforce, & Pour Thickened Slab On Grade for MVGs | 5d | 2025-09-29 A | 2025-10-17 A | QTS-23001 FF | 100% |  | 2025-09-29 | 2025-10-03 |  |  | 01ADMIN | Construction | Phase 1 | Core & Shell | IGMP | Gen Yard | Level 2 |  |  |  | BAB |  |  |  |  |  |
| QTS-22691 |  | DH 2100 / Mechanical Yard // Form, Reinforce, & Pour Thickened Slab On Grade for UPS Pods | 5d | 2025-10-06 A | 2025-10-10 A | QTS-23001 FF+1d, QTS-42791 FF+3d | 100% |  |  |  |  |  | 01ADMIN | Construction |  | Core & Shell | IGMP | Gen Yard | Level 2 |  |  |  | BAB |  | Phase 1 | Construction |  |  |
| QTS-23391 |  | DH 2100 / Mechanical Yard // Form, Reinforce, & Pour Thickened Slab On Grade for Generators | 10d | 2025-10-14 A | 2025-10-17 A | QTS-22691, QTS-23001 | 100% |  | 2025-10-13 | 2025-10-24 |  |  | 01ADMIN | Construction | Phase 1 | Core & Shell | IGMP | Gen Yard | Level 2 |  |  |  | BAB |  |  |  |  |  |
| QTS-22011 |  | DH 2100 / Mechanical Yard // Place Gen Yard Gravel | 5d | 2025-10-15 A | 2025-10-21 A | QTS-23001, QTS-22691, QTS-42791 | 100% |  |  |  |  |  | 01ADMIN | Construction |  | Core & Shell | IGMP | Gen Yard | Level 2 |  |  |  | BAB |  | Phase 1 | Construction |  |  |
| QTS-99370 |  | DH 2100 / Mechanical Yard // OFCI - L2 SET IN PLACE - Eq Type # - DC1-MVG-A1 - 1 unit | 1d | 2025-10-20 A | 2025-10-20 A | QTS-99300, QTS-99360 | 100% |  |  |  |  |  | 01ADMIN | Construction | Phase 1 | Electrical | IGMP | Gen Yard | Level 2 |  |  |  | BAB |  |  |  |  |  |
| QTS-99380 |  | DH 2100 / Mechanical Yard // OFCI - L2 SET IN PLACE - Eq Type # - DC1-MVG-B1 - 1 unit | 1d | 2025-10-21 A | 2025-10-21 A | QTS-99310, QTS-99370 | 100% |  | 2025-10-22 | 2025-10-22 |  |  | 01ADMIN | Construction | Phase 1 | Electrical | IGMP | Gen Yard | Level 2 |  |  |  | BAB |  |  |  |  |  |
| QTS-49961 |  | DH 2100 / Mechanical Yard // Install Cable Bus | 10d | 2025-10-22 A | 2025-11-04 A | QTS-49651, QTS-22011 | 100% |  |  |  |  |  | 01ADMIN | Construction |  | Core & Shell | IGMP | Gen Yard | Level 2 |  |  |  | BAB |  | Phase 1 | Construction |  |  |
| QTS-23931 |  | DH 2100 / Mechanical Yard // OFCI - L2 SET IN PLACE - Eq Type # - 3000A UPS Pods - 7 units | 5d | 2025-10-27 A | 2025-10-31 A | QTS-22691, QTS-36451 SS, QTS-36381 SS, QTS-36311 FF, QTS-36241 FF, QTS-36171 FF, QTS-23391 SS+4d, QTS-23901 SS, QTS-23841 FF | 100% |  |  |  |  |  | 01ADMIN | Construction | Phase 1 | Electrical | IGMP | Gen Yard | Level 2 |  |  |  | BAB |  |  |  |  |  |
| QTS-24281 |  | DH 2100 / Mechanical Yard // OFCI - L2 SET IN PLACE - Eq Type # - 2500KVA Transformers - 7 units | 3d | 2025-10-28 A | 2025-10-30 A | QTS-99380 FF, QTS-36461, QTS-36391, QTS-36321, QTS-36251, QTS-36181, QTS-24261, QTS-24201, QTS-23391 | 100% |  | 2025-10-29 | 2025-10-31 |  |  | 01ADMIN | Construction | Phase 1 | Electrical | IGMP | Gen Yard | Level 2 |  |  |  | BAB |  |  |  |  |  |
| QTS-25021 |  | DH 2100 / Mechanical Yard // OFCI - L2 SET IN PLACE - Eq Type # - 2500KW Generator #A-21 - 1 unit | 1d | 2025-11-10 A | 2025-11-10 A | QTS-24281, QTS-24461, QTS-24441, QTS-24431 | 100% |  |  |  |  |  | 01ADMIN | Construction |  | Electrical |  | Gen Yard | Level 2 |  |  |  | BAB |  | Phase 1 | Construction |  |  |
| QTS-25031 |  | DH 2100 / Mechanical Yard // OFCI - L2 SET IN PLACE - Eq Type # - 2500KW Generator #B-21 - 1 unit | 1d | 2025-11-11 A | 2025-11-11 A | QTS-25021, QTS-39441, QTS-39421, QTS-39411 | 100% |  |  |  |  |  | 01ADMIN | Construction |  | Electrical |  | Gen Yard | Level 2 |  |  |  | BAB |  | Phase 1 | Construction |  |  |
| QTS-24931 |  | DH 2100 / Mechanical Yard // Measure for FRP Platforms | 1d | 2025-11-12 A | 2025-11-12 A | QTS-39471 | 100% |  |  |  |  |  | 01ADMIN | Construction |  | Core & Shell | IGMP | Gen Yard | Level 2 |  |  |  | TFO |  | Phase 1 | Construction | TFO CONST | NICK |
| QTS-39461 |  | DH 2100 / Mechanical Yard // OFCI - L2 SET IN PLACE - Eq Type # - 2500KW Generator #C-21 - 1 unit | 1d | 2025-11-12 A | 2025-11-12 A | QTS-39531, QTS-39521, QTS-39511, QTS-39501, QTS-25031 SS | 100% |  |  |  |  |  | 01ADMIN | Construction |  | Electrical |  | Gen Yard | Level 2 |  |  |  | BAB |  | Phase 1 | Construction |  |  |
| QTS-39471 |  | DH 2100 / Mechanical Yard // OFCI - L2 SET IN PLACE - Eq Type # - 2500KW Generator #R-21 - 1 unit | 1d | 2025-11-12 A | 2025-11-12 A | QTS-39691, QTS-39671, QTS-39661, QTS-39491 SS | 100% |  |  |  |  |  | 01ADMIN | Construction |  | Electrical |  | Gen Yard | Level 2 |  |  |  | BAB |  | Phase 1 | Construction |  |  |
| QTS-39481 |  | DH 2100 / Mechanical Yard // OFCI - L2 SET IN PLACE - Eq Type # - 2500KW Generator #E-21 - 1 unit | 1d | 2025-11-12 A | 2025-11-12 A | QTS-39461 SS, QTS-39611, QTS-39591, QTS-39581, QTS-39451 | 100% |  |  |  |  |  | 01ADMIN | Construction |  | Electrical |  | Gen Yard | Level 2 |  |  |  | BAB |  | Phase 1 | Construction |  |  |
| QTS-39491 |  | DH 2100 / Mechanical Yard // OFCI - L2 SET IN PLACE - Eq Type # - 2500KW Generator #F-21 - 1 unit | 1d | 2025-11-12 A | 2025-11-12 A | QTS-39651, QTS-39631, QTS-39621, QTS-39481 SS | 100% |  |  |  |  |  | 01ADMIN | Construction |  | Electrical |  | Gen Yard | Level 2 |  |  |  | BAB |  | Phase 1 | Construction |  |  |
| QTS-39451 |  | DH 2100 / Mechanical Yard // OFCI - L2 SET IN PLACE - Eq Type # - 2500KW Generator #D-21 - 1 unit | 1d | 2025-11-20 A | 2025-11-20 A | QTS-39571, QTS-39551, QTS-39541 | 100% |  |  |  |  |  | 01ADMIN | Construction |  | Electrical |  | Gen Yard | Level 2 |  |  |  | BAB |  | Phase 1 | Construction |  |  |

Notes:
- QTS-1001650: allucent_notes_20251216_165335: David Wiltberger on 2025-12-02 06:45: Grating install not complete for installation / allucent_notes_20251209_203830: David Wiltberger on 2025-12-02 06:45: Grating install not complete for installation / allucent_notes_20251202_153722: David Wiltberger on 2025-12-02 06:45: Grating install not complete for installation / allucent_notes_20251014_152335: David Wiltberger on 2025-08-19 09:08: changed pick order / David Wiltberger on 2025-09-02 10:09: Moving to accommodate roofing in Zone 1 / David Wiltberger on 2025-09-24 04:09: BAM not completed Potential Delay / David Wiltberger on 2025-09-30 12:09: BAM did not complete / David Wiltberger on 2025-10-14 10:10: set on recovery schedule / allucent_notes: David Wiltberger on 2025-08-19 09:08: changed pick order / Scheduler Notes: David Wiltberger on 2025-08-19 09:08: changed pick order / David Wiltberger on 2025-09-02 10:09: Moving to accommodate roofing in Zone / 1 / David Wiltberger on 2025-09-24 04:09: BAM not completed Potential Delay / David Wiltberger on 2025-09-30 12:09: BAM did not complete / David Wiltberger on 2025-10-14 10:10: set on recovery / schedule / allucent_notes: 2025-12-02 06:45 - User: David Wiltberger - Date Added: 2025-12-02 06:45 - Note: Grating install not complete for installation
- QTS-1001670: allucent_notes_20251216_165335: David Wiltberger on 2025-12-02 06:45: Grating install not complete for installation / allucent_notes_20251209_203830: David Wiltberger on 2025-12-02 06:45: Grating install not complete for installation / allucent_notes_20251202_153722: David Wiltberger on 2025-12-02 06:45: Grating install not complete for installation / allucent_notes_20251014_152335: David Wiltberger on 2025-08-19 09:08: changed pick order / David Wiltberger on 2025-09-02 10:09: Moving to accommodate roofing in Zone 1 / David Wiltberger on 2025-09-24 04:09: BAM not completed Potential Delay / David Wiltberger on 2025-09-30 12:09: BAM did not complete / David Wiltberger on 2025-10-14 10:10: set on recovery schedule / allucent_notes: David Wiltberger on 2025-08-19 09:08: changed pick order / allucent_notes: 2025-12-02 06:45 - User: David Wiltberger - Date Added: 2025-12-02 06:45 - Note: Grating install not complete for installation
- QTS-1001680: allucent_notes_20251216_165335: David Wiltberger on 2025-12-02 06:45: Grating install not complete for installation / allucent_notes_20251209_203830: David Wiltberger on 2025-12-02 06:45: Grating install not complete for installation / allucent_notes_20251202_153722: David Wiltberger on 2025-12-02 06:45: Grating install not complete for installation / allucent_notes_20251014_152335: David Wiltberger on 2025-08-19 09:08: changed pick order / David Wiltberger on 2025-09-02 10:09: Moving to accommodate roofing in Zone 1 / David Wiltberger on 2025-09-24 04:09: BAM not completed Potential Delay / David Wiltberger on 2025-09-30 12:09: BAM did not complete / David Wiltberger on 2025-10-14 10:10: set on recovery schedule / allucent_notes: David Wiltberger on 2025-08-19 09:08: changed pick order / allucent_notes: 2025-12-02 06:45 - User: David Wiltberger - Date Added: 2025-12-02 06:45 - Note: Grating install not complete for installation
- QTS-1001690: allucent_notes_20251216_165335: David Wiltberger on 2025-12-02 06:45: Grating install not complete for installation / allucent_notes_20251209_203830: David Wiltberger on 2025-12-02 06:45: Grating install not complete for installation / allucent_notes_20251202_153722: David Wiltberger on 2025-12-02 06:45: Grating install not complete for installation / allucent_notes_20251014_152335: David Wiltberger on 2025-08-19 09:08: changed pick order / David Wiltberger on 2025-09-02 10:09: Moving to accommodate roofing in Zone 1 / David Wiltberger on 2025-09-24 04:09: BAM not completed Potential Delay / David Wiltberger on 2025-09-30 12:09: BAM did not complete / David Wiltberger on 2025-10-14 10:10: set on recovery schedule / allucent_notes: David Wiltberger on 2025-08-19 09:08: changed pick order / allucent_notes: 2025-12-02 06:45 - User: David Wiltberger - Date Added: 2025-12-02 06:45 - Note: Grating install not complete for installation
- QTS-1001700: allucent_notes_20251216_165335: David Wiltberger on 2025-12-02 06:45: Grating install not complete for installation / allucent_notes_20251209_203830: David Wiltberger on 2025-12-02 06:45: Grating install not complete for installation / allucent_notes_20251202_153722: David Wiltberger on 2025-12-02 06:45: Grating install not complete for installation / allucent_notes_20251014_152335: David Wiltberger on 2025-08-19 09:08: changed pick order / David Wiltberger on 2025-09-02 10:09: Moving to accommodate roofing in Zone 1 / David Wiltberger on 2025-09-24 04:09: BAM not completed Potential Delay / David Wiltberger on 2025-09-30 12:09: BAM did not complete / David Wiltberger on 2025-10-14 10:10: set on recovery schedule / allucent_notes: David Wiltberger on 2025-08-19 09:08: changed pick order / allucent_notes: 2025-12-02 06:45 - User: David Wiltberger - Date Added: 2025-12-02 06:45 - Note: Grating install not complete for installation
- QTS-1004860: allucent_notes_20251216_165335: David Wiltberger on 2025-12-02 06:45: Grating install not complete for installation / allucent_notes_20251209_203830: David Wiltberger on 2025-12-02 06:45: Grating install not complete for installation / allucent_notes_20251202_153722: David Wiltberger on 2025-12-02 06:45: Grating install not complete for installation / allucent_notes_20251014_152335: David Wiltberger on 2025-08-19 09:08: changed pick order / David Wiltberger on 2025-09-02 10:09: Moving to accommodate roofing in Zone 1 / David Wiltberger on 2025-09-24 04:09: BAM not completed Potential Delay / David Wiltberger on 2025-09-30 12:09: BAM did not complete / David Wiltberger on 2025-10-14 10:10: set on recovery schedule / allucent_notes: David Wiltberger on 2025-08-19 09:08: changed pick order / allucent_notes: 2025-12-02 06:45 - User: David Wiltberger - Date Added: 2025-12-02 06:45 - Note: Grating install not complete for installation
- QTS-1009900: allucent_notes_20251216_165335: David Wiltberger on 2025-12-02 06:45: Grating install not complete for installation / allucent_notes_20251209_203830: David Wiltberger on 2025-12-02 06:45: Grating install not complete for installation / allucent_notes_20251202_153722: David Wiltberger on 2025-12-02 06:45: Grating install not complete for installation / allucent_notes_20251014_152335: David Wiltberger on 2025-08-19 09:08: changed pick order / David Wiltberger on 2025-09-02 10:09: Moving to accommodate roofing in Zone 1 / David Wiltberger on 2025-09-24 04:09: BAM not completed Potential Delay / David Wiltberger on 2025-09-30 12:09: BAM did not complete / David Wiltberger on 2025-10-14 10:10: set on recovery schedule / allucent_notes: David Wiltberger on 2025-08-19 09:08: changed pick order / allucent_notes: 2025-12-02 06:45 - User: David Wiltberger - Date Added: 2025-12-02 06:45 - Note: Grating install not complete for installation
- QTS-1009930: allucent_notes_20251216_165335: David Wiltberger on 2025-12-02 06:45: Grating install not complete for installation / allucent_notes_20251209_203830: David Wiltberger on 2025-12-02 06:45: Grating install not complete for installation / allucent_notes_20251202_153722: David Wiltberger on 2025-12-02 06:45: Grating install not complete for installation / allucent_notes_20251014_152335: David Wiltberger on 2025-08-19 09:08: changed pick order / David Wiltberger on 2025-09-02 10:09: Moving to accommodate roofing in Zone 1 / David Wiltberger on 2025-09-24 04:09: BAM not completed Potential Delay / David Wiltberger on 2025-09-30 12:09: BAM did not complete / David Wiltberger on 2025-10-14 10:10: set on recovery schedule / allucent_notes: David Wiltberger on 2025-08-19 09:08: changed pick order / allucent_notes: 2025-12-02 06:45 - User: David Wiltberger - Date Added: 2025-12-02 06:45 - Note: Grating install not complete for installation
- QTS-1001660: allucent_notes_20251216_165335: David Wiltberger on 2025-12-02 06:45: Grating install not complete for installation / allucent_notes_20251209_203830: David Wiltberger on 2025-12-02 06:45: Grating install not complete for installation / allucent_notes_20251202_153722: David Wiltberger on 2025-12-02 06:45: Grating install not complete for installation / allucent_notes_20251014_152335: David Wiltberger on 2025-08-19 09:08: changed pick order / David Wiltberger on 2025-09-02 10:09: Moving to accommodate roofing in Zone 1 / David Wiltberger on 2025-09-24 04:09: BAM not completed Potential Delay / David Wiltberger on 2025-09-30 12:09: BAM did not complete / David Wiltberger on 2025-10-14 10:10: set on recovery schedule / allucent_notes: David Wiltberger on 2025-08-19 09:08: changed pick order / allucent_notes: 2025-12-02 06:45 - User: David Wiltberger - Date Added: 2025-12-02 06:45 - Note: Grating install not complete for installation
- QTS-23001: allucent_notes_20251014_152335: Jason Johnston on 2025-09-30 12:09: Delays in MV work / Jason Johnston on 2025-10-14 09:10: Rain delayed pours / allucent_notes: 2025-09-30 12:09 - User: Jason Johnston - Date Added: 2025-09-30 12:09 - Note: Delays in MV work / 2025-10-14 09:10 - User: Jason Johnston - Date Added: 2025-10-14 09:10 - Note: Rain delayed pours
- QTS-99360: allucent_notes_20251021_145627: Jason Johnston on 2025-10-14 09:10: Rain delays. / allucent_notes_20251014_152335: Jason Johnston on 2025-10-14 09:10: Rain delays. / allucent_notes: 2025-10-14 09:10 - User: Jason Johnston - Date Added: 2025-10-14 09:10 - Note: Rain delays.
- QTS-22691: allucent_notes_20251014_152335: Jason Johnston on 2025-10-14 09:10: Poured out early. / allucent_notes: 2025-10-14 09:10 - User: Jason Johnston - Date Added: 2025-10-14 09:10 - Note: Poured out early.
- QTS-23391: allucent_notes_20251021_145627: Jason Johnston on 2025-10-14 09:10: rearranged pour dates / Jason Johnston on 2025-10-14 09:10: First half of generator pads pouring / allucent_notes_20251014_152335: Jason Johnston on 2025-10-14 09:10: rearranged pour dates / Jason Johnston on 2025-10-14 09:10: First half of generator pads pouring / allucent_notes: 2025-10-14 09:10 - User: Jason Johnston - Date Added: 2025-10-14 09:10 - Note: rearranged pour dates / 2025-10-14 09:10 - User: Jason Johnston - Date Added: 2025-10-14 09:10 - Note: First half of generator pads pouring
- QTS-22011: allucent_notes_20251021_145627: Jason Johnston on 2025-10-14 09:10: Rain delays / allucent_notes_20251014_152335: Jason Johnston on 2025-10-14 09:10: Rain delays / allucent_notes: 2025-10-14 09:10 - User: Jason Johnston - Date Added: 2025-10-14 09:10 - Note: Rain delays
- QTS-99380: allucent_notes_20251027_224008: Jason Johnston on 2025-10-27 09:10: Set early / Jason Johnston on 2025-10-27 09:10: Set early / allucent_notes: 2025-10-27 09:10 - User: Jason Johnston - Date Added: 2025-10-27 09:10 - Note: Set early / 2025-10-27 09:10 - User: Jason Johnston - Date Added: 2025-10-27 09:10 - Note: Set early
- QTS-25021: allucent_notes_20251118_192630: Jason Johnston on 2025-11-04 10:11: Setting begins 11/10 / allucent_notes_20251111_182405: Jason Johnston on 2025-11-04 10:11: Setting begins 11/10 / allucent_notes_20251104_160200: Jason Johnston on 2025-11-04 10:11: Setting begins 11/10 / allucent_notes: 2025-11-04 10:11 - User: Jason Johnston - Date Added: 2025-11-04 10:11 - Note: Setting begins 11/10

| ID | WBS | Activity | Duration | Start | Finish | Predecessors | Complete | Planned start | Planned finish | Calendar | Allucent CSI Group | Project Section | Phase-1 | Layton Discipline | Baseline | Location | Level | Fragnet | Fragnet Responsible Party | Contract | Phase-1-1 | Project Section-1 | TFO-CONST ONLY | NICK | Notes |
| --- | --- | --- | --- | --- | --- | --- | --- | --- | --- | --- | --- | --- | --- | --- | --- | --- | --- | --- | --- | --- | --- | --- | --- | --- | --- |
|  | 1 | **Fragnet Install of Top Hats in PODs** |  | 2025-11-03 | 2026-01-09 |  |  |  |  |  |  |  |  |  |  |  |  |  |  |  |  |  |  |  |  |
| QTS-1001380 |  | Received Pods Without Top Hats Installed or Present | 1d | 2025-11-03 A | 2025-11-03 A | QTS-23931 | 100% |  |  |  | 01ADMIN | Construction | Phase 1 | Electrical | IGMP | Gen Yard | Level 2 | Fragnet | Rosendin Electric Inc. | BAB |  |  |  |  |  |
| QTS-1001390 |  | Procure Missing Top Hats | 26d | 2025-11-04 A | 2025-12-11 A | QTS-1001380 | 100% |  |  |  | 01ADMIN | Construction | Phase 1 | Electrical | IGMP | Gen Yard | Level 2 | Fragnet | Rosendin Electric Inc. | BAB |  |  |  |  |  |
| QTS-1001620 |  | Pull Wire from Generator to POD | 5d | 2025-11-20 A | 2026-01-07 A | QTS-1001610 | 100% | 2025-11-20 | 2025-11-26 |  | 01ADMIN | Construction | Phase 1 | Electrical | IGMP | Gen Yard | Level 2 | Fragnet | Rosendin Electric Inc. | BAB |  |  |  |  |  |
| QTS-1001610 |  | Pull Wire from Transformer to POD | 5d | 2025-11-26 A | 2025-12-04 A | QTS-23931 | 100% |  |  |  | 01ADMIN | Construction | Phase 1 | Electrical | IGMP | Gen Yard | Level 2 | Fragnet | Rosendin Electric Inc. | BAB |  |  |  |  |  |
| QTS-1001400 |  | Vendor On Site to Install Top Hats | 11d | 2025-12-12 A | 2026-01-02 A | QTS-1001390 | 100% | 2025-12-12 | 2025-12-31 |  | 01ADMIN | Construction | Phase 1 | Electrical | IGMP | Gen Yard | Level 2 | Fragnet | Rosendin Electric Inc. | BAB |  |  |  |  |  |
| QTS-1001410 |  | Install Top Hats | 5d | 2026-01-05 A | 2026-01-09 A | QTS-1001400 | 100% |  |  |  | 01ADMIN | Construction | Phase 1 | Electrical | IGMP | Gen Yard | Level 2 | Fragnet | Rosendin Electric Inc. | BAB |  |  |  |  |  |
|  | 3 | **Fragnet MOD-03 Breaker Swap** |  | 2025-11-03 | 2026-03-30 |  |  |  |  |  |  |  |  |  |  |  |  |  |  |  |  |  |  |  |  |
| QTS-1001560 |  | Received MOD-01 Onsite | 1d | 2025-11-03 A | 2025-11-03 A | QTS-1030 SS | 100% |  |  |  | 01ADMIN | Construction | Phase 1 | Electrical | IGMP | Gen Yard | Level 2 | Fragnet | Rosendin Electric Inc. | BAB |  |  |  |  |  |
| QTS-1001570 |  | MOD-01 Identified to Have Incorrect Breakers Per Submittal | 5d | 2025-11-04 A | 2025-11-10 A | QTS-1001560 | 100% |  |  |  | 01ADMIN | Construction | Phase 1 | Electrical | IGMP | Gen Yard | Level 2 | Fragnet | Rosendin Electric Inc. | BAB |  |  |  |  |  |
| QTS-1001580 |  | QTS to Provide PO to Procure and Swap Breakers in MOD-03 | 25d | 2025-11-11 A | 2026-01-26 A | QTS-1001570 | 100% | 2025-11-11 | 2025-12-17 |  | 01ADMIN | Construction | Phase 1 | Electrical | IGMP | Gen Yard | Level 2 | Fragnet | Rosendin Electric Inc. | BAB |  |  |  |  |  |
| QTS-1001590 |  | Vendor to Procure Breakers for MOD-03 | 10d | 2026-01-27 A | 2026-02-09 A | QTS-1001580 | 100% |  |  |  | 01ADMIN | Construction | Phase 1 | Electrical | IGMP | Gen Yard | Level 2 | Fragnet | Rosendin Electric Inc. | BAB |  |  |  |  |  |
| QTS-1001600 |  | Install Breakers for MOD-03 | 5d | 2026-03-25 A | 2026-03-30 A | QTS-1001590 | 100% | 2026-03-25 | 2026-03-31 |  | 01ADMIN | Construction | Phase 1 | Electrical | IGMP | Gen Yard | Level 2 | Fragnet | Rosendin Electric Inc. | BAB |  |  |  |  |  |
|  | 4 | **Fragnet / Short Circuit Coordination Study** |  | 2026-01-08 | 2026-01-30 |  |  |  |  |  |  |  |  |  |  |  |  |  |  |  |  |  |  |  |  |
| QTS-1004470 |  | Fragnet / Layton Requested Short Circuit Study from QTS | 1d | 2026-01-08 A | 2026-01-08 A | QTS-1371 SS | 100% |  |  |  | 01ADMIN | Construction | Phase 1 | Electrical | IGMP | Gen Yard | Level 2 | Fragnet | Rosendin Electric Inc. | BAB |  |  |  |  |  |
| QTS-1004480 |  | Fragnet / QTS Supplies Short Circuit Study to Layton | 15d | 2026-01-09 A | 2026-01-30 A | QTS-1004470 | 100% |  |  |  | 01ADMIN | Construction | Phase 1 | Electrical | IGMP | Gen Yard | Level 2 | Fragnet | Rosendin Electric Inc. | BAB |  |  |  |  |  |
|  | 2 | **Remaining Scope** |  | 2025-11-12 | 2026-03-26 |  |  |  |  |  |  |  |  |  |  |  |  |  |  |  |  |  |  |  |  |
| QTS-24921 |  | DH 2100 / Mechanical Yard // Install Raceway from Generators to UPS Pods | 5d | 2025-11-12 A | 2025-11-19 A | QTS-39451 FF, QTS-49961, QTS-39471, QTS-25031, QTS-25021 | 100% | 2025-11-12 | 2025-11-17 | QTS-PHX3 DC1 - 6 day w/ Holidays | 01ADMIN | Construction | Phase 1 | Electrical | IGMP | Gen Yard | Level 2 |  |  | BAB |  |  |  |  |  |
| QTS-44341 |  | DH 2100 / Mechanical Yard // Install Exterior Stairs | 10d | 2025-11-24 A | 2025-12-06 A | QTS-43291 | 100% |  |  | QTS-PHX3 DC1 - 6 day w/ Holidays |  | Construction |  | Core & Shell | IGMP | Gen Yard | Level 2 |  |  | BAB | Phase 1 | Construction |  |  |  |
| QTS-27331 |  | DH 2100 / Mechanical Yard // Install FRP Platforms | 10d | 2025-12-08 A | 2026-01-07 A | QTS-24931, QTS-23931, QTS-24981, QTS-44341 | 100% | 2025-12-08 | 2025-12-18 | QTS-PHX3 DC1 - 6 day w/ Holidays | 01ADMIN | Construction |  | Core & Shell | IGMP | Gen Yard | Level 2 |  |  | TFO | Phase 1 | Construction | TFO CONST | NICK |  |
| QTS-42311 |  | DH 2100 / Mechanical Yard // Wire Pull for MV | 6d | 2025-12-10 A | 2025-12-17 A | QTS-39471, QTS-42301 | 100% |  |  |  | 01ADMIN | Construction |  | Electrical | IGMP | Gen Yard | Level 2 |  |  | BAB | Phase 1 | Construction |  |  |  |
| QTS-24511 |  | DH 2100 / Mechanical Yard // Install Raceway from Transformers to UPS Pods | 5d | 2025-12-12 A | 2025-12-18 A | QTS-24281 | 100% |  |  |  | 01ADMIN | Construction | Phase 1 | Electrical | IGMP | Gen Yard | Level 2 |  |  | BAB |  |  |  |  |  |
| QTS-42801 |  | DH 2100 / Mechanical Yard // Terminate MV at Transformers | 10d | 2025-12-18 A | 2026-02-13 A | QTS-42311 | 100% | 2025-12-18 | 2025-12-30 | QTS-PHX3 DC1 - 6 day w/ Holidays | 01ADMIN | Construction |  | Electrical | IGMP | Gen Yard | Level 2 |  |  | BAB | Phase 1 | Construction |  |  |  |
| QTS-1005180 |  | DH 2100 / Mechanical Yard // Terminate from Transformers to UPS Pods | 10d | 2026-01-14 A | 2026-02-13 A | QTS-1001410 | 100% | 2026-01-14 | 2026-01-26 | QTS-PHX3 DC1 - 6 day w/ Holidays | 01ADMIN | Construction | Phase 1 | Electrical | IGMP | Gen Yard | Level 2 |  |  | BAB |  |  |  |  |  |
| QTS-1005190 |  | DH 2100 / Mechanical Yard // Terminate from Generators to UPS Pods | 10d | 2026-01-14 A | 2026-02-10 A | QTS-24921 | 100% | 2026-01-14 | 2026-01-26 | QTS-PHX3 DC1 - 6 day w/ Holidays | 01ADMIN | Construction | Phase 1 | Electrical | IGMP | Gen Yard | Level 2 |  |  | BAB |  |  |  |  |  |
| QTS-24911 |  | DH 2100 / Mechanical Yard // Terminate from Transformers to UPS Pods | 10d | 2026-01-14 A | 2026-01-27 A | QTS-1001610, QTS-24511, QTS-1001410 | 100% | 2026-01-14 | 2026-01-26 | QTS-PHX3 DC1 - 6 day w/ Holidays | 01ADMIN | Construction | Phase 1 | Electrical | IGMP | Gen Yard | Level 2 |  |  | BAB |  |  |  |  |  |
| QTS-25591 |  | DH 2100 / Mechanical Yard // Terminate from Generators to UPS Pods | 10d | 2026-01-14 A | 2026-01-27 A | QTS-1001620, QTS-24921 | 100% | 2026-01-14 | 2026-01-26 | QTS-PHX3 DC1 - 6 day w/ Holidays | 01ADMIN | Construction | Phase 1 | Electrical | IGMP | Gen Yard | Level 2 |  |  | BAB |  |  |  |  |  |
| QTS-1001180 |  | DH 2100 / Mechanical Yard // Pressure Test Generator Tanks | 2d | 2026-02-07 A | 2026-02-08 A | QTS-39451 | 100% | 2026-02-06 | 2026-02-07 | QTS-PHX3 DC1 - 6 day w/ Holidays | 01ADMIN | Construction | Phase 1 | Mechanical | IGMP | Gen Yard | Level 2 |  |  | BAB |  |  |  |  |  |
| QTS-1005270 |  | DH 2100 / Mechanical Yard // Terminate from Generators to UPS Pods - Remaining | 10d | 2026-02-11 A | 2026-03-10 A | QTS-24921 | 100% | 2026-02-11 | 2026-02-21 | QTS-PHX3 DC1 - 6 day w/ Holidays | 01ADMIN | Construction | Phase 1 | Electrical | IGMP | Gen Yard | Level 2 |  |  | BAB |  |  |  |  |  |
| QTS-1000270 |  | DH 2100 / Mechanical Yard // OFCI - L2 SET IN PLACE - Eq Type # - 2500KW Generator SCR - 7 units | 5d | 2026-02-13 A | 2026-02-18 A | QTS-24451, QTS-39431, QTS-39521, QTS-39561, QTS-39601, QTS-39641, QTS-39681 | 100% |  |  | QTS-PHX3 DC1 - 6 day w/ Holidays | 01ADMIN | Construction |  | Electrical |  | Gen Yard | Level 2 |  |  | BAB | Phase 1 | Construction |  |  |  |
| QTS-1007070 |  | DH 2100 / Mechanical Yard // OFCI - L2 SET IN PLACE - Eq Type # - 2500KW Generator SCR - 7 units | 2d | 2026-03-10 A | 2026-03-25 A | QTS-24451, QTS-39431, QTS-39521, QTS-39561, QTS-39601, QTS-39641, QTS-39681 | 100% | 2026-03-10 | 2026-03-11 | QTS-PHX3 DC1 - 6 day w/ Holidays | 01ADMIN | Construction |  | Electrical |  | Gen Yard | Level 2 |  |  | BAB | Phase 1 | Construction |  |  | Mistakenly actualized. Replacing QTS-1000270 |
| QTS-1004890 |  | DH 2100 / Mechanical Yard // Install Raceway for Fiber from Building to Control Cabinet of DC1-MVG-A1 & B1 | 3d | 2026-03-25 A | 2026-03-26 A | QTS-99380 | 100% | 2026-04-01 | 2026-04-03 | QTS-PHX3 DC1 - 6 day w/ Holidays | 01ADMIN | Construction | Phase 1 | Electrical | IGMP | Gen Yard | Level 2 |  |  | BAB |  |  |  |  |  |

Notes:
- QTS-1001380: allucent_notes_20251209_203830: Jason Johnston on 2025-12-09 20:30: Need update from team / Scheduler Notes: Received Pods Without Top Hats Installed or Present / allucent_notes: 2025-12-09 20:30 - User: Jason Johnston - Date Added: 2025-12-09 20:30 - Note: Need update from team
- QTS-1001390: allucent_notes_20251209_203830: Jason Johnston on 2025-12-09 20:30: Need update from team / allucent_notes: 2025-12-09 20:30 - User: Jason Johnston - Date Added: 2025-12-09 20:30 - Note: Need update from team
- QTS-1001620: allucent_notes_20251209_203830: Jason Johnston on 2025-12-09 20:30: Need update from team / allucent_notes: 2025-12-09 20:30 - User: Jason Johnston - Date Added: 2025-12-09 20:30 - Note: Need update from team
- QTS-1001610: allucent_notes_20251209_203830: Jason Johnston on 2025-12-09 20:30: Need update from team / allucent_notes: 2025-12-09 20:30 - User: Jason Johnston - Date Added: 2025-12-09 20:30 - Note: Need update from team
- QTS-1001400: allucent_notes_20251209_203830: Jason Johnston on 2025-12-09 20:30: Need update from team / allucent_notes: 2025-12-09 20:30 - User: Jason Johnston - Date Added: 2025-12-09 20:30 - Note: Need update from team
- QTS-1001410: allucent_notes_20251209_203830: Jason Johnston on 2025-12-09 20:30: Need update from team / allucent_notes: 2025-12-09 20:30 - User: Jason Johnston - Date Added: 2025-12-09 20:30 - Note: Need update from team
- QTS-1001560: allucent_notes_20251209_203830: Jason Johnston on 2025-12-09 20:30: Need update from team / Scheduler Notes: MOD-01 Identified to Have Incorrect Breakers Per Submittal / allucent_notes: 2025-12-09 20:30 - User: Jason Johnston - Date Added: 2025-12-09 20:30 - Note: Need update from team
- QTS-1001570: allucent_notes_20251209_203830: Jason Johnston on 2025-12-09 20:30: Need update from team / allucent_notes: 2025-12-09 20:30 - User: Jason Johnston - Date Added: 2025-12-09 20:30 - Note: Need update from team
- QTS-1001580: allucent_notes_20251209_203830: Jason Johnston on 2025-12-09 20:30: Need update from team / allucent_notes_20251230_164549: David Wiltberger on 2025-12-30 15:40: not done / allucent_notes: 2025-12-30 15:40 - User: David Wiltberger - Date Added: 2025-12-30 15:40 - Note: not done
- QTS-1001590: allucent_notes_20251209_203830: Jason Johnston on 2025-12-09 20:30: Need update from team / allucent_notes_20251230_164549: David Wiltberger on 2025-12-30 15:39: not ready / allucent_notes: 2025-12-30 15:39 - User: David Wiltberger - Date Added: 2025-12-30 15:39 - Note: not ready
- QTS-1001600: allucent_notes_20251209_203830: Jason Johnston on 2025-12-09 20:30: Need update from team / allucent_notes: 2025-12-09 20:30 - User: Jason Johnston - Date Added: 2025-12-09 20:30 - Note: Need update from team
- QTS-1004470: allucent_notes_20251209_203830: Jason Johnston on 2025-12-09 20:30: Need update from team / Scheduler Notes: Layton Requested Short Circuit Study from QTS / allucent_notes: 2025-12-09 20:30 - User: Jason Johnston - Date Added: 2025-12-09 20:30 - Note: Need update from team
- QTS-1004480: allucent_notes_20251209_203830: Jason Johnston on 2025-12-09 20:30: Need update from team / allucent_notes: 2025-12-09 20:30 - User: Jason Johnston - Date Added: 2025-12-09 20:30 - Note: Need update from team
- QTS-24921: allucent_notes_20251216_165335: Jason Johnston on 2025-12-09 20:30: Need update from team / Scott Masterson on 2025-12-16 16:51: I need to get dates for this. / allucent_notes_20251209_203830: Jason Johnston on 2025-12-09 20:30: Need update from team / allucent_notes_20251230_164549: Jason Johnston on 2025-12-09 20:30: Need update from team / Scott Masterson on 2025-12-16 16:51: I need to get dates for this. / David Wiltberger on 2025-12-30 15:41: raceway need to install / allucent_notes: 2025-12-09 20:30 - User: Jason Johnston - Date Added: 2025-12-09 20:30 - Note: Need update from team / 2025-12-16 16:51 - User: Scott Masterson - Date Added: 2025-12-16 16:51 - Note: I need to get dates for this. / 2025-12-30 15:41 - User: David Wiltber
- QTS-27331: allucent_notes_20251230_164549: Jason Johnston on 2025-12-30 16:41: No update / allucent_notes: 2025-12-30 16:41 - User: Jason Johnston - Date Added: 2025-12-30 16:41 - Note: No update
- QTS-42311: allucent_notes_20251216_165335: Jason Johnston on 2025-12-09 20:30: Need update from team / allucent_notes_20251209_203830: Jason Johnston on 2025-12-09 20:30: Need update from team / allucent_notes_20251230_164549: Jason Johnston on 2025-12-09 20:30: Need update from team / allucent_notes: 2025-12-09 20:30 - User: Jason Johnston - Date Added: 2025-12-09 20:30 - Note: Need update from team
- QTS-1007070: Scheduler Notes: Mistakenly actualized. Replacing QTS-1000270

| ID | WBS | Activity | Duration | Start | Finish | Predecessors | Complete | Planned start | Planned finish | Calendar | Allucent CSI Group | Layton Discipline | TFO-CONST ONLY | Contract | NICK | Notes | If Not Started or Finished Why? | Location | Fragnet | Fragnet Responsible Party | Layton Super | Trade Partner |
| --- | --- | --- | --- | --- | --- | --- | --- | --- | --- | --- | --- | --- | --- | --- | --- | --- | --- | --- | --- | --- | --- | --- |
|  | 6 | **Data Hall 2100 TFO** |  | 2025-12-08 | 2026-09-11 |  |  |  |  |  |  |  |  |  |  |  |  |  |  |  |  |  |
|  | 3 | **2100 - TFO Scope Buildout (3MW) - Lineup A - B** |  | 2025-12-08 | 2026-08-04 |  |  |  |  |  |  |  |  |  |  |  |  |  |  |  |  |  |
| QTS - 1070 |  | TFO Scope // DH 2100 / Lineup A - B / Install HAC Support Steel | 5d | 2025-12-08 A | 2025-12-12 A | QTS - 9550, QTS - 1980 | 100% |  |  |  | 01ADMIN | Electrical | TFO CONST | TFO | NICK |  |  |  |  |  |  |  |
| QTS - 1080 |  | TFO Scope // DH 2100 / Lineup A - B / Install Stainless Steel Piping Hangers | 4d | 2025-12-15 A | 2025-12-18 A | QTS - 2240, QTS - 1070 | 100% |  |  |  | 01ADMIN | Mechanical | TFO CONST | TFO | NICK |  |  |  |  |  |  |  |
| QTS - 1750 |  | TFO Scope // DH 2100 / Lineup A - B / Uncrate QCools with HACs | 1d | 2025-12-30 A | 2025-12-30 A | QTS-23561, QTS - 1020, QTS - 2600 | 100% |  |  |  | 01ADMIN | Mechanical | TFO CONST | TFO | NICK | Changed Duration from 10 to 5 |  |  |  |  |  |  |
| QTS - 1220 |  | TFO Scope // DH 2100 / Lineup A - B / Raise HAC, QCool & Trays | 6d | 2025-12-31 A | 2026-01-05 A | QTS - 1750, QTS - 1080 | 100% | 2025-12-31 | 2026-01-09 |  |  | Mechanical | TFO CONST | TFO | NICK |  |  |  |  |  |  |  |
|  | 1 | **TFO Bulletin #1 Pipe Redesign** |  | 2025-12-12 | 2026-01-20 |  |  |  |  |  |  |  |  |  |  |  |  |  |  |  |  |  |
| QTS - 24861 |  | TFO Bulletin #1 Released | 1d | 2025-12-12 A | 2025-12-12 A | QTS-1371 SS | 100% | 2025-12-15 | 2025-12-15 |  | 01ADMIN | Mechanical | TFO CONST | TFO | NICK |  |  |  |  |  |  |  |
| QTS - 24871 |  | Layton Notifies QTS Stainless Steel Pipe Fabrication Was Complete TFO Bulletin #1 | 1d | 2025-12-15 A | 2025-12-15 A | QTS - 24861 | 100% |  |  |  | 01ADMIN | Mechanical | TFO CONST | TFO | NICK |  |  |  |  |  |  |  |
| QTS - 24881 |  | Layton Notifies QTS Stainless Steel Pipe Install Will Be Completed In Per Design Change for TFO Bulletin #1 | 16d | 2025-12-16 A | 2026-01-20 A | QTS - 24871 | 100% | 2025-12-16 | 2026-01-05 | QTS-PHX3 DC1 - 6 day w/ Holidays | 01ADMIN | Mechanical | TFO CONST | TFO | NICK |  |  |  |  |  |  |  |
|  | 2 | **Remaining Scope** |  | 2026-01-05 | 2026-08-04 |  |  |  |  |  |  |  |  |  |  |  |  |  |  |  |  |  |
| QTS - 1150 |  | TFO Scope // DH 2100 / Lineup A - B / Install OH Trapeze - Screen Wall to CODs | 3d | 2026-01-05 A | 2026-01-27 A | QTS - 1770 | 100% | 2025-12-08 | 2025-12-10 | QTS-PHX3 DC1 - 6 day w/ Holidays | 01ADMIN | Electrical | TFO CONST | TFO | NICK |  |  |  |  |  |  |  |
| QTS - 1790 |  | TFO Scope // DH 2100 / Lineup A - B / Install OH Trapeze - Screen Wall to RPPs | 3d | 2026-01-05 A | 2026-01-27 A | QTS - 1150 SS | 100% | 2026-01-05 | 2026-01-07 | QTS-PHX3 DC1 - 6 day w/ Holidays | 01ADMIN | Electrical | TFO CONST | TFO | NICK |  |  |  |  |  |  |  |
| QTS - 1730 |  | TFO Scope // DH 2100 / Lineup A - B / Hang Stainless Steel 6" Fan Wall - QCool - North | 4d | 2026-01-21 A | 2026-01-24 A | QTS - 2610, QTS - 2590, QTS - 1080, QTS - 24881 | 100% |  |  | QTS-PHX3 DC1 - 6 day w/ Holidays | 01ADMIN | Mechanical | TFO CONST | TFO | NICK |  |  |  |  |  |  |  |
| QTS - 24921 |  | TFO Scope // DH 2100 / Lineup A - B / Hang Stainless Steel 6" Fan Wall - QCool - South | 4d | 2026-01-21 A | 2026-01-24 A | QTS - 1730 SS | 100% |  |  | QTS-PHX3 DC1 - 6 day w/ Holidays | 01ADMIN | Mechanical | TFO CONST | TFO | NICK |  |  |  |  |  |  |  |
| QTS - 1200 |  | TFO Scope // DH 2100 / Lineup A - B / Pull MC Feeders - CODs to RPPs | 3d | 2026-02-10 A | 2026-02-12 A | QTS - 1790, QTS - 1150, QTS - 24851 | 100% |  |  | QTS-PHX3 DC1 - 6 day w/ Holidays |  | Electrical | TFO CONST | TFO | NICK |  |  |  |  |  |  |  |
| QTS - 24891 |  | TFO Scope // DH 2100 / Lineup A - B / Terminate MC Feeder at CODs | 10d | 2026-02-10 A | 2026-02-27 A | QTS - 1200 SS | 100% | 2026-02-10 | 2026-02-20 | QTS-PHX3 DC1 - 6 day w/ Holidays |  | Electrical | TFO CONST | TFO | NICK |  |  |  |  |  |  |  |
| QTS - 1250 |  | TFO Scope // DH 2100 / Lineup A - B / Set RPP # 12 Units | 5d | 2026-03-02 A | 2026-03-30 A | QTS - 1030, QTS - 1220, QTS-23171 | 100% | 2026-03-02 | 2026-03-06 | QTS-PHX3 DC1 - 6 day w/ Holidays |  | Electrical | TFO CONST | TFO | NICK |  | The support are being installed | DH2100 |  |  |  |  |
| QTS - 1780 |  | TFO Scope // DH 2100 / Lineup A - B / Install QCool Arms | 5d | 2026-03-16 A | 2026-03-18 A | QTS - 1750, QTS - 1070 | 100% | 2026-03-16 | 2026-03-20 | QTS-PHX3 DC1 - 6 day w/ Holidays |  | Electrical | TFO CONST | TFO | NICK |  |  | DH2100 |  |  |  |  |
| QTS - 26141 |  | TFO Scope // DH 2100 / Lineup A - B / Fragnet Delay - to complete - Set RPP # 12 Units | 5d | 2026-03-31 A | 2026-04-06 A | QTS - 1250 | 100% | 2026-03-02 | 2026-03-06 | QTS-PHX3 DC1 - 6 day w/ Holidays |  | Electrical | TFO CONST | TFO | NICK | Manpower Delay | The support are being installed | DH2100 | Fragnet | Rosendin Electric Inc. |  |  |
| QTS - 1350 |  | TFO Scope // DH 2100 / Lineup A - B / Terminate - BMS & EPMS Connections | 5d | 2026-04-15 A | 2026-05-21 A | QTS - 1340 | 100% | 2026-04-15 | 2026-04-20 | QTS-PHX3 DC1 - 6 day w/ Holidays |  | LV | TFO CONST | TFO | NICK |  |  | DH2100 |  |  |  |  |
| QTS - 1290 |  | TFO Scope // DH 2100 / Lineup A - B / Terminate MC Feeder at RPPs | 10d | 2026-04-22 A | 2026-05-01 A | QTS - 1200 FF+3d, QTS - 1250, QTS - 26141 | 100% | 2026-04-22 | 2026-05-02 | QTS-PHX3 DC1 - 6 day w/ Holidays |  | Electrical | TFO CONST | TFO | NICK |  |  | DH2100 |  |  | Oscar Armenta |  |
| QTS - 24951 |  | TFO Scope // DH 2100 / Lineup A - B / Install Grid Hangers | 5d | 2026-05-15 A | 2026-06-13 A | QTS-101770 | 100% | 2026-05-15 | 2026-05-20 | QTS-PHX3 DC1 - 6 day w/ Holidays |  | Build Out | TFO CONST | TFO | NICK | RFI TFO 190 | RFI TFO 190 | DH2100 |  |  | Ed Carter |  |
| QTS - 24841 |  | TFO Scope // DH 2100 / Lineup A - B / Detail Ceiling Grid to QCools | 3d | 2026-06-15 A | 2026-06-16 A | QTS-101770, QTS-1011800, QTS - 24901 | 100% | 2026-07-18 | 2026-07-21 | QTS-PHX3 DC1 - 6 day w/ Holidays | 01ADMIN | Build Out | TFO CONST | TFO | NICK |  |  | DH2100 |  |  | Jason Hendley |  |
| QTS - 1090 |  | TFO Scope // DH 2100 / Lineup A - B / Install LV Cable Tray Racks | 4d | 2026-06-17 A | 2026-06-18 A | QTS - 1020, QTS - 1750, QTS - 1220, QTS - 1780, QTS-1002260, QTS - 3090, QTS - 24841 | 100% | 2026-07-22 | 2026-07-25 | QTS-PHX3 DC1 - 6 day w/ Holidays |  | LV | TFO CONST | TFO | NICK |  |  | DH2100 |  |  | Low Voltage |  |
| QTS - 2810 |  | TFO Scope // DH 2100 / Lineup A - B / Install Power Cable Tray Racks | 4d | 2026-06-19 A | 2026-06-22 A | QTS - 1220, QTS - 1090 SS | 100% | 2026-07-22 | 2026-07-25 | QTS-PHX3 DC1 - 6 day w/ Holidays |  | Electrical | TFO CONST | TFO | NICK |  |  | DH2100 |  |  | Oscar Armenta |  |
| QTS - 2820 |  | TFO Scope // DH 2100 / Lineup A - B / Install Power Cable Tray | 15d | 2026-06-22 A | 2026-06-30 A | QTS - 2810 | 100% | 2026-07-27 | 2026-08-12 | QTS-PHX3 DC1 - 6 day w/ Holidays |  | Electrical | TFO CONST | TFO | NICK |  |  | DH2100 |  |  | Oscar Armenta |  |
| QTS - 3580 |  | TFO Scope // DH 2100 / Lineup A - B / Install LV Cable Tray | 15d | 2026-06-22 A | 2026-06-30 A | QTS - 1220, QTS - 2820 SS | 100% | 2026-07-27 | 2026-08-12 | QTS-PHX3 DC1 - 6 day w/ Holidays |  | LV | TFO CONST | TFO | NICK |  |  | DH2100 |  |  | Low Voltage |  |
| QTS - 10310 |  | TFO Scope // DH 2100 / Lineup A - B / Pull RPP Whips - RPP to Racks | 5d | 2026-06-30 A | 2026-07-03 A | QTS - 3580, QTS - 24791, QTS-1012240 | 100% | 2026-08-13 | 2026-08-18 | QTS-PHX3 DC1 - 6 day w/ Holidays |  | Electrical | TFO CONST | TFO | NICK |  |  | DH2100 |  |  |  |  |
| QTS - 24961 |  | TFO Scope // DH 2100 / Lineup A - B / Install Telecom Trays - Grid | 10d | 2026-07-03 A | 2026-07-10 A | QTS - 24951, QTS-1002260 | 100% | 2026-08-14 | 2026-08-25 | QTS-PHX3 DC1 - 6 day w/ Holidays |  | Electrical | TFO CONST | TFO | NICK |  |  | DH2100 |  |  | Oscar Armenta |  |
| QTS - 1260 |  | TFO Scope // DH 2100 / Lineup A - B / Pull LV Wire | 2d | 2026-07-22 A | 2026-07-23 A | QTS - 2820, QTS - 1220, QTS - 24961, QTS - 1090 | 100% | 2026-07-29 | 2026-07-30 | QTS-PHX3 DC1 - 6 day w/ Holidays |  | LV | TFO CONST | TFO | NICK |  |  | DH2100 |  |  | Low Voltage | Prime |
| QTS - 1310 |  | TFO Scope // DH 2100 / Lineup A - B / Terminate LV | 10d | 2026-07-23 A | 2026-07-28 A | QTS - 1260 | 100% | 2026-07-31 | 2026-08-11 | QTS-PHX3 DC1 - 6 day w/ Holidays |  | LV | TFO CONST | TFO | NICK |  |  | DH2100 |  |  | Low Voltage | Prime |
| QTS - 1320 |  | TFO Scope // DH 2100 / Lineup A - B / Test & Terminate I&C | 5d | 2026-07-23 A | 2026-07-28 A | QTS - 2620, QTS - 1270, QTS - 10310 | 100% | 2026-08-06 | 2026-08-11 | QTS-PHX3 DC1 - 6 day w/ Holidays |  | LV | TFO CONST | TFO | NICK |  |  | DH2100 |  |  | Low Voltage | Prime |
| QTS - 1300 |  | TFO Scope // DH 2100 / Lineup A - B / Install Fire Alarm | 7d | 2026-07-27 A | 2026-08-04 A | QTS - 24961 | 100% | 2026-07-29 | 2026-08-05 | QTS-PHX3 DC1 - 6 day w/ Holidays |  | Electrical | TFO CONST | TFO | NICK | 7/21-Missing cameras (need update from Keith) |  | DH2100 |  |  | Electrical | IES |

Notes:
- QTS - 1750: Scheduler Notes: Changed Duration from 10 to 5
- QTS - 24861: allucent_notes_20251230_164549: David Wiltberger on 2025-12-30 16:28: bulletin 1 impact / allucent_notes: 2025-12-30 16:28 - User: David Wiltberger - Date Added: 2025-12-30 16:28 - Note: bulletin 1 impact
- QTS - 24871: allucent_notes_20251230_164549: David Wiltberger on 2025-12-30 16:28: bulletin 1 impact / allucent_notes: 2025-12-30 16:28 - User: David Wiltberger - Date Added: 2025-12-30 16:28 - Note: bulletin 1 impact
- QTS - 24881: allucent_notes_20251230_164549: David Wiltberger on 2025-12-30 16:28: bulletin 1 impact / allucent_notes: 2025-12-30 16:28 - User: David Wiltberger - Date Added: 2025-12-30 16:28 - Note: bulletin 1 impact
- QTS - 1150: allucent_notes_20251230_164549: David Wiltberger on 2025-12-30 16:28: no update / allucent_notes: 2025-12-30 16:28 - User: David Wiltberger - Date Added: 2025-12-30 16:28 - Note: no update
- QTS - 1790: allucent_notes_20251216_165335: Jason Johnston on 2025-12-09 20:32: Need update from team / Scott Masterson on 2025-12-16 16:35: Need to actualize dates for this install. RFI answer for use of MC cable vs conduit. MC procurment is set at 6 weeks at this time. / allucent_notes_20251209_203830: Jason Johnston on 2025-12-09 20:32: Need update from team / allucent_notes_20251230_164549: Jason Johnston on 2025-12-09 20:32: Need update from team / Scott Masterson on 2025-12-16 16:35: Need to actualize dates for this install. RFI answer for use of MC cable vs conduit. MC procurment is set at 6 weeks at this time. / Jason Johnston on 2025-12-30 16:43: No update / allucent_notes: 2025-12-09 20:32 - User: Jason Johnston - Date Added: 2025-12-09 20:32 - Note: Need update from team / 2025-12-16 16:35 - User: Scott Masterson - Date Added: 2025-12-16 16:35 - Note: Need to actualize dates for this install. RFI answer for use of MC cab
- QTS - 1730: allucent_notes_20251230_164549: David Wiltberger on 2025-12-30 16:28: bulletin 1 impact / Notes: 1/13/26 Delivery of matieral to site delayed until 1/21 / allucent_notes: 2025-12-30 16:28 - User: David Wiltberger - Date Added: 2025-12-30 16:28 - Note: bulletin 1 impact
- QTS - 24921: allucent_notes_20251230_164549: David Wiltberger on 2025-12-30 16:28: bulletin 1 impact / allucent_notes: 2025-12-30 16:28 - User: David Wiltberger - Date Added: 2025-12-30 16:28 - Note: bulletin 1 impact
- QTS - 26141: Scheduler Notes: Manpower Delay - to complete - Set RPP # 12 Units
- QTS - 24951: Scheduler Notes: RFI TFO 190

| ID | WBS | Activity | Duration | Start | Finish | Predecessors | Complete | Planned start | Planned finish | Total float | Free float | Calendar | Allucent CSI Group | Layton Discipline | TFO-CONST ONLY | Contract | NICK | Notes | Location | If Not Started or Finished Why? | Layton Super | Trade Partner |
| --- | --- | --- | --- | --- | --- | --- | --- | --- | --- | --- | --- | --- | --- | --- | --- | --- | --- | --- | --- | --- | --- | --- |
|  | 4 | **2100 - TFO Scope Buildout (3MW) - Lineup C - D** |  | 2025-12-15 | 2026-08-29 |  |  |  |  |  |  |  |  |  |  |  |  |  |  |  |  |  |
| QTS - 2840 |  | TFO Scope // DH 2100 / Lineup C - D / Install HAC Support Steel | 5d | 2025-12-15 A | 2025-12-19 A | QTS - 1980, QTS - 1070 | 100% |  |  |  |  |  | 01ADMIN | Electrical | TFO CONST | TFO | NICK |  |  |  |  |  |
| QTS - 2850 |  | TFO Scope // DH 2100 / Lineup C - D / Install Stainless Steel Piping Hangers | 4d | 2025-12-22 A | 2025-12-30 A | QTS - 1080, QTS - 2840 | 100% |  |  |  |  |  | 01ADMIN | Mechanical | TFO CONST | TFO | NICK |  |  |  |  |  |
| QTS - 2890 |  | TFO Scope // DH 2100 / Lineup C - D / Uncrate QCools with HACs | 1d | 2026-01-05 A | 2026-01-05 A | QTS - 1020, QTS - 2600, QTS - 1750 SS+5d | 100% |  |  |  |  |  |  | Mechanical | TFO CONST | TFO | NICK | Changed Duration from 10 to 5 |  |  |  |  |
| QTS - 2950 |  | TFO Scope // DH 2100 / Lineup C - D / Raise HAC, QCool & Trays | 6d | 2026-01-06 A | 2026-01-07 A | QTS - 2890, QTS - 2850 | 100% | 2026-01-06 | 2026-01-12 |  |  | QTS-PHX3 DC1 - 6 day w/ Holidays |  | Mechanical | TFO CONST | TFO | NICK |  |  |  |  |  |
| QTS - 2920 |  | TFO Scope // DH 2100 / Lineup C - D / Install OH Trapeze - Screen Wall to RPPs | 3d | 2026-01-12 A | 2026-01-27 A | QTS - 2940 SS | 100% | 2026-02-12 | 2026-02-14 |  |  | QTS-PHX3 DC1 - 6 day w/ Holidays | 01ADMIN | Electrical | TFO CONST | TFO | NICK |  |  |  |  |  |
| QTS - 2940 |  | TFO Scope // DH 2100 / Lineup C - D / Install OH Trapeze - Screen Wall to CODs | 3d | 2026-01-12 A | 2026-01-27 A | QTS - 1150 | 100% | 2026-02-12 | 2026-02-14 |  |  | QTS-PHX3 DC1 - 6 day w/ Holidays | 01ADMIN | Electrical | TFO CONST | TFO | NICK |  |  |  |  |  |
| QTS - 24931 |  | TFO Scope // DH 2100 / Lineup C - D / Hang Stainless Steel 6" Fan Wall - QCool - South | 4d | 2026-01-26 A | 2026-02-10 A | QTS - 2880 SS | 100% | 2026-01-26 | 2026-01-29 |  |  | QTS-PHX3 DC1 - 6 day w/ Holidays | 01ADMIN | Mechanical | TFO CONST | TFO | NICK |  | DH2100 |  |  |  |
| QTS - 2880 |  | TFO Scope // DH 2100 / Lineup C - D / Hang Stainless Steel 6" Fan Wall - QCool - North | 4d | 2026-01-26 A | 2026-01-26 A | QTS - 2610, QTS - 1730, QTS - 2590, QTS - 2850 | 100% | 2026-01-26 | 2026-01-29 |  |  | QTS-PHX3 DC1 - 6 day w/ Holidays | 01ADMIN | Mechanical | TFO CONST | TFO | NICK |  |  |  |  |  |
| QTS - 2990 |  | TFO Scope // DH 2100 / Lineup C - D / Pull MC Feeders - CODs to RPPs | 3d | 2026-02-10 A | 2026-02-12 A | QTS - 2940, QTS - 2920, QTS - 1200 | 100% |  |  |  |  | QTS-PHX3 DC1 - 6 day w/ Holidays |  | Electrical | TFO CONST | TFO | NICK |  |  |  |  |  |
| QTS - 25701 |  | TFO Scope // DH 2100 / Lineup C - D / Terminate MC Feeder at CODs | 10d | 2026-02-17 A | 2026-03-04 A | QTS - 2990 | 100% | 2026-02-17 | 2026-02-27 |  |  | QTS-PHX3 DC1 - 6 day w/ Holidays |  | Electrical | TFO CONST | TFO | NICK |  | DH2100 |  |  |  |
| QTS - 2860 |  | TFO Scope // DH 2100 / Lineup C - D / Install QCool Arms | 5d | 2026-03-16 A | 2026-03-18 A | QTS - 2890, QTS - 2840 | 100% | 2026-03-16 | 2026-03-20 |  |  | QTS-PHX3 DC1 - 6 day w/ Holidays |  | Electrical | TFO CONST | TFO | NICK |  | DH2100 |  |  |  |
| QTS - 2960 |  | TFO Scope // DH 2100 / Lineup C - D / Set RPP # 12 Units | 5d | 2026-03-25 A | 2026-04-07 A | QTS - 1030, QTS - 2950, QTS - 1250 | 100% | 2026-04-06 | 2026-04-10 |  |  | QTS-PHX3 DC1 - 6 day w/ Holidays |  | Electrical | TFO CONST | TFO | NICK |  | DH2100 | The support are being installed |  |  |
| QTS - 3040 |  | TFO Scope // DH 2100 / Lineup C - D / Terminate - BMS & EPMS Connections | 5d | 2026-04-15 A | 2026-05-21 A | QTS - 1350 SS, QTS - 1350 FF | 100% | 2026-05-27 | 2026-06-01 |  |  | QTS-PHX3 DC1 - 6 day w/ Holidays |  | LV | TFO CONST | TFO | NICK |  | DH2100 |  |  |  |
| QTS - 3030 |  | TFO Scope // DH 2100 / Lineup C - D / Terminate MC Feeder at RPPs | 10d | 2026-04-22 A | 2026-05-01 A | QTS - 2990 FF+3d, QTS - 2960 | 100% | 2026-04-22 | 2026-05-02 |  |  | QTS-PHX3 DC1 - 6 day w/ Holidays |  | Electrical | TFO CONST | TFO | NICK |  | DH2100 |  | Oscar Armenta |  |
| QTS - 2980 |  | TFO Scope // DH 2100 / Lineup C - D / Rough-In I&C | 10d | 2026-05-21 A | 2026-05-28 A | QTS - 3310, QTS - 2960 | 100% | 2026-05-20 | 2026-06-01 |  |  | QTS-PHX3 DC1 - 6 day w/ Holidays |  | Electrical | TFO CONST | TFO | NICK |  | DH2100 |  | Oscar Armenta |  |
| QTS - 10330 |  | TFO Scope // DH 2100 / Lineup C - D / Pull RPP Whips - RPP to Racks | 5d | 2026-06-19 A | 2026-06-24 A | QTS - 24791 SS, QTS - 2980 | 100% | 2026-06-26 | 2026-07-01 |  |  | QTS-PHX3 DC1 - 6 day w/ Holidays |  | Electrical | TFO CONST | TFO | NICK |  | DH2100 |  | Oscar Armenta |  |
| QTS - 24901 |  | TFO Scope // DH 2100 / Lineup C - D / Detail Ceiling Grid to QCools | 3d | 2026-06-22 A | 2026-06-24 A | QTS - 24911, QTS-13921 | 100% | 2026-07-15 | 2026-07-17 |  |  | QTS-PHX3 DC1 - 6 day w/ Holidays | 01ADMIN | Build Out | TFO CONST | TFO | NICK |  | DH2100 |  | Jason Hendley |  |
| QTS - 3610 |  | TFO Scope // DH 2100 / Lineup C - D / Terminate Whips at RPP | 5d | 2026-06-23 A | 2026-06-29 A | QTS - 10330 FF+3d, QTS - 2980 | 100% | 2026-06-24 | 2026-06-29 |  |  | QTS-PHX3 DC1 - 6 day w/ Holidays |  | Electrical | TFO CONST | TFO | NICK |  | DH2100 |  | Oscar Armenta |  |
| QTS - 2970 |  | TFO Scope // DH 2100 / Lineup C - D / Pull LV Wire | 2d | 2026-07-22 A | 2026-07-28 A | QTS - 2950, QTS - 1260 | 100% | 2026-07-31 | 2026-08-01 |  |  | QTS-PHX3 DC1 - 6 day w/ Holidays |  | LV | TFO CONST | TFO | NICK |  | DH2100 |  | Low Voltage | Prime |
| QTS - 3000 |  | TFO Scope // DH 2100 / Lineup C - D / Install Fire Alarm | 7d | 2026-07-27 A | 2026-08-05 A | QTS - 2980 | 100% | 2026-07-29 | 2026-08-05 |  |  | QTS-PHX3 DC1 - 6 day w/ Holidays |  | Electrical | TFO CONST | TFO | NICK | 7/21-Missing cameras (need update from Keith) | DH2100 |  | Electrical | IES |
| QTS - 3010 |  | TFO Scope // DH 2100 / Lineup C - D / Terminate LV | 10d | 2026-08-19 | 2026-08-29 | QTS - 2970, QTS - 1310 |  |  |  | -85d | 0d | QTS-PHX3 DC1 - 6 day w/ Holidays |  | LV | TFO CONST | TFO | NICK |  | DH2100 |  | Low Voltage | Prime |
| QTS - 3020 |  | TFO Scope // DH 2100 / Lineup C - D / Test & Terminate I&C | 5d | 2026-08-19 | 2026-08-24 | QTS - 1320, QTS - 1270, QTS - 2980, QTS - 3000 |  |  |  | -81d | 0d | QTS-PHX3 DC1 - 6 day w/ Holidays |  | LV | TFO CONST | TFO | NICK |  | DH2100 |  | Low Voltage | Prime |
|  | 5 | **2100 - TFO Scope Buildout (3MW) - Lineup E - F** |  | 2025-12-22 | 2026-09-11 |  |  |  |  |  |  |  |  |  |  |  |  |  |  |  |  |  |
| QTS - 3070 |  | TFO Scope // DH 2100 / Lineup E - F / Install HAC Support Steel | 5d | 2025-12-22 A | 2025-12-23 A | QTS - 1980, QTS - 2840 | 100% | 2025-12-22 | 2025-12-27 |  |  | QTS-PHX3 DC1 - 6 day w/ Holidays | 01ADMIN | Electrical | TFO CONST | TFO | NICK |  |  |  |  |  |
| QTS - 3080 |  | TFO Scope // DH 2100 / Lineup E - F / Install Stainless Steel Piping Hangers | 4d | 2026-01-07 A | 2026-01-10 A | QTS - 2850, QTS - 3070 | 100% |  |  |  |  | QTS-PHX3 DC1 - 6 day w/ Holidays | 01ADMIN | Mechanical | TFO CONST | TFO | NICK |  |  |  |  |  |
| QTS - 3120 |  | TFO Scope // DH 2100 / Lineup E - F / Uncrate QCools with HACs | 1d | 2026-01-07 A | 2026-01-07 A | QTS - 1020, QTS - 2600, QTS - 2890 | 100% |  |  |  |  | QTS-PHX3 DC1 - 6 day w/ Holidays |  | Mechanical | TFO CONST | TFO | NICK |  |  |  |  |  |
| QTS - 3180 |  | TFO Scope // DH 2100 / Lineup E - F / Raise HAC, QCool & Trays | 2d | 2026-01-08 A | 2026-01-09 A | QTS - 3120 | 100% |  |  |  |  | QTS-PHX3 DC1 - 6 day w/ Holidays |  | Mechanical | TFO CONST | TFO | NICK |  |  |  |  |  |
| QTS - 3150 |  | TFO Scope // DH 2100 / Lineup E - F / Install OH Trapeze - Screen Wall to RPPs | 3d | 2026-01-12 A | 2026-02-04 A | QTS - 3170 SS | 100% | 2026-01-12 | 2026-01-14 |  |  | QTS-PHX3 DC1 - 6 day w/ Holidays |  | Electrical | TFO CONST | TFO | NICK |  |  |  |  |  |
| QTS - 3170 |  | TFO Scope // DH 2100 / Lineup E - F / Install OH Trapeze - Screen Wall to CODs | 3d | 2026-01-12 A | 2026-02-04 A | QTS - 2940 | 100% | 2026-01-12 | 2026-01-14 |  |  | QTS-PHX3 DC1 - 6 day w/ Holidays |  | Electrical | TFO CONST | TFO | NICK |  |  |  |  |  |
| QTS - 24941 |  | TFO Scope // DH 2100 / Lineup E - F / Hang Stainless Steel 6" Fan Wall - QCool - South | 4d | 2026-02-10 A | 2026-03-11 A | QTS - 3110 SS | 100% | 2026-01-28 | 2026-01-31 |  |  | QTS-PHX3 DC1 - 6 day w/ Holidays |  | Mechanical | TFO CONST | TFO | NICK |  | DH2100 |  |  |  |
| QTS - 3110 |  | TFO Scope // DH 2100 / Lineup E - F / Hang Stainless Steel 6" Fan Wall - QCool - North | 4d | 2026-02-10 A | 2026-02-10 A | QTS - 2610, QTS - 2880, QTS - 1100 SS, QTS - 2590, QTS - 3080 | 100% | 2026-01-28 | 2026-01-31 |  |  | QTS-PHX3 DC1 - 6 day w/ Holidays |  | Mechanical | TFO CONST | TFO | NICK |  | DH2100 |  |  |  |
| QTS - 3220 |  | TFO Scope // DH 2100 / Lineup E - F / Pull MC Feeders - CODs to RPPs | 3d | 2026-02-10 A | 2026-02-12 A | QTS - 3170, QTS - 3150, QTS - 2990 | 100% | 2026-02-05 | 2026-02-07 |  |  | QTS-PHX3 DC1 - 6 day w/ Holidays |  | Electrical | TFO CONST | TFO | NICK | Added MC and Removed RPP Set |  |  |  |  |
| QTS - 25711 |  | TFO Scope // DH 2100 / Lineup E - F / Terminate Feeder at CODs | 5d | 2026-03-02 A | 2026-03-30 A | QTS - 3220 | 100% | 2026-03-02 | 2026-03-06 |  |  | QTS-PHX3 DC1 - 6 day w/ Holidays |  | Electrical | TFO CONST | TFO | NICK |  | DH2100 |  |  |  |
| QTS - 3090 |  | TFO Scope // DH 2100 / Lineup E - F / Install Install QCool Arms | 5d | 2026-03-23 A | 2026-03-27 A | QTS - 3120, QTS - 3070, QTS - 2860 | 100% |  |  |  |  | QTS-PHX3 DC1 - 6 day w/ Holidays |  | Electrical | TFO CONST | TFO | NICK |  | DH2100 | Waiting on OH to completed |  |  |
| QTS - 3190 |  | TFO Scope // DH 2100 / Lineup E - F / Set RPP # 12 Units | 5d | 2026-03-30 A | 2026-04-08 A | QTS - 1030, QTS - 3180, QTS - 2960 SS, QTS - 24941 | 100% | 2026-04-02 | 2026-04-07 |  |  | QTS-PHX3 DC1 - 6 day w/ Holidays |  | Electrical | TFO CONST | TFO | NICK |  | DH2100 | The support are being installed |  |  |
| QTS - 3270 |  | TFO Scope // DH 2100 / Lineup E - F / Terminate - BMS & EPMS Connections | 5d | 2026-04-15 A | 2026-05-21 A | QTS - 3040 SS, QTS - 3040 FF | 100% | 2026-06-03 | 2026-06-08 |  |  | QTS-PHX3 DC1 - 6 day w/ Holidays |  | LV | TFO CONST | TFO | NICK |  | DH2100 |  |  |  |
| QTS - 3260 |  | TFO Scope // DH 2100 / Lineup E - F / Terminate Feeder at RPPs | 5d | 2026-04-22 A | 2026-04-27 A | QTS - 3220 FF+3d, QTS - 3190 | 100% |  |  |  |  | QTS-PHX3 DC1 - 6 day w/ Holidays |  | Electrical | TFO CONST | TFO | NICK |  | DH2100 |  |  |  |
| QTS - 3210 |  | TFO Scope // DH 2100 / Lineup E - F / Rough-In I&C | 10d | 2026-04-27 A | 2026-05-01 A | QTS - 3190 | 100% | 2026-04-27 | 2026-05-07 |  |  | QTS-PHX3 DC1 - 6 day w/ Holidays |  | Electrical | TFO CONST | TFO | NICK |  | DH2100 |  | Oscar Armenta |  |
| QTS - 24911 |  | TFO Scope // DH 2100 / Lineup E - F / Detail Ceiling Grid to QCools | 3d | 2026-05-12 A | 2026-05-12 A | QTS - 3210 | 100% | 2026-05-12 | 2026-05-14 |  |  | QTS-PHX3 DC1 - 6 day w/ Holidays | 01ADMIN | Electrical | TFO CONST | TFO | NICK |  | DH2100 |  | Oscar Armenta |  |
| QTS - 3230 |  | TFO Scope // DH 2100 / Lineup E - F / Install Fire Alarm | 7d | 2026-06-03 A | 2026-08-05 A | QTS - 3210 | 100% | 2026-06-03 | 2026-06-10 |  |  | QTS-PHX3 DC1 - 6 day w/ Holidays |  | Electrical | TFO CONST | TFO | NICK | 7/21-Missing cameras (need update from Keith) | DH2100 |  | Electrical | IES |
| QTS - 10350 |  | TFO Scope // DH 2100 / Lineup E - F / Pull RPP Whips - RPP to Racks | 5d | 2026-07-01 A | 2026-07-07 A | QTS - 24791, QTS-1012240 | 100% | 2026-07-08 | 2026-07-13 |  |  | QTS-PHX3 DC1 - 6 day w/ Holidays |  | Electrical | TFO CONST | TFO | NICK |  | DH2100 | Working on A/B/C/D Lineups | Oscar Armenta |  |
| QTS - 10360 |  | TFO Scope // DH 2100 / Lineup E - F / Terminate Whips at RPP | 5d | 2026-07-06 A | 2026-07-10 A | QTS - 10350 FF+3d, QTS-1012240, QTS - 3610 | 100% | 2026-07-11 | 2026-07-16 |  |  | QTS-PHX3 DC1 - 6 day w/ Holidays |  | Electrical | TFO CONST | TFO | NICK |  | DH2100 |  | Oscar Armenta |  |
| QTS - 3200 |  | TFO Scope // DH 2100 / Lineup E - F / Pull LV Wire | 2d | 2026-07-27 A | 2026-07-28 A | QTS - 3180, QTS - 2970 | 100% | 2026-08-03 | 2026-08-04 |  |  | QTS-PHX3 DC1 - 6 day w/ Holidays |  | LV | TFO CONST | TFO | NICK |  | DH2100 |  | Low Voltage | Prime |
| QTS - 3250 |  | TFO Scope // DH 2100 / Lineup E - F / Test & Terminate I&C | 5d | 2026-08-25 | 2026-08-29 | QTS - 3020, QTS - 1270, QTS - 3210, QTS - 3230, QTS - 10360 |  |  |  | -81d | 0d | QTS-PHX3 DC1 - 6 day w/ Holidays |  | LV | TFO CONST | TFO | NICK |  | DH2100 |  | Low Voltage | Prime |
| QTS - 3240 |  | TFO Scope // DH 2100 / Lineup E - F / Terminate LV | 10d | 2026-08-31 | 2026-09-11 | QTS - 3200, QTS - 3010 |  |  |  | -85d | 0d | QTS-PHX3 DC1 - 6 day w/ Holidays |  | LV | TFO CONST | TFO | NICK |  | DH2100 |  | Low Voltage | Prime |

Notes:
- QTS - 2890: Scheduler Notes: Changed Duration from 10 to 5
- QTS - 3220: Scheduler Notes: Added MC and Removed RPP Set

| ID | WBS | Activity | Duration | Start | Finish | Predecessors | Complete | Remaining | Planned start | Planned finish | Total float | Free float | Calendar | Notes | Layton Discipline | Location | Fragnet | Fragnet Responsible Party | TFO-CONST ONLY | Contract | NICK | Project Section | Phase-1 | Baseline | Level | Layton Super | Layton PM | Trade Partner | Allucent CSI Group | D | Vendor Responsible Party | CX Level | No PreUp | Owner Impact Analysis |
| --- | --- | --- | --- | --- | --- | --- | --- | --- | --- | --- | --- | --- | --- | --- | --- | --- | --- | --- | --- | --- | --- | --- | --- | --- | --- | --- | --- | --- | --- | --- | --- | --- | --- | --- |
|  | 1 | **2100 - TFO Scope Buildout (3MW) - Lineup E - F - Fragnet Delays** |  | 2026-03-31 | 2026-04-15 |  |  |  |  |  |  |  |  |  |  |  |  |  |  |  |  |  |  |  |  |  |  |  |  |  |  |  |  |  |
| QTS - 26151 |  | TFO Scope // DH 2100 / Lineup E - F / Fragnet Delay to complete Terminate Feeder at CODs | 5d | 2026-03-31 A | 2026-04-15 A | QTS - 25711 | 100% |  | 2026-03-02 | 2026-03-06 |  |  | QTS-PHX3 DC1 - 6 day w/ Holidays | Manpower Delay | Electrical | DH2100 | Fragnet | Rosendin Electric Inc. | TFO CONST | TFO | NICK |  |  |  |  |  |  |  |  |  |  |  |  |  |
|  | 18 | **DH 2100 Close Out** |  | 2026-07-22 | 2026-09-08 |  |  |  |  |  |  |  |  |  |  |  |  |  |  |  |  |  |  |  |  |  |  |  |  |  |  |  |  |  |
| QTS-29811 |  | DH 2100 / Closeout // LCC Worklist | 15d | 2026-07-22 A | 2026-08-19 | QTS-101890, QTS-25191, QTS-25591, QTS-27361, QTS-1002260, QTS-25521, QTS-M4070, QTS-0980 | 93% | 1d | 2026-07-29 | 2026-08-18 | -69d | 0d |  |  | Closeout |  |  |  |  | BAB |  | Close Out | Phase 1 | IGMP | Level 2 | Jason Hendley | TTodaro | Layton |  |  |  |  |  |  |
| QTS-30041 |  | DH 2100 / Closeout // Final Clean | 5d | 2026-08-11 A | 2026-08-24 | QTS-29811 FF, QTS-29811 SS, QTS-6050 SS, QTS-0960 SS, QTS-5710 SS, QTS-5700, QTS-1210 SS, QTS-0960 FF, QTS-6050 FF | 20% | 4d | 2026-08-12 | 2026-08-18 | -69d | 0d |  |  | Closeout |  |  |  |  | BAB |  | Close Out | Phase 1 | IGMP | Level 2 | Jason Hendley | TTodaro | Layton |  |  |  |  |  |  |
| QTS-30271 |  | DH 2100 / Closeout // A/E Punch List | 10d | 2026-08-25 | 2026-09-08 | QTS-101880, QTS-30041, QTS-29811 FF |  |  |  |  | -69d | 3d |  |  | Closeout |  |  |  |  | BAB |  | Close Out | Phase 1 | IGMP | Level 2 | Jason Hendley | TTodaro | Layton |  |  |  |  |  |  |
|  | 13 | **DH 2100 Commissioning** |  | 2026-02-16 | 2026-09-11 |  |  |  |  |  |  |  |  |  |  |  |  |  |  |  |  |  |  |  |  |  |  |  |  |  |  |  |  |  |
| QTS-100180 |  | DH 2100 / Rooftop Mechanical // Pre Energization Inspection DOAS | 1d | 2026-02-16 A | 2026-02-16 A | QTS-100170, QTS-49411 | 100% |  |  |  |  |  | QTS-PHX3 DC1 - 6 day w/ Holidays |  | Commissioning | DH2100 |  |  |  | BAB |  | Construction | Phase 1 | IGMP | Level 2 |  |  |  | 01ADMIN | DH2100 |  |  |  |  |
| QTS-0980 |  | DH 2100 / Data Hall 2100 / Air Test and Balance | 5d | 2026-07-20 A | 2026-07-25 A | DC1-CHLR-L3-Cx-1000, DC1-CHLR-L3-Cx-1030, DC1-CHLR-L3-Cx-1060, DC1-CHLR-L3-Cx-1090, DC1-CHLR-L3-Cx-1120, DC1-CHLR-L3-Cx-1150, DC1-CHLR-L3-Cx-1180, DC1-CRAH-L3-Cx-1000, DC1-CRAH-L3-Cx-1030, DC1-CRAH-L3-Cx-1060, DC1-CRAH-L3-Cx-1090, DC1-CRAH-L3-Cx-1120, DC1-CRAH-L3-Cx-1150, DC1-CRAH-L3-Cx-1180, DC1-CRAH-L3-Cx-1210, DC1-CRAH-L3-Cx-1240, DC1-CRAH-L3-Cx-1270, DC1-CRAH-L3-Cx-1300, DC1-CRAH-L3-Cx-1330, DC1-CRAH-L3-Cx-1360, DC1-CRAH-L3-Cx-1390, DC1-CRAH-L3-Cx-1420, DC1-CRAH-L3-Cx-1450, DC1-CRAH-L3-Cx-1480, DC1-CRAH-L3-Cx-1510, DC1-CRAH-L3-Cx-1540, DC1-CRAH-L3-Cx-1570, DC1-CRAH-L3-Cx-1600, DC1-CRAH-L3-Cx-1630, DC1-CRAH-L3-Cx-1660, DC1-CRAH-L3-Cx-1690, DC1-CRAH-L3-Cx-1720, DC1-CRAH-L3-Cx-1750, DC1-CRAH-L3-Cx-1780, DC1-CRAH-L3-Cx-1810, DC1-CHLR-L3-Cx-1010, DC1-CHLR-L3-Cx-1040, DC1-CHLR-L3-Cx-1070, DC1-CHLR-L3-Cx-1100, DC1-CHLR-L3-Cx-1130, DC1-CHLR-L3-Cx-1160, DC1-CHLR-L3-Cx-1190, DC1-CRAH-L3-Cx-1010, DC1-CRAH-L3-Cx-1050, DC1-CRAH-L3-Cx-1080, DC1-CRAH-L3-Cx-1110, DC1-CRAH-L3-Cx-1140, DC1-CRAH-L3-Cx-1170, DC1-CRAH-L3-Cx-1200, DC1-CRAH-L3-Cx-1230, DC1-CRAH-L3-Cx-1260, DC1-CRAH-L3-Cx-1290, DC1-CRAH-L3-Cx-1320, DC1-CRAH-L3-Cx-1350, DC1-CRAH-L3-Cx-1380, DC1-CRAH-L3-Cx-1410, DC1-CRAH-L3-Cx-1440, DC1-CRAH-L3-Cx-1470, DC1-CRAH-L3-Cx-1500, DC1-CRAH-L3-Cx-1530, DC1-CRAH-L3-Cx-1560, DC1-CRAH-L3-Cx-1590, DC1-CRAH-L3-Cx-1620, DC1-CRAH-L3-Cx-1650, DC1-CRAH-L3-Cx-1680, DC1-CRAH-L3-Cx-1710, DC1-CRAH-L3-Cx-1740, DC1-CRAH-L3-Cx-1770, DC1-CRAH-L3-Cx-1800, DC1-CRAH-L3-Cx-1830 | 100% |  | 2026-07-25 | 2026-07-30 |  |  | **GLOBAL - 6 Day Workweek w/ Basic Holidays |  | Commissioning |  |  |  |  | BAB |  |  |  |  |  | Commissioning |  | Able |  | DH2100 |  |  |  |  |
| DC1-DH2100-TAB-1030 |  | DC1-DH2100 - Redo - Water Tab (Industrial Loop) | 5d | 2026-07-25 A | 2026-07-30 A | DC1-DH2100-TAB-1000, DC1-DH2100-TAB-1040 | 100% |  | 2026-04-27 | 2026-05-01 |  |  |  |  | Commissioning | DH2100 |  |  |  |  |  |  |  |  |  |  |  |  |  | DH2100 | LAY | L3 |  |  |
| QTS-1012520 |  | DH 2100 / Data Hall 2100 / L2 Checklist CDU | 5d | 2026-07-28 A | 2026-07-28 A | QTS - 3370, QTS - 1270 | 100% |  | 2026-07-29 | 2026-08-04 |  |  | **GLOBAL - 5 Day Workweek w/ Basic Holidays |  | Commissioning |  |  |  |  | BAB |  |  |  |  |  |  |  | REI |  | DH2100 |  |  | NO |  |
| QTS-1220 |  | DH 2100 / Data Hall 2100 / Pre Energization Inspection CDU | 1d | 2026-08-06 A | 2026-08-06 A | QTS-1012520 | 100% |  | 2026-08-05 | 2026-08-05 |  |  | **GLOBAL - 5 Day Workweek w/ Basic Holidays |  | Commissioning |  |  |  |  | BAB |  |  |  |  |  | Commissioning |  | REI |  | DH2100 |  |  |  |  |
|  | 1 | **2100 Path to Power (FTE)** |  |  |  |  |  |  |  |  |  |  |  |  |  |  |  |  |  |  |  |  |  |  |  |  |  |  |  |  |  |  |  |  |
|  | 2 | **Fragnet - DH 2100 Commissioning** |  | 2026-07-21 | 2026-08-12 |  |  |  |  |  |  |  |  |  |  |  |  |  |  |  |  |  |  |  |  |  |  |  |  |  |  |  |  |  |
| DC1-DH2100-TAB-1040 |  | DC1-DH2100 - Fragnet - CDU Flow Design Change | 5d | 2026-07-21 A | 2026-07-24 A | DC1-DH2100-TAB-1000 | 100% |  | 2026-04-27 | 2026-05-01 |  |  |  |  | Commissioning | DH2100 | Fragnet | Quality Technology Services |  |  |  |  |  |  |  |  |  |  |  | DH2100 | LAY | L3 |  | Y |
| DC1-DH2100-TAB-1050 |  | DH 2100 / Fragnet Delay due to Change in BSWY BRKR to LSI | 4d | 2026-08-11 A | 2026-08-12 A | DC1-DH2100-TAB-1000, DC1-DH2100-TAB-1040, QTS-1014410 SS | 100% |  | 2026-08-12 | 2026-08-15 |  |  | **GLOBAL - 6 Day Workweek w/ Basic Holidays |  | Commissioning | DH2100 | Fragnet | Quality Technology Services |  |  |  |  |  |  |  |  |  |  |  | DH2100 | LAY | L3 |  | Y |
|  | 3 | **Existing Scope - DH 2100 Commissioning** |  | 2026-08-05 | 2026-09-11 |  |  |  |  |  |  |  |  |  |  |  |  |  |  |  |  |  |  |  |  |  |  |  |  |  |  |  |  |  |
| QTS-1070 |  | DH 2100 / Electrical L4's | 18d | 2026-08-05 A | 2026-09-01 | QTS-0980, DC1-DH2100-TAB-1030, DC1-DH2100-TAB-1050 FF | 33% | 12d | 2026-08-05 | 2026-08-25 | -79d | 6d | **GLOBAL - 6 Day Workweek w/ Basic Holidays |  | Commissioning |  |  |  |  | BAB |  |  |  |  |  | Electrical |  | ERS |  | DH2100 |  |  |  |  |
| QTS-1012530 |  | DH 2100 / First Time Energization CDU | 6d | 2026-08-07 A | 2026-08-12 A | QTS-1220 | 100% |  | 2026-08-05 | 2026-08-11 |  |  | **GLOBAL - 6 Day Workweek w/ Basic Holidays |  | Commissioning |  |  |  |  | BAB |  |  |  |  |  | Commissioning |  | REI |  | DH2100 |  |  | NO |  |
| QTS-1013490 |  | TFO Scope / DH 2100 / Startup CDU | 5d | 2026-08-19 | 2026-08-24 | QTS-1012530, QTS-0880 FF |  |  |  |  | -71d | 0d | **GLOBAL - 6 Day Workweek w/ Basic Holidays |  | Commissioning |  |  |  | TFO CONST | TFO |  |  |  |  |  | Electrical |  | QTS Vendor |  | DH2100 |  |  |  |  |
| QTS-1014340 |  | DH 2100 / L4 TFO Liquid Cooled Load Bank Set Up | 4d | 2026-08-19 | 2026-08-22 | QTS-1012530 |  |  |  |  | -76d | 6d | **GLOBAL - 6 Day Workweek w/ Basic Holidays |  | Commissioning |  |  |  | TFO CONST | TFO | NICK |  |  |  |  | Mechanical |  | ERS |  | DH2100 |  |  |  |  |
| QTS-1080 |  | DH 2100 / Mechanical L4's | 18d | 2026-08-19 | 2026-09-09 | QTS-0980, QTS-1013720, DC1-DH2100-TAB-1030, QTS-1014020, QTS-1014410, DC1-DH2100-TAB-1050 |  |  |  |  | -85d | 0d | **GLOBAL - 6 Day Workweek w/ Basic Holidays | Delay - UMAS Reprogramming DH 1100 CRAHs | Commissioning |  |  |  |  | BAB |  |  |  |  |  | Mechanical |  | ERS |  | DH2100 |  |  |  | Y |
| QTS-1120 |  | DH 2100 / L4 TFO Liquid Cooled | 6d | 2026-08-31 | 2026-09-05 | QTS-0880, QTS-0920, QTS-0990, QTS - 3250, QTS-1060, QTS-1014340 |  |  |  |  | -82d | 4d | **GLOBAL - 6 Day Workweek w/ Basic Holidays |  | Commissioning |  |  |  | TFO CONST | TFO | NICK |  |  |  |  | Mechanical |  | ERS |  | DH2100 |  |  |  |  |
| QTS-1110 |  | DH 2100 / Air Cooled RVT/ IST | 2d | 2026-09-10 | 2026-09-11 | QTS-1070, QTS-1080, DC1-COMP-L3-CX-1020, DC1-FAN-L3-CX-1020, DC1-COMP-L3-CX-1050, DC1-FAN-L3-CX-1050, DC1-COMP-L3-CX-1080, DC1-FAN-L3-CX-1080, DC1-COMP-L3-CX-1110, DC1-FAN-L3-CX-1110, DC1-COMP-L3-CX-1140, DC1-FAN-L3-CX-1140, DC1-COMP-L3-CX-1170, DC1-FAN-L3-CX-1170, DC1-COMP-L3-CX-1200, DC1-FAN-L3-CX-1200, DC1-GEN-L3-CX-1020, DC1-GEN-L3-CX-1050, DC1-GEN-L3-CX-1080, DC1-GEN-L3-CX-1110, DC1-GEN-L3-CX-1140, DC1-GEN-L3-CX-1170, DC1-GEN-L3-CX-1200, DC1-SWD-L3-CX-1020, DC1-SWD-L3-CX-1050, DC1-SWD-L3-CX-1080, DC1-SWD-L3-CX-1110, DC1-SWD-L3-CX-1140, DC1-SWD-L3-CX-1170, DC1-SWD-L3-CX-1200, DC1-MOD1-L3-CX-1020, DC1-MOD1-L3-CX-1050, DC1-MOD1-L3-CX-1080, DC1-MOD1-L3-CX-1110, DC1-MOD1-L3-CX-1140, DC1-MOD1-L3-CX-1170, DC1-MOD1-L3-CX-1200, DC1-COD-L3-CX-1085, DC1-COD-L3-CX-1100, DC1-COD-L3-CX-1115, DC1-COD-L3-CX-1130, DC1-COD-L3-CX-1145, DC1-COD-L3-CX-1160, DC1-COD-L3-CX-1175, DC1-COD-L3-CX-1190, DC1-COD-L3-CX-1205, DC1-COD-L3-CX-1220, DC1-COD-L3-CX-1235, DC1-COD-L3-CX-1250, DC1-COD-L3-CX-1265, DC1-COD-L3-CX-1280, DC1-COD-L3-CX-1295, DC1-COD-L3-CX-1310, DC1-COD-L3-CX-1325, DC1-COD-L3-CX-1340, DC1-COD-L3-CX-1355, DC1-COD-L3-CX-1370, DC1-COD-L3-CX-1385, DC1-COD-L3-CX-1400, DC1-COD-L3-CX-1415, DC1-COD-L3-CX-1430, DC1-COD-L3-CX-1445, DC1-COD-L3-CX-1460, DC1-COD-L3-CX-1475, DC1-COD-L3-CX-1490, DC1-COD-L3-CX-1505, DC1-COD-L3-CX-1520, DC1-COD-L3-CX-1535, DC1-COD-L3-CX-1070, DC1-COD-L3-CX-1055, DC1-COD-L3-CX-1040, DC1-COD-L3-CX-1025, DC1-COD-L3-CX-1010, DC1-ATS-L3-CX-1535, DC1-ATS-L3-CX-1520, DC1-ATS-L3-CX-1505, DC1-ATS-L3-CX-1490, DC1-ATS-L3-CX-1475, DC1-ATS-L3-CX-1460, DC1-ATS-L3-CX-1445, DC1-ATS-L3-CX-1430, DC1-ATS-L3-CX-1415, DC1-ATS-L3-CX-1400, DC1-ATS-L3-CX-1385, DC1-ATS-L3-CX-1370, DC1-ATS-L3-CX-1355, DC1-ATS-L3-CX-1340, DC1-ATS-L3-CX-1325, DC1-ATS-L3-CX-1310, DC1-ATS-L3-CX-1295, DC1-ATS-L3-CX-1280, DC1-ATS-L3-CX-1265, DC1-ATS-L3-CX-1250, DC1-ATS-L3-CX-1235, DC1-ATS-L3-CX-1220, DC1-ATS-L3-CX-1205, DC1-ATS-L3-CX-1190, DC1-ATS-L3-CX-1175, DC1-ATS-L3-CX-1160, DC1-ATS-L3-CX-1145, DC1-ATS-L3-CX-1130, DC1-ATS-L3-CX-1115, DC1-ATS-L3-CX-1100, DC1-ATS-L3-CX-1085, DC1-ATS-L3-CX-1070, DC1-ATS-L3-CX-1055, DC1-ATS-L3-CX-1040, DC1-ATS-L3-CX-1025, DC1-ATS-L3-CX-1010, DC1-BUS-L3-CX-1010, DC1-BUS-L3-CX-1040, DC1-MOD1-L3-CX-2230, DC1-MOD1-L3-CX-2260, DC1-MOD1-L3-CX-2290, DC1-MOD1-L3-CX-2320, DC1-MOD1-L3-CX-2350, DC1-MOD1-L3-CX-2380, DC1-MOD1-L3-CX-2410, DC1-SWD-L3-CX-2230, DC1-SWD-L3-CX-2260, DC1-SWD-L3-CX-2290, DC1-SWD-L3-CX-2320, DC1-SWD-L3-CX-2350, DC1-SWD-L3-CX-2380, DC1-SWD-L3-CX-2410, DC1-UPSM-L3-CX-2230, DC1-UPSM-L3-CX-2260, DC1-UPSM-L3-CX-2290, DC1-UPSM-L3-CX-2320, DC1-UPSM-L3-CX-2350, DC1-UPSM-L3-CX-2380, DC1-UPSM-L3-CX-2410, DC1-XFM-L3-CX-1230, DC1-XFM-L3-CX-1260, DC1-XFM-L3-CX-1290, DC1-XFM-L3-CX-1320, DC1-XFM-L3-CX-1350, DC1-XFM-L3-CX-1380, DC1-XFM-L3-CX-1410, QTS-1091, QTS-17081, QTS-44451, DC1-CHLR-L3-Cx-1005, DC1-CHLR-L3-Cx-1035, DC1-CHLR-L3-Cx-1065, DC1-CHLR-L3-Cx-1095, DC1-CHLR-L3-Cx-1125, DC1-CHLR-L3-Cx-1155, DC1-CHLR-L3-Cx-1185, QTS - 1290, DC1-L4-Cx-1050 |  |  |  |  | -100d | 0d | **GLOBAL - 7 Day Workweek w/ Basic Holidays |  | Commissioning |  |  |  |  | BAB |  |  |  |  |  | Mechanical |  | ERS |  | DH2100 |  |  |  |  |

Notes:
- QTS - 26151: Scheduler Notes: Manpower Delay to complete Terminate Feeder at CODs
- QTS-100180: allucent_notes_20251014_152335: David Wiltberger on 2025-08-19 09:08: changed pick order / David Wiltberger on 2025-09-02 10:09: Moving to accommodate roofing in Zone 1 / David Wiltberger on 2025-09-24 04:09: BAM not completed Potential Delay / David Wiltberger on 2025-09-30 12:09: BAM did not complete / David Wiltberger on 2025-10-14 10:10: set on recovery schedule / allucent_notes: David Wiltberger on 2025-08-19 09:08: changed pick order / allucent_notes: 2025-08-19 09:08 - User: David Wiltberger - Date Added: 2025-08-19 09:08 - Note: changed pick order / 2025-09-02 10:09 - User: David Wiltberger - Date Added: 2025-09-02 10:09 - Note: Moving to accommodate roofing in Zone 1 / 2025-09-24 04:09 - User: Dav
- DC1-DH2100-TAB-1030: Scheduler Notes: Bulletin design change for CDU Flow
- DC1-DH2100-TAB-1040: Scheduler Notes: Bulletin design change for CDU Flow
- DC1-DH2100-TAB-1050: Scheduler Notes: Change Busway Breaker from LSIG to LSI
- QTS-1080: Scheduler Notes: 7/24/26 - Delay - UMAS Reprogramming DH 1100 CRAHs

| ID | WBS | Activity | Duration | Start | Finish | Predecessors | Complete | Planned start | Planned finish | Total float | Free float | Calendar | Project Section | Layton Discipline | Baseline | Phase-1-1 | Project Section-1 | Location | Layton Super | Contract | Allucent CSI Group | Level | Notes | Phase-1 | Note/Comments | Trade Partner |
| --- | --- | --- | --- | --- | --- | --- | --- | --- | --- | --- | --- | --- | --- | --- | --- | --- | --- | --- | --- | --- | --- | --- | --- | --- | --- | --- |
|  | 7 | **Data Hall 1200 (9MW)** |  | 2025-08-12 | 2026-10-05 |  |  |  |  |  |  |  |  |  |  |  |  |  |  |  |  |  |  |  |  |  |
| QTS-1951 |  | DH 1200 // Prime & Paint Exposed Structure | 10d | 2025-09-02 A | 2025-09-15 A | QTS-21521 | 100% |  |  |  |  |  | Construction | Build Out | IGMP | Phase 2 | Construction | DH1200 | Doug Hayes | BAB |  |  |  |  |  |  |
| QTS-8611 |  | DH 1200 // Perimeter Insulation | 7d | 2025-10-01 A | 2025-10-03 A | QTS-20381, QTS-6921 SS | 100% | 2025-10-01 | 2025-10-09 |  |  |  | Construction | Core & Shell | IGMP | Phase 2 | Construction | DH1200 |  | BAB |  |  |  |  |  |  |
| QTS-6921 |  | DH 1200 // Establish Control & Layout Walls | 3d | 2025-10-03 A | 2025-11-12 A | QTS-22021 FF, QTS-1951 | 100% | 2025-10-03 | 2025-10-07 |  |  |  | Construction | Build Out | IGMP | Phase 2 | Construction | DH1200 | Doug Hayes | BAB | 01ADMIN |  |  |  |  |  |
| QTS-4621 |  | DH 1200 // Install Fire Sprinkler | 8d | 2025-10-08 A | 2025-10-17 A | QTS-22021 | 100% |  |  |  |  |  | Construction | Mechanical | IGMP | Phase 2 | Construction | DH1200 |  | BAB | 01ADMIN |  |  |  |  |  |
|  | 8 | **Zone 2 Corridor 1013** |  | 2025-09-29 | 2026-08-24 |  |  |  |  |  |  |  |  |  |  |  |  |  |  |  |  |  |  |  |  |  |
| QTS-20381 |  | Zone 2 Gridline 21-30 / Corridor 1013 // Frame Exterior Walls | 2d | 2025-09-29 A | 2025-09-30 A | QTS-19801 | 100% |  |  |  |  |  | Construction | Build Out | IGMP |  |  |  | Doug Hayes | BAB |  | Level 1 |  |  |  |  |
| QTS-20811 |  | Zone 2 Gridline 21-30 / Corridor 1013 // In Wall Rough Electrical (Exterior) | 10d | 2025-10-01 A | 2025-10-24 A | QTS-39041, QTS-20381 | 100% | 2025-10-01 | 2025-10-14 |  |  |  | Construction | Electrical | IGMP |  |  |  |  | BAB | 01ADMIN | Level 1 |  |  |  |  |
| QTS-20821 |  | Zone 2 Gridline 21-30 / Corridor 1013 // In Wall Rough Plumbing | 10d | 2025-10-27 A | 2025-10-28 A | QTS-20371, QTS-20381 | 100% | 2025-10-27 | 2025-11-07 |  |  |  | Construction | Mechanical | IGMP |  |  |  |  | BAB | 01ADMIN | Level 1 |  |  |  |  |
| QTS-101650 |  | Zone 2 Gridline 21-30 / Corridor 1013 // Frame Corridor Walls | 2d | 2025-11-14 A | 2025-11-21 A | QTS-20381 | 100% | 2025-11-05 | 2025-11-06 |  |  |  | Construction | Build Out | IGMP |  |  |  |  | BAB | 01ADMIN | Level 1 |  |  |  |  |
| QTS-22931 |  | Zone 2 Gridline 21-30 / Corridor 1013 // Rough Fire Sprinklers | 5d | 2026-01-05 A | 2026-01-09 A | QTS-101650 | 100% |  |  |  |  | QTS-PHX3 DC1 - 6 day w/ Holidays | Construction | Mechanical | IGMP |  |  |  |  | BAB |  | Level 1 |  |  |  |  |
| QTS-1003490 |  | Zone 2 Gridline 21-30 / Corridor 1013 // Prime & Paint Corridor Wall - EG Side | 2d | 2026-01-14 A | 2026-01-15 A | QTS-101650 | 100% |  |  |  |  | QTS-PHX3 DC1 - 6 day w/ Holidays | Construction | Build Out | IGMP |  |  |  |  | BAB |  | Level 1 |  |  |  |  |
| QTS-1003120 |  | Zone 2 Gridline 21-30 / Corridor 1013 // Insulate Corridor Walls - Top Out | 2d | 2026-01-21 A | 2026-01-22 A | QTS-101650 | 100% |  |  |  |  | QTS-PHX3 DC1 - 6 day w/ Holidays | Construction | Build Out | IGMP |  |  |  |  | BAB | 01ADMIN | Level 1 |  |  |  |  |
| QTS-21491 |  | Zone 2 Gridline 21-30 / Corridor 1013 // Hang Drywall - Corridor Side - Top Out | 3d | 2026-01-27 A | 2026-02-09 A | QTS-1003120 | 100% | 2026-01-27 | 2026-01-29 |  |  | QTS-PHX3 DC1 - 6 day w/ Holidays | Construction | Build Out | IGMP |  |  |  |  | BAB | 01ADMIN | Level 1 |  |  |  |  |
| QTS-22471 |  | Zone 2 Gridline 21-30 / Corridor 1013 // Prime & Paint Exterior Wall - Top Out | 2d | 2026-01-27 A | 2026-02-26 A | QTS-20381 | 100% | 2026-01-27 | 2026-01-28 |  |  | QTS-PHX3 DC1 - 6 day w/ Holidays | Construction | Build Out | IGMP |  |  |  |  | BAB |  | Level 1 |  |  |  |  |
| QTS-101660 |  | Zone 2 Gridline 21-30 / Corridor 1013 // In Wall Rough Electrical (Corridor) | 4d | 2026-01-28 A | 2026-01-31 A | QTS-101650 | 100% |  |  |  |  | QTS-PHX3 DC1 - 6 day w/ Holidays | Construction | Electrical | IGMP |  |  |  |  | BAB | 01ADMIN | Level 1 |  |  |  |  |
| QTS-21261 |  | Zone 2 Gridline 21-30 / Corridor 1013 // In Wall Inspections Corridor | 1d | 2026-01-31 A | 2026-01-31 A | QTS-101660 FF, QTS-20811, QTS-20821 FF, QTS-20821 | 100% | 2026-01-30 | 2026-01-30 |  |  | QTS-PHX3 DC1 - 6 day w/ Holidays | Construction | Mechanical | IGMP |  |  |  |  | BAB | 01ADMIN | Level 1 | 1/20/26: Inspection schedule from 1/21/26 |  |  |  |
| QTS-1003160 |  | Zone 2 Gridline 21-30 / Corridor 1013 // In Wall Rough Electrical (Exterior) | 4d | 2026-02-02 A | 2026-02-05 A | QTS-20381 | 100% |  |  |  |  | QTS-PHX3 DC1 - 6 day w/ Holidays | Construction | Electrical | IGMP |  |  |  |  | BAB | 01ADMIN | Level 1 |  |  |  |  |
| QTS-21301 |  | Zone 2 Gridline 21-30 / Corridor 1013 // Insulate Corridor Walls - Remaining | 2d | 2026-02-02 A | 2026-02-09 A | QTS-21261 | 100% | 2026-02-12 | 2026-02-13 |  |  | QTS-PHX3 DC1 - 6 day w/ Holidays | Construction | Build Out | IGMP |  |  |  |  | BAB | 01ADMIN | Level 1 |  |  |  |  |
| QTS-1003110 |  | Zone 2 Gridline 21-30 / Corridor 1013 // Hang Drywall - Corridor Side - Remaining | 3d | 2026-02-05 A | 2026-02-09 A | QTS-101660, QTS-21301 | 100% | 2026-02-12 | 2026-02-14 |  |  | QTS-PHX3 DC1 - 6 day w/ Holidays | Construction | Build Out | IGMP |  |  |  |  | BAB | 01ADMIN | Level 1 |  |  |  |  |
| QTS-1003170 |  | Zone 2 Gridline 21-30 / Corridor 1013 // In Wall Inspections Exterior | 1d | 2026-02-06 A | 2026-02-06 A | QTS-1003160 | 100% |  |  |  |  | QTS-PHX3 DC1 - 6 day w/ Holidays | Construction | Mechanical | IGMP |  |  |  |  | BAB | 01ADMIN | Level 1 | 1/20/26: Inspection schedule from 1/21/26 |  |  |  |
| QTS-1003180 |  | Zone 2 Gridline 21-30 / Corridor 1013 // Hang Drywall - Exterior Wall - Remaining | 3d | 2026-02-07 A | 2026-02-09 A | QTS-1003160, QTS-1003170 | 100% | 2026-02-17 | 2026-02-19 |  |  | QTS-PHX3 DC1 - 6 day w/ Holidays | Construction | Build Out | IGMP |  |  |  |  | BAB | 01ADMIN | Level 1 | 2/3/26: Inspections |  |  |  |
| QTS-1003130 |  | Zone 2 Gridline 21-30 / Corridor 1013 // Tape & Finish Drywall - Corridor Side - Remaining | 5d | 2026-02-11 A | 2026-02-18 A | QTS-1003110 | 100% | 2026-02-11 | 2026-02-16 |  |  | QTS-PHX3 DC1 - 6 day w/ Holidays | Construction | Build Out | IGMP |  |  |  |  | BAB | 01ADMIN | Level 1 |  |  |  |  |
| QTS-21941 |  | Zone 2 Gridline 21-30 / Corridor 1013 // Tape & Finish Drywall - Corridor Side - Top Out | 5d | 2026-02-11 A | 2026-02-18 A | QTS-21491 | 100% | 2026-02-11 | 2026-02-16 |  |  | QTS-PHX3 DC1 - 6 day w/ Holidays | Construction | Build Out | IGMP |  |  |  |  | BAB | 01ADMIN | Level 1 |  |  |  |  |
| QTS-26161 |  | Zone 2 Gridline 21-30 / Corridor 1013 // Install Fire Alarm Devices | 4d | 2026-02-12 A | 2026-02-13 A | QTS-1003180 | 100% | 2026-02-12 | 2026-02-16 |  |  | QTS-PHX3 DC1 - 6 day w/ Holidays | Construction | Electrical | IGMP |  |  |  |  | BAB |  | Level 1 |  |  |  |  |
| QTS-1003190 |  | Zone 2 Gridline 21-30 / Corridor 1013 // Tape & Finish Drywall - Exterior Side - Remaining | 5d | 2026-02-13 A | 2026-02-20 A | QTS-1003180 | 100% | 2026-02-13 | 2026-02-18 |  |  | QTS-PHX3 DC1 - 6 day w/ Holidays | Construction | Build Out | IGMP |  |  |  |  | BAB | 01ADMIN | Level 1 |  |  |  |  |
| QTS-1003150 |  | Zone 2 Gridline 21-30 / Corridor 1013 // Paint Wall - Corridor Side - Remaining | 2d | 2026-02-25 A | 2026-02-26 A | QTS-1003130 | 100% |  |  |  |  | QTS-PHX3 DC1 - 6 day w/ Holidays | Construction | Build Out | IGMP |  |  |  |  | BAB | 01ADMIN | Level 1 |  |  |  |  |
| QTS-1003140 |  | Zone 2 Gridline 21-30 / Corridor 1013 // Paint Wall - Corridor Side - Top Out | 2d | 2026-02-26 A | 2026-03-02 A | QTS-21941 | 100% | 2026-02-26 | 2026-02-27 |  |  | QTS-PHX3 DC1 - 6 day w/ Holidays | Construction | Build Out | IGMP |  |  |  |  | BAB | 01ADMIN | Level 1 |  |  |  |  |
| QTS-1003200 |  | Zone 2 Gridline 21-30 / Corridor 1013 // Prime & Paint Exterior Wall - Remaining | 2d | 2026-02-26 A | 2026-03-02 A | QTS-1003190 | 100% | 2026-02-26 | 2026-02-27 |  |  | QTS-PHX3 DC1 - 6 day w/ Holidays | Construction | Build Out | IGMP |  |  |  |  | BAB |  | Level 1 |  |  |  |  |
| QTS-1008540 |  | Zone 2 Gridline 21-30 / Corridor 1013 // Install Raceway From Pod to Dog House - Zone 2 First Floor | 14d | 2026-03-09 A | 2026-04-15 A | QTS-1003200 | 100% | 2026-03-09 | 2026-03-24 |  |  | QTS-PHX3 DC1 - 6 day w/ Holidays | Construction | Electrical | IGMP |  |  | DH1200 |  | BAB | 01ADMIN | Roof |  | Phase 2 |  |  |
| QTS-25551 |  | Zone 2 Gridline 21-30 / Corridor 1013 // Rough Overhead Ductwork Gridline 21-24 | 4d | 2026-03-17 A | 2026-04-10 A | QTS-22471, QTS-1003140 | 100% | 2026-03-17 | 2026-03-20 |  |  | QTS-PHX3 DC1 - 6 day w/ Holidays | Construction | Mechanical | IGMP |  |  |  |  | BAB |  | Level 1 |  |  |  |  |
| QTS-24001 |  | Zone 2 Gridline 21-30 / Corridor 1013 // Exterior Door Install | 2d | 2026-03-18 A | 2026-03-19 A | QTS-16151, QTS-22471, QTS-1003200, QTS-1003200 FF | 100% |  |  |  |  | QTS-PHX3 DC1 - 6 day w/ Holidays | Construction | Build Out | IGMP |  |  |  |  | BAB |  | Level 1 |  |  |  |  |
| QTS-24121 |  | Zone 2 Gridline 21-30 / Corridor 1013 // Rough Electrical & Security to Exterior Door | 4d | 2026-03-18 A | 2026-03-30 A | QTS-24001 | 100% | 2026-03-18 | 2026-03-21 |  |  | QTS-PHX3 DC1 - 6 day w/ Holidays | Construction | Electrical | IGMP |  |  |  |  | BAB |  | Level 1 |  |  |  |  |
| QTS-23091 |  | Zone 2 Gridline 21-30 / Corridor 1013 // Rough Overhead Conduit | 5d | 2026-03-25 A | 2026-04-15 A | QTS-22931 SS+3d, QTS-22471, QTS-22931 | 100% | 2026-04-01 | 2026-04-06 |  |  | QTS-PHX3 DC1 - 6 day w/ Holidays | Construction | Electrical | IGMP |  |  | DH1200 |  | BAB |  | Level 1 |  |  |  |  |
| QTS-43601 |  | Zone 2 Gridline 21-30 / Corridor 1013 // Rough Overhead Ductwork Gridline 24-27 | 4d | 2026-04-11 A | 2026-04-20 A | QTS-25551 | 100% | 2026-04-11 | 2026-04-15 |  |  | QTS-PHX3 DC1 - 6 day w/ Holidays | Construction | Mechanical | IGMP |  | Construction |  |  | BAB |  | Level 1 | 04/21: 95% completed - PCI wrong penetration |  |  |  |
| QTS-43611 |  | Zone 2 Gridline 21-30 / Corridor 1013 // Rough Overhead Ductwork Gridline 27-30 | 3d | 2026-04-21 A | 2026-05-18 A | QTS-43601, QTS-23091 FF | 100% | 2026-04-21 | 2026-04-23 |  |  | QTS-PHX3 DC1 - 6 day w/ Holidays | Construction | Mechanical | IGMP |  | Construction | DH1200 |  | BAB |  | Level 1 |  |  |  |  |
| QTS-26181 |  | Zone 2 Gridline 21-30 / Corridor 1013 // Install Basket Tray | 8d | 2026-05-18 A | 2026-05-26 A | QTS-43611, QTS-1008540 | 100% | 2026-05-18 | 2026-05-27 |  |  | QTS-PHX3 DC1 - 6 day w/ Holidays | Construction | LV | IGMP |  |  | DH1200 |  | BAB |  | Level 1 |  |  |  |  |
| QTS-26151 |  | Zone 2 Gridline 21-30 / Corridor 1013 // Install Light Fixtures On Walls | 8d | 2026-07-08 A | 2026-07-14 A | QTS-43611 FF+3d, QTS-1008540 | 100% | 2026-07-15 | 2026-07-23 |  |  | QTS-PHX3 DC1 - 6 day w/ Holidays | Construction | Electrical | IGMP |  |  | DH1200 | Oscar Armenta | BAB |  | Level 1 |  |  | 7/14: manpower/low priority |  |
| QTS-1240 |  | DH 1200 / Corridor 1013 / Install Fire Caulking POD R12 | 2d | 2026-07-15 A | 2026-07-16 A | QTS-43611 | 100% | 2026-07-22 | 2026-07-23 |  |  | **GLOBAL - 6 Day Workweek w/ Basic Holidays |  | Build Out |  |  |  |  | Ed Carter | BAB |  |  |  |  |  | Riteway |
| QTS-1181 |  | DH 1200 / Corridor 1013 / Install FEC's | 2d | 2026-07-20 A | 2026-07-21 A | QTS-1003200 | 100% | 2026-08-01 | 2026-08-03 |  |  | **GLOBAL - 6 Day Workweek w/ Basic Holidays |  | Build Out |  |  |  |  | Ed Carter | BAB |  |  |  |  |  | ISEC |
| QTS-1250 |  | DH 1200 / Corridor 1013 / Install LV Cable form Pod to LV tray | 6d | 2026-07-23 A | 2026-07-28 A | QTS-1240 | 100% | 2026-07-29 | 2026-08-04 |  |  | **GLOBAL - 6 Day Workweek w/ Basic Holidays |  | LV |  |  |  |  | Low Voltage | BAB |  |  |  |  |  | E2/Prime |
| QTS-1260 |  | DH 1200 / Corridor 1013 / Hang Tape Finish Column Patch Backs | 4d | 2026-07-29 A | 2026-08-01 A | QTS-1240 | 100% | 2026-08-05 | 2026-08-08 |  |  | **GLOBAL - 6 Day Workweek w/ Basic Holidays |  | Build Out |  |  |  |  | Ed Carter | BAB |  |  |  |  |  | PCI |
| QTS-1230 |  | DH 1200 / Corridor 1013 / Install Security Trim out | 3d | 2026-08-03 A | 2026-08-05 A | QTS-26181 | 100% | 2026-08-05 | 2026-08-07 |  |  | **GLOBAL - 6 Day Workweek w/ Basic Holidays |  | LV |  |  |  |  | Low Voltage | BAB |  |  |  |  |  | Securitas |
| QTS-1270 |  | DH 1200 / Corridor 1013 / Electrical Trim out | 2d | 2026-08-03 A | 2026-08-05 A | QTS-1260 | 100% | 2026-08-08 | 2026-08-10 |  |  | **GLOBAL - 6 Day Workweek w/ Basic Holidays |  | Electrical |  |  |  |  | Electrical | BAB |  |  |  |  |  | REI |
| QTS-1280 |  | DH 1200 / Corridor 1013 / Final Paint | 1d | 2026-08-03 A | 2026-08-04 A | QTS-1260, QTS-1250 | 100% | 2026-08-08 | 2026-08-08 |  |  | **GLOBAL - 6 Day Workweek w/ Basic Holidays |  | Build Out |  |  |  |  | Jason Hendley | BAB |  |  |  |  |  | PPC |
| QTS-1290 |  | DH 1200 / Corridor 1013 / Burnish Concrete Floor | 1d | 2026-08-19 | 2026-08-19 | QTS-1181 |  |  |  | -89d | 0d | **GLOBAL - 6 Day Workweek w/ Basic Holidays |  | Build Out |  |  |  |  | Ben Ribble | BAB |  |  |  |  |  | Bldg Solutions |
| QTS-1185 |  | DH 1200 / Corridor 1013 / Install Rubber Base | 2d | 2026-08-20 | 2026-08-21 | QTS-1290 |  |  |  | -89d | 0d | **GLOBAL - 6 Day Workweek w/ Basic Holidays |  | Build Out |  |  |  |  | Ben Ribble | BAB |  |  |  |  |  | Wholesale Flooring |
| QTS-1300 |  | DH 1200 / Corridor 1013 / Clean | 2d | 2026-08-22 | 2026-08-24 | QTS-1185, QTS-1280, QTS-1270, QTS-1230 |  |  |  | -89d | 35d | **GLOBAL - 6 Day Workweek w/ Basic Holidays |  | Build Out |  |  |  |  | Jason Hendley | BAB |  |  |  |  |  | REI |

Notes:
- QTS-6921: allucent_notes_20251118_192630: Zack Goertz on 2025-10-14T16:38:05.563Z: Needs resequencing zone 3 and BOH are next priorities. / Jason Johnston on 2025-10-14 15:10: Need to resequencing and make sure we are on the right critical path. / Luis Vea on 2025-10-21T15:10:01.983Z: manpower got pushed back to zone 1, will be falling back on zone 2 to start getting on these locations, stand by / Jason Johnston on 2025-10-21 12:10: Moving out to reallocate for zone 1 / Jason Johnston on 2025-11-11 16:11: early access / allucent_notes_20251111_182405: Zack Goertz on 2025-10-14T16:38:05.563Z: Needs resequencing zone 3 and BOH are next priorities. / Jason Johnston on 2025-10-14 15:10: Need to resequencing and make sure we are on the right critical path. / Luis Vea on 2025-10-21T15:10:01.983Z: manpower got pushed back to zone 1, will be falling back on zone 2 to start getting on these locations, stand by / Jason Johnston on 2025-10-21 12:10: Moving out to reallocate for zone 1 / Jason Johnston on 2025-11-11 16:11: early access / allucent_notes_20251104_160200: Zack Goertz on 2025-10-14T16:38:05.563Z: Needs resequencing zone 3 and BOH are next priorities. / Jason Johnston on 2025-10-14 15:10: Need to resequencing and make sure we are on the right critical path. / Luis Vea on 2025-10-21T15:10:01.983Z: manpower got pushed back to zone 1, will be falling back on zone 2 to start getting on these locations, stand by / Jason Johnston on 2025-10-21 12:10: Moving out to reallocate for zone 1 / allucent_notes_20251028_163138: Zack Goertz on 2025-10-14T16:38:05.563Z: Needs resequencing zone 3 and BOH are next priorities. / Jason Johnston on 2025-10-14 15:10: Need to resequencing and make sure we are on the right critical path. / Luis Vea on 2025-10-21T15:10:01.983Z: manpower got pushed back to zone 1, will be falling back on zone 2 to start getting on these locations, stand by / Jason Johnston on 2025-10-21 12:10: Moving out to reallocate for zone 1 / allucent_notes_20251027_224008: Zack Goertz on 2025-10-14T16:38:05.563Z: Needs resequencing zone 3 and BOH are next priorities. / Jason Johnston on 2025-10-14 15:10: Need to resequencing and make sure we are on the right critical path. / Luis Vea on 2025-10-21T15:10:01.983Z: manpower got pushed back to zone 1, will be falling back on zone 2 to start getting on these locations, stand by / Jason Johnston on 2025-10-21 12:10: Moving out to reallocate for zone 1 / allucent_notes_20251021_145627: Zack Goertz on 2025-10-14T16:38:05.563Z: Needs resequencing zone 3 and BOH are next priorities. / Jason Johnston on 2025-10-14 15:10: Need to resequencing and make sure we are on the right critical path. / Luis Vea on 2025-10-21T15:10:01.983Z: manpower got pushed back to zone 1, will be falling back on zone 2 to start getting on these locations, stand by / Jason Johnston on 2025-10-21 12:10: Moving out to reallocate for zone 1 / allucent_notes_20251014_152335: Zack Goertz on 2025-10-14T16:38:05.563Z: Needs resequencing zone 3 and BOH are next priorities. / Jason Johnston on 2025-10-14 15:10: Need to resequencing and make sure we are on the right critical path. / allucent_notes: 2025-10-14T16:38:05.563Z - User: Zack Goertz - Date Added: 2025-10-14T16:38:05.563Z - Note: Needs resequencing zone 3 and BOH are next priorities. / 2025-10-14 15:10 - User: Jason Johnston - Date Added: 2025-10-14 15:10 - Note: Need to resequencing and
- QTS-20811: allucent_notes_20251027_224008: David Wiltberger on 2025-10-14 12:10: walls not completed / Luis Vea on 2025-10-21T14:50:20.970Z: wall is completed, finishing today / allucent_notes_20251021_145627: David Wiltberger on 2025-10-14 12:10: walls not completed / Luis Vea on 2025-10-21T14:50:20.970Z: wall is completed, finishing today / allucent_notes_20251014_152335: David Wiltberger on 2025-10-14 12:10: walls not completed / allucent_notes: 2025-10-14 12:10 - User: David Wiltberger - Date Added: 2025-10-14 12:10 - Note: walls not completed / 2025-10-21T14:50:20.970Z - User: Luis Vea - Date Added: 2025-10-21T14:50:20.970Z - Note: wall is completed, finishing today
- QTS-20821: allucent_notes_20251028_163138: David Wiltberger on 2025-10-07 15:10: No wall has been built / Luis Vea on 2025-10-21T14:49:39.380Z: walls have been built, waiting for material to arrive / Scott Masterson on 2025-10-27 16:10: Minimal inwall rough. BAM only needs to stub out and then install plumbing after wall paint. / allucent_notes_20251027_224008: David Wiltberger on 2025-10-07 15:10: No wall has been built / Luis Vea on 2025-10-21T14:49:39.380Z: walls have been built, waiting for material to arrive / Scott Masterson on 2025-10-27 16:10: Minimal inwall rough. BAM only needs to stub out and then install plumbing after wall paint. / allucent_notes_20251021_145627: David Wiltberger on 2025-10-07 15:10: No wall has been built / Luis Vea on 2025-10-21T14:49:39.380Z: walls have been built, waiting for material to arrive / allucent_notes_20251014_152335: David Wiltberger on 2025-10-07 15:10: No wall has been built / allucent_notes: 2025-10-07 15:10 - User: David Wiltberger - Date Added: 2025-10-07 15:10 - Note: No wall has been built / 2025-10-21T14:49:39.380Z - User: Luis Vea - Date Added: 2025-10-21T14:49:39.380Z - Note: walls have been built, waiting for material to arrive / 20
- QTS-101650: allucent_notes_20251202_153722: Jason Johnston on 2025-11-04 12:11: Not started. Need better update. / Jason Johnston on 2025-11-11 15:11: Starting 11/12 with small crew. / Jason Johnston on 2025-11-11 15:11: Duration too short. / allucent_notes_20251118_192630: Jason Johnston on 2025-11-04 12:11: Not started. Need better update. / Jason Johnston on 2025-11-11 15:11: Starting 11/12 with small crew. / Jason Johnston on 2025-11-11 15:11: Duration too short. / allucent_notes_20251111_182405: Jason Johnston on 2025-11-04 12:11: Not started. Need better update. / Jason Johnston on 2025-11-11 15:11: Starting 11/12 with small crew. / Jason Johnston on 2025-11-11 15:11: Duration too short. / allucent_notes_20251104_160200: Jason Johnston on 2025-11-04 12:11: Not started. Need better update. / allucent_notes: 2025-11-04 12:11 - User: Jason Johnston - Date Added: 2025-11-04 12:11 - Note: Not started. Need better update. / 2025-11-11 15:11 - User: Jason Johnston - Date Added: 2025-11-11 15:11 - Note: Starting 11/12 with small crew. / 2025-11-11 15:11 - User: J
- QTS-101660: allucent_notes_20251209_203830: Luis Vea on 2025-12-01 09:40: not part of the green mile, this will be pushed. / allucent_notes_20251202_153722: Luis Vea on 2025-12-01 09:40: not part of the green mile, this will be pushed. / allucent_notes_20251027_224008: David Wiltberger on 2025-10-14 12:10: walls not completed / Luis Vea on 2025-10-21T14:50:20.970Z: wall is completed, finishing today / allucent_notes_20251021_145627: David Wiltberger on 2025-10-14 12:10: walls not completed / Luis Vea on 2025-10-21T14:50:20.970Z: wall is completed, finishing today / allucent_notes_20251014_152335: David Wiltberger on 2025-10-14 12:10: walls not completed / allucent_notes_20251230_164549: Luis Vea on 2025-12-01 09:40: not part of the green mile, this will be pushed. / allucent_notes: 2025-12-01 09:40 - User: Luis Vea - Date Added: 2025-12-01 09:40 - Note: not part of the green mile, this will be pushed.
- QTS-21261: Scheduler Notes: 1/20/26: Inspection schedule from 1/21/26
- QTS-1003160: allucent_notes_20251209_203830: Luis Vea on 2025-12-01 09:40: not part of the green mile, this will be pushed. / allucent_notes_20251202_153722: Luis Vea on 2025-12-01 09:40: not part of the green mile, this will be pushed. / allucent_notes_20251027_224008: David Wiltberger on 2025-10-14 12:10: walls not completed / Luis Vea on 2025-10-21T14:50:20.970Z: wall is completed, finishing today / allucent_notes_20251021_145627: David Wiltberger on 2025-10-14 12:10: walls not completed / Luis Vea on 2025-10-21T14:50:20.970Z: wall is completed, finishing today / allucent_notes_20251014_152335: David Wiltberger on 2025-10-14 12:10: walls not completed / allucent_notes_20251230_164549: Luis Vea on 2025-12-01 09:40: not part of the green mile, this will be pushed. / allucent_notes: 2025-12-01 09:40 - User: Luis Vea - Date Added: 2025-12-01 09:40 - Note: not part of the green mile, this will be pushed.
- QTS-1003170: Scheduler Notes: 1/20/26: Inspection schedule from 1/21/26
- QTS-1003180: Scheduler Notes: 2/3/26: Inspections
- QTS-1008540: allucent_notes_20251014_152335: David Wiltberger on 2025-08-19 09:08: changed pick order / David Wiltberger on 2025-09-02 10:09: Moving to accommodate roofing in Zone 1 / David Wiltberger on 2025-09-24 04:09: BAM not completed Potential Delay / David Wiltberger on 2025-09-30 12:09: BAM did not complete / David Wiltberger on 2025-10-14 10:10: set on recovery schedule / allucent_notes: David Wiltberger on 2025-08-19 09:08: changed pick order / allucent_notes: 2025-08-19 09:08 - User: David Wiltberger - Date Added: 2025-08-19 09:08 - Note: changed pick order / 2025-09-02 10:09 - User: David Wiltberger - Date Added: 2025-09-02 10:09 - Note: Moving to accommodate roofing in Zone 1 / 2025-09-24 04:09 - User: Dav
- QTS-43601: Scheduler Notes: 04/21: 95% completed - PCI wrong penetration

| ID | WBS | Activity | Duration | Start | Finish | Predecessors | Complete | Planned start | Planned finish | Calendar | Notes | Project Section | Layton Discipline | Baseline | Location | Level | Fragnet | Layton Super | Fragnet Responsible Party | Contract | Trade Partner | Allucent CSI Group | Phase-1-1 | Project Section-1 | TFO-CONST ONLY | NICK |
| --- | --- | --- | --- | --- | --- | --- | --- | --- | --- | --- | --- | --- | --- | --- | --- | --- | --- | --- | --- | --- | --- | --- | --- | --- | --- | --- |
|  | 1 | **Fragnet - Zone 2 Corridor 1013** |  | 2026-03-31 | 2026-07-24 |  |  |  |  |  |  |  |  |  |  |  |  |  |  |  |  |  |  |  |  |  |
| QTS-1009340 |  | Zone 2 Gridline 21-30 / Corridor 1013 // Fragnet Delay to complete Rough Electrical & Security to Exterior Door | 4d | 2026-03-31 A | 2026-07-24 A | QTS-24121 | 100% | 2026-03-18 | 2026-03-21 | QTS-PHX3 DC1 - 6 day w/ Holidays | Manpower Delay | Construction | Electrical | IGMP | DH1200 | Level 1 | Fragnet | Electrical | Rosendin Electric Inc. | BAB | REI/Securtitas |  |  |  |  |  |
|  | 3 | **Data Hall 1200** |  | 2025-11-26 | 2026-10-05 |  |  |  |  |  |  |  |  |  |  |  |  |  |  |  |  |  |  |  |  |  |
| QTS-10471 |  | DH 1200 // Frame Data Hall / Corridor Wall 1017-1018 (West) | 7d | 2025-11-26 A | 2025-12-08 A | QTS-8621 | 100% |  |  |  |  | Construction | Build Out | IGMP | DH1200 |  |  |  |  | BAB |  | 01ADMIN | Phase 2 | Construction |  |  |
| QTS-11231 |  | DH 1200 // Install Hollow Metal Frames (West) | 1d | 2025-12-10 A | 2025-12-10 A | QTS-10471 | 100% |  |  |  |  | Construction | Build Out | IGMP | DH1200 |  |  |  |  | BAB |  | 01ADMIN | Phase 2 | Construction |  |  |
| QTS-10461 |  | DH 1200 // Frame Data Hall / Corridor Wall 1015-1016 (East) | 5d | 2026-01-14 A | 2026-01-17 A | QTS-10471, QTS-8611, QTS-4621, QTS-6921 | 100% | 2026-01-14 | 2026-01-20 | QTS-PHX3 DC1 - 6 day w/ Holidays |  | Construction | Build Out | IGMP | DH1200 |  |  |  |  | BAB |  | 01ADMIN | Phase 2 | Construction |  |  |
| QTS-102340 |  | DH 1200 // Top Out / Corridor Wall 1015-1016 (East) - Data Hall Side | 3d | 2026-01-22 A | 2026-01-26 A | QTS-10461 | 100% | 2026-01-22 | 2026-01-24 | QTS-PHX3 DC1 - 6 day w/ Holidays |  | Construction | Build Out | IGMP | DH2100 | Level 2 |  |  |  | BAB |  | 01ADMIN |  | Construction |  |  |
| QTS-102350 |  | DH 1200 // One Side Data Hall / Corridor Wall 1015-1016 (East) - Data Hall Side | 3d | 2026-01-27 A | 2026-02-10 A | QTS-102340 | 100% | 2026-01-27 | 2026-01-29 | QTS-PHX3 DC1 - 6 day w/ Holidays |  | Construction | Build Out | IGMP | DH2100 | Level 2 |  |  |  | BAB |  | 01ADMIN |  | Construction |  |  |
| QTS-12221 |  | DH 1200 // In Wall Inspection for DH Wall | 1d | 2026-02-03 A | 2026-02-03 A | QTS-10461 | 100% |  |  | QTS-PHX3 DC1 - 6 day w/ Holidays |  | Construction | Mechanical | IGMP | DH1200 |  |  |  |  | BAB |  | 01ADMIN | Phase 2 | Construction |  |  |
| QTS-102250 |  | DH 1200 // Hang Drywall (West) - Corridor Side | 2d | 2026-02-05 A | 2026-02-10 A | QTS-11221 | 100% | 2026-02-05 | 2026-02-06 | QTS-PHX3 DC1 - 6 day w/ Holidays |  | Construction | Build Out | IGMP | DH2200 |  |  |  |  | BAB |  | 01ADMIN | Phase 2 | Construction |  |  |
| QTS-102270 |  | DH 1200 // Vapor Barrier & Insulation (West) | 2d | 2026-02-10 A | 2026-02-11 A | QTS-12221 | 100% |  |  | QTS-PHX3 DC1 - 6 day w/ Holidays |  | Construction | Build Out | IGMP | DH2100 | Level 2 |  |  |  | BAB |  | 01ADMIN |  | Construction |  |  |
| QTS-102380 |  | DH 1200 // Insulate & Vapor Barrier Data Hall / Corridor Wall 1015-1016 (East) | 2d | 2026-02-11 A | 2026-02-12 A | QTS-102360, QTS-102350 | 100% |  |  | QTS-PHX3 DC1 - 6 day w/ Holidays |  | Construction | Build Out | IGMP | DH2100 | Level 2 |  |  |  | BAB |  | 01ADMIN |  | Construction |  |  |
| QTS-11221 |  | DH 1200 // Rough In-Wall Electrical (West) | 5d | 2026-02-11 A | 2026-02-16 A | QTS-39041, QTS-10471 | 100% |  |  | QTS-PHX3 DC1 - 6 day w/ Holidays |  | Construction | Electrical | IGMP | DH1200 |  |  |  |  | BAB |  | 01ADMIN | Phase 2 | Construction |  |  |
| QTS-11241 |  | DH 1200 // Rough In-Wall Electrical (East) | 5d | 2026-02-11 A | 2026-02-16 A | QTS-10461 | 100% |  |  | QTS-PHX3 DC1 - 6 day w/ Holidays |  | Construction | Electrical | IGMP | DH1200 |  |  |  |  | BAB |  | 01ADMIN | Phase 2 | Construction |  |  |
| QTS-12421 |  | DH 1200 // Hang Drywall (West) - Data Hall Side | 2d | 2026-02-12 A | 2026-02-13 A | QTS-102270, QTS-12221, QTS-11231, QTS-10471, QTS-10461, QTS-11221 | 100% |  |  | QTS-PHX3 DC1 - 6 day w/ Holidays |  | Construction | Build Out | IGMP | DH1200 |  |  |  |  | BAB |  |  | Phase 2 | Construction |  |  |
| QTS-102260 |  | DH 1200 // Tape & Finish Drywall (West) - Corridor Side | 5d | 2026-02-13 A | 2026-03-31 A | QTS-102250 | 100% | 2026-02-13 | 2026-02-18 | QTS-PHX3 DC1 - 6 day w/ Holidays | 3/24: Fur out needs to be taped. | Construction | Build Out | IGMP | DH2200 |  |  |  |  | BAB |  | 01ADMIN | Phase 2 | Construction |  |  |
| QTS-102400 |  | DH 1200 // Frame Data Hall / Corridor Wall 1015-1016 (East) - 14x14 Leave Outs | 1d | 2026-02-17 A | 2026-02-19 A | QTS - 7540, QTS-15301, QTS-14251 | 100% | 2026-02-17 | 2026-02-17 | QTS-PHX3 DC1 - 6 day w/ Holidays |  | Construction | Build Out | IGMP | DH2100 | Level 2 |  |  |  | BAB |  | 01ADMIN |  | Construction |  |  |
| QTS-11251 |  | DH 1200 // Install Hollow Metal Frames (East) - 14x14 Leave Out | 1d | 2026-02-18 A | 2026-03-04 A | QTS-102400 FF, QTS-10461 | 100% | 2026-02-18 | 2026-02-18 | QTS-PHX3 DC1 - 6 day w/ Holidays |  | Construction | Build Out | IGMP | DH1200 |  |  |  |  | BAB |  | 01ADMIN | Phase 2 | Construction |  |  |
| QTS-102410 |  | DH 1200 // Hang Drywall Data Hall / Corridor Wall 1015-1016 (East) - 14x14 Leave Outs | 1d | 2026-02-20 A | 2026-02-21 A | QTS-102400 | 100% | 2026-02-20 | 2026-02-20 | QTS-PHX3 DC1 - 6 day w/ Holidays |  | Construction | Build Out | IGMP | DH2100 | Level 2 |  |  |  | BAB |  | 01ADMIN |  | Construction |  |  |
| QTS-12431 |  | DH 1200 // Hang Drywall (East) - Corridor Side | 2d | 2026-02-20 A | 2026-02-21 A | QTS-102380, QTS-12221, QTS-11241 FF, QTS-11241 | 100% |  |  | QTS-PHX3 DC1 - 6 day w/ Holidays |  | Construction | Build Out | IGMP | DH1200 |  |  |  |  | BAB |  |  | Phase 2 | Construction |  |  |
| QTS-102360 |  | DH 1200 // Tape, & Finish Drywall (East) - Data Hall Side - One Side | 5d | 2026-02-23 A | 2026-03-03 A | QTS-102350 | 100% | 2026-02-23 | 2026-02-27 | QTS-PHX3 DC1 - 6 day w/ Holidays |  | Construction | Build Out | IGMP | DH2200 |  |  |  |  | BAB |  | 01ADMIN | Phase 2 | Construction |  |  |
| QTS-102420 |  | DH 1200 // Tape & Finish Drywall Data Hall / Corridor Wall 1015-1016 (East) - 14x14 Leave Outs | 5d | 2026-03-04 A | 2026-04-13 A | QTS-102410 | 100% | 2026-03-04 | 2026-03-09 | QTS-PHX3 DC1 - 6 day w/ Holidays |  | Construction | Build Out | IGMP | DH2100 | Level 2 |  |  |  | BAB |  | 01ADMIN |  | Construction |  |  |
| QTS-12701 |  | DH 1200 // Tape, & Finish Drywall (West) - Data Hall Side | 5d | 2026-03-04 A | 2026-03-09 A | QTS-12421 | 100% |  |  | QTS-PHX3 DC1 - 6 day w/ Holidays |  | Construction | Build Out | IGMP | DH1200 |  |  |  |  | BAB |  |  | Phase 2 | Construction |  |  |
| QTS-12711 |  | DH 1200 // Tape, & Finish Drywall (East) - Corridor Side | 5d | 2026-03-04 A | 2026-03-09 A | QTS-12431 | 100% |  |  | QTS-PHX3 DC1 - 6 day w/ Holidays |  | Construction | Build Out | IGMP | DH1200 |  |  |  |  | BAB |  |  | Phase 2 | Construction |  |  |
| QTS-102370 |  | DH 1200 // Paint Walls (East) - Data Hall Side - One Side | 2d | 2026-03-18 A | 2026-03-19 A | QTS-102360, QTS-11251 | 100% |  |  | QTS-PHX3 DC1 - 6 day w/ Holidays |  | Construction | Build Out | IGMP | DH2200 |  |  |  |  | BAB |  |  | Phase 2 | Construction |  |  |
| QTS-13391 |  | DH 1200 // Paint Walls (East) - Corridor Side | 2d | 2026-03-26 A | 2026-04-18 A | QTS-12711, QTS-12431 | 100% | 2026-03-26 | 2026-03-27 | QTS-PHX3 DC1 - 6 day w/ Holidays | 3/17: No Drywall | Construction | Build Out | IGMP | DH1200 |  |  |  |  | BAB |  |  | Phase 2 | Construction |  |  |
| QTS-1000600 |  | DH 1200 // Install Overhead Conduit - Electrical | 5d | 2026-03-30 A | 2026-06-22 A | QTS-1000570, QTS-120000, QTS-14201 | 100% | 2026-04-01 | 2026-04-06 | QTS-PHX3 DC1 - 6 day w/ Holidays |  | Construction | Electrical | IGMP | DH2100 | Level 2 |  | Oscar Armenta |  | BAB |  | 01ADMIN |  | Construction |  |  |
| QTS-13381 |  | DH 1200 // Paint Walls (West) | 2d | 2026-04-08 A | 2026-04-09 A | QTS-12701, QTS-12421, QTS-102260, QTS-102370 | 100% |  |  | QTS-PHX3 DC1 - 6 day w/ Holidays |  | Construction | Build Out | IGMP | DH1200 |  |  |  |  | BAB |  |  | Phase 2 | Construction |  |  |
| QTS-1003410 |  | DH 1200 // Install Structural Ceiling Grid - South | 7d | 2026-04-14 A | 2026-04-20 A | QTS-14201 SS+6d, QTS-14201 FF | 100% | 2026-04-14 | 2026-04-21 | QTS-PHX3 DC1 - 6 day w/ Holidays |  | Construction | Build Out | IGMP | DH1200 |  |  | Jay Perkins |  | BAB |  | 01ADMIN | Phase 2 | Construction |  |  |
| QTS-102430 |  | DH 1200 // Paint Data Hall / Corridor Wall 1015-1016 (East) - 14x14 Leave Outs | 1d | 2026-04-14 A | 2026-04-14 A | QTS-102420 | 100% |  |  | QTS-PHX3 DC1 - 6 day w/ Holidays |  | Construction | Build Out | IGMP | DH2100 | Level 2 |  |  |  | BAB |  | 01ADMIN |  | Construction |  |  |
| QTS-14201 |  | DH 1200 // Install Structural Ceiling Grid - North | 10d | 2026-04-14 A | 2026-04-20 A | QTS-102370 | 100% | 2026-04-14 | 2026-04-24 | QTS-PHX3 DC1 - 6 day w/ Holidays | 3/24: Waiting on MEP | Construction | Build Out | IGMP | DH1200 |  |  | Jay Perkins |  | BAB |  | 01ADMIN | Phase 2 | Construction |  |  |
| QTS - 26581 |  | TFO Scope // DH 1200 / Insulate Technical Loop Piping (Stainless) | 6d | 2026-07-10 A | 2026-07-14 A | QTS - 7880 SS, QTS - 25311 | 100% | 2026-07-31 | 2026-08-06 | QTS-PHX3 DC1 - 6 day w/ Holidays |  |  | Mechanical |  | DH1200 |  |  |  |  | TFO |  | 01ADMIN |  |  | TFO CONST | NICK |
| QTS-1500 |  | TFO SCOPE \\ DH 1200 / Data Hall 1200 / Install LV Pathway for BACOP and BOBS | 4d | 2026-07-10 A | 2026-07-15 A | QTS-1540 SS, QTS-1000600 | 100% | 2026-07-10 | 2026-07-14 | **GLOBAL - 6 Day Workweek w/ Basic Holidays |  |  | LV |  |  |  |  | Low Voltage |  | TFO | E2/Prime |  |  |  |  | NICK |
| QTS-1520 |  | DH 1200 / Data Hall 1200 / Install Grounding for RPP's | 4d | 2026-07-10 A | 2026-07-17 A | QTS-1540 SS | 100% | 2026-07-10 | 2026-07-14 | **GLOBAL - 6 Day Workweek w/ Basic Holidays |  |  | Electrical |  |  |  |  | Electrical |  | BAB | REI |  |  |  |  |  |
| QTS-1540 |  | DH 1200 / Data Hall 1200 / Install Remaining Structural Ceiling Grid | 4d | 2026-07-10 A | 2026-07-15 A | QTS-1003410, QTS - 26601 FF | 100% | 2026-07-09 | 2026-07-13 | **GLOBAL - 6 Day Workweek w/ Basic Holidays |  |  | Build Out |  |  |  |  | Jason Hendley |  | BAB | PCI |  |  |  |  |  |
| QTS-1550 |  | DH 1200 / Data Hall 1200 / Install Device Tiles | 4d | 2026-07-10 A | 2026-07-21 A | QTS-1540 SS | 100% | 2026-07-09 | 2026-07-13 | **GLOBAL - 6 Day Workweek w/ Basic Holidays |  |  | Electrical |  |  |  |  | Electrical |  | BAB | PCI |  |  |  |  |  |
| QTS - 26591 |  | TFO Scope // DH 1200 / Install Added Grid Support @ Drip Pan | 4d | 2026-07-11 A | 2026-07-13 A | QTS - 26581 SS | 100% | 2026-07-31 | 2026-08-04 | QTS-PHX3 DC1 - 6 day w/ Holidays |  |  | Mechanical |  | DH1200 |  |  |  |  | TFO |  | 01ADMIN |  |  | TFO CONST | NICK |
| QTS - 26601 |  | TFO Scope // DH 1200 / Install Drip Pans | 5d | 2026-07-11 A | 2026-07-15 A | QTS - 26591 SS, QTS-1003410 | 100% | 2026-07-31 | 2026-08-05 | QTS-PHX3 DC1 - 6 day w/ Holidays |  |  | Mechanical |  | DH1200 |  |  |  |  | TFO |  | 01ADMIN |  |  | TFO CONST | NICK |
| QTS-1480 |  | DH 1200 / Data Hall 1200 / Install CRAH Closure Metal | 4d | 2026-07-15 A | 2026-07-18 A | QTS-14251 | 100% | 2026-07-22 | 2026-07-25 | **GLOBAL - 6 Day Workweek w/ Basic Holidays |  |  | Mechanical |  |  |  |  | Ed Carter |  | BAB | PCI |  |  |  |  |  |
| QTS-1530 |  | DH 1200 / Data Hall 1200 / Install Remaining Telecom Sleeves | 3d | 2026-07-15 A | 2026-07-20 A | QTS-1540 SS | 100% | 2026-07-22 | 2026-07-24 | **GLOBAL - 6 Day Workweek w/ Basic Holidays |  |  | Mechanical |  |  |  |  | Mechanical |  | BAB | REI |  |  |  |  |  |
| QTS-1600 |  | DH 1200 / Data Hall 1200 / Install Humidity Sensors | 4d | 2026-07-15 A | 2026-07-20 A | QTS-1540 SS | 100% | 2026-07-22 | 2026-07-25 | **GLOBAL - 6 Day Workweek w/ Basic Holidays |  |  | Electrical |  |  |  |  | Electrical |  | BAB | Prime |  |  |  |  |  |

Notes:
- QTS-1009340: Scheduler Notes: Manpower Delay
- QTS-11231: allucent_notes_20251216_165335: Jason Johnston on 2025-12-09 18:26: Need update from team / allucent_notes_20251209_203830: Jason Johnston on 2025-12-09 18:26: Need update from team / allucent_notes: 2025-12-09 18:26 - User: Jason Johnston - Date Added: 2025-12-09 18:26 - Note: Need update from team
- QTS-10461: allucent_notes_20251216_165335: Luis Vea on 2025-10-21T15:10:32.270Z: delayed, no manpower necessary form PCI / Jason Johnston on 2025-12-09 18:26: Need update from team / Jason Johnston on 2025-12-16 08:01: Waiting for beam wrap to be completed in 2200 / allucent_notes_20251209_203830: Luis Vea on 2025-10-21T15:10:32.270Z: delayed, no manpower necessary form PCI / Jason Johnston on 2025-12-09 18:26: Need update from team / allucent_notes_20251104_160200: Luis Vea on 2025-10-21T15:10:32.270Z: delayed, no manpower necessary form PCI / allucent_notes_20251028_163138: Luis Vea on 2025-10-21T15:10:32.270Z: delayed, no manpower necessary form PCI / allucent_notes_20251027_224008: Luis Vea on 2025-10-21T15:10:32.270Z: delayed, no manpower necessary form PCI / allucent_notes_20251021_145627: Luis Vea on 2025-10-21T15:10:32.270Z: delayed, no manpower necessary form PCI / allucent_notes_20251230_164549: Luis Vea on 2025-10-21T15:10:32.270Z: delayed, no manpower necessary form PCI / Jason Johnston on 2025-12-09 18:26: Need update from team / Jason Johnston on 2025-12-16 08:01: Waiting for beam wrap to be completed in 2200 / David Wiltberger on 2025-12-30 16:20: no update / allucent_notes: 2025-10-21T15:10:32.270Z - User: Luis Vea - Date Added: 2025-10-21T15:10:32.270Z - Note: delayed, no manpower necessary form PCI / 2025-12-09 18:26 - User: Jason Johnston - Date Added: 2025-12-09 18:26 - Note: Need update from team / 2025-12-16 08:01 -
- QTS-102340: allucent_notes_20251014_152335: Zack Goertz on 2025-09-08T20:45:26.651Z: Not started. PCI has been put on notice that they are behind / Jason Johnston on 2025-10-08 08:10: not done / allucent_notes: 2025-09-08T20:45:26.651Z - User: Zack Goertz - Date Added: 2025-09-08T20:45:26.651Z - Note: Not started. PCI has been put on notice that they are behind / 2025-10-08 08:10 - User: Jason Johnston - Date Added: 2025-10-08 08:10 - Note: not done
- QTS-102350: allucent_notes_20251014_152335: Zack Goertz on 2025-09-08T20:45:26.651Z: Not started. PCI has been put on notice that they are behind / Jason Johnston on 2025-10-08 08:10: not done / allucent_notes: 2025-09-08T20:45:26.651Z - User: Zack Goertz - Date Added: 2025-09-08T20:45:26.651Z - Note: Not started. PCI has been put on notice that they are behind / 2025-10-08 08:10 - User: Jason Johnston - Date Added: 2025-10-08 08:10 - Note: not done
- QTS-102380: allucent_notes_20251014_152335: Zack Goertz on 2025-09-08T20:45:26.651Z: Not started. PCI has been put on notice that they are behind / Jason Johnston on 2025-10-08 08:10: not done / allucent_notes: 2025-09-08T20:45:26.651Z - User: Zack Goertz - Date Added: 2025-09-08T20:45:26.651Z - Note: Not started. PCI has been put on notice that they are behind / 2025-10-08 08:10 - User: Jason Johnston - Date Added: 2025-10-08 08:10 - Note: not done
- QTS-11221: allucent_notes_20251216_165335: Jason Johnston on 2025-12-09 20:32: Need update from team / Jason Johnston on 2025-12-16 08:01: BOH will drive this / allucent_notes_20251209_203830: Jason Johnston on 2025-12-09 20:32: Need update from team / allucent_notes_20251230_164549: Jason Johnston on 2025-12-09 20:32: Need update from team / Jason Johnston on 2025-12-16 08:01: BOH will drive this / allucent_notes: 2025-12-09 20:32 - User: Jason Johnston - Date Added: 2025-12-09 20:32 - Note: Need update from team / 2025-12-16 08:01 - User: Jason Johnston - Date Added: 2025-12-16 08:01 - Note: BOH will drive this
- QTS-102260: Scheduler Notes: 3/24: Fur out needs to be taped.
- QTS-102400: allucent_notes_20251014_152335: Zack Goertz on 2025-09-08T20:45:26.651Z: Not started. PCI has been put on notice that they are behind / Jason Johnston on 2025-10-08 08:10: not done / allucent_notes: 2025-09-08T20:45:26.651Z - User: Zack Goertz - Date Added: 2025-09-08T20:45:26.651Z - Note: Not started. PCI has been put on notice that they are behind / 2025-10-08 08:10 - User: Jason Johnston - Date Added: 2025-10-08 08:10 - Note: not done
- QTS-102410: allucent_notes_20251014_152335: Zack Goertz on 2025-09-08T20:45:26.651Z: Not started. PCI has been put on notice that they are behind / Jason Johnston on 2025-10-08 08:10: not done / allucent_notes: 2025-09-08T20:45:26.651Z - User: Zack Goertz - Date Added: 2025-09-08T20:45:26.651Z - Note: Not started. PCI has been put on notice that they are behind / 2025-10-08 08:10 - User: Jason Johnston - Date Added: 2025-10-08 08:10 - Note: not done
- QTS-102420: allucent_notes_20251014_152335: Zack Goertz on 2025-09-08T20:45:26.651Z: Not started. PCI has been put on notice that they are behind / Jason Johnston on 2025-10-08 08:10: not done / allucent_notes: 2025-09-08T20:45:26.651Z - User: Zack Goertz - Date Added: 2025-09-08T20:45:26.651Z - Note: Not started. PCI has been put on notice that they are behind / 2025-10-08 08:10 - User: Jason Johnston - Date Added: 2025-10-08 08:10 - Note: not done
- QTS-13391: Scheduler Notes: 3/17: No Drywall
- QTS-1000600: allucent_notes_20251230_164549: David Wiltberger on 2025-12-30 16:21: no update / allucent_notes: 2025-12-30 16:21 - User: David Wiltberger - Date Added: 2025-12-30 16:21 - Note: no update
- QTS-102430: allucent_notes_20251014_152335: Zack Goertz on 2025-09-08T20:45:26.651Z: Not started. PCI has been put on notice that they are behind / Jason Johnston on 2025-10-08 08:10: not done / allucent_notes: 2025-09-08T20:45:26.651Z - User: Zack Goertz - Date Added: 2025-09-08T20:45:26.651Z - Note: Not started. PCI has been put on notice that they are behind / 2025-10-08 08:10 - User: Jason Johnston - Date Added: 2025-10-08 08:10 - Note: not done
- QTS-14201: Scheduler Notes: 3/24: Waiting on MEP

| ID | WBS | Activity | Duration | Start | Finish | Predecessors | Complete | Remaining | Planned start | Planned finish | Total float | Free float | Calendar | Notes | Layton Discipline | Fragnet | Owner Impact Analysis | Layton Super | Fragnet Responsible Party | Contract | Trade Partner | NICK | TFO-CONST ONLY | Allucent CSI Group | Project Section | Baseline | Phase-1-1 | Project Section-1 | Location | Level |
| --- | --- | --- | --- | --- | --- | --- | --- | --- | --- | --- | --- | --- | --- | --- | --- | --- | --- | --- | --- | --- | --- | --- | --- | --- | --- | --- | --- | --- | --- | --- |
|  | 1 | **Fragnet - Data Hall 1200** |  | 2026-07-21 | 2026-07-22 |  |  |  |  |  |  |  |  |  |  |  |  |  |  |  |  |  |  |  |  |  |  |  |  |  |
| QTS-1013670 |  | DH 1200 / Data Hall 1200 / Fragnet delay dues to Manpower - Complete Installing Device Tiles | 2d | 2026-07-21 A | 2026-07-22 A | QTS-1540 SS | 100% |  | 2026-07-09 | 2026-07-10 |  |  | **GLOBAL - 6 Day Workweek w/ Basic Holidays | Manpower Delay | Electrical | Fragnet | Y | Electrical | Performance Contracting Inc. | BAB | PCI |  |  |  |  |  |  |  |  |  |
|  | 2 | **Data Hall 1200 - Existing Scope** |  | 2026-07-10 | 2026-10-05 |  |  |  |  |  |  |  |  |  |  |  |  |  |  |  |  |  |  |  |  |  |  |  |  |  |
| QTS-1570 |  | DH 1200 / Data Hall 1200 / Install Vesda Piping and Fire Alarm Devices | 4d | 2026-07-10 A | 2026-07-27 A | QTS-1540 SS | 100% |  | 2026-07-09 | 2026-07-13 |  |  | **GLOBAL - 6 Day Workweek w/ Basic Holidays |  | Mechanical |  |  | Mechanical |  | BAB | Nexus |  |  |  |  |  |  |  |  |  |
| QTS-1580 |  | DH 1200 / Data Hall 1200 / Install Lighting - Delay - Missing HAC Lights - Manpower | 5d | 2026-07-15 A | 2026-07-28 A | QTS-1540 SS | 100% |  | 2026-07-22 | 2026-07-27 |  |  | **GLOBAL - 6 Day Workweek w/ Basic Holidays |  | Electrical |  |  | Electrical |  | BAB | REI |  |  |  |  |  |  |  |  |  |
| QTS-1560 |  | TFO SCOPE \\ DH 1200 / Data Hall 1200 / Install Q Cool Tray Hangers | 4d | 2026-07-21 A | 2026-07-27 A | QTS-1550 | 100% |  | 2026-07-23 | 2026-07-27 |  |  | **GLOBAL - 6 Day Workweek w/ Basic Holidays |  | Mechanical |  |  | Mechanical |  | TFO | Bel-Aire | NICK |  |  |  |  |  |  |  |  |
| QTS-1590 |  | DH 1200 / Data Hall 1200 / Install Fire Spinkler Heads | 4d | 2026-07-21 A | 2026-07-28 A | QTS-1540 SS | 100% |  | 2026-07-22 | 2026-07-25 |  |  | **GLOBAL - 6 Day Workweek w/ Basic Holidays | Heads installed - still need tile to complete | Mechanical |  |  | Mechanical |  | BAB | Olympic |  |  |  |  |  |  |  |  |  |
| QTS-1640 |  | TFO SCOPE \\ DH 1200 / Install Cable tray and power tray | 10d | 2026-07-29 A | 2026-08-22 | QTS-1560 | 60% | 4d | 2026-08-11 | 2026-08-21 | -91d | 0d | **GLOBAL - 6 Day Workweek w/ Basic Holidays | Power tray complete | Electrical |  |  | Electrical |  | TFO | REI | NICK | TFO CONST |  |  |  |  |  |  |  |
| QTS-1660 |  | DH 1200 / Data Hall 1200 / Final Paint | 3d | 2026-07-29 A | 2026-07-30 A | QTS-1480, QTS-1480 FF, QTS-1540 | 100% |  | 2026-08-11 | 2026-08-13 |  |  | **GLOBAL - 6 Day Workweek w/ Basic Holidays |  | Build Out |  |  | Jason Hendley |  | BAB | PPC |  |  |  |  |  |  |  |  |  |
| QTS-1610 |  | DH 1200 / Data Hall 1200 / Overhead Inspection | 1d | 2026-08-04 A | 2026-08-04 A | QTS-1600, QTS-1590, QTS-1580, QTS-1570, QTS-1530, QTS-1500, QTS-1520, QTS - 26601 | 100% |  | 2026-08-05 | 2026-08-05 |  |  | **GLOBAL - 6 Day Workweek w/ Basic Holidays | 8/4 done | Electrical |  |  | Electrical |  | BAB | Layton |  |  |  |  |  |  |  |  |  |
| QTS-1650 |  | TFO SCOPE \\ Data Hall 1200 / Install and Terminate RPP Branch (Whips) | 15d | 2026-08-04 A | 2026-08-27 | QTS-1640 SS, QTS-1560 | 47% | 8d | 2026-08-04 | 2026-08-20 | -60d | 0d | **GLOBAL - 6 Day Workweek w/ Basic Holidays | started 8/4 | Electrical |  |  | Electrical |  | TFO | REI | NICK | TFO CONST |  |  |  |  |  |  |  |
| QTS-1014380 |  | DH 1200 / Install Remaining Drip Pans | 1d | 2026-08-06 A | 2026-08-19 | QTS-1610 |  | 1d | 2026-08-12 | 2026-08-12 | -116d | 4d | **GLOBAL - 6 Day Workweek w/ Basic Holidays | started 8/6 | Build Out |  |  | Jason Hendley |  | BAB | PCI |  |  |  |  |  |  |  |  |  |
| QTS-1620 |  | DH 1200 / Install Remaining Ceiling tiles | 4d | 2026-08-06 A | 2026-08-24 | QTS-1610, QTS-1014380 FF |  | 5d | 2026-08-06 | 2026-08-10 | -120d | 0d | **GLOBAL - 6 Day Workweek w/ Basic Holidays | started 8/6 | Build Out |  |  | Jason Hendley |  | BAB | PCI |  |  |  |  |  |  |  |  |  |
| QTS-1510 |  | TFO SCOPE \\ DH 1200 / Install Liquid Cooled Manifold Panels | 4d | 2026-08-19 | 2026-08-22 | QTS-1550, QTS-1013670 |  |  |  |  | -56d | 29d | **GLOBAL - 6 Day Workweek w/ Basic Holidays | NEED UPDATE | Mechanical |  |  | Jason Hendley |  | TFO | Prime | NICK | TFO CONST |  |  |  |  |  |  |  |
| QTS-1630 |  | TFO SCOPE \\ DH 1200 / Install HAC Panels | 4d | 2026-08-19 | 2026-08-22 | QTS-1610 |  |  |  |  | -119d | 5d | **GLOBAL - 6 Day Workweek w/ Basic Holidays |  | Mechanical |  |  | Jason Hendley |  | TFO | AGDC | NICK | TFO CONST |  |  |  |  |  |  |  |
| QTS-1690 |  | DH 1200 / Install Fire Extinguishers and Fire Extinguisher Cabinets | 3d | 2026-08-19 | 2026-08-21 | QTS-1660 |  |  |  |  | -106d | 0d | **GLOBAL - 6 Day Workweek w/ Basic Holidays |  | Build Out |  |  | Jake Shimmin |  | BAB | ISEC |  |  |  |  |  |  |  |  |  |
| QTS-1725 |  | DH 1200 / Burn in Chillers | 3d | 2026-08-22 | 2026-08-25 | QTS-1013350, QTS-1013360, QTS-1013370, QTS-1013400 |  |  |  |  | -110d | 0d | **GLOBAL - 6 Day Workweek w/ Basic Holidays | trim done - need panels after move | Commissioning |  |  | Electrical |  | BAB | REI | NICK |  |  |  |  |  |  |  |  |
| QTS-1730 |  | TFO SCOPE \\ DH 1200 / Burn in RPP's | 3d | 2026-08-22 | 2026-08-25 | QTS-1725 SS |  |  |  |  | -58d | 27d | **GLOBAL - 6 Day Workweek w/ Basic Holidays |  | Electrical |  |  | Electrical |  | TFO | REI | NICK | TFO CONST |  |  |  |  |  |  |  |
| QTS-1670 |  | DH 1200 / Burnish Concrete Floor | 3d | 2026-09-26 | 2026-09-29 | QTS-1630, QTS-29531 |  |  |  |  | -124d | 0d | **GLOBAL - 6 Day Workweek w/ Basic Holidays |  | Build Out |  |  | Ben Ribble |  | BAB | Bldg Solutions |  |  |  |  |  |  |  |  |  |
| QTS-1680 |  | DH 1200 / Install Rubber Base | 2d | 2026-09-30 | 2026-10-01 | QTS-1670 |  |  |  |  | -124d | 0d | **GLOBAL - 6 Day Workweek w/ Basic Holidays |  | Build Out |  |  | Ben Ribble |  | BAB | Wholesale Flooring |  |  |  |  |  |  |  |  |  |
| QTS-1705 |  | DH 1200 / Clean | 3d | 2026-10-02 | 2026-10-05 | QTS-1680, QTS-1780 FF, QTS-1014380, QTS-1640, QTS-1690 |  |  |  |  | -124d | 0d | **GLOBAL - 6 Day Workweek w/ Basic Holidays |  | Build Out |  |  | Ed Carter |  | BAB | AGDC |  |  |  |  |  |  |  |  |  |
|  | 2 | **Gallery 1201 Mechanical** |  | 2025-09-24 | 2026-09-09 |  |  |  |  |  |  |  |  |  |  |  |  |  |  |  |  |  |  |  |  |  |  |  |  |  |
| QTS-13811 |  | DH 1200 / Mechanical Gallery 1201 // Install VESDA | 8d | 2025-09-24 A | 2025-10-17 A | QTS-1951 | 100% |  | 2025-09-24 | 2025-10-03 |  |  |  |  | Electrical |  |  |  |  | BAB |  |  |  | 01ADMIN | Construction | IGMP | Phase 2 | Construction | DH1200 |  |
| QTS-44491 |  | DH 1200 / Mechanical Gallery 1201 // Install OH Mechanical Hangers | 7d | 2025-09-24 A | 2025-10-02 A | QTS-1951 | 100% |  |  |  |  |  |  |  | Mechanical |  |  |  |  | BAB |  |  |  |  | Construction | IGMP |  | Construction | DH2100 | Level 2 |
| QTS-13821 |  | DH 1200 / Mechanical Gallery 1201 // OH Mechanical Piping | 10d | 2025-10-08 A | 2025-12-12 A | QTS-44491 | 100% |  | 2025-10-08 | 2025-10-21 |  |  |  |  | Mechanical |  |  |  |  | BAB |  |  |  | 01ADMIN | Construction | IGMP | Phase 2 | Construction | DH1200 |  |
| QTS-8621 |  | DH 1200 / Mechanical Gallery 1201 // Frame for 1201-1202 Wall | 5d | 2025-11-19 A | 2025-11-25 A | QTS-20381 | 100% |  |  |  |  |  |  |  | Build Out |  |  |  |  | BAB |  |  |  | 01ADMIN | Construction | IGMP | Phase 2 | Construction | DH1200 |  |
| QTS-11261 |  | DH 1200 / Mechanical Gallery 1201 // Hang, Tape, & Finish Drywall for 1201-1202 Wall - EG Side | 10d | 2025-11-21 A | 2026-01-05 A | QTS-8621 SS | 100% |  | 2025-11-24 | 2025-12-06 |  |  | QTS-PHX3 DC1 - 6 day w/ Holidays |  | Build Out |  |  |  |  | BAB |  |  |  | 01ADMIN | Construction | IGMP | Phase 2 | Construction | DH1200 |  |
| QTS-10511 |  | DH 1200 / Mechanical Gallery 1201 // Frame Fan Wall | 5d | 2025-12-16 A | 2025-12-22 A | QTS-13821, QTS-8621 | 100% |  | 2025-12-15 | 2025-12-19 |  |  | QTS-PHX3 DC1 - 6 day w/ Holidays |  | Build Out |  |  |  |  | BAB |  |  |  | 01ADMIN | Construction | IGMP | Phase 2 | Construction | DH1200 |  |
| QTS-12251 |  | DH 1200 / Mechanical Gallery 1201 // Hang Drywall for Fan Wall - MG Side | 3d | 2026-01-14 A | 2026-01-16 A | QTS-10511 | 100% |  |  |  |  |  | QTS-PHX3 DC1 - 6 day w/ Holidays |  | Build Out |  |  |  |  | BAB |  |  |  | 01ADMIN | Construction | IGMP | Phase 2 | Construction | DH1200 |  |
| QTS-13031 |  | DH 1200 / Mechanical Gallery 1201 // Prime & Paint Walls for 1201-1202 Wall - EG Side | 3d | 2026-01-14 A | 2026-01-16 A | QTS-11261 | 100% |  |  |  |  |  | QTS-PHX3 DC1 - 6 day w/ Holidays |  | Build Out |  |  |  |  | BAB |  |  |  | 01ADMIN | Construction | IGMP | Phase 2 | Construction | DH1200 |  |
| QTS-1003420 |  | DH 1200 / Mechanical Gallery 1201 // Top Out for 1201-1202 Wall - MG Side | 3d | 2026-01-17 A | 2026-01-23 A | QTS-8621 | 100% |  | 2026-01-17 | 2026-01-21 |  |  | QTS-PHX3 DC1 - 6 day w/ Holidays |  | Build Out |  |  |  |  | BAB |  |  |  | 01ADMIN | Construction | IGMP | Phase 2 | Construction | DH1200 |  |
| QTS-1004360 |  | DH 1200 / Mechanical Gallery 1201 // Tape & Finish for Fan Wall - MG Side | 4d | 2026-01-17 A | 2026-01-19 A | QTS-12251 | 100% |  | 2026-01-17 | 2026-01-22 |  |  | QTS-PHX3 DC1 - 6 day w/ Holidays |  | Build Out |  |  |  |  | BAB |  |  |  | 01ADMIN | Construction | IGMP | Phase 2 | Construction | DH1200 |  |
| QTS-13401 |  | DH 1200 / Mechanical Gallery 1201 // Top of Wall Fire Stop for 1201-1202 Wall | 2d | 2026-01-17 A | 2026-01-20 A | QTS-13031 | 100% |  |  |  |  |  | QTS-PHX3 DC1 - 6 day w/ Holidays |  | Build Out |  |  |  |  | BAB |  |  |  | 01ADMIN | Construction | IGMP | Phase 2 | Construction | DH1200 |  |
| QTS-11621 |  | DH 1200 / Mechanical Gallery 1201 // In Wall Electrical Rough for Fan Wall | 2d | 2026-01-20 A | 2026-01-21 A | QTS-10511 | 100% |  |  |  |  |  | QTS-PHX3 DC1 - 6 day w/ Holidays |  | Electrical |  |  |  |  | BAB |  |  |  | 01ADMIN | Construction | IGMP | Phase 2 | Construction | DH1200 |  |
| QTS-14251 |  | DH 1200 / Mechanical Gallery 1201 // OFCI - L2 SET IN PLACE - Eq Type # - DH CRAH - 14 units | 6d | 2026-01-20 A | 2026-01-26 A | QTS-13041, QTS-13821, QTS-35101, QTS-35091, QTS-35081, QTS-35071, QTS-35061, QTS-35051, QTS-35041, QTS-35031, QTS-35021, QTS-35011, QTS-35001, QTS-34991, QTS-34981, QTS-34971, QTS-13031 | 100% |  | 2026-01-24 | 2026-01-30 |  |  | QTS-PHX3 DC1 - 6 day w/ Holidays |  | Mechanical |  |  |  |  | BAB |  |  |  |  | Construction | IGMP | Phase 2 | Construction | DH1200 |  |
| QTS-13041 |  | DH 1200 / Mechanical Gallery 1201 // Paint Fan Walls - MG Side | 2d | 2026-01-21 A | 2026-01-22 A | QTS-1004360 | 100% |  |  |  |  |  | QTS-PHX3 DC1 - 6 day w/ Holidays |  | Build Out |  |  |  |  | BAB |  |  |  | 01ADMIN | Construction | IGMP | Phase 2 | Construction | DH1200 |  |
| QTS-12001 |  | DH 1200 / Mechanical Gallery 1201 // In Wall Inspection for Fan Wall | 1d | 2026-01-22 A | 2026-01-22 A | QTS-11621 | 100% |  |  |  |  |  | QTS-PHX3 DC1 - 6 day w/ Holidays |  | Electrical |  |  |  |  | BAB |  |  |  | 01ADMIN | Construction | IGMP | Phase 2 | Construction | DH1200 |  |
| QTS-1004370 |  | DH 1200 / Mechanical Gallery 1201 // Hang Drywall for Fan Wall - DH Side | 3d | 2026-01-23 A | 2026-01-27 A | QTS-12001 | 100% |  | 2026-01-23 | 2026-01-26 |  |  | QTS-PHX3 DC1 - 6 day w/ Holidays |  | Build Out |  |  |  |  | BAB |  |  |  | 01ADMIN | Construction | IGMP | Phase 2 | Construction | DH1200 |  |
| QTS-13831 |  | DH 1200 / Mechanical Gallery 1201 // Install Security Screen Above Fan Wall | 3d | 2026-01-26 A | 2026-01-27 A | QTS-1001250, QTS-99680, QTS-10511 | 100% |  | 2026-01-26 | 2026-01-28 |  |  | QTS-PHX3 DC1 - 6 day w/ Holidays |  | Build Out |  |  |  |  | BAB |  |  |  | 01ADMIN | Construction | IGMP | Phase 2 | Construction | DH1200 |  |
| QTS-1004380 |  | DH 1200 / Mechanical Gallery 1201 // Tape & Finish for Fan Wall - DH Side | 4d | 2026-02-06 A | 2026-02-13 A | QTS-1004370 | 100% |  | 2026-02-06 | 2026-02-10 |  |  | QTS-PHX3 DC1 - 6 day w/ Holidays |  | Build Out |  |  |  |  | BAB |  |  |  | 01ADMIN | Construction | IGMP | Phase 2 | Construction | DH1200 |  |
| QTS-10501 |  | DH 1200 / Mechanical Gallery 1201 // In Wall Electrical Rough for 1201-1202 Wall | 2d | 2026-02-10 A | 2026-02-11 A | QTS-8621 | 100% |  |  |  |  |  | QTS-PHX3 DC1 - 6 day w/ Holidays |  | Electrical |  |  |  |  | BAB |  |  |  | 01ADMIN | Construction | IGMP | Phase 2 | Construction | DH1200 |  |
| QTS-1003430 |  | DH 1200 / Mechanical Gallery 1201 // Tape & Finish for 1201-1202 Wall - MG Side - One Side | 4d | 2026-02-12 A | 2026-02-20 A | QTS-1003420 | 100% |  | 2026-02-12 | 2026-02-16 |  |  | QTS-PHX3 DC1 - 6 day w/ Holidays |  | Build Out |  |  |  |  | BAB |  |  |  | 01ADMIN | Construction | IGMP | Phase 2 | Construction | DH1200 |  |
| QTS-1003480 |  | DH 1200 / Mechanical Gallery 1201 // Insulate for 1201-1202 Wall | 3d | 2026-02-13 A | 2026-02-16 A | QTS-10901 SS | 100% |  |  |  |  |  | QTS-PHX3 DC1 - 6 day w/ Holidays |  | Electrical |  |  |  |  | BAB |  |  |  | 01ADMIN | Construction | IGMP | Phase 2 | Construction | DH1200 |  |
| QTS-10901 |  | DH 1200 / Mechanical Gallery 1201 // In Wall Inspection for 1201-1202 Wall | 1d | 2026-02-13 A | 2026-02-13 A | QTS-10501 | 100% |  |  |  |  |  | QTS-PHX3 DC1 - 6 day w/ Holidays |  | Electrical |  |  |  |  | BAB |  |  |  | 01ADMIN | Construction | IGMP | Phase 2 | Construction | DH1200 |  |
| QTS-15631 |  | DH 1200 / Mechanical Gallery 1201 // Install OH Electrical, FA/EPMS/BMS Conduit & Grounding | 10d | 2026-02-13 A | 2026-02-19 A | QTS-13821, QTS-1003440 FF | 100% |  | 2026-02-13 | 2026-02-24 |  |  | QTS-PHX3 DC1 - 6 day w/ Holidays |  | Electrical |  |  |  |  | BAB |  |  |  | 01ADMIN | Construction | IGMP | Phase 2 | Construction | DH1200 |  |
| QTS-1004390 |  | DH 1200 / Mechanical Gallery 1201 // Paint Fan Walls - DH Side | 2d | 2026-02-14 A | 2026-02-15 A | QTS-1004380 | 100% |  | 2026-02-14 | 2026-02-16 |  |  | QTS-PHX3 DC1 - 6 day w/ Holidays |  | Build Out |  |  |  |  | BAB |  |  |  | 01ADMIN | Construction | IGMP | Phase 2 | Construction | DH1200 |  |
| QTS-1003440 |  | DH 1200 / Mechanical Gallery 1201 // Prime & Paint for 1201-1202 Wall - MG Side - One Side | 2d | 2026-02-23 A | 2026-02-24 A | QTS-1003430, QTS-1003480 | 100% |  |  |  |  |  | QTS-PHX3 DC1 - 6 day w/ Holidays |  | Build Out |  |  |  |  | BAB |  |  |  | 01ADMIN | Construction | IGMP | Phase 2 | Construction | DH1200 |  |
| QTS-16301 |  | DH 1200 / Mechanical Gallery 1201 // OFCI - L2 SET IN PLACE - Eq Type # - MOD-03 - 7 units | 10d | 2026-03-13 A | 2026-03-20 A | QTS-14251, QTS-31711, QTS-31671, QTS-31661, QTS-31651, QTS-31641, QTS-31631, QTS-31621, QTS-1003440 | 100% |  | 2026-03-18 | 2026-03-28 |  |  | QTS-PHX3 DC1 - 6 day w/ Holidays |  | Electrical |  |  |  |  | BAB |  |  |  |  | Construction | IGMP | Phase 2 | Construction | DH1200 |  |
| QTS-43901 |  | DH 1200 / Mechanical Gallery 1201 // OFCI - L2 SET IN PLACE - Eq Type # - MOD-02 - 7 units | 10d | 2026-03-18 A | 2026-03-23 A | QTS-13821, QTS-14251, QTS-31771, QTS-31431, QTS-31421, QTS-31411, QTS-31401, QTS-31391, QTS-31381, QTS-16301 SS, QTS-1003440 | 100% |  | 2026-03-18 | 2026-03-28 |  |  | QTS-PHX3 DC1 - 6 day w/ Holidays |  | Electrical |  |  |  |  | BAB |  |  |  |  | Construction | IGMP | Phase 2 | Construction | DH1200 |  |
| QTS-14511 |  | DH 1200 / Mechanical Gallery 1201 // Install Raceway from UPS Pod to MOD-02/03 Boards | 10d | 2026-04-01 A | 2026-04-03 A | QTS-13401, QTS-43901 SS, QTS-16301 SS, QTS-13561, QTS-15631 | 100% |  | 2026-04-01 | 2026-04-11 |  |  | QTS-PHX3 DC1 - 6 day w/ Holidays |  | Electrical |  |  |  |  | BAB |  |  |  |  | Construction | IGMP | Phase 2 | Construction | DH1200 |  |
| QTS-46631 |  | DH 1200 / Mechanical Gallery 1201 // OFCI - L2 SET IN PLACE - Eq Type # - EG CRAH - 4 units | 6d | 2026-05-13 A | 2026-05-18 A | QTS-13031, QTS-35281, QTS-35271, QTS-35261, QTS-35251, QTS-1003440 | 100% |  | 2026-05-20 | 2026-05-27 |  |  | QTS-PHX3 DC1 - 6 day w/ Holidays |  | Mechanical |  |  |  |  | BAB |  |  |  | 01ADMIN | Construction | IGMP | Phase 2 | Construction | DH1200 |  |
| QTS-43771 |  | DH 1200 / Mechanical Gallery 1201 // Pull & Terminate from UPS Pod to MOD-02/03 Boards | 5d | 2026-05-14 A | 2026-05-26 A | QTS-14511, QTS-16301, QTS-43901 | 100% |  | 2026-05-14 | 2026-05-19 |  |  | QTS-PHX3 DC1 - 6 day w/ Holidays | 5/19: Began pulling, no terminations set | Electrical |  |  |  |  | BAB |  |  |  |  | Construction | IGMP | Phase 2 | Construction | DH1200 |  |
| QTS-46641 |  | DH 1200 / Mechanical Gallery 1201 // EG CRAH Unit Mechanical Connections | 10d | 2026-05-18 A | 2026-06-15 A | QTS-46631, QTS - 26071 | 100% |  | 2026-05-28 | 2026-06-08 |  |  | QTS-PHX3 DC1 - 6 day w/ Holidays |  | Mechanical |  |  | Mechanical |  | BAB |  |  |  |  | Construction | IGMP | Phase 2 | Construction | DH1200 |  |
| QTS-46661 |  | DH 1200 / Mechanical Gallery 1201 // Pull & Terminate from MOD-02 to CRAHs | 4d | 2026-05-21 A | 2026-06-03 A | QTS-43771 | 100% |  | 2026-06-03 | 2026-06-06 |  |  | QTS-PHX3 DC1 - 6 day w/ Holidays |  | Electrical |  |  | Electrical |  | BAB |  |  |  |  | Construction | IGMP | Phase 1 | Construction | DH1200 | Level 1 |
| QTS-44501 |  | DH 1200 / Mechanical Gallery 1201 // Install BMS & EPMS Cable and Terminations | 5d | 2026-06-29 A | 2026-07-06 A | QTS-46651 SS, QTS-14511 | 100% |  | 2026-07-11 | 2026-07-16 |  |  | QTS-PHX3 DC1 - 6 day w/ Holidays |  | LV |  |  | Low Voltage |  | BAB |  |  |  |  | Construction | IGMP |  | Construction | DH2100 | Level 2 |
| QTS-17001 |  | DH 1200 / Mechanical Gallery 1201 // Set Humidifier | 1d | 2026-07-06 A | 2026-07-06 A | QTS-19511, QTS-13831 | 100% |  | 2026-07-14 | 2026-07-14 |  |  | QTS-PHX3 DC1 - 6 day w/ Holidays |  | Mechanical |  |  | Mechanical |  | BAB |  |  |  |  | Construction | IGMP | Phase 2 | Construction | DH1200 |  |
| QTS-17161 |  | DH 1200 / Mechanical Gallery 1201 // Tie-In MEP to Humidifiers | 6d | 2026-07-06 A | 2026-07-06 A | QTS-13821 FF, QTS-14251, QTS-17001 FF | 100% |  | 2026-07-14 | 2026-07-20 |  |  | QTS-PHX3 DC1 - 6 day w/ Holidays |  | Mechanical |  |  | Mechanical |  | BAB |  |  |  |  | Construction | IGMP | Phase 2 | Construction | DH1200 |  |
| QTS-15481 |  | DH 1200 / Mechanical Gallery 1201 // DH CRAH Unit Mechanical Connections | 5d | 2026-07-06 A | 2026-07-10 A | QTS-14251, QTS - 26071 | 100% |  | 2026-07-15 | 2026-07-20 |  |  | QTS-PHX3 DC1 - 6 day w/ Holidays |  | Mechanical |  |  | Mechanical |  | BAB |  |  |  |  | Construction | IGMP | Phase 2 | Construction | DH1200 |  |
| QTS-15621 |  | DH 1200 / Mechanical Gallery 1201 // Install Electrical Tray | 3d | 2026-07-06 A | 2026-07-08 A | QTS-14511, QTS-46641, QTS-15481, QTS-13821 | 100% |  | 2026-07-21 | 2026-07-23 |  |  | QTS-PHX3 DC1 - 6 day w/ Holidays |  | Electrical |  |  | Oscar Armenta |  | BAB |  |  |  |  | Construction | IGMP | Phase 2 | Construction | DH1200 |  |
| QTS-16561 |  | DH 1200 / Mechanical Gallery 1201 // Install Basket Tray for LV | 5d | 2026-07-06 A | 2026-07-08 A | QTS-15621 SS+1d, QTS-15621 FF | 100% |  | 2026-07-22 | 2026-07-27 |  |  | QTS-PHX3 DC1 - 6 day w/ Holidays |  | Electrical |  |  | Oscar Armenta |  | BAB |  |  |  |  | Construction | IGMP | Phase 2 | Construction | DH1200 |  |
| QTS-44511 |  | DH 1200 / Mechanical Gallery 1201 // Install Security and Devices | 5d | 2026-07-07 A | 2026-07-10 A | QTS-43771 | 100% |  | 2026-07-15 | 2026-07-20 |  |  | QTS-PHX3 DC1 - 6 day w/ Holidays |  | Electrical |  |  | Oscar Armenta |  | BAB |  |  |  |  | Construction | IGMP |  | Construction | DH2100 | Level 2 |
| QTS-46671 |  | DH 1200 / Mechanical Gallery 1201 // Pull & Terminate from MOD-02 to DOAS | 4d | 2026-07-08 A | 2026-07-14 A | QTS-46661 | 100% |  | 2026-07-15 | 2026-07-18 |  |  | QTS-PHX3 DC1 - 6 day w/ Holidays |  | Electrical |  |  | Oscar Armenta |  | BAB |  |  |  |  | Construction | IGMP | Phase 1 | Construction | DH1200 | Level 1 |
| QTS-1370 |  | TFO SCOPE \\ DH 1200 / Gallery 1201 Install Technical Loop Stainless Piping | 8d | 2026-07-13 A | 2026-08-06 A | QTS-5820 SS, QTS - 7940 | 100% |  | 2026-07-15 | 2026-07-23 |  |  | **GLOBAL - 6 Day Workweek w/ Basic Holidays | 8/6 done | Mechanical |  |  | Mechanical |  | TFO | Bel-Aire | NICK |  |  |  |  |  |  |  |  |
| QTS-1390 |  | DH 1200 / Gallery 1201 / Final Paint | 2d | 2026-07-20 A | 2026-07-21 A | QTS-44511 | 100% |  | 2026-07-27 | 2026-07-28 |  |  | **GLOBAL - 6 Day Workweek w/ Basic Holidays |  | Build Out |  |  | Jason Hendley |  | BAB | PPC |  |  |  |  |  |  |  |  |  |
| QTS-1380 |  | TFO SCOPE \\ DH 1200 / Gallery 1201 / Patch Back and Fire caulk RPP Feeder Pentrations | 4d | 2026-07-28 A | 2026-08-06 A | QTS-1520 | 100% |  | 2026-07-29 | 2026-08-01 |  |  | **GLOBAL - 6 Day Workweek w/ Basic Holidays | 8/6 done | Build Out |  |  | Ed Carter |  | TFO | PCI/Riteway |  | TFO CONST |  |  |  |  |  |  |  |
| QTS-1365 |  | DH 1200 / Gallery 1201 / Hang tape and Finish Drywall Patches | 4d | 2026-07-29 A | 2026-08-01 A | QTS-44511 | 100% |  | 2026-08-05 | 2026-08-08 |  |  | **GLOBAL - 6 Day Workweek w/ Basic Holidays |  | Build Out |  |  | Ed Carter |  | BAB | PCI |  |  |  |  |  |  |  |  |  |
| QTS-1400 |  | DH 1200 / Gallery 1201 / Install Fire Extinguishers | 2d | 2026-08-19 | 2026-08-20 | QTS-1390, QTS-1690 SS |  |  |  |  | -106d | 0d | **GLOBAL - 6 Day Workweek w/ Basic Holidays | Pushed due to Manpower | Build Out |  |  | Jake Shimmin |  | BAB | ISEC |  |  |  |  |  |  |  |  |  |
| QTS-1441 |  | TFO SCOPE \\ DH 1200 / Gallery 1201 / Fill and Flush Technical Loop | 18d | 2026-08-19 | 2026-09-05 | QTS-1013560 FF, QTS-1370 |  |  |  |  | -79d | 1d | **GLOBAL - 7 Day Workweek w/ Basic Holidays | started 8-13 | Mechanical |  |  | Mechanical |  | TFO | Bel-Aire | NICK | TFO CONST |  |  |  |  |  |  |  |
| QTS-1420 |  | DH 1200 / Gallery 1201 / Seal Concrete Floor | 3d | 2026-09-01 | 2026-09-03 | QTS-1390, QTS-1400, QTS-1014370 |  |  |  |  | -97d | 0d | **GLOBAL - 6 Day Workweek w/ Basic Holidays |  | Build Out |  |  | Jason Hendley |  | BAB | Bldg Solutions |  |  |  |  |  |  |  |  |  |
| QTS-1460 |  | DH 1200 / Gallery 1201 / Install Rubber Base | 2d | 2026-09-04 | 2026-09-05 | QTS-1420 |  |  |  |  | -97d | 0d | **GLOBAL - 6 Day Workweek w/ Basic Holidays |  | Build Out |  |  | Ben Ribble |  | BAB | Wholesale Flooring |  |  |  |  |  |  |  |  |  |

Notes:
- QTS-1013670: Scheduler Notes: Manpower Delay
- QTS-13811: allucent_notes_20251021_145627: David Wiltberger on 2025-10-07 16:10: access limited / Luis Vea on 2025-10-21T15:11:17.421Z: delayed, nothing happening here / allucent_notes_20251014_152335: David Wiltberger on 2025-10-07 16:10: access limited / allucent_notes: 2025-10-07 16:10 - User: David Wiltberger - Date Added: 2025-10-07 16:10 - Note: access limited / 2025-10-21T15:11:17.421Z - User: Luis Vea - Date Added: 2025-10-21T15:11:17.421Z - Note: delayed, nothing happening here
- QTS-13821: allucent_notes_20251216_165335: David Wiltberger on 2025-10-07 15:10: not completed with zone 1 yet / David Wiltberger on 2025-10-21 13:10: Directed by Layton to concentrate on all Phase 1 work to drive completion / Jason Johnston on 2025-11-11 16:11: actually started 11/8 / David Wiltberger on 2025-11-17 16:11: out of sequence / allucent_notes_20251209_203830: David Wiltberger on 2025-10-07 15:10: not completed with zone 1 yet / David Wiltberger on 2025-10-21 13:10: Directed by Layton to concentrate on all Phase 1 work to drive completion / Jason Johnston on 2025-11-11 16:11: actually started 11/8 / David Wiltberger on 2025-11-17 16:11: out of sequence / allucent_notes_20251202_153722: David Wiltberger on 2025-10-07 15:10: not completed with zone 1 yet / David Wiltberger on 2025-10-21 13:10: Directed by Layton to concentrate on all Phase 1 work to drive completion / Jason Johnston on 2025-11-11 16:11: actually started 11/8 / David Wiltberger on 2025-11-17 16:11: out of sequence / allucent_notes_20251118_192630: David Wiltberger on 2025-10-07 15:10: not completed with zone 1 yet / David Wiltberger on 2025-10-21 13:10: Directed by Layton to concentrate on all Phase 1 work to drive completion / Jason Johnston on 2025-11-11 16:11: actually started 11/8 / David Wiltberger on 2025-11-17 16:11: out of sequence / allucent_notes_20251111_182405: David Wiltberger on 2025-10-07 15:10: not completed with zone 1 yet / David Wiltberger on 2025-10-21 13:10: Directed by Layton to concentrate on all Phase 1 work to drive completion / Jason Johnston on 2025-11-11 16:11: actually started 11/8 / allucent_notes_20251104_160200: David Wiltberger on 2025-10-07 15:10: not completed with zone 1 yet / David Wiltberger on 2025-10-21 13:10: Directed by Layton to concentrate on all Phase 1 work to drive completion / allucent_notes_20251028_163138: David Wiltberger on 2025-10-07 15:10: not completed with zone 1 yet / David Wiltberger on 2025-10-21 13:10: Directed by Layton to concentrate on all Phase 1 work to drive completion / allucent_notes_20251027_224008: David Wiltberger on 2025-10-07 15:10: not completed with zone 1 yet / David Wiltberger on 2025-10-21 13:10: Directed by Layton to concentrate on all Phase 1 work to drive completion / allucent_notes_20251021_145627: David Wiltberger on 2025-10-07 15:10: not completed with zone 1 yet / David Wiltberger on 2025-10-21 13:10: Directed by Layton to concentrate on all Phase 1 work to drive completion / allucent_notes_20251014_152335: David Wiltberger on 2025-10-07 15:10: not completed with zone 1 yet / allucent_notes: 2025-10-07 15:10 - User: David Wiltberger - Date Added: 2025-10-07 15:10 - Note: not completed with zone 1 yet / 2025-10-21 13:10 - User: David Wiltberger - Date Added: 2025-10-21 13:10 - Note: Directed by Layton to concentrate on all Phase 1 work to dri
- QTS-8621: allucent_notes_20251202_153722: Zack Goertz on 2025-10-14T16:39:02.631Z: Needs resequencing. Zone 3 is the next priority area. / -ZG 10/14 / Jason Johnston on 2025-10-14 15:10: resequencing needed to ensure we are truly on critical path. / Luis Vea on 2025-10-21T15:12:12.333Z: bottom and top track is installed, no vertical framing, manpower got pushed back to zone 1 fan walls / Jason Johnston on 2025-10-21 12:10: Moving out to reallocate for zone 1 / Jason Johnston on 2025-11-11 16:11: Not started. / allucent_notes_20251118_192630: Zack Goertz on 2025-10-14T16:39:02.631Z: Needs resequencing. Zone 3 is the next priority area. / -ZG 10/14 / Jason Johnston on 2025-10-14 15:10: resequencing needed to ensure we are truly on critical path. / Luis Vea on 2025-10-21T15:12:12.333Z: bottom and top track is installed, no vertical framing, manpower got pushed back to zone 1 fan walls / Jason Johnston on 2025-10-21 12:10: Moving out to reallocate for zone 1 / Jason Johnston on 2025-11-11 16:11: Not started. / allucent_notes_20251111_182405: Zack Goertz on 2025-10-14T16:39:02.631Z: Needs resequencing. Zone 3 is the next priority area. / -ZG 10/14 / Jason Johnston on 2025-10-14 15:10: resequencing needed to ensure we are truly on critical path. / Luis Vea on 2025-10-21T15:12:12.333Z: bottom and top track is installed, no vertical framing, manpower got pushed back to zone 1 fan walls / Jason Johnston on 2025-10-21 12:10: Moving out to reallocate for zone 1 / Jason Johnston on 2025-11-11 16:11: Not started. / allucent_notes_20251104_160200: Zack Goertz on 2025-10-14T16:39:02.631Z: Needs resequencing. Zone 3 is the next priority area. / -ZG 10/14 / Jason Johnston on 2025-10-14 15:10: resequencing needed to ensure we are truly on critical path. / Luis Vea on 2025-10-21T15:12:12.333Z: bottom and top track is installed, no vertical framing, manpower got pushed back to zone 1 fan walls / Jason Johnston on 2025-10-21 12:10: Moving out to reallocate for zone 1 / allucent_notes_20251028_163138: Zack Goertz on 2025-10-14T16:39:02.631Z: Needs resequencing. Zone 3 is the next priority area. / -ZG 10/14 / Jason Johnston on 2025-10-14 15:10: resequencing needed to ensure we are truly on critical path. / Luis Vea on 2025-10-21T15:12:12.333Z: bottom and top track is installed, no vertical framing, manpower got pushed back to zone 1 fan walls / Jason Johnston on 2025-10-21 12:10: Moving out to reallocate for zone 1 / allucent_notes_20251027_224008: Zack Goertz on 2025-10-14T16:39:02.631Z: Needs resequencing. Zone 3 is the next priority area. / -ZG 10/14 / Jason Johnston on 2025-10-14 15:10: resequencing needed to ensure we are truly on critical path. / Luis Vea on 2025-10-21T15:12:12.333Z: bottom and top track is installed, no vertical framing, manpower got pushed back to zone 1 fan walls / Jason Johnston on 2025-10-21 12:10: Moving out to reallocate for zone 1 / allucent_notes_20251021_145627: Zack Goertz on 2025-10-14T16:39:02.631Z: Needs resequencing. Zone 3 is the next priority area. / -ZG 10/14 / Jason Johnston on 2025-10-14 15:10: resequencing needed to ensure we are truly on critical path. / Luis Vea on 2025-10-21T15:12:12.333Z: bottom and top track is installed, no vertical framing, manpower got pushed back to zone 1 fan walls / Jason Johnston on 2025-10-21 12:10: Moving out to reallocate for zone 1 / allucent_notes_20251014_152335: Zack Goertz on 2025-10-14T16:39:02.631Z: Needs resequencing. Zone 3 is the next priority area. / -ZG 10/14 / Jason Johnston on 2025-10-14 15:10: resequencing needed to ensure we are truly on critical path. / allucent_notes: 10/1/25 / RFI #543 / Holding up the completion of the framing of the 12' X 38' / wall. / allucent_notes: 2025-10-14T16:39:02.631Z - User: Zack Goertz - Date Added: 2025-10-14T16:39:02.631Z - Note: Needs resequencing. Zone 3 is the next priority area. -ZG 10/14 / 2025-10-14 15:10 - User: Jason Johnston - Date Added: 2025-10-14 15:10 - Note: resequencing need
- QTS-11261: allucent_notes_20251216_165335: Zack Goertz on 2025-10-14T16:39:52.733Z: needs resequencing. Zone 3 and BOH is the next priority. / -ZG 10/14 / Jason Johnston on 2025-11-04 16:11: Update needed / Jason Johnston on 2025-11-11 16:11: Not starting / Luis Vea on 2025-12-01 10:28: started 11/21 / allucent_notes_20251209_203830: Zack Goertz on 2025-10-14T16:39:52.733Z: needs resequencing. Zone 3 and BOH is the next priority. / -ZG 10/14 / Jason Johnston on 2025-11-04 16:11: Update needed / Jason Johnston on 2025-11-11 16:11: Not starting / Luis Vea on 2025-12-01 10:28: started 11/21 / allucent_notes_20251202_153722: Zack Goertz on 2025-10-14T16:39:52.733Z: needs resequencing. Zone 3 and BOH is the next priority. / -ZG 10/14 / Jason Johnston on 2025-11-04 16:11: Update needed / Jason Johnston on 2025-11-11 16:11: Not starting / Luis Vea on 2025-12-01 10:28: started 11/21 / allucent_notes_20251118_192630: Zack Goertz on 2025-10-14T16:39:52.733Z: needs resequencing. Zone 3 and BOH is the next priority. / -ZG 10/14 / Jason Johnston on 2025-11-04 16:11: Update needed / Jason Johnston on 2025-11-11 16:11: Not starting / allucent_notes_20251111_182405: Zack Goertz on 2025-10-14T16:39:52.733Z: needs resequencing. Zone 3 and BOH is the next priority. / -ZG 10/14 / Jason Johnston on 2025-11-04 16:11: Update needed / Jason Johnston on 2025-11-11 16:11: Not starting / allucent_notes_20251104_160200: Zack Goertz on 2025-10-14T16:39:52.733Z: needs resequencing. Zone 3 and BOH is the next priority. / -ZG 10/14 / Jason Johnston on 2025-11-04 16:11: Update needed / allucent_notes_20251028_163138: Zack Goertz on 2025-10-14T16:39:52.733Z: needs resequencing. Zone 3 and BOH is the next priority. / -ZG 10/14 / allucent_notes_20251027_224008: Zack Goertz on 2025-10-14T16:39:52.733Z: needs resequencing. Zone 3 and BOH is the next priority. / -ZG 10/14 / allucent_notes_20251021_145627: Zack Goertz on 2025-10-14T16:39:52.733Z: needs resequencing. Zone 3 and BOH is the next priority. / -ZG 10/14 / allucent_notes_20251014_152335: Zack Goertz on 2025-10-14T16:39:52.733Z: needs resequencing. Zone 3 and BOH is the next priority. / -ZG 10/14 / allucent_notes_20251230_164549: Zack Goertz on 2025-10-14T16:39:52.733Z: needs resequencing. Zone 3 and BOH is the next priority. / -ZG 10/14 / Jason Johnston on 2025-11-04 16:11: Update needed / Jason Johnston on 2025-11-11 16:11: Not starting / Luis Vea on 2025-12-01 10:28: started 11/21 / allucent_notes: 2025-10-14T16:39:52.733Z - User: Zack Goertz - Date Added: 2025-10-14T16:39:52.733Z - Note: needs resequencing. Zone 3 and BOH is the next priority. -ZG 10/14 / 2025-11-04 16:11 - User: Jason Johnston - Date Added: 2025-11-04 16:11 - Note: Update needed
- QTS-10511: allucent_notes_20251216_165335: Jason Johnston on 2025-12-16 08:03: late start / allucent_notes_20251230_164549: Jason Johnston on 2025-12-16 08:03: late start / David Wiltberger on 2025-12-30 16:21: no update / allucent_notes: 2025-12-16 08:03 - User: Jason Johnston - Date Added: 2025-12-16 08:03 - Note: late start / 2025-12-30 16:21 - User: David Wiltberger - Date Added: 2025-12-30 16:21 - Note: no update
- QTS-1003420: allucent_notes_20251216_165335: Jason Johnston on 2025-12-16 08:03: late start / allucent_notes_20251230_164549: Jason Johnston on 2025-12-16 08:03: late start / David Wiltberger on 2025-12-30 16:21: no update / allucent_notes: 2025-12-16 08:03 - User: Jason Johnston - Date Added: 2025-12-16 08:03 - Note: late start / 2025-12-30 16:21 - User: David Wiltberger - Date Added: 2025-12-30 16:21 - Note: no update
- QTS-10501: allucent_notes_20251216_165335: David Wiltberger on 2025-10-07 16:10: No walls yet / David Wiltberger on 2025-10-14 12:10: no walls / Luis Vea on 2025-12-01 10:48: walls are not rough in, REI has manpwer in BOH AND FOH and zone 1 both floors / Jason Johnston on 2025-12-16 08:03: Waiting for BOH to be complete / allucent_notes_20251209_203830: David Wiltberger on 2025-10-07 16:10: No walls yet / David Wiltberger on 2025-10-14 12:10: no walls / Luis Vea on 2025-12-01 10:48: walls are not rough in, REI has manpwer in BOH AND FOH and zone 1 both floors / allucent_notes_20251202_153722: David Wiltberger on 2025-10-07 16:10: No walls yet / David Wiltberger on 2025-10-14 12:10: no walls / Luis Vea on 2025-12-01 10:48: walls are not rough in, REI has manpwer in BOH AND FOH and zone 1 both floors / allucent_notes_20251118_192630: David Wiltberger on 2025-10-07 16:10: No walls yet / David Wiltberger on 2025-10-14 12:10: no walls / allucent_notes_20251111_182405: David Wiltberger on 2025-10-07 16:10: No walls yet / David Wiltberger on 2025-10-14 12:10: no walls / allucent_notes_20251104_160200: David Wiltberger on 2025-10-07 16:10: No walls yet / David Wiltberger on 2025-10-14 12:10: no walls / allucent_notes_20251028_163138: David Wiltberger on 2025-10-07 16:10: No walls yet / David Wiltberger on 2025-10-14 12:10: no walls / allucent_notes_20251027_224008: David Wiltberger on 2025-10-07 16:10: No walls yet / David Wiltberger on 2025-10-14 12:10: no walls / allucent_notes_20251021_145627: David Wiltberger on 2025-10-07 16:10: No walls yet / David Wiltberger on 2025-10-14 12:10: no walls / allucent_notes_20251014_152335: David Wiltberger on 2025-10-07 16:10: No walls yet / David Wiltberger on 2025-10-14 12:10: no walls / allucent_notes_20251230_164549: David Wiltberger on 2025-10-07 16:10: No walls yet / David Wiltberger on 2025-10-14 12:10: no walls / Luis Vea on 2025-12-01 10:48: walls are not rough in, REI has manpwer in BOH AND FOH and zone 1 both floors / Jason Johnston on 2025-12-16 08:03: Waiting for BOH to be complete / allucent_notes: 2025-10-07 16:10 - User: David Wiltberger - Date Added: 2025-10-07 16:10 - Note: No walls yet / 2025-10-14 12:10 - User: David Wiltberger - Date Added: 2025-10-14 12:10 - Note: no walls / 2025-12-01 10:48 - User: Luis Vea - Date Added: 2025-12-01 10:48
- QTS-1003430: allucent_notes_20251216_165335: Jason Johnston on 2025-12-16 08:03: late start / allucent_notes_20251230_164549: Jason Johnston on 2025-12-16 08:03: late start / David Wiltberger on 2025-12-30 16:21: no update / allucent_notes: 2025-12-16 08:03 - User: Jason Johnston - Date Added: 2025-12-16 08:03 - Note: late start / 2025-12-30 16:21 - User: David Wiltberger - Date Added: 2025-12-30 16:21 - Note: no update
- QTS-15631: allucent_notes_20251230_164549: David Wiltberger on 2025-12-30 16:21: no update / allucent_notes: 2025-12-30 16:21 - User: David Wiltberger - Date Added: 2025-12-30 16:21 - Note: no update
- QTS-1003440: allucent_notes_20251216_165335: Jason Johnston on 2025-12-16 08:03: late start / allucent_notes_20251230_164549: Jason Johnston on 2025-12-16 08:03: late start / David Wiltberger on 2025-12-30 16:21: no update / allucent_notes: 2025-12-16 08:03 - User: Jason Johnston - Date Added: 2025-12-16 08:03 - Note: late start / 2025-12-30 16:21 - User: David Wiltberger - Date Added: 2025-12-30 16:21 - Note: no update
- QTS-43771: Scheduler Notes: 5/19: Began pulling, no terminations set

| ID | WBS | Activity | Duration | Start | Finish | Predecessors | Complete | Planned start | Planned finish | Total float | Free float | Calendar | Layton Discipline | Layton Super | Contract | Trade Partner | Allucent CSI Group | Project Section | Baseline | Phase-1-1 | Project Section-1 | Location | Level | Notes |
| --- | --- | --- | --- | --- | --- | --- | --- | --- | --- | --- | --- | --- | --- | --- | --- | --- | --- | --- | --- | --- | --- | --- | --- | --- |
| QTS-1470 |  | DH 1200 / Gallery 1201 / Clean | 2d | 2026-09-08 | 2026-09-09 | QTS-1460, QTS-1365, QTS-1380 |  |  |  | -97d | 28d | **GLOBAL - 6 Day Workweek w/ Basic Holidays | Build Out | Jason Hendley | BAB | AGDC |  |  |  |  |  |  |  |  |
|  | 7 | **Gallery 1203 Mechanical** |  | 2025-10-30 | 2026-08-29 |  |  |  |  |  |  |  |  |  |  |  |  |  |  |  |  |  |  |  |
| QTS-14741 |  | DH 1200 / Mechanical Gallery 1203 // Install VESDA | 8d | 2025-10-30 A | 2025-11-10 A | QTS-14731 | 100% |  |  |  |  |  | Electrical |  | BAB |  | 01ADMIN | Construction | IGMP | Phase 2 | Construction | DH1200 |  |  |
| QTS-44601 |  | DH 1200 / Mechanical Gallery 1203 // Install OH Mechanical Hangers | 7d | 2025-11-13 A | 2025-12-02 A | QTS-44491 | 100% | 2025-11-06 | 2025-11-14 |  |  |  | Mechanical |  | BAB |  | 01ADMIN | Construction | IGMP |  | Construction | DH2100 | Level 2 |  |
| QTS-10491 |  | DH 1200 / Mechanical Gallery 1203 // Frame for 1203 Exterior Wall | 5d | 2025-12-10 A | 2025-12-16 A | QTS-8621, QTS-8611, QTS-4621, QTS-6921 | 100% |  |  |  |  |  | Build Out |  | BAB |  | 01ADMIN | Construction | IGMP | Phase 2 | Construction | DH1200 |  |  |
| QTS-14751 |  | DH 1200 / Mechanical Gallery 1203 // OH Mechanical Piping | 10d | 2025-12-15 A | 2026-01-21 A | QTS-13821, QTS-44601 | 100% | 2025-12-15 | 2025-12-26 |  |  | QTS-PHX3 DC1 - 6 day w/ Holidays | Mechanical |  | BAB |  | 01ADMIN | Construction | IGMP | Phase 2 | Construction | DH1200 |  |  |
| QTS-11611 |  | DH 1200 / Mechanical Gallery 1203 // Frame Fan Wall | 5d | 2025-12-22 A | 2025-12-27 A | QTS-10491 | 100% |  |  |  |  | QTS-PHX3 DC1 - 6 day w/ Holidays | Build Out |  | BAB |  | 01ADMIN | Construction | IGMP | Phase 2 | Construction | DH1200 |  |  |
| QTS-12571 |  | DH 1200 / Mechanical Gallery 1203 // In Wall Electrical Rough for Fan Wall | 2d | 2025-12-29 A | 2025-12-30 A | QTS-11611 | 100% |  |  |  |  | QTS-PHX3 DC1 - 6 day w/ Holidays | Electrical |  | BAB |  | 01ADMIN | Construction | IGMP | Phase 2 | Construction | DH1200 |  |  |
| QTS-12851 |  | DH 1200 / Mechanical Gallery 1203 // In Wall Inspection for Fan Wall | 1d | 2026-01-09 A | 2026-01-09 A | QTS-12571 | 100% |  |  |  |  | QTS-PHX3 DC1 - 6 day w/ Holidays | Electrical |  | BAB |  | 01ADMIN | Construction | IGMP | Phase 2 | Construction | DH1200 |  |  |
| QTS-1003520 |  | DH 1200 / Mechanical Gallery 1203 // Hang Drywall for 1203 Exterior Wall - Remaining | 3d | 2026-01-10 A | 2026-02-15 A | QTS-1003570 | 100% | 2026-01-10 | 2026-01-13 |  |  | QTS-PHX3 DC1 - 6 day w/ Holidays | Build Out |  | BAB |  | 01ADMIN | Construction | IGMP | Phase 2 | Construction | DH1200 |  |  |
| QTS-12241 |  | DH 1200 / Mechanical Gallery 1203 // Top Out for 1203 Exterior Wall | 3d | 2026-01-10 A | 2026-02-15 A | QTS-10491, QTS-1003500 | 100% | 2026-01-10 | 2026-01-13 |  |  | QTS-PHX3 DC1 - 6 day w/ Holidays | Build Out |  | BAB |  | 01ADMIN | Construction | IGMP | Phase 2 | Construction | DH1200 |  |  |
| QTS-13021 |  | DH 1200 / Mechanical Gallery 1203 // Hang, Tape, & Finish Fan Drywall | 5d | 2026-01-10 A | 2026-01-16 A | QTS-12851 | 100% | 2026-01-10 | 2026-01-15 |  |  | QTS-PHX3 DC1 - 6 day w/ Holidays | Build Out |  | BAB |  | 01ADMIN | Construction | IGMP | Phase 2 | Construction | DH1200 |  |  |
| QTS-15301 |  | DH 1200 / Mechanical Gallery 1203 // OFCI - L2 SET IN PLACE - Eq Type # - CRAH - 14 units | 6d | 2026-01-17 A | 2026-01-19 A | QTS-14251, QTS-13791, QTS-14751, QTS-35241, QTS-35231, QTS-35221, QTS-35211, QTS-35201, QTS-35191, QTS-35181, QTS-35171, QTS-35161, QTS-35151, QTS-35141, QTS-35131, QTS-35121, QTS-35111, QTS-14761, QTS-13781 | 100% | 2026-01-17 | 2026-01-24 |  |  | QTS-PHX3 DC1 - 6 day w/ Holidays | Mechanical |  | BAB |  |  | Construction | IGMP | Phase 2 | Construction | DH1200 |  |  |
| QTS-1003500 |  | DH 1200 / Mechanical Gallery 1203 // Insulate 1203 Exterior Wall | 2d | 2026-01-28 A | 2026-01-30 A | QTS-10491 | 100% | 2026-01-28 | 2026-01-29 |  |  | QTS-PHX3 DC1 - 6 day w/ Holidays | Build Out |  | BAB |  | 01ADMIN | Construction | IGMP | Phase 2 | Construction | DH1200 |  | 1/20/26: Spray foam insulation incomplete. |
| QTS-1003560 |  | DH 1200 / Mechanical Gallery 1203 // In Wall Electrical Rough In 1203 Exterior Wall | 2d | 2026-01-30 A | 2026-01-31 A | QTS-1003500 | 100% |  |  |  |  | QTS-PHX3 DC1 - 6 day w/ Holidays | Build Out |  | BAB |  | 01ADMIN | Construction | IGMP | Phase 2 | Construction | DH1200 |  |  |
| QTS-1003570 |  | DH 1200 / Mechanical Gallery 1203 // In Wall Inspection 1203 Exterior Wall | 2d | 2026-02-02 A | 2026-02-03 A | QTS-1003560 | 100% |  |  |  |  | QTS-PHX3 DC1 - 6 day w/ Holidays | Build Out |  | BAB |  | 01ADMIN | Construction | IGMP | Phase 2 | Construction | DH1200 |  |  |
| QTS-1003510 |  | DH 1200 / Mechanical Gallery 1203 // Tape, & Finish Drywall for 1203 Exterior Wall - Top Out | 4d | 2026-02-05 A | 2026-02-20 A | QTS-12241 | 100% | 2026-02-05 | 2026-02-09 |  |  | QTS-PHX3 DC1 - 6 day w/ Holidays | Build Out |  | BAB |  | 01ADMIN | Construction | IGMP | Phase 2 | Construction | DH1200 |  |  |
| QTS-1003530 |  | DH 1200 / Mechanical Gallery 1203 // Tape, & Finish Drywall for 1203 Exterior Wall - Remaining | 4d | 2026-02-05 A | 2026-02-20 A | QTS-1003520 | 100% | 2026-02-05 | 2026-02-09 |  |  | QTS-PHX3 DC1 - 6 day w/ Holidays | Build Out |  | BAB |  | 01ADMIN | Construction | IGMP | Phase 2 | Construction | DH1200 |  |  |
| QTS-14761 |  | DH 1200 / Mechanical Gallery 1203 // Install Security Screen Above Fan Wall | 3d | 2026-02-05 A | 2026-02-12 A | QTS-1001250, QTS-14741, QTS-99680, QTS-11611 | 100% | 2026-02-05 | 2026-02-07 |  |  | QTS-PHX3 DC1 - 6 day w/ Holidays | Build Out |  | BAB |  | 01ADMIN | Construction | IGMP | Phase 2 | Construction | DH1200 |  |  |
| QTS-1003540 |  | DH 1200 / Mechanical Gallery 1203 // Paint for 1203 Exterior Wall - Remaining | 2d | 2026-02-15 A | 2026-02-17 A | QTS-1003520, QTS-1003530 | 100% | 2026-02-19 | 2026-02-20 |  |  | QTS-PHX3 DC1 - 6 day w/ Holidays | Build Out |  | BAB |  | 01ADMIN | Construction | IGMP | Phase 2 | Construction | DH1200 |  |  |
| QTS-13781 |  | DH 1200 / Mechanical Gallery 1203 // Paint for 1203 Exterior Wall -Top Out | 2d | 2026-02-15 A | 2026-02-17 A | QTS-12241, QTS-1003510 | 100% | 2026-02-16 | 2026-02-17 |  |  | QTS-PHX3 DC1 - 6 day w/ Holidays | Build Out |  | BAB |  | 01ADMIN | Construction | IGMP | Phase 2 | Construction | DH1200 |  |  |
| QTS-13791 |  | DH 1200 / Mechanical Gallery 1203 // Paint Fan Walls | 5d | 2026-02-15 A | 2026-02-15 A | QTS-13021 | 100% | 2026-02-11 | 2026-02-16 |  |  | QTS-PHX3 DC1 - 6 day w/ Holidays | Build Out |  | BAB |  |  | Construction | IGMP | Phase 2 | Construction | DH1200 |  |  |
| QTS-16331 |  | DH 1200 / Mechanical Gallery 1203 // CRAH Unit Mechanical Connections | 10d | 2026-03-25 A | 2026-04-28 A | QTS-15301, QTS - 26071 SS | 100% | 2026-04-01 | 2026-04-11 |  |  | QTS-PHX3 DC1 - 6 day w/ Holidays | Mechanical |  | BAB |  |  | Construction | IGMP | Phase 2 | Construction | DH1200 |  |  |
| QTS-1010550 |  | DH 1200 / Mechanical Gallery 1203 // Pull Fiber from MDF to DCIM 1203 | 1d | 2026-06-30 A | 2026-06-30 A | QTS-1012260 | 100% | 2026-07-14 | 2026-07-14 |  |  | QTS-PHX3 DC1 - 6 day w/ Holidays | LV | Low Voltage | BAB |  |  | Construction | IGMP | Phase 2 | Construction | DH1200 |  |  |
| QTS-1010560 |  | DH 1200 / Mechanical Gallery 1203 // Pull BMS & EPMS Cable to DCIM 1203 | 1d | 2026-06-30 A | 2026-06-30 A | QTS-1010550 SS, QTS-1010550 FF | 100% | 2026-07-14 | 2026-07-14 |  |  | QTS-PHX3 DC1 - 6 day w/ Holidays | LV | Low Voltage | BAB |  |  | Construction | IGMP | Phase 2 | Construction | DH1200 |  |  |
| QTS-16541 |  | DH 1200 / Mechanical Gallery 1203 // Install Electrical Tray | 4d | 2026-07-01 A | 2026-07-03 A | QTS-16331, QTS-14751, QTS-13781 | 100% | 2026-07-21 | 2026-07-24 |  |  | QTS-PHX3 DC1 - 6 day w/ Holidays | Electrical | Oscar Armenta | BAB |  |  | Construction | IGMP | Phase 2 | Construction | DH1200 |  |  |
| QTS-17151 |  | DH 1200 / Mechanical Gallery 1203 // Install Basket Tray for LV | 3d | 2026-07-01 A | 2026-07-06 A | QTS-16541 SS+1d, QTS-16541 FF | 100% | 2026-07-15 | 2026-07-17 |  |  | QTS-PHX3 DC1 - 6 day w/ Holidays | Electrical | Oscar Armenta | BAB |  |  | Construction | IGMP | Phase 2 | Construction | DH1200 |  |  |
| QTS-16551 |  | DH 1200 / Mechanical Gallery 1203 // Install OH Electrical & Grounding | 5d | 2026-07-06 A | 2026-07-10 A | QTS-14751 | 100% | 2026-07-15 | 2026-07-20 |  |  | QTS-PHX3 DC1 - 6 day w/ Holidays | Electrical | Oscar Armenta | BAB |  | 01ADMIN | Construction | IGMP | Phase 2 | Construction | DH1200 |  |  |
| QTS-1010930 |  | DH 1200 / Mechanical Gallery 1203 // Install Provision Switches DCIM 1203 | 2d | 2026-07-09 A | 2026-07-10 A | QTS-1010570 | 100% | 2026-07-18 | 2026-07-20 |  |  | QTS-PHX3 DC1 - 6 day w/ Holidays | Electrical | Oscar Armenta | BAB |  |  | Construction | IGMP | Phase 2 | Construction | DH1200 |  |  |
| QTS-1010570 |  | DH 1200 / Mechanical Gallery 1203 // Terminate and Test Fiber from MDF to DCIM 1203 | 3d | 2026-07-10 A | 2026-07-13 A | QTS-1010550 | 100% | 2026-07-15 | 2026-07-17 |  |  | QTS-PHX3 DC1 - 6 day w/ Holidays | LV | Low Voltage | BAB |  |  | Construction | IGMP | Phase 2 | Construction | DH1200 |  |  |
| QTS-17981 |  | DH 1200 / Mechanical Gallery 1203 // Terminate and Test BMS & EPMS Cable to DCIM 1203 | 2d | 2026-07-10 A | 2026-07-13 A | QTS-1010560 | 100% | 2026-07-15 | 2026-07-16 |  |  | QTS-PHX3 DC1 - 6 day w/ Holidays | LV | Low Voltage | BAB |  |  | Construction | IGMP | Phase 2 | Construction | DH1200 |  |  |
| QTS-1010940 |  | DH 1200 / Mechanical Gallery 1203 // Load Project and Verify Communication DCIM 1203 | 2d | 2026-07-13 A | 2026-07-14 A | QTS-1010930, QTS-16551 | 100% | 2026-07-21 | 2026-07-22 |  |  | QTS-PHX3 DC1 - 6 day w/ Holidays | Electrical | Oscar Armenta | BAB |  |  | Construction | IGMP | Phase 2 | Construction | DH1200 |  |  |
| QTS-5940 |  | DH 1200 / Gallery 1203 / Install Technical Loop Stainless Piping | 8d | 2026-07-17 A | 2026-08-07 A | QTS-1370 SS, QTS - 7940 | 100% | 2026-07-22 | 2026-07-30 |  |  | **GLOBAL - 6 Day Workweek w/ Basic Holidays | Mechanical | Mechanical | BAB | Bel-Aire |  |  |  |  |  |  |  | 8/7 done |
| QTS-1890 |  | DH 1200 / Gallery 1203 / Final Paint | 2d | 2026-08-01 A | 2026-08-03 A | QTS-1010940 | 100% | 2026-08-10 | 2026-08-11 |  |  | **GLOBAL - 6 Day Workweek w/ Basic Holidays | Build Out | Jason Hendley | BAB | PPC |  |  |  |  |  |  |  |  |
| QTS-1880 |  | DH 1200 / Gallery 1203 / Hang Tape and Finish Drywall patches | 4d | 2026-08-03 A | 2026-08-05 A | QTS-1365 | 100% | 2026-08-10 | 2026-08-13 |  |  | **GLOBAL - 6 Day Workweek w/ Basic Holidays | Build Out | Ed Carter | BAB | PCI |  |  |  |  |  |  |  | 8/5 finish |
| QTS-1850 |  | DH 1200 / Gallery 1203 / Remove Temp Lighting/ Power | 2d | 2026-08-19 | 2026-08-20 | QTS-1880 |  |  |  | -88d | 6d | **GLOBAL - 6 Day Workweek w/ Basic Holidays | Electrical | Electrical | BAB | REI |  |  |  |  |  |  |  | Needs permanent power |
| QTS-5950 |  | DH 1200 / Gallery 1203 / Install Fire Extinguishers | 2d | 2026-08-21 | 2026-08-22 | QTS-1890, QTS-1400 |  |  |  | -106d | 0d | **GLOBAL - 6 Day Workweek w/ Basic Holidays | Build Out | Jake Shimmin | BAB | ISEC |  |  |  |  |  |  |  |  |
| QTS-1900 |  | DH 1200 / Gallery 1203 / Seal Concrete Floor | 2d | 2026-08-24 | 2026-08-25 | QTS-5950 |  |  |  | -94d | 0d | **GLOBAL - 6 Day Workweek w/ Basic Holidays | Build Out | Ben Ribble | BAB | Bldg Solutions |  |  |  |  |  |  |  |  |
| QTS-1910 |  | DH 1200 / Gallery 1203 / Install Rubber Base | 2d | 2026-08-26 | 2026-08-27 | QTS-1900 |  |  |  | -94d | 0d | **GLOBAL - 6 Day Workweek w/ Basic Holidays | Build Out | Ben Ribble | BAB | Wholesale Flooring |  |  |  |  |  |  |  |  |
| QTS-1920 |  | DH 1200 / Gallery 1203 / Clean | 2d | 2026-08-28 | 2026-08-29 | QTS-1910, QTS-1850 |  |  |  | -94d | 30d | **GLOBAL - 6 Day Workweek w/ Basic Holidays | Build Out | Jason Hendley | BAB | AGDC |  |  |  |  |  |  |  |  |

Notes:
- QTS-10491: allucent_notes_20251216_165335: Luis Vea on 2025-10-21T15:13:02.973Z: manpower got pushed back to zone 1 fan wall, will be pulling man ack to this area / Luis Vea on 2025-12-01 10:49: starting 12/04 / Jason Johnston on 2025-12-09 18:26: Need update from team / allucent_notes_20251209_203830: Luis Vea on 2025-10-21T15:13:02.973Z: manpower got pushed back to zone 1 fan wall, will be pulling man ack to this area / Luis Vea on 2025-12-01 10:49: starting 12/04 / Jason Johnston on 2025-12-09 18:26: Need update from team / allucent_notes_20251202_153722: Luis Vea on 2025-10-21T15:13:02.973Z: manpower got pushed back to zone 1 fan wall, will be pulling man ack to this area / Luis Vea on 2025-12-01 10:49: starting 12/04 / allucent_notes_20251118_192630: Luis Vea on 2025-10-21T15:13:02.973Z: manpower got pushed back to zone 1 fan wall, will be pulling man ack to this area / allucent_notes_20251111_182405: Luis Vea on 2025-10-21T15:13:02.973Z: manpower got pushed back to zone 1 fan wall, will be pulling man ack to this area / allucent_notes_20251104_160200: Luis Vea on 2025-10-21T15:13:02.973Z: manpower got pushed back to zone 1 fan wall, will be pulling man ack to this area / allucent_notes_20251028_163138: Luis Vea on 2025-10-21T15:13:02.973Z: manpower got pushed back to zone 1 fan wall, will be pulling man ack to this area / allucent_notes_20251027_224008: Luis Vea on 2025-10-21T15:13:02.973Z: manpower got pushed back to zone 1 fan wall, will be pulling man ack to this area / allucent_notes_20251021_145627: Luis Vea on 2025-10-21T15:13:02.973Z: manpower got pushed back to zone 1 fan wall, will be pulling man ack to this area / allucent_notes: 2025-10-21T15:13:02.973Z - User: Luis Vea - Date Added: 2025-10-21T15:13:02.973Z - Note: manpower got pushed back to zone 1 fan wall, will be pulling man ack to this area / 2025-12-01 10:49 - User: Luis Vea - Date Added: 2025-12-01 10:49 - Note: startin
- QTS-1003520: allucent_notes_20251230_164549: David Wiltberger on 2025-12-30 16:21: no update / allucent_notes: 2025-12-30 16:21 - User: David Wiltberger - Date Added: 2025-12-30 16:21 - Note: no update
- QTS-12241: allucent_notes_20251230_164549: David Wiltberger on 2025-12-30 16:21: no update / allucent_notes: 2025-12-30 16:21 - User: David Wiltberger - Date Added: 2025-12-30 16:21 - Note: no update
- QTS-1003500: allucent_notes_20251230_164549: David Wiltberger on 2025-12-30 16:21: no update / Scheduler Notes: 1/20/26: Spray foam insulation incomplete. / allucent_notes: 2025-12-30 16:21 - User: David Wiltberger - Date Added: 2025-12-30 16:21 - Note: no update
- QTS-1003560: allucent_notes_20251230_164549: David Wiltberger on 2025-12-30 16:21: no update / allucent_notes: 2025-12-30 16:21 - User: David Wiltberger - Date Added: 2025-12-30 16:21 - Note: no update
- QTS-1003570: allucent_notes_20251230_164549: David Wiltberger on 2025-12-30 16:21: no update / allucent_notes: 2025-12-30 16:21 - User: David Wiltberger - Date Added: 2025-12-30 16:21 - Note: no update
- QTS-1003510: allucent_notes_20251230_164549: David Wiltberger on 2025-12-30 16:21: no update / allucent_notes: 2025-12-30 16:21 - User: David Wiltberger - Date Added: 2025-12-30 16:21 - Note: no update
- QTS-1003530: allucent_notes_20251230_164549: David Wiltberger on 2025-12-30 16:21: no update / allucent_notes: 2025-12-30 16:21 - User: David Wiltberger - Date Added: 2025-12-30 16:21 - Note: no update

| ID | WBS | Activity | Duration | Start | Finish | Predecessors | Complete | Remaining | Planned start | Planned finish | Total float | Free float | Calendar | Allucent CSI Group | Project Section | Layton Discipline | Baseline | Phase-1-1 | Project Section-1 | Location | Contract | Layton Super | Level | If Not Started or Finished Why? | Trade Partner | Notes |
| --- | --- | --- | --- | --- | --- | --- | --- | --- | --- | --- | --- | --- | --- | --- | --- | --- | --- | --- | --- | --- | --- | --- | --- | --- | --- | --- |
|  | 1 | **Gallery 1202 Electrical** |  | 2025-10-20 | 2026-09-02 |  |  |  |  |  |  |  |  |  |  |  |  |  |  |  |  |  |  |  |  |  |
| QTS-14731 |  | DH 1200 / Electrical Gallery 1202 // Install VESDA | 8d | 2025-10-20 A | 2025-10-29 A | QTS-13811 | 100% |  |  |  |  |  |  | 01ADMIN | Construction | Electrical | IGMP | Phase 2 | Construction | DH1200 | BAB |  |  |  |  |  |
| QTS-46681 |  | DH 1200 / Electrical Gallery 1202 // Install OH Electrical, FA, Conduit & Grounding | 10d | 2025-10-30 A | 2026-07-01 A | QTS-14731, QTS-13031 FF+7d, QTS-1003490 FF+7d | 100% |  | 2025-10-30 | 2025-11-10 |  |  | QTS-PHX3 DC1 - 6 day w/ Holidays | 01ADMIN | Construction | Electrical | IGMP | Phase 2 | Construction | DH1200 | BAB | Electrical |  |  |  |  |
| QTS-14231 |  | DH 1200 / Electrical Gallery 1202 // Install Electrical Tray | 5d | 2026-02-20 A | 2026-04-03 A | QTS-2901 FF | 100% |  | 2026-02-20 | 2026-02-25 |  |  | QTS-PHX3 DC1 - 6 day w/ Holidays |  | Construction | Electrical | IGMP | Phase 2 | Construction | DH1200 | BAB |  |  |  |  |  |
| QTS-17751 |  | DH 1200 / Electrical Gallery 1202 // Install Conduit from UPS Pod to Chillers R-C | 6d | 2026-03-05 A | 2026-03-13 A | QTS-22471, QTS-1891 | 100% |  | 2026-03-05 | 2026-03-11 |  |  | QTS-PHX3 DC1 - 6 day w/ Holidays |  | Construction | Electrical | IGMP | Phase 2 | Construction | DH1200 | BAB |  |  |  |  |  |
| QTS-18671 |  | DH 1200 / Electrical Gallery 1202 // Install Conduit from UPS Pod to Pumps R-C | 6d | 2026-03-05 A | 2026-03-13 A | QTS-17751 SS+2d, QTS-3431 FF | 100% |  | 2026-03-05 | 2026-03-11 |  |  | QTS-PHX3 DC1 - 6 day w/ Holidays |  | Construction | Electrical | IGMP | Phase 2 | Construction | DH1200 | BAB |  |  |  |  |  |
| QTS-43781 |  | DH 1200 / Electrical Gallery 1202 // Install Conduit from UPS Pod to Chillers Lineup D-F | 6d | 2026-03-10 A | 2026-03-24 A | QTS-17751 | 100% |  | 2026-03-10 | 2026-03-16 |  |  | QTS-PHX3 DC1 - 6 day w/ Holidays |  | Construction | Electrical | IGMP | Phase 2 | Construction | DH1200 | BAB |  |  |  |  |  |
| QTS-43791 |  | DH 1200 / Electrical Gallery 1202 // Install Conduit from UPS Pod to Pumps Lineup D-F | 6d | 2026-03-27 A | 2026-04-03 A | QTS-18671, QTS-43781 SS+2d | 100% |  | 2026-03-27 | 2026-04-02 |  |  | QTS-PHX3 DC1 - 6 day w/ Holidays |  | Construction | Electrical | IGMP | Phase 2 | Construction | DH1200 | BAB |  |  |  |  |  |
| QTS-1010640 |  | DH 1200 / Electrical Gallery 1202 // Pull Fiber from MDF to DCIM 1202 | 3d | 2026-04-15 A | 2026-05-21 A | QTS-15291 | 100% |  | 2026-05-27 | 2026-05-29 |  |  | QTS-PHX3 DC1 - 6 day w/ Holidays |  | Construction | LV | IGMP | Phase 2 | Construction | DH1200 | BAB |  |  |  |  |  |
| QTS-15291 |  | DH 1200 / Electrical Gallery 1202 // Install Basket Tray for LV | 5d | 2026-04-24 A | 2026-04-29 A | QTS-14231 | 100% |  |  |  |  |  | QTS-PHX3 DC1 - 6 day w/ Holidays |  | Construction | LV | IGMP | Phase 2 | Construction | DH1200 | BAB |  |  |  |  |  |
| QTS-16851 |  | DH 1200 / Electrical Gallery 1202 // Set House Panels | 2d | 2026-05-20 A | 2026-05-28 A | QTS-13031, QTS-15761, QTS-14971 | 100% |  | 2026-05-20 | 2026-05-21 |  |  | QTS-PHX3 DC1 - 6 day w/ Holidays |  | Construction | Electrical | IGMP | Phase 2 | Construction | DH1200 | BAB |  |  |  |  |  |
| QTS-18661 |  | DH 1200 / Electrical Gallery 1202 // Pull & Terminate from UPS Pod to Chillers R-C | 3d | 2026-05-22 A | 2026-06-08 A | QTS-13561, QTS-17751 | 100% |  | 2026-05-20 | 2026-05-22 |  |  | QTS-PHX3 DC1 - 6 day w/ Holidays |  | Construction | Electrical | IGMP | Phase 2 | Construction | DH1200 | BAB | Electrical |  |  |  |  |
| QTS-43801 |  | DH 1200 / Electrical Gallery 1202 // Pull & Terminate from UPS Pod to Chillers Lineup D-F | 3d | 2026-05-22 A | 2026-06-08 A | QTS-18661, QTS-43781 | 100% |  | 2026-06-10 | 2026-06-12 |  |  | QTS-PHX3 DC1 - 6 day w/ Holidays |  | Construction | Electrical | IGMP | Phase 2 | Construction | DH1200 | BAB | Electrical |  |  |  |  |
| QTS-43811 |  | DH 1200 / Electrical Gallery 1202 // Pull & Terminate from UPS Pod to Pumps Lineup D-F | 3d | 2026-05-22 A | 2026-06-08 A | QTS-43801 FF, QTS-18971, QTS-43791 | 100% |  | 2026-06-10 | 2026-06-12 |  |  | QTS-PHX3 DC1 - 6 day w/ Holidays |  | Construction | Electrical | IGMP | Phase 2 | Construction | DH1200 | BAB | Electrical |  |  |  |  |
| QTS-18971 |  | DH 1200 / Electrical Gallery 1202 // Pull & Terminate from UPS Pod to Pumps R-C | 3d | 2026-05-25 A | 2026-06-08 A | QTS-18661 FF, QTS-13561, QTS-18671 | 100% |  | 2026-05-20 | 2026-05-22 |  |  | QTS-PHX3 DC1 - 6 day w/ Holidays |  | Construction | Electrical | IGMP | Phase 2 | Construction | DH1200 | BAB | Electrical |  |  |  |  |
| QTS-1010660 |  | DH 1200 / Electrical Gallery 1202 // Pull BMS & EPMS Cable to DCIM 1202 | 1d | 2026-06-02 A | 2026-06-22 A | QTS-15291 | 100% |  | 2026-06-02 | 2026-06-02 |  |  | QTS-PHX3 DC1 - 6 day w/ Holidays |  | Construction | LV | IGMP | Phase 2 | Construction | DH1200 | BAB | Low Voltage |  |  |  |  |
| QTS-18301 |  | DH 1200 / Electrical Gallery 1202 // Pull LV Cables Branch Circuits | 5d | 2026-06-17 A | 2026-07-01 A | QTS-16851 | 100% |  | 2026-06-24 | 2026-06-29 |  |  | QTS-PHX3 DC1 - 6 day w/ Holidays |  | Construction | LV | IGMP | Phase 2 | Construction | DH1200 | BAB |  |  |  |  |  |
| QTS-46651 |  | DH 1200 / Electrical Gallery 1202 // Set EPMS/BMS Panels | 4d | 2026-06-18 A | 2026-07-01 A | QTS-13031, QTS-46681 FF | 100% |  | 2026-06-25 | 2026-06-29 |  |  | QTS-PHX3 DC1 - 6 day w/ Holidays | 01ADMIN | Construction | Electrical | IGMP | Phase 1 | Construction | DH1200 | BAB | Electrical | Level 1 |  |  |  |
| QTS-1012260 |  | DH 1200 / Electrical Gallery 1202 // Pull Fiber from MDF to DCIM 1202 | 3d | 2026-06-19 A | 2026-06-22 A | QTS-1012190 | 100% |  | 2026-06-24 | 2026-06-26 |  |  | QTS-PHX3 DC1 - 6 day w/ Holidays |  | Construction | LV | IGMP | Phase 2 | Construction | DH1200 | BAB | Low Voltage |  |  |  |  |
| QTS-1010650 |  | DH 1200 / Electrical Gallery 1202 // Terminate and Test Fiber from MDF to DCIM 1202 | 3d | 2026-06-26 A | 2026-06-30 A | QTS-1010640, QTS-1012260, QTS-1010660 SS | 100% |  | 2026-07-01 | 2026-07-06 |  |  | QTS-PHX3 DC1 - 6 day w/ Holidays |  | Construction | LV | IGMP | Phase 2 | Construction | DH1200 | BAB | Low Voltage |  |  |  |  |
| QTS-1010850 |  | DH 1200 / Electrical Gallery 1202 // Pull Cable from DCIM to Security Devices | 6d | 2026-07-06 A | 2026-07-20 A | QTS-1010650 | 100% |  | 2026-07-10 | 2026-07-16 |  |  | QTS-PHX3 DC1 - 6 day w/ Holidays |  | Construction | Electrical | IGMP | Phase 2 | Construction | DH1200 | BAB | Electrical |  | DONE? | E2/Securitas |  |
| QTS-16091 |  | DH 1200 / Electrical Gallery 1202 // Terminate and Test BMS & EPMS Cable to DCIM 1202 | 4d | 2026-07-06 A | 2026-07-09 A | QTS-1010660 SS, QTS-1010650, QTS-1010660 FF | 100% |  | 2026-07-28 | 2026-07-31 |  |  | QTS-PHX3 DC1 - 6 day w/ Holidays |  | Construction | LV | IGMP | Phase 2 | Construction | DH1200 | BAB | Low Voltage |  |  |  |  |
| QTS-1010910 |  | DH 1200 / Electrical Gallery 1202 // Install Provision Switches DCIM 1202 | 2d | 2026-07-10 A | 2026-07-13 A | QTS-16091 | 100% |  | 2026-08-01 | 2026-08-03 |  |  | QTS-PHX3 DC1 - 6 day w/ Holidays |  | Construction | Electrical | IGMP | Phase 2 | Construction | DH1200 | BAB | Oscar Armenta |  |  |  |  |
| QTS-1010920 |  | DH 1200 / Electrical Gallery 1202 // Load Project and Verify Communication DCIM 1202 | 2d | 2026-07-13 A | 2026-07-14 A | QTS-1010910 | 100% |  | 2026-08-04 | 2026-08-05 |  |  | QTS-PHX3 DC1 - 6 day w/ Holidays |  | Construction | Electrical | IGMP | Phase 2 | Construction | DH1200 | BAB | Oscar Armenta |  |  |  |  |
| QTS-1215 |  | DH 1200 / Gallery 1202 / Terminate Remaining Fire Alarm Cable | 2d | 2026-07-13 A | 2026-08-04 A | QTS-1570 SS, QTS-1570 FF | 100% |  | 2026-07-08 | 2026-07-09 |  |  | **GLOBAL - 6 Day Workweek w/ Basic Holidays |  |  | Electrical |  |  |  |  | BAB | Electrical |  |  | Nexus | 8/4 done |
| QTS-1310 |  | DH 1200 / Gallery 1202 / Pull and Terminate DH Panels (House Panels) | 4d | 2026-07-13 A | 2026-08-06 A | QTS-1215 SS, QTS-18301 | 100% |  | 2026-07-10 | 2026-07-14 |  |  | **GLOBAL - 6 Day Workweek w/ Basic Holidays |  |  | Electrical |  |  |  |  | BAB | Electrical |  |  | REI | 8/6 done |
| QTS-1235 |  | DH 1200 / Gallery 1202 / Pour Back Concrete at ATS C12-03 | 2d | 2026-07-17 A | 2026-07-18 A | QTS-46681 | 100% |  | 2026-07-23 | 2026-07-24 |  |  | **GLOBAL - 6 Day Workweek w/ Basic Holidays |  |  | Mechanical |  |  |  |  | BAB | Chris Waddell |  |  | Suntec |  |
| QTS-1010860 |  | DH 1200 / Electrical Gallery 1202 // Terminate and Test Cable from DCIM to Security Devices | 6d | 2026-07-21 A | 2026-07-28 A | QTS-1010850 | 100% |  | 2026-07-22 | 2026-07-28 |  |  | QTS-PHX3 DC1 - 6 day w/ Holidays |  | Construction | LV | IGMP | Phase 2 | Construction | DH1200 | BAB | Low Voltage |  | STARTED 6/15 | E2 |  |
| QTS-1010830 |  | DH 1200 / Electrical Gallery 1202 // Install Security Panel | 1d | 2026-07-26 A | 2026-07-27 A | QTS-13031 | 100% |  | 2026-07-29 | 2026-07-29 |  |  | QTS-PHX3 DC1 - 6 day w/ Holidays |  | Construction | LV | IGMP | Phase 2 | Construction | DH1200 | BAB | Low Voltage |  | DONE? | Securitas |  |
| QTS-1010880 |  | DH 1200 / Electrical Gallery 1202 // Install Security Panel Pathways | 1d | 2026-07-28 A | 2026-08-03 A | QTS-1010830 | 100% |  | 2026-07-30 | 2026-07-30 |  |  | QTS-PHX3 DC1 - 6 day w/ Holidays |  | Construction | LV | IGMP | Phase 2 | Construction | DH1200 | BAB | Low Voltage |  | DONE? | Securitas | 8/3 done |
| QTS-1320 |  | DH 1200 / Gallery 1202 / Final Paint | 2d | 2026-08-03 A | 2026-08-04 A | QTS-1010830 | 100% |  | 2026-08-13 | 2026-08-14 |  |  | **GLOBAL - 6 Day Workweek w/ Basic Holidays |  |  | Build Out |  |  |  |  | BAB | Jason Hendley |  |  | PPC |  |
| QTS-1010840 |  | DH 1200 / Electrical Gallery 1202 // Pull Cable from Security Panel to Security Devices | 6d | 2026-08-04 A | 2026-08-19 | QTS-1010880 | 83% | 1d | 2026-08-06 | 2026-08-12 | -96d | 0d | QTS-PHX3 DC1 - 6 day w/ Holidays |  | Construction | LV | IGMP | Phase 2 | Construction | DH1200 | BAB | Low Voltage |  | DONE? | E2/Securitas | started 8/4 |
| QTS-1010870 |  | DH 1200 / Electrical Gallery 1202 // Install Security Devices | 10d | 2026-08-20 | 2026-08-31 | QTS-1010860, QTS-1010840 |  |  |  |  | -96d | 0d | QTS-PHX3 DC1 - 6 day w/ Holidays |  | Construction | LV | IGMP | Phase 2 | Construction | DH1200 | BAB | Low Voltage |  |  | Securitas |  |
| QTS-5770 |  | DH 1200 / Gallery 1202 / Install Fire Extinguishers | 2d | 2026-08-21 | 2026-08-22 | QTS-1320, QTS-5950 SS |  |  |  |  | -106d | 0d | **GLOBAL - 6 Day Workweek w/ Basic Holidays |  |  | Build Out |  |  |  |  | BAB | Jake Shimmin |  |  | ISEC |  |
| QTS-1350 |  | DH 1200 / Gallery 1202 / Seal Concrete Floor | 2d | 2026-08-24 | 2026-08-25 | QTS-1235, QTS-5770 |  |  |  |  | -94d | 0d | **GLOBAL - 6 Day Workweek w/ Basic Holidays |  |  | Build Out |  |  |  |  | BAB | Ben Ribble |  |  | Bldg Solutions |  |
| QTS-1275 |  | DH 1200 / Gallery 1202 / Install Rubber Base | 2d | 2026-08-26 | 2026-08-27 | QTS-1350 |  |  |  |  | -94d | 3d | **GLOBAL - 6 Day Workweek w/ Basic Holidays |  |  | Build Out |  |  |  |  | BAB | Ben Ribble |  |  | Wholesale Flooring |  |
| QTS-1245 |  | DH 1200 / Gallery 1202 / Install Fire caulking at RPP Feeder Penetrations | 4d | 2026-08-28 | 2026-09-01 | QTS-1310, QTS-1650 |  |  |  |  | -20d | 24d | **GLOBAL - 6 Day Workweek w/ Basic Holidays |  |  | Build Out |  |  |  |  | BAB | Jason Hendley |  |  | Riteway |  |
| QTS-1360 |  | DH 1200 / Gallery 1202 / Clean | 2d | 2026-09-01 | 2026-09-02 | QTS-1275, QTS-1215, QTS-1010870 |  |  |  |  | -97d | 27d | **GLOBAL - 6 Day Workweek w/ Basic Holidays |  |  | Build Out |  |  |  |  | BAB | Jason Hendley |  |  | AGDC |  |

Notes:
- QTS-46681: allucent_notes_20251216_165335: Jason Johnston on 2025-11-19T02:25:15.062Z: undo / David Wiltberger on 2025-12-02 14:02: impacted by stop work / allucent_notes_20251209_203830: Jason Johnston on 2025-11-19T02:25:15.062Z: undo / David Wiltberger on 2025-12-02 14:02: impacted by stop work / allucent_notes_20251202_153722: Jason Johnston on 2025-11-19T02:25:15.062Z: undo / David Wiltberger on 2025-12-02 14:02: impacted by stop work / allucent_notes_20251118_192630: Jason Johnston on 2025-11-19T02:25:15.062Z: undo / allucent_notes_20251230_164549: Jason Johnston on 2025-11-19T02:25:15.062Z: undo / David Wiltberger on 2025-12-02 14:02: impacted by stop work / allucent_notes: 2025-11-19T02:25:15.062Z - User: Jason Johnston - Date Added: 2025-11-19T02:25:15.062Z - Note: undo / 2025-12-02 14:02 - User: David Wiltberger - Date Added: 2025-12-02 14:02 - Note: impacted by stop work

| ID | WBS | Activity | Duration | Start | Finish | Predecessors | Complete | Planned start | Planned finish | Calendar | Project Section | Layton Discipline | Baseline | Phase-1-1 | Project Section-1 | Location | Layton Super | Contract | Allucent CSI Group |
| --- | --- | --- | --- | --- | --- | --- | --- | --- | --- | --- | --- | --- | --- | --- | --- | --- | --- | --- | --- |
|  | 1 | **Electrical** |  | 2026-02-13 | 2026-06-25 |  |  |  |  |  |  |  |  |  |  |  |  |  |  |
|  | 7 | **DH 1200 IDF Cabinets** |  | 2026-05-24 | 2026-06-20 |  |  |  |  |  |  |  |  |  |  |  |  |  |  |
| QTS-38601 |  | DH 1200 / Electrical Gallery 1202/1201 // Install Fire Rated Plywood | 1d | 2026-05-24 A | 2026-05-24 A | QTS-13401 | 100% | 2026-06-24 | 2026-06-24 | QTS-PHX3 DC1 - 6 day w/ Holidays | Construction | Build Out | GMP | Phase 2 | Construction | DH1200 | Ed Carter | BAB |  |
| QTS-38611 |  | DH 1200 / Electrical Gallery 1202/1201 // Set IDF Cabinet | 1d | 2026-06-18 A | 2026-06-18 A | QTS-38601, QTS-13401 | 100% | 2026-06-25 | 2026-06-25 | QTS-PHX3 DC1 - 6 day w/ Holidays | Construction | Electrical | GMP | Phase 2 | Construction | DH1200 | Electrical | BAB |  |
| QTS-38621 |  | DH 1200 / Electrical Gallery 1202/1201 // Set IDF Conduit | 2d | 2026-06-20 A | 2026-06-20 A | QTS-38611 | 100% | 2026-06-25 | 2026-06-26 | QTS-PHX3 DC1 - 6 day w/ Holidays | Construction | Electrical | GMP | Phase 2 | Construction | DH1200 | Electrical | BAB |  |
|  | 1 | **A1200 Lineup** |  | 2026-02-13 | 2026-06-22 |  |  |  |  |  |  |  |  |  |  |  |  |  |  |
| QTS-14211 |  | Gallery 1202 / Lineup A1200 // Install Hangers & Supports | 3d | 2026-02-13 A | 2026-02-16 A | QTS-13401, QTS-13031 | 100% |  |  | QTS-PHX3 DC1 - 6 day w/ Holidays | Construction | Electrical | IGMP | Phase 2 | Construction | DH1200 |  | BAB | 01ADMIN |
| QTS-15761 |  | Gallery 1202 / Lineup A1200 // OFCI - L2 SET IN PLACE - Eq Type # - COD/ATS-210-A - Skid 1-3 | 2d | 2026-02-13 A | 2026-03-16 A | QTS-13031, QTS-33471 | 100% | 2026-02-13 | 2026-02-14 | QTS-PHX3 DC1 - 6 day w/ Holidays | Construction | Electrical | IGMP | Phase 2 | Construction | DH1200 |  | BAB | 01ADMIN |
| QTS-16321 |  | Gallery 1202 / Lineup A1200 // Set Reserve Busway Segment | 2d | 2026-03-02 A | 2026-03-13 A | QTS-50041, QTS-15761 SS | 100% | 2026-03-02 | 2026-03-03 | QTS-PHX3 DC1 - 6 day w/ Holidays | Construction | Electrical | IGMP | Phase 2 | Construction | DH1200 |  | BAB |  |
| QTS-45901 |  | Gallery 1202 / Lineup A1200 // OFCI - L2 SET IN PLACE - Eq Type # - COD/ATS-210-A - Skid 4-6 | 2d | 2026-03-16 A | 2026-03-18 A | QTS-15761 | 100% | 2026-03-20 | 2026-03-21 | QTS-PHX3 DC1 - 6 day w/ Holidays | Construction | Electrical | IGMP | Phase 2 | Construction | DH1200 |  | BAB |  |
| QTS-14971 |  | Gallery 1202 / Lineup A1200 // Install Raceways from LV POD to COD | 7d | 2026-04-02 A | 2026-04-07 A | QTS-2901, QTS-14211 | 100% | 2026-04-02 | 2026-04-09 | QTS-PHX3 DC1 - 6 day w/ Holidays | Construction | Electrical | IGMP | Phase 2 | Construction | DH1200 |  | BAB |  |
| QTS-16861 |  | Gallery 1202 / Lineup A1200 // Pull LV Cables from POD to ATS | 4d | 2026-06-01 A | 2026-06-04 A | QTS-45901 FF+1d, QTS-13561, QTS-14971, QTS-15761 | 100% | 2026-05-27 | 2026-05-30 | QTS-PHX3 DC1 - 6 day w/ Holidays | Construction | Electrical | IGMP | Phase 2 | Construction | DH1200 | Electrical | BAB |  |
| QTS-17771 |  | Gallery 1202 / Lineup A1200 // Pull LV Cables from Reserve Bus to ATS | 2d | 2026-06-01 A | 2026-06-04 A | QTS-15761, QTS-16321, QTS-14971 | 100% | 2026-05-27 | 2026-05-28 | QTS-PHX3 DC1 - 6 day w/ Holidays | Construction | Electrical | IGMP | Phase 2 | Construction | DH1200 | Electrical | BAB |  |
| QTS-18151 |  | Gallery 1202 / Lineup A1200 // Terminate & Torque ATS | 7d | 2026-06-10 A | 2026-06-17 A | QTS-16861, QTS-17771 | 100% | 2026-06-24 | 2026-07-01 | QTS-PHX3 DC1 - 6 day w/ Holidays | Construction | Electrical | IGMP | Phase 2 | Construction | DH1200 | Electrical | BAB |  |
| QTS-18161 |  | Gallery 1202 / Lineup A1200 // Terminate & Torque COD | 7d | 2026-06-17 A | 2026-06-22 A | QTS-18151, QTS-16861 | 100% | 2026-07-02 | 2026-07-11 | QTS-PHX3 DC1 - 6 day w/ Holidays | Construction | Electrical | IGMP | Phase 2 | Construction | DH1200 | Electrical | BAB |  |
|  | 2 | **B1200 Lineup** |  | 2026-02-13 | 2026-06-22 |  |  |  |  |  |  |  |  |  |  |  |  |  |  |
| QTS-1971 |  | Gallery 1202 / Lineup B1200 // Install Hangers & Supports | 3d | 2026-02-13 A | 2026-02-16 A | QTS-14211 SS | 100% |  |  | QTS-PHX3 DC1 - 6 day w/ Holidays | Construction | Electrical | IGMP | Phase 2 | Construction | DH1200 |  | BAB |  |
| QTS-5151 |  | Gallery 1202 / Lineup B1200 // Set Reserve Busway Segment | 2d | 2026-03-03 A | 2026-03-05 A | QTS-50041 | 100% | 2026-03-03 | 2026-03-04 | QTS-PHX3 DC1 - 6 day w/ Holidays | Construction | Electrical | IGMP | Phase 2 | Construction | DH1200 |  | BAB |  |
| QTS-4101 |  | Gallery 1202 / Lineup B1200 // OFCI - L2 SET IN PLACE - Eq Type # - COD/ATS-210-A - Skid 1-3 | 2d | 2026-03-16 A | 2026-03-18 A | QTS-45901, QTS-33511 | 100% | 2026-03-23 | 2026-03-24 | QTS-PHX3 DC1 - 6 day w/ Holidays | Construction | Electrical | IGMP | Phase 2 | Construction | DH1200 |  | BAB |  |
| QTS-45911 |  | Gallery 1202 / Lineup B1200 // OFCI - L2 SET IN PLACE - Eq Type # - COD/ATS-210-A - Skid 4-6 | 2d | 2026-03-16 A | 2026-03-18 A | QTS-4101 | 100% | 2026-03-25 | 2026-03-26 | QTS-PHX3 DC1 - 6 day w/ Holidays | Construction | Electrical | IGMP | Phase 2 | Construction | DH1200 |  | BAB |  |
| QTS-2911 |  | Gallery 1202 / Lineup B1200 // Install Raceways from LV POD to COD | 7d | 2026-04-02 A | 2026-04-07 A | QTS-14971 SS, QTS-1971 | 100% | 2026-04-02 | 2026-04-09 | QTS-PHX3 DC1 - 6 day w/ Holidays | Construction | Electrical | IGMP | Phase 2 | Construction | DH1200 |  | BAB |  |
| QTS-6521 |  | Gallery 1202 / Lineup B1200 // Pull LV Cables from POD to ATS | 4d | 2026-06-01 A | 2026-06-04 A | QTS-45911 FF+1d, QTS-13561, QTS-2911, QTS-4101 | 100% | 2026-05-27 | 2026-05-30 | QTS-PHX3 DC1 - 6 day w/ Holidays | Construction | Electrical | IGMP | Phase 2 | Construction | DH1200 | Electrical | BAB |  |
| QTS-8231 |  | Gallery 1202 / Lineup B1200 // Pull LV Cables from Reserve Bus to ATS | 2d | 2026-06-01 A | 2026-06-04 A | QTS-4101, QTS-5151, QTS-2911 | 100% | 2026-05-27 | 2026-05-28 | QTS-PHX3 DC1 - 6 day w/ Holidays | Construction | Electrical | IGMP | Phase 2 | Construction | DH1200 | Electrical | BAB |  |
| QTS-9231 |  | Gallery 1202 / Lineup B1200 // Terminate & Torque ATS | 7d | 2026-06-10 A | 2026-06-17 A | QTS-6521, QTS-8231 | 100% | 2026-06-24 | 2026-07-01 | QTS-PHX3 DC1 - 6 day w/ Holidays | Construction | Electrical | IGMP | Phase 2 | Construction | DH1200 | Electrical | BAB |  |
| QTS-9241 |  | Gallery 1202 / Lineup B1200 // Terminate & Torque COD | 7d | 2026-06-17 A | 2026-06-22 A | QTS-9231, QTS-6521 | 100% | 2026-07-02 | 2026-07-11 | QTS-PHX3 DC1 - 6 day w/ Holidays | Construction | Electrical | IGMP | Phase 2 | Construction | DH1200 | Electrical | BAB |  |

| ID | WBS | Activity | Duration | Start | Finish | Predecessors | Complete | Planned start | Planned finish | Calendar | Project Section | Layton Discipline | Baseline | Phase-1-1 | Project Section-1 | Location | Contract | Layton Super |
| --- | --- | --- | --- | --- | --- | --- | --- | --- | --- | --- | --- | --- | --- | --- | --- | --- | --- | --- |
|  | 3 | **C1200 Lineup** |  | 2026-02-13 | 2026-06-22 |  |  |  |  |  |  |  |  |  |  |  |  |  |
| QTS-1981 |  | Gallery 1202 / Lineup C1200 // Install Hangers & Supports | 3d | 2026-02-13 A | 2026-02-16 A | QTS-1971 SS | 100% |  |  | QTS-PHX3 DC1 - 6 day w/ Holidays | Construction | Electrical | IGMP | Phase 2 | Construction | DH1200 | BAB |  |
| QTS-5171 |  | Gallery 1202 / Lineup C1200 // Set Reserve Busway Segment | 2d | 2026-03-03 A | 2026-03-05 A | QTS-50041 | 100% | 2026-03-03 | 2026-03-04 | QTS-PHX3 DC1 - 6 day w/ Holidays | Construction | Electrical | IGMP | Phase 2 | Construction | DH1200 | BAB |  |
| QTS-4111 |  | Gallery 1202 / Lineup C1200 // OFCI - L2 SET IN PLACE - Eq Type # - COD/ATS-210-A - Skid 1-3 | 2d | 2026-03-16 A | 2026-03-18 A | QTS-45911, QTS-33551 | 100% | 2026-03-27 | 2026-03-28 | QTS-PHX3 DC1 - 6 day w/ Holidays | Construction | Electrical | IGMP | Phase 2 | Construction | DH1200 | BAB |  |
| QTS-45921 |  | Gallery 1202 / Lineup C1200 // OFCI - L2 SET IN PLACE - Eq Type # - COD/ATS-210-A - Skid 4-6 | 2d | 2026-03-16 A | 2026-03-18 A | QTS-4111 | 100% | 2026-03-30 | 2026-03-31 | QTS-PHX3 DC1 - 6 day w/ Holidays | Construction | Electrical | IGMP | Phase 2 | Construction | DH1200 | BAB |  |
| QTS-2921 |  | Gallery 1202 / Lineup C1200 // Install Raceways from LV POD to COD | 7d | 2026-04-02 A | 2026-04-07 A | QTS-2911, QTS-1981 | 100% | 2026-04-10 | 2026-04-17 | QTS-PHX3 DC1 - 6 day w/ Holidays | Construction | Electrical | IGMP | Phase 2 | Construction | DH1200 | BAB |  |
| QTS-8251 |  | Gallery 1202 / Lineup C1200 // Pull LV Cables from Reserve Bus to ATS | 2d | 2026-05-18 A | 2026-05-19 A | QTS-4111, QTS-5171, QTS-6531, QTS-2921 | 100% |  |  | QTS-PHX3 DC1 - 6 day w/ Holidays | Construction | LV | IGMP | Phase 2 | Construction | DH1200 | BAB | Low Voltage |
| QTS-9261 |  | Gallery 1202 / Lineup C1200 // Terminate & Torque ATS | 5d | 2026-05-20 A | 2026-05-26 A | QTS-6531, QTS-8251 | 100% | 2026-06-12 | 2026-06-17 | QTS-PHX3 DC1 - 6 day w/ Holidays | Construction | Electrical | IGMP | Phase 2 | Construction | DH1200 | BAB | Electrical |
| QTS-6531 |  | Gallery 1202 / Lineup C1200 // Pull LV Cables from POD to ATS | 4d | 2026-06-01 A | 2026-06-04 A | QTS-45921 FF+1d, QTS-13561, QTS-2921, QTS-4111 | 100% | 2026-05-27 | 2026-05-30 | QTS-PHX3 DC1 - 6 day w/ Holidays | Construction | Electrical | IGMP | Phase 2 | Construction | DH1200 | BAB | Electrical |
| QTS-9271 |  | Gallery 1202 / Lineup C1200 // Terminate & Torque COD | 7d | 2026-06-17 A | 2026-06-22 A | QTS-9261 FF+5d, QTS-6531 | 100% | 2026-06-24 | 2026-07-01 | QTS-PHX3 DC1 - 6 day w/ Holidays | Construction | Electrical | IGMP | Phase 2 | Construction | DH1200 | BAB | Electrical |
|  | 4 | **D1200 Lineup** |  | 2026-02-13 | 2026-06-22 |  |  |  |  |  |  |  |  |  |  |  |  |  |
| QTS-1991 |  | Gallery 1202 / Lineup D1200 // Install Hangers & Supports | 3d | 2026-02-13 A | 2026-02-16 A | QTS-1981 SS | 100% |  |  | QTS-PHX3 DC1 - 6 day w/ Holidays | Construction | Electrical | IGMP | Phase 2 | Construction | DH1200 | BAB |  |
| QTS-5191 |  | Gallery 1202 / Lineup D1200 // Set Reserve Busway Segment | 2d | 2026-03-04 A | 2026-03-06 A | QTS-50041 | 100% | 2026-03-04 | 2026-03-05 | QTS-PHX3 DC1 - 6 day w/ Holidays | Construction | Electrical | IGMP | Phase 2 | Construction | DH1200 | BAB |  |
| QTS-4121 |  | Gallery 1202 / Lineup D1200 // OFCI - L2 SET IN PLACE - Eq Type # - COD/ATS-210-A - Skid 1-3 | 2d | 2026-03-17 A | 2026-03-19 A | QTS-45921, QTS-33591 | 100% | 2026-04-01 | 2026-04-02 | QTS-PHX3 DC1 - 6 day w/ Holidays | Construction | Electrical | IGMP | Phase 2 | Construction | DH1200 | BAB |  |
| QTS-45931 |  | Gallery 1202 / Lineup D1200 // OFCI - L2 SET IN PLACE - Eq Type # - COD/ATS-210-A - Skid 4-6 | 2d | 2026-03-17 A | 2026-03-19 A | QTS-4121 | 100% | 2026-04-03 | 2026-04-04 | QTS-PHX3 DC1 - 6 day w/ Holidays | Construction | Electrical | IGMP | Phase 2 | Construction | DH1200 | BAB |  |
| QTS-2931 |  | Gallery 1202 / Lineup D1200 // Install Raceways from LV POD to COD | 7d | 2026-04-02 A | 2026-04-07 A | QTS-2921 SS, QTS-1991 | 100% | 2026-04-10 | 2026-04-17 | QTS-PHX3 DC1 - 6 day w/ Holidays | Construction | Electrical | IGMP | Phase 2 | Construction | DH1200 | BAB |  |
| QTS-8271 |  | Gallery 1202 / Lineup D1200 // Pull LV Cables from Reserve Bus to ATS | 2d | 2026-05-14 A | 2026-05-15 A | QTS-4121, QTS-5191, QTS-6541, QTS-2931 | 100% |  |  | QTS-PHX3 DC1 - 6 day w/ Holidays | Construction | LV | IGMP | Phase 2 | Construction | DH1200 | BAB | Low Voltage |
| QTS-9291 |  | Gallery 1202 / Lineup D1200 // Terminate & Torque ATS | 5d | 2026-05-20 A | 2026-05-26 A | QTS-6541, QTS-8271 | 100% | 2026-06-12 | 2026-06-17 | QTS-PHX3 DC1 - 6 day w/ Holidays | Construction | Electrical | IGMP | Phase 2 | Construction | DH1200 | BAB | Electrical |
| QTS-6541 |  | Gallery 1202 / Lineup D1200 // Pull LV Cables from POD to ATS | 4d | 2026-06-01 A | 2026-06-04 A | QTS-45931 FF+1d, QTS-13561, QTS-2931, QTS-4121 | 100% | 2026-05-27 | 2026-05-30 | QTS-PHX3 DC1 - 6 day w/ Holidays | Construction | Electrical | IGMP | Phase 2 | Construction | DH1200 | BAB | Electrical |
| QTS-9301 |  | Gallery 1202 / Lineup D1200 // Terminate & Torque COD | 7d | 2026-06-17 A | 2026-06-22 A | QTS-9291 FF+5d, QTS-6541 | 100% | 2026-06-24 | 2026-07-01 | QTS-PHX3 DC1 - 6 day w/ Holidays | Construction | Electrical | IGMP | Phase 2 | Construction | DH1200 | BAB | Electrical |
|  | 5 | **E1200 Lineup** |  | 2026-02-13 | 2026-06-25 |  |  |  |  |  |  |  |  |  |  |  |  |  |
| QTS-2001 |  | Gallery 1202 / Lineup E1200 // Install Hangers & Supports | 3d | 2026-02-13 A | 2026-02-16 A | QTS-1991 | 100% |  |  | QTS-PHX3 DC1 - 6 day w/ Holidays | Construction | Electrical | IGMP | Phase 2 | Construction | DH1200 | BAB |  |
| QTS-4131 |  | Gallery 1202 / Lineup E1200 // OFCI - L2 SET IN PLACE - Eq Type # - COD/ATS-210-A - Skid 1-3 | 2d | 2026-03-17 A | 2026-03-19 A | QTS-45931 FF, QTS-33631 | 100% | 2026-03-17 | 2026-03-18 | QTS-PHX3 DC1 - 6 day w/ Holidays | Construction | Electrical | IGMP | Phase 2 | Construction | DH1200 | BAB |  |
| QTS-45941 |  | Gallery 1202 / Lineup E1200 // OFCI - L2 SET IN PLACE - Eq Type # - COD/ATS-210-A - Skid 4-6 | 2d | 2026-03-18 A | 2026-03-20 A | QTS-4131 | 100% | 2026-03-17 | 2026-03-18 | QTS-PHX3 DC1 - 6 day w/ Holidays | Construction | Electrical | IGMP | Phase 2 | Construction | DH1200 | BAB |  |
| QTS-2941 |  | Gallery 1202 / Lineup E1200 // Install Raceways from LV POD to COD | 7d | 2026-04-04 A | 2026-04-07 A | QTS-2931, QTS-2001 | 100% | 2026-04-04 | 2026-04-11 | QTS-PHX3 DC1 - 6 day w/ Holidays | Construction | Electrical | IGMP | Phase 2 | Construction | DH1200 | BAB |  |
| QTS-5211 |  | Gallery 1202 / Lineup E1200 // Set Reserve Busway Segment | 2d | 2026-05-13 A | 2026-05-14 A | QTS-50041, QTS-2941, QTS-4131 | 100% | 2026-05-18 | 2026-05-19 | QTS-PHX3 DC1 - 6 day w/ Holidays | Construction | Electrical | IGMP | Phase 2 | Construction | DH1200 | BAB |  |
| QTS-8291 |  | Gallery 1202 / Lineup E1200 // Pull LV Cables from Reserve Bus to ATS | 2d | 2026-05-18 A | 2026-05-19 A | QTS-4131, QTS-5211, QTS-6551, QTS-2941 | 100% |  |  | QTS-PHX3 DC1 - 6 day w/ Holidays | Construction | LV | IGMP | Phase 2 | Construction | DH1200 | BAB | Low Voltage |
| QTS-9321 |  | Gallery 1202 / Lineup E1200 // Terminate & Torque ATS | 5d | 2026-05-20 A | 2026-05-26 A | QTS-6551, QTS-8291 | 100% | 2026-06-12 | 2026-06-17 | QTS-PHX3 DC1 - 6 day w/ Holidays | Construction | Electrical | IGMP | Phase 2 | Construction | DH1200 | BAB | Electrical |
| QTS-6551 |  | Gallery 1202 / Lineup E1200 // Pull LV Cables from POD to ATS | 4d | 2026-06-01 A | 2026-06-04 A | QTS-45941 FF+1d, QTS-13561, QTS-2941, QTS-4131 | 100% | 2026-05-27 | 2026-05-30 | QTS-PHX3 DC1 - 6 day w/ Holidays | Construction | Electrical | IGMP | Phase 2 | Construction | DH1200 | BAB | Electrical |
| QTS-9331 |  | Gallery 1202 / Lineup E1200 // Terminate & Torque COD | 7d | 2026-06-17 A | 2026-06-25 A | QTS-9321 FF, QTS-6551 | 100% | 2026-06-24 | 2026-07-01 | QTS-PHX3 DC1 - 6 day w/ Holidays | Construction | Electrical | IGMP | Phase 2 | Construction | DH1200 | BAB | Electrical |

| ID | WBS | Activity | Duration | Start | Finish | Predecessors | Complete | Planned start | Planned finish | Calendar | Project Section | Layton Discipline | Baseline | Phase-1-1 | Project Section-1 | Location | Contract | Layton Super | Allucent CSI Group | Phase-1 | Level |
| --- | --- | --- | --- | --- | --- | --- | --- | --- | --- | --- | --- | --- | --- | --- | --- | --- | --- | --- | --- | --- | --- |
|  | 6 | **F1200 Lineup** |  | 2026-02-13 | 2026-06-25 |  |  |  |  |  |  |  |  |  |  |  |  |  |  |  |  |
| QTS-2011 |  | Gallery 1202 / Lineup F1200 // Install Hangers & Supports | 3d | 2026-02-13 A | 2026-02-16 A | QTS-2001 SS | 100% |  |  | QTS-PHX3 DC1 - 6 day w/ Holidays | Construction | Electrical | IGMP | Phase 2 | Construction | DH1200 | BAB |  |  |  |  |
| QTS-4141 |  | Gallery 1202 / Lineup F1200 // OFCI - L2 SET IN PLACE - Eq Type # - COD/ATS-210-A - Skid 1-3 | 2d | 2026-03-18 A | 2026-03-20 A | QTS-45941 FF, QTS-33671 | 100% | 2026-03-17 | 2026-03-18 | QTS-PHX3 DC1 - 6 day w/ Holidays | Construction | Electrical | IGMP | Phase 2 | Construction | DH1200 | BAB |  |  |  |  |
| QTS-45951 |  | Gallery 1202 / Lineup F1200 // OFCI - L2 SET IN PLACE - Eq Type # - COD/ATS-210-A - Skid 4-6 | 2d | 2026-03-18 A | 2026-03-20 A | QTS-4141 | 100% | 2026-04-08 | 2026-04-09 | QTS-PHX3 DC1 - 6 day w/ Holidays | Construction | Electrical | IGMP | Phase 2 | Construction | DH1200 | BAB |  |  |  |  |
| QTS-2951 |  | Gallery 1202 / Lineup F1200 // Install Raceways from LV POD to COD | 7d | 2026-04-04 A | 2026-04-07 A | QTS-2941 SS, QTS-2011 | 100% | 2026-04-04 | 2026-04-11 | QTS-PHX3 DC1 - 6 day w/ Holidays | Construction | Electrical | IGMP | Phase 2 | Construction | DH1200 | BAB |  |  |  |  |
| QTS-5231 |  | Gallery 1202 / Lineup F1200 // Set Reserve Busway Segment | 2d | 2026-05-13 A | 2026-05-14 A | QTS-50041, QTS-2951, QTS-4141 | 100% | 2026-05-20 | 2026-05-21 | QTS-PHX3 DC1 - 6 day w/ Holidays | Construction | Electrical | IGMP | Phase 2 | Construction | DH1200 | BAB |  |  |  |  |
| QTS-8311 |  | Gallery 1202 / Lineup F1200 // Pull LV Cables from Reserve Bus to ATS | 2d | 2026-05-18 A | 2026-05-19 A | QTS-4141, QTS-5231, QTS-6561, QTS-2951 | 100% |  |  | QTS-PHX3 DC1 - 6 day w/ Holidays | Construction | LV | IGMP | Phase 2 | Construction | DH1200 | BAB | Low Voltage |  |  |  |
| QTS-9351 |  | Gallery 1202 / Lineup F1200 // Terminate & Torque ATS | 5d | 2026-05-20 A | 2026-05-26 A | QTS-6561, QTS-8311 | 100% | 2026-06-12 | 2026-06-17 | QTS-PHX3 DC1 - 6 day w/ Holidays | Construction | Electrical | IGMP | Phase 2 | Construction | DH1200 | BAB | Electrical |  |  |  |
| QTS-6561 |  | Gallery 1202 / Lineup F1200 // Pull LV Cables from POD to ATS | 4d | 2026-06-01 A | 2026-06-04 A | QTS-45951 FF+1d, QTS-13561, QTS-2951, QTS-4141 | 100% | 2026-05-27 | 2026-05-30 | QTS-PHX3 DC1 - 6 day w/ Holidays | Construction | Electrical | IGMP | Phase 2 | Construction | DH1200 | BAB | Electrical |  |  |  |
| QTS-9361 |  | Gallery 1202 / Lineup F1200 // Terminate & Torque COD | 6d | 2026-06-17 A | 2026-06-25 A | QTS-9351 FF, QTS-6561 | 100% | 2026-06-24 | 2026-06-30 | QTS-PHX3 DC1 - 6 day w/ Holidays | Construction | Electrical | IGMP | Phase 2 | Construction | DH1200 | BAB | Electrical |  |  |  |
|  | 9 | **R1200 Lineup** |  | 2026-02-13 | 2026-06-22 |  |  |  |  |  |  |  |  |  |  |  |  |  |  |  |  |
| QTS-1961 |  | Gallery 1202 / Lineup R1200 // Install Hangers & Supports | 3d | 2026-02-13 A | 2026-02-16 A | QTS-13401 SS+1d, QTS-13031 | 100% |  |  | QTS-PHX3 DC1 - 6 day w/ Holidays | Construction | Electrical | IGMP | Phase 2 | Construction | DH1200 | BAB |  | 01ADMIN |  |  |
| QTS-2901 |  | Gallery 1202 / Lineup R1200 // Install Raceways from LV POD to Reserve Busway | 5d | 2026-02-20 A | 2026-04-06 A | QTS-1961 | 100% | 2026-02-20 | 2026-02-25 | QTS-PHX3 DC1 - 6 day w/ Holidays | Construction | Electrical | IGMP | Phase 2 | Construction | DH1200 | BAB |  | 01ADMIN |  |  |
| QTS-4091 |  | Gallery 1202 / Lineup R1200 // Set Reserve Busway Segment | 4d | 2026-03-06 A | 2026-03-09 A | QTS-50041 | 100% | 2026-03-06 | 2026-03-10 | QTS-PHX3 DC1 - 6 day w/ Holidays | Construction | Electrical | IGMP | Phase 2 | Construction | DH1200 | BAB |  |  |  |  |
| QTS-6211 |  | Gallery 1202 / Lineup R1200 // Pull LV Cables from POD to Reserve Busway | 5d | 2026-06-01 A | 2026-06-04 A | QTS-13561, QTS-4091, QTS-2901 | 100% | 2026-05-27 | 2026-06-01 | QTS-PHX3 DC1 - 6 day w/ Holidays | Construction | Electrical | IGMP | Phase 2 | Construction | DH1200 | BAB | Electrical |  |  |  |
| QTS-7181 |  | Gallery 1202 / Lineup R1200 // Terminate Reserve Busway | 5d | 2026-06-17 A | 2026-06-22 A | QTS-6211 | 100% | 2026-06-24 | 2026-06-29 | QTS-PHX3 DC1 - 6 day w/ Holidays | Construction | Electrical | IGMP | Phase 2 | Construction | DH1200 | BAB | Electrical |  |  |  |
|  | 4 | **DH 1200 / Rooftop Mechanical** |  | 2025-08-12 | 2026-03-16 |  |  |  |  |  |  |  |  |  |  |  |  |  |  |  |  |
| QTS-1891 |  | DH 1200 / Rooftop Mechanical // OFCI - L2 SET IN PLACE - Eq Type # - Chiller #1RT40 - 7 units | 1d | 2025-08-12 A | 2025-08-12 A | QTS-1761, QTS-35531, QTS-35521, QTS-35511, QTS-35501, QTS-35491, QTS-35481, QTS-35471, QTS-21521 | 100% |  |  |  | Construction | Mechanical | IGMP | Phase 2 | Construction | DH1200 | BAB |  |  |  |  |
| QTS-1921 |  | DH 1200 / Rooftop Mechanical // Set Doghouse Curbs | 8d | 2025-09-09 A | 2025-09-16 A | QTS-22151 SS | 100% | 2025-09-25 | 2025-10-06 |  | Construction | Mechanical | IGMP | Phase 2 | Construction | DH1200 | BAB |  |  |  |  |
| QTS-1901 |  | DH 1200 / Rooftop Mechanical // Set Doghouses | 5d | 2025-09-17 A | 2025-09-23 A | QTS-19911, QTS-1921 | 100% |  |  |  | Construction | Mechanical | IGMP | Phase 2 | Construction | DH1200 | BAB |  |  |  |  |
| QTS-100880 |  | DH 1200 / Rooftop Mechanical // Install Roof Protection | 2d | 2025-11-17 A | 2025-11-18 A | QTS-22861 SS | 100% |  |  |  | Construction | Mechanical | IGMP |  |  | DH2100 | BAB |  | 01ADMIN | Phase 1 | Level 2 |
| QTS-100900 |  | DH 1200 / Rooftop Mechanical // Assemble & Install CHWS/R Piping from Mainline Piping to ACC Deck | 23d | 2025-12-10 A | 2026-01-24 A | QTS-100880 | 100% | 2025-12-10 | 2026-01-07 | QTS-PHX3 DC1 - 6 day w/ Holidays | Construction | Mechanical | IGMP |  |  | DH2100 | BAB |  | 01ADMIN | Phase 1 | Level 2 |
| QTS-100910 |  | DH 1200 / Rooftop Mechanical // Assemble & Install CHW Pump Assemblies at ACC Deck to Chillers | 28d | 2025-12-10 A | 2026-01-26 A | QTS-100900 SS | 100% | 2025-12-10 | 2026-01-13 | QTS-PHX3 DC1 - 6 day w/ Holidays | Construction | Mechanical | IGMP |  |  | DH2100 | BAB |  | 01ADMIN | Phase 1 | Level 2 |
| QTS-100980 |  | DH 1200 / Rooftop Mechanical // Set RPH Vault Housings | 5d | 2025-12-15 A | 2025-12-19 A | QTS-100960 FF+2d | 100% |  |  | QTS-PHX3 DC1 - 6 day w/ Holidays | Construction | Mechanical | IGMP |  |  | DH2100 | BAB |  | 01ADMIN | Phase 1 | Level 2 |
| QTS-100960 |  | DH 1200 / Rooftop Mechanical // Install Mainline Piping from RPH Vaults to Galleries (Risers) L2 / L1 | 10d | 2025-12-22 A | 2025-12-26 A | QTS-100910 SS+8d | 100% | 2025-12-22 | 2026-01-03 | QTS-PHX3 DC1 - 6 day w/ Holidays | Construction | Mechanical | IGMP |  |  | DH2100 | BAB |  | 01ADMIN | Phase 1 | Level 2 |
| QTS-3431 |  | DH 1200 / Rooftop Mechanical // Set Vertical Inline Centrifugal Pumps | 5d | 2026-01-07 A | 2026-01-12 A | QTS-3421, QTS-1891 | 100% |  |  | QTS-PHX3 DC1 - 6 day w/ Holidays | Construction | Mechanical | IGMP | Phase 2 | Construction | DH1200 | BAB |  | 01ADMIN |  |  |
| QTS-100920 |  | DH 1200 / Rooftop Mechanical // Install Grating, Toe Kicks, Hand Rails for TES Tanks | 5d | 2026-01-12 A | 2026-01-14 A | QTS-100880 | 100% | 2026-01-28 | 2026-02-02 | QTS-PHX3 DC1 - 6 day w/ Holidays | Construction | Mechanical | IGMP |  |  | DH2100 | BAB |  | 01ADMIN | Phase 1 | Level 2 |
| QTS-1941 |  | DH 1200 / Rooftop Mechanical // OFCI - L2 SET IN PLACE - Eq Type # - DOAS-RT1200 - 2 units | 2d | 2026-01-12 A | 2026-01-13 A | QTS-100880, QTS-22861, QTS-23431, QTS-23421, QTS-22151 | 100% |  |  | QTS-PHX3 DC1 - 6 day w/ Holidays | Construction | Mechanical | IGMP | Phase 2 | Construction | DH1200 | BAB |  | 01ADMIN |  |  |
| QTS-100940 |  | DH 1200 / Rooftop Mechanical // OFCI - ROOF SET IN PLACE - Eq Type # - TES Tanks - 7 units | 1d | 2026-01-15 A | 2026-01-15 A | QTS-100720, QTS-100920 | 100% |  |  | QTS-PHX3 DC1 - 6 day w/ Holidays | Construction | Mechanical | IGMP |  |  | DH2100 | BAB |  | 01ADMIN | Phase 1 | Level 2 |
| QTS-100950 |  | DH 1200 / Rooftop Mechanical // Finalize Detailing for TES Tank CHW Piping/ Fabrication | 7d | 2026-01-21 A | 2026-02-09 A | QTS-100940 | 100% | 2026-02-11 | 2026-02-18 | QTS-PHX3 DC1 - 6 day w/ Holidays | Construction | Mechanical | IGMP |  |  | DH2100 | BAB |  | 01ADMIN | Phase 1 | Level 2 |
| QTS-100970 |  | DH 1200 / Rooftop Mechanical // Install TES Tank CHW Piping - 7 Units | 10d | 2026-03-11 A | 2026-03-12 A | QTS-100950, QTS-1941, QTS-100900 | 100% | 2026-03-11 | 2026-03-21 | QTS-PHX3 DC1 - 6 day w/ Holidays | Construction | Mechanical | IGMP |  |  | DH2100 | BAB |  | 01ADMIN | Phase 1 | Level 2 |
| QTS-100990 |  | DH 1200 / Rooftop Mechanical // Pressure Test (Air) Industrial Loop (L1) | 1d | 2026-03-13 A | 2026-03-13 A | QTS-100980, QTS-100960 | 100% | 2026-03-11 | 2026-03-11 | QTS-PHX3 DC1 - 6 day w/ Holidays | Construction | Mechanical | IGMP |  |  | DH2100 | BAB |  | 01ADMIN | Phase 1 | Level 2 |
| QTS-101030 |  | DH 1200 / Rooftop Mechanical // Pressure Test (Air) Industrial Loop (TES Tank) | 1d | 2026-03-13 A | 2026-03-13 A | QTS-100970 | 100% |  |  | QTS-PHX3 DC1 - 6 day w/ Holidays | Construction | Mechanical | IGMP |  |  | DH2100 | BAB |  | 01ADMIN | Phase 1 | Level 2 |
| QTS-101000 |  | DH 1200 / Rooftop Mechanical // Pressure Test (Air) Industrial Loop (L2) | 1d | 2026-03-14 A | 2026-03-14 A | QTS-100990 | 100% |  |  | QTS-PHX3 DC1 - 6 day w/ Holidays | Construction | Mechanical | IGMP |  |  | DH2100 | BAB |  | 01ADMIN | Phase 1 | Level 2 |
| QTS-101010 |  | DH 1200 / Rooftop Mechanical // Pressure Test (Air) Industrial Loop (Roof) | 1d | 2026-03-16 A | 2026-03-16 A | QTS-101000 | 100% |  |  | QTS-PHX3 DC1 - 6 day w/ Holidays | Construction | Mechanical | IGMP |  |  | DH2100 | BAB |  | 01ADMIN | Phase 1 | Level 2 |

Notes:
- QTS-100880: allucent_notes_20251014_152335: David Wiltberger on 2025-08-19 09:08: changed pick order / David Wiltberger on 2025-09-02 10:09: Moving to accommodate roofing in Zone 1 / David Wiltberger on 2025-09-24 04:09: BAM not completed Potential Delay / David Wiltberger on 2025-09-30 12:09: BAM did not complete / David Wiltberger on 2025-10-14 10:10: set on recovery schedule
- QTS-100900: allucent_notes_20251014_152335: David Wiltberger on 2025-08-19 09:08: changed pick order / David Wiltberger on 2025-09-02 10:09: Moving to accommodate roofing in Zone 1 / David Wiltberger on 2025-09-24 04:09: BAM not completed Potential Delay / David Wiltberger on 2025-09-30 12:09: BAM did not complete / David Wiltberger on 2025-10-14 10:10: set on recovery schedule / allucent_notes: David Wiltberger on 2025-08-19 09:08: changed pick order
- QTS-100910: allucent_notes_20251014_152335: David Wiltberger on 2025-08-19 09:08: changed pick order / David Wiltberger on 2025-09-02 10:09: Moving to accommodate roofing in Zone 1 / David Wiltberger on 2025-09-24 04:09: BAM not completed Potential Delay / David Wiltberger on 2025-09-30 12:09: BAM did not complete / David Wiltberger on 2025-10-14 10:10: set on recovery schedule / allucent_notes: David Wiltberger on 2025-08-19 09:08: changed pick order
- QTS-100980: allucent_notes_20251014_152335: David Wiltberger on 2025-08-19 09:08: changed pick order / David Wiltberger on 2025-09-02 10:09: Moving to accommodate roofing in Zone 1 / David Wiltberger on 2025-09-24 04:09: BAM not completed Potential Delay / David Wiltberger on 2025-09-30 12:09: BAM did not complete / David Wiltberger on 2025-10-14 10:10: set on recovery schedule / allucent_notes: David Wiltberger on 2025-08-19 09:08: changed pick order
- QTS-100960: allucent_notes_20251014_152335: David Wiltberger on 2025-08-19 09:08: changed pick order / David Wiltberger on 2025-09-02 10:09: Moving to accommodate roofing in Zone 1 / David Wiltberger on 2025-09-24 04:09: BAM not completed Potential Delay / David Wiltberger on 2025-09-30 12:09: BAM did not complete / David Wiltberger on 2025-10-14 10:10: set on recovery schedule / allucent_notes: David Wiltberger on 2025-08-19 09:08: changed pick order
- QTS-3431: allucent_notes_20251216_165335: David Wiltberger on 2025-08-26 06:08: Need to set sequence. This is phase 2 equipment / allucent_notes_20251202_153722: David Wiltberger on 2025-08-26 06:08: Need to set sequence. This is phase 2 equipment / allucent_notes_20251021_145627: David Wiltberger on 2025-08-26 06:08: Need to set sequence. This is phase 2 equipment / allucent_notes_20251014_152335: David Wiltberger on 2025-08-26 06:08: Need to set sequence. This is phase 2 equipment / allucent_notes: David Wiltberger on 2025-08-26 06:08: Need to set sequence. This is phase 2 equipment / allucent_notes_20251230_164549: David Wiltberger on 2025-08-26 06:08: Need to set sequence. This is phase 2 equipment / allucent_notes: 2025-08-26 06:08 - User: David Wiltberger - Date Added: 2025-08-26 06:08 - Note: Need to set sequence. This is phase 2 equipment
- QTS-100920: allucent_notes_20251216_165335: David Wiltberger on 2025-12-02 06:48: Grating not complete / Scott Masterson on 2025-12-16 16:13: Need an update from Drelan... / allucent_notes_20251202_153722: David Wiltberger on 2025-12-02 06:48: Grating not complete / allucent_notes_20251014_152335: David Wiltberger on 2025-08-19 09:08: changed pick order / David Wiltberger on 2025-09-02 10:09: Moving to accommodate roofing in Zone 1 / David Wiltberger on 2025-09-24 04:09: BAM not completed Potential Delay / David Wiltberger on 2025-09-30 12:09: BAM did not complete / David Wiltberger on 2025-10-14 10:10: set on recovery schedule / allucent_notes: David Wiltberger on 2025-08-19 09:08: changed pick order / allucent_notes_20251230_164549: David Wiltberger on 2025-12-02 06:48: Grating not complete / Scott Masterson on 2025-12-16 16:13: Need an update from Drelan... / David Wiltberger on 2025-12-30 16:22: no update / allucent_notes: 2025-12-02 06:48 - User: David Wiltberger - Date Added: 2025-12-02 06:48 - Note: Grating not complete / 2025-12-16 16:13 - User: Scott Masterson - Date Added: 2025-12-16 16:13 - Note: Need an update from Drelan... / 2025-12-30 16:22 - User: David Wiltbe
- QTS-1941: allucent_notes_20251230_164549: David Wiltberger on 2025-12-30 16:21: no update / allucent_notes: 2025-12-30 16:21 - User: David Wiltberger - Date Added: 2025-12-30 16:21 - Note: no update
- QTS-100940: allucent_notes_20251014_152335: David Wiltberger on 2025-08-19 09:08: changed pick order / David Wiltberger on 2025-09-02 10:09: Moving to accommodate roofing in Zone 1 / David Wiltberger on 2025-09-24 04:09: BAM not completed Potential Delay / David Wiltberger on 2025-09-30 12:09: BAM did not complete / David Wiltberger on 2025-10-14 10:10: set on recovery schedule / allucent_notes: David Wiltberger on 2025-08-19 09:08: changed pick order
- QTS-100950: allucent_notes_20251014_152335: David Wiltberger on 2025-08-19 09:08: changed pick order / David Wiltberger on 2025-09-02 10:09: Moving to accommodate roofing in Zone 1 / David Wiltberger on 2025-09-24 04:09: BAM not completed Potential Delay / David Wiltberger on 2025-09-30 12:09: BAM did not complete / David Wiltberger on 2025-10-14 10:10: set on recovery schedule / allucent_notes: David Wiltberger on 2025-08-19 09:08: changed pick order
- QTS-100970: allucent_notes_20251014_152335: David Wiltberger on 2025-08-19 09:08: changed pick order / David Wiltberger on 2025-09-02 10:09: Moving to accommodate roofing in Zone 1 / David Wiltberger on 2025-09-24 04:09: BAM not completed Potential Delay / David Wiltberger on 2025-09-30 12:09: BAM did not complete / David Wiltberger on 2025-10-14 10:10: set on recovery schedule / allucent_notes: David Wiltberger on 2025-08-19 09:08: changed pick order
- QTS-100990: allucent_notes_20251014_152335: David Wiltberger on 2025-08-19 09:08: changed pick order / David Wiltberger on 2025-09-02 10:09: Moving to accommodate roofing in Zone 1 / David Wiltberger on 2025-09-24 04:09: BAM not completed Potential Delay / David Wiltberger on 2025-09-30 12:09: BAM did not complete / David Wiltberger on 2025-10-14 10:10: set on recovery schedule / allucent_notes: David Wiltberger on 2025-08-19 09:08: changed pick order
- QTS-101030: allucent_notes_20251014_152335: David Wiltberger on 2025-08-19 09:08: changed pick order / David Wiltberger on 2025-09-02 10:09: Moving to accommodate roofing in Zone 1 / David Wiltberger on 2025-09-24 04:09: BAM not completed Potential Delay / David Wiltberger on 2025-09-30 12:09: BAM did not complete / David Wiltberger on 2025-10-14 10:10: set on recovery schedule / allucent_notes: David Wiltberger on 2025-08-19 09:08: changed pick order
- QTS-101000: allucent_notes_20251014_152335: David Wiltberger on 2025-08-19 09:08: changed pick order / David Wiltberger on 2025-09-02 10:09: Moving to accommodate roofing in Zone 1 / David Wiltberger on 2025-09-24 04:09: BAM not completed Potential Delay / David Wiltberger on 2025-09-30 12:09: BAM did not complete / David Wiltberger on 2025-10-14 10:10: set on recovery schedule / allucent_notes: David Wiltberger on 2025-08-19 09:08: changed pick order
- QTS-101010: allucent_notes_20251014_152335: David Wiltberger on 2025-08-19 09:08: changed pick order / David Wiltberger on 2025-09-02 10:09: Moving to accommodate roofing in Zone 1 / David Wiltberger on 2025-09-24 04:09: BAM not completed Potential Delay / David Wiltberger on 2025-09-30 12:09: BAM did not complete / David Wiltberger on 2025-10-14 10:10: set on recovery schedule / allucent_notes: David Wiltberger on 2025-08-19 09:08: changed pick order

| ID | WBS | Activity | Duration | Start | Finish | Predecessors | Complete | Planned start | Planned finish | Calendar | Allucent CSI Group | Project Section | Phase-1 | Layton Discipline | Baseline | Location | Level | Fragnet | Owner Impact Analysis | Fragnet Responsible Party | Contract | Phase-1-1 | Project Section-1 | TFO-CONST ONLY | NICK |
| --- | --- | --- | --- | --- | --- | --- | --- | --- | --- | --- | --- | --- | --- | --- | --- | --- | --- | --- | --- | --- | --- | --- | --- | --- | --- |
|  | 1 | **Fragnet Bulletin 4 Grating** |  | 2025-10-10 | 2026-01-27 |  |  |  |  |  |  |  |  |  |  |  |  |  |  |  |  |  |  |  |  |
| QTS-1001830 |  | Fragnet / DH 1200 / Rooftop Mechanical // Bulletin 4 Received by Layton | 1d | 2025-10-10 A | 2025-10-10 A | QTS-1371 SS | 100% |  |  |  | 01ADMIN | Construction | Phase 1 | Mechanical | IGMP | DH2100 | Level 2 | Fragnet | Y | Bel-Aire Mechanical. LLC | BAB |  |  |  |  |
| QTS-1001850 |  | Fragnet / DH 1200 / Rooftop Mechanical // Updated Bulletin 4 Received by Layton | 3d | 2025-10-13 A | 2025-10-15 A | QTS-1001830 | 100% | 2025-10-10 | 2025-10-14 |  | 01ADMIN | Construction | Phase 1 | Mechanical | IGMP | DH2100 | Level 2 | Fragnet | Y | Bel-Aire Mechanical. LLC | BAB |  |  |  |  |
| QTS-1001860 |  | Fragnet / DH 1200 / Rooftop Mechanical // Layton Submitting Shop Drawings to QTS Design (DLB) | 23d | 2025-10-16 A | 2025-11-17 A | QTS-1001850 | 100% | 2025-10-10 | 2025-11-11 |  | 01ADMIN | Construction | Phase 1 | Mechanical | IGMP | DH2100 | Level 2 | Fragnet | Y | Bel-Aire Mechanical. LLC | BAB |  |  |  |  |
| QTS-1001870 |  | Fragnet / DH 1200 / Rooftop Mechanical // Layton Submitting Shop Drawings to QTS Design (Corgan) | 23d | 2025-11-18 A | 2025-12-09 A | QTS-1001860 | 100% | 2025-10-10 | 2025-11-11 |  | 01ADMIN | Construction | Phase 1 | Mechanical | IGMP | DH2100 | Level 2 | Fragnet | Y | Bel-Aire Mechanical. LLC | BAB |  |  |  |  |
| QTS-1001880 |  | Fragnet / DH 1200 / Rooftop Mechanical // QTS Design Response for Grating | 10d | 2025-12-10 A | 2026-01-27 A | QTS-1001870 | 100% | 2025-10-10 | 2025-10-23 |  | 01ADMIN | Construction | Phase 1 | Mechanical | IGMP | DH2100 | Level 2 | Fragnet | Y | Bel-Aire Mechanical. LLC | BAB |  |  |  |  |
|  | 5 | **DH 1200 / Mechanical Yard Buildout** |  | 2025-10-20 | 2026-02-27 |  |  |  |  |  |  |  |  |  |  |  |  |  |  |  |  |  |  |  |  |
| QTS-42441 |  | DH 1200 / Mechanical Yard // Excavate for MV Conduit | 5d | 2025-10-20 A | 2025-10-24 A | QTS-42391 SS, QTS-21521 | 100% |  |  |  | 01ADMIN | Construction |  | Core & Shell | IGMP | Gen Yard | Level 2 |  |  |  | BAB | Phase 1 | Construction |  |  |
| QTS-42451 |  | DH 1200 / Mechanical Yard // Install Conduit for MV Cables | 7d | 2025-10-21 A | 2025-10-29 A | QTS-42441 FF+3d | 100% |  |  |  | 01ADMIN | Construction |  | Core & Shell | IGMP | Gen Yard | Level 2 |  |  |  | BAB | Phase 1 | Construction |  |  |
| QTS-42461 |  | DH 1200 / Mechanical Yard // Slurry for MV Cable Conduit | 5d | 2025-10-24 A | 2025-10-30 A | QTS-42451 FF+1d | 100% |  |  |  | 01ADMIN | Construction |  | Core & Shell | IGMP | Gen Yard | Level 2 |  |  |  | BAB | Phase 1 | Construction |  |  |
| QTS-42471 |  | DH 1200 / Mechanical Yard // Backfill Conduit for MV Cables | 5d | 2025-10-27 A | 2025-10-31 A | QTS-42461 FF+1d | 100% |  |  |  | 01ADMIN | Construction |  | Core & Shell | IGMP | Gen Yard | Level 2 |  |  |  | BAB | Phase 1 | Construction |  |  |
| QTS-1911 |  | DH 1200 / Mechanical Yard // Prep for Pier Footings | 3d | 2025-11-03 A | 2025-11-05 A | QTS-42471, QTS-1891 | 100% |  |  |  | 01ADMIN | Construction |  | Core & Shell | IGMP | Gen Yard | Level 1 |  |  |  | BAB | Phase 2 | Construction |  |  |
| QTS-2891 |  | DH 1200 / Mechanical Yard // Form, Reinforce, & Pour 24" Diameter Piers #1 | 6d | 2025-11-06 A | 2025-11-13 A | QTS-1911 | 100% |  |  |  | 01ADMIN | Construction |  | Core & Shell | IGMP | Gen Yard | Level 1 |  |  |  | BAB | Phase 2 | Construction |  |  |
| QTS-4061 |  | DH 1200 / Mechanical Yard // Form, Reinforce, & Pour 24" Diameter Piers #2 | 5d | 2025-11-14 A | 2025-11-20 A | QTS-2891 FF+5d, QTS-2891 SS+5d | 100% |  |  |  | 01ADMIN | Construction |  | Core & Shell | IGMP | Gen Yard | Level 1 |  |  |  | BAB | Phase 2 | Construction |  |  |
| QTS-11211 |  | DH 1200 / Mechanical Yard // Form, Reinforce, & Pour Thickened Slab On Grade for Transformers | 9d | 2025-11-17 A | 2025-12-01 A | QTS-4061 SS+1d | 100% |  |  |  | 01ADMIN | Construction |  | Core & Shell | IGMP | Gen Yard | Level 1 |  |  |  | BAB | Phase 2 | Construction |  |  |
| QTS-9981 |  | DH 1200 / Mechanical Yard // Form, Reinforce, & Pour Thickened Slab On Grade for UPS Pods | 5d | 2025-12-02 A | 2025-12-08 A | QTS-11211 | 100% |  |  |  | 01ADMIN | Construction |  | Core & Shell | IGMP | Gen Yard | Level 1 |  |  |  | BAB | Phase 2 | Construction |  |  |
| QTS-12561 |  | DH 1200 / Mechanical Yard // Form, Reinforce, & Pour Thickened Slab On Grade for Generators | 10d | 2025-12-03 A | 2025-12-05 A | QTS-9981, QTS-11211 | 100% | 2025-12-09 | 2025-12-22 |  | 01ADMIN | Construction |  | Core & Shell | IGMP | Gen Yard | Level 1 |  |  |  | BAB | Phase 2 | Construction |  |  |
| QTS-6511 |  | DH 1200 / Mechanical Yard // Place Gen Yard Gravel | 5d | 2025-12-09 A | 2025-12-15 A | QTS-11211, QTS-9981, QTS-4061 | 100% |  |  |  | 01ADMIN | Construction |  | Core & Shell | IGMP | Gen Yard | Level 1 |  |  |  | BAB | Phase 2 | Construction |  |  |
|  | 2 | **Remaining Duration** |  | 2025-11-21 | 2026-02-27 |  |  |  |  |  |  |  |  |  |  |  |  |  |  |  |  |  |  |  |  |
| QTS-14521 |  | DH 1200 / Mechanical Yard // OFCI - L2 SET IN PLACE - Eq Type # - 2500KVA Transformers - 7 units | 3d | 2025-11-21 A | 2025-11-24 A | QTS-35911, QTS-35901, QTS-35891, QTS-35881, QTS-35871, QTS-35861, QTS-35851, QTS-13561 | 100% |  |  | QTS-PHX3 DC1 - 6 day w/ Holidays | 01ADMIN | Construction |  | Electrical | IGMP | Gen Yard | Level 1 |  |  |  | BAB | Phase 2 | Construction |  |  |
| QTS-41321 |  | DH 1200 / Mechanical Yard // OFCI - L2 SET IN PLACE - Eq Type # - 2500KW Generator #A-12 - 1 unit | 1d | 2025-12-10 A | 2025-12-10 A | QTS-12561, QTS-14521, QTS-40261, QTS-40291, QTS-40271 | 100% |  |  | QTS-PHX3 DC1 - 6 day w/ Holidays | 01ADMIN | Construction |  | Electrical |  | Gen Yard | Level 1 |  |  |  | BAB | Phase 2 | Construction |  |  |
| QTS-41331 |  | DH 1200 / Mechanical Yard // OFCI - L2 SET IN PLACE - Eq Type # - 2500KW Generator #B-12 - 1 unit | 1d | 2025-12-10 A | 2025-12-10 A | QTS-40131, QTS-40111, QTS-40101, QTS-41321 | 100% |  |  | QTS-PHX3 DC1 - 6 day w/ Holidays | 01ADMIN | Construction |  | Electrical |  | Gen Yard | Level 1 |  |  |  | BAB | Phase 2 | Construction |  |  |
| QTS-41341 |  | DH 1200 / Mechanical Yard // OFCI - L2 SET IN PLACE - Eq Type # - 2500KW Generator #C-12 - 1 unit | 1d | 2025-12-10 A | 2025-12-10 A | QTS-39971, QTS-39951, QTS-39941, QTS-41331 SS | 100% |  |  | QTS-PHX3 DC1 - 6 day w/ Holidays | 01ADMIN | Construction |  | Electrical |  | Gen Yard | Level 1 |  |  |  | BAB | Phase 2 | Construction |  |  |
| QTS-41351 |  | DH 1200 / Mechanical Yard // OFCI - L2 SET IN PLACE - Eq Type # - 2500KW Generator #D-12 - 1 unit | 1d | 2025-12-10 A | 2025-12-10 A | QTS-40491, QTS-40471, QTS-40461, QTS-41341 | 100% |  |  | QTS-PHX3 DC1 - 6 day w/ Holidays | 01ADMIN | Construction |  | Electrical |  | Gen Yard | Level 1 |  |  |  | BAB | Phase 2 | Construction |  |  |
| QTS-41361 |  | DH 1200 / Mechanical Yard // OFCI - L2 SET IN PLACE - Eq Type # - 2500KW Generator #E-12 - 1 unit | 1d | 2025-12-10 A | 2025-12-10 A | QTS-40691, QTS-40671, QTS-40661, QTS-41351 SS | 100% |  |  | QTS-PHX3 DC1 - 6 day w/ Holidays | 01ADMIN | Construction |  | Electrical |  | Gen Yard | Level 1 |  |  |  | BAB | Phase 2 | Construction |  |  |
| QTS-41371 |  | DH 1200 / Mechanical Yard // OFCI - L2 SET IN PLACE - Eq Type # - 2500KW Generator #F-12 - 1 unit | 1d | 2025-12-10 A | 2025-12-10 A | QTS-40891, QTS-40871, QTS-40861, QTS-41361 | 100% |  |  | QTS-PHX3 DC1 - 6 day w/ Holidays |  | Construction |  | Electrical |  | Gen Yard | Level 1 |  |  |  | BAB | Phase 2 | Construction |  |  |
| QTS-41381 |  | DH 1200 / Mechanical Yard // OFCI - L2 SET IN PLACE - Eq Type # - 2500KW Generator #R-12 - 1 unit | 1d | 2025-12-10 A | 2025-12-10 A | QTS-41091, QTS-41071, QTS-41061, QTS-41371 | 100% |  |  | QTS-PHX3 DC1 - 6 day w/ Holidays |  | Construction |  | Electrical |  | Gen Yard | Level 1 |  |  |  | BAB | Phase 2 | Construction |  |  |
| QTS-13561 |  | DH 1200 / Mechanical Yard // OFCI - L2 SET IN PLACE - Eq Type # - 3000A UPS Pods - 7 units | 5d | 2025-12-17 A | 2026-01-02 A | QTS-33881, QTS-33871 FF, QTS-33861 FF, QTS-33851 FF, QTS-33841 FF, QTS-33831 FF, QTS-33821 FF | 100% | 2025-12-17 | 2025-12-22 | QTS-PHX3 DC1 - 6 day w/ Holidays | 01ADMIN | Construction |  | Electrical | IGMP | Gen Yard | Level 1 |  |  |  | BAB | Phase 2 | Construction |  |  |
| QTS-1931 |  | DH 1200 / Mechanical Yard // Install FRP Platforms | 10d | 2026-02-03 A | 2026-02-05 A | QTS-1341 SS, QTS-13561 | 100% | 2026-02-11 | 2026-02-21 | QTS-PHX3 DC1 - 6 day w/ Holidays |  | Construction |  | Core & Shell | IGMP | Gen Yard | Level 1 |  |  |  | TFO | Phase 2 | Construction | TFO CONST | NICK |
| QTS-42481 |  | DH 1200 / Mechanical Yard // Wire Pull for MV Cables | 6d | 2026-02-09 A | 2026-02-27 A | QTS-41381 | 100% | 2026-02-09 | 2026-02-14 | QTS-PHX3 DC1 - 6 day w/ Holidays |  | Construction |  | Electrical | IGMP | Gen Yard | Level 2 |  |  |  | BAB | Phase 1 | Construction |  |  |
| QTS-49991 |  | DH 1200 / Mechanical Yard // Install Cable Bus | 10d | 2026-02-16 A | 2026-02-20 A | QTS-49711, QTS-6511 | 100% | 2026-02-16 | 2026-02-26 | QTS-PHX3 DC1 - 6 day w/ Holidays | 01ADMIN | Construction |  | Electrical | IGMP | Gen Yard | Level 2 |  |  |  | BAB | Phase 1 | Construction |  |  |

Notes:
- QTS-1001830: allucent_notes_20251216_165335: David Wiltberger on 2025-12-02 06:45: Grating install not complete for installation / allucent_notes_20251209_203830: David Wiltberger on 2025-12-02 06:45: Grating install not complete for installation / allucent_notes_20251202_153722: David Wiltberger on 2025-12-02 06:45: Grating install not complete for installation / allucent_notes_20251014_152335: David Wiltberger on 2025-08-19 09:08: changed pick order / David Wiltberger on 2025-09-02 10:09: Moving to accommodate roofing in Zone 1 / David Wiltberger on 2025-09-24 04:09: BAM not completed Potential Delay / David Wiltberger on 2025-09-30 12:09: BAM did not complete / David Wiltberger on 2025-10-14 10:10: set on recovery schedule / allucent_notes: David Wiltberger on 2025-08-19 09:08: changed pick order / Scheduler Notes: David Wiltberger on 2025-08-19 09:08: changed pick order / David Wiltberger on 2025-09-02 10:09: Moving to accommodate roofing in Zone / 1 / David Wiltberger on 2025-09-24 04:09: BAM not completed Potential Delay / David Wiltberger on 2025-09-30 12:09: BAM did not complete / David Wiltberger on 2025-10-14 10:10: set on recovery / schedule / allucent_notes: 2025-12-02 06:45 - User: David Wiltberger - Date Added: 2025-12-02 06:45 - Note: Grating install not complete for installation
- QTS-1001850: allucent_notes_20251216_165335: David Wiltberger on 2025-12-02 06:45: Grating install not complete for installation / allucent_notes_20251209_203830: David Wiltberger on 2025-12-02 06:45: Grating install not complete for installation / allucent_notes_20251202_153722: David Wiltberger on 2025-12-02 06:45: Grating install not complete for installation / allucent_notes_20251014_152335: David Wiltberger on 2025-08-19 09:08: changed pick order / David Wiltberger on 2025-09-02 10:09: Moving to accommodate roofing in Zone 1 / David Wiltberger on 2025-09-24 04:09: BAM not completed Potential Delay / David Wiltberger on 2025-09-30 12:09: BAM did not complete / David Wiltberger on 2025-10-14 10:10: set on recovery schedule / allucent_notes: David Wiltberger on 2025-08-19 09:08: changed pick order / allucent_notes: 2025-12-02 06:45 - User: David Wiltberger - Date Added: 2025-12-02 06:45 - Note: Grating install not complete for installation
- QTS-1001860: allucent_notes_20251216_165335: David Wiltberger on 2025-12-02 06:45: Grating install not complete for installation / allucent_notes_20251209_203830: David Wiltberger on 2025-12-02 06:45: Grating install not complete for installation / allucent_notes_20251202_153722: David Wiltberger on 2025-12-02 06:45: Grating install not complete for installation / allucent_notes_20251014_152335: David Wiltberger on 2025-08-19 09:08: changed pick order / David Wiltberger on 2025-09-02 10:09: Moving to accommodate roofing in Zone 1 / David Wiltberger on 2025-09-24 04:09: BAM not completed Potential Delay / David Wiltberger on 2025-09-30 12:09: BAM did not complete / David Wiltberger on 2025-10-14 10:10: set on recovery schedule / allucent_notes: David Wiltberger on 2025-08-19 09:08: changed pick order / allucent_notes: 2025-12-02 06:45 - User: David Wiltberger - Date Added: 2025-12-02 06:45 - Note: Grating install not complete for installation
- QTS-1001870: allucent_notes_20251216_165335: David Wiltberger on 2025-12-02 06:45: Grating install not complete for installation / allucent_notes_20251209_203830: David Wiltberger on 2025-12-02 06:45: Grating install not complete for installation / allucent_notes_20251202_153722: David Wiltberger on 2025-12-02 06:45: Grating install not complete for installation / allucent_notes_20251014_152335: David Wiltberger on 2025-08-19 09:08: changed pick order / David Wiltberger on 2025-09-02 10:09: Moving to accommodate roofing in Zone 1 / David Wiltberger on 2025-09-24 04:09: BAM not completed Potential Delay / David Wiltberger on 2025-09-30 12:09: BAM did not complete / David Wiltberger on 2025-10-14 10:10: set on recovery schedule / allucent_notes: David Wiltberger on 2025-08-19 09:08: changed pick order / allucent_notes: 2025-12-02 06:45 - User: David Wiltberger - Date Added: 2025-12-02 06:45 - Note: Grating install not complete for installation
- QTS-1001880: allucent_notes_20251216_165335: David Wiltberger on 2025-12-02 06:45: Grating install not complete for installation / allucent_notes_20251209_203830: David Wiltberger on 2025-12-02 06:45: Grating install not complete for installation / allucent_notes_20251202_153722: David Wiltberger on 2025-12-02 06:45: Grating install not complete for installation / allucent_notes_20251014_152335: David Wiltberger on 2025-08-19 09:08: changed pick order / David Wiltberger on 2025-09-02 10:09: Moving to accommodate roofing in Zone 1 / David Wiltberger on 2025-09-24 04:09: BAM not completed Potential Delay / David Wiltberger on 2025-09-30 12:09: BAM did not complete / David Wiltberger on 2025-10-14 10:10: set on recovery schedule / allucent_notes: David Wiltberger on 2025-08-19 09:08: changed pick order / allucent_notes: 2025-12-02 06:45 - User: David Wiltberger - Date Added: 2025-12-02 06:45 - Note: Grating install not complete for installation
- QTS-13561: allucent_notes_20251216_165335: enrique perez on 2025-12-01 10:41: we had to adjust zone 2 delivery dates to acomodate for the othe DCs / allucent_notes_20251209_203830: enrique perez on 2025-12-01 10:41: we had to adjust zone 2 delivery dates to acomodate for the othe DCs / allucent_notes_20251202_153722: enrique perez on 2025-12-01 10:41: we had to adjust zone 2 delivery dates to acomodate for the othe DCs / allucent_notes_20251230_164549: enrique perez on 2025-12-01 10:41: we had to adjust zone 2 delivery dates to acomodate for the othe DCs / David Wiltberger on 2025-12-30 16:22: no update / allucent_notes: 2025-12-01 10:41 - User: enrique perez - Date Added: 2025-12-01 10:41 - Note: we had to adjust zone 2 delivery dates to acomodate for the othe DCs / 2025-12-30 16:22 - User: David Wiltberger - Date Added: 2025-12-30 16:22 - Note: no update
- QTS-49991: allucent_notes_20251216_165335: Scott Masterson on 2025-12-16 16:16: We are not setting PODs in zone 2 till next week. the logistic of all three DCs impacted our schedule. / allucent_notes_20251230_164549: Scott Masterson on 2025-12-16 16:16: We are not setting PODs in zone 2 till next week. the logistic of all three DCs impacted our schedule. / David Wiltberger on 2025-12-30 16:22: no update / allucent_notes: 2025-12-16 16:16 - User: Scott Masterson - Date Added: 2025-12-16 16:16 - Note: We are not setting PODs in zone 2 till next week. the logistic of all three DCs impacted our schedule. / 2025-12-30 16:22 - User: David Wiltberger - Date Added: 2025-12-30 16

| ID | WBS | Activity | Duration | Start | Finish | Predecessors | Complete | Planned start | Planned finish | Total float | Free float | Calendar | Notes | Layton Discipline | TFO-CONST ONLY | Contract | NICK | Allucent CSI Group | Location | Layton Super | Trade Partner |
| --- | --- | --- | --- | --- | --- | --- | --- | --- | --- | --- | --- | --- | --- | --- | --- | --- | --- | --- | --- | --- | --- |
|  | 6 | **Data Hall 1200 TFO** |  | 2025-11-06 | 2026-09-09 |  |  |  |  |  |  |  |  |  |  |  |  |  |  |  |  |
|  | 1 | **1200 - TFO Scope Buildout (3MW) - Lineup A - B** |  | 2025-11-06 | 2026-08-29 |  |  |  |  |  |  |  |  |  |  |  |  |  |  |  |  |
| QTS - 7560 |  | TFO Scope // DH 1200 / Lineup A - B / Install HAC Support Steel | 5d | 2025-11-06 A | 2025-11-06 A | QTS - 3680, QTS - 1980 | 100% | 2025-11-07 | 2025-11-13 |  |  | **GLOBAL - 5 Day Workweek w/ Basic Holidays | Changed 7-5 Days | Build Out | TFO CONST | TFO | NICK |  |  |  |  |
| QTS - 7930 |  | TFO Scope // DH 1200 / Lineup A - B / Uncrate QCools with HACs | 1d | 2026-01-26 A | 2026-01-26 A | QTS - 1020, QTS - 7540 | 100% | 2026-01-28 | 2026-01-28 |  |  | QTS-PHX3 DC1 - 6 day w/ Holidays |  | Mechanical | TFO CONST | TFO | NICK |  |  |  |  |
| QTS - 7610 |  | TFO Scope // DH 1200 / Lineup A - B / Raise HAC, QCool & Trays | 6d | 2026-01-29 A | 2026-01-29 A | QTS - 7560, QTS - 7930 | 100% | 2026-01-29 | 2026-02-04 |  |  | QTS-PHX3 DC1 - 6 day w/ Holidays |  | Mechanical | TFO CONST | TFO | NICK |  |  |  |  |
| QTS - 7570 |  | TFO Scope // DH 1200 / Lineup A - B / Install Stainless Steel Piping Hangers | 4d | 2026-02-08 A | 2026-02-12 A | QTS - 7560 | 100% | 2026-02-09 | 2026-02-12 |  |  | QTS-PHX3 DC1 - 6 day w/ Holidays |  | Mechanical | TFO CONST | TFO | NICK | 01ADMIN | DH1200 | Jorge Maldonado |  |
| QTS - 7620 |  | TFO Scope // DH 1200 / Lineup A - B / Install OH Trapeze - Screen Wall to CODs | 3d | 2026-03-05 A | 2026-03-09 A | QTS - 7560 | 100% | 2026-03-05 | 2026-03-07 |  |  | QTS-PHX3 DC1 - 6 day w/ Holidays |  | Electrical | TFO CONST | TFO | NICK | 01ADMIN | DH1200 |  |  |
| QTS - 7980 |  | TFO Scope // DH 1200 / Lineup A - B / Install OH Trapeze - Screen Wall to RPPs | 3d | 2026-03-05 A | 2026-03-09 A | QTS - 7620 SS | 100% | 2026-03-05 | 2026-03-07 |  |  | QTS-PHX3 DC1 - 6 day w/ Holidays |  | Electrical | TFO CONST | TFO | NICK | 01ADMIN | DH1200 |  |  |
| QTS - 7640 |  | TFO Scope // DH 1200 / Lineup A - B / Pull MC Feeders - CODs to RPPs | 12d | 2026-04-22 A | 2026-05-01 A | QTS - 7980, QTS - 7620 | 100% | 2026-05-20 | 2026-06-03 |  |  | QTS-PHX3 DC1 - 6 day w/ Holidays |  | Electrical | TFO CONST | TFO | NICK |  | DH1200 |  |  |
| QTS - 25781 |  | TFO Scope // DH 1200 / Lineup A - B / Terminate Feeder at CODs | 5d | 2026-05-25 A | 2026-06-22 A | QTS - 7640 | 100% | 2026-06-03 | 2026-06-08 |  |  | QTS-PHX3 DC1 - 6 day w/ Holidays |  | Electrical | TFO CONST | TFO | NICK |  | DH1200 | Electrical |  |
| QTS - 25311 |  | TFO Scope // DH 1200 / Lineup A - B / Install Grid Hangers | 5d | 2026-06-03 A | 2026-06-08 A | QTS-1003410 | 100% |  |  |  |  | QTS-PHX3 DC1 - 6 day w/ Holidays |  | Electrical | TFO CONST | TFO | NICK |  | DH1200 | Electrical |  |
| QTS - 7600 |  | TFO Scope // DH 1200 / Lineup A - B / Set RPP # 12 Units | 5d | 2026-06-15 A | 2026-06-19 A | QTS - 7610 | 100% | 2026-07-07 | 2026-07-11 |  |  | QTS-PHX3 DC1 - 6 day w/ Holidays |  | Electrical | TFO CONST | TFO | NICK |  | DH1200 | Electrical |  |
| QTS - 7660 |  | TFO Scope // DH 1200 / Lineup A - B / Terminate Feeder at RPPs | 5d | 2026-06-20 A | 2026-06-26 A | QTS - 7640 FF+3d, QTS - 7600 | 100% | 2026-07-13 | 2026-07-17 |  |  | QTS-PHX3 DC1 - 6 day w/ Holidays |  | Electrical | TFO CONST | TFO | NICK |  | DH1200 | Electrical |  |
| QTS - 7960 |  | TFO Scope // DH 1200 / Lineup A - B / Install Power Cable Tray Racks | 4d | 2026-06-24 A | 2026-06-30 A | QTS - 7610, QTS - 7590 SS | 100% | 2026-07-09 | 2026-07-13 |  |  | QTS-PHX3 DC1 - 6 day w/ Holidays |  | LV | TFO CONST | TFO | NICK |  | DH1200 | Low Voltage |  |
| QTS - 7590 |  | TFO Scope // DH 1200 / Lineup A - B / Install LV Cable Tray Racks | 4d | 2026-06-25 A | 2026-06-30 A | QTS - 1020, QTS - 7930, QTS - 7610 | 100% | 2026-07-09 | 2026-07-13 |  |  | QTS-PHX3 DC1 - 6 day w/ Holidays |  | LV | TFO CONST | TFO | NICK |  | DH1200 | Low Voltage |  |
| QTS - 7880 |  | TFO Scope // DH 1200 / Lineup A - B / Hang Stainless Steel 6" Fan Wall - QCool | 9d | 2026-07-06 A | 2026-07-13 A | QTS - 2590, QTS - 7570, QTS - 24751, QTS - 25311 | 100% | 2026-07-31 | 2026-08-10 |  |  | QTS-PHX3 DC1 - 6 day w/ Holidays |  | Mechanical | TFO CONST | TFO | NICK | 01ADMIN | DH1200 |  |  |
| QTS - 7630 |  | TFO Scope // DH 1200 / Lineup A - B / Pull LV Wire | 2d | 2026-07-22 A | 2026-07-23 A | QTS - 7610, QTS - 7960 | 100% | 2026-07-29 | 2026-07-30 |  |  | QTS-PHX3 DC1 - 6 day w/ Holidays |  | LV | TFO CONST | TFO | NICK |  | DH1200 | Low Voltage | Prime |
| QTS - 7650 |  | TFO Scope // DH 1200 / Lineup A - B / Terminate LV | 10d | 2026-08-19 | 2026-08-29 | QTS - 7630, QTS - 7590 |  |  |  | -57d | 0d | QTS-PHX3 DC1 - 6 day w/ Holidays |  | LV | TFO CONST | TFO | NICK |  | DH1200 | Low Voltage | Prime |
| QTS - 7770 |  | TFO Scope // DH 1200 / Lineup A - B / Terminate I&C | 5d | 2026-08-22 | 2026-08-27 | QTS - 2620, QTS - 25901 |  |  |  | -69d | 0d | QTS-PHX3 DC1 - 6 day w/ Holidays |  | LV | TFO CONST | TFO | NICK |  | DH1200 | Low Voltage | Prime |
|  | 3 | **1200 - TFO Scope Buildout (3MW) - Lineup C - D** |  | 2025-11-07 | 2026-09-03 |  |  |  |  |  |  |  |  |  |  |  |  |  |  |  |  |
| QTS - 8020 |  | TFO Scope // DH 1200 / Lineup C - D / Install HAC Support Steel | 5d | 2025-11-07 A | 2025-11-07 A | QTS - 7560 | 100% | 2025-11-14 | 2025-11-20 |  |  | **GLOBAL - 5 Day Workweek w/ Basic Holidays | Changed 7-5 Days | Build Out | TFO CONST | TFO | NICK |  |  |  |  |
| QTS - 8190 |  | TFO Scope // DH 1200 / Lineup C - D / Uncrate QCools with HACs | 1d | 2026-01-27 A | 2026-01-27 A | QTS - 1020, QTS - 7930 SS+5d | 100% | 2026-02-03 | 2026-02-03 |  |  | QTS-PHX3 DC1 - 6 day w/ Holidays |  | Mechanical | TFO CONST | TFO | NICK |  |  |  |  |
| QTS - 8070 |  | TFO Scope // DH 1200 / Lineup C - D / Raise HAC, QCool & Trays | 6d | 2026-01-28 A | 2026-01-28 A | QTS - 8020, QTS - 8190 | 100% | 2026-02-03 | 2026-02-09 |  |  | QTS-PHX3 DC1 - 6 day w/ Holidays |  | Mechanical | TFO CONST | TFO | NICK |  |  |  |  |
| QTS - 8030 |  | TFO Scope // DH 1200 / Lineup C - D / Install Stainless Steel Piping Hangers | 4d | 2026-02-02 A | 2026-02-03 A | QTS - 8020 | 100% | 2026-02-02 | 2026-02-05 |  |  | QTS-PHX3 DC1 - 6 day w/ Holidays |  | Mechanical | TFO CONST | TFO | NICK | 01ADMIN |  |  |  |
| QTS - 8080 |  | TFO Scope // DH 1200 / Lineup C - D / Install OH Trapeze - Screen Wall to CODs | 3d | 2026-03-10 A | 2026-03-12 A | QTS - 7620 | 100% |  |  |  |  | QTS-PHX3 DC1 - 6 day w/ Holidays |  | Electrical | TFO CONST | TFO | NICK | 01ADMIN | DH1200 |  |  |
| QTS - 8230 |  | TFO Scope // DH 1200 / Lineup C - D / Install OH Trapeze - Screen Wall to RPPs | 3d | 2026-03-10 A | 2026-03-12 A | QTS - 8080 SS | 100% |  |  |  |  | QTS-PHX3 DC1 - 6 day w/ Holidays |  | Electrical | TFO CONST | TFO | NICK | 01ADMIN | DH1200 |  |  |
| QTS - 8100 |  | TFO Scope // DH 1200 / Lineup C - D / Pull MC Feeders - CODs to RPPs | 12d | 2026-04-23 A | 2026-05-04 A | QTS - 8230, QTS - 8080 | 100% | 2026-05-20 | 2026-06-03 |  |  | QTS-PHX3 DC1 - 6 day w/ Holidays |  | Electrical | TFO CONST | TFO | NICK |  | DH1200 |  |  |
| QTS - 25791 |  | TFO Scope // DH 1200 / Lineup C - D / Terminate Feeder at CODs | 5d | 2026-05-26 A | 2026-06-22 A | QTS - 8100 | 100% | 2026-06-03 | 2026-06-08 |  |  | QTS-PHX3 DC1 - 6 day w/ Holidays |  | Electrical | TFO CONST | TFO | NICK |  | DH1200 | Electrical |  |
| QTS - 8060 |  | TFO Scope // DH 1200 / Lineup C - D / Set RPP # 12 Units | 5d | 2026-06-15 A | 2026-06-19 A | QTS - 8070 | 100% | 2026-07-10 | 2026-07-15 |  |  | QTS-PHX3 DC1 - 6 day w/ Holidays |  | Electrical | TFO CONST | TFO | NICK |  | DH1200 | Electrical |  |
| QTS - 8120 |  | TFO Scope // DH 1200 / Lineup C - D / Terminate Feeder at RPPs | 5d | 2026-06-20 A | 2026-06-26 A | QTS - 8100 FF+3d, QTS - 8060 | 100% | 2026-07-08 | 2026-07-13 |  |  | QTS-PHX3 DC1 - 6 day w/ Holidays |  | Electrical | TFO CONST | TFO | NICK |  | DH1200 | Electrical |  |
| QTS - 8140 |  | TFO Scope // DH 1200 / Lineup C - D / Install Fire Alarm & Security | 7d | 2026-07-06 A | 2026-07-13 A | QTS - 7560, QTS - 8020 | 100% | 2026-07-23 | 2026-07-30 |  |  | QTS-PHX3 DC1 - 6 day w/ Holidays |  | Electrical | TFO CONST | TFO | NICK |  | DH1200 | Oscar Armenta |  |
| QTS - 8180 |  | TFO Scope // DH 1200 / Lineup C - D / Hang Stainless Steel 6" Fan Wall - QCool | 9d | 2026-07-06 A | 2026-07-13 A | QTS - 2590, QTS - 8030, QTS - 24751 | 100% | 2026-07-23 | 2026-08-01 |  |  | QTS-PHX3 DC1 - 6 day w/ Holidays |  | Mechanical | TFO CONST | TFO | NICK | 01ADMIN | DH1200 | Oscar Armenta |  |
| QTS - 8090 |  | TFO Scope // DH 1200 / Lineup C - D / Pull LV Wire | 2d | 2026-07-22 A | 2026-07-23 A | QTS - 8070 | 100% | 2026-07-29 | 2026-07-30 |  |  | QTS-PHX3 DC1 - 6 day w/ Holidays |  | LV | TFO CONST | TFO | NICK |  | DH1200 | Low Voltage | Prime |
| QTS - 8110 |  | TFO Scope // DH 1200 / Lineup C - D / Terminate LV | 10d | 2026-08-24 | 2026-09-03 | QTS - 8090, QTS - 7650 SS+4d |  |  |  | -57d | 0d | QTS-PHX3 DC1 - 6 day w/ Holidays |  | LV | TFO CONST | TFO | NICK |  | DH1200 | Low Voltage | Prime |
| QTS - 8150 |  | TFO Scope // DH 1200 / Lineup C - D / Terminate I&C | 5d | 2026-08-28 | 2026-09-02 | QTS - 7770, QTS - 8140, QTS - 25901 |  |  |  | -69d | 0d | QTS-PHX3 DC1 - 6 day w/ Holidays |  | LV | TFO CONST | TFO | NICK |  | DH1200 | Low Voltage | Prime |

Notes:
- QTS - 7560: Scheduler Notes: Changed 7-5 Days
- QTS - 7570: allucent_notes_20251216_165335: Jason Johnston on 2025-12-09 20:32: Need update from team / Scott Masterson on 2025-12-16 16:33: Need to break this appart due to field dimension / detailing needs. / allucent_notes_20251209_203830: Jason Johnston on 2025-12-09 20:32: Need update from team / allucent_notes_20251230_164549: Jason Johnston on 2025-12-09 20:32: Need update from team / Scott Masterson on 2025-12-16 16:33: Need to break this appart due to field dimension / detailing needs. / David Wiltberger on 2025-12-30 16:31: no update / allucent_notes: 2025-12-09 20:32 - User: Jason Johnston - Date Added: 2025-12-09 20:32 - Note: Need update from team / 2025-12-16 16:33 - User: Scott Masterson - Date Added: 2025-12-16 16:33 - Note: Need to break this appart due to field dimension / detailing needs.
- QTS - 7620: allucent_notes_20251216_165335: Jason Johnston on 2025-12-09 20:32: Need update from team / Scott Masterson on 2025-12-16 16:33: Need to break this appart due to field dimension / detailing needs. / allucent_notes_20251209_203830: Jason Johnston on 2025-12-09 20:32: Need update from team / allucent_notes_20251230_164549: Jason Johnston on 2025-12-09 20:32: Need update from team / Scott Masterson on 2025-12-16 16:33: Need to break this appart due to field dimension / detailing needs. / David Wiltberger on 2025-12-30 16:31: no updste / allucent_notes: 2025-12-09 20:32 - User: Jason Johnston - Date Added: 2025-12-09 20:32 - Note: Need update from team / 2025-12-16 16:33 - User: Scott Masterson - Date Added: 2025-12-16 16:33 - Note: Need to break this appart due to field dimension / detailing needs.
- QTS - 8020: Scheduler Notes: Changed 7-5 Days

| ID | WBS | Activity | Duration | Start | Finish | Predecessors | Complete | Planned start | Planned finish | Total float | Free float | Calendar | Notes | Layton Discipline | TFO-CONST ONLY | Contract | NICK | Location | Layton Super | Allucent CSI Group | Trade Partner |
| --- | --- | --- | --- | --- | --- | --- | --- | --- | --- | --- | --- | --- | --- | --- | --- | --- | --- | --- | --- | --- | --- |
|  | 2 | **1200 - TFO Scope Buildout (3MW) - Lineup E - F** |  | 2025-11-10 | 2026-09-09 |  |  |  |  |  |  |  |  |  |  |  |  |  |  |  |  |
| QTS - 8250 |  | TFO Scope // DH 1200 / Lineup E - F / Install HAC Support Steel | 5d | 2025-11-10 A | 2025-11-10 A | QTS - 8020 | 100% | 2025-11-10 | 2025-11-14 |  |  | **GLOBAL - 5 Day Workweek w/ Basic Holidays | Changed 7-5 Days | Build Out | TFO CONST | TFO | NICK |  |  |  |  |
| QTS - 8420 |  | TFO Scope // DH 1200 / Lineup E - F / Uncrate QCools with HACs | 1d | 2026-01-28 A | 2026-01-28 A | QTS - 1020, QTS - 8190 SS+5d | 100% |  |  |  |  | QTS-PHX3 DC1 - 6 day w/ Holidays |  | Mechanical | TFO CONST | TFO | NICK |  |  |  |  |
| QTS - 8300 |  | TFO Scope // DH 1200 / Lineup E - F / Raise HAC, QCool & Trays | 6d | 2026-01-29 A | 2026-01-29 A | QTS - 8250, QTS - 8420 | 100% | 2026-01-29 | 2026-02-04 |  |  | QTS-PHX3 DC1 - 6 day w/ Holidays |  | Mechanical | TFO CONST | TFO | NICK |  |  |  |  |
| QTS - 8310 |  | TFO Scope // DH 1200 / Lineup E - F / Install OH Trapeze - Screen Wall to CODs | 3d | 2026-03-13 A | 2026-03-16 A | QTS - 8080, QTS - 8250 | 100% |  |  |  |  | QTS-PHX3 DC1 - 6 day w/ Holidays |  | Electrical | TFO CONST | TFO | NICK | DH1200 |  |  |  |
| QTS - 8460 |  | TFO Scope // DH 1200 / Lineup E - F / Install OH Trapeze - Screen Wall to RPPs | 3d | 2026-03-13 A | 2026-03-16 A | QTS - 8310 SS | 100% |  |  |  |  | QTS-PHX3 DC1 - 6 day w/ Holidays |  | Electrical | TFO CONST | TFO | NICK | DH1200 |  |  |  |
| QTS - 8330 |  | TFO Scope // DH 1200 / Lineup E - F / Pull MC Feeders - CODs to RPPs | 12d | 2026-04-24 A | 2026-05-04 A | QTS - 8460, QTS - 8310 | 100% | 2026-05-20 | 2026-06-03 |  |  | QTS-PHX3 DC1 - 6 day w/ Holidays |  | Electrical | TFO CONST | TFO | NICK | DH1200 |  |  |  |
| QTS - 25801 |  | TFO Scope // DH 1200 / Lineup E - F / Terminate Feeder at CODs | 5d | 2026-06-17 A | 2026-06-22 A | QTS - 8330 | 100% | 2026-06-24 | 2026-06-29 |  |  | QTS-PHX3 DC1 - 6 day w/ Holidays |  | Electrical | TFO CONST | TFO | NICK | DH1200 | Electrical |  |  |
| QTS - 8260 |  | TFO Scope // DH 1200 / Lineup E - F / Install Stainless Steel Piping Hangers | 4d | 2026-07-01 A | 2026-07-02 A | QTS - 8030, QTS - 8250 | 100% | 2026-07-15 | 2026-07-18 |  |  | QTS-PHX3 DC1 - 6 day w/ Holidays |  | Mechanical | TFO CONST | TFO | NICK | DH1200 | Mechanical | 01ADMIN |  |
| QTS - 8370 |  | TFO Scope // DH 1200 / Lineup E - F / Install Fire Alarm & Security | 7d | 2026-07-06 A | 2026-07-13 A | QTS - 7560, QTS - 8020, QTS - 8250 | 100% | 2026-08-19 | 2026-08-26 |  |  | QTS-PHX3 DC1 - 6 day w/ Holidays |  | Electrical | TFO CONST | TFO | NICK | DH1200 |  |  |  |
| QTS - 8410 |  | TFO Scope // DH 1200 / Lineup E - F / Hang Stainless Steel 6" Fan Wall - QCool | 9d | 2026-07-06 A | 2026-07-13 A | QTS - 2590, QTS - 8260, QTS - 8180 SS, QTS - 8180 FF, QTS - 24751 | 100% | 2026-07-23 | 2026-08-01 |  |  | QTS-PHX3 DC1 - 6 day w/ Holidays |  | Mechanical | TFO CONST | TFO | NICK | DH1200 | Oscar Armenta |  |  |
| QTS - 8290 |  | TFO Scope // DH 1200 / Lineup E - F / Set RPP # 12 Units | 5d | 2026-07-07 A | 2026-07-10 A | QTS - 8300 | 100% | 2026-08-01 | 2026-08-06 |  |  | QTS-PHX3 DC1 - 6 day w/ Holidays |  | Electrical | TFO CONST | TFO | NICK | DH1200 | Oscar Armenta |  |  |
| QTS - 8350 |  | TFO Scope // DH 1200 / Lineup E - F / Terminate Feeder at RPPs | 5d | 2026-07-13 A | 2026-07-14 A | QTS - 8330 FF+3d, QTS - 8290 | 100% | 2026-08-07 | 2026-08-12 |  |  | QTS-PHX3 DC1 - 6 day w/ Holidays |  | Electrical | TFO CONST | TFO | NICK | DH1200 |  |  |  |
| QTS - 8320 |  | TFO Scope // DH 1200 / Lineup E - F / Pull LV Wire | 2d | 2026-07-24 A | 2026-07-25 A | QTS - 8300, QTS - 8090 | 100% | 2026-07-31 | 2026-08-01 |  |  | QTS-PHX3 DC1 - 6 day w/ Holidays |  | LV | TFO CONST | TFO | NICK | DH1200 | Low Voltage |  | Prime |
| QTS - 8340 |  | TFO Scope // DH 1200 / Lineup E - F / Terminate LV | 10d | 2026-08-28 | 2026-09-09 | QTS - 8320 FF, QTS - 8320 SS, QTS - 8110 SS+4d |  |  |  | -57d | 27d | QTS-PHX3 DC1 - 6 day w/ Holidays |  | LV | TFO CONST | TFO | NICK | DH1200 | Low Voltage |  | Prime |
| QTS - 8380 |  | TFO Scope // DH 1200 / Lineup E - F / Terminate I&C | 5d | 2026-09-03 | 2026-09-09 | QTS - 8150, QTS - 8370, QTS - 25901 |  |  |  | -69d | 15d | QTS-PHX3 DC1 - 6 day w/ Holidays |  | LV | TFO CONST | TFO | NICK | DH1200 | Low Voltage |  | Prime |
|  | 10 | **Gallery 1201 Mechanical TFO** |  | 2026-02-08 | 2026-07-14 |  |  |  |  |  |  |  |  |  |  |  |  |  |  |  |  |
|  | 9 | **TFO 1201 - CDU Mechanical Gallery** |  | 2026-02-08 | 2026-07-14 |  |  |  |  |  |  |  |  |  |  |  |  |  |  |  |  |
| QTS - 7940 |  | TFO Scope // DH 1200 - 1201 Mechanical Gallery / Install OH Technical Loop Hangers | 5d | 2026-02-08 A | 2026-05-08 A | QTS - 7570 SS | 100% | 2026-02-02 | 2026-02-06 |  |  | QTS-PHX3 DC1 - 6 day w/ Holidays |  | Mechanical | TFO CONST | TFO | NICK | DH1200 |  |  |  |
| QTS - 7690 |  | TFO Scope // DH 1200 - 1201 Mechanical Gallery / OFCI - L2 SET IN PLACE - CDU - 9 units | 3d | 2026-06-01 A | 2026-06-01 A | QTS - 26121 | 100% | 2026-06-03 | 2026-06-05 |  |  | QTS-PHX3 DC1 - 6 day w/ Holidays |  | Mechanical | TFO CONST | TFO | NICK | DH1200 | Mechanical |  |  |
| QTS - 7700 |  | TFO Scope // DH 1200 - 1201 Mechanical Gallery / Pull LV Main / IDF Cabinet to Basket Tray | 7d | 2026-06-22 A | 2026-06-26 A | QTS-16561 | 100% | 2026-07-15 | 2026-07-22 |  |  | QTS-PHX3 DC1 - 6 day w/ Holidays |  | LV | TFO CONST | TFO | NICK | DH1200 | Low Voltage |  |  |
| QTS - 7740 |  | TFO Scope // DH 1200 - 1201 Mechanical Gallery / Pull Branches From MOD-03 to CDUs | 8d | 2026-06-22 A | 2026-06-26 A | QTS - 7690 | 100% | 2026-07-15 | 2026-07-23 |  |  | QTS-PHX3 DC1 - 6 day w/ Holidays |  | Electrical | TFO CONST | TFO | NICK | DH1200 | Oscar Armenta |  |  |
| QTS - 10250 |  | TFO Scope // DH 1200 - 1201 Mechanical Gallery / Install Telecom Conduit from MMR to IDF Cabinet | 10d | 2026-06-29 A | 2026-07-06 A | QTS-16561 | 100% | 2026-07-15 | 2026-07-25 |  |  | QTS-PHX3 DC1 - 6 day w/ Holidays |  | LV | TFO CONST | TFO | NICK | DH1200 | Low Voltage |  |  |
| QTS - 7850 |  | TFO Scope // DH 1200 - 1201 Mechanical Gallery / Detail & Fabricate CDU Mechanical Connections | 10d | 2026-06-29 A | 2026-07-06 A | QTS - 7690 | 100% | 2026-07-15 | 2026-07-25 |  |  | QTS-PHX3 DC1 - 6 day w/ Holidays |  | Mechanical | TFO CONST | TFO | NICK | DH1200 | Mechanical |  |  |
| QTS - 10260 |  | TFO Scope // DH 1200 - 1201 Mechanical Gallery / Pull Telecom Wire from MMR to IDF Cabinet | 10d | 2026-07-06 A | 2026-07-10 A | QTS - 10250 | 100% | 2026-07-27 | 2026-08-06 |  |  | QTS-PHX3 DC1 - 6 day w/ Holidays |  | LV | TFO CONST | TFO | NICK | DH1200 |  |  |  |
| QTS - 7710 |  | TFO Scope // DH 1200 - 1201 Mechanical Gallery / Electrical Terminations - CDU (01-09) | 5d | 2026-07-06 A | 2026-07-10 A | QTS - 7690, QTS - 7740 | 100% | 2026-07-24 | 2026-07-29 |  |  | QTS-PHX3 DC1 - 6 day w/ Holidays |  | Electrical | TFO CONST | TFO | NICK | DH1200 | Oscar Armenta |  |  |
| QTS - 8630 |  | TFO Scope // DH 1200 - 1201 Mechanical Gallery / BMS & EPMS Terminations | 2d | 2026-07-13 A | 2026-07-14 A | QTS - 10260, QTS - 7700 | 100% | 2026-08-07 | 2026-08-08 |  |  | QTS-PHX3 DC1 - 6 day w/ Holidays |  | LV | TFO CONST | TFO | NICK | DH1200 |  |  |  |

Notes:
- QTS - 8250: Scheduler Notes: Changed 7-5 Days

| ID | WBS | Activity | Duration | Start | Finish | Predecessors | Complete | Remaining | Planned start | Planned finish | Total float | Free float | Constraint | Calendar | Layton Discipline | Location | Layton Super | TFO-CONST ONLY | Contract | NICK | Project Section | Phase-1 | Baseline | Level | Layton PM | Trade Partner | No PreUp | Notes | Fragnet | Owner Impact Analysis | Fragnet Responsible Party | D |
| --- | --- | --- | --- | --- | --- | --- | --- | --- | --- | --- | --- | --- | --- | --- | --- | --- | --- | --- | --- | --- | --- | --- | --- | --- | --- | --- | --- | --- | --- | --- | --- | --- |
|  | 11 | **Gallery 1203 Mechanical TFO** |  | 2026-06-01 | 2026-07-13 |  |  |  |  |  |  |  |  |  |  |  |  |  |  |  |  |  |  |  |  |  |  |  |  |  |  |  |
|  | 10 | **TFO 1203 - CDU Mechanical Gallery** |  | 2026-06-01 | 2026-07-13 |  |  |  |  |  |  |  |  |  |  |  |  |  |  |  |  |  |  |  |  |  |  |  |  |  |  |  |
| QTS - 8480 |  | TFO Scope // DH 1200 - 1203 Mechanical Gallery / OFCI - L2 SET IN PLACE - CDU - 9 units | 3d | 2026-06-01 A | 2026-06-01 A | QTS - 26121 | 100% |  | 2026-06-03 | 2026-06-05 |  |  |  | QTS-PHX3 DC1 - 6 day w/ Holidays | Mechanical | DH1200 | Mechanical | TFO CONST | TFO | NICK |  |  |  |  |  |  |  |  |  |  |  |  |
| QTS - 8500 |  | TFO Scope // DH 1200 - 1203 Mechanical Gallery / Terminate & Torque - CDU Connections | 5d | 2026-07-07 A | 2026-07-13 A | QTS - 8480 | 100% |  | 2026-07-15 | 2026-07-20 |  |  |  | QTS-PHX3 DC1 - 6 day w/ Holidays | Electrical | DH1200 | Oscar Armenta | TFO CONST | TFO | NICK |  |  |  |  |  |  |  |  |  |  |  |  |
|  | 21 | **DH 1200 Close Out** |  | 2026-09-04 | 2026-10-26 |  |  |  |  |  |  |  |  |  |  |  |  |  |  |  |  |  |  |  |  |  |  |  |  |  |  |  |
| QTS-29531 |  | DH 1200 / Closeout // LCC Worklist | 15d | 2026-09-04 | 2026-09-25 | QTS-13391, QTS-1901, QTS-1003490, QTS-22471, QTS-1003150, QTS-1003140, QTS-1003200, QTS-102370, QTS-13381, QTS-102430, QTS-13391 FF, QTS-13031, QTS-13041, QTS-1004390, QTS-1003440, QTS-13791, QTS-13781, QTS-1003540, QTS-1750 |  |  |  |  | -103d | 0d |  |  | Closeout |  | Jake Shimmin |  | BAB |  | Close Out | Phase 2 | IGMP | Level 1 | TTodaro | Layton |  |  |  |  |  |  |
| QTS-29671 |  | DH 1200 / Closeout // Final Clean | 5d | 2026-10-06 | 2026-10-12 | QTS-29531 FF, QTS-29531 SS, QTS - 7880, QTS - 8410, QTS - 26581, QTS-1300, QTS-1705, QTS-1470 FF, QTS-1920, QTS-1360 |  |  |  |  | -103d | 0d |  |  | Closeout |  | Jake Shimmin |  | BAB |  | Close Out | Phase 2 | IGMP | Level 1 | TTodaro | Layton |  |  |  |  |  |  |
| QTS-29911 |  | DH 1200 / Closeout // A/E Punch List | 10d | 2026-10-13 | 2026-10-26 | QTS-102430, QTS-29671 |  |  |  |  | -103d | 0d |  |  | Closeout |  |  |  | BAB |  | Close Out | Phase 2 | IGMP | Level 1 | TTodaro | Layton |  |  |  |  |  |  |
|  | 16 | **Data Hall 1200 Commissioning** |  | 2026-07-07 | 2026-10-10 |  |  |  |  |  |  |  |  |  |  |  |  |  |  |  |  |  |  |  |  |  |  |  |  |  |  |  |
| QTS-1013140 |  | DH 1200 / L2 Checklist CHWP | 1d | 2026-07-20 A | 2026-07-20 A | QTS-1007630, QTS-1007590, QTS-18971, QTS-43811 | 100% |  | 2026-07-23 | 2026-07-23 |  |  |  | **GLOBAL - 5 Day Workweek w/ Basic Holidays | Commissioning |  |  |  |  |  |  |  |  |  |  | REI/Layton | NO |  |  |  |  |  |
| QTS-1013150 |  | DH 1200 / Pre Energization Inspection CHWP | 1d | 2026-07-20 A | 2026-07-20 A | QTS-1013140 | 100% |  | 2026-07-24 | 2026-07-24 |  |  |  | **GLOBAL - 5 Day Workweek w/ Basic Holidays | Commissioning |  | Commissioning |  |  |  |  |  |  |  |  | REI/Layton |  |  |  |  |  |  |
| QTS-1013180 |  | DH 1200 / First Time Energization CHWP | 1d | 2026-07-21 A | 2026-07-21 A | QTS-1013150 | 100% |  | 2026-07-27 | 2026-07-27 |  |  |  | **GLOBAL - 5 Day Workweek w/ Basic Holidays | Commissioning |  | Commissioning |  |  |  |  |  |  |  |  | REI/Layton |  |  |  |  |  |  |
|  | 2 | **Fragnet - DH 1200 Commissioning Impacts** |  | 2026-07-24 | 2026-08-10 |  |  |  |  |  |  |  |  |  |  |  |  |  |  |  |  |  |  |  |  |  |  |  |  |  |  |  |
| QTS-1013700 |  | DH 1200 / Fragnet - QTS to Procure Lug Kits for Breakers for MOD-02's- Bad torque info on Labels | 4d | 2026-07-24 A | 2026-08-07 A | QTS-1007660, QTS-1007750 | 100% |  | 2026-07-29 | 2026-08-01 |  |  |  | **GLOBAL - 7 Day Workweek w/ Basic Holidays | Commissioning |  | Electrical |  | BAB |  |  |  |  |  |  | REI/Layton |  | Bad Torque info on labels - Need to order new Lug Kits | Fragnet | Y | Quality Technology Services |  |
| QTS-1013710 |  | DH 1200 / Fragnet - Install Lug Kits for Breakers for MOD-02's - Bad torque info on Labels | 2d | 2026-08-08 A | 2026-08-10 A | QTS-1013700 | 100% |  |  |  |  |  |  | **GLOBAL - 6 Day Workweek w/ Basic Holidays | Commissioning |  | Electrical |  | BAB |  |  |  |  |  |  | REI/Layton |  | Bad Torque info on labels - Need to order new Lug Kits | Fragnet | Y | Quality Technology Services | DH1200 |
|  | 3 | **DH 1200 Commissioning Existing Scope** |  | 2026-07-07 | 2026-10-10 |  |  |  |  |  |  |  |  |  |  |  |  |  |  |  |  |  |  |  |  |  |  |  |  |  |  |  |
| QTS-1013210 |  | DH 1200 / L2 Checklist CRAHs | 1d | 2026-07-07 A | 2026-07-07 A | QTS-46661, QTS-46641, QTS-15481, QTS-16331, QTS-1007660, QTS-1007750, QTS-46671 | 100% |  | 2026-08-05 | 2026-08-05 |  |  |  | **GLOBAL - 5 Day Workweek w/ Basic Holidays | Commissioning |  | Commissioning |  | BAB |  |  |  |  |  |  | REI/Layton | NO |  |  |  |  | DH1200 |
| QTS-1013280 |  | DH 1200 / L2 Checklist BSWY | 1d | 2026-07-25 A | 2026-07-25 A | QTS-7181, QTS-1013140 | 100% |  | 2026-07-23 | 2026-07-23 |  |  |  | **GLOBAL - 5 Day Workweek w/ Basic Holidays | Commissioning |  | Commissioning |  | BAB |  |  |  |  |  |  | REI/Layton | NO |  |  |  |  |  |
| QTS-1013320 |  | DH 1200 / Pre Energization Inspection BSWY | 1d | 2026-07-25 A | 2026-07-25 A | QTS-1013280 | 100% |  | 2026-07-23 | 2026-07-23 |  |  |  | **GLOBAL - 5 Day Workweek w/ Basic Holidays | Commissioning |  | Commissioning |  | BAB |  |  |  |  |  |  | REI/Layton |  |  |  |  |  |  |
| QTS-1013300 |  | DH 1200 / L2 Checklist ATS/COD (1, 3, 5) | 1d | 2026-07-28 A | 2026-07-28 A | QTS-1013280, QTS-1013280 FF, QTS-18151, QTS-9231, QTS-9261, QTS-9291, QTS-9321, QTS-9351, QTS - 25781, QTS-18161, QTS-9241, QTS - 25791, QTS-9271, QTS-9301, QTS - 25801, QTS-9331, QTS-9361 | 100% |  | 2026-07-29 | 2026-07-29 |  |  |  | **GLOBAL - 5 Day Workweek w/ Basic Holidays | Commissioning |  | Commissioning |  | BAB |  |  |  |  |  |  | REI/Layton | NO |  |  |  |  |  |
| QTS-1013310 |  | DH 1200 / L2 Checklist ATS/COD (2, 4, 6) | 1d | 2026-07-28 A | 2026-07-28 A | QTS-1013280, QTS-1013280 FF, QTS-18151, QTS-9231, QTS-9261, QTS-9291, QTS-9321, QTS-9351, QTS - 25781, QTS-18161, QTS-9241, QTS - 25791, QTS-9271, QTS-9301, QTS - 25801, QTS-9331, QTS-9361 | 100% |  | 2026-07-29 | 2026-07-29 |  |  |  | **GLOBAL - 5 Day Workweek w/ Basic Holidays | Commissioning |  | Commissioning |  | BAB |  |  |  |  |  |  | REI/Layton | NO |  |  |  |  |  |
| QTS-1013330 |  | DH 1200 / Pre Energization Inspection ATS/COD (1, 3, 5) | 1d | 2026-07-28 A | 2026-07-28 A | QTS-1013300 | 100% |  | 2026-07-30 | 2026-07-30 |  |  |  | **GLOBAL - 5 Day Workweek w/ Basic Holidays | Commissioning |  | Commissioning |  | BAB |  |  |  |  |  |  | REI/Layton |  |  |  |  |  |  |
| QTS-1013340 |  | DH 1200 / Pre Energization Inspection ATS/COD (2, 4, 6) | 1d | 2026-07-28 A | 2026-07-28 A | QTS-1013310 | 100% |  | 2026-07-30 | 2026-07-30 |  |  |  | **GLOBAL - 5 Day Workweek w/ Basic Holidays | Commissioning |  | Commissioning |  | BAB |  |  |  |  |  |  | REI/Layton |  |  |  |  |  |  |
| QTS-1014160 |  | DH 1200 / GEN Fire Marshall Inspection | 1d | 2026-07-30 A | 2026-07-30 A | QTS-1013340 | 100% |  |  |  |  |  |  | **GLOBAL - 5 Day Workweek w/ Basic Holidays | Commissioning |  | Commissioning |  | BAB |  |  |  |  |  |  | REI/Layton |  |  |  |  |  |  |
| QTS-1013250 |  | DH 1200 / L2 Checklist CHLR | 1d | 2026-08-01 A | 2026-08-01 A | QTS-1007600, QTS-1007630, QTS-1007590, QTS-18661, QTS-43801 | 100% |  | 2026-07-31 | 2026-07-31 |  |  |  | **GLOBAL - 5 Day Workweek w/ Basic Holidays | Commissioning |  | Commissioning |  | BAB |  |  |  |  |  |  | REI/Layton | NO |  |  |  |  | DH1200 |
| QTS-1013270 |  | DH 1200 / Pre Energization Inspection CHLR | 1d | 2026-08-01 A | 2026-08-01 A | QTS-1013250 | 100% |  | 2026-08-03 | 2026-08-03 |  |  |  | **GLOBAL - 5 Day Workweek w/ Basic Holidays | Commissioning |  | Commissioning |  | BAB |  |  |  |  |  |  | REI/Layton |  |  |  |  |  | DH1200 |
| QTS-1013290 |  | DH 1200 / First Time Energization CHLR | 1d | 2026-08-04 A | 2026-08-04 A | QTS-1013270, DC1-SWD-L3-CX-2510, DC1-SWD-L3-CX-2450, DC1-SWD-L3-CX-2420, DC1-SWD-L3-CX-2540, DC1-SWD-L3-CX-2570, DC1-SWD-L3-CX-2600 | 100% |  |  |  |  |  |  | **GLOBAL - 5 Day Workweek w/ Basic Holidays | Commissioning |  | Electrical |  | BAB |  |  |  |  |  |  | REI/Layton |  |  |  |  |  | DH1200 |
| QTS-1013470 |  | DH 1200 / L3 Contorls Point to Point | 10d | 2026-08-04 A | 2026-08-24 | QTS-1013180, QTS-1013290 | 60% | 4d | 2026-08-14 | 2026-08-27 | -99d | 4d |  | **GLOBAL - 5 Day Workweek w/ Basic Holidays | Commissioning |  | Mechanical |  | BAB |  |  |  |  |  |  | Prime |  |  |  |  |  | DH1200 |
| QTS-1014170 |  | DH 1200 / GEN Fueling | 3d | 2026-08-04 A | 2026-08-06 A | QTS-1014160 | 100% |  | 2026-07-30 | 2026-08-03 |  |  |  | **GLOBAL - 5 Day Workweek w/ Basic Holidays | Commissioning |  | Commissioning |  | BAB |  |  |  |  |  |  | REI/Layton |  |  |  |  |  |  |
| QTS-1013350 |  | DH 1200 / First Time Energization BSWY | 1d | 2026-08-05 A | 2026-08-05 A | QTS-1013320, DC1-SWD-L3-CX-2570 | 100% |  |  |  |  |  |  | **GLOBAL - 5 Day Workweek w/ Basic Holidays | Commissioning |  | Electrical |  | BAB |  |  |  |  |  |  | REI/Layton |  |  |  |  |  | DH1200 |
| QTS-1013360 |  | DH 1200 / First Time Energization ATS/COD (1, 3, 5) | 1d | 2026-08-05 A | 2026-08-05 A | QTS-1013330, DC1-SWD-L3-CX-2510, DC1-SWD-L3-CX-2480, DC1-SWD-L3-CX-2450, DC1-SWD-L3-CX-2420, DC1-SWD-L3-CX-2540 | 100% |  |  |  |  |  |  | **GLOBAL - 5 Day Workweek w/ Basic Holidays | Commissioning |  | Electrical |  | BAB |  |  |  |  |  |  | REI/Layton |  |  |  |  |  | DH1200 |
| QTS-1013370 |  | DH 1200 / First Time Energization ATS/COD (2, 4, 6) | 1d | 2026-08-05 A | 2026-08-05 A | QTS-1013340, DC1-SWD-L3-CX-2510, DC1-SWD-L3-CX-2480, DC1-SWD-L3-CX-2450, DC1-SWD-L3-CX-2420, DC1-SWD-L3-CX-2540, DC1-SWD-L3-CX-2570 | 100% |  |  |  |  |  |  | **GLOBAL - 5 Day Workweek w/ Basic Holidays | Commissioning |  | Electrical |  | BAB |  |  |  |  |  |  | REI/Layton |  |  |  |  |  | DH1200 |
| QTS-1013160 |  | DH 1200 / L2 Checklist MOD-02 | 1d | 2026-08-10 A | 2026-08-10 A | QTS-43771 FF, QTS-1013710, QTS - 26611 | 100% |  | 2026-08-12 | 2026-08-12 |  |  |  | **GLOBAL - 5 Day Workweek w/ Basic Holidays | Commissioning |  | Commissioning |  | BAB |  |  |  |  |  |  | REI/Layton | NO | Bad Torque info on labels - Need to order new Lug Kits |  | Y |  | DH1200 |
| QTS-1013170 |  | DH 1200 / L2 Checklist MOD-03 | 1d | 2026-08-11 A | 2026-08-11 A | QTS-43771 | 100% |  | 2026-08-13 | 2026-08-13 |  |  |  | **GLOBAL - 5 Day Workweek w/ Basic Holidays | Commissioning |  | Commissioning |  | BAB |  |  |  |  |  |  | REI/Layton | NO |  |  |  |  | DH1200 |
| QTS-1013190 |  | DH 1200 / Pre Energization Inspection MOD-02 | 1d | 2026-08-11 A | 2026-08-11 A | QTS-1013160 | 100% |  | 2026-08-13 | 2026-08-13 |  |  |  | **GLOBAL - 5 Day Workweek w/ Basic Holidays | Commissioning |  | Commissioning |  | BAB |  |  |  |  |  |  | REI/Layton |  |  |  |  |  | DH1200 |
| QTS-1013200 |  | DH 1200 / Pre Energization Inspection MOD-03 | 1d | 2026-08-12 A | 2026-08-12 A | QTS-1013170 | 100% |  |  |  |  |  |  | **GLOBAL - 5 Day Workweek w/ Basic Holidays | Commissioning |  | Commissioning |  | BAB |  |  |  |  |  |  | REI/Layton | NO |  |  |  |  | DH1200 |
| QTS-1013220 |  | DH 1200 / First Time Energization MOD-02 | 1d | 2026-08-12 A | 2026-08-12 A | QTS-1013190, DC1-SWD-L3-CX-2510, DC1-SWD-L3-CX-2480, DC1-SWD-L3-CX-2540, DC1-SWD-L3-CX-2570, DC1-SWD-L3-CX-2600 | 100% |  |  |  |  |  |  | **GLOBAL - 5 Day Workweek w/ Basic Holidays | Commissioning |  | Electrical |  | BAB |  |  |  |  |  |  | REI/Layton | NO |  |  |  |  | DH1200 |
| QTS-1013230 |  | DH 1200 / First Time Energization MOD-03 | 1d | 2026-08-12 A | 2026-08-12 A | QTS-1013200, DC1-UPSM-L3-CX-2420, DC1-UPSM-L3-CX-2450, DC1-UPSM-L3-CX-2480, DC1-UPSM-L3-CX-2510, DC1-UPSM-L3-CX-2540, DC1-UPSM-L3-CX-2570, DC1-UPSM-L3-CX-2600 | 100% |  | 2026-08-13 | 2026-08-13 |  |  |  | **GLOBAL - 5 Day Workweek w/ Basic Holidays | Commissioning |  | Electrical |  | BAB |  |  |  |  |  |  | REI/Layton | NO |  |  |  |  | DH1200 |
| QTS-1012600 |  | DH 1200 / L2 Checklist CDU | 4d | 2026-08-19 | 2026-08-22 | QTS - 8500, QTS-1013170, QTS - 7710, QTS - 7850, QTS-0660 |  |  |  |  | -67d | 0d |  | **GLOBAL - 6 Day Workweek w/ Basic Holidays | Commissioning |  | Commissioning |  | BAB |  |  |  |  |  |  | REI/Layton | NO |  |  |  |  | DH1200 |
| QTS-1013240 |  | DH 1200 / Pre Energization Inspection CRAHs | 2d | 2026-08-19 | 2026-08-20 | QTS-1013210, QTS-1013700, QTS-1013710, QTS-0660 |  |  |  |  | -103d | 0d |  | **GLOBAL - 5 Day Workweek w/ Basic Holidays | Commissioning |  | Commissioning |  | BAB |  |  |  |  |  |  | REI/Layton | NO |  |  |  |  | DH1200 |
| QTS-1013380 |  | DH 1200 / L2 Checklist RPP | 1d | 2026-08-19 | 2026-08-19 | QTS-1013300, QTS-1013310, QTS - 7640, QTS - 25781, QTS - 7660, QTS - 8100, QTS - 25791, QTS - 8120, QTS - 8330, QTS - 25801, QTS - 8350, QTS-0660 |  |  |  |  | -92d | 0d |  | **GLOBAL - 5 Day Workweek w/ Basic Holidays | Commissioning |  | Commissioning |  | BAB |  |  |  |  |  |  | REI/Layton | NO |  |  |  |  | DH1200 |
| QTS-1013540 |  | DH 1200 / Startup CHLR | 3d | 2026-08-19 | 2026-08-21 | QTS-1013290, QTS-0660 |  |  |  |  | -98d | 4d | start on or after 2026-08-12 | **GLOBAL - 5 Day Workweek w/ Basic Holidays | Commissioning |  | Mechanical |  | BAB |  |  |  |  |  |  | QTS Vendor |  |  |  |  |  | DH1200 |
| QTS-1014180 |  | DH 1200 / GEN Burns | 4d | 2026-08-19 | 2026-08-24 | QTS-1014170, QTS-0660 |  |  |  |  | -90d | 8d |  | **GLOBAL - 5 Day Workweek w/ Basic Holidays | Commissioning |  | Mechanical |  | BAB |  |  |  |  |  |  | REI/Layton |  |  |  |  |  |  |
| QTS-1013390 |  | DH 1200 / Pre Energization Inspection RPP | 1d | 2026-08-20 | 2026-08-20 | QTS-1013380, QTS-1013240 SS, QTS-0660 |  |  |  |  | -92d | 0d |  | **GLOBAL - 5 Day Workweek w/ Basic Holidays | Commissioning |  | Commissioning |  | BAB |  |  |  |  |  |  | REI/Layton | NO |  |  |  |  | DH1200 |
| QTS-1013260 |  | DH 1200 / First Time Energization CRAHs | 1d | 2026-08-21 | 2026-08-21 | QTS-1013240, QTS-1013220 |  |  |  |  | -103d | 0d |  | **GLOBAL - 5 Day Workweek w/ Basic Holidays | Commissioning |  | Commissioning |  | BAB |  |  |  |  |  |  | REI/Layton | NO |  |  |  |  | DH1200 |
| QTS-1013400 |  | DH 1200 / First Time Energization RPP | 1d | 2026-08-21 | 2026-08-21 | QTS-1013390, QTS-0660 |  |  |  |  | -92d | 0d |  | **GLOBAL - 5 Day Workweek w/ Basic Holidays | Commissioning |  | Electrical |  | BAB |  |  |  |  |  |  | REI/Layton |  |  |  |  |  | DH1200 |
| QTS-1012610 |  | DH 1200 / Pre Energization Inspection CDU | 1d | 2026-08-24 | 2026-08-24 | QTS-1012600, QTS-0660 |  |  |  |  | -67d | 0d |  | **GLOBAL - 6 Day Workweek w/ Basic Holidays | Commissioning |  | Commissioning |  | BAB |  |  |  |  |  |  | REI/Layton | NO |  |  |  |  | DH1200 |
| QTS-1013550 |  | DH 1200 / Startup CRAHs | 5d | 2026-08-24 | 2026-08-28 | QTS-1013260, QTS-17121, QTS-1013470 FF |  |  |  |  | -103d | 0d |  | **GLOBAL - 5 Day Workweek w/ Basic Holidays | Commissioning |  | Mechanical |  | BAB |  |  |  |  |  |  | QTS Vendor |  |  |  |  |  | DH1200 |
| QTS-1012620 |  | DH 1200 / First Time Energization CDU | 5d | 2026-08-25 | 2026-08-29 | QTS-1012610, QTS-0660 |  |  |  |  | -67d | 0d |  | **GLOBAL - 6 Day Workweek w/ Basic Holidays | Commissioning |  | Commissioning |  | BAB |  |  |  |  |  |  | REI/Layton | NO |  |  |  |  | DH1200 |
| QTS-1740 |  | DH 1200 / Water Test and Balance | 5d | 2026-08-25 | 2026-08-29 | QTS-1620, QTS-1013470 SS+5d, QTS-1013540 SS, QTS-0660 |  |  |  |  | -114d | 4d |  | **GLOBAL - 6 Day Workweek w/ Basic Holidays | Commissioning |  | Mechanical |  | BAB |  |  |  |  |  |  | Able |  |  |  |  |  | DH1200 |
| QTS-1014350 |  | DH 1200 / L2 Checklist Humidifier | 1d | 2026-08-28 | 2026-08-28 | QTS-1013550 SS, QTS-1013550 FF |  |  |  |  | -114d | 1d |  | **GLOBAL - 6 Day Workweek w/ Basic Holidays | Commissioning |  |  |  | BAB |  |  |  |  |  |  | Able | NO |  |  |  |  | DH1200 |
| QTS-1014360 |  | DH 1200 / Pre Energization Humidifier | 1d | 2026-08-29 | 2026-08-29 | QTS-1014350 SS, QTS-1750 SS, QTS-1014350 FF |  |  |  |  | -115d | 0d |  | **GLOBAL - 6 Day Workweek w/ Basic Holidays | Commissioning |  |  |  | BAB |  |  |  |  |  |  | Able | NO |  |  |  |  | DH1200 |
| QTS-1750 |  | DH 1200 / Air Test and Balance | 5d | 2026-08-29 | 2026-09-03 | QTS-1620, QTS-1630, QTS-1013470, QTS-1013290, QTS-1013260, QTS-2840, QTS-1013540, QTS-1013550 |  |  |  |  | -124d | 0d |  | **GLOBAL - 6 Day Workweek w/ Basic Holidays | Commissioning |  | Mechanical |  | BAB |  |  |  |  |  |  | Able |  |  |  |  |  | DH1200 |
| QTS-1013560 |  | TFO Scope / DH 1200 / Startup CDU | 5d | 2026-08-31 | 2026-09-04 | QTS-1012620 |  |  |  |  | -67d | 1d |  | **GLOBAL - 6 Day Workweek w/ Basic Holidays | Commissioning |  | Electrical | TFO CONST | TFO |  |  |  |  |  |  | QTS Vendor |  |  |  |  |  | DH1200 |
| QTS-1014370 |  | DH 1200 / Startup Humidifier | 1d | 2026-08-31 | 2026-08-31 | QTS-1014360 |  |  |  |  | -115d | 0d |  | **GLOBAL - 6 Day Workweek w/ Basic Holidays | Commissioning |  | Mechanical |  | BAB |  |  |  |  |  |  | Able |  |  |  |  |  | DH1200 |
| QTS-1760 |  | DH 1200 / L4 Electrical | 18d | 2026-09-04 | 2026-09-25 | QTS-1750, QTS-1740 |  |  |  |  | -118d | 0d |  | **GLOBAL - 6 Day Workweek w/ Basic Holidays | Commissioning |  | Electrical |  | BAB |  |  |  |  |  |  | ERS |  |  |  |  |  | DH1200 |
| QTS-1770 |  | DH 1200 / L4 Mechanical | 18d | 2026-09-04 | 2026-09-25 | QTS-1725, QTS-1740, QTS-1750, QTS-17161, QTS-1014180, QTS-1014370 |  |  |  |  | -118d | 0d |  | **GLOBAL - 6 Day Workweek w/ Basic Holidays | Commissioning |  | Mechanical |  | BAB |  |  |  |  |  |  | ERS |  |  |  |  |  | DH1200 |
| QTS-1780 |  | DH 1200 / Air Cooled RVT/ IST | 2d | 2026-09-26 | 2026-09-27 | QTS-1770, QTS-1760, QTS - 7660, QTS - 8120, QTS - 8350 |  |  |  |  | -138d | 0d |  | **GLOBAL - 7 Day Workweek w/ Basic Holidays | Commissioning |  | Mechanical |  | BAB |  |  |  |  |  |  | ERS |  |  |  |  |  | DH1200 |
| QTS-1790 |  | DH 1200 / L4 TFO Liquid Cooled | 12d | 2026-09-28 | 2026-10-10 | QTS-1441, QTS-1650, QTS-1510, QTS - 8380, QTS-1780, QTS-1730, QTS - 8630, DC1-COMP-L3-CX-2440, DC1-FAN-L3-CX-2440, DC1-COMP-L3-CX-2470, DC1-FAN-L3-CX-2470, DC1-COMP-L3-CX-2500, DC1-FAN-L3-CX-2500, DC1-COMP-L3-CX-2530, DC1-FAN-L3-CX-2530, DC1-COMP-L3-CX-2560, DC1-FAN-L3-CX-2560, DC1-COMP-L3-CX-2590, DC1-FAN-L3-CX-2590, DC1-COMP-L3-CX-2620, DC1-FAN-L3-CX-2620, DC1-SWD-L3-CX-2620, DC1-SWD-L3-CX-2590, DC1-SWD-L3-CX-2560, DC1-SWD-L3-CX-2530, DC1-SWD-L3-CX-2500, DC1-SWD-L3-CX-2470, DC1-SWD-L3-CX-2440, DC1-GEN-L3-CX-2440, DC1-GEN-L3-CX-2470, DC1-GEN-L3-CX-2500, DC1-GEN-L3-CX-2530, DC1-GEN-L3-CX-2560, DC1-GEN-L3-CX-2590, DC1-GEN-L3-CX-2620, DC1-XFM-L3-CX-1440, DC1-XFM-L3-CX-1470, DC1-XFM-L3-CX-1500, DC1-XFM-L3-CX-1530, DC1-XFM-L3-CX-1560, DC1-XFM-L3-CX-1590, DC1-MOD1-L3-CX-2440, DC1-MOD1-L3-CX-2470, DC1-MOD1-L3-CX-2500, DC1-MOD1-L3-CX-2530, DC1-MOD1-L3-CX-2560, DC1-MOD1-L3-CX-2590, DC1-MOD1-L3-CX-2620, DC1-UPSM-L3-CX-2440, DC1-UPSM-L3-CX-2470, DC1-UPSM-L3-CX-2500, DC1-UPSM-L3-CX-2530, DC1-UPSM-L3-CX-2560, DC1-UPSM-L3-CX-2590, DC1-UPSM-L3-CX-2620, QTS-5940 |  |  |  |  | -85d | 0d |  | **GLOBAL - 6 Day Workweek w/ Basic Holidays | Commissioning |  | Mechanical | TFO CONST | TFO | NICK |  |  |  |  |  | ERS |  |  |  |  |  | DH1200 |

Notes:
- QTS-1013700: Scheduler Notes: 7/24/26 - Bad Torque info on labels - Need to order new Lug Kits - / affecting MOD-02 L2.2
- QTS-1013710: Scheduler Notes: 7/24/26 - Bad Torque info on labels - Need to order new Lug Kits - / affecting MOD-02 L2.2
- QTS-1013160: Scheduler Notes: 7/24/26 - Bad Torque info on labels - Need to order new Lug Kits for / Breakers - affecting MOD-02 L2.2

| ID | WBS | Activity | Duration | Start | Finish | Predecessors | Complete | Planned start | Planned finish | Total float | Free float | Calendar | Allucent CSI Group | Project Section | Layton Discipline | Baseline | Phase-1-1 | Project Section-1 | Location | Layton Super | Contract | Level | Notes | Trade Partner |
| --- | --- | --- | --- | --- | --- | --- | --- | --- | --- | --- | --- | --- | --- | --- | --- | --- | --- | --- | --- | --- | --- | --- | --- | --- |
|  | 1 | **1200 Path to Power (FTE)** |  |  |  |  |  |  |  |  |  |  |  |  |  |  |  |  |  |  |  |  |  |  |
|  | 6 | **Data Hall 2200 (9MW)** |  | 2025-08-11 | 2026-10-05 |  |  |  |  |  |  |  |  |  |  |  |  |  |  |  |  |  |  |  |
| QTS-1821 |  | DH 2200 // Prime & Paint Exposed Structure | 10d | 2025-08-27 A | 2025-09-10 A | QTS-21521, QTS-21711 | 100% |  |  |  |  |  | 01ADMIN | Construction | Build Out | IGMP | Phase 2 | Construction | DH2200 | Doug Hayes | BAB |  |  |  |
| QTS-4581 |  | DH 2200 // Install Fire Sprinkler | 8d | 2025-09-24 A | 2025-10-17 A | QTS-21711, QTS-1821 | 100% | 2025-09-24 | 2025-10-03 |  |  |  | 01ADMIN | Construction | Mechanical | IGMP | Phase 2 | Construction | DH2200 |  | BAB |  |  |  |
| QTS-6911 |  | DH 2200 // Install Fire Caulking | 3d | 2025-09-24 A | 2025-09-26 A | QTS-4581 SS, QTS-1821 | 100% |  |  |  |  |  | 01ADMIN | Construction | Build Out | IGMP | Phase 2 | Construction | DH2200 | Doug Hayes | BAB |  |  |  |
| QTS-6901 |  | DH 2200 // Establish Control & Layout Walls | 5d | 2025-09-29 A | 2025-10-08 A | QTS-6911, QTS-1821 | 100% | 2025-09-29 | 2025-10-03 |  |  |  | 01ADMIN | Construction | Build Out | IGMP | Phase 2 | Construction | DH2200 | Doug Hayes | BAB |  |  |  |
| QTS-8591 |  | DH 2200 // Perimeter Insulation | 6d | 2025-10-13 A | 2025-10-20 A | QTS-19611, QTS-6901 FF, QTS-6911 | 100% |  |  |  |  |  | 01ADMIN | Construction | Core & Shell | IGMP | Phase 2 | Construction | DH2200 |  | BAB |  |  |  |
|  | 8 | **Zone 2 Corridor 2010** |  | 2025-10-09 | 2026-09-26 |  |  |  |  |  |  |  |  |  |  |  |  |  |  |  |  |  |  |  |
| QTS-19611 |  | Zone 2 Gridline 21-30 / Corridor 2010 // Frame Exterior & Corridor Walls | 2d | 2025-10-09 A | 2025-10-10 A | QTS-6901, QTS-19271 | 100% |  |  |  |  |  | 01ADMIN | Construction | Build Out | IGMP |  |  |  | Doug Hayes | BAB | Level 2 |  |  |
| QTS-20001 |  | Zone 2 Gridline 21-30 / Corridor 2010 // In Wall Rough Electrical | 5d | 2025-10-13 A | 2025-10-24 A | QTS-38981, QTS-19611 | 100% | 2025-10-13 | 2025-10-17 |  |  |  | 01ADMIN | Construction | Electrical | IGMP |  |  |  |  | BAB | Level 2 |  |  |
| QTS-20011 |  | Zone 2 Gridline 21-30 / Corridor 2010 // In Wall Rough Plumbing | 5d | 2025-10-13 A | 2025-11-07 A | QTS-19611 | 100% | 2025-10-13 | 2025-10-17 |  |  |  | 01ADMIN | Construction | Mechanical | IGMP |  |  |  |  | BAB | Level 2 |  |  |
| QTS-20531 |  | Zone 2 Gridline 21-30 / Corridor 2010 // Insulate Corridor Wall | 2d | 2025-10-21 A | 2025-11-10 A | QTS-20001 SS+3d | 100% | 2025-10-21 | 2025-10-22 |  |  |  | 01ADMIN | Construction | Build Out | IGMP |  |  |  | Doug Hayes | BAB | Level 2 |  |  |
| QTS-1002390 |  | Zone 2 Gridline 21-30 / Corridor 2010 // Hang Drywall on Corridor Wall - Corridor Side - Top Out | 4d | 2025-12-08 A | 2025-12-11 A | QTS-19611 | 100% |  |  |  |  | QTS-PHX3 DC1 - 6 day w/ Holidays | 01ADMIN | Construction | Build Out | IGMP |  |  |  |  | BAB | Level 2 |  |  |
| QTS-1000340 |  | Zone 2 Gridline 21-30 / Corridor 2010 // Hang Remaining Drywall on Corridor Wall - Corridor Side | 4d | 2025-12-12 A | 2025-12-16 A | QTS-1002390, QTS-20531 | 100% |  |  |  |  | QTS-PHX3 DC1 - 6 day w/ Holidays | 01ADMIN | Construction | Build Out | IGMP |  |  |  |  | BAB | Level 2 |  |  |
| QTS-1002400 |  | Zone 2 Gridline 21-30 / Corridor 2010 // Tape & Finish Drywall Corridor Wall - Corridor Side - Top Out | 5d | 2025-12-12 A | 2025-12-17 A | QTS-1002390 | 100% |  |  |  |  | QTS-PHX3 DC1 - 6 day w/ Holidays | 01ADMIN | Construction | Build Out | IGMP |  |  |  |  | BAB | Level 2 |  |  |
| QTS-1000380 |  | Zone 2 Gridline 21-30 / Corridor 2010 // Tape & Finish Remaining Drywall on Corridor Wall - Corridor Side | 5d | 2025-12-17 A | 2025-12-22 A | QTS-1000340 | 100% |  |  |  |  | QTS-PHX3 DC1 - 6 day w/ Holidays | 01ADMIN | Construction | Build Out | IGMP |  |  |  |  | BAB | Level 2 |  |  |
| QTS-22431 |  | Zone 2 Gridline 21-30 / Corridor 2010 // Rough Fire Sprinklers | 5d | 2025-12-22 A | 2025-12-27 A | QTS-19611 | 100% |  |  |  |  | QTS-PHX3 DC1 - 6 day w/ Holidays |  | Construction | Mechanical | IGMP |  |  |  |  | BAB | Level 2 |  |  |
| QTS-20791 |  | Zone 2 Gridline 21-30 / Corridor 2010 // Hang Drywall on Exterior Wall - Top Out | 4d | 2025-12-31 A | 2026-01-05 A | QTS-19611 | 100% |  |  |  |  | QTS-PHX3 DC1 - 6 day w/ Holidays | 01ADMIN | Construction | Build Out | IGMP |  |  |  |  | BAB | Level 2 |  |  |
| QTS-21411 |  | Zone 2 Gridline 21-30 / Corridor 2010 // Tape & Finish Drywall on Exterior Wall - Top Out | 5d | 2026-01-14 A | 2026-01-20 A | QTS-20791 | 100% |  |  |  |  | QTS-PHX3 DC1 - 6 day w/ Holidays | 01ADMIN | Construction | Build Out | IGMP |  |  |  |  | BAB | Level 2 |  |  |
| QTS-1000350 |  | Zone 2 Gridline 21-30 / Corridor 2010 // Paint Corridor Wall - Corridor Side | 2d | 2026-01-19 A | 2026-01-20 A | QTS-1000380 | 100% | 2026-01-20 | 2026-01-21 |  |  | QTS-PHX3 DC1 - 6 day w/ Holidays |  | Construction | Build Out | IGMP |  |  |  |  | BAB | Level 2 |  |  |
| QTS-1000330 |  | Zone 2 Gridline 21-30 / Corridor 2010 // Hang Drywall on Corridor Wall - EG Side - Top Out | 4d | 2026-01-20 A | 2026-01-27 A | QTS-19611 | 100% | 2026-01-20 | 2026-01-23 |  |  | QTS-PHX3 DC1 - 6 day w/ Holidays | 01ADMIN | Construction | Build Out | IGMP |  |  |  |  | BAB | Level 2 |  |  |
| QTS-1000360 |  | Zone 2 Gridline 21-30 / Corridor 2010 // Paint Corridor Wall - EG Side - Top Out | 2d | 2026-01-20 A | 2026-01-27 A | QTS-1000370, QTS-1002430 | 100% | 2026-01-20 | 2026-01-21 |  |  | QTS-PHX3 DC1 - 6 day w/ Holidays |  | Construction | Build Out | IGMP |  |  |  |  | BAB | Level 2 |  |  |
| QTS-1005120 |  | Zone 2 Gridline 21-30 / Corridor 2010 // Hang Drywall on Corridor Wall - EG Side - Top Out | 4d | 2026-01-20 A | 2026-01-25 A | QTS-20791 | 100% | 2026-01-20 | 2026-01-23 |  |  | QTS-PHX3 DC1 - 6 day w/ Holidays | 01ADMIN | Construction | Build Out | IGMP |  |  |  |  | BAB | Level 2 |  |  |
| QTS-1000990 |  | Zone 2 Gridline 21-30 / Corridor 2010 // Install Hangers for Duct Work | 4d | 2026-01-21 A | 2026-01-24 A | QTS-22431 | 100% |  |  |  |  | QTS-PHX3 DC1 - 6 day w/ Holidays | 01ADMIN | Construction | Mechanical | IGMP |  |  |  |  | BAB | Level 2 |  |  |
| QTS-1002410 |  | Zone 2 Gridline 21-30 / Corridor 2010 // Prime & Paint Corridor Wall - Corridor Side - Top Out | 2d | 2026-01-22 A | 2026-01-23 A | QTS-1002400, QTS-1002420 SS | 100% |  |  |  |  | QTS-PHX3 DC1 - 6 day w/ Holidays | 01ADMIN | Construction | Build Out | IGMP |  |  |  |  | BAB | Level 2 |  |  |
| QTS-21861 |  | Zone 2 Gridline 21-30 / Corridor 2010 // Prime & Paint Exterior Walls - Top Out | 4d | 2026-01-22 A | 2026-01-23 A | QTS-21411 | 100% | 2026-01-22 | 2026-01-26 |  |  | QTS-PHX3 DC1 - 6 day w/ Holidays | 01ADMIN | Construction | Build Out | IGMP |  |  |  |  | BAB | Level 2 |  |  |
| QTS-1000370 |  | Zone 2 Gridline 21-30 / Corridor 2010 // Tape & Finish Drywall on Corridor Wall - EG Side | 5d | 2026-01-23 A | 2026-01-27 A | QTS-1000330, QTS-1005120 FF | 100% | 2026-01-23 | 2026-01-28 |  |  | QTS-PHX3 DC1 - 6 day w/ Holidays | 01ADMIN | Construction | Build Out | IGMP |  |  |  |  | BAB | Level 2 |  |  |
| QTS-1002420 |  | Zone 2 Gridline 21-30 / Corridor 2010 // Fire Caulking Corridor Wall - Corridor Side - Top Out | 1d | 2026-01-23 A | 2026-01-23 A | QTS-1002390 | 100% |  |  |  |  | QTS-PHX3 DC1 - 6 day w/ Holidays | 01ADMIN | Construction | Build Out | IGMP |  |  |  |  | BAB | Level 2 |  |  |
| QTS-1002430 |  | Zone 2 Gridline 21-30 / Corridor 2010 // Fire Caulking Corridor Wall - EG Side | 1d | 2026-01-25 A | 2026-01-25 A | QTS-1000330 | 100% | 2026-01-26 | 2026-01-26 |  |  | QTS-PHX3 DC1 - 6 day w/ Holidays | 01ADMIN | Construction | Build Out | IGMP |  |  |  |  | BAB | Level 2 |  |  |
| QTS-23641 |  | Zone 2 Gridline 21-30 / Corridor 2010 // Rough Overhead Ductwork Gridline 21-30 | 10d | 2026-01-26 A | 2026-05-18 A | QTS-1000990, QTS-21861, QTS-1002410, QTS-1002420 | 100% | 2026-01-26 | 2026-02-05 |  |  | QTS-PHX3 DC1 - 6 day w/ Holidays |  | Construction | Mechanical | IGMP |  |  | DH2200 |  | BAB | Level 2 |  |  |
| QTS-1000390 |  | Zone 2 Gridline 21-30 / Corridor 2010 // In Wall Rough Electrical - Corridor Wall | 3d | 2026-01-28 A | 2026-01-30 A | QTS-19611 | 100% |  |  |  |  | QTS-PHX3 DC1 - 6 day w/ Holidays | 01ADMIN | Construction | Electrical | IGMP |  |  |  |  | BAB | Level 2 |  |  |
| QTS-1000400 |  | Zone 2 Gridline 21-30 / Corridor 2010 // In Wall Rough Electrical - Exterior Wall | 3d | 2026-01-28 A | 2026-01-30 A | QTS-19611 | 100% |  |  |  |  | QTS-PHX3 DC1 - 6 day w/ Holidays | 01ADMIN | Construction | Electrical | IGMP |  |  |  |  | BAB | Level 2 |  |  |
| QTS-1000410 |  | Zone 2 Gridline 21-30 / Corridor 2010 // In Wall Inspections - Exterior Wall | 1d | 2026-02-02 A | 2026-02-02 A | QTS-1000400 | 100% |  |  |  |  | QTS-PHX3 DC1 - 6 day w/ Holidays | 01ADMIN | Construction | Electrical | IGMP |  |  |  |  | BAB | Level 2 |  |  |
| QTS-20461 |  | Zone 2 Gridline 21-30 / Corridor 2010 // In Wall Inspections - Corridor Wall | 1d | 2026-02-02 A | 2026-02-02 A | QTS-1000390, QTS-20001, QTS-20011 FF, QTS-20011 | 100% |  |  |  |  | QTS-PHX3 DC1 - 6 day w/ Holidays | 01ADMIN | Construction | Electrical | IGMP |  |  |  |  | BAB | Level 2 |  |  |
| QTS-1001000 |  | Zone 2 Gridline 21-30 / Corridor 2010 // Insulate - Corridor Wall | 1d | 2026-02-10 A | 2026-02-10 A | QTS-20461 | 100% |  |  |  |  | QTS-PHX3 DC1 - 6 day w/ Holidays | 01ADMIN | Construction | Build Out | IGMP |  |  |  |  | BAB | Level 2 |  |  |
| QTS-1003380 |  | Zone 2 Gridline 21-30 / Corridor 2010 // Hang Drywall on Exterior Wall - Remaining | 4d | 2026-02-11 A | 2026-02-13 A | QTS-1000410 | 100% | 2026-02-11 | 2026-02-14 |  |  | QTS-PHX3 DC1 - 6 day w/ Holidays | 01ADMIN | Construction | Build Out | IGMP |  |  |  |  | BAB | Level 2 | 2/3/26: Inspections |  |
| QTS-1005060 |  | Zone 2 Gridline 21-30 / Corridor 2010 // Hang Drywall on Corridor Wall - EG Side - Remaining | 4d | 2026-02-13 A | 2026-02-16 A | QTS-1001000 | 100% | 2026-02-11 | 2026-02-14 |  |  | QTS-PHX3 DC1 - 6 day w/ Holidays | 01ADMIN | Construction | Build Out | IGMP |  |  |  |  | BAB | Level 2 |  |  |
| QTS-1003390 |  | Zone 2 Gridline 21-30 / Corridor 2010 // Tape & Finish Drywall on Exterior Wall - Remaining | 2d | 2026-02-14 A | 2026-03-12 A | QTS-1003380 | 100% | 2026-02-14 | 2026-02-16 |  |  | QTS-PHX3 DC1 - 6 day w/ Holidays | 01ADMIN | Construction | Build Out | IGMP |  |  |  |  | BAB | Level 2 |  |  |
| QTS-1005070 |  | Zone 2 Gridline 21-30 / Corridor 2010 // Paint Corridor Wall - EG Side - Remaining | 2d | 2026-02-27 A | 2026-03-17 A | QTS-1005060 | 100% | 2026-02-27 | 2026-02-28 |  |  | QTS-PHX3 DC1 - 6 day w/ Holidays |  | Construction | Build Out | IGMP |  |  |  |  | BAB | Level 2 |  |  |
| QTS-1003400 |  | Zone 2 Gridline 21-30 / Corridor 2010 // Paint Exterior Wall - Remaining | 2d | 2026-06-24 A | 2026-06-25 A | QTS-1003390 | 100% |  |  |  |  | QTS-PHX3 DC1 - 6 day w/ Holidays |  | Construction | Build Out | IGMP |  |  | DH2200 | Ed Carter | BAB | Level 2 |  |  |
| QTS-1980 |  | DH 2200 / Corridor 2010 / Install FEC's | 2d | 2026-06-30 A | 2026-07-01 A | QTS-2000 | 100% | 2026-08-06 | 2026-08-07 |  |  | **GLOBAL - 6 Day Workweek w/ Basic Holidays |  |  | Build Out |  |  |  |  | Ed Carter | BAB |  |  | ISEC |
| QTS-1960 |  | DH 2200 / Corridor 2010 / Install Lighting | 4d | 2026-07-15 A | 2026-07-18 A | QTS-1003400 | 100% | 2026-07-31 | 2026-08-04 |  |  | **GLOBAL - 6 Day Workweek w/ Basic Holidays |  |  | Electrical |  |  |  |  | Electrical | BAB |  |  | REI |
| QTS-2000 |  | DH 2200 / Corridor 2010 / Hang Tape and Finish Drywall Patches | 4d | 2026-07-25 A | 2026-07-29 A | QTS-1960 | 100% | 2026-07-30 | 2026-08-03 |  |  | **GLOBAL - 6 Day Workweek w/ Basic Holidays |  |  | Build Out |  |  |  |  | Ed Carter | BAB |  |  | PCI |
| QTS-0740 |  | DH 2200 / Corridor 2010 / Install Remaining Fire Alarm Devices | 4d | 2026-07-27 A | 2026-08-06 A | QTS-1250 | 100% | 2026-07-29 | 2026-08-01 |  |  | **GLOBAL - 6 Day Workweek w/ Basic Holidays |  |  | Electrical |  |  |  |  | Electrical | BAB |  |  | Nexus |
| QTS-0750 |  | DH 2200 / Corridor 2010 / Final Paint | 1d | 2026-08-03 A | 2026-08-03 A | QTS-2000, QTS-2000 FF | 100% | 2026-08-08 | 2026-08-08 |  |  | **GLOBAL - 6 Day Workweek w/ Basic Holidays |  |  | Build Out |  |  |  |  | Jason Hendley | BAB |  |  | PPC |
| QTS-1940 |  | DH 2200 / Corridor 2010 / Install Security Trim out | 2d | 2026-08-04 A | 2026-08-04 A | QTS-2000 | 100% | 2026-08-06 | 2026-08-07 |  |  | **GLOBAL - 6 Day Workweek w/ Basic Holidays |  |  | LV |  |  |  |  | Low Voltage | BAB |  |  | Securitas |
| QTS-1970 |  | DH 2200 / Corridor 2010 / Install Electircal Trim | 1d | 2026-08-19 | 2026-08-19 | QTS-1960 |  |  |  | -81d | 30d | **GLOBAL - 6 Day Workweek w/ Basic Holidays |  |  | Electrical |  |  |  |  | Electrical | BAB |  | working branch panels | REI |
| QTS-1990 |  | DH 2200 / Corridor 2010 / Remove Temp Lighting / Power | 1d | 2026-08-19 | 2026-08-19 | QTS-1960 |  |  |  | -81d | 30d | **GLOBAL - 6 Day Workweek w/ Basic Holidays |  |  | Electrical |  |  |  |  | Electrical | BAB |  |  | REI |
| QTS-2020 |  | DH 2200 / Corridor 2010 / Burnish Concrete Floors | 1d | 2026-09-22 | 2026-09-22 | QTS-1980, QTS-3221 SS |  |  |  | -111d | 0d | **GLOBAL - 6 Day Workweek w/ Basic Holidays |  |  | Build Out |  |  |  |  | Ben Ribble | BAB |  |  | Bldg Solutions |
| QTS-2030 |  | DH 2200 / Corridor 2010 / Install Rubber Base | 2d | 2026-09-23 | 2026-09-24 | QTS-2020 |  |  |  | -111d | 0d | **GLOBAL - 6 Day Workweek w/ Basic Holidays |  |  | Build Out |  |  |  |  | Ben Ribble | BAB |  |  | Wholesale Flooring |
| QTS-2040 |  | DH 2200 / Corridor 2010 / Clean | 2d | 2026-09-25 | 2026-09-26 | QTS-2030, QTS-1990, QTS-0750, QTS-1940, QTS-1970, QTS-0740 |  |  |  | -111d | 1d | **GLOBAL - 6 Day Workweek w/ Basic Holidays |  |  | Build Out |  |  |  |  | Jason Hendley | BAB |  |  | AGDC |

Notes:
- QTS-4581: allucent_notes_20251021_145627: David Wiltberger on 2025-09-24 04:09: Not completed Potential Delay / David Wiltberger on 2025-10-07 15:10: several Clashes need resolution / allucent_notes_20251014_152335: David Wiltberger on 2025-09-24 04:09: Not completed Potential Delay / David Wiltberger on 2025-10-07 15:10: several Clashes need resolution / allucent_notes: 2025-09-24 04:09 - User: David Wiltberger - Date Added: 2025-09-24 04:09 - Note: Not completed Potential Delay / 2025-10-07 15:10 - User: David Wiltberger - Date Added: 2025-10-07 15:10 - Note: several Clashes need resolution
- QTS-20001: allucent_notes_20251027_224008: Scott Masterson on 2025-10-21 11:10: 80% of the wall is complete. The remaining 20% is the 38' leave out. A fragnet needs to be built into schedule. PCI has the RFI reply to how to build it but are waiting for materials procurement, to get wall started and finished. / allucent_notes_20251021_145627: Scott Masterson on 2025-10-21 11:10: 80% of the wall is complete. The remaining 20% is the 38' leave out. A fragnet needs to be built into schedule. PCI has the RFI reply to how to build it but are waiting for materials procurement, to get wall started and finished. / allucent_notes: 2025-10-21 11:10 - User: Scott Masterson - Date Added: 2025-10-21 11:10 - Note: 80% of the wall is complete. The remaining 20% is the 38' leave out. A fragnet needs to be built into schedule. PCI has the RFI reply to how to build it but are waiting for
- QTS-20011: allucent_notes_20251118_192630: David Wiltberger on 2025-10-21 13:10: Wall needs to be insulated before installing / allucent_notes_20251111_182405: David Wiltberger on 2025-10-21 13:10: Wall needs to be insulated before installing / allucent_notes_20251104_160200: David Wiltberger on 2025-10-21 13:10: Wall needs to be insulated before installing / allucent_notes_20251028_163138: David Wiltberger on 2025-10-21 13:10: Wall needs to be insulated before installing / allucent_notes_20251027_224008: David Wiltberger on 2025-10-21 13:10: Wall needs to be insulated before installing / allucent_notes_20251021_145627: David Wiltberger on 2025-10-21 13:10: Wall needs to be insulated before installing / allucent_notes: 2025-10-21 13:10 - User: David Wiltberger - Date Added: 2025-10-21 13:10 - Note: Wall needs to be insulated before installing
- QTS-1002390: allucent_notes_20251209_203830: Jason Johnston on 2025-11-11 17:11: Need update / Luis Vea on 2025-12-01 09:54: rough in is needed, manpower got pulled to early access / allucent_notes_20251202_153722: Jason Johnston on 2025-11-11 17:11: Need update / Luis Vea on 2025-12-01 09:54: rough in is needed, manpower got pulled to early access / allucent_notes_20251118_192630: Jason Johnston on 2025-11-11 17:11: Need update / allucent_notes_20251111_182405: Jason Johnston on 2025-11-11 17:11: Need update / allucent_notes: 2025-11-11 17:11 - User: Jason Johnston - Date Added: 2025-11-11 17:11 - Note: Need update / 2025-12-01 09:54 - User: Luis Vea - Date Added: 2025-12-01 09:54 - Note: rough in is needed, manpower got pulled to early access
- QTS-20791: allucent_notes_20251209_203830: Jason Johnston on 2025-11-11 17:11: Need update / Luis Vea on 2025-12-01 09:54: rough in is needed, manpower got pulled to early access / allucent_notes_20251202_153722: Jason Johnston on 2025-11-11 17:11: Need update / Luis Vea on 2025-12-01 09:54: rough in is needed, manpower got pulled to early access / allucent_notes_20251118_192630: Jason Johnston on 2025-11-11 17:11: Need update / allucent_notes_20251111_182405: Jason Johnston on 2025-11-11 17:11: Need update / allucent_notes: 2025-11-11 17:11 - User: Jason Johnston - Date Added: 2025-11-11 17:11 - Note: Need update / 2025-12-01 09:54 - User: Luis Vea - Date Added: 2025-12-01 09:54 - Note: rough in is needed, manpower got pulled to early access
- QTS-1000990: allucent_notes_20251209_203830: Jason Johnston on 2025-11-11 17:11: Need update / Luis Vea on 2025-12-01 09:54: rough in is needed, manpower got pulled to early access / allucent_notes_20251202_153722: Jason Johnston on 2025-11-11 17:11: Need update / Luis Vea on 2025-12-01 09:54: rough in is needed, manpower got pulled to early access / allucent_notes_20251118_192630: Jason Johnston on 2025-11-11 17:11: Need update / allucent_notes_20251111_182405: Jason Johnston on 2025-11-11 17:11: Need update / allucent_notes: 2025-11-11 17:11 - User: Jason Johnston - Date Added: 2025-11-11 17:11 - Note: Need update / 2025-12-01 09:54 - User: Luis Vea - Date Added: 2025-12-01 09:54 - Note: rough in is needed, manpower got pulled to early access
- QTS-1000390: allucent_notes_20251209_203830: Jason Johnston on 2025-12-09 20:35: Need update from team / allucent_notes_20251202_153722: Jason Johnston on 2025-11-11 16:11: Focus shifted to early access. / Jason Johnston on 2025-11-18T20:32:37.017Z: Delayed due to bulletin 4 requiring lights to be in wall. / Luis Vea on 2025-12-01 09:53: rough in is not complete. man power got pulled to early access rooms / allucent_notes_20251118_192630: Jason Johnston on 2025-11-11 16:11: Focus shifted to early access. / Jason Johnston on 2025-11-18T20:32:37.017Z: Delayed due to bulletin 4 requiring lights to be in wall. / allucent_notes_20251111_182405: Jason Johnston on 2025-11-11 16:11: Focus shifted to early access. / allucent_notes_20251230_164549: Jason Johnston on 2025-12-09 20:35: Need update from team / allucent_notes: 2025-12-09 20:35 - User: Jason Johnston - Date Added: 2025-12-09 20:35 - Note: Need update from team
- QTS-1000400: allucent_notes_20251209_203830: Jason Johnston on 2025-12-09 20:35: Need update from team / allucent_notes_20251202_153722: Jason Johnston on 2025-11-11 16:11: Focus shifted to early access. / Jason Johnston on 2025-11-18T20:32:37.017Z: Delayed due to bulletin 4 requiring lights to be in wall. / Luis Vea on 2025-12-01 09:53: rough in is not complete. man power got pulled to early access rooms / allucent_notes_20251118_192630: Jason Johnston on 2025-11-11 16:11: Focus shifted to early access. / Jason Johnston on 2025-11-18T20:32:37.017Z: Delayed due to bulletin 4 requiring lights to be in wall. / allucent_notes_20251111_182405: Jason Johnston on 2025-11-11 16:11: Focus shifted to early access. / allucent_notes_20251230_164549: Jason Johnston on 2025-12-09 20:35: Need update from team / allucent_notes: 2025-12-09 20:35 - User: Jason Johnston - Date Added: 2025-12-09 20:35 - Note: Need update from team
- QTS-1000410: allucent_notes_20251202_153722: Jason Johnston on 2025-11-11 16:11: Focus shifted to early access. / Jason Johnston on 2025-11-18T20:32:37.017Z: Delayed due to bulletin 4 requiring lights to be in wall. / Luis Vea on 2025-12-01 09:53: rough in is not complete. man power got pulled to early access rooms / allucent_notes_20251118_192630: Jason Johnston on 2025-11-11 16:11: Focus shifted to early access. / Jason Johnston on 2025-11-18T20:32:37.017Z: Delayed due to bulletin 4 requiring lights to be in wall. / allucent_notes_20251111_182405: Jason Johnston on 2025-11-11 16:11: Focus shifted to early access. / allucent_notes: 2025-11-11 16:11 - User: Jason Johnston - Date Added: 2025-11-11 16:11 - Note: Focus shifted to early access. / 2025-11-18T20:32:37.017Z - User: Jason Johnston - Date Added: 2025-11-18T20:32:37.017Z - Note: Delayed due to bulletin 4 requiring lights to b
- QTS-20461: allucent_notes_20251209_203830: Jason Johnston on 2025-11-11 16:11: Focus shifted to early access. / Jason Johnston on 2025-11-18T20:32:37.017Z: Delayed due to bulletin 4 requiring lights to be in wall. / Luis Vea on 2025-12-01 09:53: rough in is not complete. man power got pulled to early access rooms / allucent_notes_20251202_153722: Jason Johnston on 2025-11-11 16:11: Focus shifted to early access. / Jason Johnston on 2025-11-18T20:32:37.017Z: Delayed due to bulletin 4 requiring lights to be in wall. / Luis Vea on 2025-12-01 09:53: rough in is not complete. man power got pulled to early access rooms / allucent_notes_20251118_192630: Jason Johnston on 2025-11-11 16:11: Focus shifted to early access. / Jason Johnston on 2025-11-18T20:32:37.017Z: Delayed due to bulletin 4 requiring lights to be in wall. / allucent_notes_20251111_182405: Jason Johnston on 2025-11-11 16:11: Focus shifted to early access. / allucent_notes_20251230_164549: Jason Johnston on 2025-11-11 16:11: Focus shifted to early access. / Jason Johnston on 2025-11-18T20:32:37.017Z: Delayed due to bulletin 4 requiring lights to be in wall. / Luis Vea on 2025-12-01 09:53: rough in is not complete. man power got pulled to early access rooms / allucent_notes: 2025-11-11 16:11 - User: Jason Johnston - Date Added: 2025-11-11 16:11 - Note: Focus shifted to early access. / 2025-11-18T20:32:37.017Z - User: Jason Johnston - Date Added: 2025-11-18T20:32:37.017Z - Note: Delayed due to bulletin 4 requiring lights to b
- QTS-1001000: allucent_notes_20251209_203830: Jason Johnston on 2025-11-11 16:11: Focus shifted to early access. / Jason Johnston on 2025-11-18T20:32:37.017Z: Delayed due to bulletin 4 requiring lights to be in wall. / Luis Vea on 2025-12-01 09:53: rough in is not complete. man power got pulled to early access rooms / allucent_notes_20251202_153722: Jason Johnston on 2025-11-11 16:11: Focus shifted to early access. / Jason Johnston on 2025-11-18T20:32:37.017Z: Delayed due to bulletin 4 requiring lights to be in wall. / Luis Vea on 2025-12-01 09:53: rough in is not complete. man power got pulled to early access rooms / allucent_notes_20251118_192630: Jason Johnston on 2025-11-11 16:11: Focus shifted to early access. / Jason Johnston on 2025-11-18T20:32:37.017Z: Delayed due to bulletin 4 requiring lights to be in wall. / allucent_notes_20251111_182405: Jason Johnston on 2025-11-11 16:11: Focus shifted to early access. / allucent_notes: 2025-11-11 16:11 - User: Jason Johnston - Date Added: 2025-11-11 16:11 - Note: Focus shifted to early access. / 2025-11-18T20:32:37.017Z - User: Jason Johnston - Date Added: 2025-11-18T20:32:37.017Z - Note: Delayed due to bulletin 4 requiring lights to b
- QTS-1003380: Scheduler Notes: 2/3/26: Inspections

| ID | WBS | Activity | Duration | Start | Finish | Predecessors | Complete | Remaining | Planned start | Planned finish | Total float | Free float | Calendar | Project Section | Layton Discipline | Baseline | Location | Level | Fragnet | Owner Impact Analysis | Layton Super | Fragnet Responsible Party | Contract | If Not Started or Finished Why? | Allucent CSI Group | Phase-1-1 | Project Section-1 | Trade Partner | NICK | TFO-CONST ONLY | D |
| --- | --- | --- | --- | --- | --- | --- | --- | --- | --- | --- | --- | --- | --- | --- | --- | --- | --- | --- | --- | --- | --- | --- | --- | --- | --- | --- | --- | --- | --- | --- | --- |
|  | 1 | **Fragnet / Lack of Man Power** |  | 2026-06-01 | 2026-06-09 |  |  |  |  |  |  |  |  |  |  |  |  |  |  |  |  |  |  |  |  |  |  |  |  |  |  |
| QTS-1010150 |  | Fragnet / Zone 2 Gridline 21-30 / Corridor 2010 // Lack Of Man Power | 8d | 2026-06-01 A | 2026-06-09 A | QTS-1371 | 100% |  |  |  |  |  | QTS-PHX3 DC1 - 6 day w/ Holidays | Construction | Electrical | IGMP | DH2200 | Level 2 | Fragnet | Y | Oscar Armenta | Rosendin Electric Inc. | BAB |  |  |  |  |  |  |  |  |
|  | 2 | **Remaining Scope** |  | 2026-02-27 | 2026-07-01 |  |  |  |  |  |  |  |  |  |  |  |  |  |  |  |  |  |  |  |  |  |  |  |  |  |  |
| QTS-24691 |  | Zone 2 Gridline 21-30 / Corridor 2010 // Install Fire Alarm Devices | 4d | 2026-02-27 A | 2026-06-30 A | QTS-1000350, QTS-24151 | 100% |  | 2026-02-27 | 2026-03-03 |  |  | QTS-PHX3 DC1 - 6 day w/ Holidays | Construction | Electrical | IGMP | DH2200 | Level 2 |  |  | Oscar Armenta |  | BAB | Nexus needs one more device / will follow up |  |  |  |  |  |  |  |
| QTS-22581 |  | Zone 2 Gridline 21-30 / Corridor 2010 // Rough Overhead Conduit | 5d | 2026-03-19 A | 2026-06-08 A | QTS-23641 FF, QTS-1000350, QTS-22431 SS+3d | 100% |  | 2026-03-19 | 2026-03-24 |  |  | QTS-PHX3 DC1 - 6 day w/ Holidays | Construction | Electrical | IGMP | DH2200 | Level 2 |  |  | Oscar Armenta |  | BAB |  |  |  |  |  |  |  |  |
| QTS-24721 |  | Zone 2 Gridline 21-30 / Corridor 2010 // Install Cable Tray | 8d | 2026-06-17 A | 2026-06-29 A | QTS-22581, QTS-1010150 | 100% |  | 2026-07-01 | 2026-07-11 |  |  | QTS-PHX3 DC1 - 6 day w/ Holidays | Construction | LV | IGMP | DH2200 | Level 2 |  |  | Low Voltage |  | BAB |  |  |  |  |  |  |  |  |
| QTS-1012460 |  | Zone 2 Gridline 21-30 / Corridor 2010 // Fragnet to Install Remaining Fire Alarm Devices | 1d | 2026-07-01 A | 2026-07-01 A | QTS-1000350, QTS-24151, QTS-24691 | 100% |  | 2026-07-15 | 2026-07-15 |  |  | QTS-PHX3 DC1 - 6 day w/ Holidays | Construction | Electrical | IGMP | DH2200 | Level 2 | Fragnet |  | Oscar Armenta | Rosendin Electric Inc. | BAB | Nexus needs one more device / will follow up |  |  |  |  |  |  |  |
|  | 3 | **Data Hall 2200** |  | 2025-11-26 | 2026-09-30 |  |  |  |  |  |  |  |  |  |  |  |  |  |  |  |  |  |  |  |  |  |  |  |  |  |  |
| QTS-10361 |  | DH 2200 // Frame Data Hall / Corridor Wall 2017-2018 (West) | 7d | 2025-11-26 A | 2025-12-08 A | QTS-11571, QTS-6911 | 100% |  |  |  |  |  |  | Construction | Build Out | IGMP | DH2200 |  |  |  |  |  | BAB |  | 01ADMIN | Phase 2 | Construction |  |  |  |  |
| QTS-12401 |  | DH 2200 // Hang Drywall (West) - Corridor Side | 2d | 2026-01-25 A | 2026-01-27 A | QTS-12181, QTS-11171, QTS-10361, QTS-10351, QTS-11161 | 100% |  | 2026-01-26 | 2026-01-27 |  |  | QTS-PHX3 DC1 - 6 day w/ Holidays | Construction | Build Out | IGMP | DH2200 |  |  |  |  |  | BAB |  | 01ADMIN | Phase 2 | Construction |  |  |  |  |
| QTS-102110 |  | DH 2200 // Top Out / Corridor Wall 2015-2016 (East) - Data Hall Side | 3d | 2026-01-27 A | 2026-01-29 A | QTS-10351 | 100% |  |  |  |  |  | QTS-PHX3 DC1 - 6 day w/ Holidays | Construction | Build Out | IGMP | DH2100 | Level 2 |  |  |  |  | BAB |  | 01ADMIN |  | Construction |  |  |  |  |
| QTS-102120 |  | DH 2200 // One Side Data Hall / Corridor Wall 2015-2016 (East) - Data Hall Side | 3d | 2026-01-27 A | 2026-01-29 A | QTS-102110 | 100% |  |  |  |  |  | QTS-PHX3 DC1 - 6 day w/ Holidays | Construction | Build Out | IGMP | DH2100 | Level 2 |  |  |  |  | BAB |  | 01ADMIN |  | Construction |  |  |  |  |
| QTS-10351 |  | DH 2200 // Frame Data Hall / Corridor Wall 2015-2016 (East) | 5d | 2026-01-27 A | 2026-01-29 A | QTS-10361, QTS-8591, QTS-6911, QTS-4581, QTS-6901 | 100% |  | 2026-01-27 | 2026-01-31 |  |  | QTS-PHX3 DC1 - 6 day w/ Holidays | Construction | Build Out | IGMP | DH2200 |  |  |  |  |  | BAB |  | 01ADMIN | Phase 2 | Construction |  |  |  |  |
| QTS-11171 |  | DH 2200 // Install Hollow Metal Frames (West) | 1d | 2026-01-28 A | 2026-01-29 A | QTS-10361 | 100% |  | 2026-01-28 | 2026-01-28 |  |  | QTS-PHX3 DC1 - 6 day w/ Holidays | Construction | Build Out | IGMP | DH2200 |  |  |  |  |  | BAB |  | 01ADMIN | Phase 2 | Construction |  |  |  |  |
| QTS-12681 |  | DH 2200 // Tape & Finish Drywall (West) - Corridor Side | 5d | 2026-01-29 A | 2026-03-24 A | QTS-12401 | 100% |  | 2026-01-29 | 2026-02-03 |  |  | QTS-PHX3 DC1 - 6 day w/ Holidays | Construction | Build Out | IGMP | DH2200 |  |  |  |  |  | BAB |  |  | Phase 2 | Construction |  |  |  |  |
| QTS-11161 |  | DH 2200 // Rough In-Wall Electrical (West) | 5d | 2026-02-02 A | 2026-02-06 A | QTS-38981, QTS-10361, QTS-10351 | 100% |  |  |  |  |  | QTS-PHX3 DC1 - 6 day w/ Holidays | Construction | Electrical | IGMP | DH2200 |  |  |  |  |  | BAB |  | 01ADMIN | Phase 2 | Construction |  |  |  |  |
| QTS-11181 |  | DH 2200 // Rough In-Wall Electrical (East) | 5d | 2026-02-03 A | 2026-02-09 A | QTS-10351 | 100% |  | 2026-02-03 | 2026-02-07 |  |  | QTS-PHX3 DC1 - 6 day w/ Holidays | Construction | Electrical | IGMP | DH2200 |  |  |  |  |  | BAB |  | 01ADMIN | Phase 2 | Construction |  |  |  |  |
| QTS-102180 |  | DH 2200 // Frame Data Hall / Corridor Wall 2015-2016 (East) - 14x14 Leave Outs | 1d | 2026-02-08 A | 2026-02-13 A | QTS - 7540, QTS-15281, QTS-14191 | 100% |  | 2026-02-25 | 2026-02-25 |  |  | QTS-PHX3 DC1 - 6 day w/ Holidays | Construction | Build Out | IGMP | DH2100 | Level 2 |  |  |  |  | BAB |  | 01ADMIN |  | Construction |  |  |  |  |
| QTS-11191 |  | DH 2200 // Install Hollow Metal Frames (East) - 14x14 Leave Out | 1d | 2026-02-08 A | 2026-02-08 A | QTS-102180 FF, QTS-10351 | 100% |  | 2026-02-09 | 2026-02-09 |  |  | QTS-PHX3 DC1 - 6 day w/ Holidays | Construction | Build Out | IGMP | DH2200 |  |  |  |  |  | BAB |  | 01ADMIN | Phase 2 | Construction |  |  |  |  |
| QTS-102240 |  | DH 2200 // Vapor Barrier & Insulation (West) | 2d | 2026-02-10 A | 2026-02-11 A | QTS-12181 SS | 100% |  |  |  |  |  | QTS-PHX3 DC1 - 6 day w/ Holidays | Construction | Build Out | IGMP | DH2100 | Level 2 |  |  |  |  | BAB |  | 01ADMIN |  | Construction |  |  |  |  |
| QTS-12181 |  | DH 2200 // In Wall Inspection | 1d | 2026-02-10 A | 2026-02-10 A | QTS-102120, QTS-11181, QTS-11161 | 100% |  |  |  |  |  | QTS-PHX3 DC1 - 6 day w/ Holidays | Construction | Mechanical | IGMP | DH2200 |  |  |  |  |  | BAB |  | 01ADMIN | Phase 2 | Construction |  |  |  |  |
| QTS-12411 |  | DH 2200 // Hang Drywall (East) - Corridor Side | 2d | 2026-02-13 A | 2026-02-16 A | QTS-102180 SS | 100% |  | 2026-02-13 | 2026-02-14 |  |  | QTS-PHX3 DC1 - 6 day w/ Holidays | Construction | Build Out | IGMP | DH2200 |  |  |  |  |  | BAB |  |  | Phase 2 | Construction |  |  |  |  |
| QTS-12691 |  | DH 2200 // Tape, & Finish Drywall (East) - Data Hall Side | 5d | 2026-02-13 A | 2026-03-20 A | QTS-102120 | 100% |  | 2026-02-13 | 2026-02-18 |  |  | QTS-PHX3 DC1 - 6 day w/ Holidays | Construction | Build Out | IGMP | DH2200 |  |  |  |  |  | BAB |  | 01ADMIN | Phase 2 | Construction |  |  |  |  |
| QTS-14141 |  | DH 2200 // Install Structural Ceiling Grid - North | 10d | 2026-02-20 A | 2026-05-18 A | QTS-13361 FF, QTS-13011, QTS-13721 | 100% |  | 2026-01-20 | 2026-01-30 |  |  | QTS-PHX3 DC1 - 6 day w/ Holidays | Construction | Build Out | IGMP | DH2200 |  |  |  | Jay Perkins |  | BAB |  | 01ADMIN | Phase 2 | Construction |  |  |  |  |
| QTS-102220 |  | DH 2200 // Hang Drywall (West) - Data Hall Side | 2d | 2026-02-23 A | 2026-02-25 A | QTS-102240 | 100% |  | 2026-02-23 | 2026-02-24 |  |  | QTS-PHX3 DC1 - 6 day w/ Holidays | Construction | Build Out | IGMP | DH1100 | Level 1 |  |  |  |  | BAB |  | 01ADMIN | Phase 1 | Construction |  |  |  |  |
| QTS-102150 |  | DH 2200 // Tape, & Finish Drywall (East) - Corridor Side | 5d | 2026-03-11 A | 2026-04-11 A | QTS-12411 | 100% |  | 2026-03-11 | 2026-03-16 |  |  | QTS-PHX3 DC1 - 6 day w/ Holidays | Construction | Build Out | IGMP | DH1100 | Level 1 |  |  |  |  | BAB |  | 01ADMIN | Phase 1 | Construction |  |  |  |  |
| QTS-102190 |  | DH 2200 // Hang Drywall Data Hall / Corridor Wall 2017-2018 (East) - 14x14 Leave Outs | 1d | 2026-03-16 A | 2026-03-16 A | QTS-11191, QTS-102180 | 100% |  |  |  |  |  | QTS-PHX3 DC1 - 6 day w/ Holidays | Construction | Build Out | IGMP | DH2100 | Level 2 |  |  |  |  | BAB |  | 01ADMIN |  | Construction |  |  |  |  |
| QTS-102200 |  | DH 2200 // Tape & Finish Drywall Data Hall / Corridor Wall 2017-2018 (East) - 14x14 Leave Outs | 5d | 2026-03-18 A | 2026-03-23 A | QTS-102190 | 100% |  |  |  |  |  | QTS-PHX3 DC1 - 6 day w/ Holidays | Construction | Build Out | IGMP | DH2100 | Level 2 |  |  |  |  | BAB |  | 01ADMIN |  | Construction |  |  |  |  |
| QTS-102230 |  | DH 2200 // Tape, & Finish Drywall (West) - Data Hall Side | 5d | 2026-03-31 A | 2026-04-09 A | QTS-102220, QTS-102150 FF | 100% |  | 2026-03-31 | 2026-04-04 |  |  | QTS-PHX3 DC1 - 6 day w/ Holidays | Construction | Build Out | IGMP | DH1100 | Level 1 |  |  |  |  | BAB |  | 01ADMIN | Phase 1 | Construction |  |  |  |  |
| QTS-102170 |  | DH 2200 // Insulate & Vapor Barrier Data Hall / Corridor Wall 2015-2016 (East) | 2d | 2026-04-08 A | 2026-04-09 A | QTS-12691, QTS-102120 | 100% |  |  |  |  |  | QTS-PHX3 DC1 - 6 day w/ Holidays | Construction | Build Out | IGMP | DH2100 | Level 2 |  |  |  |  | BAB |  | 01ADMIN |  | Construction |  |  |  |  |
| QTS-102210 |  | DH 2200 // Paint Data Hall / Corridor Wall 2017-2018 (East) - 14x14 Leave Outs | 1d | 2026-04-08 A | 2026-04-08 A | QTS-102200 | 100% |  |  |  |  |  | QTS-PHX3 DC1 - 6 day w/ Holidays | Construction | Build Out | IGMP | DH2100 | Level 2 |  |  |  |  | BAB |  | 01ADMIN |  | Construction |  |  |  |  |
| QTS-13361 |  | DH 2200 // Paint Walls (East) - Data Hall Side | 2d | 2026-04-08 A | 2026-04-09 A | QTS-12691 | 100% |  |  |  |  |  | QTS-PHX3 DC1 - 6 day w/ Holidays | Construction | Build Out | IGMP | DH2200 |  |  |  |  |  | BAB |  |  | Phase 2 | Construction |  |  |  |  |
| QTS-13351 |  | DH 2200 // Paint Walls (West) | 2d | 2026-04-15 A | 2026-04-16 A | QTS-102230, QTS-12401, QTS-12681 | 100% |  |  |  |  |  | QTS-PHX3 DC1 - 6 day w/ Holidays | Construction | Build Out | IGMP | DH2200 |  |  |  |  |  | BAB |  |  | Phase 2 | Construction |  |  |  |  |
| QTS-1000580 |  | DH 2200 // Install Overhead Conduit - Electrical | 5d | 2026-06-20 A | 2026-07-06 A | QTS-120000, QTS-14141 | 100% |  | 2026-06-27 | 2026-07-02 |  |  | QTS-PHX3 DC1 - 6 day w/ Holidays | Construction | Electrical | IGMP | DH2100 | Level 2 |  |  | Oscar Armenta |  | BAB |  | 01ADMIN |  | Construction |  |  |  |  |
| QTS-1000590 |  | DH 2200 // Install Overhead Conduit - Controls | 5d | 2026-06-24 A | 2026-07-01 A | QTS-120000, QTS-1000580 SS | 100% |  | 2026-07-01 | 2026-07-08 |  |  | QTS-PHX3 DC1 - 6 day w/ Holidays | Construction | Electrical | IGMP | DH2100 | Level 2 |  |  | Oscar Armenta |  | BAB |  | 01ADMIN |  | Construction |  |  |  |  |
| QTS-1011180 |  | DH 2200 // Tape & Finish Walls (East) - Corridor Side | 4d | 2026-06-24 A | 2026-06-27 A | QTS-12691 | 100% |  | 2026-07-01 | 2026-07-07 |  |  | QTS-PHX3 DC1 - 6 day w/ Holidays | Construction | Build Out | IGMP |  | Level 1 |  |  | Ed Carter |  | BAB |  | 01ADMIN | Phase 1 | Construction |  |  |  |  |
| QTS-102160 |  | DH 2200 // Paint Walls (East) - Corridor Side | 2d | 2026-06-29 A | 2026-06-30 A | QTS-102150, QTS-13351, QTS-102170, QTS-1011180 | 100% |  | 2026-07-08 | 2026-07-09 |  |  | QTS-PHX3 DC1 - 6 day w/ Holidays | Construction | Build Out | IGMP |  | Level 1 |  |  | Ed Carter |  | BAB |  | 01ADMIN | Phase 1 | Construction |  |  |  |  |
| QTS-2460 |  | TFO SCOPE \\ DH 2200 / Data Hall 2200 / Insulate Technical Loop Piping (Stainless) | 6d | 2026-07-13 A | 2026-07-18 A | QTS - 5260, QTS - 5320 | 100% |  | 2026-07-15 | 2026-07-21 |  |  | **GLOBAL - 6 Day Workweek w/ Basic Holidays |  | Mechanical |  |  |  |  |  | Mechanical |  | TFO |  |  |  |  | Bel-Aire | NICK |  |  |
| QTS - 4970 |  | TFO Scope // DH 2200 / Lineup A - B / Install LV Cable Tray Racks | 4d | 2026-07-15 A | 2026-07-20 A | QTS - 1090, QTS - 4990, QTS - 5450, QTS - 5680 | 100% |  | 2026-07-25 | 2026-07-29 |  |  | QTS-PHX3 DC1 - 6 day w/ Holidays |  | LV |  | DH2200 |  |  |  |  |  | TFO |  |  |  |  |  | NICK | TFO CONST | DH1100 |
| QTS-2480 |  | DH 2200 / Data Hall 2200 / Install Added Grid Support @ Drip pan | 6d | 2026-07-16 A | 2026-07-24 A | QTS-2460 SS+3d | 100% |  | 2026-07-22 | 2026-07-28 |  |  | **GLOBAL - 6 Day Workweek w/ Basic Holidays |  | Mechanical |  |  |  |  |  | Ed Carter |  | BAB |  |  |  |  | PCI |  |  |  |
| QTS-2490 |  | DH 2200 / Data Hall 2200 / Install Remaining Drip pans | 6d | 2026-07-17 A | 2026-07-28 A | QTS-2480 SS+1d, QTS-102160 | 100% |  | 2026-07-23 | 2026-07-29 |  |  | **GLOBAL - 6 Day Workweek w/ Basic Holidays |  | Mechanical |  |  |  |  |  | Mechanical |  | BAB |  |  |  |  | Bel-Aire |  |  |  |
| QTS-2530 |  | DH 2200 / Data Hall 2200 / Install Remaining Telecom Sleeves | 3d | 2026-07-18 A | 2026-07-21 A | QTS-102210 | 100% |  | 2026-07-22 | 2026-07-24 |  |  | **GLOBAL - 6 Day Workweek w/ Basic Holidays |  | Mechanical |  |  |  |  |  | Mechanical |  | BAB |  |  |  |  | REI |  |  |  |
| QTS-2320 |  | DH 2200 / Data Hall 2200 / Install CRAH Closure Metal | 4d | 2026-07-22 A | 2026-07-25 A | QTS-1480 | 100% |  | 2026-07-29 | 2026-08-01 |  |  | **GLOBAL - 6 Day Workweek w/ Basic Holidays |  | Mechanical |  |  |  |  |  | Ed Carter |  | BAB |  |  |  |  | PCI |  |  |  |
| QTS-2500 |  | TFO SCOPE \\ DH 2200 / Data Hall 2200 / Install LV Pathway for BACOP and BOBS | 4d | 2026-07-22 A | 2026-07-25 A | QTS-1000590 | 100% |  | 2026-07-29 | 2026-08-01 |  |  | **GLOBAL - 6 Day Workweek w/ Basic Holidays |  | LV |  |  |  |  |  | Low Voltage |  | TFO |  |  |  |  | E2/Prime | NICK |  |  |
| QTS-2520 |  | DH 2200 / Data Hall 2200 / Install Grounding for RPP's | 4d | 2026-07-27 A | 2026-07-30 A | QTS-2480 | 100% |  | 2026-08-03 | 2026-08-06 |  |  | **GLOBAL - 6 Day Workweek w/ Basic Holidays |  | Electrical |  |  |  |  |  | Electrical |  | BAB |  |  |  |  | REI |  |  |  |
| QTS-2580 |  | DH 2200 / Data Hall 2200 / Install Lighting | 5d | 2026-07-27 A | 2026-08-05 A | QTS-2480 | 100% |  | 2026-07-29 | 2026-08-03 |  |  | **GLOBAL - 6 Day Workweek w/ Basic Holidays |  | Electrical |  |  |  |  |  | Electrical |  | BAB |  |  |  |  | REI |  |  |  |
| QTS-2660 |  | DH 2200 / Data Hall 2200 / Final Paint | 2d | 2026-07-28 A | 2026-08-03 A | QTS-2320, QTS-2460, QTS-2540, QTS-2490 | 100% |  | 2026-08-25 | 2026-08-26 |  |  | **GLOBAL - 6 Day Workweek w/ Basic Holidays |  | Build Out |  |  |  |  |  | Jason Hendley |  | BAB |  |  |  |  | PPC |  |  |  |
| QTS-2540 |  | DH 2200 / Data Hall 2200 / Install Remaining Structural Ceiling Grid | 4d | 2026-07-29 A | 2026-08-01 A | QTS-2490 SS+2d | 100% |  | 2026-08-05 | 2026-08-08 |  |  | **GLOBAL - 6 Day Workweek w/ Basic Holidays |  | Build Out |  |  |  |  |  | Jason Hendley |  | BAB |  |  |  |  | PCI |  |  |  |
| QTS-2570 |  | DH 2200 / Install Vesda Piping and Fire Alarm Devices | 4d | 2026-07-29 A | 2026-08-20 | QTS-2530 | 50% | 2d | 2026-08-05 | 2026-08-08 | -112d | 0d | **GLOBAL - 6 Day Workweek w/ Basic Holidays |  | Electrical |  |  |  |  |  | Electrical |  | BAB |  |  |  |  | Nexus |  |  |  |
| QTS-2600 |  | DH 2200 / Data Hall 2200 / Install Humidity Sensors | 4d | 2026-07-29 A | 2026-08-01 A | QTS-2540 SS | 100% |  | 2026-08-05 | 2026-08-08 |  |  | **GLOBAL - 6 Day Workweek w/ Basic Holidays |  | Electrical |  |  |  |  |  | Low Voltage |  | BAB |  |  |  |  | Prime |  |  |  |
| QTS-2560 |  | TFO SCOPE \\ DH 2200 / Data Hall 2200 / Install Q Cool Tray Hangers | 5d | 2026-08-03 A | 2026-08-04 A | QTS-2540 | 100% |  | 2026-08-10 | 2026-08-14 |  |  | **GLOBAL - 6 Day Workweek w/ Basic Holidays |  | Mechanical |  |  |  |  |  | Mechanical |  | TFO |  |  |  |  | Bel-Aire | NICK |  |  |
| QTS-2550 |  | DH 2200 / Install Device Tiles | 4d | 2026-08-19 | 2026-08-22 | QTS-2540 SS, QTS-2540 |  |  |  |  | -110d | 0d | **GLOBAL - 6 Day Workweek w/ Basic Holidays |  | Electrical |  |  |  |  |  | Jason Hendley |  | BAB |  |  |  |  | PCI |  |  |  |
| QTS-2590 |  | DH 2200 / Install Fire Spinkler Heads | 4d | 2026-08-21 | 2026-08-25 | QTS-2570 |  |  |  |  | -112d | 0d | **GLOBAL - 6 Day Workweek w/ Basic Holidays |  | Mechanical |  |  |  |  |  | Jason Hendley |  | BAB |  |  |  |  | Olympic |  |  |  |
| QTS-2720 |  | DH 2200 / Burn in Chillers | 3d | 2026-08-22 | 2026-08-25 | QTS-1013050, QTS-1013060, QTS-1013070, QTS-1013100 |  |  |  |  | -91d | 0d | **GLOBAL - 6 Day Workweek w/ Basic Holidays |  | Commissioning |  |  |  |  |  | Electrical |  | BAB |  |  |  |  | REI | NICK |  |  |
| QTS-2510 |  | TFO SCOPE \\ DH 2200 / Install Liquid Cooled Manifold Panels | 4d | 2026-08-24 | 2026-08-27 | QTS-2550 |  |  |  |  | -60d | 31d | **GLOBAL - 6 Day Workweek w/ Basic Holidays |  | Mechanical |  |  |  |  |  | Jason Hendley |  | TFO |  |  |  |  | Prime | NICK | TFO CONST |  |
| QTS-2690 |  | DH 2200 / Install Fire Extinguishers and Fire Extinguisher Cabinets | 3d | 2026-08-24 | 2026-08-26 | QTS-2660, QTS-2550, QTS-5770 |  |  |  |  | -106d | 0d | **GLOBAL - 6 Day Workweek w/ Basic Holidays |  | Build Out |  |  |  |  |  | Jake Shimmin |  | BAB |  |  |  |  | ISEC |  |  |  |
| QTS-2610 |  | DH 2200 / Overhead Inspection | 1d | 2026-08-26 | 2026-08-26 | QTS-2550, QTS-2600, QTS-2590, QTS-2570, QTS-2500, QTS-2580, QTS-2520, QTS-2530 |  |  |  |  | -112d | 0d | **GLOBAL - 6 Day Workweek w/ Basic Holidays |  | Electrical |  |  |  |  |  | Electrical |  | BAB |  |  |  |  | Layton |  |  |  |
| QTS-2730 |  | TFO SCOPE \\ DH 2200 / Data Hall 2200 / Burn in RPP's | 3d | 2026-08-26 | 2026-08-28 | QTS-2720 |  |  |  |  | -61d | 30d | **GLOBAL - 6 Day Workweek w/ Basic Holidays |  | Electrical |  |  |  |  |  | Electrical |  | TFO |  |  |  |  | REI | NICK | TFO CONST |  |
| QTS-2620 |  | DH 2200 / Install Remaining Ceiling tiles | 4d | 2026-08-27 | 2026-08-31 | QTS-2610 |  |  |  |  | -112d | 0d | **GLOBAL - 6 Day Workweek w/ Basic Holidays |  | Build Out |  |  |  |  |  | Jason Hendley |  | BAB |  |  |  |  | PCI |  |  |  |
| QTS-2670 |  | DH 2200 / Burnish Concrete Floor | 3d | 2026-08-27 | 2026-08-29 | QTS-2690 |  |  |  |  | -106d | 0d | **GLOBAL - 6 Day Workweek w/ Basic Holidays |  | Build Out |  |  |  |  |  | Ben Ribble |  | BAB |  |  |  |  | Bldg Solutions |  |  |  |
| QTS-2680 |  | DH 2200 / Install Rubber Base | 2d | 2026-08-31 | 2026-09-01 | QTS-2670 |  |  |  |  | -99d | 4d | **GLOBAL - 6 Day Workweek w/ Basic Holidays |  | Build Out |  |  |  |  |  | Ben Ribble |  | BAB |  |  |  |  | Wholesale Flooring |  |  |  |
| QTS-2640 |  | TFO Scope // DH 2200 / Install Cable tray and power tray | 10d | 2026-09-01 | 2026-09-12 | QTS-2560, QTS-2620, QTS - 4970 |  |  |  |  | -76d | 0d | **GLOBAL - 6 Day Workweek w/ Basic Holidays |  | Electrical |  |  |  |  |  | Electrical |  | TFO |  |  |  |  | REI |  | TFO CONST |  |
| QTS-2630 |  | TFO SCOPE \\ DH 2200 / Install HAC Panels | 3d | 2026-09-08 | 2026-09-10 | QTS-2540 SS, QTS-2750 |  |  |  |  | -104d | 0d | **GLOBAL - 6 Day Workweek w/ Basic Holidays |  | Mechanical |  |  |  |  |  | Mechanical |  | TFO |  |  |  |  | AGDC | NICK | TFO CONST |  |
| QTS-2700 |  | DH 2200 / Clean | 3d | 2026-09-08 | 2026-09-10 | QTS-2680, QTS-2750, QTS-2620 |  |  |  |  | -103d | 9d | **GLOBAL - 6 Day Workweek w/ Basic Holidays |  | Build Out |  |  |  |  |  | Ed Carter |  | BAB |  |  |  |  | AGDC |  |  |  |
| QTS-2650 |  | TFO SCOPE \\ DH 2200 / Install and Terminate RPP Branch (Whips) | 15d | 2026-09-14 | 2026-09-30 | QTS-2640 |  |  |  |  | -76d | 0d | **GLOBAL - 6 Day Workweek w/ Basic Holidays |  | Electrical |  |  |  |  |  | Electrical |  | TFO |  |  |  |  | REI | NICK | TFO CONST |  |

Notes:
- QTS-1010150: Scheduler Notes: Lack Of Man Power
- QTS-24691: Scheduler Notes: 3/24: 50 % complete / 4/14: 95% completed. 1 device remaining / Notes: 4/14: 95% completed. 1 device remaining 3/24: 50 % complete
- QTS-22581: Scheduler Notes: 4/14: 50% completed. / 04/21: 80% complete - need walls. / Notes: 04/21: 80% complete - need walls. 4/14: 50% completed.
- QTS-1012460: Scheduler Notes: 3/24: 50 % complete / 4/14: 95% completed. 1 device remaining / Lack Of Man Power / Notes: 4/14: 95% completed. 1 device remaining 3/24: 50 % complete
- QTS-102110: allucent_notes_20251014_152335: Zack Goertz on 2025-09-08T20:45:26.651Z: Not started. PCI has been put on notice that they are behind / Jason Johnston on 2025-10-08 08:10: not done / allucent_notes: 2025-09-08T20:45:26.651Z - User: Zack Goertz - Date Added: 2025-09-08T20:45:26.651Z - Note: Not started. PCI has been put on notice that they are behind / 2025-10-08 08:10 - User: Jason Johnston - Date Added: 2025-10-08 08:10 - Note: not done
- QTS-102120: allucent_notes_20251014_152335: Zack Goertz on 2025-09-08T20:45:26.651Z: Not started. PCI has been put on notice that they are behind / Jason Johnston on 2025-10-08 08:10: not done / allucent_notes: 2025-09-08T20:45:26.651Z - User: Zack Goertz - Date Added: 2025-09-08T20:45:26.651Z - Note: Not started. PCI has been put on notice that they are behind / 2025-10-08 08:10 - User: Jason Johnston - Date Added: 2025-10-08 08:10 - Note: not done
- QTS-10351: allucent_notes_20251216_165335: Jason Johnston on 2025-10-21 11:10: Reallocated man power to zone 1 / Jason Johnston on 2025-10-27 16:10: Jake owes update / Jason Johnston on 2025-10-28 15:10: Move to after 2200 fan wall framing / Jason Johnston on 2025-12-09 18:24: Need update from team / Jason Johnston on 2025-12-16 07:56: Waiting for beam wrap to be complete. / allucent_notes_20251209_203830: Jason Johnston on 2025-10-21 11:10: Reallocated man power to zone 1 / Jason Johnston on 2025-10-27 16:10: Jake owes update / Jason Johnston on 2025-10-28 15:10: Move to after 2200 fan wall framing / Jason Johnston on 2025-12-09 18:24: Need update from team / allucent_notes_20251118_192630: Jason Johnston on 2025-10-21 11:10: Reallocated man power to zone 1 / Jason Johnston on 2025-10-27 16:10: Jake owes update / Jason Johnston on 2025-10-28 15:10: Move to after 2200 fan wall framing / allucent_notes_20251111_182405: Jason Johnston on 2025-10-21 11:10: Reallocated man power to zone 1 / Jason Johnston on 2025-10-27 16:10: Jake owes update / Jason Johnston on 2025-10-28 15:10: Move to after 2200 fan wall framing / allucent_notes_20251104_160200: Jason Johnston on 2025-10-21 11:10: Reallocated man power to zone 1 / Jason Johnston on 2025-10-27 16:10: Jake owes update / Jason Johnston on 2025-10-28 15:10: Move to after 2200 fan wall framing / allucent_notes_20251028_163138: Jason Johnston on 2025-10-21 11:10: Reallocated man power to zone 1 / Jason Johnston on 2025-10-27 16:10: Jake owes update / Jason Johnston on 2025-10-28 15:10: Move to after 2200 fan wall framing / allucent_notes_20251027_224008: Jason Johnston on 2025-10-21 11:10: Reallocated man power to zone 1 / Jason Johnston on 2025-10-27 16:10: Jake owes update / allucent_notes_20251021_145627: Jason Johnston on 2025-10-21 11:10: Reallocated man power to zone 1 / allucent_notes_20251230_164549: Jason Johnston on 2025-10-21 11:10: Reallocated man power to zone 1 / Jason Johnston on 2025-10-27 16:10: Jake owes update / Jason Johnston on 2025-10-28 15:10: Move to after 2200 fan wall framing / Jason Johnston on 2025-12-09 18:24: Need update from team / Jason Johnston on 2025-12-16 07:56: Waiting for beam wrap to be complete. / David Wiltberger on 2025-12-30 16:17: no update / allucent_notes: 2025-10-21 11:10 - User: Jason Johnston - Date Added: 2025-10-21 11:10 - Note: Reallocated man power to zone 1 / 2025-10-27 16:10 - User: Jason Johnston - Date Added: 2025-10-27 16:10 - Note: Jake owes update / 2025-10-28 15:10 - User: Jason Johnston -
- QTS-11171: allucent_notes_20251216_165335: Jason Johnston on 2025-12-09 18:23: Need update from team / Jason Johnston on 2025-12-16 07:54: Pushing to complete this week. / allucent_notes_20251209_203830: Jason Johnston on 2025-12-09 18:23: Need update from team / allucent_notes_20251230_164549: Jason Johnston on 2025-12-09 18:23: Need update from team / Jason Johnston on 2025-12-16 07:54: Pushing to complete this week. / David Wiltberger on 2025-12-30 16:17: no update / allucent_notes: 2025-12-09 18:23 - User: Jason Johnston - Date Added: 2025-12-09 18:23 - Note: Need update from team / 2025-12-16 07:54 - User: Jason Johnston - Date Added: 2025-12-16 07:54 - Note: Pushing to complete this week. / 2025-12-30 16:17 - User: David Wiltber
- QTS-102180: allucent_notes_20251014_152335: Zack Goertz on 2025-09-08T20:45:26.651Z: Not started. PCI has been put on notice that they are behind / Jason Johnston on 2025-10-08 08:10: not done / allucent_notes: 2025-09-08T20:45:26.651Z - User: Zack Goertz - Date Added: 2025-09-08T20:45:26.651Z - Note: Not started. PCI has been put on notice that they are behind / 2025-10-08 08:10 - User: Jason Johnston - Date Added: 2025-10-08 08:10 - Note: not done
- QTS-14141: Scheduler Notes: 3/24: Waiting on MEP / 3/31: Waiting on MEP / 4/14: Waiting on MEP / Notes: 4/14: Waiting on MEP 3/31: Waiting on MEP 3/24: Waiting on MEP
- QTS-102150: Scheduler Notes: 3/24: Waiting on MEP / Notes: 3/24: Waiting on MEP
- QTS-102190: allucent_notes_20251014_152335: Zack Goertz on 2025-09-08T20:45:26.651Z: Not started. PCI has been put on notice that they are behind / Jason Johnston on 2025-10-08 08:10: not done / allucent_notes: 2025-09-08T20:45:26.651Z - User: Zack Goertz - Date Added: 2025-09-08T20:45:26.651Z - Note: Not started. PCI has been put on notice that they are behind / 2025-10-08 08:10 - User: Jason Johnston - Date Added: 2025-10-08 08:10 - Note: not done
- QTS-102200: allucent_notes_20251014_152335: Zack Goertz on 2025-09-08T20:45:26.651Z: Not started. PCI has been put on notice that they are behind / Jason Johnston on 2025-10-08 08:10: not done / allucent_notes: 2025-09-08T20:45:26.651Z - User: Zack Goertz - Date Added: 2025-09-08T20:45:26.651Z - Note: Not started. PCI has been put on notice that they are behind / 2025-10-08 08:10 - User: Jason Johnston - Date Added: 2025-10-08 08:10 - Note: not done
- QTS-102170: allucent_notes_20251014_152335: Zack Goertz on 2025-09-08T20:45:26.651Z: Not started. PCI has been put on notice that they are behind / Jason Johnston on 2025-10-08 08:10: not done / Scheduler Notes: 3/24: Waiting on MEP / Notes: 3/24: Waiting on MEP / allucent_notes: 2025-09-08T20:45:26.651Z - User: Zack Goertz - Date Added: 2025-09-08T20:45:26.651Z - Note: Not started. PCI has been put on notice that they are behind / 2025-10-08 08:10 - User: Jason Johnston - Date Added: 2025-10-08 08:10 - Note: not done
- QTS-102210: allucent_notes_20251014_152335: Zack Goertz on 2025-09-08T20:45:26.651Z: Not started. PCI has been put on notice that they are behind / Jason Johnston on 2025-10-08 08:10: not done / Scheduler Notes: 3/24: Waiting on MEP / Notes: 3/24: Waiting on MEP / allucent_notes: 2025-09-08T20:45:26.651Z - User: Zack Goertz - Date Added: 2025-09-08T20:45:26.651Z - Note: Not started. PCI has been put on notice that they are behind / 2025-10-08 08:10 - User: Jason Johnston - Date Added: 2025-10-08 08:10 - Note: not done
- QTS-1011180: Scheduler Notes: 4/21: Tape and finish starts 4/21. / Notes: 4/21: Tape and finish starts 4/21.
- QTS-102160: Scheduler Notes: 4/21: Tape and finish starts 4/21. / Notes: 4/21: Tape and finish starts 4/21.
- QTS-2490: Notes: Remaining after tab
- QTS-2580: Notes: 8/5 done
- QTS-2540: Notes: NEED UPDATE
- QTS-2570: Scheduler Notes: 8/4/26-Not started due to manpower
- QTS-2600: Notes: 7/29-8/1 done
- QTS-2550: Scheduler Notes: 8/4/26-Not started - waiting on MEP / Notes: Not started - waiting on MEP
- QTS-2630: Notes: Remaining after tab

| ID | WBS | Activity | Duration | Start | Finish | Predecessors | Complete | Planned start | Planned finish | Total float | Free float | Calendar | Allucent CSI Group | Project Section | Layton Discipline | Baseline | Phase-1-1 | Project Section-1 | Location | Contract | Level | Layton Super | Trade Partner | NICK | TFO-CONST ONLY |
| --- | --- | --- | --- | --- | --- | --- | --- | --- | --- | --- | --- | --- | --- | --- | --- | --- | --- | --- | --- | --- | --- | --- | --- | --- | --- |
|  | 2 | **Gallery 2201 Mechanical** |  | 2025-10-01 | 2026-09-15 |  |  |  |  |  |  |  |  |  |  |  |  |  |  |  |  |  |  |  |  |
| QTS-13741 |  | DH 2200 / Mechanical Gallery 2201 // Install VESDA | 8d | 2025-10-01 A | 2025-10-10 A | QTS-1821 | 100% |  |  |  |  |  | 01ADMIN | Construction | Electrical | IGMP | Phase 2 | Construction | DH2200 | BAB |  |  |  |  |  |
| QTS-44461 |  | DH 2200 / Mechanical Gallery 2201 // Install OH Mechanical Hangers | 7d | 2025-10-01 A | 2025-10-09 A | QTS-1821 | 100% |  |  |  |  |  | 01ADMIN | Construction | Mechanical | IGMP |  | Construction | DH2100 | BAB | Level 2 |  |  |  |  |
| QTS-8601 |  | DH 2200 / Mechanical Gallery 2201 // Frame for 2201-2202 Wall | 5d | 2025-10-13 A | 2025-10-24 A | QTS-19611, QTS-6901 | 100% | 2025-10-13 | 2025-10-17 |  |  |  | 01ADMIN | Construction | Build Out | IGMP | Phase 2 | Construction | DH2200 | BAB |  | Doug Hayes |  |  |  |
| QTS-13751 |  | DH 2200 / Mechanical Gallery 2201 // Install OH Mechanical Piping | 10d | 2025-10-31 A | 2025-11-13 A | QTS-44461 | 100% |  |  |  |  |  | 01ADMIN | Construction | Mechanical | IGMP | Phase 2 | Construction | DH2200 | BAB |  |  |  |  |  |
| QTS-1002470 |  | DH 2200 / Mechanical Gallery 2201 // Hang Drywall for 2201-2202 Wall - Elec Gallery - Top Out | 10d | 2025-12-31 A | 2026-01-05 A | QTS-8601 | 100% | 2025-12-31 | 2026-01-12 |  |  | QTS-PHX3 DC1 - 6 day w/ Holidays | 01ADMIN | Construction | Build Out | IGMP | Phase 2 | Construction | DH2200 | BAB |  |  |  |  |  |
| QTS-1002530 |  | DH 2200 / Mechanical Gallery 2201 // Hang Remaining Drywall for 2201-2202 Wall - Elec Gallery | 10d | 2026-01-05 A | 2026-01-05 A | QTS-8601 | 100% | 2026-01-09 | 2026-01-21 |  |  | QTS-PHX3 DC1 - 6 day w/ Holidays | 01ADMIN | Construction | Build Out | IGMP | Phase 2 | Construction | DH2200 | BAB |  |  |  |  |  |
| QTS-1003100 |  | DH 2200 / Mechanical Gallery 2201 // Insulate for 2201-2202 Wall - Mech Gallery - Top Out | 3d | 2026-01-14 A | 2026-01-16 A | QTS-8601 | 100% |  |  |  |  | QTS-PHX3 DC1 - 6 day w/ Holidays | 01ADMIN | Construction | Build Out | IGMP | Phase 2 | Construction | DH2200 | BAB |  |  |  |  |  |
| QTS-10401 |  | DH 2200 / Mechanical Gallery 2201 // Frame for Fan Wall | 2d | 2026-01-14 A | 2026-01-15 A | QTS-13751, QTS-10381, QTS-8601 SS | 100% |  |  |  |  | QTS-PHX3 DC1 - 6 day w/ Holidays | 01ADMIN | Construction | Build Out | IGMP | Phase 2 | Construction | DH2200 | BAB |  |  |  |  |  |
| QTS-1003090 |  | DH 2200 / Mechanical Gallery 2201 // Hang, Tape, & Finish Fan Wall - MG Side | 5d | 2026-01-16 A | 2026-01-17 A | QTS-10401 | 100% | 2026-01-16 | 2026-01-22 |  |  | QTS-PHX3 DC1 - 6 day w/ Holidays | 01ADMIN | Construction | Build Out | IGMP | Phase 2 | Construction | DH2200 | BAB |  |  |  |  |  |
| QTS-12211 |  | DH 2200 / Mechanical Gallery 2201 // Hang, Tape, & Finish Fan Drywall - DH Side | 5d | 2026-01-26 A | 2026-02-11 A | QTS-11971 | 100% | 2026-01-26 | 2026-01-30 |  |  | QTS-PHX3 DC1 - 6 day w/ Holidays | 01ADMIN | Construction | Build Out | IGMP | Phase 2 | Construction | DH2200 | BAB |  |  |  |  |  |
| QTS-13761 |  | DH 2200 / Mechanical Gallery 2201 // Install Security Screen Above Fan Wall | 3d | 2026-01-26 A | 2026-02-06 A | QTS-1001250, QTS-99680, QTS-10401 | 100% | 2026-01-26 | 2026-01-28 |  |  | QTS-PHX3 DC1 - 6 day w/ Holidays | 01ADMIN | Construction | Build Out | IGMP | Phase 2 | Construction | DH2200 | BAB |  |  |  |  |  |
| QTS-11201 |  | DH 2200 / Mechanical Gallery 2201 // Hang Drywall for 2201-2202 Wall - Mech Gallery - One Side | 4d | 2026-01-27 A | 2026-02-03 A | QTS-1003100 | 100% | 2026-01-27 | 2026-01-30 |  |  | QTS-PHX3 DC1 - 6 day w/ Holidays | 01ADMIN | Construction | Build Out | IGMP | Phase 2 | Construction | DH2200 | BAB |  |  |  |  |  |
| QTS-10391 |  | DH 2200 / Mechanical Gallery 2201 // In Wall Electrical Rough for 2201-2202 Wall | 2d | 2026-01-28 A | 2026-01-29 A | QTS-38981, QTS-8601 | 100% |  |  |  |  | QTS-PHX3 DC1 - 6 day w/ Holidays | 01ADMIN | Construction | Electrical | IGMP | Phase 2 | Construction | DH2200 | BAB |  |  |  |  |  |
| QTS-11581 |  | DH 2200 / Mechanical Gallery 2201 // In Wall Electrical Rough for Fan Wall | 2d | 2026-01-28 A | 2026-01-29 A | QTS-10401 | 100% |  |  |  |  | QTS-PHX3 DC1 - 6 day w/ Holidays | 01ADMIN | Construction | Electrical | IGMP | Phase 2 | Construction | DH2200 | BAB |  |  |  |  |  |
| QTS-14191 |  | DH 2200 / Mechanical Gallery 2201 // OFCI - L2 SET IN PLACE - Eq Type # - DH CRAH - 14 units | 6d | 2026-01-28 A | 2026-02-03 A | QTS-13751, QTS-34741 FF, QTS-34731 FF, QTS-34721 FF, QTS-34711 FF, QTS-34701 FF, QTS-34691 FF, QTS-34681, QTS-34671, QTS-34661, QTS-34651, QTS-34641, QTS-34631, QTS-34621, QTS-34611, QTS-1003090 | 100% |  |  |  |  | QTS-PHX3 DC1 - 6 day w/ Holidays |  | Construction | Mechanical | IGMP | Phase 2 | Construction | DH2200 | BAB |  |  |  |  |  |
| QTS-10891 |  | DH 2200 / Mechanical Gallery 2201 // In Wall Inspection for 2201-2202 Wall | 1d | 2026-01-30 A | 2026-01-30 A | QTS-10391 | 100% |  |  |  |  | QTS-PHX3 DC1 - 6 day w/ Holidays | 01ADMIN | Construction | Mechanical | IGMP | Phase 2 | Construction | DH2200 | BAB |  |  |  |  |  |
| QTS-11971 |  | DH 2200 / Mechanical Gallery 2201 // In Wall Inspection for Fan Wall | 1d | 2026-01-30 A | 2026-01-30 A | QTS-11581 | 100% |  |  |  |  | QTS-PHX3 DC1 - 6 day w/ Holidays | 01ADMIN | Construction | Mechanical | IGMP | Phase 2 | Construction | DH2200 | BAB |  |  |  |  |  |
| QTS-15461 |  | DH 2200 / Mechanical Gallery 2201 // DH CRAH Unit Mechanical Connections | 10d | 2026-02-02 A | 2026-02-03 A | QTS-14191 SS+4d | 100% | 2026-02-02 | 2026-02-12 |  |  | QTS-PHX3 DC1 - 6 day w/ Holidays |  | Construction | Mechanical | IGMP | Phase 2 | Construction | DH2200 | BAB |  |  |  |  |  |
| QTS-1002460 |  | DH 2200 / Mechanical Gallery 2201 // Paint 2201-2202 Wall - Elec Gallery - Top Out | 2d | 2026-02-11 A | 2026-02-12 A | QTS-8601 | 100% |  |  |  |  | QTS-PHX3 DC1 - 6 day w/ Holidays | 01ADMIN | Construction | Build Out | IGMP | Phase 2 | Construction | DH2200 | BAB |  | Ed Carter |  |  |  |
| QTS-13001 |  | DH 2200 / Mechanical Gallery 2201 // Paint 2201-2202 Wall - Elec Gallery - Remaining | 3d | 2026-02-11 A | 2026-02-13 A | QTS-1002460 FF | 100% |  |  |  |  | QTS-PHX3 DC1 - 6 day w/ Holidays | 01ADMIN | Construction | Build Out | IGMP | Phase 2 | Construction | DH2200 | BAB |  | Ed Carter |  |  |  |
| QTS-13011 |  | DH 2200 / Mechanical Gallery 2201 // Paint Fan Walls | 5d | 2026-02-13 A | 2026-02-15 A | QTS-12211 FF+1d, QTS-1002470 | 100% | 2026-02-13 | 2026-02-18 |  |  | QTS-PHX3 DC1 - 6 day w/ Holidays | 01ADMIN | Construction | Build Out | IGMP | Phase 2 | Construction | DH2200 | BAB |  | Ed Carter |  |  |  |
| QTS-1002440 |  | DH 2200 / Mechanical Gallery 2201 // Tape & Finish Drywall for 2201-2202 Wall - Mech Gallery - One Side | 5d | 2026-02-16 A | 2026-02-25 A | QTS-11201 | 100% | 2026-02-16 | 2026-02-20 |  |  | QTS-PHX3 DC1 - 6 day w/ Holidays | 01ADMIN | Construction | Build Out | IGMP | Phase 2 | Construction | DH2200 | BAB |  |  |  |  |  |
| QTS-13371 |  | DH 2200 / Mechanical Gallery 2201 // Top of Wall Sound Caulk for 2201-2202 Wall | 2d | 2026-02-20 A | 2026-02-24 A | QTS-11201 | 100% | 2026-02-20 | 2026-02-21 |  |  | QTS-PHX3 DC1 - 6 day w/ Holidays | 01ADMIN | Construction | Build Out | IGMP | Phase 2 | Construction | DH2200 | BAB |  |  |  |  |  |
| QTS-1002450 |  | DH 2200 / Mechanical Gallery 2201 // Paint 2201-2202 Wall - Mech Gallery - One Side | 2d | 2026-02-27 A | 2026-03-03 A | QTS-1002440 | 100% | 2026-02-27 | 2026-02-28 |  |  | QTS-PHX3 DC1 - 6 day w/ Holidays | 01ADMIN | Construction | Build Out | IGMP | Phase 2 | Construction | DH2200 | BAB |  | Ed Carter |  |  |  |
| QTS-43881 |  | DH 2200 / Mechanical Gallery 2201 // OFCI - L2 SET IN PLACE - Eq Type # - MOD-02 - 7 units | 10d | 2026-03-02 A | 2026-03-27 A | QTS-13751, QTS-14191, QTS-31791, QTS-31371, QTS-31361, QTS-31351, QTS-31341, QTS-31331, QTS-31321, QTS-13741 | 100% | 2026-03-02 | 2026-03-12 |  |  | QTS-PHX3 DC1 - 6 day w/ Holidays |  | Construction | Electrical | IGMP | Phase 2 | Construction | DH2200 | BAB |  |  |  |  |  |
| QTS-15611 |  | DH 2200 / Mechanical Gallery 2201 // Install OH Electrical Conduit & Grounding | 10d | 2026-03-05 A | 2026-05-19 A | QTS-13751, QTS-1002450 FF | 100% | 2026-03-05 | 2026-03-16 |  |  | QTS-PHX3 DC1 - 6 day w/ Holidays | 01ADMIN | Construction | Electrical | IGMP | Phase 2 | Construction | DH2200 | BAB |  |  |  |  |  |
| QTS-16251 |  | DH 2200 / Mechanical Gallery 2201 // OFCI - L2 SET IN PLACE - Eq Type # - MOD-03 - 7 units | 10d | 2026-03-05 A | 2026-03-27 A | QTS-14191, QTS-31701, QTS-31611, QTS-31601, QTS-31591, QTS-31581, QTS-31571, QTS-31561, QTS-13741, QTS-1002450 | 100% | 2026-03-05 | 2026-03-16 |  |  | QTS-PHX3 DC1 - 6 day w/ Holidays |  | Construction | Electrical | IGMP | Phase 2 | Construction | DH2200 | BAB |  |  |  |  |  |
| QTS-14491 |  | DH 2200 / Mechanical Gallery 2201 // Install Raceway from UPS Pod to MOD-02/03 Boards | 10d | 2026-03-10 A | 2026-03-12 A | QTS-15461, QTS-43881 SS, QTS-16251 SS, QTS-13551, QTS-15611 | 100% | 2026-03-10 | 2026-03-20 |  |  | QTS-PHX3 DC1 - 6 day w/ Holidays |  | Construction | Electrical | IGMP | Phase 2 | Construction | DH2200 | BAB |  |  |  |  |  |
| QTS-46571 |  | DH 2200 / Mechanical Gallery 2201 // EG CRAH Unit Mechanical Connections | 10d | 2026-03-10 A | 2026-03-24 A | QTS-46561, QTS - 26071 SS | 100% | 2026-03-10 | 2026-03-20 |  |  | QTS-PHX3 DC1 - 6 day w/ Holidays |  | Construction | Mechanical | IGMP | Phase 2 | Construction | DH2200 | BAB |  |  |  |  |  |
| QTS-15601 |  | DH 2200 / Mechanical Gallery 2201 // Install Electrical Tray | 5d | 2026-03-13 A | 2026-05-01 A | QTS-14491, QTS-15461, QTS-13751 | 100% | 2026-03-13 | 2026-03-18 |  |  | QTS-PHX3 DC1 - 6 day w/ Holidays |  | Construction | Electrical | IGMP | Phase 2 | Construction | DH2200 | BAB |  |  |  |  |  |
| QTS-43751 |  | DH 2200 / Mechanical Gallery 2201 // Pull & Terminate from UPS Pod to MOD-02/03 Boards | 10d | 2026-03-23 A | 2026-05-19 A | QTS-14491 SS+5d | 100% | 2026-03-23 | 2026-04-02 |  |  | QTS-PHX3 DC1 - 6 day w/ Holidays |  | Construction | Electrical | IGMP | Phase 2 | Construction | DH2200 | BAB |  |  |  |  |  |
| QTS-16991 |  | DH 2200 / Mechanical Gallery 2201 // Set Humidifier | 1d | 2026-03-26 A | 2026-03-26 A | QTS-19501, QTS-13761 | 100% | 2026-04-08 | 2026-04-08 |  |  | QTS-PHX3 DC1 - 6 day w/ Holidays |  | Construction | Mechanical | IGMP | Phase 2 | Construction | DH2200 | BAB |  |  |  |  |  |
| QTS-46561 |  | DH 2200 / Mechanical Gallery 2201 // OFCI - L2 SET IN PLACE - Eq Type # - EG CRAH - 4 units | 6d | 2026-03-26 A | 2026-03-30 A | QTS-34921, QTS-34911, QTS-34901, QTS-34891, QTS-13001 | 100% | 2026-04-01 | 2026-04-07 |  |  | QTS-PHX3 DC1 - 6 day w/ Holidays | 01ADMIN | Construction | Mechanical | IGMP | Phase 2 | Construction | DH2200 | BAB |  |  |  |  |  |
| QTS-16531 |  | DH 2200 / Mechanical Gallery 2201 // Install Basket Tray for LV | 5d | 2026-05-05 A | 2026-06-12 A | QTS-15601 | 100% | 2026-05-05 | 2026-05-09 |  |  | QTS-PHX3 DC1 - 6 day w/ Holidays |  | Construction | LV | IGMP | Phase 2 | Construction | DH2200 | BAB |  | Low Voltage |  |  |  |
| QTS-1008730 |  | DH 2200 / Mechanical Gallery 2201 // Install OH FA Conduit & Grounding | 10d | 2026-05-11 A | 2026-05-25 A | QTS-1002450 | 100% | 2026-06-03 | 2026-06-13 |  |  | QTS-PHX3 DC1 - 6 day w/ Holidays | 01ADMIN | Construction | Electrical | IGMP | Phase 2 | Construction | DH2200 | BAB |  | Oscar Armenta |  |  |  |
| QTS-1012190 |  | DH 2200 / Mechanical Gallery 2201 // Pull & Terminate from UPS Pod to MOD-02/03 Boards | 10d | 2026-05-20 A | 2026-06-02 A | QTS-99510, QTS-15611, QTS-43771 | 100% | 2026-05-01 | 2026-05-12 |  |  | QTS-PHX3 DC1 - 6 day w/ Holidays |  | Construction | Electrical | IGMP | Phase 2 | Construction | DH2200 | BAB |  |  |  |  |  |
| QTS-46591 |  | DH 2200 / Mechanical Gallery 2201 // Pull & Terminate from MOD-02 to CRAHs | 4d | 2026-05-21 A | 2026-06-03 A | QTS-43751 | 100% | 2026-05-20 | 2026-05-23 |  |  | QTS-PHX3 DC1 - 6 day w/ Holidays |  | Construction | Electrical | IGMP |  | Construction | DH2100 | BAB | Level 2 | Oscar Armenta |  |  |  |
| QTS-46581 |  | DH 2200 / Mechanical Gallery 2201 // Set EPMS/BMS Panels | 4d | 2026-06-03 A | 2026-06-03 A | QTS-13001 | 100% | 2026-06-03 | 2026-06-06 |  |  | QTS-PHX3 DC1 - 6 day w/ Holidays | 01ADMIN | Construction | Electrical | IGMP |  | Construction | DH2100 | BAB | Level 2 | Oscar Armenta |  |  |  |
| QTS-1012170 |  | DH 2200 / Mechanical Gallery 2201 // Install OH Electrical Conduit & Grounding | 7d | 2026-06-04 A | 2026-07-20 A | QTS-1012160 SS, QTS-1012160 FF, QTS-1012240 SS, QTS-1012240 FF | 100% | 2026-06-03 | 2026-06-10 |  |  | QTS-PHX3 DC1 - 6 day w/ Holidays | 01ADMIN | Construction | Electrical | IGMP | Phase 2 | Construction | DH2200 | BAB |  | Electrical | REI |  |  |
| QTS-44471 |  | DH 2200 / Mechanical Gallery 2201 // Install BMS & EPMS Cable and Terminations | 5d | 2026-06-18 A | 2026-07-10 A | QTS-46581, QTS-16531 SS | 100% | 2026-06-25 | 2026-06-30 |  |  | QTS-PHX3 DC1 - 6 day w/ Holidays |  | Construction | LV | IGMP |  | Construction | DH2100 | BAB | Level 2 | Low Voltage |  |  |  |
| QTS-1008740 |  | DH 2200 / Mechanical Gallery 2201 // Install OH EPMS/BMS Conduit & Grounding | 5d | 2026-06-24 A | 2026-07-01 A | QTS-1002450, QTS-1008730 SS, QTS-1008730 FF | 100% | 2026-07-01 | 2026-07-08 |  |  | QTS-PHX3 DC1 - 6 day w/ Holidays | 01ADMIN | Construction | Electrical | IGMP | Phase 2 | Construction | DH2200 | BAB |  | Oscar Armenta |  |  |  |
| QTS-17121 |  | DH 2200 / Mechanical Gallery 2201 // Tie-In MEP to Humidifiers | 6d | 2026-06-29 A | 2026-07-06 A | QTS-13751 FF, QTS-14191, QTS-16991 | 100% | 2026-07-10 | 2026-07-16 |  |  | QTS-PHX3 DC1 - 6 day w/ Holidays |  | Construction | Mechanical | IGMP | Phase 2 | Construction | DH2200 | BAB |  | Mechanical |  |  |  |
| QTS-46601 |  | DH 2200 / Mechanical Gallery 2201 // Pull & Terminate from MOD-02 to DOAS | 4d | 2026-07-01 A | 2026-07-07 A | QTS-46591 | 100% | 2026-07-08 | 2026-07-11 |  |  | QTS-PHX3 DC1 - 6 day w/ Holidays |  | Construction | Electrical | IGMP |  | Construction | DH2100 | BAB | Level 2 | Oscar Armenta |  |  |  |
| QTS-5820 |  | TFO SCOPE \\ DH 2200 / Gallery 2201 Install Technical Loop Stainless Piping | 8d | 2026-07-13 A | 2026-07-28 A | QTS - 5120, QTS - 5320 | 100% | 2026-07-15 | 2026-07-23 |  |  | **GLOBAL - 6 Day Workweek w/ Basic Holidays |  |  | Mechanical |  |  |  |  | TFO |  | Mechanical | Bel-Aire | NICK |  |
| QTS-44481 |  | DH 2200 / Mechanical Gallery 2201 // Install Security and Devices | 5d | 2026-07-14 A | 2026-07-14 A | QTS-43751 | 100% | 2026-07-15 | 2026-07-20 |  |  | QTS-PHX3 DC1 - 6 day w/ Holidays |  | Construction | Electrical | IGMP |  | Construction | DH2100 | BAB | Level 2 | Oscar Armenta |  |  |  |
| QTS-5870 |  | DH 2200 / Gallery 2201 / Final Paint | 2d | 2026-07-20 A | 2026-07-21 A | QTS-44481 | 100% | 2026-08-03 | 2026-08-04 |  |  | **GLOBAL - 6 Day Workweek w/ Basic Holidays |  |  | Build Out |  |  |  |  | BAB |  | Jason Hendley | PPC |  |  |
| QTS-1013880 |  | TFO SCOPE \\ DH 2200 / Gallery 2201 Install Technical Loop Stainless Piping | 7d | 2026-08-03 A | 2026-08-11 A | QTS-5820, QTS-1370 | 100% | 2026-08-07 | 2026-08-14 |  |  | **GLOBAL - 6 Day Workweek w/ Basic Holidays |  |  | Mechanical |  |  |  |  | TFO |  | Mechanical | Bel-Aire | NICK |  |
| QTS-5850 |  | DH 2200 / Gallery 2201 / Hang tape and Finish Drywall Patches | 4d | 2026-08-19 | 2026-08-22 | QTS-5820, QTS-1013880 |  |  |  | -90d | 0d | **GLOBAL - 6 Day Workweek w/ Basic Holidays |  |  | Build Out |  |  |  |  | BAB |  | Jason Hendley | PCI |  |  |
| QTS-5860 |  | DH 2200 / Gallery 2201 / Patch Back and Fire caulk RPP Feeder Pentrations | 4d | 2026-08-19 | 2026-08-22 | QTS-5850 SS |  |  |  | -90d | 12d | **GLOBAL - 6 Day Workweek w/ Basic Holidays |  |  | Build Out |  |  |  |  | BAB |  | Jason Hendley | Riteway |  |  |
| QTS-7160 |  | DH 2200 / Gallery 2201 Install raceway and lights | 4d | 2026-08-19 | 2026-08-22 | QTS-5820, QTS-1013880 |  |  |  | -95d | 0d | **GLOBAL - 6 Day Workweek w/ Basic Holidays |  |  | Electrical |  |  |  |  | BAB |  | Electrical | REI |  |  |
| QTS-7180 |  | DH 2200 / Gallery 2201 / Install Vesda Panels | 3d | 2026-08-19 | 2026-08-21 | QTS-5820, QTS-1013880 |  |  |  | -89d | 13d | **GLOBAL - 6 Day Workweek w/ Basic Holidays |  |  | Electrical |  |  |  |  | BAB |  | Electrical | Nexus |  |  |
| QTS-5880 |  | DH 2200 / Gallery 2201 / Install Fire Extinguisher's | 2d | 2026-08-24 | 2026-08-25 | QTS-5870, QTS-2690 SS |  |  |  | -106d | 0d | **GLOBAL - 6 Day Workweek w/ Basic Holidays |  |  | Build Out |  |  |  |  | BAB |  | Jake Shimmin | ISEC |  |  |
| QTS-7170 |  | DH 2200 / Gallery 2201 / Pull and Terminate Lighting | 5d | 2026-08-24 | 2026-08-28 | QTS-7160 |  |  |  | -95d | 7d | **GLOBAL - 6 Day Workweek w/ Basic Holidays |  |  | Electrical |  |  |  |  | BAB |  | Electrical | REI |  |  |
| QTS-5900 |  | DH 2200 / Gallery 2201 / Seal Concrete Floor | 3d | 2026-08-26 | 2026-08-28 | QTS-5870, QTS-5880 |  |  |  | -105d | 0d | **GLOBAL - 6 Day Workweek w/ Basic Holidays |  |  | Build Out |  |  |  |  | BAB |  | Ben Ribble | Bldg Solutions |  |  |
| QTS-5910 |  | TFO SCOPE \\ DH 2200 / Gallery 2201 / Fill and Flush Technical Loop | 18d | 2026-08-28 | 2026-09-15 | QTS-1012590, QTS-1013510 FF, QTS-5820, QTS-1013880 |  |  |  | -88d | 0d | **GLOBAL - 7 Day Workweek w/ Basic Holidays |  |  | Mechanical |  |  |  |  | TFO |  | Mechanical | Bel-Aire | NICK | TFO CONST |
| QTS-5920 |  | DH 2200 / Gallery 2201 / Install Rubber Base | 2d | 2026-08-29 | 2026-08-31 | QTS-5900 |  |  |  | -97d | 5d | **GLOBAL - 6 Day Workweek w/ Basic Holidays |  |  | Build Out |  |  |  |  | BAB |  | Ben Ribble | Wholesale Flooring |  |  |
| QTS-5930 |  | DH 2200 / Gallery 2201 / Clean | 2d | 2026-09-08 | 2026-09-09 | QTS-5920, QTS-7170, QTS-1012170, QTS-7180, QTS-5860, QTS-2750 |  |  |  | -102d | 10d | **GLOBAL - 6 Day Workweek w/ Basic Holidays |  |  | Build Out |  |  |  |  | BAB |  | Ed Carter | AGDC |  |  |

Notes:
- QTS-13741: allucent_notes_20251014_152335: David Wiltberger on 2025-09-24 04:09: access restricted / allucent_notes: 2025-09-24 04:09 - User: David Wiltberger - Date Added: 2025-09-24 04:09 - Note: access restricted
- QTS-8601: allucent_notes_20251027_224008: Jason Johnston on 2025-10-21 11:10: Reallocation of manpower to zone 1 / allucent_notes_20251021_145627: Jason Johnston on 2025-10-21 11:10: Reallocation of manpower to zone 1 / allucent_notes: 2025-10-21 11:10 - User: Jason Johnston - Date Added: 2025-10-21 11:10 - Note: Reallocation of manpower to zone 1
- QTS-13751: allucent_notes_20251118_192630: David Wiltberger on 2025-09-24 04:09: BAM potential Delay / David Wiltberger on 2025-10-14 12:10: on recovery / allucent_notes_20251111_182405: David Wiltberger on 2025-09-24 04:09: BAM potential Delay / David Wiltberger on 2025-10-14 12:10: on recovery / allucent_notes_20251104_160200: David Wiltberger on 2025-09-24 04:09: BAM potential Delay / David Wiltberger on 2025-10-14 12:10: on recovery / allucent_notes_20251028_163138: David Wiltberger on 2025-09-24 04:09: BAM potential Delay / David Wiltberger on 2025-10-14 12:10: on recovery / allucent_notes_20251027_224008: David Wiltberger on 2025-09-24 04:09: BAM potential Delay / David Wiltberger on 2025-10-14 12:10: on recovery / allucent_notes_20251021_145627: David Wiltberger on 2025-09-24 04:09: BAM potential Delay / David Wiltberger on 2025-10-14 12:10: on recovery / allucent_notes_20251014_152335: David Wiltberger on 2025-09-24 04:09: BAM potential Delay / David Wiltberger on 2025-10-14 12:10: on recovery / allucent_notes: 2025-09-24 04:09 - User: David Wiltberger - Date Added: 2025-09-24 04:09 - Note: BAM potential Delay / 2025-10-14 12:10 - User: David Wiltberger - Date Added: 2025-10-14 12:10 - Note: on recovery
- QTS-1002470: allucent_notes_20251216_165335: Zack Goertz on 2025-10-27T19:25:53.887Z: Not started working on recovery plan / Jason Johnston on 2025-10-27 16:10: Jake owes update / allucent_notes_20251209_203830: Zack Goertz on 2025-10-27T19:25:53.887Z: Not started working on recovery plan / Jason Johnston on 2025-10-27 16:10: Jake owes update / allucent_notes_20251202_153722: Zack Goertz on 2025-10-27T19:25:53.887Z: Not started working on recovery plan / Jason Johnston on 2025-10-27 16:10: Jake owes update / allucent_notes_20251118_192630: Zack Goertz on 2025-10-27T19:25:53.887Z: Not started working on recovery plan / Jason Johnston on 2025-10-27 16:10: Jake owes update / allucent_notes_20251111_182405: Zack Goertz on 2025-10-27T19:25:53.887Z: Not started working on recovery plan / Jason Johnston on 2025-10-27 16:10: Jake owes update / allucent_notes_20251104_160200: Zack Goertz on 2025-10-27T19:25:53.887Z: Not started working on recovery plan / Jason Johnston on 2025-10-27 16:10: Jake owes update / allucent_notes_20251028_163138: Zack Goertz on 2025-10-27T19:25:53.887Z: Not started working on recovery plan / Jason Johnston on 2025-10-27 16:10: Jake owes update / allucent_notes_20251027_224008: Zack Goertz on 2025-10-27T19:25:53.887Z: Not started working on recovery plan / Jason Johnston on 2025-10-27 16:10: Jake owes update / allucent_notes_20251230_164549: Zack Goertz on 2025-10-27T19:25:53.887Z: Not started working on recovery plan / Jason Johnston on 2025-10-27 16:10: Jake owes update / allucent_notes: 2025-10-27T19:25:53.887Z - User: Zack Goertz - Date Added: 2025-10-27T19:25:53.887Z - Note: Not started working on recovery plan / 2025-10-27 16:10 - User: Jason Johnston - Date Added: 2025-10-27 16:10 - Note: Jake owes update
- QTS-1002530: allucent_notes_20251216_165335: Zack Goertz on 2025-10-27T19:25:53.887Z: Not started working on recovery plan / Jason Johnston on 2025-10-27 16:10: Jake owes update / allucent_notes_20251209_203830: Zack Goertz on 2025-10-27T19:25:53.887Z: Not started working on recovery plan / Jason Johnston on 2025-10-27 16:10: Jake owes update / allucent_notes_20251202_153722: Zack Goertz on 2025-10-27T19:25:53.887Z: Not started working on recovery plan / Jason Johnston on 2025-10-27 16:10: Jake owes update / allucent_notes_20251118_192630: Zack Goertz on 2025-10-27T19:25:53.887Z: Not started working on recovery plan / Jason Johnston on 2025-10-27 16:10: Jake owes update / allucent_notes_20251111_182405: Zack Goertz on 2025-10-27T19:25:53.887Z: Not started working on recovery plan / Jason Johnston on 2025-10-27 16:10: Jake owes update / allucent_notes_20251104_160200: Zack Goertz on 2025-10-27T19:25:53.887Z: Not started working on recovery plan / Jason Johnston on 2025-10-27 16:10: Jake owes update / allucent_notes_20251028_163138: Zack Goertz on 2025-10-27T19:25:53.887Z: Not started working on recovery plan / Jason Johnston on 2025-10-27 16:10: Jake owes update / allucent_notes_20251027_224008: Zack Goertz on 2025-10-27T19:25:53.887Z: Not started working on recovery plan / Jason Johnston on 2025-10-27 16:10: Jake owes update / allucent_notes_20251230_164549: Zack Goertz on 2025-10-27T19:25:53.887Z: Not started working on recovery plan / Jason Johnston on 2025-10-27 16:10: Jake owes update / allucent_notes: 2025-10-27T19:25:53.887Z - User: Zack Goertz - Date Added: 2025-10-27T19:25:53.887Z - Note: Not started working on recovery plan / 2025-10-27 16:10 - User: Jason Johnston - Date Added: 2025-10-27 16:10 - Note: Jake owes update
- QTS-1003100: allucent_notes_20251216_165335: Zack Goertz on 2025-10-27T19:25:53.887Z: Not started working on recovery plan / Jason Johnston on 2025-10-27 16:10: Jake owes update / allucent_notes_20251209_203830: Zack Goertz on 2025-10-27T19:25:53.887Z: Not started working on recovery plan / Jason Johnston on 2025-10-27 16:10: Jake owes update / allucent_notes_20251202_153722: Zack Goertz on 2025-10-27T19:25:53.887Z: Not started working on recovery plan / Jason Johnston on 2025-10-27 16:10: Jake owes update / allucent_notes_20251118_192630: Zack Goertz on 2025-10-27T19:25:53.887Z: Not started working on recovery plan / Jason Johnston on 2025-10-27 16:10: Jake owes update / allucent_notes_20251111_182405: Zack Goertz on 2025-10-27T19:25:53.887Z: Not started working on recovery plan / Jason Johnston on 2025-10-27 16:10: Jake owes update / allucent_notes_20251104_160200: Zack Goertz on 2025-10-27T19:25:53.887Z: Not started working on recovery plan / Jason Johnston on 2025-10-27 16:10: Jake owes update / allucent_notes_20251028_163138: Zack Goertz on 2025-10-27T19:25:53.887Z: Not started working on recovery plan / Jason Johnston on 2025-10-27 16:10: Jake owes update / allucent_notes_20251027_224008: Zack Goertz on 2025-10-27T19:25:53.887Z: Not started working on recovery plan / Jason Johnston on 2025-10-27 16:10: Jake owes update / allucent_notes_20251230_164549: Zack Goertz on 2025-10-27T19:25:53.887Z: Not started working on recovery plan / Jason Johnston on 2025-10-27 16:10: Jake owes update / allucent_notes: 2025-10-27T19:25:53.887Z - User: Zack Goertz - Date Added: 2025-10-27T19:25:53.887Z - Note: Not started working on recovery plan / 2025-10-27 16:10 - User: Jason Johnston - Date Added: 2025-10-27 16:10 - Note: Jake owes update
- QTS-10401: allucent_notes_20251118_192630: Jason Johnston on 2025-10-28 15:10: Framers moving from 1100 / Zack Goertz on 2025-10-29T19:40:04.004Z: Fan wall framing will be starting Monday / Zack Goertz on 2025-10-31T19:49:37.302Z: Bel-aire is behind. We are waiting for them to install chiller mains. / Zack Goertz on 2025-11-03T16:49:24.308Z: Bel-aire is behind. We are waiting for them to install chiller mains. They are half way done with zone 2 level 1 / Jason Johnston on 2025-11-04 15:11: Update needed / Jason Johnston on 2025-11-11 16:11: early access / Jason Johnston on 2025-11-18T20:49:23.006Z: Not on green mile need new predecessor. / allucent_notes_20251111_182405: Jason Johnston on 2025-10-28 15:10: Framers moving from 1100 / Zack Goertz on 2025-10-29T19:40:04.004Z: Fan wall framing will be starting Monday / Zack Goertz on 2025-10-31T19:49:37.302Z: Bel-aire is behind. We are waiting for them to install chiller mains. / Zack Goertz on 2025-11-03T16:49:24.308Z: Bel-aire is behind. We are waiting for them to install chiller mains. They are half way done with zone 2 level 1 / Jason Johnston on 2025-11-04 15:11: Update needed / Jason Johnston on 2025-11-11 16:11: early access / allucent_notes_20251104_160200: Jason Johnston on 2025-10-28 15:10: Framers moving from 1100 / Zack Goertz on 2025-10-29T19:40:04.004Z: Fan wall framing will be starting Monday / Zack Goertz on 2025-10-31T19:49:37.302Z: Bel-aire is behind. We are waiting for them to install chiller mains. / Zack Goertz on 2025-11-03T16:49:24.308Z: Bel-aire is behind. We are waiting for them to install chiller mains. They are half way done with zone 2 level 1 / Jason Johnston on 2025-11-04 15:11: Update needed / allucent_notes_20251028_163138: Jason Johnston on 2025-10-28 15:10: Framers moving from 1100 / allucent_notes: 2025-10-28 15:10 - User: Jason Johnston - Date Added: 2025-10-28 15:10 - Note: Framers moving from 1100 / 2025-10-29T19:40:04.004Z - User: Zack Goertz - Date Added: 2025-10-29T19:40:04.004Z - Note: Fan wall framing will be starting Monday / 2025-10-31T1
- QTS-11201: allucent_notes_20251216_165335: Zack Goertz on 2025-10-27T19:25:53.887Z: Not started working on recovery plan / Jason Johnston on 2025-10-27 16:10: Jake owes update / allucent_notes_20251209_203830: Zack Goertz on 2025-10-27T19:25:53.887Z: Not started working on recovery plan / Jason Johnston on 2025-10-27 16:10: Jake owes update / allucent_notes_20251202_153722: Zack Goertz on 2025-10-27T19:25:53.887Z: Not started working on recovery plan / Jason Johnston on 2025-10-27 16:10: Jake owes update / allucent_notes_20251118_192630: Zack Goertz on 2025-10-27T19:25:53.887Z: Not started working on recovery plan / Jason Johnston on 2025-10-27 16:10: Jake owes update / allucent_notes_20251111_182405: Zack Goertz on 2025-10-27T19:25:53.887Z: Not started working on recovery plan / Jason Johnston on 2025-10-27 16:10: Jake owes update / allucent_notes_20251104_160200: Zack Goertz on 2025-10-27T19:25:53.887Z: Not started working on recovery plan / Jason Johnston on 2025-10-27 16:10: Jake owes update / allucent_notes_20251028_163138: Zack Goertz on 2025-10-27T19:25:53.887Z: Not started working on recovery plan / Jason Johnston on 2025-10-27 16:10: Jake owes update / allucent_notes_20251027_224008: Zack Goertz on 2025-10-27T19:25:53.887Z: Not started working on recovery plan / Jason Johnston on 2025-10-27 16:10: Jake owes update / allucent_notes_20251230_164549: Zack Goertz on 2025-10-27T19:25:53.887Z: Not started working on recovery plan / Jason Johnston on 2025-10-27 16:10: Jake owes update / allucent_notes: 2025-10-27T19:25:53.887Z - User: Zack Goertz - Date Added: 2025-10-27T19:25:53.887Z - Note: Not started working on recovery plan / 2025-10-27 16:10 - User: Jason Johnston - Date Added: 2025-10-27 16:10 - Note: Jake owes update
- QTS-10391: allucent_notes_20251104_160200: Jason Johnston on 2025-10-28 15:10: Unactualize and move the start to 10/30. / allucent_notes_20251028_163138: Jason Johnston on 2025-10-28 15:10: Unactualize and move the start to 10/30. / allucent_notes: 2025-10-28 15:10 - User: Jason Johnston - Date Added: 2025-10-28 15:10 - Note: Unactualize and move the start to 10/30.
- QTS-10891: allucent_notes_20251216_165335: David Wiltberger on 2025-11-04 14:11: not in sequence right / David Wiltberger on 2025-11-17 16:11: out of sequence / Jason Johnston on 2025-12-01 10:37: Man power reallocated to FOH, BOH, and Zone 1. Rough in is incomplete. / Jason Johnston on 2025-12-16 07:58: Pushing inspection until BOH is complete and in wall can be closed out. / allucent_notes_20251209_203830: David Wiltberger on 2025-11-04 14:11: not in sequence right / David Wiltberger on 2025-11-17 16:11: out of sequence / Jason Johnston on 2025-12-01 10:37: Man power reallocated to FOH, BOH, and Zone 1. Rough in is incomplete. / allucent_notes_20251202_153722: David Wiltberger on 2025-11-04 14:11: not in sequence right / David Wiltberger on 2025-11-17 16:11: out of sequence / Jason Johnston on 2025-12-01 10:37: Man power reallocated to FOH, BOH, and Zone 1. Rough in is incomplete. / allucent_notes_20251118_192630: David Wiltberger on 2025-11-04 14:11: not in sequence right / David Wiltberger on 2025-11-17 16:11: out of sequence / allucent_notes_20251111_182405: David Wiltberger on 2025-11-04 14:11: not in sequence right / allucent_notes_20251104_160200: David Wiltberger on 2025-11-04 14:11: not in sequence right / allucent_notes_20251230_164549: David Wiltberger on 2025-11-04 14:11: not in sequence right / David Wiltberger on 2025-11-17 16:11: out of sequence / Jason Johnston on 2025-12-01 10:37: Man power reallocated to FOH, BOH, and Zone 1. Rough in is incomplete. / Jason Johnston on 2025-12-16 07:58: Pushing inspection until BOH is complete and in wall can be closed out. / allucent_notes: 2025-11-04 14:11 - User: David Wiltberger - Date Added: 2025-11-04 14:11 - Note: not in sequence right / 2025-11-17 16:11 - User: David Wiltberger - Date Added: 2025-11-17 16:11 - Note: out of sequence / 2025-12-01 10:37 - User: Jason Johnston - Date Ad
- QTS-1002460: allucent_notes_20251216_165335: Zack Goertz on 2025-10-27T19:25:53.887Z: Not started working on recovery plan / Jason Johnston on 2025-10-27 16:10: Jake owes update / allucent_notes_20251209_203830: Zack Goertz on 2025-10-27T19:25:53.887Z: Not started working on recovery plan / Jason Johnston on 2025-10-27 16:10: Jake owes update / allucent_notes_20251202_153722: Zack Goertz on 2025-10-27T19:25:53.887Z: Not started working on recovery plan / Jason Johnston on 2025-10-27 16:10: Jake owes update / allucent_notes_20251118_192630: Zack Goertz on 2025-10-27T19:25:53.887Z: Not started working on recovery plan / Jason Johnston on 2025-10-27 16:10: Jake owes update / allucent_notes_20251111_182405: Zack Goertz on 2025-10-27T19:25:53.887Z: Not started working on recovery plan / Jason Johnston on 2025-10-27 16:10: Jake owes update / allucent_notes_20251104_160200: Zack Goertz on 2025-10-27T19:25:53.887Z: Not started working on recovery plan / Jason Johnston on 2025-10-27 16:10: Jake owes update / allucent_notes_20251028_163138: Zack Goertz on 2025-10-27T19:25:53.887Z: Not started working on recovery plan / Jason Johnston on 2025-10-27 16:10: Jake owes update / allucent_notes_20251027_224008: Zack Goertz on 2025-10-27T19:25:53.887Z: Not started working on recovery plan / Jason Johnston on 2025-10-27 16:10: Jake owes update / allucent_notes_20251230_164549: Zack Goertz on 2025-10-27T19:25:53.887Z: Not started working on recovery plan / Jason Johnston on 2025-10-27 16:10: Jake owes update / allucent_notes: 2025-10-27T19:25:53.887Z - User: Zack Goertz - Date Added: 2025-10-27T19:25:53.887Z - Note: Not started working on recovery plan / 2025-10-27 16:10 - User: Jason Johnston - Date Added: 2025-10-27 16:10 - Note: Jake owes update
- QTS-1002440: allucent_notes_20251216_165335: Zack Goertz on 2025-10-27T19:25:53.887Z: Not started working on recovery plan / Jason Johnston on 2025-10-27 16:10: Jake owes update / allucent_notes_20251209_203830: Zack Goertz on 2025-10-27T19:25:53.887Z: Not started working on recovery plan / Jason Johnston on 2025-10-27 16:10: Jake owes update / allucent_notes_20251202_153722: Zack Goertz on 2025-10-27T19:25:53.887Z: Not started working on recovery plan / Jason Johnston on 2025-10-27 16:10: Jake owes update / allucent_notes_20251118_192630: Zack Goertz on 2025-10-27T19:25:53.887Z: Not started working on recovery plan / Jason Johnston on 2025-10-27 16:10: Jake owes update / allucent_notes_20251111_182405: Zack Goertz on 2025-10-27T19:25:53.887Z: Not started working on recovery plan / Jason Johnston on 2025-10-27 16:10: Jake owes update / allucent_notes_20251104_160200: Zack Goertz on 2025-10-27T19:25:53.887Z: Not started working on recovery plan / Jason Johnston on 2025-10-27 16:10: Jake owes update / allucent_notes_20251028_163138: Zack Goertz on 2025-10-27T19:25:53.887Z: Not started working on recovery plan / Jason Johnston on 2025-10-27 16:10: Jake owes update / allucent_notes_20251027_224008: Zack Goertz on 2025-10-27T19:25:53.887Z: Not started working on recovery plan / Jason Johnston on 2025-10-27 16:10: Jake owes update / allucent_notes_20251230_164549: Zack Goertz on 2025-10-27T19:25:53.887Z: Not started working on recovery plan / Jason Johnston on 2025-10-27 16:10: Jake owes update / allucent_notes: 2025-10-27T19:25:53.887Z - User: Zack Goertz - Date Added: 2025-10-27T19:25:53.887Z - Note: Not started working on recovery plan / 2025-10-27 16:10 - User: Jason Johnston - Date Added: 2025-10-27 16:10 - Note: Jake owes update
- QTS-1002450: allucent_notes_20251216_165335: Zack Goertz on 2025-10-27T19:25:53.887Z: Not started working on recovery plan / Jason Johnston on 2025-10-27 16:10: Jake owes update / allucent_notes_20251209_203830: Zack Goertz on 2025-10-27T19:25:53.887Z: Not started working on recovery plan / Jason Johnston on 2025-10-27 16:10: Jake owes update / allucent_notes_20251202_153722: Zack Goertz on 2025-10-27T19:25:53.887Z: Not started working on recovery plan / Jason Johnston on 2025-10-27 16:10: Jake owes update / allucent_notes_20251118_192630: Zack Goertz on 2025-10-27T19:25:53.887Z: Not started working on recovery plan / Jason Johnston on 2025-10-27 16:10: Jake owes update / allucent_notes_20251111_182405: Zack Goertz on 2025-10-27T19:25:53.887Z: Not started working on recovery plan / Jason Johnston on 2025-10-27 16:10: Jake owes update / allucent_notes_20251104_160200: Zack Goertz on 2025-10-27T19:25:53.887Z: Not started working on recovery plan / Jason Johnston on 2025-10-27 16:10: Jake owes update / allucent_notes_20251028_163138: Zack Goertz on 2025-10-27T19:25:53.887Z: Not started working on recovery plan / Jason Johnston on 2025-10-27 16:10: Jake owes update / allucent_notes_20251027_224008: Zack Goertz on 2025-10-27T19:25:53.887Z: Not started working on recovery plan / Jason Johnston on 2025-10-27 16:10: Jake owes update / allucent_notes_20251230_164549: Zack Goertz on 2025-10-27T19:25:53.887Z: Not started working on recovery plan / Jason Johnston on 2025-10-27 16:10: Jake owes update / allucent_notes: 2025-10-27T19:25:53.887Z - User: Zack Goertz - Date Added: 2025-10-27T19:25:53.887Z - Note: Not started working on recovery plan / 2025-10-27 16:10 - User: Jason Johnston - Date Added: 2025-10-27 16:10 - Note: Jake owes update
- QTS-15611: allucent_notes_20251216_165335: Jason Johnston on 2025-11-19T02:24:57.009Z: undo / Jason Johnston on 2025-12-09 20:31: Need update from team / Jason Johnston on 2025-12-16 08:25: Not complete. / allucent_notes_20251209_203830: Jason Johnston on 2025-11-19T02:24:57.009Z: undo / Jason Johnston on 2025-12-09 20:31: Need update from team / allucent_notes_20251202_153722: Jason Johnston on 2025-11-19T02:24:57.009Z: undo / allucent_notes_20251118_192630: Jason Johnston on 2025-11-19T02:24:57.009Z: undo / allucent_notes_20251230_164549: Jason Johnston on 2025-11-19T02:24:57.009Z: undo / Jason Johnston on 2025-12-09 20:31: Need update from team / Jason Johnston on 2025-12-16 08:25: Not complete. / David Wiltberger on 2025-12-30 16:18: no update / Scheduler Notes: Jason Johnston on 2025-11-19T02:24:57.009Z: undo / Jason Johnston on 2025-12-09 20:31: Need update from team / Jason Johnston on 2025-12-16 08:25: Not complete. / David Wiltberger on 2025-12-30 16:18: no update / 5/19 - Activity has not started, actualized and duplicated to properly track / activity / Notes: 5/19 - Activity has not started, actualized and duplicated to properly track activity / allucent_notes: 2025-11-19T02:24:57.009Z - User: Jason Johnston - Date Added: 2025-11-19T02:24:57.009Z - Note: undo / 2025-12-09 20:31 - User: Jason Johnston - Date Added: 2025-12-09 20:31 - Note: Need update from team / 2025-12-16 08:25 - User: Jason Johnston - Date A
- QTS-15601: Scheduler Notes: 3/24: 80% Complete. / Notes: 3/24: 80% Complete.
- QTS-43751: Scheduler Notes: 3/24: Line up A pulled. / 4/14: 100% pulled. / 5/19: Activity has not started, activity deleted and duplicated to properly / track progress. / Notes: 5/19: Activity has not started, activity deleted and duplicated to properly track progress. 4/14: 100% pulled. 3/24: Line up A pulled.
- QTS-1008730: allucent_notes_20251216_165335: Jason Johnston on 2025-11-19T02:24:57.009Z: undo / Jason Johnston on 2025-12-09 20:31: Need update from team / Jason Johnston on 2025-12-16 08:25: Not complete. / allucent_notes_20251209_203830: Jason Johnston on 2025-11-19T02:24:57.009Z: undo / Jason Johnston on 2025-12-09 20:31: Need update from team / allucent_notes_20251202_153722: Jason Johnston on 2025-11-19T02:24:57.009Z: undo / allucent_notes_20251118_192630: Jason Johnston on 2025-11-19T02:24:57.009Z: undo / allucent_notes_20251230_164549: Jason Johnston on 2025-11-19T02:24:57.009Z: undo / Jason Johnston on 2025-12-09 20:31: Need update from team / Jason Johnston on 2025-12-16 08:25: Not complete. / David Wiltberger on 2025-12-30 16:18: no update / allucent_notes: 2025-11-19T02:24:57.009Z - User: Jason Johnston - Date Added: 2025-11-19T02:24:57.009Z - Note: undo / 2025-12-09 20:31 - User: Jason Johnston - Date Added: 2025-12-09 20:31 - Note: Need update from team / 2025-12-16 08:25 - User: Jason Johnston - Date A
- QTS-1012190: Scheduler Notes: 4/14: 100% pulled. 3/24: Line up A pulled. / Notes: 4/14: 100% pulled. 3/24: Line up A pulled.
- QTS-1012170: allucent_notes_20251216_165335: Jason Johnston on 2025-11-19T02:24:57.009Z: undo / Jason Johnston on 2025-12-09 20:31: Need update from team / Jason Johnston on 2025-12-16 08:25: Not complete. / allucent_notes_20251209_203830: Jason Johnston on 2025-11-19T02:24:57.009Z: undo / Jason Johnston on 2025-12-09 20:31: Need update from team / allucent_notes_20251202_153722: Jason Johnston on 2025-11-19T02:24:57.009Z: undo / allucent_notes_20251118_192630: Jason Johnston on 2025-11-19T02:24:57.009Z: undo / allucent_notes_20251230_164549: Jason Johnston on 2025-11-19T02:24:57.009Z: undo / Jason Johnston on 2025-12-09 20:31: Need update from team / Jason Johnston on 2025-12-16 08:25: Not complete. / David Wiltberger on 2025-12-30 16:18: no update / Scheduler Notes: Jason Johnston on 2025-11-19T02:24:57.009Z: undo / Jason Johnston on 2025-12-09 20:31: Need update from team / Jason Johnston on 2025-12-16 08:25: Not complete. / David Wiltberger on 2025-12-30 16:18: no update / 5/19 - Activity has not started, actualized and duplicated to properly track / activity / Notes: 5/19 - Activity has not started, actualized and duplicated to properly track activity / allucent_notes: 2025-11-19T02:24:57.009Z - User: Jason Johnston - Date Added: 2025-11-19T02:24:57.009Z - Note: undo / 2025-12-09 20:31 - User: Jason Johnston - Date Added: 2025-12-09 20:31 - Note: Need update from team / 2025-12-16 08:25 - User: Jason Johnston - Date A
- QTS-1008740: allucent_notes_20251216_165335: Jason Johnston on 2025-11-19T02:24:57.009Z: undo / Jason Johnston on 2025-12-09 20:31: Need update from team / Jason Johnston on 2025-12-16 08:25: Not complete. / allucent_notes_20251209_203830: Jason Johnston on 2025-11-19T02:24:57.009Z: undo / Jason Johnston on 2025-12-09 20:31: Need update from team / allucent_notes_20251202_153722: Jason Johnston on 2025-11-19T02:24:57.009Z: undo / allucent_notes_20251118_192630: Jason Johnston on 2025-11-19T02:24:57.009Z: undo / allucent_notes_20251230_164549: Jason Johnston on 2025-11-19T02:24:57.009Z: undo / Jason Johnston on 2025-12-09 20:31: Need update from team / Jason Johnston on 2025-12-16 08:25: Not complete. / David Wiltberger on 2025-12-30 16:18: no update / allucent_notes: 2025-11-19T02:24:57.009Z - User: Jason Johnston - Date Added: 2025-11-19T02:24:57.009Z - Note: undo / 2025-12-09 20:31 - User: Jason Johnston - Date Added: 2025-12-09 20:31 - Note: Need update from team / 2025-12-16 08:25 - User: Jason Johnston - Date A
- QTS-5820: Notes: Acutalized by mistake - working in DH 1200
- QTS-7160: Notes: Waiting on SS
- QTS-5880: Scheduler Notes: 8/4/26-Not started due to Manpower / Notes: 8/4/26-Not started due to Manpower

| ID | WBS | Activity | Duration | Start | Finish | Predecessors | Complete | Remaining | Planned start | Planned finish | Total float | Free float | Calendar | Allucent CSI Group | Project Section | Layton Discipline | Baseline | Project Section-1 | Location | Level | Contract | Phase-1-1 | Layton Super | Trade Partner | NICK | Notes | TFO-CONST ONLY |
| --- | --- | --- | --- | --- | --- | --- | --- | --- | --- | --- | --- | --- | --- | --- | --- | --- | --- | --- | --- | --- | --- | --- | --- | --- | --- | --- | --- |
|  | 7 | **Gallery 2203 Mechanical** |  | 2025-10-10 | 2026-09-03 |  |  |  |  |  |  |  |  |  |  |  |  |  |  |  |  |  |  |  |  |  |  |
| QTS-44591 |  | DH 2200 / Mechanical Gallery 2203 // Install OH Mechanical Hangers | 7d | 2025-10-10 A | 2025-10-20 A | QTS-44461 | 100% |  |  |  |  |  |  | 01ADMIN | Construction | Mechanical | IGMP | Construction | DH2100 | Level 2 | BAB |  |  |  |  |  |  |
| QTS-10381 |  | DH 2200 / Mechanical Gallery 2203 // Frame for 2203 Exterior Wall | 5d | 2025-10-21 A | 2025-10-27 A | QTS-8601 SS, QTS-8591, QTS-6911, QTS-4581, QTS-6901 | 100% |  |  |  |  |  |  | 01ADMIN | Construction | Build Out | IGMP | Construction | DH2200 |  | BAB | Phase 2 | Doug Hayes |  |  |  |  |
| QTS-14711 |  | DH 2200 / Mechanical Gallery 2203 // OH Mechanical Piping | 10d | 2025-10-21 A | 2025-11-17 A | QTS-44591 | 100% |  | 2025-10-21 | 2025-11-03 |  |  |  | 01ADMIN | Construction | Mechanical | IGMP | Construction | DH2200 |  | BAB | Phase 2 |  |  |  |  |  |
| QTS-14701 |  | DH 2200 / Mechanical Gallery 2203 // Install VESDA | 8d | 2025-10-23 A | 2025-11-03 A | QTS-14691 | 100% |  |  |  |  |  |  | 01ADMIN | Construction | Electrical | IGMP | Construction | DH2200 |  | BAB | Phase 2 |  |  |  |  |  |
| QTS-11571 |  | DH 2200 / Mechanical Gallery 2203 // Frame Fan Wall | 5d | 2025-10-28 A | 2025-11-05 A | QTS-14711, QTS-10381 | 100% |  | 2025-10-28 | 2025-11-03 |  |  |  | 01ADMIN | Construction | Build Out | IGMP | Construction | DH2200 |  | BAB | Phase 2 | Doug Hayes |  |  |  |  |
| QTS-12201 |  | DH 2200 / Mechanical Gallery 2203 // Hang, Tape, & Finish Drywall for 2203 Exterior Wall | 10d | 2025-10-28 A | 2025-11-10 A | QTS-10381 | 100% |  |  |  |  |  |  | 01ADMIN | Construction | Build Out | IGMP | Construction | DH2200 |  | BAB | Phase 2 | Doug Hayes |  |  |  |  |
| QTS-12551 |  | DH 2200 / Mechanical Gallery 2203 // In Wall Electrical Rough for Fan Wall | 2d | 2025-11-04 A | 2025-11-04 A | QTS-11571 FF+1d | 100% |  | 2025-11-04 | 2025-11-05 |  |  |  | 01ADMIN | Construction | Electrical | IGMP | Construction | DH2200 |  | BAB | Phase 2 |  |  |  |  |  |
| QTS-16521 |  | DH 2200 / Mechanical Gallery 2203 // Install OH Electrical Conduit & Grounding | 10d | 2025-11-12 A | 2026-05-26 A | QTS-14711 | 100% |  | 2025-11-11 | 2025-11-21 |  |  | QTS-PHX3 DC1 - 6 day w/ Holidays | 01ADMIN | Construction | Electrical | IGMP | Construction | DH2200 |  | BAB | Phase 2 |  |  |  |  |  |
| QTS-13711 |  | DH 2200 / Mechanical Gallery 2203 // Paint Walls for 2203 Wall | 3d | 2025-11-19 A | 2025-11-21 A | QTS-12201 | 100% |  |  |  |  |  |  | 01ADMIN | Construction | Build Out | IGMP | Construction | DH2200 |  | BAB | Phase 2 |  |  |  |  |  |
| QTS-14181 |  | DH 2200 / Mechanical Gallery 2203 // Top of Wall Fire Stop for 2203 Wall Exterior Wall | 2d | 2025-11-24 A | 2025-11-25 A | QTS-13711 | 100% |  |  |  |  |  |  | 01ADMIN | Construction | Build Out | IGMP | Construction | DH2200 |  | BAB | Phase 2 |  |  |  |  |  |
| QTS-14721 |  | DH 2200 / Mechanical Gallery 2203 // Install Security Screen Above Fan Wall | 3d | 2026-01-19 A | 2026-01-25 A | QTS-1001250, QTS-14701, QTS-99680, QTS-13721 | 100% |  | 2026-01-20 | 2026-01-22 |  |  | QTS-PHX3 DC1 - 6 day w/ Holidays | 01ADMIN | Construction | Build Out | IGMP | Construction | DH2200 |  | BAB | Phase 2 |  |  |  |  |  |
| QTS-13721 |  | DH 2200 / Mechanical Gallery 2203 // Paint Fan Walls | 5d | 2026-01-20 A | 2026-01-27 A | QTS-12991 FF, QTS-12841 FF | 100% |  | 2026-01-20 | 2026-01-24 |  |  | QTS-PHX3 DC1 - 6 day w/ Holidays | 01ADMIN | Construction | Build Out | IGMP | Construction | DH2200 |  | BAB | Phase 2 |  |  |  |  |  |
| QTS-12841 |  | DH 2200 / Mechanical Gallery 2203 // In Wall Inspection for Fan Wall | 1d | 2026-01-21 A | 2026-01-21 A | QTS-12551 | 100% |  |  |  |  |  | QTS-PHX3 DC1 - 6 day w/ Holidays | 01ADMIN | Construction | Mechanical | IGMP | Construction | DH2200 |  | BAB | Phase 2 |  |  |  |  |  |
| QTS-12991 |  | DH 2200 / Mechanical Gallery 2203 // Hang, Tape, & Finish Fan Drywall Exterior Wall | 5d | 2026-01-22 A | 2026-01-26 A | QTS-12551 | 100% |  | 2026-01-22 | 2026-01-27 |  |  | QTS-PHX3 DC1 - 6 day w/ Holidays | 01ADMIN | Construction | Build Out | IGMP | Construction | DH2200 |  | BAB | Phase 2 |  |  |  |  |  |
| QTS-15281 |  | DH 2200 / Mechanical Gallery 2203 // OFCI - L2 SET IN PLACE - Eq Type # - DH CRAH - 14 units | 6d | 2026-02-13 A | 2026-02-13 A | QTS-14191, QTS-14711, QTS-34881, QTS-34871, QTS-34861, QTS-34851, QTS-34841, QTS-34831, QTS-34821, QTS-34811, QTS-34801, QTS-34791, QTS-34781, QTS-34771, QTS-34761, QTS-34751, QTS-14721, QTS-13711 | 100% |  | 2026-02-13 | 2026-02-19 |  |  | QTS-PHX3 DC1 - 6 day w/ Holidays |  | Construction | Mechanical | IGMP | Construction | DH2200 |  | BAB | Phase 2 |  |  |  |  |  |
| QTS-16511 |  | DH 2200 / Mechanical Gallery 2203 // Install Electrical Tray | 5d | 2026-04-10 A | 2026-04-16 A | QTS-14711, QTS-16521 SS | 100% |  | 2026-07-09 | 2026-07-14 |  |  | QTS-PHX3 DC1 - 6 day w/ Holidays |  | Construction | LV | IGMP | Construction | DH2200 |  | BAB | Phase 2 | Oscar Armenta |  |  |  |  |
| QTS-1008760 |  | DH 2200 / Mechanical Gallery 2203 // Install OH EPMS/BMS Conduit & Grounding | 5d | 2026-05-04 A | 2026-05-18 A | QTS-14711 | 100% |  | 2026-06-03 | 2026-06-08 |  |  | QTS-PHX3 DC1 - 6 day w/ Holidays | 01ADMIN | Construction | Electrical | IGMP | Construction | DH2200 |  | BAB | Phase 2 | Oscar Armenta |  |  |  |  |
| QTS-1008750 |  | DH 2200 / Mechanical Gallery 2203 // Install OH FA Conduit & Grounding | 5d | 2026-05-11 A | 2026-05-25 A | QTS-14711 | 100% |  | 2026-06-03 | 2026-06-08 |  |  | QTS-PHX3 DC1 - 6 day w/ Holidays | 01ADMIN | Construction | Electrical | IGMP | Construction | DH2200 |  | BAB | Phase 2 | Oscar Armenta |  |  |  |  |
| QTS-46611 |  | DH 2200 / Mechanical Gallery 2203 // Set EPMS/BMS Panels | 4d | 2026-06-03 A | 2026-06-17 A | QTS-13721 | 100% |  | 2026-06-03 | 2026-06-06 |  |  | QTS-PHX3 DC1 - 6 day w/ Holidays | 01ADMIN | Construction | Electrical | IGMP | Construction | DH2200 |  | BAB | Phase 2 | Oscar Armenta |  |  |  |  |
| QTS-16281 |  | DH 2200 / Mechanical Gallery 2203 // CRAH Unit Mechanical Connections | 5d | 2026-06-08 A | 2026-06-12 A | QTS-15281, QTS - 26071 | 100% |  | 2026-07-15 | 2026-07-20 |  |  | QTS-PHX3 DC1 - 6 day w/ Holidays |  | Construction | Mechanical | IGMP | Construction | DH2200 |  | BAB | Phase 2 | Mechanical |  |  |  |  |
| QTS-17111 |  | DH 2200 / Mechanical Gallery 2203 // Install Basket Tray for LV | 4d | 2026-06-25 A | 2026-06-30 A | QTS-16521 | 100% |  | 2026-07-10 | 2026-07-14 |  |  | QTS-PHX3 DC1 - 6 day w/ Holidays |  | Construction | LV | IGMP | Construction | DH2200 |  | BAB | Phase 2 | Low Voltage |  |  |  |  |
| QTS-1010510 |  | DH 2200 / Mechanical Gallery 2203 // Pull Fiber from MDF to DCIM 2203 | 1d | 2026-06-30 A | 2026-06-30 A | QTS-17111 | 100% |  | 2026-07-01 | 2026-07-01 |  |  | QTS-PHX3 DC1 - 6 day w/ Holidays |  | Construction | LV | IGMP | Construction | DH2200 |  | BAB | Phase 2 | Low Voltage |  |  |  |  |
| QTS-1010520 |  | DH 2200 / Mechanical Gallery 2203 // Terminate and Test Fiber from MDF to DCIM 2203 | 3d | 2026-06-30 A | 2026-07-10 A | QTS-1010510 | 100% |  | 2026-07-01 | 2026-07-06 |  |  | QTS-PHX3 DC1 - 6 day w/ Holidays |  | Construction | LV | IGMP | Construction | DH2200 |  | BAB | Phase 2 | Low Voltage |  |  |  |  |
| QTS-1010530 |  | DH 2200 / Mechanical Gallery 2203 // Terminate and Test BMS & EPMS Cable to DCIM 2203 | 4d | 2026-06-30 A | 2026-07-10 A | QTS-17961, QTS-16511, QTS-1008750, QTS-1008760 | 100% |  | 2026-07-01 | 2026-07-07 |  |  | QTS-PHX3 DC1 - 6 day w/ Holidays |  | Construction | LV | IGMP | Construction | DH2200 |  | BAB | Phase 2 | Low Voltage |  |  |  |  |
| QTS-17961 |  | DH 2200 / Mechanical Gallery 2203 // Pull BMS & EPMS Cable to DCIM 2203 | 1d | 2026-06-30 A | 2026-06-30 A | QTS-46611, QTS-17111, QTS-1010510 SS, QTS-1010510 FF | 100% |  | 2026-07-01 | 2026-07-01 |  |  | QTS-PHX3 DC1 - 6 day w/ Holidays |  | Construction | LV | IGMP | Construction | DH2200 |  | BAB | Phase 2 | Low Voltage |  |  |  |  |
| QTS-2050 |  | DH 2200 / Gallery 2202 / Terminate Remaining Wire RPP Feeders @ COD's | 5d | 2026-07-08 A | 2026-07-27 A | QTS-2220 SS | 100% |  | 2026-07-08 | 2026-07-13 |  |  | **GLOBAL - 6 Day Workweek w/ Basic Holidays |  |  | Electrical |  |  |  |  | BAB |  | Electrical |  |  |  |  |
| QTS-2800 |  | TFO SCOPE // DH 2200 / Gallery 2203 / Install Remaining Technical Loop Piping (Stainless) | 3d | 2026-07-14 A | 2026-08-04 A | QTS-5820 SS, QTS - 5320 | 100% |  | 2026-07-15 | 2026-07-17 |  |  | **GLOBAL - 6 Day Workweek w/ Basic Holidays |  |  | Mechanical |  |  |  |  | TFO |  | Mechanical | Bel-Aire | NICK |  |  |
| QTS-2840 |  | DH 2200 / Gallery 2203 / Terminate / Test Remaining LV Cable @ DCIM 2203 | 4d | 2026-07-15 A | 2026-07-20 A | QTS-1010530 | 100% |  | 2026-07-22 | 2026-07-25 |  |  | **GLOBAL - 6 Day Workweek w/ Basic Holidays |  |  | LV |  |  |  |  | BAB |  | Low Voltage | E2 |  |  |  |
| QTS-7200 |  | DH 2200 / Gallery 2203 / Install Raceway for DCIM Recpt | 3d | 2026-07-25 A | 2026-07-28 A | QTS-1010530 | 100% |  | 2026-08-01 | 2026-08-04 |  |  | **GLOBAL - 6 Day Workweek w/ Basic Holidays |  |  | Electrical |  |  |  |  | BAB |  | Electrical | REI |  |  |  |
| QTS-7190 |  | DH 2200 / Gallery 2203 / Install Remaining Vesda Panels | 3d | 2026-07-27 A | 2026-07-29 A | QTS-1010530 | 100% |  | 2026-07-29 | 2026-07-31 |  |  | **GLOBAL - 6 Day Workweek w/ Basic Holidays |  |  | Electrical |  |  |  |  | BAB |  | Jason Hendley | Nexus |  | 7/29 done |  |
| QTS-2850 |  | DH 2200 / Gallery 2203 / Install Remaining Grounding @ CDU's | 2d | 2026-07-28 A | 2026-07-29 A | QTS-2050 | 100% |  | 2026-07-30 | 2026-07-31 |  |  | **GLOBAL - 6 Day Workweek w/ Basic Holidays |  |  | Electrical |  |  |  |  | BAB |  | Electrical | REI |  |  |  |
| QTS-1014310 |  | DH 2200 / Gallery 2203 / Terminate Remaining Grounding @ CDU's | 2d | 2026-08-03 A | 2026-08-04 A | QTS-2850 | 100% |  | 2026-08-08 | 2026-08-10 |  |  | **GLOBAL - 6 Day Workweek w/ Basic Holidays |  |  | Electrical |  |  |  |  | BAB |  | Electrical | REI |  | 8/4 done |  |
| QTS-2890 |  | DH 2200 / Gallery 2203 / Final Paint | 2d | 2026-08-03 A | 2026-08-04 A | QTS-5870 | 100% |  | 2026-08-25 | 2026-08-26 |  |  | **GLOBAL - 6 Day Workweek w/ Basic Holidays |  |  | Build Out |  |  |  |  | BAB |  | Jason Hendley | PPC |  |  |  |
| QTS-7240 |  | TFO SCOPE // DH 2200 / Gallery 2203 / Pull LV @ CDU's | 2d | 2026-08-03 A | 2026-08-05 A | QTS-2850, QTS-1014310 | 100% |  | 2026-08-11 | 2026-08-12 |  |  | **GLOBAL - 6 Day Workweek w/ Basic Holidays |  |  | LV |  |  |  |  | TFO |  | Low Voltage | Cannon and Wendt | NICK | 8/3-8/5 done | TFO CONST |
| QTS-7210 |  | DH 2200 / Gallery 2203 / Pull and terminate DCIM Recpt | 3d | 2026-08-10 A | 2026-08-21 | QTS-7200 |  | 3d | 2026-08-12 | 2026-08-14 | -89d | 9d | **GLOBAL - 6 Day Workweek w/ Basic Holidays |  |  | Electrical |  |  |  |  | BAB |  | Electrical | REI |  | Raceway complete - Needs to be pulled |  |
| QTS-7220 |  | DH 2200 / Gallery 2203 / Install Raceway and Lighting | 5d | 2026-08-19 | 2026-08-24 | QTS-2800 |  |  |  |  | -96d | 0d | **GLOBAL - 6 Day Workweek w/ Basic Holidays |  |  | Electrical |  |  |  |  | BAB |  | Electrical | REI |  | Waiting on SS |  |
| QTS-7250 |  | TFO SCOPE // DH 2200 / Gallery 2203 / Terminate / Test LV @ CDU's | 2d | 2026-08-19 | 2026-08-20 | QTS-7240 |  |  |  |  | -88d | 10d | **GLOBAL - 6 Day Workweek w/ Basic Holidays |  |  | LV |  |  |  |  | TFO |  | Low Voltage | Prime | NICK |  | TFO CONST |
| QTS-2860 |  | DH 2200 / Gallery 2203 / Hang Tape Finish Drywall Patches | 4d | 2026-08-24 | 2026-08-27 | QTS-5850 |  |  |  |  | -44d | 0d | **GLOBAL - 6 Day Workweek w/ Basic Holidays |  |  | Build Out |  |  |  |  | BAB |  | Jason Hendley | PCI |  |  |  |
| QTS-7230 |  | DH 2200 / Gallery 2203 / Pull and Terminate lighting | 5d | 2026-08-25 | 2026-08-29 | QTS-7220 |  |  |  |  | -96d | 2d | **GLOBAL - 6 Day Workweek w/ Basic Holidays |  |  | Electrical |  |  |  |  | BAB |  | Electrical | REI |  | Waiting on SS |  |
| QTS-6060 |  | DH 2200 / Gallery 2203 / Install Fire Extinguishers | 2d | 2026-08-26 | 2026-08-27 | QTS-2890, QTS-5880 |  |  |  |  | -106d | 0d | **GLOBAL - 6 Day Workweek w/ Basic Holidays |  |  | Build Out |  |  |  |  | BAB |  | Jake Shimmin | PPC |  |  |  |
| QTS-2900 |  | DH 2200 / Gallery 2203 / Seal Concrete Floor | 2d | 2026-08-28 | 2026-08-29 | QTS-6060 |  |  |  |  | -98d | 0d | **GLOBAL - 6 Day Workweek w/ Basic Holidays |  |  | Build Out |  |  |  |  | BAB |  | Ben Ribble | Bldg Solutions |  |  |  |
| QTS-2910 |  | DH 2200 / Gallery 2203 / Install Rubber base | 2d | 2026-08-31 | 2026-09-01 | QTS-2900 |  |  |  |  | -98d | 0d | **GLOBAL - 6 Day Workweek w/ Basic Holidays |  |  | Build Out |  |  |  |  | BAB |  | Ben Ribble | Wholesale Flooring |  |  |  |
| QTS-2920 |  | DH 2200 / Gallery 2203 / Clean | 2d | 2026-09-02 | 2026-09-03 | QTS-2910, QTS-7210, QTS-7230, QTS-7250 |  |  |  |  | -98d | 14d | **GLOBAL - 6 Day Workweek w/ Basic Holidays |  |  | Build Out |  |  |  |  | BAB |  | Ed Carter | AGDC |  |  |  |

Notes:
- QTS-14711: allucent_notes_20251118_192630: David Wiltberger on 2025-11-04 14:11: not in sequence right / David Wiltberger on 2025-11-17 16:11: out of sequence / allucent_notes_20251111_182405: David Wiltberger on 2025-11-04 14:11: not in sequence right / allucent_notes_20251104_160200: David Wiltberger on 2025-11-04 14:11: not in sequence right / allucent_notes: 2025-11-04 14:11 - User: David Wiltberger - Date Added: 2025-11-04 14:11 - Note: not in sequence right / 2025-11-17 16:11 - User: David Wiltberger - Date Added: 2025-11-17 16:11 - Note: out of sequence
- QTS-11571: allucent_notes_20251118_192630: Zack Goertz on 2025-11-03T16:58:22.054Z: Fan wall cannot be framed until bel-aire installs chiller mains. They are currently half way through 1201 mechanical gallery / Jason Johnston on 2025-11-04 16:11: Update needed / allucent_notes_20251111_182405: Zack Goertz on 2025-11-03T16:58:22.054Z: Fan wall cannot be framed until bel-aire installs chiller mains. They are currently half way through 1201 mechanical gallery / Jason Johnston on 2025-11-04 16:11: Update needed / allucent_notes_20251104_160200: Zack Goertz on 2025-11-03T16:58:22.054Z: Fan wall cannot be framed until bel-aire installs chiller mains. They are currently half way through 1201 mechanical gallery / Jason Johnston on 2025-11-04 16:11: Update needed / allucent_notes: 2025-11-03T16:58:22.054Z - User: Zack Goertz - Date Added: 2025-11-03T16:58:22.054Z - Note: Fan wall cannot be framed until bel-aire installs chiller mains. They are currently half way through 1201 mechanical gallery / 2025-11-04 16:11 - User: Jason John
- QTS-12551: allucent_notes_20251216_165335: Jason Johnston on 2025-11-11 16:11: Waiting until after early access / Jason Johnston on 2025-11-19T02:25:03.617Z: undo / David Wiltberger on 2025-12-02 14:01: no wall yet / allucent_notes_20251209_203830: Jason Johnston on 2025-11-11 16:11: Waiting until after early access / Jason Johnston on 2025-11-19T02:25:03.617Z: undo / David Wiltberger on 2025-12-02 14:01: no wall yet / allucent_notes_20251202_153722: Jason Johnston on 2025-11-11 16:11: Waiting until after early access / Jason Johnston on 2025-11-19T02:25:03.617Z: undo / David Wiltberger on 2025-12-02 14:01: no wall yet / allucent_notes_20251118_192630: Jason Johnston on 2025-11-11 16:11: Waiting until after early access / Jason Johnston on 2025-11-19T02:25:03.617Z: undo / allucent_notes_20251111_182405: Jason Johnston on 2025-11-11 16:11: Waiting until after early access / allucent_notes_20251230_164549: Jason Johnston on 2025-11-11 16:11: Waiting until after early access / Jason Johnston on 2025-11-19T02:25:03.617Z: undo / David Wiltberger on 2025-12-02 14:01: no wall yet / David Wiltberger on 2025-12-30 16:18: no update / allucent_notes: 2025-11-11 16:11 - User: Jason Johnston - Date Added: 2025-11-11 16:11 - Note: Waiting until after early access / 2025-11-19T02:25:03.617Z - User: Jason Johnston - Date Added: 2025-11-19T02:25:03.617Z - Note: undo / 2025-12-02 14:01 - User: David Wiltbe
- QTS-16521: allucent_notes_20251216_165335: Scott Masterson on 2025-11-04 14:11: Need CRAHs set (higher work activities completed) before electrical can start. Need to get estimated date of set. / Jason Johnston on 2025-11-11 16:11: Waiting until after early access / Jason Johnston on 2025-11-19T02:25:07.592Z: undo / David Wiltberger on 2025-12-02 14:01: No wall yet / Jason Johnston on 2025-12-16 07:59: won't resume until BOH is complete. / allucent_notes_20251209_203830: Scott Masterson on 2025-11-04 14:11: Need CRAHs set (higher work activities completed) before electrical can start. Need to get estimated date of set. / Jason Johnston on 2025-11-11 16:11: Waiting until after early access / Jason Johnston on 2025-11-19T02:25:07.592Z: undo / David Wiltberger on 2025-12-02 14:01: No wall yet / allucent_notes_20251202_153722: Scott Masterson on 2025-11-04 14:11: Need CRAHs set (higher work activities completed) before electrical can start. Need to get estimated date of set. / Jason Johnston on 2025-11-11 16:11: Waiting until after early access / Jason Johnston on 2025-11-19T02:25:07.592Z: undo / David Wiltberger on 2025-12-02 14:01: No wall yet / allucent_notes_20251118_192630: Scott Masterson on 2025-11-04 14:11: Need CRAHs set (higher work activities completed) before electrical can start. Need to get estimated date of set. / Jason Johnston on 2025-11-11 16:11: Waiting until after early access / Jason Johnston on 2025-11-19T02:25:07.592Z: undo / allucent_notes_20251111_182405: Scott Masterson on 2025-11-04 14:11: Need CRAHs set (higher work activities completed) before electrical can start. Need to get estimated date of set. / Jason Johnston on 2025-11-11 16:11: Waiting until after early access / allucent_notes_20251104_160200: Scott Masterson on 2025-11-04 14:11: Need CRAHs set (higher work activities completed) before electrical can start. Need to get estimated date of set. / allucent_notes_20251230_164549: Scott Masterson on 2025-11-04 14:11: Need CRAHs set (higher work activities completed) before electrical can start. Need to get estimated date of set. / Jason Johnston on 2025-11-11 16:11: Waiting until after early access / Jason Johnston on 2025-11-19T02:25:07.592Z: undo / David Wiltberger on 2025-12-02 14:01: No wall yet / Jason Johnston on 2025-12-16 07:59: won't resume until BOH is complete. / allucent_notes: 2025-11-04 14:11 - User: Scott Masterson - Date Added: 2025-11-04 14:11 - Note: Need CRAHs set (higher work activities completed) before electrical can start. Need to get estimated date of set. / 2025-11-11 16:11 - User: Jason Johnston - Date Added: 2025
- QTS-13711: allucent_notes_20251202_153722: Jason Johnston on 2025-11-11 16:11: Waiting until after early access / allucent_notes_20251118_192630: Jason Johnston on 2025-11-11 16:11: Waiting until after early access / allucent_notes_20251111_182405: Jason Johnston on 2025-11-11 16:11: Waiting until after early access / allucent_notes: 2025-11-11 16:11 - User: Jason Johnston - Date Added: 2025-11-11 16:11 - Note: Waiting until after early access
- QTS-12841: allucent_notes_20251230_164549: David Wiltberger on 2025-12-30 16:18: no update / allucent_notes: 2025-12-30 16:18 - User: David Wiltberger - Date Added: 2025-12-30 16:18 - Note: no update
- QTS-1008760: allucent_notes_20251216_165335: Scott Masterson on 2025-11-04 14:11: Need CRAHs set (higher work activities completed) before electrical can start. Need to get estimated date of set. / Jason Johnston on 2025-11-11 16:11: Waiting until after early access / Jason Johnston on 2025-11-19T02:25:07.592Z: undo / David Wiltberger on 2025-12-02 14:01: No wall yet / Jason Johnston on 2025-12-16 07:59: won't resume until BOH is complete. / allucent_notes_20251209_203830: Scott Masterson on 2025-11-04 14:11: Need CRAHs set (higher work activities completed) before electrical can start. Need to get estimated date of set. / Jason Johnston on 2025-11-11 16:11: Waiting until after early access / Jason Johnston on 2025-11-19T02:25:07.592Z: undo / David Wiltberger on 2025-12-02 14:01: No wall yet / allucent_notes_20251202_153722: Scott Masterson on 2025-11-04 14:11: Need CRAHs set (higher work activities completed) before electrical can start. Need to get estimated date of set. / Jason Johnston on 2025-11-11 16:11: Waiting until after early access / Jason Johnston on 2025-11-19T02:25:07.592Z: undo / David Wiltberger on 2025-12-02 14:01: No wall yet / allucent_notes_20251118_192630: Scott Masterson on 2025-11-04 14:11: Need CRAHs set (higher work activities completed) before electrical can start. Need to get estimated date of set. / Jason Johnston on 2025-11-11 16:11: Waiting until after early access / Jason Johnston on 2025-11-19T02:25:07.592Z: undo / allucent_notes_20251111_182405: Scott Masterson on 2025-11-04 14:11: Need CRAHs set (higher work activities completed) before electrical can start. Need to get estimated date of set. / Jason Johnston on 2025-11-11 16:11: Waiting until after early access / allucent_notes_20251104_160200: Scott Masterson on 2025-11-04 14:11: Need CRAHs set (higher work activities completed) before electrical can start. Need to get estimated date of set. / allucent_notes_20251230_164549: Scott Masterson on 2025-11-04 14:11: Need CRAHs set (higher work activities completed) before electrical can start. Need to get estimated date of set. / Jason Johnston on 2025-11-11 16:11: Waiting until after early access / Jason Johnston on 2025-11-19T02:25:07.592Z: undo / David Wiltberger on 2025-12-02 14:01: No wall yet / Jason Johnston on 2025-12-16 07:59: won't resume until BOH is complete. / allucent_notes: 2025-11-04 14:11 - User: Scott Masterson - Date Added: 2025-11-04 14:11 - Note: Need CRAHs set (higher work activities completed) before electrical can start. Need to get estimated date of set. / 2025-11-11 16:11 - User: Jason Johnston - Date Added: 2025
- QTS-1008750: allucent_notes_20251216_165335: Scott Masterson on 2025-11-04 14:11: Need CRAHs set (higher work activities completed) before electrical can start. Need to get estimated date of set. / Jason Johnston on 2025-11-11 16:11: Waiting until after early access / Jason Johnston on 2025-11-19T02:25:07.592Z: undo / David Wiltberger on 2025-12-02 14:01: No wall yet / Jason Johnston on 2025-12-16 07:59: won't resume until BOH is complete. / allucent_notes_20251209_203830: Scott Masterson on 2025-11-04 14:11: Need CRAHs set (higher work activities completed) before electrical can start. Need to get estimated date of set. / Jason Johnston on 2025-11-11 16:11: Waiting until after early access / Jason Johnston on 2025-11-19T02:25:07.592Z: undo / David Wiltberger on 2025-12-02 14:01: No wall yet / allucent_notes_20251202_153722: Scott Masterson on 2025-11-04 14:11: Need CRAHs set (higher work activities completed) before electrical can start. Need to get estimated date of set. / Jason Johnston on 2025-11-11 16:11: Waiting until after early access / Jason Johnston on 2025-11-19T02:25:07.592Z: undo / David Wiltberger on 2025-12-02 14:01: No wall yet / allucent_notes_20251118_192630: Scott Masterson on 2025-11-04 14:11: Need CRAHs set (higher work activities completed) before electrical can start. Need to get estimated date of set. / Jason Johnston on 2025-11-11 16:11: Waiting until after early access / Jason Johnston on 2025-11-19T02:25:07.592Z: undo / allucent_notes_20251111_182405: Scott Masterson on 2025-11-04 14:11: Need CRAHs set (higher work activities completed) before electrical can start. Need to get estimated date of set. / Jason Johnston on 2025-11-11 16:11: Waiting until after early access / allucent_notes_20251104_160200: Scott Masterson on 2025-11-04 14:11: Need CRAHs set (higher work activities completed) before electrical can start. Need to get estimated date of set. / allucent_notes_20251230_164549: Scott Masterson on 2025-11-04 14:11: Need CRAHs set (higher work activities completed) before electrical can start. Need to get estimated date of set. / Jason Johnston on 2025-11-11 16:11: Waiting until after early access / Jason Johnston on 2025-11-19T02:25:07.592Z: undo / David Wiltberger on 2025-12-02 14:01: No wall yet / Jason Johnston on 2025-12-16 07:59: won't resume until BOH is complete. / allucent_notes: 2025-11-04 14:11 - User: Scott Masterson - Date Added: 2025-11-04 14:11 - Note: Need CRAHs set (higher work activities completed) before electrical can start. Need to get estimated date of set. / 2025-11-11 16:11 - User: Jason Johnston - Date Added: 2025

| ID | WBS | Activity | Duration | Start | Finish | Predecessors | Complete | Remaining | Planned start | Planned finish | Total float | Free float | Calendar | Allucent CSI Group | Project Section | Layton Discipline | Baseline | Phase-1-1 | Project Section-1 | Location | Contract | Phase-1 | Level | Layton Super | If Not Started or Finished Why? | Trade Partner | TFO-CONST ONLY |
| --- | --- | --- | --- | --- | --- | --- | --- | --- | --- | --- | --- | --- | --- | --- | --- | --- | --- | --- | --- | --- | --- | --- | --- | --- | --- | --- | --- |
|  | 1 | **Gallery 2202 Electrical** |  | 2025-10-13 | 2026-10-05 |  |  |  |  |  |  |  |  |  |  |  |  |  |  |  |  |  |  |  |  |  |  |
| QTS-14691 |  | DH 2200 / Electrical Gallery 2202 // Install VESDA | 8d | 2025-10-13 A | 2025-10-22 A | QTS-13741 | 100% |  |  |  |  |  |  | 01ADMIN | Construction | Electrical | IGMP | Phase 2 | Construction | DH2200 | BAB |  |  |  |  |  |  |
| QTS-46621 |  | DH 2200 / Electrical Gallery 2202 // Install OH Electrical Conduit & Grounding | 10d | 2025-10-23 A | 2026-05-19 A | QTS-14691 | 100% |  | 2025-10-23 | 2025-11-03 |  |  | QTS-PHX3 DC1 - 6 day w/ Holidays | 01ADMIN | Construction | Electrical | IGMP | Phase 2 | Construction | DH2200 | BAB |  |  |  |  |  |  |
| QTS-14171 |  | DH 2200 / Electrical Gallery 2202 // Install Electrical Tray | 5d | 2026-03-03 A | 2026-03-26 A | QTS-14691, QTS-1002460 | 100% |  | 2026-03-03 | 2026-03-07 |  |  | QTS-PHX3 DC1 - 6 day w/ Holidays |  | Construction | Electrical | IGMP | Phase 2 | Construction | DH2200 | BAB |  |  |  |  |  |  |
| QTS-1008520 |  | DH 2200 / Electrical Gallery 2202 // Install Raceway From Pod to Dog House - Zone 2 Second Floor | 14d | 2026-03-16 A | 2026-04-24 A | QTS-1005070, QTS-1000360 | 100% |  | 2026-03-16 | 2026-03-31 |  |  | QTS-PHX3 DC1 - 6 day w/ Holidays | 01ADMIN | Construction | Electrical | IGMP |  |  | DH2200 | BAB | Phase 2 | Roof |  |  |  |  |
| QTS-1008530 |  | DH 2200 / Electrical Gallery 2202 // Pull Electrical Wire From Pod to Dog House | 7d | 2026-04-06 A | 2026-04-30 A | QTS-1008540, QTS-1008520 | 100% |  | 2026-04-06 | 2026-04-13 |  |  | QTS-PHX3 DC1 - 6 day w/ Holidays | 01ADMIN | Construction | Electrical | IGMP |  |  | DH2200 | BAB | Phase 2 | Roof |  |  |  |  |
| QTS-1008780 |  | DH 2200 / Electrical Gallery 2202 // Install OH EPMS/BMS Conduit & Grounding | 5d | 2026-05-04 A | 2026-05-18 A | QTS-14691 | 100% |  | 2026-06-03 | 2026-06-08 |  |  | QTS-PHX3 DC1 - 6 day w/ Holidays | 01ADMIN | Construction | Electrical | IGMP | Phase 2 | Construction | DH2200 | BAB |  |  | Oscar Armenta |  |  |  |
| QTS-16831 |  | DH 2200 / Electrical Gallery 2202 // House Panels | 2d | 2026-05-05 A | 2026-05-05 A | QTS-15751, QTS-14951 | 100% |  | 2026-05-05 | 2026-05-06 |  |  | QTS-PHX3 DC1 - 6 day w/ Holidays |  | Construction | Electrical | IGMP | Phase 2 | Construction | DH2200 | BAB |  |  |  |  |  |  |
| QTS-1008770 |  | DH 2200 / Electrical Gallery 2202 // Install OH FA Conduit & Grounding | 5d | 2026-05-11 A | 2026-05-25 A | QTS-14691 | 100% |  | 2026-06-03 | 2026-06-08 |  |  | QTS-PHX3 DC1 - 6 day w/ Holidays | 01ADMIN | Construction | Electrical | IGMP | Phase 2 | Construction | DH2200 | BAB |  |  | Oscar Armenta |  |  |  |
| QTS-1010460 |  | DH 2200 / Electrical Gallery 2202 // Install Security Panel | 8d | 2026-06-01 A | 2026-06-08 A | QTS-13001, QTS-6560 | 100% |  | 2026-07-01 | 2026-07-11 |  |  | QTS-PHX3 DC1 - 6 day w/ Holidays |  | Construction | Electrical | IGMP | Phase 2 | Construction | DH2200 | BAB |  |  | Oscar Armenta | Manpower / still waiting on Panels |  |  |
| QTS-1008550 |  | DH 2200 / Electrical Gallery 2202 // Pull Control Wire From Pod to Dog House | 7d | 2026-06-03 A | 2026-06-08 A | QTS-1008520, QTS-1008540 | 100% |  | 2026-06-03 | 2026-06-10 |  |  | QTS-PHX3 DC1 - 6 day w/ Holidays | 01ADMIN | Construction | Electrical | IGMP |  |  | DH2200 | BAB | Phase 2 | Roof | Oscar Armenta |  |  |  |
| QTS-1012160 |  | DH 2200 / Electrical Gallery 2202 // Install OH Electrical Conduit & Grounding | 7d | 2026-06-03 A | 2026-06-22 A | QTS-1012180 | 100% |  | 2026-06-03 | 2026-06-10 |  |  | QTS-PHX3 DC1 - 6 day w/ Holidays | 01ADMIN | Construction | Electrical | IGMP | Phase 2 | Construction | DH2200 | BAB |  |  | Oscar Armenta |  |  |  |
| QTS-18281 |  | DH 2200 / Electrical Gallery 2202 // Pull LV Cables Branch Circuits | 5d | 2026-06-03 A | 2026-07-13 A | QTS-16831 | 100% |  | 2026-06-03 | 2026-06-08 |  |  | QTS-PHX3 DC1 - 6 day w/ Holidays |  | Construction | LV | IGMP | Phase 2 | Construction | DH2200 | BAB |  |  |  |  |  |  |
| QTS-1010470 |  | DH 2200 / Electrical Gallery 2202 // Install Security Panel Pathways | 1d | 2026-06-09 A | 2026-06-09 A | QTS-1010460 | 100% |  | 2026-07-13 | 2026-07-13 |  |  | QTS-PHX3 DC1 - 6 day w/ Holidays |  | Construction | Electrical | IGMP | Phase 2 | Construction | DH2200 | BAB |  |  | Oscar Armenta |  |  |  |
| QTS-2220 |  | DH 2200 / Gallery 2202 / Terminate Remainng LV Cable at SCP Panels | 4d | 2026-07-07 A | 2026-07-17 A | QTS-18281 | 100% |  | 2026-07-08 | 2026-07-11 |  |  | **GLOBAL - 6 Day Workweek w/ Basic Holidays |  |  | LV |  |  |  |  | BAB |  |  | Low Voltage |  | Prime |  |
| QTS-1011020 |  | DH 2200 / Electrical Gallery 2202 // Load Project and Verify Communication DCIM 2202 | 2d | 2026-07-09 A | 2026-07-10 A | QTS-1011010 | 100% |  | 2026-07-15 | 2026-07-16 |  |  | QTS-PHX3 DC1 - 6 day w/ Holidays |  | Construction | Electrical | IGMP | Phase 2 | Construction | DH2200 | BAB |  |  | Low Voltage |  |  |  |
| QTS-2060 |  | DH 2200 / Gallery 2202 / Pull and Terminate Wire @ Remaining House Panels | 5d | 2026-07-13 A | 2026-08-26 | QTS-1008530 |  | 7d | 2026-07-11 | 2026-07-16 | -100d | 0d | **GLOBAL - 6 Day Workweek w/ Basic Holidays |  |  | Electrical |  |  |  |  | BAB |  |  | Electrical |  | REI |  |
| QTS-1010500 |  | DH 2200 / Electrical Gallery 2202 // Install Security Devices - Basket tray | 10d | 2026-07-15 A | 2026-08-03 A | QTS-1010490, QTS-1010450 | 100% |  | 2026-07-22 | 2026-08-01 |  |  | QTS-PHX3 DC1 - 6 day w/ Holidays |  | Construction | LV | IGMP | Phase 2 | Construction | DH2200 | BAB |  |  | Low Voltage |  | Securitas |  |
| QTS-2230 |  | DH 2200 / Gallery 2202 / Terminate Remaining Grounding and Bonding at equipment | 2d | 2026-07-15 A | 2026-07-16 A | QTS-1008770 | 100% |  | 2026-07-22 | 2026-07-23 |  |  | **GLOBAL - 6 Day Workweek w/ Basic Holidays |  |  | Electrical |  |  |  |  | BAB |  |  | Electrical |  | REI |  |
| QTS-2070 |  | DH 2200 / Gallery 2202 / Pull and Terminate Wire @ XFMR | 2d | 2026-07-22 A | 2026-07-23 A | QTS-2060 SS, QTS-18281 | 100% |  | 2026-07-29 | 2026-07-30 |  |  | **GLOBAL - 6 Day Workweek w/ Basic Holidays |  |  | Electrical |  |  |  |  | BAB |  |  | Electrical |  |  |  |
| QTS-2280 |  | DH 2200 / Gallery 2202 / Final paint | 2d | 2026-07-29 A | 2026-07-30 A | QTS-2070 | 100% |  | 2026-08-05 | 2026-08-06 |  |  | **GLOBAL - 6 Day Workweek w/ Basic Holidays |  |  | Build Out |  |  |  |  | BAB |  |  | Jason Hendley |  | PPC |  |
| QTS-2250 |  | DH 2200 / Gallery 2202 / Install Fire Extinguishers and Fire Extinguisher Cabinets | 2d | 2026-08-26 | 2026-08-27 | QTS-2280, QTS-6060 SS |  |  |  |  | -106d | 0d | **GLOBAL - 6 Day Workweek w/ Basic Holidays |  |  | Build Out |  |  |  |  | BAB |  |  | Jake Shimmin |  | ISEC |  |
| QTS-2290 |  | DH 2200 / Gallery 2202 / Seal Concrete Floor | 2d | 2026-08-28 | 2026-08-29 | QTS-2250 |  |  |  |  | -106d | 0d | **GLOBAL - 6 Day Workweek w/ Basic Holidays |  |  | Build Out |  |  |  |  | BAB |  |  | Ben Ribble |  | Bldg Solutions |  |
| QTS-2300 |  | DH 2200 / Gallery 2202 / Install Rubber base | 2d | 2026-08-31 | 2026-09-01 | QTS-2290 |  |  |  |  | -98d | 0d | **GLOBAL - 6 Day Workweek w/ Basic Holidays |  |  | Build Out |  |  |  |  | BAB |  |  | Ben Ribble |  | Wholesale Flooring |  |
| QTS-2310 |  | DH 2200 / Gallery 2202 / Clean | 2d | 2026-09-02 | 2026-09-03 | QTS-2300, QTS-2220, QTS-2070 |  |  |  |  | -98d | 14d | **GLOBAL - 6 Day Workweek w/ Basic Holidays |  |  | Build Out |  |  |  |  | BAB |  |  | Ed Carter |  | AGDC |  |
| QTS-2240 |  | TFO SCOPE \\ DH 2200 / Gallery 2202 / Install Firecaulking at RPP Feeder Penetrations | 4d | 2026-10-01 | 2026-10-05 | QTS-1245, QTS-2650 |  |  |  |  | -44d | 23d | **GLOBAL - 6 Day Workweek w/ Basic Holidays |  |  | Electrical |  |  |  |  | TFO |  |  | Electrical |  | Riteway | TFO CONST |

Notes:
- QTS-46621: allucent_notes_20251216_165335: Jason Johnston on 2025-11-11 16:11: SWO / Jason Johnston on 2025-11-19T02:25:11.371Z: undo / David Wiltberger on 2025-12-02 14:02: Impacted by stop work / allucent_notes_20251209_203830: Jason Johnston on 2025-11-11 16:11: SWO / Jason Johnston on 2025-11-19T02:25:11.371Z: undo / David Wiltberger on 2025-12-02 14:02: Impacted by stop work / allucent_notes_20251202_153722: Jason Johnston on 2025-11-11 16:11: SWO / Jason Johnston on 2025-11-19T02:25:11.371Z: undo / David Wiltberger on 2025-12-02 14:02: Impacted by stop work / allucent_notes_20251118_192630: Jason Johnston on 2025-11-11 16:11: SWO / Jason Johnston on 2025-11-19T02:25:11.371Z: undo / allucent_notes_20251111_182405: Jason Johnston on 2025-11-11 16:11: SWO / allucent_notes_20251230_164549: Jason Johnston on 2025-11-11 16:11: SWO / Jason Johnston on 2025-11-19T02:25:11.371Z: undo / David Wiltberger on 2025-12-02 14:02: Impacted by stop work / Scheduler Notes: Jason Johnston on 2025-11-11 16:11: SWO / Jason Johnston on 2025-11-19T02:25:11.371Z: undo / David Wiltberger on 2025-12-02 14:02: Impacted by stop work / 5/19 - Activity has not started, actualized and duplicated to properly track / activity / Notes: 5/19 - Activity has not started, actualized and duplicated to properly track activity / allucent_notes: 2025-11-11 16:11 - User: Jason Johnston - Date Added: 2025-11-11 16:11 - Note: SWO / 2025-11-19T02:25:11.371Z - User: Jason Johnston - Date Added: 2025-11-19T02:25:11.371Z - Note: undo / 2025-12-02 14:02 - User: David Wiltberger - Date Added: 2025-12-02
- QTS-14171: Scheduler Notes: 3/24: 95% Complete / Notes: 3/24: 95% Complete
- QTS-1008520: allucent_notes_20251014_152335: David Wiltberger on 2025-08-19 09:08: changed pick order / David Wiltberger on 2025-09-02 10:09: Moving to accommodate roofing in Zone / 1 / David Wiltberger on 2025-09-24 04:09: BAM not completed Potential Delay / David Wiltberger on 2025-09-30 12:09: BAM did not complete / David Wiltberger on 2025-10-14 10:10: set on recovery / schedule / allucent_notes: David Wiltberger on 2025-08-19 09:08: changed pick order / Scheduler Notes: David Wiltberger on 2025-08-19 09:08: changed pick order / David Wiltberger on 2025-09-02 10:09: Moving to accommodate roofing in Zone / 1 / David Wiltberger on 2025-09-24 04:09: BAM not completed Potential Delay / David Wiltberger on 2025-09-30 12:09: BAM did not complete / David Wiltberger on 2025-10-14 10:10: set on recovery schedule / 4/14: 90% complete. Only R line up remaining. / Notes: 4/14: 90% complete. Only R line up remaining. / allucent_notes: 2025-08-19 09:08 - User: David Wiltberger - Date Added: 2025-08-19 09:08 - Note: changed pick order / 2025-09-02 10:09 - User: David Wiltberger - Date Added: 2025-09-02 10:09 - Note: Moving to accommodate roofing in Zone 1 / 2025-09-24 04:09 - User: Dav
- QTS-1008530: allucent_notes_20251014_152335: David Wiltberger on 2025-08-19 09:08: changed pick order / David Wiltberger on 2025-09-02 10:09: Moving to accommodate roofing in Zone 1 / David Wiltberger on 2025-09-24 04:09: BAM not completed Potential Delay / David Wiltberger on 2025-09-30 12:09: BAM did not complete / David Wiltberger on 2025-10-14 10:10: set on recovery schedule / allucent_notes: David Wiltberger on 2025-08-19 09:08: changed pick order / allucent_notes: 2025-08-19 09:08 - User: David Wiltberger - Date Added: 2025-08-19 09:08 - Note: changed pick order / 2025-09-02 10:09 - User: David Wiltberger - Date Added: 2025-09-02 10:09 - Note: Moving to accommodate roofing in Zone 1 / 2025-09-24 04:09 - User: Dav
- QTS-1008780: allucent_notes_20251216_165335: Jason Johnston on 2025-11-11 16:11: SWO / Jason Johnston on 2025-11-19T02:25:11.371Z: undo / David Wiltberger on 2025-12-02 14:02: Impacted by stop work / allucent_notes_20251209_203830: Jason Johnston on 2025-11-11 16:11: SWO / Jason Johnston on 2025-11-19T02:25:11.371Z: undo / David Wiltberger on 2025-12-02 14:02: Impacted by stop work / allucent_notes_20251202_153722: Jason Johnston on 2025-11-11 16:11: SWO / Jason Johnston on 2025-11-19T02:25:11.371Z: undo / David Wiltberger on 2025-12-02 14:02: Impacted by stop work / allucent_notes_20251118_192630: Jason Johnston on 2025-11-11 16:11: SWO / Jason Johnston on 2025-11-19T02:25:11.371Z: undo / allucent_notes_20251111_182405: Jason Johnston on 2025-11-11 16:11: SWO / allucent_notes_20251230_164549: Jason Johnston on 2025-11-11 16:11: SWO / Jason Johnston on 2025-11-19T02:25:11.371Z: undo / David Wiltberger on 2025-12-02 14:02: Impacted by stop work / allucent_notes: 2025-11-11 16:11 - User: Jason Johnston - Date Added: 2025-11-11 16:11 - Note: SWO / 2025-11-19T02:25:11.371Z - User: Jason Johnston - Date Added: 2025-11-19T02:25:11.371Z - Note: undo / 2025-12-02 14:02 - User: David Wiltberger - Date Added: 2025-12-02
- QTS-16831: Scheduler Notes: 4/14: 40% Complete / Notes: 4/14: 40% Complete
- QTS-1008770: allucent_notes_20251216_165335: Jason Johnston on 2025-11-11 16:11: SWO / Jason Johnston on 2025-11-19T02:25:11.371Z: undo / David Wiltberger on 2025-12-02 14:02: Impacted by stop work / allucent_notes_20251209_203830: Jason Johnston on 2025-11-11 16:11: SWO / Jason Johnston on 2025-11-19T02:25:11.371Z: undo / David Wiltberger on 2025-12-02 14:02: Impacted by stop work / allucent_notes_20251202_153722: Jason Johnston on 2025-11-11 16:11: SWO / Jason Johnston on 2025-11-19T02:25:11.371Z: undo / David Wiltberger on 2025-12-02 14:02: Impacted by stop work / allucent_notes_20251118_192630: Jason Johnston on 2025-11-11 16:11: SWO / Jason Johnston on 2025-11-19T02:25:11.371Z: undo / allucent_notes_20251111_182405: Jason Johnston on 2025-11-11 16:11: SWO / allucent_notes_20251230_164549: Jason Johnston on 2025-11-11 16:11: SWO / Jason Johnston on 2025-11-19T02:25:11.371Z: undo / David Wiltberger on 2025-12-02 14:02: Impacted by stop work / allucent_notes: 2025-11-11 16:11 - User: Jason Johnston - Date Added: 2025-11-11 16:11 - Note: SWO / 2025-11-19T02:25:11.371Z - User: Jason Johnston - Date Added: 2025-11-19T02:25:11.371Z - Note: undo / 2025-12-02 14:02 - User: David Wiltberger - Date Added: 2025-12-02
- QTS-1008550: allucent_notes_20251014_152335: David Wiltberger on 2025-08-19 09:08: changed pick order / David Wiltberger on 2025-09-02 10:09: Moving to accommodate roofing in Zone 1 / David Wiltberger on 2025-09-24 04:09: BAM not completed Potential Delay / David Wiltberger on 2025-09-30 12:09: BAM did not complete / David Wiltberger on 2025-10-14 10:10: set on recovery schedule / allucent_notes: David Wiltberger on 2025-08-19 09:08: changed pick order / allucent_notes: 2025-08-19 09:08 - User: David Wiltberger - Date Added: 2025-08-19 09:08 - Note: changed pick order / 2025-09-02 10:09 - User: David Wiltberger - Date Added: 2025-09-02 10:09 - Note: Moving to accommodate roofing in Zone 1 / 2025-09-24 04:09 - User: Dav
- QTS-1012160: allucent_notes_20251216_165335: Jason Johnston on 2025-11-11 16:11: SWO / Jason Johnston on 2025-11-19T02:25:11.371Z: undo / David Wiltberger on 2025-12-02 14:02: Impacted by stop work / allucent_notes_20251209_203830: Jason Johnston on 2025-11-11 16:11: SWO / Jason Johnston on 2025-11-19T02:25:11.371Z: undo / David Wiltberger on 2025-12-02 14:02: Impacted by stop work / allucent_notes_20251202_153722: Jason Johnston on 2025-11-11 16:11: SWO / Jason Johnston on 2025-11-19T02:25:11.371Z: undo / David Wiltberger on 2025-12-02 14:02: Impacted by stop work / allucent_notes_20251118_192630: Jason Johnston on 2025-11-11 16:11: SWO / Jason Johnston on 2025-11-19T02:25:11.371Z: undo / allucent_notes_20251111_182405: Jason Johnston on 2025-11-11 16:11: SWO / allucent_notes_20251230_164549: Jason Johnston on 2025-11-11 16:11: SWO / Jason Johnston on 2025-11-19T02:25:11.371Z: undo / David Wiltberger on 2025-12-02 14:02: Impacted by stop work / allucent_notes: 2025-11-11 16:11 - User: Jason Johnston - Date Added: 2025-11-11 16:11 - Note: SWO / 2025-11-19T02:25:11.371Z - User: Jason Johnston - Date Added: 2025-11-19T02:25:11.371Z - Note: undo / 2025-12-02 14:02 - User: David Wiltberger - Date Added: 2025-12-02
- QTS-2060: Notes: Manpower
- QTS-1010500: Notes: 8/3 done
- QTS-2250: Scheduler Notes: 8/4/26-Not started due to manpower / Notes: Not started due to manpower

| ID | WBS | Activity | Duration | Start | Finish | Predecessors | Complete | Planned start | Planned finish | Calendar | Project Section | Layton Discipline | Baseline | Phase-1-1 | Project Section-1 | Location | Layton Super | Contract | Allucent CSI Group | Fragnet | Owner Impact Analysis | Fragnet Responsible Party |
| --- | --- | --- | --- | --- | --- | --- | --- | --- | --- | --- | --- | --- | --- | --- | --- | --- | --- | --- | --- | --- | --- | --- |
|  | 2 | **Gallery 2202 Low Voltage** |  | 2026-06-09 | 2026-07-10 |  |  |  |  |  |  |  |  |  |  |  |  |  |  |  |  |  |
| QTS-1010480 |  | DH 2200 / Electrical Gallery 2202 // Pull Cable from DCIM to Security Devices | 6d | 2026-06-09 A | 2026-06-15 A | QTS-1010470 | 100% | 2026-07-14 | 2026-07-20 | QTS-PHX3 DC1 - 6 day w/ Holidays | Construction | Electrical | IGMP | Phase 2 | Construction | DH2200 | Oscar Armenta | BAB |  |  |  |  |
| QTS-15271 |  | DH 2200 / Electrical Gallery 2202 // Install Basket Tray for LV | 3d | 2026-06-17 A | 2026-06-19 A | QTS-14171, QTS-1008770, QTS-46621, QTS-1008780 | 100% | 2026-06-24 | 2026-06-26 | QTS-PHX3 DC1 - 6 day w/ Holidays | Construction | LV | IGMP | Phase 2 | Construction | DH2200 | Low Voltage | BAB |  |  |  |  |
| QTS-1010490 |  | DH 2200 / Electrical Gallery 2202 // Terminate and Test Cable from DCIM to Security Devices | 6d | 2026-06-24 A | 2026-07-10 A | QTS-1010480 | 100% | 2026-07-21 | 2026-07-27 | QTS-PHX3 DC1 - 6 day w/ Holidays | Construction | Electrical | IGMP | Phase 2 | Construction | DH2200 | Oscar Armenta | BAB |  |  |  |  |
| QTS-1011010 |  | DH 2200 / Electrical Gallery 2202 // Install Provision Switches DCIM 2202 | 2d | 2026-06-24 A | 2026-07-02 A | QTS-1010480 | 100% | 2026-07-13 | 2026-07-14 | QTS-PHX3 DC1 - 6 day w/ Holidays | Construction | LV | IGMP | Phase 2 | Construction | DH2200 | Low Voltage | BAB |  |  |  |  |
| QTS-1011960 |  | DH 2200 / Electrical Gallery 2202 // Rack and Stack for Provision Switches DCIM 2202 | 2d | 2026-06-30 A | 2026-07-02 A | QTS-15271 | 100% | 2026-07-01 | 2026-07-02 | QTS-PHX3 DC1 - 6 day w/ Holidays | Construction | LV | IGMP | Phase 2 | Construction | DH2200 | Low Voltage | BAB |  |  |  |  |
| QTS-1010410 |  | DH 2200 / Electrical Gallery 2202 // Pull Fiber from MDF to DCIM 2202 | 1d | 2026-07-02 A | 2026-07-02 A | QTS-15271 | 100% | 2026-07-08 | 2026-07-08 | QTS-PHX3 DC1 - 6 day w/ Holidays | Construction | LV | IGMP | Phase 2 | Construction | DH2200 | Low Voltage | BAB |  |  |  |  |
| QTS-1010430 |  | DH 2200 / Electrical Gallery 2202 // Terminate and Test Fiber from MDF to DCIM 2202 | 2d | 2026-07-02 A | 2026-07-02 A | QTS-1010410 | 100% | 2026-07-09 | 2026-07-10 | QTS-PHX3 DC1 - 6 day w/ Holidays | Construction | LV | IGMP | Phase 2 | Construction | DH2200 | Low Voltage | BAB |  |  |  |  |
| QTS-16071 |  | DH 2200 / Electrical Gallery 2202 // Pull BMS & EPMS Cable to DCIM 2202 | 1d | 2026-07-02 A | 2026-07-02 A | QTS-15271, QTS-1010410, QTS-1010430, QTS-1011960 | 100% | 2026-07-11 | 2026-07-11 | QTS-PHX3 DC1 - 6 day w/ Holidays | Construction | LV | IGMP | Phase 2 | Construction | DH2200 | Low Voltage | BAB |  |  |  |  |
| QTS-1010450 |  | DH 2200 / Electrical Gallery 2202 // Pull Cable from Security Panel to Security Devices | 6d | 2026-07-06 A | 2026-07-10 A | QTS-1010470, QTS-1010440 | 100% | 2026-07-15 | 2026-07-21 | QTS-PHX3 DC1 - 6 day w/ Holidays | Construction | Electrical | IGMP | Phase 2 | Construction | DH2200 | Oscar Armenta | BAB |  |  |  |  |
| QTS-1010440 |  | DH 2200 / Electrical Gallery 2202 // Terminate and Test BMS & EPMS Cable to DCIM 2202 | 4d | 2026-07-07 A | 2026-07-10 A | QTS-16071 | 100% | 2026-07-15 | 2026-07-18 | QTS-PHX3 DC1 - 6 day w/ Holidays | Construction | LV | IGMP | Phase 2 | Construction | DH2200 | Low Voltage | BAB |  |  |  |  |
|  | 1 | **Electrical** |  | 2026-02-16 | 2026-07-01 |  |  |  |  |  |  |  |  |  |  |  |  |  |  |  |  |  |
|  | 7 | **DH 2200 IDF Cabinets** |  | 2026-04-09 | 2026-07-01 |  |  |  |  |  |  |  |  |  |  |  |  |  |  |  |  |  |
| QTS-6560 |  | DH 2200 / Electrical Gallery 2202/2203 // Install Fire Rated Plywood | 1d | 2026-05-07 A | 2026-05-07 A | QTS-13371, QTS-14181 | 100% |  |  | QTS-PHX3 DC1 - 6 day w/ Holidays | Construction | Electrical | GMP | Phase 2 | Construction | DH2200 |  | BAB | 01ADMIN |  |  |  |
|  | 1 | **Fragnet / Lack of Man Power** |  | 2026-04-09 | 2026-05-01 |  |  |  |  |  |  |  |  |  |  |  |  |  |  |  |  |  |
| QTS-1010160 |  | Fragnet / DH 2200 / Electrical Gallery 2202/2203 // Lack of Man Power | 1d | 2026-04-09 A | 2026-05-01 A | QTS-1371 | 100% | 2026-04-09 | 2026-04-09 | QTS-PHX3 DC1 - 6 day w/ Holidays | Construction | Electrical | GMP | Phase 2 | Construction | DH2200 |  | BAB | 01ADMIN | Fragnet | Y | Rosendin Electric Inc. |
|  | 2 | **Remaining Scope** |  | 2026-06-03 | 2026-07-01 |  |  |  |  |  |  |  |  |  |  |  |  |  |  |  |  |  |
| QTS-38581 |  | DH 2200 / Electrical Gallery 2202/2203 // Set IDF Cabinet | 1d | 2026-06-03 A | 2026-06-03 A | QTS-6560, QTS-1010160 | 100% |  |  | QTS-PHX3 DC1 - 6 day w/ Holidays | Construction | Electrical | GMP | Phase 2 | Construction | DH2200 | Oscar Armenta | BAB | 01ADMIN |  |  |  |
| QTS-38591 |  | DH 2200 / Electrical Gallery 2202/2203 // Set IDF Cabinet | 2d | 2026-06-18 A | 2026-07-01 A | QTS-38581 | 100% | 2026-06-24 | 2026-06-25 | QTS-PHX3 DC1 - 6 day w/ Holidays | Construction | Electrical | GMP | Phase 2 | Construction | DH2200 | Oscar Armenta | BAB | 01ADMIN |  |  |  |
|  | 1 | **A2200 Lineup** |  | 2026-02-16 | 2026-05-20 |  |  |  |  |  |  |  |  |  |  |  |  |  |  |  |  |  |
| QTS-14151 |  | Gallery 2202 / Lineup A2200 // Install Hangers & Supports | 3d | 2026-02-16 A | 2026-02-19 A | QTS-13371 SS+1d | 100% | 2026-02-16 | 2026-02-18 | QTS-PHX3 DC1 - 6 day w/ Holidays | Construction | Electrical | IGMP | Phase 2 | Construction | DH2200 |  | BAB | 01ADMIN |  |  |  |
| QTS-15751 |  | Gallery 2202 / Lineup A2200 // OFCI - L2 SET IN PLACE - Eq Type # - COD/ATS-210-A - Skid 1-3 | 2d | 2026-02-21 A | 2026-02-23 A | QTS-13001, QTS-33231, QTS-1000350, QTS-1000360 | 100% |  |  | QTS-PHX3 DC1 - 6 day w/ Holidays | Construction | Electrical | IGMP | Phase 2 | Construction | DH2200 |  | BAB | 01ADMIN |  |  |  |
| QTS-45841 |  | Gallery 2202 / Lineup A2200 // OFCI - L2 SET IN PLACE - Eq Type # - COD/ATS-210-A - Skid 4-6 | 2d | 2026-02-21 A | 2026-02-23 A | QTS-15751, QTS-1000350, QTS-1000360 | 100% |  |  | QTS-PHX3 DC1 - 6 day w/ Holidays | Construction | Electrical | IGMP | Phase 2 | Construction | DH2200 |  | BAB |  |  |  |  |
| QTS-14951 |  | Gallery 2202 / Lineup A2200 // Install Raceways from LV POD to COD | 7d | 2026-03-05 A | 2026-03-12 A | QTS-14151, QTS-1002450 | 100% |  |  | QTS-PHX3 DC1 - 6 day w/ Holidays | Construction | Electrical | IGMP | Phase 2 | Construction | DH2200 |  | BAB | 01ADMIN |  |  |  |
| QTS-16271 |  | Gallery 2202 / Lineup A2200 // Set Reserve Busway Segment | 2d | 2026-03-13 A | 2026-03-13 A | QTS-50031, QTS-14951, QTS-15751 | 100% | 2026-03-13 | 2026-03-14 | QTS-PHX3 DC1 - 6 day w/ Holidays | Construction | Electrical | IGMP | Phase 2 | Construction | DH2200 |  | BAB |  |  |  |  |
| QTS-16841 |  | Gallery 2202 / Lineup A2200 // Pull LV Cables from POD to ATS | 4d | 2026-03-20 A | 2026-03-23 A | QTS-45841 FF+1d, QTS-13551, QTS-14951, QTS-15751 | 100% | 2026-03-18 | 2026-03-21 | QTS-PHX3 DC1 - 6 day w/ Holidays | Construction | Electrical | IGMP | Phase 2 | Construction | DH2200 |  | BAB |  |  |  |  |
| QTS-17731 |  | Gallery 2202 / Lineup A2200 // Pull LV Cables from Reserve Bus to ATS | 2d | 2026-04-06 A | 2026-04-07 A | QTS-16271, QTS-16841, QTS-14951 | 100% |  |  | QTS-PHX3 DC1 - 6 day w/ Holidays | Construction | Electrical | IGMP | Phase 2 | Construction | DH2200 |  | BAB |  |  |  |  |
| QTS-18121 |  | Gallery 2202 / Lineup A2200 // Terminate & Torque ATS | 7d | 2026-04-29 A | 2026-05-06 A | QTS-16841, QTS-17731 | 100% |  |  | QTS-PHX3 DC1 - 6 day w/ Holidays | Construction | Electrical | IGMP | Phase 2 | Construction | DH2200 |  | BAB |  |  |  |  |
| QTS-18131 |  | Gallery 2202 / Lineup A2200 // Terminate & Torque COD | 7d | 2026-05-18 A | 2026-05-20 A | QTS-18121, QTS-16841 | 100% | 2026-05-20 | 2026-05-28 | QTS-PHX3 DC1 - 6 day w/ Holidays | Construction | Electrical | IGMP | Phase 2 | Construction | DH2200 |  | BAB |  |  |  |  |

Notes:
- QTS-1010160: Scheduler Notes: Lack Of Man Power

| ID | WBS | Activity | Duration | Start | Finish | Predecessors | Complete | Planned start | Planned finish | Calendar | Allucent CSI Group | Project Section | Layton Discipline | Baseline | Phase-1-1 | Project Section-1 | Location | Contract | Layton Super |
| --- | --- | --- | --- | --- | --- | --- | --- | --- | --- | --- | --- | --- | --- | --- | --- | --- | --- | --- | --- |
|  | 2 | **B2200 Lineup** |  | 2026-02-16 | 2026-05-21 |  |  |  |  |  |  |  |  |  |  |  |  |  |  |
| QTS-1841 |  | Gallery 2202 / Lineup B2200 // Install Hangers & Supports | 3d | 2026-02-16 A | 2026-02-19 A | QTS-14151 SS | 100% | 2026-02-16 | 2026-02-18 | QTS-PHX3 DC1 - 6 day w/ Holidays | 01ADMIN | Construction | Electrical | IGMP | Phase 2 | Construction | DH2200 | BAB |  |
| QTS-4011 |  | Gallery 2202 / Lineup B2200 // OFCI - L2 SET IN PLACE - Eq Type # - COD/ATS-210-A - Skid 1-3 | 2d | 2026-02-21 A | 2026-02-23 A | QTS-45841, QTS-33271 | 100% |  |  | QTS-PHX3 DC1 - 6 day w/ Holidays |  | Construction | Electrical | IGMP | Phase 2 | Construction | DH2200 | BAB |  |
| QTS-45851 |  | Gallery 2202 / Lineup B2200 // OFCI - L2 SET IN PLACE - Eq Type # - COD/ATS-210-A - Skid 4-6 | 2d | 2026-02-21 A | 2026-02-23 A | QTS-4011 | 100% |  |  | QTS-PHX3 DC1 - 6 day w/ Holidays |  | Construction | Electrical | IGMP | Phase 2 | Construction | DH2200 | BAB |  |
| QTS-2841 |  | Gallery 2202 / Lineup B2200 // Install Raceways from LV POD to COD | 7d | 2026-03-05 A | 2026-03-12 A | QTS-14951 SS, QTS-1841 | 100% |  |  | QTS-PHX3 DC1 - 6 day w/ Holidays | 01ADMIN | Construction | Electrical | IGMP | Phase 2 | Construction | DH2200 | BAB |  |
| QTS-5051 |  | Gallery 2202 / Lineup B2200 // Set Reserve Busway Segment | 2d | 2026-03-13 A | 2026-03-13 A | QTS-50031, QTS-2841, QTS-4011 | 100% | 2026-03-13 | 2026-03-14 | QTS-PHX3 DC1 - 6 day w/ Holidays |  | Construction | Electrical | IGMP | Phase 2 | Construction | DH2200 | BAB |  |
| QTS-6461 |  | Gallery 2202 / Lineup B2200 // Pull LV Cables from POD to ATS | 4d | 2026-03-20 A | 2026-03-23 A | QTS-45851 FF+1d, QTS-13551, QTS-2841, QTS-4011 | 100% | 2026-03-18 | 2026-03-21 | QTS-PHX3 DC1 - 6 day w/ Holidays |  | Construction | Electrical | IGMP | Phase 2 | Construction | DH2200 | BAB |  |
| QTS-8131 |  | Gallery 2202 / Lineup B2200 // Pull LV Cables from Reserve Bus to ATS | 2d | 2026-04-06 A | 2026-04-07 A | QTS-5051, QTS-6461, QTS-2841 | 100% |  |  | QTS-PHX3 DC1 - 6 day w/ Holidays |  | Construction | Electrical | IGMP | Phase 2 | Construction | DH2200 | BAB |  |
| QTS-9071 |  | Gallery 2202 / Lineup B2200 // Terminate & Torque ATS | 7d | 2026-05-06 A | 2026-05-13 A | QTS-6461, QTS-8131 | 100% | 2026-05-20 | 2026-05-28 | QTS-PHX3 DC1 - 6 day w/ Holidays |  | Construction | Electrical | IGMP | Phase 2 | Construction | DH2200 | BAB |  |
| QTS-9081 |  | Gallery 2202 / Lineup B2200 // Terminate & Torque COD | 7d | 2026-05-19 A | 2026-05-21 A | QTS-9071, QTS-6461 | 100% | 2026-05-20 | 2026-05-28 | QTS-PHX3 DC1 - 6 day w/ Holidays |  | Construction | Electrical | IGMP | Phase 2 | Construction | DH2200 | BAB |  |
|  | 3 | **C2200 Lineup** |  | 2026-02-21 | 2026-05-26 |  |  |  |  |  |  |  |  |  |  |  |  |  |  |
| QTS-4021 |  | Gallery 2202 / Lineup C2200 // OFCI - L2 SET IN PLACE - Eq Type # - COD/ATS-210-A - Skid 1-3 | 2d | 2026-02-21 A | 2026-02-23 A | QTS-45851, QTS-33311 | 100% |  |  | QTS-PHX3 DC1 - 6 day w/ Holidays |  | Construction | Electrical | IGMP | Phase 2 | Construction | DH2200 | BAB |  |
| QTS-45861 |  | Gallery 2202 / Lineup C2200 // OFCI - L2 SET IN PLACE - Eq Type # - COD/ATS-210-A - Skid 4-6 | 2d | 2026-02-21 A | 2026-02-23 A | QTS-4021 | 100% |  |  | QTS-PHX3 DC1 - 6 day w/ Holidays |  | Construction | Electrical | IGMP | Phase 2 | Construction | DH2200 | BAB |  |
| QTS-1851 |  | Gallery 2202 / Lineup C2200 // Install Hangers & Supports | 3d | 2026-03-04 A | 2026-03-05 A | QTS-1841 | 100% | 2026-03-04 | 2026-03-06 | QTS-PHX3 DC1 - 6 day w/ Holidays | 01ADMIN | Construction | Electrical | IGMP | Phase 2 | Construction | DH2200 | BAB |  |
| QTS-2851 |  | Gallery 2202 / Lineup C2200 // Install Raceways from LV POD to COD | 7d | 2026-03-05 A | 2026-03-12 A | QTS-2841 SS, QTS-1851 SS | 100% |  |  | QTS-PHX3 DC1 - 6 day w/ Holidays |  | Construction | Electrical | IGMP | Phase 2 | Construction | DH2200 | BAB |  |
| QTS-5071 |  | Gallery 2202 / Lineup C2200 // Set Reserve Busway Segment | 2d | 2026-03-13 A | 2026-03-13 A | QTS-50031, QTS-2851, QTS-4021 | 100% | 2026-03-13 | 2026-03-14 | QTS-PHX3 DC1 - 6 day w/ Holidays |  | Construction | Electrical | IGMP | Phase 2 | Construction | DH2200 | BAB |  |
| QTS-6471 |  | Gallery 2202 / Lineup C2200 // Pull LV Cables from POD to ATS | 4d | 2026-04-01 A | 2026-04-03 A | QTS-45861 FF+1d, QTS-13551, QTS-2851, QTS-4021 | 100% | 2026-04-01 | 2026-04-04 | QTS-PHX3 DC1 - 6 day w/ Holidays |  | Construction | Electrical | IGMP | Phase 2 | Construction | DH2200 | BAB |  |
| QTS-8151 |  | Gallery 2202 / Lineup C2200 // Pull LV Cables from Reserve Bus to ATS | 2d | 2026-04-09 A | 2026-04-10 A | QTS-5071, QTS-6471, QTS-2851 | 100% |  |  | QTS-PHX3 DC1 - 6 day w/ Holidays |  | Construction | Electrical | IGMP | Phase 2 | Construction | DH2200 | BAB |  |
| QTS-9101 |  | Gallery 2202 / Lineup C2200 // Terminate & Torque ATS | 7d | 2026-05-06 A | 2026-05-13 A | QTS-6471, QTS-8151 | 100% | 2026-05-20 | 2026-05-28 | QTS-PHX3 DC1 - 6 day w/ Holidays |  | Construction | Electrical | IGMP | Phase 2 | Construction | DH2200 | BAB |  |
| QTS-9111 |  | Gallery 2202 / Lineup C2200 // Terminate & Torque COD | 7d | 2026-05-20 A | 2026-05-26 A | QTS-9101, QTS-6471 | 100% | 2026-05-20 | 2026-05-28 | QTS-PHX3 DC1 - 6 day w/ Holidays |  | Construction | Electrical | IGMP | Phase 2 | Construction | DH2200 | BAB |  |
|  | 4 | **D2200 Lineup** |  | 2026-02-21 | 2026-06-01 |  |  |  |  |  |  |  |  |  |  |  |  |  |  |
| QTS-4031 |  | Gallery 2202 / Lineup D2200 // OFCI - L2 SET IN PLACE - Eq Type # - COD/ATS-210-A - Skid 1-3 | 2d | 2026-02-21 A | 2026-02-23 A | QTS-45861, QTS-33351 | 100% |  |  | QTS-PHX3 DC1 - 6 day w/ Holidays |  | Construction | Electrical | IGMP | Phase 2 | Construction | DH2200 | BAB |  |
| QTS-45871 |  | Gallery 2202 / Lineup D2200 // OFCI - L2 SET IN PLACE - Eq Type # - COD/ATS-210-A - Skid 4-6 | 2d | 2026-02-21 A | 2026-02-23 A | QTS-4031 | 100% |  |  | QTS-PHX3 DC1 - 6 day w/ Holidays |  | Construction | Electrical | IGMP | Phase 2 | Construction | DH2200 | BAB |  |
| QTS-1861 |  | Gallery 2202 / Lineup D2200 // Install Hangers & Supports | 3d | 2026-02-26 A | 2026-02-28 A | QTS-14151 | 100% |  |  | QTS-PHX3 DC1 - 6 day w/ Holidays |  | Construction | Electrical | IGMP | Phase 2 | Construction | DH2200 | BAB |  |
| QTS-5091 |  | Gallery 2202 / Lineup D2200 // Set Reserve Busway Segment | 2d | 2026-03-13 A | 2026-03-13 A | QTS-50031, QTS-4031 | 100% | 2026-03-13 | 2026-03-14 | QTS-PHX3 DC1 - 6 day w/ Holidays |  | Construction | Electrical | IGMP | Phase 2 | Construction | DH2200 | BAB |  |
| QTS-2861 |  | Gallery 2202 / Lineup D2200 // Install Raceways from LV POD to COD | 7d | 2026-03-17 A | 2026-03-18 A | QTS-2851 SS, QTS-1861 | 100% | 2026-03-18 | 2026-03-25 | QTS-PHX3 DC1 - 6 day w/ Holidays |  | Construction | Electrical | IGMP | Phase 2 | Construction | DH2200 | BAB |  |
| QTS-6481 |  | Gallery 2202 / Lineup D2200 // Pull LV Cables from POD to ATS | 4d | 2026-04-01 A | 2026-04-03 A | QTS-45871 FF+1d, QTS-13551, QTS-2861, QTS-4031 | 100% | 2026-04-01 | 2026-04-04 | QTS-PHX3 DC1 - 6 day w/ Holidays |  | Construction | Electrical | IGMP | Phase 2 | Construction | DH2200 | BAB |  |
| QTS-8171 |  | Gallery 2202 / Lineup D2200 // Pull LV Cables from Reserve Bus to ATS | 2d | 2026-04-09 A | 2026-04-10 A | QTS-5091, QTS-6481, QTS-2861 | 100% |  |  | QTS-PHX3 DC1 - 6 day w/ Holidays |  | Construction | Electrical | IGMP | Phase 2 | Construction | DH2200 | BAB |  |
| QTS-9131 |  | Gallery 2202 / Lineup D2200 // Terminate & Torque ATS | 7d | 2026-05-06 A | 2026-05-13 A | QTS-6481, QTS-8171 | 100% | 2026-05-20 | 2026-05-28 | QTS-PHX3 DC1 - 6 day w/ Holidays |  | Construction | Electrical | IGMP | Phase 2 | Construction | DH2200 | BAB |  |
| QTS-9141 |  | Gallery 2202 / Lineup D2200 // Terminate & Torque COD | 7d | 2026-05-21 A | 2026-06-01 A | QTS-9131, QTS-6481 | 100% | 2026-05-20 | 2026-05-28 | QTS-PHX3 DC1 - 6 day w/ Holidays |  | Construction | Electrical | IGMP | Phase 2 | Construction | DH2200 | BAB | Oscar Armenta |

| ID | WBS | Activity | Duration | Start | Finish | Predecessors | Complete | Planned start | Planned finish | Calendar | Project Section | Layton Discipline | Baseline | Phase-1-1 | Project Section-1 | Location | Contract | Notes | Layton Super |
| --- | --- | --- | --- | --- | --- | --- | --- | --- | --- | --- | --- | --- | --- | --- | --- | --- | --- | --- | --- |
|  | 5 | **E2200 Lineup** |  | 2026-02-21 | 2026-06-01 |  |  |  |  |  |  |  |  |  |  |  |  |  |  |
| QTS-4041 |  | Gallery 2202 / Lineup E2200 // OFCI - L2 SET IN PLACE - Eq Type # - COD/ATS-210-A - Skid 1-3 | 2d | 2026-02-21 A | 2026-02-23 A | QTS-45871, QTS-33391 | 100% |  |  | QTS-PHX3 DC1 - 6 day w/ Holidays | Construction | Electrical | IGMP | Phase 2 | Construction | DH2200 | BAB |  |  |
| QTS-45881 |  | Gallery 2202 / Lineup E2200 // OFCI - L2 SET IN PLACE - Eq Type # - COD/ATS-210-A - Skid 4-6 | 2d | 2026-02-21 A | 2026-02-23 A | QTS-4041 | 100% |  |  | QTS-PHX3 DC1 - 6 day w/ Holidays | Construction | Electrical | IGMP | Phase 2 | Construction | DH2200 | BAB |  |  |
| QTS-1871 |  | Gallery 2202 / Lineup E2200 // Install Hangers & Supports | 3d | 2026-02-26 A | 2026-02-28 A | QTS-1861 | 100% |  |  | QTS-PHX3 DC1 - 6 day w/ Holidays | Construction | Electrical | IGMP | Phase 2 | Construction | DH2200 | BAB |  |  |
| QTS-5111 |  | Gallery 2202 / Lineup E2200 // Set Reserve Busway Segment | 2d | 2026-03-06 A | 2026-03-06 A | QTS-50031, QTS-4041 | 100% | 2026-03-06 | 2026-03-07 | QTS-PHX3 DC1 - 6 day w/ Holidays | Construction | Electrical | IGMP | Phase 2 | Construction | DH2200 | BAB |  |  |
| QTS-2871 |  | Gallery 2202 / Lineup E2200 // Install Raceways from LV POD to COD | 7d | 2026-03-19 A | 2026-04-08 A | QTS-2861, QTS-1871 | 100% | 2026-03-26 | 2026-04-02 | QTS-PHX3 DC1 - 6 day w/ Holidays | Construction | Electrical | IGMP | Phase 2 | Construction | DH2200 | BAB | 3/24: 90% completed. |  |
| QTS-6491 |  | Gallery 2202 / Lineup E2200 // Pull LV Cables from POD to ATS | 4d | 2026-04-08 A | 2026-04-10 A | QTS-45881 FF+1d, QTS-13551, QTS-2871, QTS-4041 | 100% | 2026-04-08 | 2026-04-11 | QTS-PHX3 DC1 - 6 day w/ Holidays | Construction | Electrical | IGMP | Phase 2 | Construction | DH2200 | BAB |  |  |
| QTS-8191 |  | Gallery 2202 / Lineup E2200 // Pull LV Cables from Reserve Bus to ATS | 2d | 2026-04-09 A | 2026-04-10 A | QTS-5111, QTS-6491, QTS-2871 | 100% |  |  | QTS-PHX3 DC1 - 6 day w/ Holidays | Construction | Electrical | IGMP | Phase 2 | Construction | DH2200 | BAB |  |  |
| QTS-9161 |  | Gallery 2202 / Lineup E2200 // Terminate & Torque ATS | 7d | 2026-05-06 A | 2026-05-13 A | QTS-6491, QTS-8191 | 100% | 2026-05-20 | 2026-05-28 | QTS-PHX3 DC1 - 6 day w/ Holidays | Construction | Electrical | IGMP | Phase 2 | Construction | DH2200 | BAB |  |  |
| QTS-9171 |  | Gallery 2202 / Lineup E2200 // Terminate & Torque COD | 7d | 2026-05-22 A | 2026-06-01 A | QTS-9161, QTS-6491 | 100% | 2026-05-20 | 2026-05-28 | QTS-PHX3 DC1 - 6 day w/ Holidays | Construction | Electrical | IGMP | Phase 2 | Construction | DH2200 | BAB |  |  |
|  | 6 | **F2200 Lineup** |  | 2026-02-25 | 2026-06-03 |  |  |  |  |  |  |  |  |  |  |  |  |  |  |
| QTS-4051 |  | Gallery 2202 / Lineup F2200 // OFCI - L2 SET IN PLACE - Eq Type # - COD/ATS-210-A - Skid 1-3 | 2d | 2026-02-25 A | 2026-02-26 A | QTS-45881, QTS-33431 | 100% |  |  | QTS-PHX3 DC1 - 6 day w/ Holidays | Construction | Electrical | IGMP | Phase 2 | Construction | DH2200 | BAB |  |  |
| QTS-45891 |  | Gallery 2202 / Lineup F2200 // OFCI - L2 SET IN PLACE - Eq Type # - COD/ATS-210-A - Skid 4-6 | 2d | 2026-02-25 A | 2026-02-26 A | QTS-4051 | 100% | 2026-03-06 | 2026-03-07 | QTS-PHX3 DC1 - 6 day w/ Holidays | Construction | Electrical | IGMP | Phase 2 | Construction | DH2200 | BAB |  |  |
| QTS-5131 |  | Gallery 2202 / Lineup F2200 // Set Reserve Busway Segment | 2d | 2026-03-06 A | 2026-03-06 A | QTS-50031, QTS-2881, QTS-4051 | 100% | 2026-04-08 | 2026-04-09 | QTS-PHX3 DC1 - 6 day w/ Holidays | Construction | Electrical | IGMP | Phase 2 | Construction | DH2200 | BAB |  |  |
| QTS-1881 |  | Gallery 2202 / Lineup F2200 // Install Hangers & Supports | 3d | 2026-03-11 A | 2026-03-11 A | QTS-1871 | 100% | 2026-03-11 | 2026-03-13 | QTS-PHX3 DC1 - 6 day w/ Holidays | Construction | Electrical | IGMP | Phase 2 | Construction | DH2200 | BAB |  |  |
| QTS-2881 |  | Gallery 2202 / Lineup F2200 // Install Raceways from LV POD to COD | 7d | 2026-03-19 A | 2026-03-20 A | QTS-2871 SS, QTS-1881 | 100% | 2026-03-26 | 2026-04-02 | QTS-PHX3 DC1 - 6 day w/ Holidays | Construction | Electrical | IGMP | Phase 2 | Construction | DH2200 | BAB | 3/24: 90% completed. |  |
| QTS-6501 |  | Gallery 2202 / Lineup F2200 // Pull LV Cables from POD to ATS | 4d | 2026-04-08 A | 2026-04-10 A | QTS-45891 FF+1d, QTS-13551, QTS-2881, QTS-4051 | 100% | 2026-04-08 | 2026-04-11 | QTS-PHX3 DC1 - 6 day w/ Holidays | Construction | Electrical | IGMP | Phase 2 | Construction | DH2200 | BAB |  |  |
| QTS-8211 |  | Gallery 2202 / Lineup F2200 // Pull LV Cables from Reserve Bus to ATS | 2d | 2026-04-09 A | 2026-04-10 A | QTS-5131, QTS-6501, QTS-2881 | 100% | 2026-04-13 | 2026-04-14 | QTS-PHX3 DC1 - 6 day w/ Holidays | Construction | Electrical | IGMP | Phase 2 | Construction | DH2200 | BAB |  |  |
| QTS-9191 |  | Gallery 2202 / Lineup F2200 // Terminate & Torque ATS | 5d | 2026-05-06 A | 2026-05-13 A | QTS-6501, QTS-8211 | 100% | 2026-05-20 | 2026-05-26 | QTS-PHX3 DC1 - 6 day w/ Holidays | Construction | Electrical | IGMP | Phase 2 | Construction | DH2200 | BAB |  |  |
| QTS-9201 |  | Gallery 2202 / Lineup F2200 // Terminate & Torque COD | 2d | 2026-05-26 A | 2026-06-03 A | QTS-9191, QTS-6501 | 100% | 2026-05-20 | 2026-05-21 | QTS-PHX3 DC1 - 6 day w/ Holidays | Construction | Electrical | IGMP | Phase 2 | Construction | DH2200 | BAB |  | Oscar Armenta |
|  | 9 | **R2200 Lineup** |  | 2026-03-06 | 2026-07-01 |  |  |  |  |  |  |  |  |  |  |  |  |  |  |
| QTS-4001 |  | Gallery 2202 / Lineup R2200 // Set Reserve Busway Segment | 4d | 2026-03-06 A | 2026-03-06 A | QTS-50031 | 100% | 2026-03-06 | 2026-03-10 | QTS-PHX3 DC1 - 6 day w/ Holidays | Construction | Electrical | IGMP | Phase 2 | Construction | DH2200 | BAB |  |  |
| QTS-1831 |  | Gallery 2202 / Lineup R2200 // Install Hangers & Supports | 3d | 2026-03-14 A | 2026-03-14 A | QTS-1881 | 100% | 2026-03-14 | 2026-03-17 | QTS-PHX3 DC1 - 6 day w/ Holidays | Construction | Electrical | IGMP | Phase 2 | Construction | DH2200 | BAB |  |  |
| QTS-2831 |  | Gallery 2202 / Lineup R2200 // Install Raceways from LV POD to Reserve Busway | 5d | 2026-05-01 A | 2026-05-11 A | QTS-2881, QTS-1831 | 100% | 2026-06-03 | 2026-06-08 | QTS-PHX3 DC1 - 6 day w/ Holidays | Construction | Electrical | IGMP | Phase 2 | Construction | DH2200 | BAB |  | Oscar Armenta |
| QTS-6201 |  | Gallery 2202 / Lineup R2200 // Pull LV Cables from POD to Reserve Busway | 4d | 2026-06-17 A | 2026-07-01 A | QTS-13551, QTS-4001, QTS-2831 | 100% | 2026-06-24 | 2026-06-27 | QTS-PHX3 DC1 - 6 day w/ Holidays | Construction | Electrical | IGMP | Phase 2 | Construction | DH2200 | BAB |  | Oscar Armenta |
| QTS-7131 |  | Gallery 2202 / Lineup R2200 // Terminate Reserve Busway | 5d | 2026-06-22 A | 2026-07-01 A | QTS-6201 FF, QTS-2831 | 100% | 2026-06-27 | 2026-07-02 | QTS-PHX3 DC1 - 6 day w/ Holidays | Construction | Electrical | IGMP | Phase 2 | Construction | DH2200 | BAB |  | Oscar Armenta |

Notes:
- QTS-2871: Scheduler Notes: 3/24: 90% completed.
- QTS-2881: Scheduler Notes: 3/24: 90% completed.

| ID | WBS | Activity | Duration | Start | Finish | Predecessors | Complete | Planned start | Planned finish | Calendar | Allucent CSI Group | Project Section | Layton Discipline | Baseline | Phase-1-1 | Project Section-1 | Location | Contract | Phase-1 | Level | If Not Started or Finished Why? | Layton Super | Trade Partner | Notes | Schedule Note |
| --- | --- | --- | --- | --- | --- | --- | --- | --- | --- | --- | --- | --- | --- | --- | --- | --- | --- | --- | --- | --- | --- | --- | --- | --- | --- |
|  | 4 | **DH 2200 / Rooftop Mechanical** |  | 2025-08-11 | 2026-08-04 |  |  |  |  |  |  |  |  |  |  |  |  |  |  |  |  |  |  |  |  |
| QTS-1761 |  | DH 2200 / Rooftop Mechanical // OFCI - L2 SET IN PLACE - Eq Type # - Chiller #1RT40 - 7 units | 5d | 2025-08-11 A | 2025-08-11 A | QTS-35461, QTS-35451, QTS-35441, QTS-35431, QTS-35421, QTS-35411, QTS-35401, QTS-21521 | 100% | 2025-08-11 | 2025-08-15 |  | 01ADMIN | Construction | Mechanical | IGMP | Phase 2 | Construction | DH2200 | BAB |  |  |  |  |  |  |  |
| QTS-1791 |  | DH 2200 / Rooftop Mechanical // Set Doghouse Curbs | 6d | 2025-09-09 A | 2025-09-16 A | QTS-22151 | 100% |  |  |  |  | Construction | Mechanical | IGMP | Phase 2 | Construction | DH2200 | BAB |  |  |  |  |  |  |  |
| QTS-1771 |  | DH 2200 / Rooftop Mechanical // Set Doghouses | 5d | 2025-09-17 A | 2025-09-23 A | QTS-19911, QTS-1791 | 100% |  |  |  |  | Construction | Mechanical | IGMP | Phase 2 | Construction | DH2200 | BAB |  |  |  |  |  |  |  |
| QTS-100640 |  | DH 2200 / Rooftop Mechanical // Install Roof Protection | 2d | 2025-11-17 A | 2025-11-18 A | QTS-22861 SS | 100% |  |  |  | 01ADMIN | Construction | Mechanical | IGMP |  |  | DH2100 | BAB | Phase 1 | Level 2 |  |  |  |  |  |
| QTS-100710 |  | DH 2200 / Rooftop Mechanical // Install Grating, Toe Kicks, Hand Rails for TES Tanks | 5d | 2025-11-24 A | 2025-12-01 A | QTS-100430, QTS-100640, QTS-100340 | 100% |  |  | QTS-PHX3 DC1 - 6 day w/ Holidays | 01ADMIN | Construction | Mechanical | IGMP |  |  | DH2100 | BAB | Phase 1 | Level 2 |  |  |  |  |  |
| QTS-100720 |  | DH 2200 / Rooftop Mechanical // OFCI - ROOF SET IN PLACE - Eq Type # - TES Tanks - 7 units | 1d | 2025-12-05 A | 2025-12-05 A | QTS-100710 | 100% |  |  | QTS-PHX3 DC1 - 6 day w/ Holidays | 01ADMIN | Construction | Mechanical | IGMP |  |  | DH2100 | BAB | Phase 1 | Level 2 |  |  |  |  |  |
| QTS-100650 |  | DH 2200 / Rooftop Mechanical // Install 12" CHWS/R Run-Outs to RPH Vaults | 13d | 2025-12-10 A | 2026-01-27 A | QTS-100640 | 100% | 2025-12-10 | 2025-12-24 | QTS-PHX3 DC1 - 6 day w/ Holidays | 01ADMIN | Construction | Mechanical | IGMP |  |  | DH2100 | BAB | Phase 1 | Level 2 |  |  |  |  |  |
| QTS-100660 |  | DH 2200 / Rooftop Mechanical // Assemble & Install CHWS/R Piping from Mainline Piping to ACC Deck | 23d | 2025-12-10 A | 2026-01-21 A | QTS-100650 SS, QTS-100710 | 100% | 2025-12-10 | 2026-01-07 | QTS-PHX3 DC1 - 6 day w/ Holidays | 01ADMIN | Construction | Mechanical | IGMP |  |  | DH2100 | BAB | Phase 1 | Level 2 |  |  |  |  |  |
| QTS-100670 |  | DH 2200 / Rooftop Mechanical // Assemble & Install CHW Pump Assemblies at ACC Deck to Chillers | 28d | 2025-12-10 A | 2026-01-26 A | QTS-100660 SS, QTS-100710 | 100% | 2025-12-10 | 2026-01-13 | QTS-PHX3 DC1 - 6 day w/ Holidays | 01ADMIN | Construction | Mechanical | IGMP |  |  | DH2100 | BAB | Phase 1 | Level 2 |  |  |  |  |  |
| QTS-3421 |  | DH 2200 / Rooftop Mechanical // Set Vertical Inline Centrifugal Pumps | 5d | 2025-12-10 A | 2026-01-07 A | QTS-100670 SS, QTS-22861, QTS-1761 | 100% | 2025-12-10 | 2025-12-15 | QTS-PHX3 DC1 - 6 day w/ Holidays | 01ADMIN | Construction | Mechanical | IGMP | Phase 2 | Construction | DH2200 | BAB |  |  |  |  |  |  |  |
| QTS-100680 |  | DH 2200 / Rooftop Mechanical // Install Mainline Piping from RPH Vaults to Galleries (Risers) L2 / L1 | 10d | 2025-12-15 A | 2025-12-26 A | QTS-100670 SS+4d | 100% |  |  | QTS-PHX3 DC1 - 6 day w/ Holidays | 01ADMIN | Construction | Mechanical | IGMP |  |  | DH2100 | BAB | Phase 1 | Level 2 |  |  |  |  |  |
| QTS-1811 |  | DH 2200 / Rooftop Mechanical // OFCI - L2 SET IN PLACE - Eq Type # - DOAS-RT2200 - 2 units | 2d | 2026-01-12 A | 2026-01-13 A | QTS-22861, QTS-23451, QTS-23441, QTS-22151 | 100% |  |  | QTS-PHX3 DC1 - 6 day w/ Holidays | 01ADMIN | Construction | Mechanical | IGMP | Phase 2 | Construction | DH2200 | BAB |  |  |  |  |  |  |  |
| QTS-100700 |  | DH 2200 / Rooftop Mechanical // Set RPH Vault Housings | 5d | 2026-01-21 A | 2026-01-26 A | QTS-100680 FF+2d | 100% |  |  | QTS-PHX3 DC1 - 6 day w/ Holidays | 01ADMIN | Construction | Mechanical | IGMP |  |  | DH2100 | BAB | Phase 1 | Level 2 |  |  |  |  |  |
| QTS-100730 |  | DH 2200 / Rooftop Mechanical // Finalize Detailing for TES Tank CHW Piping/ Fabrication | 7d | 2026-01-21 A | 2026-02-09 A | QTS-100720 | 100% | 2026-01-21 | 2026-01-28 | QTS-PHX3 DC1 - 6 day w/ Holidays | 01ADMIN | Construction | Mechanical | IGMP |  |  | DH2100 | BAB | Phase 1 | Level 2 |  |  |  |  |  |
| QTS-50171 |  | Zone 2 / Rooftop // Rough In Plumbing from to DOAS | 1d | 2026-01-28 A | 2026-03-30 A | QTS-1811 | 100% | 2026-01-28 | 2026-01-28 | QTS-PHX3 DC1 - 6 day w/ Holidays | 01ADMIN | Construction | Mechanical | DC | Phase 1 | Construction | FOH | BAB |  | Roof | No Plumbing DOAS |  |  |  |  |
| QTS-50181 |  | Zone 2 / Rooftop // Rough In Power from to DOAS | 3d | 2026-02-12 A | 2026-07-15 A | QTS-50171 FF, QTS-1009400 FF, QTS-1811 | 100% | 2026-02-12 | 2026-02-14 | QTS-PHX3 DC1 - 6 day w/ Holidays | 01ADMIN | Construction | Electrical | DC | Phase 1 | Construction | FOH | BAB |  | Roof |  | Electrical | REI |  |  |
| QTS-1007570 |  | Zone 2 / Rooftop // Install Raceway From Dog House to Chillers & Pumps | 14d | 2026-03-05 A | 2026-05-04 A | QTS-1771 | 100% | 2026-03-05 | 2026-03-20 | QTS-PHX3 DC1 - 6 day w/ Holidays | 01ADMIN | Construction | Electrical | IGMP |  |  | DH2200 | BAB | Phase 2 | Roof |  |  |  | 4/14: 50% Complete. |  |
| QTS-1007580 |  | Zone 2 / Rooftop // Pull Wire From Dog House to Chillers | 9d | 2026-04-13 A | 2026-04-27 A | QTS-1007570 | 100% | 2026-05-20 | 2026-05-30 | QTS-PHX3 DC1 - 6 day w/ Holidays | 01ADMIN | Construction | Electrical | IGMP |  |  | DH2200 | BAB | Phase 2 | Roof |  |  |  |  |  |
| QTS-1007620 |  | Zone 2 / Rooftop // Pull Wire From VFD to Pumps | 7d | 2026-04-13 A | 2026-04-23 A | QTS-1007570 | 100% | 2026-05-20 | 2026-05-28 | QTS-PHX3 DC1 - 6 day w/ Holidays | 01ADMIN | Construction | Electrical | IGMP |  |  | DH2200 | BAB | Phase 2 | Roof |  |  |  |  |  |
| QTS-1012180 |  | Zone 2 / Rooftop // Install Raceway From Dog House to Chillers & Pumps | 14d | 2026-05-04 A | 2026-05-04 A | QTS-1007570 | 100% | 2026-03-05 | 2026-03-20 | QTS-PHX3 DC1 - 6 day w/ Holidays | 01ADMIN | Construction | Electrical | IGMP |  |  | DH2200 | BAB | Phase 2 | Roof |  |  |  | 4/14: 50% Complete. | Appears to be a duplicate activity |
| QTS-1007730 |  | Zone 2 / Rooftop // Install Control Raceway From Dog House to DOAS | 2d | 2026-05-11 A | 2026-05-12 A | QTS-1007570 FF | 100% |  |  | QTS-PHX3 DC1 - 6 day w/ Holidays | 01ADMIN | Construction | Electrical | IGMP |  |  | DH2200 | BAB | Phase 2 | Roof |  |  |  | 4/14: 50% Complete. |  |
| QTS-100690 |  | Zone 2 / Rooftop // Rough In Condensate Drain from DOAS | 2d | 2026-05-13 A | 2026-05-14 A | QTS-50171, QTS-1811 | 100% |  |  | QTS-PHX3 DC1 - 6 day w/ Holidays | 01ADMIN | Construction | Mechanical | IGMP |  |  | DH2100 | BAB | Phase 1 | Level 2 |  |  |  | 4/13: Why is this and zone 3 both pushing out to 5/11? |  |
| QTS-1007670 |  | Zone 2 / Rooftop // Install Control Raceway From Dog House to TES Tanks | 5d | 2026-05-13 A | 2026-05-18 A | QTS-1007730 | 100% |  |  | QTS-PHX3 DC1 - 6 day w/ Holidays | 01ADMIN | Construction | Electrical | IGMP |  |  | DH2200 | BAB | Phase 2 | Roof |  |  |  | 4/14: 40% Complete. |  |
| QTS-1007600 |  | Zone 2 / Rooftop // Terminate Wire at Zone 2 Chillers | 2d | 2026-05-22 A | 2026-06-08 A | QTS-1007580 | 100% | 2026-05-22 | 2026-05-23 | QTS-PHX3 DC1 - 6 day w/ Holidays | 01ADMIN | Construction | Electrical | IGMP |  |  | DH2200 | BAB | Phase 2 | Roof |  | Oscar Armenta |  |  |  |
| QTS-1007630 |  | Zone 2 / Rooftop // Terminate Wire at Zone 2 CHWPs | 2d | 2026-05-22 A | 2026-06-08 A | QTS-1007620 | 100% | 2026-06-03 | 2026-06-04 | QTS-PHX3 DC1 - 6 day w/ Holidays | 01ADMIN | Construction | Electrical | IGMP |  |  | DH2200 | BAB | Phase 2 | Roof |  | Oscar Armenta |  |  |  |
| QTS-1007680 |  | Zone 2 / Rooftop // Install Control Raceway From Dog House to Chiller (Zone 3) | 5d | 2026-06-03 A | 2026-06-22 A | QTS-1007670 SS, QTS-1007670 FF | 100% | 2026-06-03 | 2026-06-08 | QTS-PHX3 DC1 - 6 day w/ Holidays | 01ADMIN | Construction | Electrical | IGMP |  |  | DH2200 | BAB | Phase 2 | Roof |  | Oscar Armenta |  |  |  |
| QTS-1007590 |  | Zone 2 / Rooftop // Terminate Wire at Zone 2 VFDs | 1d | 2026-06-09 A | 2026-06-09 A | QTS-1007580, QTS-1008530, QTS-1008550, QTS-1007620 | 100% | 2026-06-12 | 2026-06-12 | QTS-PHX3 DC1 - 6 day w/ Holidays | 01ADMIN | Construction | Electrical | IGMP |  |  | DH2200 | BAB | Phase 2 | Roof |  | Oscar Armenta |  |  |  |
| QTS-1007640 |  | Zone 2 / Rooftop // Install Raceway From Dog House to DOAS | 2d | 2026-06-15 A | 2026-06-18 A | QTS-1007630 | 100% | 2026-06-24 | 2026-06-25 | QTS-PHX3 DC1 - 6 day w/ Holidays | 01ADMIN | Construction | Electrical | IGMP |  |  | DH2200 | BAB | Phase 2 | Roof |  | Oscar Armenta |  |  |  |
| QTS-1007690 |  | Zone 2 / Rooftop // Pull Control Wire From Dog House to Chiller | 1d | 2026-06-22 A | 2026-06-22 A | QTS-1007680 SS, QTS-1007680 FF | 100% | 2026-06-24 | 2026-06-24 | QTS-PHX3 DC1 - 6 day w/ Holidays | 01ADMIN | Construction | Electrical | IGMP |  |  | DH2200 | BAB | Phase 2 | Roof |  | Oscar Armenta |  |  |  |
| QTS-1007700 |  | Zone 2 / Rooftop // Pull Control Wire From Dog House to TES Tanks | 1d | 2026-06-23 A | 2026-06-23 A | QTS-1007690 | 100% | 2026-06-25 | 2026-06-25 | QTS-PHX3 DC1 - 6 day w/ Holidays | 01ADMIN | Construction | Electrical | IGMP |  |  | DH2200 | BAB | Phase 2 | Roof |  | Oscar Armenta |  |  |  |
| QTS-1007710 |  | Zone 2 / Rooftop // Terminate Control Wire From Dog House to Chiller | 1d | 2026-06-23 A | 2026-06-23 A | QTS-1007700 SS | 100% | 2026-06-25 | 2026-06-25 | QTS-PHX3 DC1 - 6 day w/ Holidays | 01ADMIN | Construction | Electrical | IGMP |  |  | DH2200 | BAB | Phase 2 | Roof |  | Oscar Armenta |  |  |  |
| QTS-1007720 |  | Zone 2 / Rooftop // Terminate Control Wire From Dog House to TES Tanks | 1d | 2026-06-23 A | 2026-06-23 A | QTS-1007710 SS, QTS-1007710 FF | 100% | 2026-06-25 | 2026-06-25 | QTS-PHX3 DC1 - 6 day w/ Holidays | 01ADMIN | Construction | Electrical | IGMP |  |  | DH2200 | BAB | Phase 2 | Roof |  | Oscar Armenta |  |  |  |
| QTS-100740 |  | Zone 2 / Rooftop // Install CHW Piping | 10d | 2026-06-29 A | 2026-07-10 A | QTS-100730, QTS-100900, QTS-101010, QTS-101030 | 100% | 2026-07-15 | 2026-07-25 | QTS-PHX3 DC1 - 6 day w/ Holidays | 01ADMIN | Construction | Mechanical | IGMP |  |  | DH2100 | BAB | Phase 1 | Level 2 |  | Mechanical |  |  |  |
| QTS-100750 |  | Zone 2 / Rooftop // Pressure Test (Air) Industrial Loop (L1) | 1d | 2026-07-08 A | 2026-07-08 A | QTS-100990 FF, QTS-100680, QTS-100740 | 100% | 2026-07-15 | 2026-07-15 | QTS-PHX3 DC1 - 6 day w/ Holidays | 01ADMIN | Construction | Mechanical | IGMP |  |  | DH2100 | BAB | Phase 1 | Level 2 |  | Mechanical |  |  |  |
| QTS-100760 |  | Zone 2 / Rooftop // Pressure Test (Air) Industrial Loop (L2) | 1d | 2026-07-09 A | 2026-07-09 A | QTS-100750 | 100% | 2026-07-15 | 2026-07-15 | QTS-PHX3 DC1 - 6 day w/ Holidays | 01ADMIN | Construction | Mechanical | IGMP |  |  | DH2100 | BAB | Phase 1 | Level 2 |  | Mechanical |  |  |  |
| QTS-100770 |  | Zone 2 / Rooftop // Pressure Test (Air) Industrial Loop (Roof) | 1d | 2026-07-09 A | 2026-07-09 A | QTS-100700, QTS-100760, QTS-100780 | 100% | 2026-07-16 | 2026-07-16 | QTS-PHX3 DC1 - 6 day w/ Holidays | 01ADMIN | Construction | Mechanical | IGMP |  |  | DH2100 | BAB | Phase 1 | Level 2 |  | Mechanical |  |  |  |
| QTS-100790 |  | Zone 2 / Rooftop // Hydro-Test (Water) Industrial Loop (L1) | 1d | 2026-07-09 A | 2026-07-09 A | QTS-100780 | 100% | 2026-07-15 | 2026-07-15 | QTS-PHX3 DC1 - 6 day w/ Holidays | 01ADMIN | Construction | Mechanical | IGMP |  |  | DH2100 | BAB | Phase 1 | Level 2 |  | Mechanical |  |  |  |
| QTS-100800 |  | Zone 2 / Rooftop // Hydro-Test (Water) Industrial Loop (L2) | 1d | 2026-07-09 A | 2026-07-09 A | QTS-100790 | 100% | 2026-07-16 | 2026-07-16 | QTS-PHX3 DC1 - 6 day w/ Holidays | 01ADMIN | Construction | Mechanical | IGMP |  |  | DH2100 | BAB | Phase 1 | Level 2 |  | Mechanical |  |  |  |
| QTS-1005250 |  | Zone 2 / Rooftop // De-install Temp Flush Pump - Zone 2 | 6d | 2026-07-10 A | 2026-07-10 A | QTS-100840 | 100% | 2026-08-21 | 2026-08-27 | QTS-PHX3 DC1 - 6 day w/ Holidays | 01ADMIN | Construction | Mechanical | IGMP |  |  | DH2200 | BAB | Phase 2 | Roof |  | Mechanical | Bel-Aire |  |  |
| QTS-100780 |  | Zone 2 / Rooftop // Install Temp Flush Pump, Power Source for Pump & Other Associated Components | 5d | 2026-07-10 A | 2026-07-14 A | QTS-100550, QTS-1005240 | 100% | 2026-07-15 | 2026-07-21 |  | 01ADMIN | Construction | Mechanical | IGMP |  |  | DH2100 | BAB | Phase 1 | Level 2 |  | Mechanical |  |  |  |
| QTS-100820 |  | Zone 2 / Rooftop // Hydro-Test (Water) Industrial Loop (Roof) | 1d | 2026-07-10 A | 2026-07-10 A | QTS-100800 | 100% | 2026-07-17 | 2026-07-17 | QTS-PHX3 DC1 - 6 day w/ Holidays | 01ADMIN | Construction | Mechanical | IGMP |  |  | DH2100 | BAB | Phase 1 | Level 2 |  | Mechanical |  |  |  |
| QTS-100840 |  | Zone 2 / Rooftop // Fill and Flush Industrial Loop (Zone 2 - All Levels) | 15d | 2026-07-10 A | 2026-07-10 A | QTS-100820 | 100% | 2026-07-15 | 2026-07-29 | QTS-PHX3 DC1 - 7 day No Holidays | 01ADMIN | Construction | Mechanical | IGMP |  |  | DH2100 | BAB | Phase 1 | Level 2 |  | Mechanical |  |  |  |
| QTS-1007650 |  | Zone 2 / Rooftop // Pull Wire to DOAS | 2d | 2026-07-15 A | 2026-07-16 A | QTS-1007640, QTS-1007640 FF | 100% | 2026-07-22 | 2026-07-23 | QTS-PHX3 DC1 - 6 day w/ Holidays | 01ADMIN | Construction | Electrical | IGMP |  |  | DH2200 | BAB | Phase 2 | Roof |  | Electrical | REI |  |  |
| QTS-1007740 |  | Zone 2 / Rooftop // Pull Control Wire to DOAS | 2d | 2026-07-15 A | 2026-07-16 A | QTS-1007730, QTS-1007640 | 100% | 2026-07-22 | 2026-07-23 | QTS-PHX3 DC1 - 6 day w/ Holidays | 01ADMIN | Construction | Electrical | IGMP |  |  | DH2200 | BAB | Phase 2 | Roof |  | Electrical | Prime |  |  |
| QTS-50191 |  | Zone 2 / Rooftop // Rough In Controls from to DOAS | 1d | 2026-07-15 A | 2026-07-15 A | QTS-50181 FF, QTS-1811 | 100% | 2026-07-22 | 2026-07-22 | QTS-PHX3 DC1 - 6 day w/ Holidays | 01ADMIN | Construction | Electrical | DC | Phase 1 | Construction | FOH | BAB |  | Roof |  | Electrical | Prime |  |  |
| QTS-1007660 |  | Zone 2 / Rooftop // Terminate Wire at DOAS | 1d | 2026-07-17 A | 2026-07-17 A | QTS-1007650, QTS-1007650 FF | 100% | 2026-07-24 | 2026-07-24 | QTS-PHX3 DC1 - 6 day w/ Holidays | 01ADMIN | Construction | Electrical | IGMP |  |  | DH2200 | BAB | Phase 2 | Roof |  | Electrical | REI |  |  |
| QTS-1007750 |  | Zone 2 / Rooftop // Terminate Control Wire at DOAS | 1d | 2026-07-17 A | 2026-07-17 A | QTS-1007740, QTS-1007740 FF | 100% | 2026-07-24 | 2026-07-24 | QTS-PHX3 DC1 - 6 day w/ Holidays | 01ADMIN | Construction | Electrical | IGMP |  |  | DH2200 | BAB | Phase 2 | Roof |  | Electrical | Prime |  |  |

Notes:
- QTS-1791: allucent_notes: Brandon Feather on 2025-01-07 08:01: Date moved from 1/3/25 as the roof decking isnt released yet. rough date it is expected is mid to end of feb for Phase 1. BSF-1.7.25
- QTS-100640: allucent_notes_20251014_152335: David Wiltberger on 2025-08-19 09:08: changed pick order / David Wiltberger on 2025-09-02 10:09: Moving to accommodate roofing in Zone 1 / David Wiltberger on 2025-09-24 04:09: BAM not completed Potential Delay / David Wiltberger on 2025-09-30 12:09: BAM did not complete / David Wiltberger on 2025-10-14 10:10: set on recovery schedule / allucent_notes: David Wiltberger on 2025-08-19 09:08: changed pick order / allucent_notes: 2025-08-19 09:08 - User: David Wiltberger - Date Added: 2025-08-19 09:08 - Note: changed pick order / 2025-09-02 10:09 - User: David Wiltberger - Date Added: 2025-09-02 10:09 - Note: Moving to accommodate roofing in Zone 1 / 2025-09-24 04:09 - User: Dav
- QTS-100710: allucent_notes_20251216_165335: David Wiltberger on 2025-12-02 06:46: Grating not complete to install / allucent_notes_20251209_203830: David Wiltberger on 2025-12-02 06:46: Grating not complete to install / allucent_notes_20251202_153722: David Wiltberger on 2025-12-02 06:46: Grating not complete to install / allucent_notes_20251014_152335: David Wiltberger on 2025-08-19 09:08: changed pick order / David Wiltberger on 2025-09-02 10:09: Moving to accommodate roofing in Zone 1 / David Wiltberger on 2025-09-24 04:09: BAM not completed Potential Delay / David Wiltberger on 2025-09-30 12:09: BAM did not complete / David Wiltberger on 2025-10-14 10:10: set on recovery schedule / allucent_notes: David Wiltberger on 2025-08-19 09:08: changed pick order / allucent_notes_20251230_164549: David Wiltberger on 2025-12-02 06:46: Grating not complete to install / David Wiltberger on 2025-12-30 16:19: no update / allucent_notes: 2025-12-02 06:46 - User: David Wiltberger - Date Added: 2025-12-02 06:46 - Note: Grating not complete to install / 2025-12-30 16:19 - User: David Wiltberger - Date Added: 2025-12-30 16:19 - Note: no update
- QTS-100720: allucent_notes_20251014_152335: David Wiltberger on 2025-08-19 09:08: changed pick order / David Wiltberger on 2025-09-02 10:09: Moving to accommodate roofing in Zone 1 / David Wiltberger on 2025-09-24 04:09: BAM not completed Potential Delay / David Wiltberger on 2025-09-30 12:09: BAM did not complete / David Wiltberger on 2025-10-14 10:10: set on recovery schedule / allucent_notes: David Wiltberger on 2025-08-19 09:08: changed pick order / allucent_notes: 2025-08-19 09:08 - User: David Wiltberger - Date Added: 2025-08-19 09:08 - Note: changed pick order / 2025-09-02 10:09 - User: David Wiltberger - Date Added: 2025-09-02 10:09 - Note: Moving to accommodate roofing in Zone 1 / 2025-09-24 04:09 - User: Dav
- QTS-100650: allucent_notes_20251216_165335: David Wiltberger on 2025-12-02 06:47: BAM is behind working to recover / allucent_notes_20251202_153722: David Wiltberger on 2025-12-02 06:47: BAM is behind working to recover / allucent_notes_20251014_152335: David Wiltberger on 2025-08-19 09:08: changed pick order / David Wiltberger on 2025-09-02 10:09: Moving to accommodate roofing in Zone 1 / David Wiltberger on 2025-09-24 04:09: BAM not completed Potential Delay / David Wiltberger on 2025-09-30 12:09: BAM did not complete / David Wiltberger on 2025-10-14 10:10: set on recovery schedule / allucent_notes: David Wiltberger on 2025-08-19 09:08: changed pick order / allucent_notes_20251230_164549: David Wiltberger on 2025-12-02 06:47: BAM is behind working to recover / allucent_notes: 2025-12-02 06:47 - User: David Wiltberger - Date Added: 2025-12-02 06:47 - Note: BAM is behind working to recover
- QTS-100660: allucent_notes_20251014_152335: David Wiltberger on 2025-08-19 09:08: changed pick order / David Wiltberger on 2025-09-02 10:09: Moving to accommodate roofing in Zone 1 / David Wiltberger on 2025-09-24 04:09: BAM not completed Potential Delay / David Wiltberger on 2025-09-30 12:09: BAM did not complete / David Wiltberger on 2025-10-14 10:10: set on recovery schedule / allucent_notes: David Wiltberger on 2025-08-19 09:08: changed pick order / allucent_notes: 2025-08-19 09:08 - User: David Wiltberger - Date Added: 2025-08-19 09:08 - Note: changed pick order / 2025-09-02 10:09 - User: David Wiltberger - Date Added: 2025-09-02 10:09 - Note: Moving to accommodate roofing in Zone 1 / 2025-09-24 04:09 - User: Dav
- QTS-100670: allucent_notes_20251014_152335: David Wiltberger on 2025-08-19 09:08: changed pick order / David Wiltberger on 2025-09-02 10:09: Moving to accommodate roofing in Zone 1 / David Wiltberger on 2025-09-24 04:09: BAM not completed Potential Delay / David Wiltberger on 2025-09-30 12:09: BAM did not complete / David Wiltberger on 2025-10-14 10:10: set on recovery schedule / allucent_notes: David Wiltberger on 2025-08-19 09:08: changed pick order / allucent_notes: 2025-08-19 09:08 - User: David Wiltberger - Date Added: 2025-08-19 09:08 - Note: changed pick order / 2025-09-02 10:09 - User: David Wiltberger - Date Added: 2025-09-02 10:09 - Note: Moving to accommodate roofing in Zone 1 / 2025-09-24 04:09 - User: Dav
- QTS-3421: allucent_notes_20251216_165335: David Wiltberger on 2025-09-02 10:09: Moving installation to accomidate roofing for Zone 1 / David Wiltberger on 2025-09-24 04:09: BAM potential Delay / David Wiltberger on 2025-09-30 12:09: BAM not ready / David Wiltberger on 2025-10-07 15:10: unable to work on roof zone 1 due to TPO insulation / David Wiltberger on 2025-10-21 13:10: Delaying by TPO dry in / Scott Masterson on 2025-12-16 16:08: Still have a couple lefty to fly up. / allucent_notes_20251202_153722: David Wiltberger on 2025-09-02 10:09: Moving installation to accomidate roofing for Zone 1 / David Wiltberger on 2025-09-24 04:09: BAM potential Delay / David Wiltberger on 2025-09-30 12:09: BAM not ready / David Wiltberger on 2025-10-07 15:10: unable to work on roof zone 1 due to TPO insulation / David Wiltberger on 2025-10-21 13:10: Delaying by TPO dry in / allucent_notes_20251118_192630: David Wiltberger on 2025-09-02 10:09: Moving installation to accomidate roofing for Zone 1 / David Wiltberger on 2025-09-24 04:09: BAM potential Delay / David Wiltberger on 2025-09-30 12:09: BAM not ready / David Wiltberger on 2025-10-07 15:10: unable to work on roof zone 1 due to TPO insulation / David Wiltberger on 2025-10-21 13:10: Delaying by TPO dry in / allucent_notes_20251111_182405: David Wiltberger on 2025-09-02 10:09: Moving installation to accomidate roofing for Zone 1 / David Wiltberger on 2025-09-24 04:09: BAM potential Delay / David Wiltberger on 2025-09-30 12:09: BAM not ready / David Wiltberger on 2025-10-07 15:10: unable to work on roof zone 1 due to TPO insulation / David Wiltberger on 2025-10-21 13:10: Delaying by TPO dry in / allucent_notes_20251021_145627: David Wiltberger on 2025-09-02 10:09: Moving installation to accomidate roofing for Zone 1 / David Wiltberger on 2025-09-24 04:09: BAM potential Delay / David Wiltberger on 2025-09-30 12:09: BAM not ready / David Wiltberger on 2025-10-07 15:10: unable to work on roof zone 1 due to TPO insulation / David Wiltberger on 2025-10-21 13:10: Delaying by TPO dry in / allucent_notes_20251014_152335: David Wiltberger on 2025-09-02 10:09: Moving installation to accomidate roofing for Zone 1 / David Wiltberger on 2025-09-24 04:09: BAM potential Delay / David Wiltberger on 2025-09-30 12:09: BAM not ready / David Wiltberger on 2025-10-07 15:10: unable to work on roof zone 1 due to TPO insulation / allucent_notes: David Wiltberger on 2025-09-02 10:09: Moving installation to accomidate roofing for Zone 1 / allucent_notes_20251230_164549: David Wiltberger on 2025-09-02 10:09: Moving installation to accomidate roofing for Zone 1 / David Wiltberger on 2025-09-24 04:09: BAM potential Delay / David Wiltberger on 2025-09-30 12:09: BAM not ready / David Wiltberger on 2025-10-07 15:10: unable to work on roof zone 1 due to TPO insulation / David Wiltberger on 2025-10-21 13:10: Delaying by TPO dry in / Scott Masterson on 2025-12-16 16:08: Still have a couple lefty to fly up. / David Wiltberger on 2025-12-30 16:18: no update / allucent_notes: 2025-09-02 10:09 - User: David Wiltberger - Date Added: 2025-09-02 10:09 - Note: Moving installation to accomidate roofing for Zone 1 / 2025-09-24 04:09 - User: David Wiltberger - Date Added: 2025-09-24 04:09 - Note: BAM potential Delay / 2025-09-30 12:
- QTS-100680: allucent_notes_20251014_152335: David Wiltberger on 2025-08-19 09:08: changed pick order / David Wiltberger on 2025-09-02 10:09: Moving to accommodate roofing in Zone 1 / David Wiltberger on 2025-09-24 04:09: BAM not completed Potential Delay / David Wiltberger on 2025-09-30 12:09: BAM did not complete / David Wiltberger on 2025-10-14 10:10: set on recovery schedule / allucent_notes: David Wiltberger on 2025-08-19 09:08: changed pick order / allucent_notes_20251230_164549: David Wiltberger on 2025-12-30 16:19: no update / allucent_notes: 2025-12-30 16:19 - User: David Wiltberger - Date Added: 2025-12-30 16:19 - Note: no update
- QTS-1811: allucent_notes_20251230_164549: David Wiltberger on 2025-12-30 16:19: no update / allucent_notes: 2025-12-30 16:19 - User: David Wiltberger - Date Added: 2025-12-30 16:19 - Note: no update
- QTS-100700: allucent_notes_20251014_152335: David Wiltberger on 2025-08-19 09:08: changed pick order / David Wiltberger on 2025-09-02 10:09: Moving to accommodate roofing in Zone 1 / David Wiltberger on 2025-09-24 04:09: BAM not completed Potential Delay / David Wiltberger on 2025-09-30 12:09: BAM did not complete / David Wiltberger on 2025-10-14 10:10: set on recovery schedule / allucent_notes: David Wiltberger on 2025-08-19 09:08: changed pick order / allucent_notes: 2025-08-19 09:08 - User: David Wiltberger - Date Added: 2025-08-19 09:08 - Note: changed pick order / 2025-09-02 10:09 - User: David Wiltberger - Date Added: 2025-09-02 10:09 - Note: Moving to accommodate roofing in Zone 1 / 2025-09-24 04:09 - User: Dav
- QTS-100730: allucent_notes_20251014_152335: David Wiltberger on 2025-08-19 09:08: changed pick order / David Wiltberger on 2025-09-02 10:09: Moving to accommodate roofing in Zone 1 / David Wiltberger on 2025-09-24 04:09: BAM not completed Potential Delay / David Wiltberger on 2025-09-30 12:09: BAM did not complete / David Wiltberger on 2025-10-14 10:10: set on recovery schedule / allucent_notes: David Wiltberger on 2025-08-19 09:08: changed pick order / allucent_notes: 2025-08-19 09:08 - User: David Wiltberger - Date Added: 2025-08-19 09:08 - Note: changed pick order / 2025-09-02 10:09 - User: David Wiltberger - Date Added: 2025-09-02 10:09 - Note: Moving to accommodate roofing in Zone 1 / 2025-09-24 04:09 - User: Dav
- QTS-1007570: allucent_notes_20251014_152335: David Wiltberger on 2025-08-19 09:08: changed pick order / David Wiltberger on 2025-09-02 10:09: Moving to accommodate roofing in Zone / 1 / David Wiltberger on 2025-09-24 04:09: BAM not completed Potential Delay / David Wiltberger on 2025-09-30 12:09: BAM did not complete / David Wiltberger on 2025-10-14 10:10: set on recovery / schedule / allucent_notes: David Wiltberger on 2025-08-19 09:08: changed pick order / Scheduler Notes: David Wiltberger on 2025-08-19 09:08: changed pick order / David Wiltberger on 2025-09-02 10:09: Moving to accommodate roofing in Zone / 1 / David Wiltberger on 2025-09-24 04:09: BAM not completed Potential Delay / David Wiltberger on 2025-09-30 12:09: BAM did not complete / David Wiltberger on 2025-10-14 10:10: set on recovery schedule / 4/14: 50% Complete. / allucent_notes: 2025-08-19 09:08 - User: David Wiltberger - Date Added: 2025-08-19 09:08 - Note: changed pick order / 2025-09-02 10:09 - User: David Wiltberger - Date Added: 2025-09-02 10:09 - Note: Moving to accommodate roofing in Zone 1 / 2025-09-24 04:09 - User: Dav
- QTS-1007580: allucent_notes_20251014_152335: David Wiltberger on 2025-08-19 09:08: changed pick order / David Wiltberger on 2025-09-02 10:09: Moving to accommodate roofing in Zone 1 / David Wiltberger on 2025-09-24 04:09: BAM not completed Potential Delay / David Wiltberger on 2025-09-30 12:09: BAM did not complete / David Wiltberger on 2025-10-14 10:10: set on recovery schedule / allucent_notes: David Wiltberger on 2025-08-19 09:08: changed pick order / allucent_notes: 2025-08-19 09:08 - User: David Wiltberger - Date Added: 2025-08-19 09:08 - Note: changed pick order / 2025-09-02 10:09 - User: David Wiltberger - Date Added: 2025-09-02 10:09 - Note: Moving to accommodate roofing in Zone 1 / 2025-09-24 04:09 - User: Dav
- QTS-1007620: allucent_notes_20251014_152335: David Wiltberger on 2025-08-19 09:08: changed pick order / David Wiltberger on 2025-09-02 10:09: Moving to accommodate roofing in Zone 1 / David Wiltberger on 2025-09-24 04:09: BAM not completed Potential Delay / David Wiltberger on 2025-09-30 12:09: BAM did not complete / David Wiltberger on 2025-10-14 10:10: set on recovery schedule / allucent_notes: David Wiltberger on 2025-08-19 09:08: changed pick order / allucent_notes: 2025-08-19 09:08 - User: David Wiltberger - Date Added: 2025-08-19 09:08 - Note: changed pick order / 2025-09-02 10:09 - User: David Wiltberger - Date Added: 2025-09-02 10:09 - Note: Moving to accommodate roofing in Zone 1 / 2025-09-24 04:09 - User: Dav
- QTS-1012180: allucent_notes_20251014_152335: David Wiltberger on 2025-08-19 09:08: changed pick order / David Wiltberger on 2025-09-02 10:09: Moving to accommodate roofing in Zone / 1 / David Wiltberger on 2025-09-24 04:09: BAM not completed Potential Delay / David Wiltberger on 2025-09-30 12:09: BAM did not complete / David Wiltberger on 2025-10-14 10:10: set on recovery / schedule / allucent_notes: David Wiltberger on 2025-08-19 09:08: changed pick order / Scheduler Notes: David Wiltberger on 2025-08-19 09:08: changed pick order / David Wiltberger on 2025-09-02 10:09: Moving to accommodate roofing in Zone / 1 / David Wiltberger on 2025-09-24 04:09: BAM not completed Potential Delay / David Wiltberger on 2025-09-30 12:09: BAM did not complete / David Wiltberger on 2025-10-14 10:10: set on recovery schedule / 4/14: 50% Complete. / allucent_notes: 2025-08-19 09:08 - User: David Wiltberger - Date Added: 2025-08-19 09:08 - Note: changed pick order / 2025-09-02 10:09 - User: David Wiltberger - Date Added: 2025-09-02 10:09 - Note: Moving to accommodate roofing in Zone 1 / 2025-09-24 04:09 - User: Dav
- QTS-1007730: allucent_notes_20251014_152335: David Wiltberger on 2025-08-19 09:08: changed pick order / David Wiltberger on 2025-09-02 10:09: Moving to accommodate roofing in Zone 1 / David Wiltberger on 2025-09-24 04:09: BAM not completed Potential Delay / David Wiltberger on 2025-09-30 12:09: BAM did not complete / David Wiltberger on 2025-10-14 10:10: set on recovery schedule / allucent_notes: David Wiltberger on 2025-08-19 09:08: changed pick order / Scheduler Notes: David Wiltberger on 2025-08-19 09:08: changed pick order / David Wiltberger on 2025-09-02 10:09: Moving to accommodate roofing in Zone / 1 / David Wiltberger on 2025-09-24 04:09: BAM not completed Potential Delay / David Wiltberger on 2025-09-30 12:09: BAM did not complete / David Wiltberger on 2025-10-14 10:10: set on recovery schedule / 4/14: 50% Complete. / allucent_notes: 2025-08-19 09:08 - User: David Wiltberger - Date Added: 2025-08-19 09:08 - Note: changed pick order / 2025-09-02 10:09 - User: David Wiltberger - Date Added: 2025-09-02 10:09 - Note: Moving to accommodate roofing in Zone 1 / 2025-09-24 04:09 - User: Dav
- QTS-100690: allucent_notes_20251014_152335: David Wiltberger on 2025-08-19 09:08: changed pick order / David Wiltberger on 2025-09-02 10:09: Moving to accommodate roofing in Zone / 1 / David Wiltberger on 2025-09-24 04:09: BAM not completed Potential Delay / David Wiltberger on 2025-09-30 12:09: BAM did not complete / David Wiltberger on 2025-10-14 10:10: set on recovery / schedule / allucent_notes: David Wiltberger on 2025-08-19 09:08: changed pick order / Scheduler Notes: David Wiltberger on 2025-08-19 09:08: changed pick order / David Wiltberger on 2025-09-02 10:09: Moving to accommodate roofing in Zone / 1 / David Wiltberger on 2025-09-24 04:09: BAM not completed Potential Delay / David Wiltberger on 2025-09-30 12:09: BAM did not complete / David Wiltberger on 2025-10-14 10:10: set on recovery schedule / 4/13: Why is this and zone 3 both pushing out to 5/11? / allucent_notes: 2025-08-19 09:08 - User: David Wiltberger - Date Added: 2025-08-19 09:08 - Note: changed pick order / 2025-09-02 10:09 - User: David Wiltberger - Date Added: 2025-09-02 10:09 - Note: Moving to accommodate roofing in Zone 1 / 2025-09-24 04:09 - User: Dav
- QTS-1007670: allucent_notes_20251014_152335: David Wiltberger on 2025-08-19 09:08: changed pick order / David Wiltberger on 2025-09-02 10:09: Moving to accommodate roofing in Zone / 1 / David Wiltberger on 2025-09-24 04:09: BAM not completed Potential Delay / David Wiltberger on 2025-09-30 12:09: BAM did not complete / David Wiltberger on 2025-10-14 10:10: set on recovery / schedule / allucent_notes: David Wiltberger on 2025-08-19 09:08: changed pick order / Scheduler Notes: David Wiltberger on 2025-08-19 09:08: changed pick order / David Wiltberger on 2025-09-02 10:09: Moving to accommodate roofing in Zone / 1 / David Wiltberger on 2025-09-24 04:09: BAM not completed Potential Delay / David Wiltberger on 2025-09-30 12:09: BAM did not complete / David Wiltberger on 2025-10-14 10:10: set on recovery schedule / 4/14: 40% Complete. / allucent_notes: 2025-08-19 09:08 - User: David Wiltberger - Date Added: 2025-08-19 09:08 - Note: changed pick order / 2025-09-02 10:09 - User: David Wiltberger - Date Added: 2025-09-02 10:09 - Note: Moving to accommodate roofing in Zone 1 / 2025-09-24 04:09 - User: Dav
- QTS-1007600: allucent_notes_20251014_152335: David Wiltberger on 2025-08-19 09:08: changed pick order / David Wiltberger on 2025-09-02 10:09: Moving to accommodate roofing in Zone 1 / David Wiltberger on 2025-09-24 04:09: BAM not completed Potential Delay / David Wiltberger on 2025-09-30 12:09: BAM did not complete / David Wiltberger on 2025-10-14 10:10: set on recovery schedule / allucent_notes: David Wiltberger on 2025-08-19 09:08: changed pick order / allucent_notes: 2025-08-19 09:08 - User: David Wiltberger - Date Added: 2025-08-19 09:08 - Note: changed pick order / 2025-09-02 10:09 - User: David Wiltberger - Date Added: 2025-09-02 10:09 - Note: Moving to accommodate roofing in Zone 1 / 2025-09-24 04:09 - User: Dav
- QTS-1007630: allucent_notes_20251014_152335: David Wiltberger on 2025-08-19 09:08: changed pick order / David Wiltberger on 2025-09-02 10:09: Moving to accommodate roofing in Zone 1 / David Wiltberger on 2025-09-24 04:09: BAM not completed Potential Delay / David Wiltberger on 2025-09-30 12:09: BAM did not complete / David Wiltberger on 2025-10-14 10:10: set on recovery schedule / allucent_notes: David Wiltberger on 2025-08-19 09:08: changed pick order / allucent_notes: 2025-08-19 09:08 - User: David Wiltberger - Date Added: 2025-08-19 09:08 - Note: changed pick order / 2025-09-02 10:09 - User: David Wiltberger - Date Added: 2025-09-02 10:09 - Note: Moving to accommodate roofing in Zone 1 / 2025-09-24 04:09 - User: Dav
- QTS-1007680: allucent_notes_20251014_152335: David Wiltberger on 2025-08-19 09:08: changed pick order / David Wiltberger on 2025-09-02 10:09: Moving to accommodate roofing in Zone 1 / David Wiltberger on 2025-09-24 04:09: BAM not completed Potential Delay / David Wiltberger on 2025-09-30 12:09: BAM did not complete / David Wiltberger on 2025-10-14 10:10: set on recovery schedule / allucent_notes: David Wiltberger on 2025-08-19 09:08: changed pick order / allucent_notes: 2025-08-19 09:08 - User: David Wiltberger - Date Added: 2025-08-19 09:08 - Note: changed pick order / 2025-09-02 10:09 - User: David Wiltberger - Date Added: 2025-09-02 10:09 - Note: Moving to accommodate roofing in Zone 1 / 2025-09-24 04:09 - User: Dav
- QTS-1007590: allucent_notes_20251014_152335: David Wiltberger on 2025-08-19 09:08: changed pick order / David Wiltberger on 2025-09-02 10:09: Moving to accommodate roofing in Zone 1 / David Wiltberger on 2025-09-24 04:09: BAM not completed Potential Delay / David Wiltberger on 2025-09-30 12:09: BAM did not complete / David Wiltberger on 2025-10-14 10:10: set on recovery schedule / allucent_notes: David Wiltberger on 2025-08-19 09:08: changed pick order / allucent_notes: 2025-08-19 09:08 - User: David Wiltberger - Date Added: 2025-08-19 09:08 - Note: changed pick order / 2025-09-02 10:09 - User: David Wiltberger - Date Added: 2025-09-02 10:09 - Note: Moving to accommodate roofing in Zone 1 / 2025-09-24 04:09 - User: Dav
- QTS-1007640: allucent_notes_20251014_152335: David Wiltberger on 2025-08-19 09:08: changed pick order / David Wiltberger on 2025-09-02 10:09: Moving to accommodate roofing in Zone 1 / David Wiltberger on 2025-09-24 04:09: BAM not completed Potential Delay / David Wiltberger on 2025-09-30 12:09: BAM did not complete / David Wiltberger on 2025-10-14 10:10: set on recovery schedule / allucent_notes: David Wiltberger on 2025-08-19 09:08: changed pick order / allucent_notes: 2025-08-19 09:08 - User: David Wiltberger - Date Added: 2025-08-19 09:08 - Note: changed pick order / 2025-09-02 10:09 - User: David Wiltberger - Date Added: 2025-09-02 10:09 - Note: Moving to accommodate roofing in Zone 1 / 2025-09-24 04:09 - User: Dav
- QTS-1007690: allucent_notes_20251014_152335: David Wiltberger on 2025-08-19 09:08: changed pick order / David Wiltberger on 2025-09-02 10:09: Moving to accommodate roofing in Zone 1 / David Wiltberger on 2025-09-24 04:09: BAM not completed Potential Delay / David Wiltberger on 2025-09-30 12:09: BAM did not complete / David Wiltberger on 2025-10-14 10:10: set on recovery schedule / allucent_notes: David Wiltberger on 2025-08-19 09:08: changed pick order / allucent_notes: 2025-08-19 09:08 - User: David Wiltberger - Date Added: 2025-08-19 09:08 - Note: changed pick order / 2025-09-02 10:09 - User: David Wiltberger - Date Added: 2025-09-02 10:09 - Note: Moving to accommodate roofing in Zone 1 / 2025-09-24 04:09 - User: Dav
- QTS-1007700: allucent_notes_20251014_152335: David Wiltberger on 2025-08-19 09:08: changed pick order / David Wiltberger on 2025-09-02 10:09: Moving to accommodate roofing in Zone 1 / David Wiltberger on 2025-09-24 04:09: BAM not completed Potential Delay / David Wiltberger on 2025-09-30 12:09: BAM did not complete / David Wiltberger on 2025-10-14 10:10: set on recovery schedule / allucent_notes: David Wiltberger on 2025-08-19 09:08: changed pick order / allucent_notes: 2025-08-19 09:08 - User: David Wiltberger - Date Added: 2025-08-19 09:08 - Note: changed pick order / 2025-09-02 10:09 - User: David Wiltberger - Date Added: 2025-09-02 10:09 - Note: Moving to accommodate roofing in Zone 1 / 2025-09-24 04:09 - User: Dav
- QTS-1007710: allucent_notes_20251014_152335: David Wiltberger on 2025-08-19 09:08: changed pick order / David Wiltberger on 2025-09-02 10:09: Moving to accommodate roofing in Zone 1 / David Wiltberger on 2025-09-24 04:09: BAM not completed Potential Delay / David Wiltberger on 2025-09-30 12:09: BAM did not complete / David Wiltberger on 2025-10-14 10:10: set on recovery schedule / allucent_notes: David Wiltberger on 2025-08-19 09:08: changed pick order / allucent_notes: 2025-08-19 09:08 - User: David Wiltberger - Date Added: 2025-08-19 09:08 - Note: changed pick order / 2025-09-02 10:09 - User: David Wiltberger - Date Added: 2025-09-02 10:09 - Note: Moving to accommodate roofing in Zone 1 / 2025-09-24 04:09 - User: Dav
- QTS-1007720: allucent_notes_20251014_152335: David Wiltberger on 2025-08-19 09:08: changed pick order / David Wiltberger on 2025-09-02 10:09: Moving to accommodate roofing in Zone 1 / David Wiltberger on 2025-09-24 04:09: BAM not completed Potential Delay / David Wiltberger on 2025-09-30 12:09: BAM did not complete / David Wiltberger on 2025-10-14 10:10: set on recovery schedule / allucent_notes: David Wiltberger on 2025-08-19 09:08: changed pick order / allucent_notes: 2025-08-19 09:08 - User: David Wiltberger - Date Added: 2025-08-19 09:08 - Note: changed pick order / 2025-09-02 10:09 - User: David Wiltberger - Date Added: 2025-09-02 10:09 - Note: Moving to accommodate roofing in Zone 1 / 2025-09-24 04:09 - User: Dav
- QTS-100740: allucent_notes_20251014_152335: David Wiltberger on 2025-08-19 09:08: changed pick order / David Wiltberger on 2025-09-02 10:09: Moving to accommodate roofing in Zone 1 / David Wiltberger on 2025-09-24 04:09: BAM not completed Potential Delay / David Wiltberger on 2025-09-30 12:09: BAM did not complete / David Wiltberger on 2025-10-14 10:10: set on recovery schedule / allucent_notes: David Wiltberger on 2025-08-19 09:08: changed pick order / allucent_notes: 2025-08-19 09:08 - User: David Wiltberger - Date Added: 2025-08-19 09:08 - Note: changed pick order / 2025-09-02 10:09 - User: David Wiltberger - Date Added: 2025-09-02 10:09 - Note: Moving to accommodate roofing in Zone 1 / 2025-09-24 04:09 - User: Dav
- QTS-100750: allucent_notes_20251014_152335: David Wiltberger on 2025-08-19 09:08: changed pick order / David Wiltberger on 2025-09-02 10:09: Moving to accommodate roofing in Zone 1 / David Wiltberger on 2025-09-24 04:09: BAM not completed Potential Delay / David Wiltberger on 2025-09-30 12:09: BAM did not complete / David Wiltberger on 2025-10-14 10:10: set on recovery schedule / allucent_notes: David Wiltberger on 2025-08-19 09:08: changed pick order / allucent_notes: 2025-08-19 09:08 - User: David Wiltberger - Date Added: 2025-08-19 09:08 - Note: changed pick order / 2025-09-02 10:09 - User: David Wiltberger - Date Added: 2025-09-02 10:09 - Note: Moving to accommodate roofing in Zone 1 / 2025-09-24 04:09 - User: Dav
- QTS-100760: allucent_notes_20251014_152335: David Wiltberger on 2025-08-19 09:08: changed pick order / David Wiltberger on 2025-09-02 10:09: Moving to accommodate roofing in Zone 1 / David Wiltberger on 2025-09-24 04:09: BAM not completed Potential Delay / David Wiltberger on 2025-09-30 12:09: BAM did not complete / David Wiltberger on 2025-10-14 10:10: set on recovery schedule / allucent_notes: David Wiltberger on 2025-08-19 09:08: changed pick order / allucent_notes: 2025-08-19 09:08 - User: David Wiltberger - Date Added: 2025-08-19 09:08 - Note: changed pick order / 2025-09-02 10:09 - User: David Wiltberger - Date Added: 2025-09-02 10:09 - Note: Moving to accommodate roofing in Zone 1 / 2025-09-24 04:09 - User: Dav
- QTS-100770: allucent_notes_20251014_152335: David Wiltberger on 2025-08-19 09:08: changed pick order / David Wiltberger on 2025-09-02 10:09: Moving to accommodate roofing in Zone 1 / David Wiltberger on 2025-09-24 04:09: BAM not completed Potential Delay / David Wiltberger on 2025-09-30 12:09: BAM did not complete / David Wiltberger on 2025-10-14 10:10: set on recovery schedule / allucent_notes: David Wiltberger on 2025-08-19 09:08: changed pick order / allucent_notes: 2025-08-19 09:08 - User: David Wiltberger - Date Added: 2025-08-19 09:08 - Note: changed pick order / 2025-09-02 10:09 - User: David Wiltberger - Date Added: 2025-09-02 10:09 - Note: Moving to accommodate roofing in Zone 1 / 2025-09-24 04:09 - User: Dav
- QTS-100790: allucent_notes_20251014_152335: David Wiltberger on 2025-08-19 09:08: changed pick order / David Wiltberger on 2025-09-02 10:09: Moving to accommodate roofing in Zone 1 / David Wiltberger on 2025-09-24 04:09: BAM not completed Potential Delay / David Wiltberger on 2025-09-30 12:09: BAM did not complete / David Wiltberger on 2025-10-14 10:10: set on recovery schedule / allucent_notes: David Wiltberger on 2025-08-19 09:08: changed pick order / allucent_notes: 2025-08-19 09:08 - User: David Wiltberger - Date Added: 2025-08-19 09:08 - Note: changed pick order / 2025-09-02 10:09 - User: David Wiltberger - Date Added: 2025-09-02 10:09 - Note: Moving to accommodate roofing in Zone 1 / 2025-09-24 04:09 - User: Dav
- QTS-100800: allucent_notes_20251014_152335: David Wiltberger on 2025-08-19 09:08: changed pick order / David Wiltberger on 2025-09-02 10:09: Moving to accommodate roofing in Zone 1 / David Wiltberger on 2025-09-24 04:09: BAM not completed Potential Delay / David Wiltberger on 2025-09-30 12:09: BAM did not complete / David Wiltberger on 2025-10-14 10:10: set on recovery schedule / allucent_notes: David Wiltberger on 2025-08-19 09:08: changed pick order / allucent_notes: 2025-08-19 09:08 - User: David Wiltberger - Date Added: 2025-08-19 09:08 - Note: changed pick order / 2025-09-02 10:09 - User: David Wiltberger - Date Added: 2025-09-02 10:09 - Note: Moving to accommodate roofing in Zone 1 / 2025-09-24 04:09 - User: Dav
- QTS-1005250: allucent_notes_20251014_152335: David Wiltberger on 2025-08-19 09:08: changed pick order / David Wiltberger on 2025-09-02 10:09: Moving to accommodate roofing in Zone 1 / David Wiltberger on 2025-09-24 04:09: BAM not completed Potential Delay / David Wiltberger on 2025-09-30 12:09: BAM did not complete / David Wiltberger on 2025-10-14 10:10: set on recovery schedule / allucent_notes: David Wiltberger on 2025-08-19 09:08: changed pick order / allucent_notes: 2025-08-19 09:08 - User: David Wiltberger - Date Added: 2025-08-19 09:08 - Note: changed pick order / 2025-09-02 10:09 - User: David Wiltberger - Date Added: 2025-09-02 10:09 - Note: Moving to accommodate roofing in Zone 1 / 2025-09-24 04:09 - User: Dav
- QTS-100780: allucent_notes_20251014_152335: David Wiltberger on 2025-08-19 09:08: changed pick order / David Wiltberger on 2025-09-02 10:09: Moving to accommodate roofing in Zone 1 / David Wiltberger on 2025-09-24 04:09: BAM not completed Potential Delay / David Wiltberger on 2025-09-30 12:09: BAM did not complete / David Wiltberger on 2025-10-14 10:10: set on recovery schedule / allucent_notes: David Wiltberger on 2025-08-19 09:08: changed pick order / allucent_notes: 2025-08-19 09:08 - User: David Wiltberger - Date Added: 2025-08-19 09:08 - Note: changed pick order / 2025-09-02 10:09 - User: David Wiltberger - Date Added: 2025-09-02 10:09 - Note: Moving to accommodate roofing in Zone 1 / 2025-09-24 04:09 - User: Dav
- QTS-100820: allucent_notes_20251014_152335: David Wiltberger on 2025-08-19 09:08: changed pick order / David Wiltberger on 2025-09-02 10:09: Moving to accommodate roofing in Zone 1 / David Wiltberger on 2025-09-24 04:09: BAM not completed Potential Delay / David Wiltberger on 2025-09-30 12:09: BAM did not complete / David Wiltberger on 2025-10-14 10:10: set on recovery schedule / allucent_notes: David Wiltberger on 2025-08-19 09:08: changed pick order / allucent_notes: 2025-08-19 09:08 - User: David Wiltberger - Date Added: 2025-08-19 09:08 - Note: changed pick order / 2025-09-02 10:09 - User: David Wiltberger - Date Added: 2025-09-02 10:09 - Note: Moving to accommodate roofing in Zone 1 / 2025-09-24 04:09 - User: Dav
- QTS-100840: allucent_notes_20251014_152335: David Wiltberger on 2025-08-19 09:08: changed pick order / David Wiltberger on 2025-09-02 10:09: Moving to accommodate roofing in Zone 1 / David Wiltberger on 2025-09-24 04:09: BAM not completed Potential Delay / David Wiltberger on 2025-09-30 12:09: BAM did not complete / David Wiltberger on 2025-10-14 10:10: set on recovery schedule / allucent_notes: David Wiltberger on 2025-08-19 09:08: changed pick order / allucent_notes: 2025-08-19 09:08 - User: David Wiltberger - Date Added: 2025-08-19 09:08 - Note: changed pick order / 2025-09-02 10:09 - User: David Wiltberger - Date Added: 2025-09-02 10:09 - Note: Moving to accommodate roofing in Zone 1 / 2025-09-24 04:09 - User: Dav
- QTS-1007650: allucent_notes_20251014_152335: David Wiltberger on 2025-08-19 09:08: changed pick order / David Wiltberger on 2025-09-02 10:09: Moving to accommodate roofing in Zone 1 / David Wiltberger on 2025-09-24 04:09: BAM not completed Potential Delay / David Wiltberger on 2025-09-30 12:09: BAM did not complete / David Wiltberger on 2025-10-14 10:10: set on recovery schedule / allucent_notes: David Wiltberger on 2025-08-19 09:08: changed pick order / allucent_notes: 2025-08-19 09:08 - User: David Wiltberger - Date Added: 2025-08-19 09:08 - Note: changed pick order / 2025-09-02 10:09 - User: David Wiltberger - Date Added: 2025-09-02 10:09 - Note: Moving to accommodate roofing in Zone 1 / 2025-09-24 04:09 - User: Dav
- QTS-1007740: allucent_notes_20251014_152335: David Wiltberger on 2025-08-19 09:08: changed pick order / David Wiltberger on 2025-09-02 10:09: Moving to accommodate roofing in Zone 1 / David Wiltberger on 2025-09-24 04:09: BAM not completed Potential Delay / David Wiltberger on 2025-09-30 12:09: BAM did not complete / David Wiltberger on 2025-10-14 10:10: set on recovery schedule / allucent_notes: David Wiltberger on 2025-08-19 09:08: changed pick order / allucent_notes: 2025-08-19 09:08 - User: David Wiltberger - Date Added: 2025-08-19 09:08 - Note: changed pick order / 2025-09-02 10:09 - User: David Wiltberger - Date Added: 2025-09-02 10:09 - Note: Moving to accommodate roofing in Zone 1 / 2025-09-24 04:09 - User: Dav
- QTS-1007660: allucent_notes_20251014_152335: David Wiltberger on 2025-08-19 09:08: changed pick order / David Wiltberger on 2025-09-02 10:09: Moving to accommodate roofing in Zone 1 / David Wiltberger on 2025-09-24 04:09: BAM not completed Potential Delay / David Wiltberger on 2025-09-30 12:09: BAM did not complete / David Wiltberger on 2025-10-14 10:10: set on recovery schedule / allucent_notes: David Wiltberger on 2025-08-19 09:08: changed pick order / allucent_notes: 2025-08-19 09:08 - User: David Wiltberger - Date Added: 2025-08-19 09:08 - Note: changed pick order / 2025-09-02 10:09 - User: David Wiltberger - Date Added: 2025-09-02 10:09 - Note: Moving to accommodate roofing in Zone 1 / 2025-09-24 04:09 - User: Dav
- QTS-1007750: allucent_notes_20251014_152335: David Wiltberger on 2025-08-19 09:08: changed pick order / David Wiltberger on 2025-09-02 10:09: Moving to accommodate roofing in Zone 1 / David Wiltberger on 2025-09-24 04:09: BAM not completed Potential Delay / David Wiltberger on 2025-09-30 12:09: BAM did not complete / David Wiltberger on 2025-10-14 10:10: set on recovery schedule / allucent_notes: David Wiltberger on 2025-08-19 09:08: changed pick order / allucent_notes: 2025-08-19 09:08 - User: David Wiltberger - Date Added: 2025-08-19 09:08 - Note: changed pick order / 2025-09-02 10:09 - User: David Wiltberger - Date Added: 2025-09-02 10:09 - Note: Moving to accommodate roofing in Zone 1 / 2025-09-24 04:09 - User: Dav

| ID | WBS | Activity | Duration | Start | Finish | Predecessors | Complete | Planned start | Planned finish | Calendar | If Not Started or Finished Why? | Allucent CSI Group | Project Section | Layton Discipline | Baseline | Phase-1-1 | Project Section-1 | Location | Level | Fragnet | Fragnet Responsible Party | Contract | Phase-1 | Owner Impact Analysis | Notes | Layton Super | Trade Partner |
| --- | --- | --- | --- | --- | --- | --- | --- | --- | --- | --- | --- | --- | --- | --- | --- | --- | --- | --- | --- | --- | --- | --- | --- | --- | --- | --- | --- |
|  | 2 | **DH 2200 / Rooftop - Fragnet Delays** |  | 2026-03-31 | 2026-03-31 |  |  |  |  |  |  |  |  |  |  |  |  |  |  |  |  |  |  |  |  |  |  |
| QTS-1009400 |  | Zone 2 / Rooftop // Fragnet Delay - No Plumbing DOAS - Complete Rough In Plumbing from to DOAS | 1d | 2026-03-31 A | 2026-03-31 A | QTS-50171 | 100% | 2026-01-28 | 2026-01-28 | QTS-PHX3 DC1 - 6 day w/ Holidays | No Plumbing DOAS | 01ADMIN | Construction | Mechanical | DC | Phase 1 | Construction | FOH | Roof | Fragnet | Bel-Aire Mechanical. LLC | BAB |  |  |  |  |  |
|  | 1 | **Fragnet Bulletin 4 Grating** |  | 2025-10-10 | 2026-08-04 |  |  |  |  |  |  |  |  |  |  |  |  |  |  |  |  |  |  |  |  |  |  |
| QTS-1001770 |  | Fragnet / DH 2200 / Rooftop Mechanical // Bulletin 4 Received by Layton | 1d | 2025-10-10 A | 2025-10-10 A | QTS-1371 SS | 100% |  |  |  |  | 01ADMIN | Construction | Mechanical | IGMP |  |  | DH2100 | Level 2 | Fragnet | Bel-Aire Mechanical. LLC | BAB | Phase 1 | Y |  |  |  |
| QTS-1001790 |  | Fragnet / DH 2200 / Rooftop Mechanical // Updated Bulletin 4 Received by Layton | 3d | 2025-10-13 A | 2025-10-15 A | QTS-1001770 | 100% | 2025-10-10 | 2025-10-14 |  |  | 01ADMIN | Construction | Mechanical | IGMP |  |  | DH2100 | Level 2 | Fragnet | Bel-Aire Mechanical. LLC | BAB | Phase 1 | Y |  |  |  |
| QTS-1001800 |  | Fragnet / DH 2200 / Rooftop Mechanical // Layton Submitting Shop Drawings to QTS Design (DLB) | 23d | 2025-10-16 A | 2025-11-17 A | QTS-1001790 | 100% | 2025-10-10 | 2025-11-11 |  |  | 01ADMIN | Construction | Mechanical | IGMP |  |  | DH2100 | Level 2 | Fragnet | Bel-Aire Mechanical. LLC | BAB | Phase 1 | Y |  |  |  |
| QTS-1001810 |  | Fragnet / DH 2200 / Rooftop Mechanical // Layton Submitting Shop Drawings to QTS Design (Corgan) | 23d | 2025-11-18 A | 2025-12-09 A | QTS-1001800 | 100% | 2025-10-10 | 2025-11-11 |  |  | 01ADMIN | Construction | Mechanical | IGMP |  |  | DH2100 | Level 2 | Fragnet | Bel-Aire Mechanical. LLC | BAB | Phase 1 | Y |  |  |  |
| QTS-1001820 |  | Fragnet / DH 2200 / Rooftop Mechanical // QTS Design Response for Grating | 10d | 2025-12-10 A | 2026-01-27 A | QTS-1001810 | 100% | 2025-10-10 | 2025-10-23 |  |  | 01ADMIN | Construction | Mechanical | IGMP |  |  | DH2100 | Level 2 | Fragnet | Bel-Aire Mechanical. LLC | BAB | Phase 1 | Y |  |  |  |
| QTS-1004820 |  | Fragnet / Zone 2 / Rooftop // Procure Grating, Toe Kicks, And Hand Rails | 25d | 2026-02-03 A | 2026-04-30 A | QTS-1001820, QTS-1001880, QTS-1009900 FF+4d | 100% | 2026-02-03 | 2026-03-09 |  |  | 01ADMIN | Construction | Build Out | IGMP |  |  | DH2100 | Level 2 | Fragnet | SteelFab Texas Inc. | BAB | Phase 1 | Y | 04/21: Tracking 30 April | Sage Fundingsland |  |
| QTS-1001780 |  | Fragnet / Zone 2 / Rooftop // Install Grating, Toe Kicks, Hand Rails to Complete Chiller Deck | 6d | 2026-07-28 A | 2026-08-04 A | QTS-1001820, QTS-1004820 | 100% | 2026-08-13 | 2026-08-19 | QTS-PHX3 DC1 - 6 day w/ Holidays |  | 01ADMIN | Construction | Build Out | IGMP |  |  | DH2100 | Level 2 | Fragnet | SteelFab Texas Inc. | BAB | Phase 1 | Y |  | Bobby Martinez | Steel Fab |
|  | 5 | **Zone 2 / Mechanical Yard Buildout** |  | 2025-10-20 | 2026-07-10 |  |  |  |  |  |  |  |  |  |  |  |  |  |  |  |  |  |  |  |  |  |  |
| QTS-42391 |  | DH 2200 / Mechanical Yard // Excavate for MV Conduit | 5d | 2025-10-20 A | 2025-10-24 A | QTS-42571, QTS-42341, QTS-21521 SS+6d | 100% |  |  |  |  | 01ADMIN | Construction | Core & Shell | IGMP | Phase 1 | Construction | Gen Yard | Level 2 |  |  | BAB |  |  |  |  |  |
| QTS-42401 |  | DH 2200 / Mechanical Yard // Install Conduit for MV Cables | 7d | 2025-10-21 A | 2025-10-29 A | QTS-42391 FF+3d | 100% |  |  |  |  | 01ADMIN | Construction | Core & Shell | IGMP | Phase 1 | Construction | Gen Yard | Level 2 |  |  | BAB |  |  |  |  |  |
| QTS-42411 |  | DH 2200 / Mechanical Yard // Slurry for MV Conduits | 5d | 2025-10-24 A | 2025-10-30 A | QTS-42401 FF+1d | 100% |  |  |  |  | 01ADMIN | Construction | Core & Shell | IGMP | Phase 1 | Construction | Gen Yard | Level 2 |  |  | BAB |  |  |  |  |  |
| QTS-42421 |  | DH 2200 / Mechanical Yard // Backfill Conduit for MV Cables | 5d | 2025-10-27 A | 2025-10-31 A | QTS-42411 FF+1d | 100% |  |  |  |  | 01ADMIN | Construction | Core & Shell | IGMP | Phase 1 | Construction | Gen Yard | Level 2 |  |  | BAB |  |  |  |  |  |
| QTS-1781 |  | DH 2200 / Mechanical Yard // Prep for Pier Footings | 3d | 2025-11-03 A | 2025-11-05 A | QTS-42421 | 100% |  |  |  |  | 01ADMIN | Construction | Core & Shell | IGMP | Phase 2 | Construction | Gen Yard | Level 1 |  |  | BAB |  |  |  |  |  |
| QTS-2821 |  | DH 2200 / Mechanical Yard // Form, Reinforce, & Pour 24" Diameter Piers #1 | 6d | 2025-11-06 A | 2025-11-13 A | QTS-1781 | 100% |  |  |  |  | 01ADMIN | Construction | Core & Shell | IGMP | Phase 2 | Construction | Gen Yard | Level 1 |  |  | BAB |  |  |  |  |  |
| QTS-3971 |  | DH 2200 / Mechanical Yard // Form, Reinforce, & Pour 24" Diameter Piers #2 | 5d | 2025-11-14 A | 2025-11-20 A | QTS-2821 | 100% |  |  |  |  | 01ADMIN | Construction | Core & Shell | IGMP | Phase 2 | Construction | Gen Yard | Level 1 |  |  | BAB |  |  |  |  |  |
| QTS-11151 |  | DH 2200 / Mechanical Yard // Form, Reinforce, & Pour Thickened Slab On Grade for Transformers | 9d | 2025-11-17 A | 2025-12-01 A | QTS-3971 SS+1d | 100% |  |  |  |  | 01ADMIN | Construction | Core & Shell | IGMP | Phase 2 | Construction | Gen Yard | Level 1 |  |  | BAB |  |  |  |  |  |
| QTS-14501 |  | DH 2200 / Mechanical Yard // OFCI - L2 SET IN PLACE - Eq Type # - 2500KVA Transformers - 7 units | 3d | 2025-11-21 A | 2025-11-21 A | QTS-35981 FF, QTS-35971 FF, QTS-35961 FF, QTS-35951 FF, QTS-35941 FF, QTS-35931 FF, QTS-35921 FF | 100% | 2025-11-21 | 2025-11-25 |  |  | 01ADMIN | Construction | Electrical | IGMP | Phase 2 | Construction | Gen Yard | Level 1 |  |  | BAB |  |  |  |  |  |
| QTS-9951 |  | DH 2200 / Mechanical Yard // Form, Reinforce, & Pour Thickened Slab On Grade for UPS Pods | 5d | 2025-12-02 A | 2025-12-08 A | QTS-11151 | 100% |  |  |  |  | 01ADMIN | Construction | Core & Shell | IGMP | Phase 2 | Construction | Gen Yard | Level 1 |  |  | BAB |  |  |  |  |  |
| QTS-12541 |  | DH 2200 / Mechanical Yard // Form, Reinforce, & Pour Thickened Slab On Grade for Generators | 10d | 2025-12-03 A | 2025-12-05 A | QTS-9951, QTS-11151 FF, QTS-11151 | 100% | 2025-12-09 | 2025-12-22 |  |  | 01ADMIN | Construction | Core & Shell | IGMP | Phase 2 | Construction | Gen Yard | Level 1 |  |  | BAB |  |  |  |  |  |
| QTS-6451 |  | DH 2200 / Mechanical Yard // Place Gen Yard Gravel | 5d | 2025-12-09 A | 2025-12-15 A | QTS-11151, QTS-9951, QTS-3971 | 100% |  |  |  |  | 01ADMIN | Construction | Core & Shell | IGMP | Phase 2 | Construction | Gen Yard | Level 1 |  |  | BAB |  |  |  |  |  |
| QTS-41251 |  | DH 2200 / Mechanical Yard // OFCI - L2 SET IN PLACE - Eq Type # - 2500KW Generator #A-22 - 1 unit | 1d | 2025-12-10 A | 2025-12-10 A | QTS-12541, QTS-14501, QTS-40231, QTS-40251, QTS-40221 | 100% |  |  |  |  |  | Construction | Electrical |  | Phase 2 | Construction | Gen Yard | Level 1 |  |  | BAB |  |  |  |  |  |
| QTS-41261 |  | DH 2200 / Mechanical Yard // OFCI - L2 SET IN PLACE - Eq Type # - 2500KW Generator #B-22 - 1 unit | 1d | 2025-12-10 A | 2025-12-10 A | QTS-40091, QTS-40071, QTS-40061, QTS-41251 | 100% |  |  |  |  |  | Construction | Electrical |  | Phase 2 | Construction | Gen Yard | Level 1 |  |  | BAB |  |  |  |  |  |
| QTS-41271 |  | DH 2200 / Mechanical Yard // OFCI - L2 SET IN PLACE - Eq Type # - 2500KW Generator #C-22 - 1 unit | 1d | 2025-12-15 A | 2025-12-15 A | QTS-39931, QTS-39911, QTS-39901, QTS-41261 | 100% |  |  |  |  |  | Construction | Electrical |  | Phase 2 | Construction | Gen Yard | Level 1 |  |  | BAB |  |  |  |  |  |

Notes:
- QTS-1009400: Scheduler Notes: Delay - No Plumbing DOAS - Complete Rough In Plumbing from to / DOAS
- QTS-1001770: allucent_notes_20251216_165335: David Wiltberger on 2025-12-02 06:45: Grating install not complete for installation / allucent_notes_20251209_203830: David Wiltberger on 2025-12-02 06:45: Grating install not complete for installation / allucent_notes_20251202_153722: David Wiltberger on 2025-12-02 06:45: Grating install not complete for installation / allucent_notes_20251014_152335: David Wiltberger on 2025-08-19 09:08: changed pick order / David Wiltberger on 2025-09-02 10:09: Moving to accommodate roofing in Zone 1 / David Wiltberger on 2025-09-24 04:09: BAM not completed Potential Delay / David Wiltberger on 2025-09-30 12:09: BAM did not complete / David Wiltberger on 2025-10-14 10:10: set on recovery schedule / allucent_notes: David Wiltberger on 2025-08-19 09:08: changed pick order / Scheduler Notes: David Wiltberger on 2025-08-19 09:08: changed pick order / David Wiltberger on 2025-09-02 10:09: Moving to accommodate roofing in Zone / 1 / David Wiltberger on 2025-09-24 04:09: BAM not completed Potential Delay / David Wiltberger on 2025-09-30 12:09: BAM did not complete / David Wiltberger on 2025-10-14 10:10: set on recovery / schedule / allucent_notes: 2025-12-02 06:45 - User: David Wiltberger - Date Added: 2025-12-02 06:45 - Note: Grating install not complete for installation
- QTS-1001790: allucent_notes_20251216_165335: David Wiltberger on 2025-12-02 06:45: Grating install not complete for installation / allucent_notes_20251209_203830: David Wiltberger on 2025-12-02 06:45: Grating install not complete for installation / allucent_notes_20251202_153722: David Wiltberger on 2025-12-02 06:45: Grating install not complete for installation / allucent_notes_20251014_152335: David Wiltberger on 2025-08-19 09:08: changed pick order / David Wiltberger on 2025-09-02 10:09: Moving to accommodate roofing in Zone 1 / David Wiltberger on 2025-09-24 04:09: BAM not completed Potential Delay / David Wiltberger on 2025-09-30 12:09: BAM did not complete / David Wiltberger on 2025-10-14 10:10: set on recovery schedule / allucent_notes: David Wiltberger on 2025-08-19 09:08: changed pick order / allucent_notes: 2025-12-02 06:45 - User: David Wiltberger - Date Added: 2025-12-02 06:45 - Note: Grating install not complete for installation
- QTS-1001800: allucent_notes_20251216_165335: David Wiltberger on 2025-12-02 06:45: Grating install not complete for installation / allucent_notes_20251209_203830: David Wiltberger on 2025-12-02 06:45: Grating install not complete for installation / allucent_notes_20251202_153722: David Wiltberger on 2025-12-02 06:45: Grating install not complete for installation / allucent_notes_20251014_152335: David Wiltberger on 2025-08-19 09:08: changed pick order / David Wiltberger on 2025-09-02 10:09: Moving to accommodate roofing in Zone 1 / David Wiltberger on 2025-09-24 04:09: BAM not completed Potential Delay / David Wiltberger on 2025-09-30 12:09: BAM did not complete / David Wiltberger on 2025-10-14 10:10: set on recovery schedule / allucent_notes: David Wiltberger on 2025-08-19 09:08: changed pick order / allucent_notes: 2025-12-02 06:45 - User: David Wiltberger - Date Added: 2025-12-02 06:45 - Note: Grating install not complete for installation
- QTS-1001810: allucent_notes_20251216_165335: David Wiltberger on 2025-12-02 06:45: Grating install not complete for installation / allucent_notes_20251209_203830: David Wiltberger on 2025-12-02 06:45: Grating install not complete for installation / allucent_notes_20251202_153722: David Wiltberger on 2025-12-02 06:45: Grating install not complete for installation / allucent_notes_20251014_152335: David Wiltberger on 2025-08-19 09:08: changed pick order / David Wiltberger on 2025-09-02 10:09: Moving to accommodate roofing in Zone 1 / David Wiltberger on 2025-09-24 04:09: BAM not completed Potential Delay / David Wiltberger on 2025-09-30 12:09: BAM did not complete / David Wiltberger on 2025-10-14 10:10: set on recovery schedule / allucent_notes: David Wiltberger on 2025-08-19 09:08: changed pick order / allucent_notes: 2025-12-02 06:45 - User: David Wiltberger - Date Added: 2025-12-02 06:45 - Note: Grating install not complete for installation
- QTS-1001820: allucent_notes_20251216_165335: David Wiltberger on 2025-12-02 06:45: Grating install not complete for installation / allucent_notes_20251209_203830: David Wiltberger on 2025-12-02 06:45: Grating install not complete for installation / allucent_notes_20251202_153722: David Wiltberger on 2025-12-02 06:45: Grating install not complete for installation / allucent_notes_20251014_152335: David Wiltberger on 2025-08-19 09:08: changed pick order / David Wiltberger on 2025-09-02 10:09: Moving to accommodate roofing in Zone 1 / David Wiltberger on 2025-09-24 04:09: BAM not completed Potential Delay / David Wiltberger on 2025-09-30 12:09: BAM did not complete / David Wiltberger on 2025-10-14 10:10: set on recovery schedule / allucent_notes: David Wiltberger on 2025-08-19 09:08: changed pick order / allucent_notes: 2025-12-02 06:45 - User: David Wiltberger - Date Added: 2025-12-02 06:45 - Note: Grating install not complete for installation
- QTS-1004820: allucent_notes_20251216_165335: David Wiltberger on 2025-12-02 06:45: Grating install not complete for installation / allucent_notes_20251209_203830: David Wiltberger on 2025-12-02 06:45: Grating install not complete for installation / allucent_notes_20251202_153722: David Wiltberger on 2025-12-02 06:45: Grating install not complete for installation / allucent_notes_20251014_152335: David Wiltberger on 2025-08-19 09:08: changed pick order / David Wiltberger on 2025-09-02 10:09: Moving to accommodate roofing in Zone / 1 / David Wiltberger on 2025-09-24 04:09: BAM not completed Potential Delay / David Wiltberger on 2025-09-30 12:09: BAM did not complete / David Wiltberger on 2025-10-14 10:10: set on recovery / schedule / allucent_notes: David Wiltberger on 2025-08-19 09:08: changed pick order / Scheduler Notes: David Wiltberger on 2025-08-19 09:08: changed pick order / David Wiltberger on 2025-09-02 10:09: Moving to accommodate roofing in Zone / 1 / David Wiltberger on 2025-09-24 04:09: BAM not completed Potential Delay / David Wiltberger on 2025-09-30 12:09: BAM did not complete / David Wiltberger on 2025-10-14 10:10: set on recovery schedule / 04/21: Tracking 30 April / allucent_notes: 2025-12-02 06:45 - User: David Wiltberger - Date Added: 2025-12-02 06:45 - Note: Grating install not complete for installation
- QTS-1001780: allucent_notes_20251216_165335: David Wiltberger on 2025-12-02 06:45: Grating install not complete for installation / allucent_notes_20251209_203830: David Wiltberger on 2025-12-02 06:45: Grating install not complete for installation / allucent_notes_20251202_153722: David Wiltberger on 2025-12-02 06:45: Grating install not complete for installation / allucent_notes_20251014_152335: David Wiltberger on 2025-08-19 09:08: changed pick order / David Wiltberger on 2025-09-02 10:09: Moving to accommodate roofing in Zone 1 / David Wiltberger on 2025-09-24 04:09: BAM not completed Potential Delay / David Wiltberger on 2025-09-30 12:09: BAM did not complete / David Wiltberger on 2025-10-14 10:10: set on recovery schedule / allucent_notes: David Wiltberger on 2025-08-19 09:08: changed pick order / allucent_notes: 2025-12-02 06:45 - User: David Wiltberger - Date Added: 2025-12-02 06:45 - Note: Grating install not complete for installation

| ID | WBS | Activity | Duration | Start | Finish | Predecessors | Complete | Planned start | Planned finish | Calendar | Allucent CSI Group | Project Section | Phase-1 | Layton Discipline | Baseline | Location | Level | Contract | Phase-1-1 | Project Section-1 | TFO-CONST ONLY | NICK | If Not Started or Finished Why? | Fragnet | Owner Impact Analysis | Layton Super | Fragnet Responsible Party | Trade Partner |
| --- | --- | --- | --- | --- | --- | --- | --- | --- | --- | --- | --- | --- | --- | --- | --- | --- | --- | --- | --- | --- | --- | --- | --- | --- | --- | --- | --- | --- |
|  | 2 | **Remaining Duration** |  | 2025-12-01 | 2026-07-10 |  |  |  |  |  |  |  |  |  |  |  |  |  |  |  |  |  |  |  |  |  |  |  |
| QTS-99390 |  | DH 2200 / Mechanical Yard // Form, Reinforce, & Pour Thickened Slab On Grade for MVGs | 5d | 2025-12-01 A | 2025-12-26 A | QTS-11151 FF | 100% | 2025-11-21 | 2025-11-26 | QTS-PHX3 DC1 - 6 day w/ Holidays | 01ADMIN | Construction | Phase 1 | Core & Shell | IGMP | Gen Yard | Level 2 | BAB |  |  |  |  |  |  |  |  |  |  |
| QTS-44351 |  | DH 2200 / Mechanical Yard // Install Exterior Stairs | 10d | 2025-12-08 A | 2025-12-18 A | QTS-43371 | 100% |  |  | QTS-PHX3 DC1 - 6 day w/ Holidays |  | Construction |  | Core & Shell | IGMP | Gen Yard | Level 2 | BAB | Phase 1 | Construction |  |  |  |  |  |  |  |  |
| QTS-13551 |  | DH 2200 / Mechanical Yard // OFCI - L2 SET IN PLACE - Eq Type # - 3000A UPS Pods - 7 units | 5d | 2025-12-19 A | 2026-01-02 A | QTS-9951, QTS-3621, QTS-33811 FF, QTS-33801 FF, QTS-33791 FF, QTS-33781 FF, QTS-33771 FF, QTS-33761 FF, QTS-33751 | 100% | 2025-12-19 | 2025-12-24 | QTS-PHX3 DC1 - 6 day w/ Holidays | 01ADMIN | Construction |  | Electrical | IGMP | Gen Yard | Level 1 | BAB | Phase 2 | Construction |  |  |  |  |  |  |  |  |
| QTS-41281 |  | DH 2200 / Mechanical Yard // OFCI - L2 SET IN PLACE - Eq Type # - 2500KW Generator #D-22 - 1 unit | 1d | 2025-12-19 A | 2025-12-19 A | QTS-40431, QTS-40451, QTS-40421, QTS-41271 | 100% |  |  | QTS-PHX3 DC1 - 6 day w/ Holidays | 01ADMIN | Construction |  | Electrical |  | Gen Yard | Level 1 | BAB | Phase 2 | Construction |  |  |  |  |  |  |  |  |
| QTS-41291 |  | DH 2200 / Mechanical Yard // OFCI - L2 SET IN PLACE - Eq Type # - 2500KW Generator #E-22 - 1 unit | 1d | 2025-12-19 A | 2025-12-19 A | QTS-40651, QTS-40631, QTS-40621, QTS-41281 FF | 100% |  |  | QTS-PHX3 DC1 - 6 day w/ Holidays | 01ADMIN | Construction |  | Electrical |  | Gen Yard | Level 1 | BAB | Phase 2 | Construction |  |  |  |  |  |  |  |  |
| QTS-41301 |  | DH 2200 / Mechanical Yard // OFCI - L2 SET IN PLACE - Eq Type # - 2500KW Generator #F-22 - 1 unit | 1d | 2025-12-19 A | 2025-12-19 A | QTS-40851, QTS-40831, QTS-40821, QTS-41291 FF | 100% |  |  | QTS-PHX3 DC1 - 6 day w/ Holidays | 01ADMIN | Construction |  | Electrical |  | Gen Yard | Level 1 | BAB | Phase 2 | Construction |  |  |  |  |  |  |  |  |
| QTS-41311 |  | DH 2200 / Mechanical Yard // OFCI - L2 SET IN PLACE - Eq Type # - 2500KW Generator #R-22 - 1 unit | 1d | 2025-12-19 A | 2025-12-19 A | QTS-41051, QTS-41031, QTS-41021, QTS-41301 FF | 100% |  |  | QTS-PHX3 DC1 - 6 day w/ Holidays | 01ADMIN | Construction |  | Electrical |  | Gen Yard | Level 1 | BAB | Phase 2 | Construction |  |  |  |  |  |  |  |  |
| QTS-99400 |  | DH 2200 / Mechanical Yard // OFCI - L2 SET IN PLACE - Eq Type # - DC1-MVG-C1 - 1 unit | 1d | 2025-12-29 A | 2025-12-29 A | QTS-99320, QTS-99390 | 100% |  |  | QTS-PHX3 DC1 - 6 day w/ Holidays | 01ADMIN | Construction | Phase 1 | Electrical | IGMP | Gen Yard | Level 2 | BAB |  |  |  |  |  |  |  |  |  |  |
| QTS-99410 |  | DH 2200 / Mechanical Yard // OFCI - L2 SET IN PLACE - Eq Type # - DC1-MVG-D1 - 1 unit | 1d | 2025-12-29 A | 2025-12-29 A | QTS-99330, QTS-99400 | 100% |  |  | QTS-PHX3 DC1 - 6 day w/ Holidays | 01ADMIN | Construction | Phase 1 | Electrical | IGMP | Gen Yard | Level 2 | BAB |  |  |  |  |  |  |  |  |  |  |
| QTS-1801 |  | DH 2200 / Mechanical Yard // Install FRP Platforms | 10d | 2026-02-02 A | 2026-02-05 A | QTS-1331, QTS-13551, QTS-44351 | 100% | 2026-02-02 | 2026-02-12 | QTS-PHX3 DC1 - 6 day w/ Holidays |  | Construction |  | Core & Shell | IGMP | Gen Yard | Level 1 | TFO | Phase 2 | Construction | TFO CONST | NICK |  |  |  |  |  |  |
| QTS-15131 |  | DH 2200 / Mechanical Yard // Install Cable Tray from Transformers to UPS Pods | 5d | 2026-02-09 A | 2026-02-09 A | QTS-15881 SS+2d, QTS-41311 | 100% | 2026-02-09 | 2026-02-13 | QTS-PHX3 DC1 - 6 day w/ Holidays |  | Construction |  | Electrical | IGMP | Gen Yard | Level 1 | BAB | Phase 2 | Construction |  |  |  |  |  |  |  |  |
| QTS-15871 |  | DH 2200 / Mechanical Yard // Pull Electrical Wire from Transformers to UPS Pods | 10d | 2026-02-09 A | 2026-03-09 A | QTS-15131 SS | 100% | 2026-02-09 | 2026-02-19 | QTS-PHX3 DC1 - 6 day w/ Holidays |  | Construction |  | Electrical | IGMP | Gen Yard | Level 1 | BAB | Phase 2 | Construction |  |  |  |  |  |  |  |  |
| QTS-15881 |  | DH 2200 / Mechanical Yard // Install Cable Tray from Generators to UPS Pods | 5d | 2026-02-09 A | 2026-02-09 A | QTS-41311 | 100% | 2026-02-09 | 2026-02-13 | QTS-PHX3 DC1 - 6 day w/ Holidays |  | Construction |  | Electrical | IGMP | Gen Yard | Level 1 | BAB | Phase 2 | Construction |  |  |  |  |  |  |  |  |
| QTS-17381 |  | DH 2200 / Mechanical Yard // Pull Electrical Wire from Generators to UPS Pods | 10d | 2026-02-09 A | 2026-03-09 A | QTS-15881 SS | 100% | 2026-02-09 | 2026-02-19 | QTS-PHX3 DC1 - 6 day w/ Holidays |  | Construction |  | Electrical | IGMP | Gen Yard | Level 1 | BAB | Phase 2 | Construction |  |  |  |  |  |  |  |  |
| QTS-42431 |  | DH 2200 / Mechanical Yard // Wire Pull for MV Cables | 6d | 2026-02-13 A | 2026-02-18 A | QTS-99410, QTS-41311 | 100% | 2026-02-13 | 2026-02-19 | QTS-PHX3 DC1 - 6 day w/ Holidays | 01ADMIN | Construction |  | Electrical | IGMP | Gen Yard | Level 2 | BAB | Phase 1 | Construction |  |  |  |  |  |  |  |  |
| QTS-49981 |  | DH 2200 / Mechanical Yard // Install Cable Bus | 10d | 2026-02-16 A | 2026-02-28 A | QTS-49701, QTS-6451, QTS-15131 | 100% | 2026-02-16 | 2026-02-26 | QTS-PHX3 DC1 - 6 day w/ Holidays | 01ADMIN | Construction |  | Electrical | IGMP | Gen Yard | Level 2 | BAB | Phase 1 | Construction |  |  |  |  |  |  |  |  |
| QTS-42821 |  | DH 2200 / Mechanical Yard // Terminate MV at Transformers | 10d | 2026-02-27 A | 2026-03-06 A | QTS-42431 | 100% | 2026-02-27 | 2026-03-10 | QTS-PHX3 DC1 - 6 day w/ Holidays |  | Construction |  | Electrical | IGMP | Gen Yard | Level 2 | BAB | Phase 1 | Construction |  |  |  |  |  |  |  |  |
| QTS-1007250 |  | Zone 2 / Mechanical Yard // Install Raceway from Transformers to UPS Pods | 5d | 2026-03-05 A | 2026-03-30 A | QTS-1007260 SS+2d | 100% | 2026-03-05 | 2026-03-10 | QTS-PHX3 DC1 - 6 day w/ Holidays |  | Construction |  | Electrical | IGMP | Gen Yard | Level 1 | BAB | Phase 2 | Construction |  |  | 20% completed, REI is waiting on material |  |  |  |  |  |
| QTS-1007260 |  | Zone 2 / Mechanical Yard // Install Raceway from Generators to UPS Pods | 5d | 2026-03-05 A | 2026-03-30 A | QTS-13551, QTS-41311 | 100% | 2026-03-05 | 2026-03-10 | QTS-PHX3 DC1 - 6 day w/ Holidays |  | Construction |  | Electrical | IGMP | Gen Yard | Level 1 | BAB | Phase 2 | Construction |  |  | 50% completed, REI is waiting on material |  |  |  |  |  |
| QTS-1007320 |  | Zone 2 / Mechanical Yard // Terminate Electrical Wire at Generator A22 | 4d | 2026-03-11 A | 2026-03-14 A | QTS-1007310 SS, QTS-17381 | 100% | 2026-03-12 | 2026-03-16 | QTS-PHX3 DC1 - 6 day w/ Holidays |  | Construction |  | Electrical | IGMP | Gen Yard | Level 1 | BAB | Phase 2 | Construction |  |  |  |  |  |  |  |  |
| QTS-1007840 |  | Zone 2 / Mechanical Yard // Terminate Electrical Wire at Generator A12 | 4d | 2026-03-11 A | 2026-03-14 A | QTS-1007830 SS | 100% |  |  | QTS-PHX3 DC1 - 6 day w/ Holidays |  | Construction |  | Electrical | IGMP | Gen Yard | Level 1 | BAB | Phase 2 | Construction |  |  |  |  |  |  |  |  |
| QTS-1007310 |  | Zone 2 / Mechanical Yard // Terminate Electrical Wire at Transformer A22 | 4d | 2026-03-12 A | 2026-03-16 A | QTS-15871 | 100% |  |  | QTS-PHX3 DC1 - 6 day w/ Holidays |  | Construction |  | Electrical | IGMP | Gen Yard | Level 1 | BAB | Phase 2 | Construction |  |  |  |  |  |  |  |  |
| QTS-1007330 |  | Zone 2 / Mechanical Yard // Terminate Electrical Wire at Transformer B22 | 4d | 2026-03-12 A | 2026-03-18 A | QTS-1007320 | 100% | 2026-03-20 | 2026-03-24 | QTS-PHX3 DC1 - 6 day w/ Holidays |  | Construction |  | Electrical | IGMP | Gen Yard | Level 1 | BAB | Phase 2 | Construction |  |  |  |  |  |  |  |  |
| QTS-1007340 |  | Zone 2 / Mechanical Yard // Terminate Electrical Wire at Generator B22 | 4d | 2026-03-12 A | 2026-03-18 A | QTS-1007330 SS | 100% | 2026-03-20 | 2026-03-24 | QTS-PHX3 DC1 - 6 day w/ Holidays |  | Construction |  | Electrical | IGMP | Gen Yard | Level 1 | BAB | Phase 2 | Construction |  |  |  |  |  |  |  |  |
| QTS-1007760 |  | Zone 2 / Mechanical Yard // Terminate Electrical Wire at UPS Pod A22 | 4d | 2026-03-12 A | 2026-03-16 A | QTS-15871 | 100% |  |  | QTS-PHX3 DC1 - 6 day w/ Holidays |  | Construction |  | Electrical | IGMP | Gen Yard | Level 1 | BAB | Phase 2 | Construction |  |  |  |  |  |  |  |  |
| QTS-1007770 |  | Zone 2 / Mechanical Yard // Terminate Electrical Wire at UPS Pod B22 | 4d | 2026-03-12 A | 2026-03-18 A | QTS-1007760, QTS-1007760 FF | 100% | 2026-03-20 | 2026-03-24 | QTS-PHX3 DC1 - 6 day w/ Holidays |  | Construction |  | Electrical | IGMP | Gen Yard | Level 1 | BAB | Phase 2 | Construction |  |  |  |  |  |  |  |  |
| QTS-1007830 |  | Zone 2 / Mechanical Yard // Terminate Electrical Wire at Transformer A12 | 4d | 2026-03-12 A | 2026-03-16 A | QTS-1007310 | 100% |  |  | QTS-PHX3 DC1 - 6 day w/ Holidays |  | Construction |  | Electrical | IGMP | Gen Yard | Level 1 | BAB | Phase 2 | Construction |  |  |  |  |  |  |  |  |
| QTS-1007850 |  | Zone 2 / Mechanical Yard // Terminate Electrical Wire at UPS Pod A12 | 4d | 2026-03-12 A | 2026-03-16 A | QTS-1007760 | 100% |  |  | QTS-PHX3 DC1 - 6 day w/ Holidays |  | Construction |  | Electrical | IGMP | Gen Yard | Level 1 | BAB | Phase 2 | Construction |  |  |  |  |  |  |  |  |
| QTS-1007860 |  | Zone 2 / Mechanical Yard // Terminate Electrical Wire at UPS Pod B12 | 3d | 2026-03-12 A | 2026-03-18 A | QTS-1007850 SS, QTS-1007770 SS | 100% | 2026-03-25 | 2026-03-27 | QTS-PHX3 DC1 - 6 day w/ Holidays |  | Construction |  | Electrical | IGMP | Gen Yard | Level 1 | BAB | Phase 2 | Construction |  |  |  |  |  |  |  |  |
| QTS-1007920 |  | Zone 2 / Mechanical Yard // Terminate Electrical Wire at Transformer B12 | 4d | 2026-03-12 A | 2026-03-18 A | QTS-1007840 | 100% | 2026-03-25 | 2026-03-28 | QTS-PHX3 DC1 - 6 day w/ Holidays |  | Construction |  | Electrical | IGMP | Gen Yard | Level 1 | BAB | Phase 2 | Construction |  |  |  |  |  |  |  |  |
| QTS-1007930 |  | Zone 2 / Mechanical Yard // Terminate Electrical Wire at Generator B12 | 4d | 2026-03-12 A | 2026-03-18 A | QTS-1007920 SS | 100% | 2026-03-25 | 2026-03-28 | QTS-PHX3 DC1 - 6 day w/ Holidays |  | Construction |  | Electrical | IGMP | Gen Yard | Level 1 | BAB | Phase 2 | Construction |  |  |  |  |  |  |  |  |
| QTS-1000290 |  | Zone 2 / Mechanical Yard // OFCI - L2 SET IN PLACE - Eq Type # - 2500KW Generator SCR - 14 units | 3d | 2026-03-16 A | 2026-03-31 A | QTS-41311, QTS-41041 FF, QTS-40841 FF, QTS-40641 FF, QTS-40441 FF, QTS-39921 FF, QTS-40081 FF, QTS-40241 FF, QTS-39961 FF, QTS-40481 FF, QTS-40681 FF, QTS-40881 FF, QTS-41081 FF, QTS-40121 FF, QTS-40281 FF | 100% | 2026-03-16 | 2026-03-18 | QTS-PHX3 DC1 - 6 day w/ Holidays | 01ADMIN | Construction |  | Electrical |  | Gen Yard | Level 2 | BAB | Phase 1 | Construction |  |  |  |  |  |  |  |  |
| QTS-1007280 |  | Zone 2 / Mechanical Yard // Pull Control Wire from Generators to UPS Pods | 3d | 2026-03-16 A | 2026-05-21 A | QTS-1007260 SS, QTS-1009370 FF | 100% | 2026-04-06 | 2026-04-08 | QTS-PHX3 DC1 - 6 day w/ Holidays |  | Construction |  | Electrical | IGMP | Gen Yard | Level 1 | BAB | Phase 2 | Construction |  |  |  |  |  |  |  |  |
| QTS-1007380 |  | Zone 2 / Mechanical Yard // Terminate Electrical Wire at Generator D22 | 2d | 2026-03-16 A | 2026-03-20 A | QTS-1007370 SS | 100% | 2026-04-01 | 2026-04-02 | QTS-PHX3 DC1 - 6 day w/ Holidays |  | Construction |  | Electrical | IGMP | Gen Yard | Level 1 | BAB | Phase 2 | Construction |  |  | Neutral bus is currently being installed |  |  |  |  |  |
| QTS-1007400 |  | Zone 2 / Mechanical Yard // Terminate Electrical Wire at Generator E22 | 2d | 2026-03-16 A | 2026-03-20 A | QTS-1007390 SS | 100% | 2026-04-01 | 2026-04-02 | QTS-PHX3 DC1 - 6 day w/ Holidays |  | Construction |  | Electrical | IGMP | Gen Yard | Level 1 | BAB | Phase 2 | Construction |  |  | Neutral bus is currently being installed |  |  |  |  |  |
| QTS-1007440 |  | Zone 2 / Mechanical Yard // Terminate Electrical Wire at Generator R22 | 2d | 2026-03-16 A | 2026-03-20 A | QTS-1007430 SS | 100% | 2026-04-06 | 2026-04-07 | QTS-PHX3 DC1 - 6 day w/ Holidays |  | Construction |  | Electrical | IGMP | Gen Yard | Level 1 | BAB | Phase 2 | Construction |  |  | Neutral bus is currently being installed |  |  |  |  |  |
| QTS-1007970 |  | Zone 2 / Mechanical Yard // Terminate Electrical Wire at Generator D12 | 2d | 2026-03-16 A | 2026-03-20 A | QTS-1007960 SS | 100% | 2026-04-01 | 2026-04-02 | QTS-PHX3 DC1 - 6 day w/ Holidays |  | Construction |  | Electrical | IGMP | Gen Yard | Level 1 | BAB | Phase 2 | Construction |  |  | Neutral bus is currently being installed |  |  |  |  |  |
| QTS-1007990 |  | Zone 2 / Mechanical Yard // Terminate Electrical Wire at Generator E12 | 2d | 2026-03-16 A | 2026-03-20 A | QTS-1007980 SS | 100% | 2026-04-03 | 2026-04-04 | QTS-PHX3 DC1 - 6 day w/ Holidays |  | Construction |  | Electrical | IGMP | Gen Yard | Level 1 | BAB | Phase 2 | Construction |  |  | Neutral bus is currently being installed |  |  |  |  |  |
| QTS-1008010 |  | Zone 2 / Mechanical Yard // Terminate Electrical Wire at Generator F12 | 2d | 2026-03-16 A | 2026-03-20 A | QTS-1008000 SS | 100% | 2026-04-06 | 2026-04-07 | QTS-PHX3 DC1 - 6 day w/ Holidays |  | Construction |  | Electrical | IGMP | Gen Yard | Level 1 | BAB | Phase 2 | Construction |  |  | Neutral bus is currently being installed |  |  |  |  |  |
| QTS-1007350 |  | Zone 2 / Mechanical Yard // Terminate Electrical Wire at Transformer C22 | 2d | 2026-03-18 A | 2026-03-19 A | QTS-1007340 | 100% | 2026-03-23 | 2026-03-24 | QTS-PHX3 DC1 - 6 day w/ Holidays |  | Construction |  | Electrical | IGMP | Gen Yard | Level 1 | BAB | Phase 2 | Construction |  |  |  |  |  |  |  |  |
| QTS-1007360 |  | Zone 2 / Mechanical Yard // Terminate Electrical Wire at Generator C22 | 2d | 2026-03-18 A | 2026-03-19 A | QTS-1007350 SS | 100% | 2026-03-23 | 2026-03-24 | QTS-PHX3 DC1 - 6 day w/ Holidays |  | Construction |  | Electrical | IGMP | Gen Yard | Level 1 | BAB | Phase 2 | Construction |  |  |  |  |  |  |  |  |
| QTS-1007370 |  | Zone 2 / Mechanical Yard // Terminate Electrical Wire at Transformer D22 | 2d | 2026-03-18 A | 2026-03-20 A | QTS-1007360 | 100% | 2026-03-25 | 2026-03-26 | QTS-PHX3 DC1 - 6 day w/ Holidays |  | Construction |  | Electrical | IGMP | Gen Yard | Level 1 | BAB | Phase 2 | Construction |  |  |  |  |  |  |  |  |
| QTS-1007390 |  | Zone 2 / Mechanical Yard // Terminate Electrical Wire at Transformer E22 | 2d | 2026-03-18 A | 2026-03-20 A | QTS-1007370 FF | 100% | 2026-03-27 | 2026-03-28 | QTS-PHX3 DC1 - 6 day w/ Holidays |  | Construction |  | Electrical | IGMP | Gen Yard | Level 1 | BAB | Phase 2 | Construction |  |  |  |  |  |  |  |  |
| QTS-1007780 |  | Zone 2 / Mechanical Yard // Terminate Electrical Wire at UPS Pod C22 | 3d | 2026-03-18 A | 2026-03-19 A | QTS-1007770, QTS-1007770 FF | 100% | 2026-03-23 | 2026-03-25 | QTS-PHX3 DC1 - 6 day w/ Holidays |  | Construction |  | Electrical | IGMP | Gen Yard | Level 1 | BAB | Phase 2 | Construction |  |  |  |  |  |  |  |  |
| QTS-1007910 |  | Zone 2 / Mechanical Yard // Terminate Electrical Wire at UPS Pod R12 | 3d | 2026-03-18 A | 2026-03-19 A | QTS-15871 | 100% | 2026-03-18 | 2026-03-20 | QTS-PHX3 DC1 - 6 day w/ Holidays |  | Construction |  | Electrical | IGMP | Gen Yard | Level 1 | BAB | Phase 2 | Construction |  |  |  |  |  |  |  |  |
| QTS-1007940 |  | Zone 2 / Mechanical Yard // Terminate Electrical Wire at Transformer C12 | 2d | 2026-03-18 A | 2026-03-20 A | QTS-1007930 | 100% | 2026-03-23 | 2026-03-24 | QTS-PHX3 DC1 - 6 day w/ Holidays |  | Construction |  | Electrical | IGMP | Gen Yard | Level 1 | BAB | Phase 2 | Construction |  |  |  |  |  |  |  |  |
| QTS-1007950 |  | Zone 2 / Mechanical Yard // Terminate Electrical Wire at Generator C12 | 2d | 2026-03-18 A | 2026-03-20 A | QTS-1007940 SS | 100% | 2026-03-23 | 2026-03-24 | QTS-PHX3 DC1 - 6 day w/ Holidays |  | Construction |  | Electrical | IGMP | Gen Yard | Level 1 | BAB | Phase 2 | Construction |  |  |  |  |  |  |  |  |
| QTS-1007960 |  | Zone 2 / Mechanical Yard // Terminate Electrical Wire at Transformer D12 | 2d | 2026-03-18 A | 2026-03-20 A | QTS-1007950 | 100% | 2026-03-18 | 2026-03-19 | QTS-PHX3 DC1 - 6 day w/ Holidays |  | Construction |  | Electrical | IGMP | Gen Yard | Level 1 | BAB | Phase 2 | Construction |  |  |  |  |  |  |  |  |
| QTS-1008020 |  | Zone 2 / Mechanical Yard // Terminate Electrical Wire at Transformer R12 | 2d | 2026-03-18 A | 2026-03-19 A | QTS-15871 | 100% |  |  | QTS-PHX3 DC1 - 6 day w/ Holidays |  | Construction |  | Electrical | IGMP | Gen Yard | Level 1 | BAB | Phase 2 | Construction |  |  |  |  |  |  |  |  |
| QTS-1008030 |  | Zone 2 / Mechanical Yard // Terminate Electrical Wire at Generator R12 | 2d | 2026-03-18 A | 2026-03-19 A | QTS-1008020 SS | 100% |  |  | QTS-PHX3 DC1 - 6 day w/ Holidays |  | Construction |  | Electrical | IGMP | Gen Yard | Level 1 | BAB | Phase 2 | Construction |  |  |  |  |  |  |  |  |
| QTS-1007980 |  | Zone 2 / Mechanical Yard // Terminate Electrical Wire at Transformer E12 | 2d | 2026-03-23 A | 2026-03-25 A | QTS-1007970 | 100% | 2026-04-03 | 2026-04-04 | QTS-PHX3 DC1 - 6 day w/ Holidays |  | Construction |  | Electrical | IGMP | Gen Yard | Level 1 | BAB | Phase 2 | Construction |  |  |  |  |  |  |  |  |
| QTS-1008000 |  | Zone 2 / Mechanical Yard // Terminate Electrical Wire at Transformer F12 | 2d | 2026-03-23 A | 2026-03-25 A | QTS-1007990 | 100% | 2026-04-06 | 2026-04-07 | QTS-PHX3 DC1 - 6 day w/ Holidays |  | Construction |  | Electrical | IGMP | Gen Yard | Level 1 | BAB | Phase 2 | Construction |  |  |  |  |  |  |  |  |
| QTS-1007410 |  | Zone 2 / Mechanical Yard // Terminate Electrical Wire at Transformer F22 | 2d | 2026-03-24 A | 2026-03-26 A | QTS-1007400 | 100% | 2026-04-03 | 2026-04-04 | QTS-PHX3 DC1 - 6 day w/ Holidays |  | Construction |  | Electrical | IGMP | Gen Yard | Level 1 | BAB | Phase 2 | Construction |  |  |  |  |  |  |  |  |
| QTS-1007420 |  | Zone 2 / Mechanical Yard // Terminate Electrical Wire at Generator F22 | 3d | 2026-03-24 A | 2026-03-26 A | QTS-1007410 SS | 100% |  |  | QTS-PHX3 DC1 - 6 day w/ Holidays |  | Construction |  | Electrical | IGMP | Gen Yard | Level 1 | BAB | Phase 2 | Construction |  |  | Neutral bus is currently being installed |  |  |  |  |  |
| QTS-1007430 |  | Zone 2 / Mechanical Yard // Terminate Electrical Wire at Transformer R22 | 2d | 2026-03-24 A | 2026-03-28 A | QTS-1007420 | 100% | 2026-04-06 | 2026-04-07 | QTS-PHX3 DC1 - 6 day w/ Holidays |  | Construction |  | Electrical | IGMP | Gen Yard | Level 1 | BAB | Phase 2 | Construction |  |  |  |  |  |  |  |  |
| QTS-1007880 |  | Zone 2 / Mechanical Yard // Terminate Electrical Wire at UPS Pod D12 | 3d | 2026-03-24 A | 2026-03-27 A | QTS-1007870, QTS-1007870 FF, QTS-1007790 | 100% | 2026-04-04 | 2026-04-07 | QTS-PHX3 DC1 - 6 day w/ Holidays |  | Construction |  | Electrical | IGMP | Gen Yard | Level 1 | BAB | Phase 2 | Construction |  |  |  |  |  |  |  |  |
| QTS-1007790 |  | Zone 2 / Mechanical Yard // Terminate Electrical Wire at UPS Pod D22 | 3d | 2026-03-27 A | 2026-03-31 A | QTS-1007780, QTS-1007780 FF | 100% | 2026-04-01 | 2026-04-03 | QTS-PHX3 DC1 - 6 day w/ Holidays |  | Construction |  | Electrical | IGMP | Gen Yard | Level 1 | BAB | Phase 2 | Construction |  |  |  |  |  |  |  |  |
| QTS-1007870 |  | Zone 2 / Mechanical Yard // Terminate Electrical Wire at UPS Pod C12 | 3d | 2026-03-27 A | 2026-03-30 A | QTS-1007860, QTS-1007860 FF, QTS-1007780 | 100% | 2026-04-01 | 2026-04-03 | QTS-PHX3 DC1 - 6 day w/ Holidays |  | Construction |  | Electrical | IGMP | Gen Yard | Level 1 | BAB | Phase 2 | Construction |  |  |  |  |  |  |  |  |
| QTS-1007800 |  | Zone 2 / Mechanical Yard // Terminate Electrical Wire at UPS Pod E22 | 3d | 2026-03-30 A | 2026-04-10 A | QTS-1007790, QTS-1007790 FF | 100% | 2026-04-04 | 2026-04-07 | QTS-PHX3 DC1 - 6 day w/ Holidays |  | Construction |  | Electrical | IGMP | Gen Yard | Level 1 | BAB | Phase 2 | Construction |  |  |  |  |  |  |  |  |
| QTS-1007890 |  | Zone 2 / Mechanical Yard // Terminate Electrical Wire at UPS Pod E12 | 3d | 2026-03-30 A | 2026-04-10 A | QTS-1007880, QTS-1007880 FF, QTS-1007800 FF | 100% | 2026-04-08 | 2026-04-10 | QTS-PHX3 DC1 - 6 day w/ Holidays |  | Construction |  | Electrical | IGMP | Gen Yard | Level 1 | BAB | Phase 2 | Construction |  |  |  |  |  |  |  |  |
| QTS-1009360 |  | Zone 2 / Mechanical Yard // Fragnet Delay - REI waiting on material - Install Raceway from Transformers to UPS Pods | 5d | 2026-03-31 A | 2026-04-30 A | QTS-1007250 | 100% | 2026-03-05 | 2026-03-10 | QTS-PHX3 DC1 - 6 day w/ Holidays |  | Construction |  | Mechanical | IGMP | Gen Yard | Level 1 | BAB | Phase 2 | Construction |  |  | 20% completed, REI is waiting on material | Fragnet | Y | Dave Wiltberger | Rosendin Electric Inc. |  |
| QTS-1009370 |  | Zone 2 / Mechanical Yard // Fragnet Delay - REI waiting on material -Install Raceway from Generators to UPS Pods | 5d | 2026-03-31 A | 2026-04-30 A | QTS-1007260 | 100% | 2026-03-05 | 2026-03-10 | QTS-PHX3 DC1 - 6 day w/ Holidays |  | Construction |  | Mechanical | IGMP | Gen Yard | Level 1 | BAB | Phase 2 | Construction |  |  | 50% completed, REI is waiting on material | Fragnet | Y | Dave Wiltberger | Rosendin Electric Inc. |  |
| QTS-1007810 |  | Zone 2 / Mechanical Yard // Terminate Electrical Wire at UPS Pod F22 | 3d | 2026-04-07 A | 2026-04-11 A | QTS-1007800, QTS-1007800 FF | 100% | 2026-04-09 | 2026-04-11 | QTS-PHX3 DC1 - 6 day w/ Holidays |  | Construction |  | Electrical | IGMP | Gen Yard | Level 1 | BAB | Phase 2 | Construction |  |  |  |  |  |  |  |  |
| QTS-1007900 |  | Zone 2 / Mechanical Yard // Terminate Electrical Wire at UPS Pod F12 | 3d | 2026-04-07 A | 2026-04-11 A | QTS-1007890, QTS-1007890 FF, QTS-1007810 | 100% | 2026-04-07 | 2026-04-09 | QTS-PHX3 DC1 - 6 day w/ Holidays |  | Construction |  | Electrical | IGMP | Gen Yard | Level 1 | BAB | Phase 2 | Construction |  |  |  |  |  |  |  |  |
| QTS-1007820 |  | Zone 2 / Mechanical Yard // Terminate Electrical Wire at UPS Pod R22 | 3d | 2026-04-08 A | 2026-04-13 A | QTS-1007900 | 100% | 2026-04-08 | 2026-04-10 | QTS-PHX3 DC1 - 6 day w/ Holidays |  | Construction |  | Electrical | IGMP | Gen Yard | Level 1 | BAB | Phase 2 | Construction |  |  |  |  |  |  |  |  |
| QTS-1007270 |  | Zone 2 / Mechanical Yard // Pull Control Wire from Transformers to UPS Pods | 3d | 2026-05-22 A | 2026-05-26 A | QTS-1007280 SS+2d, QTS-1007250, QTS-49981, QTS-1009360 | 100% |  |  | QTS-PHX3 DC1 - 6 day w/ Holidays |  | Construction |  | Electrical | IGMP | Gen Yard | Level 1 | BAB | Phase 2 | Construction |  |  |  |  |  |  |  |  |
| QTS-1007290 |  | Zone 2 / Mechanical Yard // Terminate Control Wire from Transformers to UPS Pods | 2d | 2026-06-01 A | 2026-06-01 A | QTS-1007270 | 100% | 2026-07-01 | 2026-07-02 | QTS-PHX3 DC1 - 6 day w/ Holidays |  | Construction |  | Electrical | IGMP | Gen Yard | Level 1 | BAB | Phase 2 | Construction |  |  |  |  |  | Oscar Armenta |  |  |
| QTS-1007300 |  | Zone 2 / Mechanical Yard // Terminate Control Wire from Generators to UPS Pods | 2d | 2026-06-03 A | 2026-06-05 A | QTS-1007280 | 100% | 2026-06-03 | 2026-06-04 | QTS-PHX3 DC1 - 6 day w/ Holidays |  | Construction |  | Electrical | IGMP | Gen Yard | Level 1 | BAB | Phase 2 | Construction |  |  |  |  |  | Oscar Armenta |  |  |
| QTS-1001200 |  | Zone 2 / Mechanical Yard // Pressure Test DH 2200 Generator Tanks | 2d | 2026-07-08 A | 2026-07-10 A | QTS-1000290 | 100% | 2026-07-22 | 2026-07-23 | QTS-PHX3 DC1 - 6 day w/ Holidays | 01ADMIN | Construction | Phase 1 | Mechanical | IGMP | Gen Yard | Level 2 | BAB |  |  |  |  |  |  |  | Mechanical |  | Bel-Aire |

Notes:
- QTS-99390: allucent_notes_20251216_165335: enrique perez on 2025-11-24 09:11: these are scheduled to start 12/1 / enrique perez on 2025-11-24 09:11: these are scheduled to pour with final generator pour in zone 2 / Jason Johnston on 2025-12-09 18:25: Need update from team / allucent_notes_20251209_203830: enrique perez on 2025-11-24 09:11: these are scheduled to start 12/1 / enrique perez on 2025-11-24 09:11: these are scheduled to pour with final generator pour in zone 2 / Jason Johnston on 2025-12-09 18:25: Need update from team / allucent_notes_20251202_153722: enrique perez on 2025-11-24 09:11: these are scheduled to start 12/1 / enrique perez on 2025-11-24 09:11: these are scheduled to pour with final generator pour in zone 2 / allucent_notes_20251230_164549: enrique perez on 2025-11-24 09:11: these are scheduled to start 12/1 / enrique perez on 2025-11-24 09:11: these are scheduled to pour with final generator pour in zone 2 / Jason Johnston on 2025-12-09 18:25: Need update from team / David Wiltberger on 2025-12-30 16:19: no update / allucent_notes: 2025-11-24 09:11 - User: enrique perez - Date Added: 2025-11-24 09:11 - Note: these are scheduled to start 12/1 / 2025-11-24 09:11 - User: enrique perez - Date Added: 2025-11-24 09:11 - Note: these are scheduled to pour with final generator pour in zone
- QTS-13551: allucent_notes_20251230_164549: David Wiltberger on 2025-12-30 16:20: no update / allucent_notes: 2025-12-30 16:20 - User: David Wiltberger - Date Added: 2025-12-30 16:20 - Note: no update
- QTS-41281: allucent_notes_20251230_164549: David Wiltberger on 2025-12-30 16:20: no update / allucent_notes: 2025-12-30 16:20 - User: David Wiltberger - Date Added: 2025-12-30 16:20 - Note: no update
- QTS-49981: allucent_notes_20251216_165335: Scott Masterson on 2025-12-16 16:11: We are not setting PODs in zone 3 till next week. the logistic of all three DCs impacted our schedule. / Scott Masterson on 2025-12-16T23:17:10.002Z: We are not setting PODs in zone 2 till next week. the logistic of all three DCs impacted our schedule. sorry zone2 / allucent_notes_20251230_164549: Scott Masterson on 2025-12-16 16:11: We are not setting PODs in zone 3 till next week. the logistic of all three DCs impacted our schedule. / Scott Masterson on 2025-12-16T23:17:10.002Z: We are not setting PODs in zone 2 till next week. the logistic of all three DCs impacted our schedule. sorry zone2 / David Wiltberger on 2025-12-30 16:20: no update / allucent_notes: 2025-12-16 16:11 - User: Scott Masterson - Date Added: 2025-12-16 16:11 - Note: We are not setting PODs in zone 3 till next week. the logistic of all three DCs impacted our schedule. / 2025-12-16T23:17:10.002Z - User: Scott Masterson - Date Added: 2025-
- QTS-1007250: Scheduler Notes: 3/24: 10% complete. REI waiting for conduit to arrive. / Notes: 3/24: 10% complete. REI waiting for conduit to arrive.
- QTS-1007260: Scheduler Notes: 3/24: 40% complete. REI waiting for conduit to arrive. / Notes: 3/24: 40% complete. REI waiting for conduit to arrive.
- QTS-1009360: Scheduler Notes: Manpower delay / Notes: 4/14: 90% complete 4/7: 60% complete. 3/24: 10% complete. REI waiting for conduit to arrive.
- QTS-1009370: Scheduler Notes: 3/24: 40% complete. REI waiting for conduit to arrive. / 4/7: 50% complete. / 4/14: 85% complete / Notes: 4/14: 85% complete 4/7: 50% complete. 3/24: 40% complete. REI waiting for conduit to arrive.

| ID | WBS | Activity | Duration | Start | Finish | Predecessors | Complete | Planned start | Planned finish | Total float | Free float | Calendar | Allucent CSI Group | Project Section | Phase-1 | Layton Discipline | Baseline | Location | Level | Layton Super | Contract | Trade Partner | TFO-CONST ONLY | NICK | Notes | Fragnet | Fragnet Responsible Party |
| --- | --- | --- | --- | --- | --- | --- | --- | --- | --- | --- | --- | --- | --- | --- | --- | --- | --- | --- | --- | --- | --- | --- | --- | --- | --- | --- | --- |
| QTS-1001210 |  | Zone 2 / Mechanical Yard // Pressure Test DH 1200 Generator Tanks | 2d | 2026-07-08 A | 2026-07-10 A | QTS-49991, QTS-42481 | 100% | 2026-07-22 | 2026-07-23 |  |  | QTS-PHX3 DC1 - 6 day w/ Holidays | 01ADMIN | Construction | Phase 1 | Electrical | IGMP | Gen Yard | Level 2 | Mechanical | BAB | Bel-Aire |  |  |  |  |  |
|  | 6 | **Data Hall 2200 TFO** |  | 2025-12-08 | 2026-09-23 |  |  |  |  |  |  |  |  |  |  |  |  |  |  |  |  |  |  |  |  |  |  |
|  | 1 | **2200 - TFO Scope Buildout (3MW) - Lineup A - B** |  | 2025-12-08 | 2026-08-29 |  |  |  |  |  |  |  |  |  |  |  |  |  |  |  |  |  |  |  |  |  |  |
| QTS - 4940 |  | TFO Scope // DH 2200 / Lineup A - B / Install HAC Support Steel | 5d | 2025-12-08 A | 2025-12-12 A | QTS - 3070, QTS - 1980 | 100% |  |  |  |  | QTS-PHX3 DC1 - 6 day w/ Holidays | 01ADMIN |  |  | Electrical |  |  |  |  | TFO |  | TFO CONST | NICK |  |  |  |
| QTS - 4950 |  | TFO Scope // DH 2200 / Lineup A - B / Install Stainless Steel Piping Hangers | 4d | 2026-01-21 A | 2026-01-31 A | QTS - 4940 | 100% | 2026-01-21 | 2026-01-24 |  |  | QTS-PHX3 DC1 - 6 day w/ Holidays |  |  |  | Mechanical |  |  |  |  | TFO |  | TFO CONST | NICK |  |  |  |
| QTS - 5310 |  | TFO Scope // DH 2200 / Lineup A - B / Uncrate QCools with HACs | 1d | 2026-01-21 A | 2026-01-21 A | QTS - 1020, QTS - 1070, QTS - 7540 | 100% |  |  |  |  | QTS-PHX3 DC1 - 6 day w/ Holidays |  |  |  | Mechanical |  |  |  |  | TFO |  | TFO CONST | NICK |  |  |  |
| QTS - 4990 |  | TFO Scope // DH 2200 / Lineup A - B / Raise HAC, QCool & Trays | 3d | 2026-01-22 A | 2026-01-22 A | QTS - 10190, QTS - 4940, QTS - 5310 | 100% | 2026-01-22 | 2026-01-24 |  |  | QTS-PHX3 DC1 - 6 day w/ Holidays |  |  |  | Mechanical |  |  |  |  | TFO |  | TFO CONST | NICK |  |  |  |
| QTS - 5000 |  | TFO Scope // DH 2200 / Lineup A - B / Install OH Trapeze - Screen Wall to CODs | 3d | 2026-03-07 A | 2026-03-30 A | QTS-45851, QTS-45841, QTS-4011, QTS-15751 | 100% | 2026-03-07 | 2026-03-10 |  |  | QTS-PHX3 DC1 - 6 day w/ Holidays |  |  |  | Electrical |  | DH2200 |  |  | TFO |  | TFO CONST | NICK |  |  |  |
| QTS - 5360 |  | TFO Scope // DH 2200 / Lineup A - B / Install OH Trapeze - Screen Wall to RPPs | 3d | 2026-03-07 A | 2026-03-07 A | QTS - 5000 SS, QTS - 26161 SS | 100% | 2026-03-04 | 2026-03-06 |  |  | QTS-PHX3 DC1 - 6 day w/ Holidays |  |  |  | Electrical |  | DH2200 |  |  | TFO |  | TFO CONST | NICK |  |  |  |
| QTS - 5020 |  | TFO Scope // DH 2200 / Lineup A - B / Pull MC Feeders - CODs to RPPs | 12d | 2026-03-26 A | 2026-03-27 A | QTS - 5360, QTS - 5000 | 100% | 2026-04-04 | 2026-04-17 |  |  | QTS-PHX3 DC1 - 6 day w/ Holidays |  |  |  | Electrical |  | DH2200 |  |  | TFO |  | TFO CONST | NICK |  |  |  |
| QTS - 25751 |  | TFO Scope // DH 2200 / Lineup A - B / Terminate Feeder at CODs | 5d | 2026-05-04 A | 2026-05-15 A | QTS - 5020 | 100% | 2026-05-04 | 2026-05-08 |  |  | QTS-PHX3 DC1 - 6 day w/ Holidays |  |  |  | Electrical |  | DH2200 |  |  | TFO |  | TFO CONST | NICK | 4/14: Stabbed in, but not terminated. |  |  |
| QTS - 25191 |  | TFO Scope // DH 2200 / Lineup A - B / Install Grid Hangers | 5d | 2026-06-01 A | 2026-06-23 A | QTS-1008730 | 100% | 2026-07-08 | 2026-07-13 |  |  | QTS-PHX3 DC1 - 6 day w/ Holidays |  |  |  | Electrical |  | DH2200 |  | Oscar Armenta | TFO |  | TFO CONST | NICK |  |  |  |
| QTS - 4980 |  | TFO Scope // DH 2200 / Lineup A - B / Set RPP # 12 Units | 5d | 2026-06-17 A | 2026-06-23 A | QTS - 4990 | 100% | 2026-07-08 | 2026-07-13 |  |  | QTS-PHX3 DC1 - 6 day w/ Holidays |  |  |  | Electrical |  | DH2200 |  | Oscar Armenta | TFO |  | TFO CONST | NICK |  |  |  |
| QTS - 5040 |  | TFO Scope // DH 2200 / Lineup A - B / Terminate Feeder at RPPs | 5d | 2026-06-23 A | 2026-06-27 A | QTS - 5020 FS+3d | 100% | 2026-07-14 | 2026-07-18 |  |  | QTS-PHX3 DC1 - 6 day w/ Holidays |  |  |  | Electrical |  | DH2200 |  | Oscar Armenta | TFO |  | TFO CONST | NICK |  |  |  |
| QTS - 5260 |  | TFO Scope // DH 2200 / Lineup A - B / Hang Stainless Steel 6" Fan Wall - QCool | 9d | 2026-07-02 A | 2026-07-10 A | QTS - 24741, QTS - 2590, QTS - 4950, QTS - 26051, QTS - 25191 | 100% | 2026-07-25 | 2026-08-04 |  |  | QTS-PHX3 DC1 - 6 day w/ Holidays |  |  |  | Mechanical |  | DH2200 |  | Mechanical | TFO |  | TFO CONST | NICK | 3/17: unactualized due to accidental update |  |  |
| QTS - 5010 |  | TFO Scope // DH 2200 / Lineup A - B / Pull LV Wire | 2d | 2026-07-22 A | 2026-07-23 A | QTS - 4990, QTS - 4970 | 100% | 2026-07-29 | 2026-07-30 |  |  | QTS-PHX3 DC1 - 6 day w/ Holidays |  |  |  | LV |  | DH2200 |  | Low Voltage | TFO | Prime | TFO CONST | NICK |  |  |  |
| QTS - 5030 |  | TFO Scope // DH 2200 / Lineup A - B / Terminate LV | 10d | 2026-08-19 | 2026-08-29 | QTS - 5010 |  |  |  | -81d | 0d | QTS-PHX3 DC1 - 6 day w/ Holidays |  |  |  | LV |  | DH2200 |  | Low Voltage | TFO | Prime | TFO CONST | NICK |  |  |  |
| QTS - 5150 |  | TFO Scope // DH 2200 / Lineup A - B / Terminate I&C | 5d | 2026-08-22 | 2026-08-27 | QTS - 2620, QTS - 5090, QTS - 25891 |  |  |  | -69d | 0d | QTS-PHX3 DC1 - 6 day w/ Holidays |  |  |  | LV |  | DH2200 |  | Low Voltage | TFO | Prime | TFO CONST | NICK |  |  |  |
|  | 1 | **2200 - TFO Scope Buildout (3MW) - Lineup A - B - Fragnet Delays** |  | 2026-03-31 | 2026-04-09 |  |  |  |  |  |  |  |  |  |  |  |  |  |  |  |  |  |  |  |  |  |  |
| QTS - 26161 |  | TFO Scope // DH 2200 / Lineup A - B / Fragnet Delay - Install OH Trapeze - Screen Wall to CODs | 3d | 2026-03-31 A | 2026-04-09 A | QTS - 5000 | 100% | 2026-03-07 | 2026-03-10 |  |  | QTS-PHX3 DC1 - 6 day w/ Holidays |  |  |  | Electrical |  | DH2200 |  |  | TFO |  | TFO CONST | NICK | Manpower Delay | Fragnet | Rosendin Electric Inc. |
|  | 3 | **2200 - TFO Scope Buildout (3MW) - Lineup C - D** |  | 2025-12-15 | 2026-09-11 |  |  |  |  |  |  |  |  |  |  |  |  |  |  |  |  |  |  |  |  |  |  |
| QTS - 5400 |  | TFO Scope // DH 2200 / Lineup C - D / Install HAC Support Steel | 5d | 2025-12-15 A | 2025-12-19 A | QTS - 4940 | 100% |  |  |  |  | QTS-PHX3 DC1 - 6 day w/ Holidays |  |  |  | Electrical |  |  |  |  | TFO |  | TFO CONST | NICK |  |  |  |
| QTS - 5570 |  | TFO Scope // DH 2200 / Lineup C - D / Uncrate QCools with HACs | 1d | 2026-01-22 A | 2026-01-22 A | QTS - 1020, QTS - 7540, QTS - 5310 SS+5d | 100% | 2026-01-28 | 2026-01-28 |  |  | QTS-PHX3 DC1 - 6 day w/ Holidays |  |  |  | Mechanical |  |  |  |  | TFO |  | TFO CONST | NICK |  |  |  |
| QTS - 5450 |  | TFO Scope // DH 2200 / Lineup C - D / Raise HAC, QCool & Trays | 3d | 2026-01-23 A | 2026-01-23 A | QTS - 10190, QTS - 5400, QTS - 5570 | 100% | 2026-01-23 | 2026-01-26 |  |  | QTS-PHX3 DC1 - 6 day w/ Holidays |  |  |  | Mechanical |  |  |  |  | TFO |  | TFO CONST | NICK |  |  |  |
| QTS - 5410 |  | TFO Scope // DH 2200 / Lineup C - D / Install Stainless Steel Piping Hangers | 4d | 2026-02-02 A | 2026-02-05 A | QTS - 4950, QTS - 5400 | 100% |  |  |  |  | QTS-PHX3 DC1 - 6 day w/ Holidays |  |  |  | Mechanical |  |  |  |  | TFO |  | TFO CONST | NICK |  |  |  |
| QTS - 5460 |  | TFO Scope // DH 2200 / Lineup C - D / Install OH Trapeze - Screen Wall to CODs | 3d | 2026-03-07 A | 2026-03-08 A | QTS - 5000 SS, QTS - 26161 SS | 100% | 2026-03-07 | 2026-03-10 |  |  | QTS-PHX3 DC1 - 6 day w/ Holidays |  |  |  | Electrical |  | DH2200 |  |  | TFO |  | TFO CONST | NICK |  |  |  |
| QTS - 5610 |  | TFO Scope // DH 2200 / Lineup C - D / Install OH Trapeze - Screen Wall to RPPs | 3d | 2026-03-07 A | 2026-03-07 A | QTS - 5460 SS | 100% | 2026-03-07 | 2026-03-10 |  |  | QTS-PHX3 DC1 - 6 day w/ Holidays |  |  |  | Electrical |  | DH2200 |  |  | TFO |  | TFO CONST | NICK |  |  |  |
| QTS - 5480 |  | TFO Scope // DH 2200 / Lineup C - D / Pull MC Feeders - CODs to RPPs | 12d | 2026-03-26 A | 2026-03-28 A | QTS - 5610, QTS - 5460 | 100% | 2026-04-01 | 2026-04-14 |  |  | QTS-PHX3 DC1 - 6 day w/ Holidays |  |  |  | Electrical |  | DH2200 |  |  | TFO |  | TFO CONST | NICK |  |  |  |
| QTS - 25761 |  | TFO Scope // DH 2200 / Lineup C - D / Terminate Feeder at CODs | 5d | 2026-05-15 A | 2026-05-26 A | QTS - 5480 | 100% | 2026-05-15 | 2026-05-20 |  |  | QTS-PHX3 DC1 - 6 day w/ Holidays |  |  |  | Electrical |  | DH2200 |  |  | TFO |  | TFO CONST | NICK | 4/14: Stabbed in, but not terminated. |  |  |
| QTS - 5440 |  | TFO Scope // DH 2200 / Lineup C - D / Set RPP # 12 Units | 5d | 2026-06-17 A | 2026-06-23 A | QTS - 5450, QTS - 4980 SS, QTS - 4980 FF | 100% | 2026-07-08 | 2026-07-13 |  |  | QTS-PHX3 DC1 - 6 day w/ Holidays |  |  |  | Electrical |  | DH2200 |  | Oscar Armenta | TFO |  | TFO CONST | NICK |  |  |  |
| QTS - 5500 |  | TFO Scope // DH 2200 / Lineup C - D / Terminate Feeder at RPPs | 5d | 2026-06-23 A | 2026-06-27 A | QTS - 5480 FF+3d, QTS - 5440 | 100% | 2026-07-14 | 2026-07-18 |  |  | QTS-PHX3 DC1 - 6 day w/ Holidays |  |  |  | Electrical |  | DH2200 |  | Oscar Armenta | TFO |  | TFO CONST | NICK |  |  |  |
| QTS - 5560 |  | TFO Scope // DH 2200 / Lineup C - D / Hang Stainless Steel 6" Fan Wall - QCool | 9d | 2026-07-02 A | 2026-07-10 A | QTS - 24741, QTS - 2590, QTS - 5410, QTS - 26051 | 100% | 2026-07-25 | 2026-08-04 |  |  | QTS-PHX3 DC1 - 6 day w/ Holidays |  |  |  | Mechanical |  | DH2200 |  | Mechanical | TFO |  | TFO CONST | NICK |  |  |  |
| QTS - 5470 |  | TFO Scope // DH 2200 / Lineup C - D / Pull LV Wire | 2d | 2026-07-24 A | 2026-07-25 A | QTS - 5450, QTS - 5010 | 100% | 2026-07-29 | 2026-07-30 |  |  | QTS-PHX3 DC1 - 6 day w/ Holidays |  |  |  | LV |  | DH2200 |  | Low Voltage | TFO | Prime | TFO CONST | NICK |  |  |  |
| QTS - 5520 |  | TFO Scope // DH 2200 / Lineup C - D / Install Fire Alarm | 7d | 2026-07-29 A | 2026-08-04 A | QTS - 10190, QTS - 4940, QTS - 5400, QTS - 5560 | 100% | 2026-08-05 | 2026-08-12 |  |  | QTS-PHX3 DC1 - 6 day w/ Holidays |  |  |  | Electrical |  | DH2200 |  | Electrical | TFO | Nexus/Securitas | TFO CONST | NICK | done |  |  |
| QTS - 5530 |  | TFO Scope // DH 2200 / Lineup C - D / Terminate I&C | 5d | 2026-08-28 | 2026-09-02 | QTS - 2620, QTS - 5150, QTS - 5090, QTS - 5520, QTS - 25891 |  |  |  | -69d | 0d | QTS-PHX3 DC1 - 6 day w/ Holidays |  |  |  | LV |  | DH2200 |  | Low Voltage | TFO | Prime | TFO CONST | NICK |  |  |  |
| QTS - 5490 |  | TFO Scope // DH 2200 / Lineup C - D / Terminate LV | 10d | 2026-08-31 | 2026-09-11 | QTS - 5470, QTS - 5030 |  |  |  | -81d | 0d | QTS-PHX3 DC1 - 6 day w/ Holidays |  |  |  | LV |  | DH2200 |  | Low Voltage | TFO | Prime | TFO CONST | NICK |  |  |  |

Notes:
- QTS - 25751: Scheduler Notes: 4/14: Stabbed in, but not terminated.
- QTS - 5260: Scheduler Notes: 3/17: unactualized due to accidental update
- QTS - 26161: Scheduler Notes: Manpower Delay
- QTS - 25761: Scheduler Notes: 4/14: Stabbed in, but not terminated.

| ID | WBS | Activity | Duration | Start | Finish | Predecessors | Complete | Planned start | Planned finish | Total float | Free float | Calendar | Layton Discipline | TFO-CONST ONLY | Contract | NICK | Location | Layton Super | Notes | Trade Partner | Allucent CSI Group |
| --- | --- | --- | --- | --- | --- | --- | --- | --- | --- | --- | --- | --- | --- | --- | --- | --- | --- | --- | --- | --- | --- |
|  | 2 | **2200 - TFO Scope Buildout (3MW) - Lineup E - F** |  | 2025-12-22 | 2026-09-23 |  |  |  |  |  |  |  |  |  |  |  |  |  |  |  |  |
| QTS - 5630 |  | TFO Scope // DH 2200 / Lineup E - F / Install HAC Support Steel | 5d | 2025-12-22 A | 2025-12-27 A | QTS - 5400 | 100% |  |  |  |  | QTS-PHX3 DC1 - 6 day w/ Holidays | Electrical | TFO CONST | TFO | NICK |  |  |  |  |  |
| QTS - 5800 |  | TFO Scope // DH 2200 / Lineup E - F / Uncrate QCools with HACs | 1d | 2026-01-23 A | 2026-01-23 A | QTS - 1020, QTS - 7540, QTS - 5570 SS+5d | 100% | 2026-02-03 | 2026-02-03 |  |  | QTS-PHX3 DC1 - 6 day w/ Holidays | Mechanical | TFO CONST | TFO | NICK |  |  |  |  |  |
| QTS - 5680 |  | TFO Scope // DH 2200 / Lineup E - F / Raise HAC, QCool & Trays | 3d | 2026-01-24 A | 2026-01-24 A | QTS - 10190, QTS - 5630, QTS - 5800 | 100% | 2026-01-24 | 2026-01-27 |  |  | QTS-PHX3 DC1 - 6 day w/ Holidays | Mechanical | TFO CONST | TFO | NICK |  |  |  |  |  |
| QTS - 5640 |  | TFO Scope // DH 2200 / Lineup E - F / Install Stainless Steel Piping Hangers | 4d | 2026-03-09 A | 2026-03-13 A | QTS - 5410, QTS - 5630 | 100% | 2026-03-09 | 2026-03-12 |  |  | QTS-PHX3 DC1 - 6 day w/ Holidays | Mechanical | TFO CONST | TFO | NICK | DH2200 |  |  |  |  |
| QTS - 5840 |  | TFO Scope // DH 2200 / Lineup E - F / Install OH Trapeze - Screen Wall to RPPs | 3d | 2026-03-09 A | 2026-03-12 A | QTS - 5460 | 100% | 2026-03-09 | 2026-03-11 |  |  | QTS-PHX3 DC1 - 6 day w/ Holidays | Electrical | TFO CONST | TFO | NICK | DH2200 |  |  |  |  |
| QTS - 5690 |  | TFO Scope // DH 2200 / Lineup E - F / Install OH Trapeze - Screen Wall to CODs | 3d | 2026-03-12 A | 2026-03-15 A | QTS - 5460, QTS - 5840 | 100% | 2026-03-12 | 2026-03-14 |  |  | QTS-PHX3 DC1 - 6 day w/ Holidays | Electrical | TFO CONST | TFO | NICK | DH2200 |  |  |  |  |
| QTS - 5710 |  | TFO Scope // DH 2200 / Lineup E - F / Pull MC Feeders - CODs to RPPs | 12d | 2026-03-28 A | 2026-04-06 A | QTS - 5840, QTS - 5690 | 100% | 2026-04-01 | 2026-04-14 |  |  | QTS-PHX3 DC1 - 6 day w/ Holidays | Electrical | TFO CONST | TFO | NICK | DH2200 |  |  |  |  |
| QTS - 25771 |  | TFO Scope // DH 2200 / Lineup E - F / Terminate Feeder at CODs | 5d | 2026-05-22 A | 2026-06-03 A | QTS - 5710 | 100% | 2026-05-20 | 2026-05-26 |  |  | QTS-PHX3 DC1 - 6 day w/ Holidays | Electrical | TFO CONST | TFO | NICK | DH2200 | Oscar Armenta |  |  |  |
| QTS - 5670 |  | TFO Scope // DH 2200 / Lineup E - F / Set RPP # 12 Units | 5d | 2026-06-17 A | 2026-06-23 A | QTS - 5680, QTS - 5440 SS, QTS - 5440 FF | 100% | 2026-07-08 | 2026-07-13 |  |  | QTS-PHX3 DC1 - 6 day w/ Holidays | Electrical | TFO CONST | TFO | NICK | DH2200 | Oscar Armenta |  |  |  |
| QTS - 5730 |  | TFO Scope // DH 2200 / Lineup E - F / Terminate Feeder at RPPs | 5d | 2026-06-23 A | 2026-06-27 A | QTS - 5710, QTS - 5670 | 100% | 2026-07-14 | 2026-07-18 |  |  | QTS-PHX3 DC1 - 6 day w/ Holidays | Electrical | TFO CONST | TFO | NICK | DH2200 | Oscar Armenta |  |  |  |
| QTS - 5790 |  | TFO Scope // DH 2200 / Lineup E - F / Hang Stainless Steel 6" Fan Wall - QCool | 9d | 2026-07-02 A | 2026-07-10 A | QTS - 24741, QTS - 2590, QTS - 5640, QTS - 26051 | 100% | 2026-07-25 | 2026-08-04 |  |  | QTS-PHX3 DC1 - 6 day w/ Holidays | Mechanical | TFO CONST | TFO | NICK | DH2200 | Mechanical |  |  |  |
| QTS - 5740 |  | TFO Scope // DH 2200 / Lineup E - F / Rough-In I&C | 10d | 2026-07-21 A | 2026-08-03 A | QTS - 5670 | 100% | 2026-08-05 | 2026-08-15 |  |  | QTS-PHX3 DC1 - 6 day w/ Holidays | LV | TFO CONST | TFO | NICK | DH2200 | Low Voltage | 8/3 done | Prime |  |
| QTS - 5700 |  | TFO Scope // DH 2200 / Lineup E - F / Pull LV Wire | 2d | 2026-07-27 A | 2026-07-28 A | QTS - 5680, QTS - 5470 | 100% | 2026-07-31 | 2026-08-01 |  |  | QTS-PHX3 DC1 - 6 day w/ Holidays | LV | TFO CONST | TFO | NICK | DH2200 | Low Voltage |  | Prime |  |
| QTS - 5750 |  | TFO Scope // DH 2200 / Lineup E - F / Install Fire Alarm | 7d | 2026-07-29 A | 2026-08-04 A | QTS - 10190, QTS - 4940, QTS - 5400, QTS - 5630, QTS - 5740, QTS - 5790 | 100% | 2026-08-17 | 2026-08-24 |  |  | QTS-PHX3 DC1 - 6 day w/ Holidays | Electrical | TFO CONST | TFO | NICK | DH2200 | Electrical | done | Nexus/Securitas |  |
| QTS - 5760 |  | TFO Scope // DH 2200 / Lineup E - F / Terminate I&C | 5d | 2026-09-03 | 2026-09-09 | QTS - 5530, QTS - 5090, QTS - 5740, QTS - 5750, QTS - 25891 |  |  |  | -69d | 21d | QTS-PHX3 DC1 - 6 day w/ Holidays | LV | TFO CONST | TFO | NICK | DH2200 | Low Voltage |  | Prime |  |
| QTS - 5720 |  | TFO Scope // DH 2200 / Lineup E - F / Terminate LV | 10d | 2026-09-12 | 2026-09-23 | QTS - 5700, QTS - 5490 |  |  |  | -81d | 9d | QTS-PHX3 DC1 - 6 day w/ Holidays | LV | TFO CONST | TFO | NICK | DH2200 | Low Voltage |  | Prime |  |
|  | 10 | **Gallery 2201 Mechanical TFO** |  | 2026-05-14 | 2026-07-02 |  |  |  |  |  |  |  |  |  |  |  |  |  |  |  |  |
|  | 9 | **TFO 2201 - CDU Mechanical Gallery** |  | 2026-05-14 | 2026-07-02 |  |  |  |  |  |  |  |  |  |  |  |  |  |  |  |  |
| QTS - 5070 |  | TFO Scope // DH 2200 - 2201 Mechanical Gallery / OFCI - L2 SET IN PLACE - CDU - 9 units | 3d | 2026-05-14 A | 2026-05-15 A | QTS - 26121 | 100% | 2026-05-14 | 2026-05-16 |  |  | QTS-PHX3 DC1 - 6 day w/ Holidays | Mechanical | TFO CONST | TFO | NICK | DH2200 |  |  |  | 01ADMIN |
| QTS - 5120 |  | TFO Scope // DH 2200 - 2201 Mechanical Gallery / Pull Branches From MOD-03 to CDUs | 8d | 2026-06-03 A | 2026-06-09 A | QTS - 5070 | 100% | 2026-06-03 | 2026-06-11 |  |  | QTS-PHX3 DC1 - 6 day w/ Holidays | Electrical | TFO CONST | TFO | NICK | DH2200 | Oscar Armenta |  |  | 01ADMIN |
| QTS - 10230 |  | TFO Scope // DH 2200 - 2201 Mechanical Gallery / Install Telecom Conduit from MMR to IDF Cabinet | 10d | 2026-06-15 A | 2026-06-29 A | QTS-16531 | 100% | 2026-07-01 | 2026-07-14 |  |  | QTS-PHX3 DC1 - 6 day w/ Holidays | LV | TFO CONST | TFO | NICK | DH2200 | Low Voltage |  |  |  |
| QTS - 10240 |  | TFO Scope // DH 2200 - 2201 Mechanical Gallery / Pull Telecom Wire from MMR to IDF Cabinet | 10d | 2026-06-15 A | 2026-06-29 A | QTS - 10230 | 100% | 2026-07-15 | 2026-07-25 |  |  | QTS-PHX3 DC1 - 6 day w/ Holidays | LV | TFO CONST | TFO | NICK | DH2200 | Low Voltage |  |  |  |
| QTS - 5080 |  | TFO Scope // DH 2200 - 2201 Mechanical Gallery / Pull LV Main / IDF Cabinet to Basket Tray | 7d | 2026-06-22 A | 2026-06-29 A | QTS-16531 | 100% | 2026-07-01 | 2026-07-10 |  |  | QTS-PHX3 DC1 - 6 day w/ Holidays | LV | TFO CONST | TFO | NICK | DH2200 | Low Voltage |  |  |  |
| QTS - 5090 |  | TFO Scope // DH 2200 - 2201 Mechanical Gallery / Terminate & Torque - CDU Connections | 5d | 2026-06-24 A | 2026-06-29 A | QTS - 5070, QTS - 5120 | 100% | 2026-07-01 | 2026-07-08 |  |  | QTS-PHX3 DC1 - 6 day w/ Holidays | Electrical | TFO CONST | TFO | NICK | DH2200 | Oscar Armenta |  |  |  |
| QTS - 5320 |  | TFO Scope // DH 2200 - 2201 Mechanical Gallery / Install OH Technical Loop Hangers | 5d | 2026-07-01 A | 2026-07-02 A | QTS - 5640, QTS - 5080 | 100% | 2026-07-15 | 2026-07-20 |  |  | QTS-PHX3 DC1 - 6 day w/ Holidays | Mechanical | TFO CONST | TFO | NICK | DH2200 | Mechanical |  |  |  |

| ID | WBS | Activity | Duration | Start | Finish | Predecessors | Complete | Remaining | Planned start | Planned finish | Total float | Free float | Calendar | Layton Discipline | Location | TFO-CONST ONLY | Contract | NICK | Layton Super | Project Section | Phase-1 | Baseline | Level | Layton PM | Trade Partner | No PreUp | D | Owner Impact Analysis | Allucent CSI Group | Phase-1-1 | Project Section-1 |
| --- | --- | --- | --- | --- | --- | --- | --- | --- | --- | --- | --- | --- | --- | --- | --- | --- | --- | --- | --- | --- | --- | --- | --- | --- | --- | --- | --- | --- | --- | --- | --- |
|  | 11 | **Gallery 2203 Mechanical TFO** |  | 2026-05-14 | 2026-06-29 |  |  |  |  |  |  |  |  |  |  |  |  |  |  |  |  |  |  |  |  |  |  |  |  |  |  |
|  | 10 | **TFO 2203 - CDU Mechanical Gallery** |  | 2026-05-14 | 2026-06-29 |  |  |  |  |  |  |  |  |  |  |  |  |  |  |  |  |  |  |  |  |  |  |  |  |  |  |
| QTS - 5860 |  | TFO Scope // DH 2200 - 2203 Mechanical Gallery / OFCI - L2 SET IN PLACE - CDU - 9 units | 3d | 2026-05-14 A | 2026-05-15 A | QTS - 26121 | 100% |  | 2026-05-14 | 2026-05-16 |  |  | QTS-PHX3 DC1 - 6 day w/ Holidays | Mechanical | DH2200 | TFO CONST | TFO | NICK |  |  |  |  |  |  |  |  |  |  |  |  |  |
| QTS - 5880 |  | TFO Scope // DH 2200 - 2203 Mechanical Gallery / Terminate & Torque - CDU Connections | 5d | 2026-06-24 A | 2026-06-29 A | QTS - 5860, QTS - 5910 | 100% |  | 2026-07-13 | 2026-07-17 |  |  | QTS-PHX3 DC1 - 6 day w/ Holidays | Electrical | DH2200 | TFO CONST | TFO | NICK | Oscar Armenta |  |  |  |  |  |  |  |  |  |  |  |  |
| QTS - 5910 |  | TFO Scope // DH 2200 - 2203 Mechanical Gallery / Pull Branches From MOD-03 to CDUs | 8d | 2026-06-24 A | 2026-06-28 A | QTS - 5860 | 100% |  | 2026-07-01 | 2026-07-11 |  |  | QTS-PHX3 DC1 - 6 day w/ Holidays | Electrical | DH2200 | TFO CONST | TFO | NICK | Oscar Armenta |  |  |  |  |  |  |  |  |  |  |  |  |
|  | 20 | **DH 2200 Close Out** |  | 2026-09-08 | 2026-10-12 |  |  |  |  |  |  |  |  |  |  |  |  |  |  |  |  |  |  |  |  |  |  |  |  |  |  |
| QTS-1241 |  | DH 2200 / Closeout // LCC Worklist | 15d | 2026-09-08 | 2026-09-28 | QTS-102160, QTS-1771, QTS-1000350, QTS-21861, QTS-1002410, QTS-1000360, QTS-1005070, QTS-1003400, QTS-102210, QTS-13361, QTS-13351, QTS-102160 FF, QTS-1002460, QTS-13001, QTS-13011, QTS-1002450, QTS-13711, QTS-13721, QTS-0750, QTS-2670, QTS-5900, QTS-2890, QTS-2290, QTS-2750 |  |  |  |  | -93d | 0d |  | Closeout |  |  | BAB |  | Jake Shimmin | Close Out | Phase 2 | IGMP | Level 2 | TTodaro | Layton |  |  |  |  |  |  |
| QTS-3221 |  | DH 2200 / Closeout // Final Clean | 5d | 2026-09-22 | 2026-09-28 | QTS-1241 FF, QTS-2700, QTS-5930, QTS-2920, QTS-2310 |  |  |  |  | -93d | 0d |  | Closeout |  |  | BAB |  | Jake Shimmin | Close Out | Phase 2 | IGMP | Level 2 | TTodaro | Layton |  |  |  |  |  |  |
| QTS-4441 |  | DH 2200 / Closeout // A/E Punch List | 10d | 2026-09-29 | 2026-10-12 | QTS-102210, QTS-3221, QTS-2040 |  |  |  |  | -93d | 0d |  | Closeout |  |  | BAB |  |  | Close Out | Phase 2 | IGMP | Level 2 | TTodaro | Layton |  |  |  |  |  |  |
|  | 15 | **Data Hall 2200 Commissioning** |  | 2026-07-15 | 2026-10-17 |  |  |  |  |  |  |  |  |  |  |  |  |  |  |  |  |  |  |  |  |  |  |  |  |  |  |
| QTS-1012800 |  | DH 2200 / L2 Checklist MOD-02 | 1d | 2026-07-15 A | 2026-07-15 A | QTS-43751, QTS-17961, QTS-44471, QTS-44501, DC1-MOD02-L2-2070, DC1-MOD02-L2-2080, DC1-MOD02-L2-2090, DC1-MOD02-L2-2100, DC1-MOD02-L2-2110, DC1-MOD02-L2-2120, DC1-MOD02-L2-2130, QTS - 26611 | 100% |  | 2026-07-21 | 2026-07-21 |  |  | **GLOBAL - 5 Day Workweek w/ Basic Holidays | Commissioning |  |  |  |  |  |  |  |  |  |  |  | NO |  |  |  |  |  |
| QTS-1012830 |  | DH 2200 / Pre Energization Inspection MOD-02 | 1d | 2026-07-15 A | 2026-07-15 A | QTS-1012800 | 100% |  | 2026-07-22 | 2026-07-22 |  |  | **GLOBAL - 5 Day Workweek w/ Basic Holidays | Commissioning |  |  |  |  | Commissioning |  |  |  |  |  | REI/Layton |  |  |  |  |  |  |
| QTS-1012880 |  | DH 2200 / First Time Energization MOD-02 | 1d | 2026-07-16 A | 2026-07-16 A | QTS-1012830, DC1-SWD-L3-CX-2390, DC1-SWD-L3-CX-2360, DC1-SWD-L3-CX-2330, DC1-SWD-L3-CX-2300, DC1-SWD-L3-CX-2270, DC1-SWD-L3-CX-2240, DC1-SWD-L3-CX-2210 | 100% |  | 2026-07-22 | 2026-07-22 |  |  | **GLOBAL - 5 Day Workweek w/ Basic Holidays | Commissioning |  |  |  |  | Commissioning |  |  |  |  |  | REI/Layton |  | DH2200 |  |  |  |  |
| QTS-1012770 |  | DH 2200 / L2 Checklist CHWP | 1d | 2026-07-20 A | 2026-07-20 A | QTS-1007630, QTS-1007590, QTS-1007720 | 100% |  | 2026-07-24 | 2026-07-24 |  |  | **GLOBAL - 5 Day Workweek w/ Basic Holidays | Commissioning |  |  |  |  |  |  |  |  |  |  | REI/Layton | NO |  |  |  |  |  |
| QTS-1012790 |  | DH 2200 / Pre Energization Inspection CHWP | 1d | 2026-07-20 A | 2026-07-20 A | QTS-1012770 | 100% |  | 2026-07-27 | 2026-07-27 |  |  | **GLOBAL - 5 Day Workweek w/ Basic Holidays | Commissioning |  |  |  |  | Commissioning |  |  |  |  |  | REI/Layton |  |  |  |  |  |  |
| QTS-1012820 |  | DH 2200 / First Time Energization CHWP | 1d | 2026-07-21 A | 2026-07-21 A | QTS-1012790 | 100% |  | 2026-07-28 | 2026-07-28 |  |  | **GLOBAL - 5 Day Workweek w/ Basic Holidays | Commissioning |  |  |  |  | Commissioning |  |  |  |  |  | REI/Layton |  | DH2200 |  |  |  |  |
| QTS-1012970 |  | DH 2200 / L2 Checklist BSWY | 1d | 2026-07-25 A | 2026-07-25 A | QTS-7131, QTS-2230, QTS-1012770 | 100% |  | 2026-07-27 | 2026-07-27 |  |  | **GLOBAL - 5 Day Workweek w/ Basic Holidays | Commissioning |  |  | BAB |  | Commissioning |  |  |  |  |  | REI/Layton | NO |  |  |  |  |  |
| QTS-1013020 |  | DH 2200 / Pre Energization Inspection BSWY | 2d | 2026-07-25 A | 2026-07-25 A | QTS-1012970 | 100% |  | 2026-07-27 | 2026-07-28 |  |  | **GLOBAL - 5 Day Workweek w/ Basic Holidays | Commissioning |  |  | BAB |  | Commissioning |  |  |  |  |  | REI/Layton |  |  |  |  |  |  |
| QTS-1012910 |  | DH 2200 / L2 Checklist CHLR | 1d | 2026-07-27 A | 2026-07-27 A | QTS-1007600, QTS-1007630, QTS-1007590, QTS-1012800 SS, QTS-1007710, QTS-1007720 | 100% |  | 2026-07-23 | 2026-07-23 |  |  | **GLOBAL - 5 Day Workweek w/ Basic Holidays | Commissioning |  |  | BAB |  | Commissioning |  |  |  |  |  | REI/Layton | NO |  |  |  |  |  |
| QTS-1012950 |  | DH 2200 / Pre Energization Inspection CHLR | 1d | 2026-07-27 A | 2026-07-27 A | QTS-1012910 | 100% |  | 2026-07-29 | 2026-07-29 |  |  | **GLOBAL - 5 Day Workweek w/ Basic Holidays | Commissioning |  |  | BAB |  | Commissioning |  |  |  |  |  | REI/Layton |  |  |  |  |  |  |
| QTS-1013000 |  | DH 2200 / L2 Checklist ATS/COD (1, 3, 5) | 1d | 2026-07-29 A | 2026-07-29 A | QTS-1012970, QTS-2230, QTS-18121, QTS-9071, QTS-9101, QTS-9131, QTS-9161, QTS-9191, QTS - 25751, QTS-18131, QTS - 25761, QTS-9111, QTS-9141, QTS - 25771, QTS-9171, QTS-9201, DC1-SWD-L3-CX-2210, DC1-SWD-L3-CX-2240, DC1-SWD-L3-CX-2270, DC1-SWD-L3-CX-2300, DC1-SWD-L3-CX-2330, DC1-SWD-L3-CX-2360, DC1-SWD-L3-CX-2390, QTS-9081 | 100% |  |  |  |  |  | **GLOBAL - 5 Day Workweek w/ Basic Holidays | Commissioning |  |  | BAB |  | Commissioning |  |  |  |  |  | REI/Layton | NO |  |  |  |  |  |
| QTS-1013010 |  | DH 2200 / L2 Checklist ATS/COD (2, 4, 6) | 1d | 2026-07-29 A | 2026-07-29 A | QTS-1012970, QTS-2230, QTS-18121, QTS-9071, QTS-9101, QTS-9131, QTS-9161, QTS-9191, QTS - 25751, QTS-18131, QTS - 25761, QTS-9111, QTS-9141, QTS - 25771, QTS-9171, QTS-9201, DC1-SWD-L3-CX-2210, DC1-SWD-L3-CX-2240, DC1-SWD-L3-CX-2270, DC1-SWD-L3-CX-2300, DC1-SWD-L3-CX-2330, DC1-SWD-L3-CX-2360, DC1-SWD-L3-CX-2390 | 100% |  |  |  |  |  | **GLOBAL - 5 Day Workweek w/ Basic Holidays | Commissioning |  |  | BAB |  | Commissioning |  |  |  |  |  | REI/Layton | NO |  |  |  |  |  |
| QTS-1013030 |  | DH 2200 / Pre Energization Inspection ATS/COD (1, 3, 5) | 1d | 2026-07-30 A | 2026-07-30 A | QTS-1013000 | 100% |  |  |  |  |  | **GLOBAL - 5 Day Workweek w/ Basic Holidays | Commissioning |  |  | BAB |  | Commissioning |  |  |  |  |  | REI/Layton |  |  |  |  |  |  |
| QTS-1013040 |  | DH 2200 / Pre Energization Inspection ATS/COD (2, 4, 6) | 1d | 2026-07-30 A | 2026-07-30 A | QTS-1013010 | 100% |  |  |  |  |  | **GLOBAL - 5 Day Workweek w/ Basic Holidays | Commissioning |  |  | BAB |  | Commissioning |  |  |  |  |  | REI/Layton |  |  |  |  |  |  |
| QTS-1012810 |  | DH 2200 / L2 Checklist MOD-03 | 1d | 2026-08-04 A | 2026-08-04 A | QTS-43751, QTS-17961, QTS-44471, QTS-44501 | 100% |  | 2026-08-06 | 2026-08-06 |  |  | **GLOBAL - 5 Day Workweek w/ Basic Holidays | Commissioning |  |  | BAB |  | Commissioning |  |  |  |  |  | REI/Layton | NO | DH2200 |  |  |  |  |
| QTS-1012840 |  | DH 2200 / Pre Energization Inspection MOD-03 | 1d | 2026-08-04 A | 2026-08-04 A | QTS-1012810 | 100% |  | 2026-08-07 | 2026-08-07 |  |  | **GLOBAL - 5 Day Workweek w/ Basic Holidays | Commissioning |  |  | BAB |  | Commissioning |  |  |  |  |  | REI/Layton |  | DH2200 |  |  |  |  |
| QTS-1012990 |  | DH 2200 / First Time Energization CHLR | 1d | 2026-08-04 A | 2026-08-04 A | QTS-1012950, DC1-SWD-L3-CX-2210, DC1-SWD-L3-CX-2240, DC1-SWD-L3-CX-2270, DC1-SWD-L3-CX-2300, DC1-SWD-L3-CX-2330, DC1-SWD-L3-CX-2360, DC1-SWD-L3-CX-2390 | 100% |  | 2026-08-05 | 2026-08-05 |  |  | **GLOBAL - 5 Day Workweek w/ Basic Holidays | Commissioning |  |  | BAB |  | Electrical |  |  |  |  |  | REI/Layton |  | DH2200 |  |  |  |  |
| QTS-1013460 |  | DH 2200 / L3 Contorls Point to Point | 10d | 2026-08-04 A | 2026-08-24 | QTS-1012820, QTS-1012990, QTS-1013720 | 60% | 4d | 2026-08-06 | 2026-08-19 | -88d | 5d | **GLOBAL - 5 Day Workweek w/ Basic Holidays | Commissioning |  |  | BAB |  | Mechanical |  |  |  |  |  | Prime |  | DH2200 | Y |  |  |  |
| QTS-1014130 |  | DH 2200 / GEN Fire Marshall Inspection | 1d | 2026-08-04 A | 2026-08-04 A | QTS-1012950 | 100% |  | 2026-07-29 | 2026-07-29 |  |  | **GLOBAL - 5 Day Workweek w/ Basic Holidays | Commissioning |  |  | BAB |  | Commissioning |  |  |  |  |  | REI/Layton |  |  |  |  |  |  |
| QTS-1012850 |  | DH 2200 / L2 Checklist CRAHs | 1d | 2026-08-05 A | 2026-08-05 A | QTS-1012800 SS, QTS-46561, QTS-46591, QTS-15461, QTS-46571, QTS-46601, QTS-1007660, QTS-1007750 | 100% |  | 2026-08-06 | 2026-08-06 |  |  | **GLOBAL - 5 Day Workweek w/ Basic Holidays | Commissioning |  |  | BAB |  | Commissioning |  |  |  |  |  | REI/Layton | NO | DH2200 |  |  |  |  |
| QTS-1012900 |  | DH 2200 / Pre Energization Inspection CRAHs | 2d | 2026-08-06 A | 2026-08-19 | QTS-1012850 | 100% | 0d | 2026-08-07 | 2026-08-10 | -85d | 0d | **GLOBAL - 5 Day Workweek w/ Basic Holidays | Commissioning |  |  | BAB |  | Commissioning |  |  |  |  |  | REI/Layton |  | DH2200 |  |  |  |  |
| QTS-1014140 |  | DH 2200 / GEN Fueling | 3d | 2026-08-06 A | 2026-08-19 | QTS-1014130 FS+1d | 67% | 1d | 2026-08-06 | 2026-08-10 | -75d | 0d | **GLOBAL - 5 Day Workweek w/ Basic Holidays | Commissioning |  |  | BAB |  | Commissioning |  |  |  |  |  | REI/Layton | NO |  |  |  |  |  |
| QTS-1012570 |  | DH 2200 / L2 Checklist CDU | 5d | 2026-08-19 | 2026-08-25 | QTS - 5090, QTS - 5880, QTS-1012810, QTS - 10240, QTS-0660 |  |  |  |  | -63d | 0d | **GLOBAL - 5 Day Workweek w/ Basic Holidays | Commissioning |  |  | BAB |  | Commissioning |  |  |  |  |  | REI/Layton | NO | DH2200 |  |  |  |  |
| QTS-1012890 |  | DH 2200 / First Time Energization MOD-03 | 1d | 2026-08-19 | 2026-08-19 | QTS-1012840, DC1-UPSM-L3-CX-2210, DC1-UPSM-L3-CX-2240, DC1-UPSM-L3-CX-2270, DC1-UPSM-L3-CX-2300, DC1-UPSM-L3-CX-2330, DC1-UPSM-L3-CX-2360, DC1-UPSM-L3-CX-2390, QTS-0660 |  |  |  |  | -56d | 25d | **GLOBAL - 5 Day Workweek w/ Basic Holidays | Commissioning |  |  | BAB |  | Commissioning |  |  |  |  |  | REI/Layton | NO | DH2200 |  |  |  |  |
| QTS-1012940 |  | DH 2200 / First Time Energization CRAHs | 1d | 2026-08-19 | 2026-08-19 | QTS-1012900, QTS-1012880, QTS-16281, QTS-0660 |  |  |  |  | -85d | 0d | **GLOBAL - 5 Day Workweek w/ Basic Holidays | Commissioning |  |  | BAB |  | Electrical |  |  |  |  |  | REI/Layton | NO | DH2200 |  |  |  |  |
| QTS-1013050 |  | DH 2200 / First Time Energization BSWY | 1d | 2026-08-19 | 2026-08-19 | QTS-1013020, QTS-0660 |  |  |  |  | -74d | 2d | **GLOBAL - 5 Day Workweek w/ Basic Holidays | Commissioning |  |  | BAB |  | Electrical |  |  |  |  |  | REI/Layton | NO | DH2200 |  |  |  |  |
| QTS-1013060 |  | DH 2200 / First Time Energization ATS/COD (1, 3, 5) | 1d | 2026-08-19 | 2026-08-19 | QTS-1013030, QTS-1080.3, QTS-1080.4, QTS-0660 |  |  |  |  | -74d | 2d | **GLOBAL - 5 Day Workweek w/ Basic Holidays | Commissioning |  |  | BAB |  | Electrical |  |  |  |  |  | REI/Layton | NO | DH2200 |  |  |  |  |
| QTS-1013070 |  | DH 2200 / First Time Energization ATS/COD (2, 4, 6) | 1d | 2026-08-19 | 2026-08-19 | QTS-1013040, QTS-1080.3, QTS-1080.4, QTS-0660 |  |  |  |  | -74d | 2d | **GLOBAL - 5 Day Workweek w/ Basic Holidays | Commissioning |  |  | BAB |  | Electrical |  |  |  |  |  | REI/Layton | NO | DH2200 |  |  |  |  |
| QTS-1013080 |  | DH 2200 / L2 Checklist RPP | 1d | 2026-08-19 | 2026-08-19 | QTS-1013000, QTS-1013010, QTS - 5020, QTS - 5480, QTS - 5710, QTS - 5020 FF, QTS - 5040, QTS - 5480 FF, QTS - 5500, QTS - 5710 FF, QTS - 5730, QTS-0660 |  |  |  |  | -76d | 0d | **GLOBAL - 5 Day Workweek w/ Basic Holidays | Commissioning |  |  | BAB |  | Commissioning |  |  |  |  |  | REI/Layton | NO | DH2200 |  |  |  |  |
| QTS-1013530 |  | DH 2200 / Startup CHLR | 3d | 2026-08-19 | 2026-08-21 | QTS-1012990, QTS-0660 |  |  |  |  | -87d | 3d | **GLOBAL - 5 Day Workweek w/ Basic Holidays | Commissioning |  |  | BAB |  | Mechanical |  |  |  |  |  | QTS Vendor |  | DH2200 |  |  |  |  |
| QTS-50201 |  | DH 2200 / Zone 2 / Rooftop // Pre Energization Inspection DOAS | 1d | 2026-08-19 | 2026-08-19 | QTS-100690, QTS-50191, QTS-0660 |  |  |  |  | -86d | 0d | **GLOBAL - 5 Day Workweek w/ Basic Holidays | Commissioning | FOH |  | BAB |  | Electrical | Construction |  | DC | Roof |  | REI | NO |  |  | 01ADMIN | Phase 1 | Construction |
| QTS-1013090 |  | DH 2200 / Pre Energization Inspection RPP | 1d | 2026-08-20 | 2026-08-20 | QTS-1013080, QTS-0660 |  |  |  |  | -76d | 0d | **GLOBAL - 5 Day Workweek w/ Basic Holidays | Commissioning |  |  | BAB |  | Commissioning |  |  |  |  |  | REI/Layton | NO | DH2200 |  |  |  |  |
| QTS-1013520 |  | DH 2200 / Startup CRAHs | 5d | 2026-08-20 | 2026-08-26 | QTS-1012940, QTS-0660 |  |  |  |  | 4d | 0d | **GLOBAL - 5 Day Workweek w/ Basic Holidays | Commissioning |  |  | BAB |  | Mechanical |  |  |  |  |  | QTS Vendor |  | DH2200 |  |  |  |  |
| QTS-1014150 |  | DH 2200 / GEN Burns | 4d | 2026-08-20 | 2026-08-25 | QTS-1014140, QTS-0660 |  |  |  |  | -75d | 11d | **GLOBAL - 5 Day Workweek w/ Basic Holidays | Commissioning |  |  | BAB |  | Mechanical |  |  |  |  |  | REI/Layton |  |  |  |  |  |  |
| QTS-1014390 |  | DH 2200 / Zone 2 / Rooftop // First Time Energization DOAS | 1d | 2026-08-20 | 2026-08-20 | QTS-50201, QTS-1012880 |  |  |  |  | -86d | 0d | **GLOBAL - 5 Day Workweek w/ Basic Holidays | Commissioning | FOH |  | BAB |  | Electrical | Construction |  | DC | Roof |  | REI | NO |  |  | 01ADMIN | Phase 1 | Construction |
| QTS-1013100 |  | DH 2200 / First Time Energization RPP | 1d | 2026-08-21 | 2026-08-21 | QTS-1013090, QTS-0660 |  |  |  |  | -76d | 0d | **GLOBAL - 5 Day Workweek w/ Basic Holidays | Commissioning |  |  | BAB |  | Electrical |  |  |  |  |  | REI/Layton |  | DH2200 |  |  |  |  |
| QTS-1014400 |  | DH 2200 / Zone 2 / Rooftop // Startup DOAS | 1d | 2026-08-21 | 2026-08-21 | QTS-1014390 |  |  |  |  | -58d | 29d | **GLOBAL - 5 Day Workweek w/ Basic Holidays | Commissioning | FOH |  | BAB |  | Electrical | Construction |  | DC | Roof |  | REI |  |  |  | 01ADMIN | Phase 1 | Construction |
| QTS-1012580 |  | DH 2200 / Pre Energization Inspection CDU | 1d | 2026-08-26 | 2026-08-26 | QTS-1012570 |  |  |  |  | -63d | 0d | **GLOBAL - 5 Day Workweek w/ Basic Holidays | Commissioning |  |  | BAB |  | Commissioning |  |  |  |  |  | REI/Layton | NO | DH2200 |  |  |  |  |
| QTS-1012590 |  | DH 2200 / First Time Energization CDU | 1d | 2026-08-27 | 2026-08-27 | QTS-1012580 |  |  |  |  | -63d | 0d | **GLOBAL - 5 Day Workweek w/ Basic Holidays | Commissioning |  |  | BAB |  | Electrical |  |  |  |  |  | REI/Layton | NO | DH2200 |  |  |  |  |
| QTS-1013510 |  | TFO Scope / DH 2200 / Startup CDU | 5d | 2026-08-28 | 2026-09-03 | QTS-1012590 |  |  |  |  | -55d | 7d | **GLOBAL - 5 Day Workweek w/ Basic Holidays | Commissioning |  | TFO CONST | TFO |  | Electrical |  |  |  |  |  | QTS Vendor |  | DH2200 |  |  |  |  |
| QTS-2740 |  | DH 2200 / Data Hall 2200 / Water Test and Balance | 5d | 2026-09-01 | 2026-09-05 | QTS-2620, QTS-2840, QTS-1013460 SS+5d |  |  |  |  | -101d | 0d | **GLOBAL - 6 Day Workweek w/ Basic Holidays | Commissioning |  |  | BAB |  | Mechanical |  |  |  |  |  | Able |  | DH2200 |  |  |  |  |
| QTS-2750 |  | DH 2200 / Air Test and Balance | 5d | 2026-09-01 | 2026-09-05 | QTS-2620, QTS-2840, QTS-1013460, QTS-1012940, QTS-1012990, QTS-1013530, QTS-1014390 |  |  |  |  | -112d | 0d | **GLOBAL - 6 Day Workweek w/ Basic Holidays | Commissioning |  |  | BAB |  | Mechanical |  |  |  |  |  | Able |  | DH2200 |  |  |  |  |
| QTS-2760 |  | DH 2200 / Data Hall 2200 / L4 Electrical | 18d | 2026-09-08 | 2026-09-28 | QTS-2740, QTS-2750, QTS-7190, QTS-44481, QTS-44511, QTS-2060 |  |  |  |  | -101d | 3d | **GLOBAL - 6 Day Workweek w/ Basic Holidays | Commissioning |  |  | BAB |  | Electrical |  |  |  |  |  | ERS |  | DH2200 |  |  |  |  |
| QTS-2770 |  | DH 2200 / Data Hall 2200 / L4 Mechanical | 18d | 2026-09-11 | 2026-10-01 | QTS-2720, QTS-2750, QTS-2740, QTS-2630, QTS-1014150 |  |  |  |  | -104d | 0d | **GLOBAL - 6 Day Workweek w/ Basic Holidays | Commissioning |  |  | BAB |  | Mechanical |  |  |  |  |  | ERS |  | DH2200 |  |  |  |  |
| QTS-2780 |  | DH 2200 / Data Hall 2200 / Air Cooled RVT/ IST | 2d | 2026-10-02 | 2026-10-03 | QTS-2760, QTS-2770, QTS - 5040, QTS - 5500, QTS - 5730 |  |  |  |  | -122d | 1d | **GLOBAL - 7 Day Workweek w/ Basic Holidays | Commissioning |  |  | BAB |  | Mechanical |  |  |  |  |  | ERS |  | DH2200 |  |  |  |  |
| QTS-2790 |  | DH 2200 / Data Hall 2200 / L4 TFO Liquid Cooled | 12d | 2026-10-05 | 2026-10-17 | QTS-5910, QTS-2650 FF, QTS-2510, QTS-2780, QTS - 5720, QTS - 5760, QTS - 5760 FF, QTS-2800, QTS - 25871, QTS-2730 |  |  |  |  | -91d | 0d | **GLOBAL - 6 Day Workweek w/ Basic Holidays | Commissioning |  | TFO CONST | TFO | NICK | Mechanical |  |  |  |  |  | ERS |  | DH2200 |  |  |  |  |

Notes:
- QTS-1013460: Scheduler Notes: 7/24/26 - Impacting Prime Manpower by UMAS reprogramming CRAH's in / DH1100 / Notes: 7/24/26 - Impacting Prime Manpower by UMAS reprogramming CRAH's in DH1100/started
- QTS-1012850: Notes: 8/5 done
- QTS-1012900: Notes: 8/6 done
- QTS-50201: Scheduler Notes: 8/14/26-Delayed due to PEIs cancelled from ERS support / shifted to 1100 and removed from all other activities

| ID | WBS | Activity | Duration | Start | Finish | Predecessors | Complete | Remaining | Planned start | Planned finish | Total float | Free float | Calendar | Allucent CSI Group | Project Section | Layton Discipline | Baseline | Phase-1-1 | Project Section-1 | Location | Layton Super | Contract | Level | Phase-1 | Trade Partner |
| --- | --- | --- | --- | --- | --- | --- | --- | --- | --- | --- | --- | --- | --- | --- | --- | --- | --- | --- | --- | --- | --- | --- | --- | --- | --- |
|  | 1 | **2200 Path to Power (FTE)** |  |  |  |  |  |  |  |  |  |  |  |  |  |  |  |  |  |  |  |  |  |  |  |
|  | 3 | **Fragnet - DH 1100 Commissioning Impacts** |  |  |  |  |  |  |  |  |  |  |  |  |  |  |  |  |  |  |  |  |  |  |  |
|  | 2 | **DH 2200 Commissioning Existing Scope** |  |  |  |  |  |  |  |  |  |  |  |  |  |  |  |  |  |  |  |  |  |  |  |
|  | 9 | **Data Hall 1300 (9MW)** |  | 2025-09-08 | 2026-11-05 |  |  |  |  |  |  |  |  |  |  |  |  |  |  |  |  |  |  |  |  |
| QTS-2211 |  | DH 1300 // Prime & Paint Exposed Structure | 4d | 2025-10-21 A | 2025-10-24 A | QTS-1040, QTS-23261, QTS-23741, QTS-23381 | 100% |  |  |  |  |  |  | 01ADMIN | Construction | Build Out | IGMP | Phase 3 | Construction | DH1300 | Doug Hayes | BAB |  |  |  |
| QTS-4701 |  | DH 1300 // Install Fire Sprinkler | 8d | 2025-10-27 A | 2026-01-21 A | QTS-23741, QTS-2211 | 100% |  | 2025-10-27 | 2025-11-04 |  |  | QTS-PHX3 DC1 - 6 day w/ Holidays | 01ADMIN | Construction | Mechanical | IGMP | Phase 3 | Construction | DH1300 |  | BAB |  |  |  |
| QTS-6971 |  | DH 1300 // Install Fire Caulking | 3d | 2025-10-28 A | 2025-10-28 A | QTS-99490, QTS-4701 SS | 100% |  | 2025-10-28 | 2025-10-30 |  |  |  | 01ADMIN | Construction | Build Out | IGMP | Phase 3 | Construction | DH1300 | Doug Hayes | BAB |  |  |  |
| QTS-6961 |  | DH 1300 // Establish Control & Layout Walls | 5d | 2025-12-01 A | 2025-12-05 A | QTS-6971, QTS-2211 | 100% |  |  |  |  |  |  | 01ADMIN | Construction | Build Out | IGMP | Phase 3 | Construction | DH1300 |  | BAB |  |  |  |
| QTS-8651 |  | DH 1300 // Perimeter Insulation | 7d | 2025-12-10 A | 2026-01-15 A | QTS-20831, QTS-6971 | 100% |  | 2025-12-10 | 2025-12-17 |  |  | QTS-PHX3 DC1 - 6 day w/ Holidays | 01ADMIN | Construction | Build Out | IGMP | Phase 3 | Construction | DH1300 |  | BAB |  |  |  |
|  | 8 | **Zone 3 Corridor 1012** |  | 2025-11-18 | 2026-11-03 |  |  |  |  |  |  |  |  |  |  |  |  |  |  |  |  |  |  |  |  |
| QTS-20831 |  | Zone 3 Gridlines 30-41 Corridor 1012 // Frame Exterior Wall | 2d | 2025-11-18 A | 2025-11-19 A | QTS-6961, QTS-23741, QTS-23261, QTS-20381 | 100% |  |  |  |  |  |  | 01ADMIN | Construction | Build Out | IGMP |  |  |  |  | BAB | Level 1 |  |  |
| QTS-1000950 |  | Zone 3 Gridlines 30-41 Corridor 1012 // Top Out Exterior Walls | 2d | 2025-12-10 A | 2026-01-14 A | QTS-20831 | 100% |  | 2025-12-10 | 2025-12-11 |  |  |  | 01ADMIN | Construction | Build Out | IGMP |  |  |  |  | BAB | Level 1 |  |  |
| QTS-23211 |  | Zone 3 Gridlines 30-41 Corridor 1012 // Rough Fire Sprinklers | 5d | 2025-12-22 A | 2025-12-27 A | QTS-20831 | 100% |  |  |  |  |  | QTS-PHX3 DC1 - 6 day w/ Holidays |  | Construction | Mechanical | IGMP |  |  |  |  | BAB | Level 1 |  |  |
| QTS-1000940 |  | Zone 3 Gridlines 30-41 Corridor 1012 // Frame Corridor Wall | 4d | 2026-01-15 A | 2026-01-19 A | QTS-20831 | 100% |  | 2026-01-15 | 2026-01-20 |  |  | QTS-PHX3 DC1 - 6 day w/ Holidays | 01ADMIN | Construction | Build Out | IGMP |  |  |  |  | BAB | Level 1 |  |  |
| QTS-1000960 |  | Zone 3 Gridlines 30-41 Corridor 1012 // Tape & Finish Top Out Exterior Wall | 4d | 2026-01-15 A | 2026-01-17 A | QTS-1000950 | 100% |  | 2026-01-14 | 2026-01-17 |  |  | QTS-PHX3 DC1 - 6 day w/ Holidays | 01ADMIN | Construction | Build Out | IGMP |  |  |  |  | BAB | Level 1 |  |  |
| QTS-1000980 |  | Zone 3 Gridlines 30-41 Corridor 1012 // Flash Up Wall to Structural Steel Exterior Wall | 1d | 2026-01-20 A | 2026-01-20 A | QTS-1000960 | 100% |  |  |  |  |  | QTS-PHX3 DC1 - 6 day w/ Holidays | 01ADMIN | Construction | Build Out | IGMP |  |  |  |  | BAB | Level 1 |  |  |
| QTS-21271 |  | Zone 3 Gridlines 30-41 Corridor 1012 // In Wall Rough Electrical - Exterior | 3d | 2026-01-28 A | 2026-01-30 A | QTS-39041, QTS-20831 | 100% |  |  |  |  |  | QTS-PHX3 DC1 - 6 day w/ Holidays | 01ADMIN | Construction | Electrical | IGMP |  |  |  |  | BAB | Level 1 |  |  |
| QTS-1003300 |  | Zone 3 Gridlines 30-41 Corridor 1012 // Insulate Corridor Wall - Top Out | 2d | 2026-01-30 A | 2026-02-07 A | QTS-1000940 | 100% |  | 2026-01-30 | 2026-01-31 |  |  | QTS-PHX3 DC1 - 6 day w/ Holidays | 01ADMIN | Construction | Build Out | IGMP |  |  |  |  | BAB | Level 1 |  |  |
| QTS-1003290 |  | Zone 3 Gridlines 30-41 Corridor 1012 // In Wall Rough Electrical - Corridor | 3d | 2026-02-02 A | 2026-02-10 A | QTS-1000940 | 100% |  | 2026-02-02 | 2026-02-04 |  |  | QTS-PHX3 DC1 - 6 day w/ Holidays | 01ADMIN | Construction | Electrical | IGMP |  |  |  |  | BAB | Level 1 |  |  |
| QTS-21831 |  | Zone 3 Gridlines 30-41 Corridor 1012 // One Side Corridor Wall - Corridor Side | 4d | 2026-02-05 A | 2026-02-10 A | QTS-1000940 | 100% |  | 2026-02-11 | 2026-02-14 |  |  | QTS-PHX3 DC1 - 6 day w/ Holidays |  | Construction | Build Out | IGMP |  |  |  |  | BAB | Level 1 |  |  |
| QTS-1000970 |  | Zone 3 Gridlines 30-41 Corridor 1012 // Prime & Paint Exterior Walls - Top Out | 2d | 2026-02-07 A | 2026-02-09 A | QTS-1000960 | 100% |  |  |  |  |  | QTS-PHX3 DC1 - 6 day w/ Holidays | 01ADMIN | Construction | Build Out | IGMP |  |  |  |  | BAB | Level 1 |  |  |
| QTS-21681 |  | Zone 3 Gridlines 30-41 Corridor 1012 // In Wall Inspections - Exterior | 1d | 2026-02-11 A | 2026-02-11 A | QTS-21271 | 100% |  |  |  |  |  | QTS-PHX3 DC1 - 6 day w/ Holidays | 01ADMIN | Construction | Electrical | IGMP |  |  |  |  | BAB | Level 1 |  |  |
| QTS-21721 |  | Zone 3 Gridlines 30-41 Corridor 1012 // Insulate Corridor Wall - Remaining | 2d | 2026-02-12 A | 2026-02-13 A | QTS-1003290 | 100% |  |  |  |  |  | QTS-PHX3 DC1 - 6 day w/ Holidays | 01ADMIN | Construction | Build Out | IGMP |  |  |  |  | BAB | Level 1 |  |  |
| QTS-1003220 |  | Zone 3 Gridlines 30-41 Corridor 1012 // One Side Corridor Wall - EG Side | 3d | 2026-02-14 A | 2026-02-17 A | QTS-1003300 | 100% |  |  |  |  |  | QTS-PHX3 DC1 - 6 day w/ Holidays | 01ADMIN | Construction | Build Out | IGMP |  |  |  |  | BAB | Level 1 |  |  |
| QTS-1003270 |  | Zone 3 Gridlines 30-41 Corridor 1012 // Hang Drywall Corridor Wall - Corridor Side - Remaining | 3d | 2026-02-18 A | 2026-02-23 A | QTS-21721 | 100% |  | 2026-02-18 | 2026-02-20 |  |  | QTS-PHX3 DC1 - 6 day w/ Holidays | 01ADMIN | Construction | Build Out | IGMP |  |  |  |  | BAB | Level 1 |  |  |
| QTS-22281 |  | Zone 3 Gridlines 30-41 Corridor 1012 // Tape & Finish Drywall Corridor Wall - Corridor Side - Top Out | 4d | 2026-02-19 A | 2026-03-04 A | QTS-21831 | 100% |  | 2026-02-19 | 2026-02-23 |  |  | QTS-PHX3 DC1 - 6 day w/ Holidays |  | Construction | Build Out | IGMP |  |  |  |  | BAB | Level 1 |  |  |
| QTS-1003240 |  | Zone 3 Gridlines 30-41 Corridor 1012 // Tape & Finish Corridor Wall - EG Side | 4d | 2026-02-26 A | 2026-03-04 A | QTS-1003220 | 100% |  | 2026-02-26 | 2026-03-02 |  |  | QTS-PHX3 DC1 - 6 day w/ Holidays | 01ADMIN | Construction | Build Out | IGMP |  |  |  |  | BAB | Level 1 |  |  |
| QTS-1003250 |  | Zone 3 Gridlines 30-41 Corridor 1012 // Tape & Finish Corridor Wall - Corridor Side - Remaining | 4d | 2026-02-26 A | 2026-03-07 A | QTS-1003270 | 100% |  | 2026-02-26 | 2026-03-02 |  |  | QTS-PHX3 DC1 - 6 day w/ Holidays | 01ADMIN | Construction | Build Out | IGMP |  |  |  |  | BAB | Level 1 |  |  |
| QTS-1003320 |  | Zone 3 Gridlines 30-41 Corridor 1012 // Prime & Paint Corridor Wall - EG Side | 2d | 2026-03-05 A | 2026-03-06 A | QTS-1003240 | 100% |  |  |  |  |  | QTS-PHX3 DC1 - 6 day w/ Holidays |  | Construction | Build Out | IGMP |  |  |  |  | BAB | Level 1 |  |  |
| QTS-22821 |  | Zone 3 Gridlines 30-41 Corridor 1012 // Prime & Paint Corridor Wall - Corridor Side - Top Out | 2d | 2026-03-05 A | 2026-03-06 A | QTS-22281 | 100% |  |  |  |  |  | QTS-PHX3 DC1 - 6 day w/ Holidays |  | Construction | Build Out | IGMP |  |  |  |  | BAB | Level 1 |  |  |
| QTS-1003350 |  | Zone 3 Gridlines 30-41 Corridor 1012 // Prime & Paint Corridor Wall - Corridor Side - Remaining | 2d | 2026-03-09 A | 2026-03-12 A | QTS-1003250 | 100% |  | 2026-03-09 | 2026-03-10 |  |  | QTS-PHX3 DC1 - 6 day w/ Holidays |  | Construction | Build Out | IGMP |  |  |  |  | BAB | Level 1 |  |  |
| QTS-1008960 |  | Zone 3 Gridlines 30-41 Corridor 1012 // Rough In Wall Electrical for Exit Lights | 3d | 2026-03-25 A | 2026-06-25 A | QTS-1000970 | 100% |  | 2026-04-01 | 2026-04-03 |  |  | QTS-PHX3 DC1 - 6 day w/ Holidays |  | Construction | Electrical | IGMP |  |  |  | Oscar Armenta | BAB | Level 1 |  |  |
| QTS-23401 |  | Zone 3 Gridlines 30-41 Corridor 1012 // Rough Overhead Conduit | 5d | 2026-03-25 A | 2026-06-25 A | QTS-23211 SS+3d, QTS-1000970, QTS-22821 | 100% |  | 2026-04-01 | 2026-04-06 |  |  | QTS-PHX3 DC1 - 6 day w/ Holidays |  | Construction | Electrical | IGMP |  |  | DH1300 | Oscar Armenta | BAB | Level 1 |  |  |
| QTS-23651 |  | Zone 3 Gridlines 30-41 Corridor 1012 // Rough Overhead Ductwork Gridline 30-35 | 5d | 2026-03-30 A | 2026-04-17 A | QTS-23401 SS+3d, QTS-22821, QTS-1000980, QTS-1000970 | 100% |  | 2026-04-01 | 2026-04-06 |  |  | QTS-PHX3 DC1 - 6 day w/ Holidays |  | Construction | Mechanical | IGMP |  |  |  |  | BAB | Level 1 |  |  |
| QTS-1008560 |  | Zone 3 Gridlines 30-41 Corridor 1012 // Install Raceway From Pod to Dog House - Zone 3 First Floor | 14d | 2026-04-08 A | 2026-04-17 A | QTS-23651 SS | 100% |  | 2026-04-08 | 2026-04-23 |  |  | QTS-PHX3 DC1 - 6 day w/ Holidays | 01ADMIN | Construction | Electrical | IGMP |  |  | DH1300 | Oscar Armenta | BAB | Roof | Phase 2 |  |
| QTS-43621 |  | Zone 3 Gridlines 30-41 Corridor 1012 // Rough Overhead Ductwork Gridline 35-41 | 5d | 2026-04-21 A | 2026-05-18 A | QTS-23651 | 100% |  | 2026-04-21 | 2026-04-25 |  |  | QTS-PHX3 DC1 - 6 day w/ Holidays |  | Construction | Mechanical | IGMP |  | Construction | DH1300 |  | BAB | Level 1 |  |  |
| QTS-1012350 |  | Zone 3 Gridlines 30-41 Corridor 1012 // Install Raceway From Pod to Dog House - Zone 3 Second Floor | 14d | 2026-05-04 A | 2026-06-15 A | QTS-23651 SS, QTS-1008560 | 100% |  | 2026-05-04 | 2026-05-19 |  |  | QTS-PHX3 DC1 - 6 day w/ Holidays | 01ADMIN | Construction | Electrical | IGMP |  |  | DH1300 | Oscar Armenta | BAB | Roof | Phase 2 |  |
| QTS-24761 |  | Zone 3 Gridlines 30-41 Corridor 1012 // Install Basket Tray | 4d | 2026-05-18 A | 2026-05-26 A | QTS-43621 | 100% |  | 2026-05-18 | 2026-05-21 |  |  | QTS-PHX3 DC1 - 6 day w/ Holidays |  | Construction | LV | IGMP |  |  | DH1300 |  | BAB | Level 1 |  |  |
| QTS-1003360 |  | Zone 3 Gridlines 30-41 Corridor 1012 // Hang Drywall Exterior Wall - Remaining | 3d | 2026-05-26 A | 2026-05-29 A | QTS-21681, QTS-1008960, QTS-23651, QTS-43621 | 100% |  | 2026-07-01 | 2026-07-06 |  |  | QTS-PHX3 DC1 - 6 day w/ Holidays | 01ADMIN | Construction | Build Out | IGMP |  |  | DH1300 | Ed Carter | BAB | Level 1 |  |  |
| QTS-1003370 |  | Zone 3 Gridlines 30-41 Corridor 1012 // Tape & Finish Exterior Wall - Remaining | 4d | 2026-06-01 A | 2026-06-04 A | QTS-1003360 | 100% |  | 2026-07-07 | 2026-07-10 |  |  | QTS-PHX3 DC1 - 6 day w/ Holidays | 01ADMIN | Construction | Build Out | IGMP |  |  | DH1300 | Ed Carter | BAB | Level 1 |  |  |
| QTS-1003330 |  | Zone 3 Gridlines 30-41 Corridor 1012 // Prime & Paint Exterior Walls - Remaining | 2d | 2026-06-24 A | 2026-06-26 A | QTS-1003370 | 100% |  | 2026-07-11 | 2026-07-13 |  |  | QTS-PHX3 DC1 - 6 day w/ Holidays | 01ADMIN | Construction | Build Out | IGMP |  |  | DH1300 | Ed Carter | BAB | Level 1 |  |  |
| QTS-24751 |  | Zone 3 Gridlines 30-41 Corridor 1012 // Install Fire Alarm Devices | 4d | 2026-06-24 A | 2026-06-27 A | QTS-43621 | 100% |  |  |  |  |  | QTS-PHX3 DC1 - 6 day w/ Holidays |  | Construction | Electrical | IGMP |  |  | DH1300 | Oscar Armenta | BAB | Level 1 |  |  |
| QTS-2940 |  | DH 1300 / Corridor 1012 / Install Alarm Devices | 2d | 2026-07-27 A | 2026-07-28 A | QTS-24751 | 100% |  | 2026-08-04 | 2026-08-05 |  |  | **GLOBAL - 6 Day Workweek w/ Basic Holidays |  |  | Electrical |  |  |  |  | Electrical | BAB |  |  | Nexus |
| QTS-3015 |  | DH 1300 / Corridor 1012 / Final Paint | 2d | 2026-08-01 A | 2026-08-03 A | QTS-1012350 | 100% |  | 2026-08-14 | 2026-08-15 |  |  | **GLOBAL - 6 Day Workweek w/ Basic Holidays |  |  | Build Out |  |  |  |  | Jason Hendley | BAB |  |  | PPC |
| QTS-2930 |  | DH 1300 / Corridor 1012 / Install Security Trim out | 2d | 2026-08-03 A | 2026-08-05 A | QTS-2940 | 100% |  | 2026-08-05 | 2026-08-06 |  |  | **GLOBAL - 6 Day Workweek w/ Basic Holidays |  |  | LV |  |  |  |  | Low Voltage | BAB |  |  | Securitas |
| QTS-2950 |  | DH 1300 / Corridor 1012 / Install Lighting | 4d | 2026-08-04 A | 2026-08-19 | QTS-2940 | 75% | 1d | 2026-08-05 | 2026-08-08 | -38d | 0d | **GLOBAL - 6 Day Workweek w/ Basic Holidays |  |  | Electrical |  |  |  |  | Electrical | BAB |  |  | REI |
| QTS-2960 |  | DH 1300 / Corridor 1012 / Install Electircal Trim | 2d | 2026-08-20 | 2026-08-21 | QTS-2950 |  |  |  |  | -38d | 0d | **GLOBAL - 6 Day Workweek w/ Basic Holidays |  |  | Electrical |  |  |  |  | Electrical | BAB |  |  | REI |
| QTS-2990 |  | DH 1300 / Corridor 1012 / Remove Temp Lighting / Power | 2d | 2026-08-20 | 2026-08-21 | QTS-2950 |  |  |  |  | -35d | 10d | **GLOBAL - 6 Day Workweek w/ Basic Holidays |  |  | Electrical |  |  |  |  | Electrical | BAB |  |  | REI |
| QTS-3000 |  | DH 1300 / Corridor 1012 / Hang Tape and Finish Drywall Patches | 3d | 2026-08-22 | 2026-08-25 | QTS-2960 |  |  |  |  | -38d | 7d | **GLOBAL - 6 Day Workweek w/ Basic Holidays |  |  | Build Out |  |  |  |  | Jason Hendley | BAB |  |  | PCI |
| QTS-2970 |  | DH 1300 / Corridor 1012 / Install Fire Extinguisher Cabinets | 2d | 2026-08-28 | 2026-08-29 | QTS-3015, QTS-2250 |  |  |  |  | -57d | 0d | **GLOBAL - 6 Day Workweek w/ Basic Holidays |  |  | Build Out |  |  |  |  | Ed Carter | BAB |  |  | ISEC |
| QTS-3020 |  | DH 1300 / Corridor 1012 / Burnish Concrete Floors | 1d | 2026-08-31 | 2026-08-31 | QTS-2970 |  |  |  |  | -45d | 0d | **GLOBAL - 6 Day Workweek w/ Basic Holidays |  |  | Build Out |  |  |  |  | Ben Ribble | BAB |  |  | Bldg Solutions |
| QTS-3030 |  | DH 1300 / Corridor 1012 /Install Rubber Base | 2d | 2026-09-01 | 2026-09-02 | QTS-3020 |  |  |  |  | -45d | 0d | **GLOBAL - 6 Day Workweek w/ Basic Holidays |  |  | Build Out |  |  |  |  | Ben Ribble | BAB |  |  | Wholesale Flooring |
| QTS-3040 |  | DH 1300 / Corridor 1012 / Clean | 1d | 2026-09-03 | 2026-09-03 | QTS-2990, QTS-3030, QTS-3000 |  |  |  |  | -45d | 41d | **GLOBAL - 6 Day Workweek w/ Basic Holidays |  |  | Build Out |  |  |  |  | Ed Carter | BAB |  |  | AGDC |
| QTS-2980 |  | DH 1300 / Corridor 1012 / Install Fire Caulking @ POD Pentrations | 2d | 2026-11-02 | 2026-11-03 | QTS-2930, QTS-3875 |  |  |  |  | -65d | 2d | **GLOBAL - 6 Day Workweek w/ Basic Holidays |  |  | Build Out |  |  |  |  | Ed Carter | BAB |  |  | Riteway |

Notes:
- QTS-2211: allucent_notes_20251027_224008: Luis Vea on 2025-10-21T15:13:55.825Z: completed / Zack Goertz on 2025-10-21T17:24:18.056Z: Waiting for Bel-aire to complete back to backs / Zack Goertz on 2025-10-27T14:01:43.540Z: Remaining section is awaiting bel-Aire to finish installing back to backs in south mechanical gallery / allucent_notes_20251021_145627: Luis Vea on 2025-10-21T15:13:55.825Z: completed / Zack Goertz on 2025-10-21T17:24:18.056Z: Waiting for Bel-aire to complete back to backs / allucent_notes: 2025-10-21T15:13:55.825Z - User: Luis Vea - Date Added: 2025-10-21T15:13:55.825Z - Note: completed / 2025-10-21T17:24:18.056Z - User: Zack Goertz - Date Added: 2025-10-21T17:24:18.056Z - Note: Waiting for Bel-aire to complete back to backs / 2025-10-27
- QTS-4701: allucent_notes_20251216_165335: Zack Goertz on 2025-11-11T18:31:06.842Z: Delayed by AF steel / Jason Johnston on 2025-11-11 16:11: SWO / Zack Goertz on 2025-11-17 13:11: Zone 3 is last priority. Framing has barely begun on level 2. Plus, a stop work has been issued. / David Wiltberger on 2025-12-01 09:51: Delayed due to stop work / allucent_notes_20251209_203830: Zack Goertz on 2025-11-11T18:31:06.842Z: Delayed by AF steel / Jason Johnston on 2025-11-11 16:11: SWO / Zack Goertz on 2025-11-17 13:11: Zone 3 is last priority. Framing has barely begun on level 2. Plus, a stop work has been issued. / David Wiltberger on 2025-12-01 09:51: Delayed due to stop work / allucent_notes_20251202_153722: Zack Goertz on 2025-11-11T18:31:06.842Z: Delayed by AF steel / Jason Johnston on 2025-11-11 16:11: SWO / Zack Goertz on 2025-11-17 13:11: Zone 3 is last priority. Framing has barely begun on level 2. Plus, a stop work has been issued. / David Wiltberger on 2025-12-01 09:51: Delayed due to stop work / allucent_notes_20251118_192630: Zack Goertz on 2025-11-11T18:31:06.842Z: Delayed by AF steel / Jason Johnston on 2025-11-11 16:11: SWO / Zack Goertz on 2025-11-17 13:11: Zone 3 is last priority. Framing has barely begun on level 2. Plus, a stop work has been issued. / allucent_notes_20251111_182405: Zack Goertz on 2025-11-11T18:31:06.842Z: Delayed by AF steel / Jason Johnston on 2025-11-11 16:11: SWO / allucent_notes_20251230_164549: Zack Goertz on 2025-11-11T18:31:06.842Z: Delayed by AF steel / Jason Johnston on 2025-11-11 16:11: SWO / Zack Goertz on 2025-11-17 13:11: Zone 3 is last priority. Framing has barely begun on level 2. Plus, a stop work has been issued. / David Wiltberger on 2025-12-01 09:51: Delayed due to stop work / David Wiltberger on 2025-12-30 16:24: no update / allucent_notes: 2025-11-11T18:31:06.842Z - User: Zack Goertz - Date Added: 2025-11-11T18:31:06.842Z - Note: Delayed by AF steel / 2025-11-11 16:11 - User: Jason Johnston - Date Added: 2025-11-11 16:11 - Note: SWO / 2025-11-17 13:11 - User: Zack Goertz - Date Added: 202
- QTS-6971: allucent_notes_20251028_163138: Jason Johnston on 2025-10-28 16:10: Done early. / allucent_notes: 2025-10-28 16:10 - User: Jason Johnston - Date Added: 2025-10-28 16:10 - Note: Done early.
- QTS-6961: allucent_notes_20251209_203830: Zack Goertz on 2025-11-03T16:48:52.656Z: Zone 3 is not the priority. Zone 2 is next and is falling behind waiting for Bel-aire to finish chiller mains and REI rough in / Jason Johnston on 2025-11-04 16:11: Update needed / Zack Goertz on 2025-11-11T18:31:44.087Z: ZOne 3 level 1 is not priority, plus, AF steel is doing their O.H. work / Jason Johnston on 2025-11-11 16:11: no updates / Zack Goertz on 2025-11-17 13:11: Zone 3 is last priority. Framing has barely begun on level 2. Plus, a stop work has been issued. / allucent_notes_20251202_153722: Zack Goertz on 2025-11-03T16:48:52.656Z: Zone 3 is not the priority. Zone 2 is next and is falling behind waiting for Bel-aire to finish chiller mains and REI rough in / Jason Johnston on 2025-11-04 16:11: Update needed / Zack Goertz on 2025-11-11T18:31:44.087Z: ZOne 3 level 1 is not priority, plus, AF steel is doing their O.H. work / Jason Johnston on 2025-11-11 16:11: no updates / Zack Goertz on 2025-11-17 13:11: Zone 3 is last priority. Framing has barely begun on level 2. Plus, a stop work has been issued. / allucent_notes_20251118_192630: Zack Goertz on 2025-11-03T16:48:52.656Z: Zone 3 is not the priority. Zone 2 is next and is falling behind waiting for Bel-aire to finish chiller mains and REI rough in / Jason Johnston on 2025-11-04 16:11: Update needed / Zack Goertz on 2025-11-11T18:31:44.087Z: ZOne 3 level 1 is not priority, plus, AF steel is doing their O.H. work / Jason Johnston on 2025-11-11 16:11: no updates / Zack Goertz on 2025-11-17 13:11: Zone 3 is last priority. Framing has barely begun on level 2. Plus, a stop work has been issued. / allucent_notes_20251111_182405: Zack Goertz on 2025-11-03T16:48:52.656Z: Zone 3 is not the priority. Zone 2 is next and is falling behind waiting for Bel-aire to finish chiller mains and REI rough in / Jason Johnston on 2025-11-04 16:11: Update needed / Zack Goertz on 2025-11-11T18:31:44.087Z: ZOne 3 level 1 is not priority, plus, AF steel is doing their O.H. work / Jason Johnston on 2025-11-11 16:11: no updates / allucent_notes_20251104_160200: Zack Goertz on 2025-11-03T16:48:52.656Z: Zone 3 is not the priority. Zone 2 is next and is falling behind waiting for Bel-aire to finish chiller mains and REI rough in / Jason Johnston on 2025-11-04 16:11: Update needed / allucent_notes: 2025-11-03T16:48:52.656Z - User: Zack Goertz - Date Added: 2025-11-03T16:48:52.656Z - Note: Zone 3 is not the priority. Zone 2 is next and is falling behind waiting for Bel-aire to finish chiller mains and REI rough in / 2025-11-04 16:11 - User: Jason Jo
- QTS-8651: allucent_notes_20251230_164549: David Wiltberger on 2025-12-30 16:24: no update / allucent_notes: 2025-12-30 16:24 - User: David Wiltberger - Date Added: 2025-12-30 16:24 - Note: no update
- QTS-20831: allucent_notes_20251209_203830: Zack Goertz on 2025-12-09 10:53: Zone 2 is a priority / allucent_notes: 2025-12-09 10:53 - User: Zack Goertz - Date Added: 2025-12-09 10:53 - Note: Zone 2 is a priority
- QTS-1000940: allucent_notes_20251216_165335: Jason Johnston on 2025-12-16 07:48: man power reallocated to BOH. / allucent_notes_20251209_203830: Zack Goertz on 2025-12-09 10:53: Zone 2 is a priority / allucent_notes_20251230_164549: Jason Johnston on 2025-12-16 07:48: man power reallocated to BOH. / Jason Johnston on 2025-12-30 16:39: No update / allucent_notes: 2025-12-16 07:48 - User: Jason Johnston - Date Added: 2025-12-16 07:48 - Note: man power reallocated to BOH. / 2025-12-30 16:39 - User: Jason Johnston - Date Added: 2025-12-30 16:39 - Note: No update
- QTS-1000960: allucent_notes_20251216_165335: Jason Johnston on 2025-12-16 07:47: man power reallocated to BOH. / allucent_notes_20251230_164549: Jason Johnston on 2025-12-16 07:47: man power reallocated to BOH. / Jason Johnston on 2025-12-30 16:40: No update / allucent_notes: 2025-12-16 07:47 - User: Jason Johnston - Date Added: 2025-12-16 07:47 - Note: man power reallocated to BOH. / 2025-12-30 16:40 - User: Jason Johnston - Date Added: 2025-12-30 16:40 - Note: No update
- QTS-1003220: allucent_notes_20251216_165335: Jason Johnston on 2025-12-16 07:48: man power reallocated to BOH. / allucent_notes_20251209_203830: Zack Goertz on 2025-12-09 10:53: Zone 2 is a priority / allucent_notes_20251230_164549: Jason Johnston on 2025-12-16 07:48: man power reallocated to BOH. / Jason Johnston on 2025-12-30 16:39: No update / allucent_notes: 2025-12-16 07:48 - User: Jason Johnston - Date Added: 2025-12-16 07:48 - Note: man power reallocated to BOH. / 2025-12-30 16:39 - User: Jason Johnston - Date Added: 2025-12-30 16:39 - Note: No update
- QTS-1003270: allucent_notes_20251216_165335: Jason Johnston on 2025-12-16 07:48: man power reallocated to BOH. / allucent_notes_20251209_203830: Zack Goertz on 2025-12-09 10:53: Zone 2 is a priority / allucent_notes_20251230_164549: Jason Johnston on 2025-12-16 07:48: man power reallocated to BOH. / Jason Johnston on 2025-12-30 16:39: No update / allucent_notes: 2025-12-16 07:48 - User: Jason Johnston - Date Added: 2025-12-16 07:48 - Note: man power reallocated to BOH. / 2025-12-30 16:39 - User: Jason Johnston - Date Added: 2025-12-30 16:39 - Note: No update
- QTS-1003240: allucent_notes_20251216_165335: Jason Johnston on 2025-12-16 07:48: man power reallocated to BOH. / allucent_notes_20251209_203830: Zack Goertz on 2025-12-09 10:53: Zone 2 is a priority / allucent_notes_20251230_164549: Jason Johnston on 2025-12-16 07:48: man power reallocated to BOH. / Jason Johnston on 2025-12-30 16:39: No update / allucent_notes: 2025-12-16 07:48 - User: Jason Johnston - Date Added: 2025-12-16 07:48 - Note: man power reallocated to BOH. / 2025-12-30 16:39 - User: Jason Johnston - Date Added: 2025-12-30 16:39 - Note: No update
- QTS-1003250: allucent_notes_20251216_165335: Jason Johnston on 2025-12-16 07:48: man power reallocated to BOH. / allucent_notes_20251209_203830: Zack Goertz on 2025-12-09 10:53: Zone 2 is a priority / allucent_notes_20251230_164549: Jason Johnston on 2025-12-16 07:48: man power reallocated to BOH. / Jason Johnston on 2025-12-30 16:39: No update / allucent_notes: 2025-12-16 07:48 - User: Jason Johnston - Date Added: 2025-12-16 07:48 - Note: man power reallocated to BOH. / 2025-12-30 16:39 - User: Jason Johnston - Date Added: 2025-12-30 16:39 - Note: No update
- QTS-1008560: allucent_notes_20251014_152335: David Wiltberger on 2025-08-19 09:08: changed pick order / David Wiltberger on 2025-09-02 10:09: Moving to accommodate roofing in Zone 1 / David Wiltberger on 2025-09-24 04:09: BAM not completed Potential Delay / David Wiltberger on 2025-09-30 12:09: BAM did not complete / David Wiltberger on 2025-10-14 10:10: set on recovery schedule / allucent_notes: David Wiltberger on 2025-08-19 09:08: changed pick order / allucent_notes: 2025-08-19 09:08 - User: David Wiltberger - Date Added: 2025-08-19 09:08 - Note: changed pick order / 2025-09-02 10:09 - User: David Wiltberger - Date Added: 2025-09-02 10:09 - Note: Moving to accommodate roofing in Zone 1 / 2025-09-24 04:09 - User: Dav
- QTS-43621: Scheduler Notes: 4/28: Waiting on Walls to be complete to continue. / Notes: 4/28: Waiting on Walls to be complete to continue.
- QTS-1012350: allucent_notes_20251014_152335: David Wiltberger on 2025-08-19 09:08: changed pick order / David Wiltberger on 2025-09-02 10:09: Moving to accommodate roofing in Zone 1 / David Wiltberger on 2025-09-24 04:09: BAM not completed Potential Delay / David Wiltberger on 2025-09-30 12:09: BAM did not complete / David Wiltberger on 2025-10-14 10:10: set on recovery schedule / allucent_notes: David Wiltberger on 2025-08-19 09:08: changed pick order / allucent_notes: 2025-08-19 09:08 - User: David Wiltberger - Date Added: 2025-08-19 09:08 - Note: changed pick order / 2025-09-02 10:09 - User: David Wiltberger - Date Added: 2025-09-02 10:09 - Note: Moving to accommodate roofing in Zone 1 / 2025-09-24 04:09 - User: Dav
- QTS-1003360: allucent_notes_20251216_165335: Jason Johnston on 2025-12-16 07:48: man power reallocated to BOH. / allucent_notes_20251209_203830: Zack Goertz on 2025-12-09 10:53: Zone 2 is a priority / allucent_notes_20251230_164549: Jason Johnston on 2025-12-16 07:48: man power reallocated to BOH. / Jason Johnston on 2025-12-30 16:39: No update / Scheduler Notes: Zack Goertz on 2025-12-09 10:53: Zone 2 is a priority / Jason Johnston on 2025-12-16 07:48: man power reallocated to BOH. / Jason Johnston on 2025-12-30 16:39: No update / 3/10: Waiting on inwall electric for exit lights / 3/24: Waiting on inwall electric for exit lights / Notes: 3/24: Waiting on inwall electric for exit lights 3/10: Waiting on inwall electric for exit lights / allucent_notes: 2025-12-16 07:48 - User: Jason Johnston - Date Added: 2025-12-16 07:48 - Note: man power reallocated to BOH. / 2025-12-30 16:39 - User: Jason Johnston - Date Added: 2025-12-30 16:39 - Note: No update
- QTS-1003370: allucent_notes_20251216_165335: Jason Johnston on 2025-12-16 07:47: man power reallocated to BOH. / allucent_notes_20251230_164549: Jason Johnston on 2025-12-16 07:47: man power reallocated to BOH. / Jason Johnston on 2025-12-30 16:40: No update / allucent_notes: 2025-12-16 07:47 - User: Jason Johnston - Date Added: 2025-12-16 07:47 - Note: man power reallocated to BOH. / 2025-12-30 16:40 - User: Jason Johnston - Date Added: 2025-12-30 16:40 - Note: No update
- QTS-2950: Notes: Manpower currently focused in data halls
- QTS-2960: Notes: Manpower
- QTS-2990: Notes: Need Perm Power

| ID | WBS | Activity | Duration | Start | Finish | Predecessors | Complete | Remaining | Planned start | Planned finish | Total float | Free float | Calendar | Allucent CSI Group | Project Section | Layton Discipline | Baseline | Phase-1-1 | Project Section-1 | Location | Contract | Level | Layton Super | If Not Started or Finished Why? | Trade Partner | TFO-CONST ONLY | NICK |
| --- | --- | --- | --- | --- | --- | --- | --- | --- | --- | --- | --- | --- | --- | --- | --- | --- | --- | --- | --- | --- | --- | --- | --- | --- | --- | --- | --- |
|  | 3 | **Data Hall 1300** |  | 2026-01-19 | 2026-10-31 |  |  |  |  |  |  |  |  |  |  |  |  |  |  |  |  |  |  |  |  |  |  |
| QTS-10681 |  | DH 1300 // Frame Data Hall / Corridor Wall 1012 (East) | 5d | 2026-01-19 A | 2026-01-20 A | QTS-6971, QTS-6961, QTS-10461 | 100% |  | 2026-01-20 | 2026-01-24 |  |  | QTS-PHX3 DC1 - 6 day w/ Holidays | 01ADMIN | Construction | Build Out | IGMP | Phase 3 | Construction | DH1300 | BAB |  |  |  |  |  |  |
| QTS-10691 |  | DH 1300 // Frame Data Hall / Corridor Wall 1015-1016 (West) | 5d | 2026-01-27 A | 2026-02-18 A | QTS-11691 SS, QTS-10731, QTS-6971 | 100% |  | 2026-01-27 | 2026-01-31 |  |  | QTS-PHX3 DC1 - 6 day w/ Holidays |  | Construction | Build Out | IGMP | Phase 3 | Construction | DH1300 | BAB |  |  |  |  |  |  |
| QTS-11351 |  | DH 1300 // Install Hollow Metal Frames (West) | 1d | 2026-02-10 A | 2026-02-10 A | QTS-10691 | 100% |  |  |  |  |  | QTS-PHX3 DC1 - 6 day w/ Holidays |  | Construction | Build Out | IGMP | Phase 3 | Construction | DH1300 | BAB |  |  |  |  |  |  |
| QTS-11361 |  | DH 1300 // Rough In-Wall Electrical (East) | 5d | 2026-02-12 A | 2026-03-25 A | QTS-10681 | 100% |  | 2026-02-12 | 2026-02-17 |  |  | QTS-PHX3 DC1 - 6 day w/ Holidays |  | Construction | Electrical | IGMP | Phase 3 | Construction | DH1300 | BAB |  |  |  |  |  |  |
| QTS-102530 |  | DH 1300 // One Side / Corridor Wall 1012 (East) - Data Hall Side | 3d | 2026-02-14 A | 2026-02-16 A | QTS-10681 | 100% |  | 2026-02-14 | 2026-02-17 |  |  | QTS-PHX3 DC1 - 6 day w/ Holidays | 01ADMIN | Construction | Build Out | IGMP |  | Construction | DH2100 | BAB | Level 2 |  |  |  |  |  |
| QTS-102550 |  | DH 1300 // Tape, & Finish Drywall (East) - Data Hall Side | 5d | 2026-03-04 A | 2026-03-09 A | QTS-102530 | 100% |  |  |  |  |  | QTS-PHX3 DC1 - 6 day w/ Holidays |  | Construction | Build Out | IGMP | Phase 2 | Construction | DH1300 | BAB |  |  |  |  |  |  |
| QTS-102560 |  | DH 1300 // Paint Walls (East) - Data Hall Side - Top Out | 2d | 2026-03-10 A | 2026-03-10 A | QTS-102550 | 100% |  | 2026-03-10 | 2026-03-11 |  |  | QTS-PHX3 DC1 - 6 day w/ Holidays |  | Construction | Build Out | IGMP | Phase 2 | Construction | DH1300 | BAB |  |  |  |  |  |  |
| QTS-12301 |  | DH 1300 // In Wall Inspection for Fan Wall | 1d | 2026-03-12 A | 2026-03-12 A | QTS-12061 | 100% |  | 2026-03-17 | 2026-03-17 |  |  | QTS-PHX3 DC1 - 6 day w/ Holidays |  | Construction | Electrical | IGMP | Phase 3 | Construction | DH1300 | BAB |  |  |  |  |  |  |
| QTS-12471 |  | DH 1300 // Hang Drywall (East) - Corridor Side | 2d | 2026-03-13 A | 2026-03-15 A | QTS-12301, QTS-11361 SS | 100% |  | 2026-03-13 | 2026-03-14 |  |  | QTS-PHX3 DC1 - 6 day w/ Holidays |  | Construction | Build Out | IGMP | Phase 3 | Construction | DH1300 | BAB |  |  |  |  |  |  |
| QTS-11341 |  | DH 1300 // Rough In-Wall Electrical (West) | 5d | 2026-03-25 A | 2026-03-26 A | QTS-39041, QTS-10691 | 100% |  | 2026-04-01 | 2026-04-06 |  |  | QTS-PHX3 DC1 - 6 day w/ Holidays |  | Construction | Electrical | IGMP | Phase 3 | Construction | DH1300 | BAB |  |  |  |  |  |  |
| QTS-12751 |  | DH 1300 // Tape, & Finish Drywall (East) - Corridor Side | 5d | 2026-03-25 A | 2026-03-30 A | QTS-12471 | 100% |  |  |  |  |  | QTS-PHX3 DC1 - 6 day w/ Holidays |  | Construction | Build Out | IGMP | Phase 3 | Construction | DH1300 | BAB |  |  |  |  |  |  |
| QTS-102310 |  | DH 1300 // Hang Drywall (West) - Corridor Side | 2d | 2026-03-31 A | 2026-03-31 A | QTS-11341 | 100% |  | 2026-03-31 | 2026-04-01 |  |  | QTS-PHX3 DC1 - 6 day w/ Holidays |  | Construction | Build Out | IGMP | Phase 2 | Construction | DH1300 | BAB |  |  |  |  |  |  |
| QTS-102570 |  | DH 1300 // Insulate & Vapor Barrier Data Hall / Corridor Wall 1012 (East) | 2d | 2026-03-31 A | 2026-03-31 A | QTS-102550, QTS-102530 | 100% |  | 2026-03-31 | 2026-04-01 |  |  | QTS-PHX3 DC1 - 6 day w/ Holidays | 01ADMIN | Construction | Build Out | IGMP |  | Construction | DH1300 | BAB | Level 2 |  |  |  |  |  |
| QTS-102580 |  | DH 1300 // Frame Data Hall / Corridor Wall 1012 (East) - 14x14 Leave Outs | 1d | 2026-04-09 A | 2026-04-09 A | QTS - 7550, QTS-15341, QTS-46751 | 100% |  |  |  |  |  | QTS-PHX3 DC1 - 6 day w/ Holidays | 01ADMIN | Construction | Build Out | IGMP |  | Construction | DH1300 | BAB | Level 2 |  |  |  |  |  |
| QTS-11371 |  | DH 1300 // Install Hollow Metal Frames (East) - 14x14 Leave Out | 1d | 2026-04-09 A | 2026-04-09 A | QTS-102580 FF, QTS-10681 | 100% |  |  |  |  |  | QTS-PHX3 DC1 - 6 day w/ Holidays |  | Construction | Build Out | IGMP | Phase 3 | Construction | DH1300 | BAB |  |  |  |  |  |  |
| QTS-102590 |  | DH 1300 // Hang Drywall Data Hall / Corridor Wall 1012 (East) - 14x14 Leave Outs | 1d | 2026-04-10 A | 2026-04-10 A | QTS-11371, QTS-102580, QTS-102570 | 100% |  |  |  |  |  | QTS-PHX3 DC1 - 6 day w/ Holidays | 01ADMIN | Construction | Build Out | IGMP |  | Construction | DH1300 | BAB | Level 2 |  |  |  |  |  |
| QTS-102600 |  | DH 1300 // Tape & Finish Drywall Data Hall / Corridor Wall 1012 (East) - 14x14 Leave Outs | 5d | 2026-04-11 A | 2026-04-14 A | QTS-102590 | 100% |  | 2026-04-11 | 2026-04-16 |  |  | QTS-PHX3 DC1 - 6 day w/ Holidays | 01ADMIN | Construction | Build Out | IGMP |  | Construction | DH1300 | BAB | Level 2 |  |  |  |  |  |
| QTS-102330 |  | DH 1300 // Vapor Barrier & Insulation (West) | 2d | 2026-04-14 A | 2026-04-14 A | QTS-11341 | 100% |  | 2026-04-14 | 2026-04-15 |  |  | QTS-PHX3 DC1 - 6 day w/ Holidays | 01ADMIN | Construction | Build Out | IGMP |  | Construction | DH1300 | BAB | Level 2 |  |  |  |  |  |
| QTS-102320 |  | DH 1300 // Tape & Finish Drywall (West) - Corridor Side | 5d | 2026-04-15 A | 2026-04-20 A | QTS-102310 | 100% |  |  |  |  |  | QTS-PHX3 DC1 - 6 day w/ Holidays |  | Construction | Build Out | IGMP | Phase 2 | Construction | DH1300 | BAB |  |  |  |  |  |  |
| QTS-102610 |  | DH 1300 // Paint Data Hall / Corridor Wall 1012 (East) - 14x14 Leave Outs | 1d | 2026-04-15 A | 2026-04-15 A | QTS-102600 | 100% |  |  |  |  |  | QTS-PHX3 DC1 - 6 day w/ Holidays | 01ADMIN | Construction | Build Out | IGMP |  | Construction | DH1300 | BAB | Level 2 |  |  |  |  |  |
| QTS-12461 |  | DH 1300 // Hang Drywall (West) - Data Hall Side | 2d | 2026-04-15 A | 2026-04-16 A | QTS-102330, QTS-12301, QTS-11351, QTS-10691, QTS-10681, QTS-11341 | 100% |  |  |  |  |  | QTS-PHX3 DC1 - 6 day w/ Holidays |  | Construction | Build Out | IGMP | Phase 3 | Construction | DH1300 | BAB |  |  |  |  |  |  |
| QTS-12741 |  | DH 1300 // Tape, & Finish Drywall (West) - Data Hall Side | 5d | 2026-04-17 A | 2026-04-20 A | QTS-12461 | 100% |  | 2026-04-17 | 2026-04-22 |  |  | QTS-PHX3 DC1 - 6 day w/ Holidays |  | Construction | Build Out | IGMP | Phase 3 | Construction | DH1300 | BAB |  |  |  |  |  |  |
| QTS-13441 |  | DH 1300 // Paint Walls (West) | 2d | 2026-05-13 A | 2026-05-14 A | QTS-12741, QTS-12461, QTS-102320 | 100% |  |  |  |  |  | QTS-PHX3 DC1 - 6 day w/ Holidays |  | Construction | Build Out | IGMP | Phase 3 | Construction | DH1300 | BAB |  | Jay Perkins |  |  |  |  |
| QTS-13451 |  | DH 1300 // Paint Walls (East) - Corridor Side | 2d | 2026-05-13 A | 2026-05-14 A | QTS-12751 FF, QTS-12751, QTS-12471 | 100% |  |  |  |  |  | QTS-PHX3 DC1 - 6 day w/ Holidays |  | Construction | Build Out | IGMP | Phase 3 | Construction | DH1300 | BAB |  | Jay Perkins |  |  |  |  |
| QTS-1000630 |  | DH 1300 // Install Overhead Conduit - Controls | 5d | 2026-06-24 A | 2026-07-15 A | QTS-120000 | 100% |  | 2026-07-01 | 2026-07-08 |  |  | QTS-PHX3 DC1 - 6 day w/ Holidays | 01ADMIN | Construction | Electrical | IGMP |  | Construction | DH1300 | BAB | Level 2 | Electrical |  |  |  |  |
| QTS-1000620 |  | DH 1300 // Install Overhead Conduit - Electrical | 5d | 2026-06-26 A | 2026-07-15 A | QTS-120000 | 100% |  | 2026-06-30 | 2026-07-07 |  |  | QTS-PHX3 DC1 - 6 day w/ Holidays | 01ADMIN | Construction | Electrical | IGMP |  | Construction | DH1300 | BAB | Level 2 | Electrical | FA Started / No lighting conduit |  |  |  |
| QTS-3630 |  | DH 1300 / Data Hall 1300 / Install CRAH Leak Detection Angle | 4d | 2026-07-15 A | 2026-07-17 A | QTS-46751 | 100% |  | 2026-07-22 | 2026-07-25 |  |  | **GLOBAL - 6 Day Workweek w/ Basic Holidays |  |  | Mechanical |  |  |  |  | BAB |  | Mechanical |  | Bel-Aire |  |  |
| QTS-3885 |  | DH 1300 / Data Hall 1300 / Final Paint | 2d | 2026-08-01 A | 2026-08-03 A | QTS-3630 | 100% |  | 2026-09-26 | 2026-09-28 |  |  | **GLOBAL - 6 Day Workweek w/ Basic Holidays |  |  | Build Out |  |  |  |  | BAB |  | Jason Hendley |  | PPC |  |  |
| QTS-3645 |  | DH 1300 / Install CRAH Closure Metal | 4d | 2026-08-11 A | 2026-08-19 | QTS-3630, QTS-2320 | 100% | 0d | 2026-08-12 | 2026-08-15 | -34d | 38d | **GLOBAL - 6 Day Workweek w/ Basic Holidays |  |  | Mechanical |  |  |  |  | BAB |  | Jason Hendley |  | PCI |  |  |
| QTS-3655 |  | TFO SCOPE \\ DH 1300 / Pull MC to RPP Racks | 6d | 2026-08-19 | 2026-08-25 | QTS-1000620, QTS-4540 |  |  |  |  | -86d | 0d | **GLOBAL - 6 Day Workweek w/ Basic Holidays |  |  | Electrical |  |  |  |  | TFO |  | Electrical |  | REI | TFO CONST | NICK |
| QTS-3890 |  | DH 1300 / Burnish Concrete Floor | 3d | 2026-08-19 | 2026-08-21 | QTS-3885 |  |  |  |  | -39d | 0d | **GLOBAL - 6 Day Workweek w/ Basic Holidays |  |  | Build Out |  |  |  |  | BAB |  | Ben Ribble |  | Bldg Solutions |  |  |
| QTS-3900 |  | DH 1300 / Install Rubber Base | 2d | 2026-08-22 | 2026-08-24 | QTS-3890 |  |  |  |  | -39d | 33d | **GLOBAL - 6 Day Workweek w/ Basic Holidays |  |  | Build Out |  |  |  |  | BAB |  | Ben Ribble |  | Wholesale Flooring |  |  |
| QTS-3665 |  | TFO SCOPE \\ DH 1300 / Install Technical Loop Piping (Stainless) | 8d | 2026-08-26 | 2026-09-03 | QTS-3655, QTS - 24771, QTS-2271 |  |  |  |  | -86d | 0d | **GLOBAL - 6 Day Workweek w/ Basic Holidays |  |  | Mechanical |  |  |  |  | TFO |  | Mechanical |  | Bel-Aire | TFO CONST | NICK |
| QTS-3910 |  | DH 1300 / Install Fire Extinguishers and Fire Extinguisher Cabinets | 3d | 2026-08-28 | 2026-08-31 | QTS-3885, QTS-2970 SS |  |  |  |  | -57d | 0d | **GLOBAL - 6 Day Workweek w/ Basic Holidays |  |  | Build Out |  |  |  |  | BAB |  | Jake Shimmin |  | ISEC |  |  |
| QTS-3675 |  | TFO SCOPE \\ DH 1300 / Insulate Technical Loop Piping (Stainless) | 5d | 2026-09-04 | 2026-09-10 | QTS-3665, QTS-2271 |  |  |  |  | -86d | 0d | **GLOBAL - 6 Day Workweek w/ Basic Holidays |  |  | Mechanical |  |  |  |  | TFO |  | Mechanical |  | Bel-Aire | TFO CONST | NICK |
| QTS-3680 |  | TFO SCOPE \\ DH 1300 / Install Added Grid Support @ Drip pan | 5d | 2026-09-09 | 2026-09-14 | QTS-3675 SS+3d |  |  |  |  | -86d | 0d | **GLOBAL - 6 Day Workweek w/ Basic Holidays |  |  | Mechanical |  |  |  |  | TFO |  | Mechanical |  | PCI | TFO CONST | NICK |
| QTS-3695 |  | TFO SCOPE \\ DH 1300 / Install Drip pans | 5d | 2026-09-15 | 2026-09-19 | QTS-3680 |  |  |  |  | -86d | 0d | **GLOBAL - 6 Day Workweek w/ Basic Holidays |  |  | Mechanical |  |  |  |  | TFO |  | Mechanical |  | Bel-Aire | TFO CONST | NICK |
| QTS-3700 |  | TFO SCOPE \\ DH 1300 / Install LV Pathway for BACOP and Liquid Cooled Manifold Panel | 4d | 2026-09-17 | 2026-09-21 | QTS-3745 SS |  |  |  |  | -82d | 4d | **GLOBAL - 6 Day Workweek w/ Basic Holidays |  |  | LV |  |  |  |  | TFO |  | Low Voltage |  | E2/Prime | TFO CONST | NICK |
| QTS-3735 |  | DH 1300 / Install Remaining Telecom Sleeves | 4d | 2026-09-17 | 2026-09-21 | QTS-3745 SS |  |  |  |  | -82d | 4d | **GLOBAL - 6 Day Workweek w/ Basic Holidays |  |  | Electrical |  |  |  |  | BAB |  | Electrical |  | REI |  |  |
| QTS-3745 |  | DH 1300 / Install Remaining Structural Ceiling Grid | 4d | 2026-09-17 | 2026-09-21 | QTS-3695 SS+2d, QTS-1000630, QTS-1000620 |  |  |  |  | -86d | 0d | **GLOBAL - 6 Day Workweek w/ Basic Holidays |  |  | Build Out |  |  |  |  | BAB |  | Jason Hendley |  | PCI |  |  |
| QTS-3775 |  | DH 1300 / Install Device Tiles | 4d | 2026-09-17 | 2026-09-21 | QTS-3745 SS |  |  |  |  | -86d | 0d | **GLOBAL - 6 Day Workweek w/ Basic Holidays |  |  | Electrical |  |  |  |  | BAB |  | Electrical |  | PCI |  |  |
| QTS-3795 |  | DH 1300 / Install Vesda Piping and Fire Alarm Devices | 4d | 2026-09-17 | 2026-09-21 | QTS-3745 SS, QTS-14811 |  |  |  |  | -82d | 4d | **GLOBAL - 6 Day Workweek w/ Basic Holidays |  |  | Electrical |  |  |  |  | BAB |  | Electrical |  | Nexus |  |  |
| QTS-3805 |  | DH 1300 / Install Lighting | 5d | 2026-09-17 | 2026-09-22 | QTS-3745 SS |  |  |  |  | -83d | 3d | **GLOBAL - 6 Day Workweek w/ Basic Holidays |  |  | Electrical |  |  |  |  | BAB |  | Electrical |  | REI |  |  |
| QTS-3825 |  | DH 1300 / Install Humidity Sensors | 4d | 2026-09-17 | 2026-09-21 | QTS-3745 SS |  |  |  |  | -82d | 4d | **GLOBAL - 6 Day Workweek w/ Basic Holidays |  |  | Build Out |  |  |  |  | BAB |  | Electrical |  | Prime |  |  |
| QTS-3855 |  | TFO SCOPE \\ DH 1300 / Install HAC Panels | 3d | 2026-09-17 | 2026-09-19 | QTS-3745 SS, QTS - 9490, QTS - 9720 |  |  |  |  | -75d | 11d | **GLOBAL - 6 Day Workweek w/ Basic Holidays |  |  | Build Out |  |  |  |  | TFO |  | Mechanical |  | AGDC | TFO CONST | NICK |
| QTS-3755 |  | TFO SCOPE \\ DH 1300 / Install RPP's | 5d | 2026-09-19 | 2026-09-24 | QTS-3745 SS+2d |  |  |  |  | -77d | 0d | **GLOBAL - 6 Day Workweek w/ Basic Holidays |  |  | Electrical |  |  |  |  | TFO |  | Electrical |  | REI | TFO CONST | NICK |
| QTS-3715 |  | TFO SCOPE \\ DH 1300 / Install Liquid Cooled Manifold Panels | 4d | 2026-09-22 | 2026-09-25 | QTS-3775 |  |  |  |  | -66d | 6d | **GLOBAL - 6 Day Workweek w/ Basic Holidays |  |  | Build Out |  |  |  |  | TFO |  | Jason Hendley |  | Prime | TFO CONST | NICK |
| QTS-3725 |  | TFO SCOPE \\ DH 1300 / Install Grounding for RPP's | 4d | 2026-09-22 | 2026-09-25 | QTS-3775 |  |  |  |  | -86d | 0d | **GLOBAL - 6 Day Workweek w/ Basic Holidays |  |  | Electrical |  |  |  |  | TFO |  | Electrical |  | REI | TFO CONST | NICK |
| QTS-3785 |  | TFO SCOPE \\ DH 1300 / Install Q Cool Tray Hangers | 5d | 2026-09-22 | 2026-09-26 | QTS-3775 |  |  |  |  | -62d | 5d | **GLOBAL - 6 Day Workweek w/ Basic Holidays |  |  | Build Out |  |  |  |  | TFO |  | Mechanical |  | Bel-Aire | TFO CONST | NICK |
| QTS-3815 |  | DH 1300 / Install Fire Spinkler Heads | 4d | 2026-09-22 | 2026-09-25 | QTS-3775 |  |  |  |  | -86d | 0d | **GLOBAL - 6 Day Workweek w/ Basic Holidays |  |  | Build Out |  |  |  |  | BAB |  | Mechanical |  | Olympic |  |  |
| QTS-3765 |  | TFO SCOPE \\ DH 1300 / Terminate RPP Feeders | 5d | 2026-09-25 | 2026-09-30 | QTS-3755 |  |  |  |  | -77d | 0d | **GLOBAL - 6 Day Workweek w/ Basic Holidays |  |  | Electrical |  |  |  |  | TFO |  | Electrical |  | REI | TFO CONST | NICK |
| QTS-3835 |  | DH 1300 / Overhead Inspection | 1d | 2026-09-26 | 2026-09-26 | QTS-3700, QTS-3725, QTS-3735, QTS-3775, QTS-3795, QTS-3815, QTS-3805, QTS-3825 |  |  |  |  | -86d | 0d | **GLOBAL - 6 Day Workweek w/ Basic Holidays |  |  | Build Out |  |  |  |  | BAB |  | Electrical |  | Layton |  |  |
| QTS-3845 |  | DH 1300 / Install Remaining Ceiling tiles | 5d | 2026-09-28 | 2026-10-02 | QTS-3835 |  |  |  |  | -86d | 0d | **GLOBAL - 6 Day Workweek w/ Basic Holidays |  |  | Build Out |  |  |  |  | BAB |  | Jason Hendley |  | PCI |  |  |
| QTS-3860 |  | TFO SCOPE \\ DH 1300 / Install Cable tray and power tray | 10d | 2026-10-03 | 2026-10-14 | QTS-3785, QTS-3845 |  |  |  |  | -67d | 0d | **GLOBAL - 6 Day Workweek w/ Basic Holidays |  |  | Electrical |  |  |  |  | TFO |  | Electrical |  | REI | TFO CONST | NICK |
| QTS-3920 |  | DH 1300 / Clean | 3d | 2026-10-03 | 2026-10-06 | QTS-3900, QTS-3910, QTS-3645, QTS-3675, QTS-3695, QTS-3745, QTS-3715, QTS-3845 |  |  |  |  | -72d | 14d | **GLOBAL - 6 Day Workweek w/ Basic Holidays |  |  | Build Out |  |  |  |  | BAB |  | Ed Carter |  | AGDC |  |  |
| QTS-3940 |  | DH 1300 / Burn in Chillers | 3d | 2026-10-08 | 2026-10-10 | QTS-6480, QTS-6520, QTS-6550, QTS-6640 |  |  |  |  | -77d | 0d | **GLOBAL - 6 Day Workweek w/ Basic Holidays |  |  | Commissioning |  |  |  |  | BAB |  | Electrical |  | REI |  | NICK |
| QTS-3950 |  | TFO SCOPE \\ DH 1300 / Burn in RPP's | 3d | 2026-10-12 | 2026-10-14 | QTS-3940 |  |  |  |  | -48d | 19d | **GLOBAL - 6 Day Workweek w/ Basic Holidays |  |  | Electrical |  |  |  |  | TFO |  | Electrical |  | REI | TFO CONST | NICK |
| QTS-3875 |  | TFO SCOPE \\ DH 1300 / Install and Terminate RPP Branch (Whips) | 15d | 2026-10-15 | 2026-10-31 | QTS-3860 |  |  |  |  | -67d | 0d | **GLOBAL - 6 Day Workweek w/ Basic Holidays |  |  | Electrical |  |  |  |  | TFO |  | Electrical |  | REI | TFO CONST | NICK |

Notes:
- QTS-102530: allucent_notes_20251014_152335: Zack Goertz on 2025-09-08T20:45:26.651Z: Not started. PCI has been put on notice that they are behind / Jason Johnston on 2025-10-08 08:10: not done / allucent_notes: 2025-09-08T20:45:26.651Z - User: Zack Goertz - Date Added: 2025-09-08T20:45:26.651Z - Note: Not started. PCI has been put on notice that they are behind / 2025-10-08 08:10 - User: Jason Johnston - Date Added: 2025-10-08 08:10 - Note: not done
- QTS-12751: Scheduler Notes: 3/24: Waiting on MEP / Notes: 3/24: Waiting on MEP
- QTS-102310: Scheduler Notes: 3/10: waiting for in wall electrical / 3/24 : waiting for in wall electrical / Notes: 3/24 : waiting for in wall electrical 3/10: waiting for in wall electrical
- QTS-102570: allucent_notes_20251014_152335: Zack Goertz on 2025-09-08T20:45:26.651Z: Not started. PCI has been put on notice that they are behind / Jason Johnston on 2025-10-08 08:10: not done / Scheduler Notes: 3/10: waiting for in wall electrical / 3/24 : waiting for in wall electrical / Notes: 3/24 : waiting for in wall electrical 3/10: waiting for in wall electrical / allucent_notes: 2025-09-08T20:45:26.651Z - User: Zack Goertz - Date Added: 2025-09-08T20:45:26.651Z - Note: Not started. PCI has been put on notice that they are behind / 2025-10-08 08:10 - User: Jason Johnston - Date Added: 2025-10-08 08:10 - Note: not done
- QTS-102580: allucent_notes_20251014_152335: Zack Goertz on 2025-09-08T20:45:26.651Z: Not started. PCI has been put on notice that they are behind / Jason Johnston on 2025-10-08 08:10: not done / allucent_notes: 2025-09-08T20:45:26.651Z - User: Zack Goertz - Date Added: 2025-09-08T20:45:26.651Z - Note: Not started. PCI has been put on notice that they are behind / 2025-10-08 08:10 - User: Jason Johnston - Date Added: 2025-10-08 08:10 - Note: not done
- QTS-102590: allucent_notes_20251014_152335: Zack Goertz on 2025-09-08T20:45:26.651Z: Not started. PCI has been put on notice that they are behind / Jason Johnston on 2025-10-08 08:10: not done / allucent_notes: 2025-09-08T20:45:26.651Z - User: Zack Goertz - Date Added: 2025-09-08T20:45:26.651Z - Note: Not started. PCI has been put on notice that they are behind / 2025-10-08 08:10 - User: Jason Johnston - Date Added: 2025-10-08 08:10 - Note: not done
- QTS-102600: allucent_notes_20251014_152335: Zack Goertz on 2025-09-08T20:45:26.651Z: Not started. PCI has been put on notice that they are behind / Jason Johnston on 2025-10-08 08:10: not done / allucent_notes: 2025-09-08T20:45:26.651Z - User: Zack Goertz - Date Added: 2025-09-08T20:45:26.651Z - Note: Not started. PCI has been put on notice that they are behind / 2025-10-08 08:10 - User: Jason Johnston - Date Added: 2025-10-08 08:10 - Note: not done
- QTS-102610: allucent_notes_20251014_152335: Zack Goertz on 2025-09-08T20:45:26.651Z: Not started. PCI has been put on notice that they are behind / Jason Johnston on 2025-10-08 08:10: not done / allucent_notes: 2025-09-08T20:45:26.651Z - User: Zack Goertz - Date Added: 2025-09-08T20:45:26.651Z - Note: Not started. PCI has been put on notice that they are behind / 2025-10-08 08:10 - User: Jason Johnston - Date Added: 2025-10-08 08:10 - Note: not done
- QTS-13451: Scheduler Notes: 3/24: Waiting on in wall / Notes: 3/24: Waiting on in wall
- QTS-1000620: Scheduler Notes: FA Started / No lighting conduit / Notes: FA Started / No lighting conduit
- QTS-3645: Notes: NEED UPDATE
- QTS-3655: Notes: Manpower currently focused in 2300

| ID | WBS | Activity | Duration | Start | Finish | Predecessors | Complete | Planned start | Planned finish | Calendar | Allucent CSI Group | Project Section | Layton Discipline | Baseline | Phase-1-1 | Project Section-1 | Location | Contract | Level | Layton Super | Trade Partner |
| --- | --- | --- | --- | --- | --- | --- | --- | --- | --- | --- | --- | --- | --- | --- | --- | --- | --- | --- | --- | --- | --- |
|  | 2 | **Gallery 1301 Mechanical** |  | 2025-10-27 | 2026-09-29 |  |  |  |  |  |  |  |  |  |  |  |  |  |  |  |  |
| QTS-13951 |  | DH 1300 / Mechanical Gallery 1301 // Install VESDA | 8d | 2025-10-27 A | 2025-12-16 A | QTS-2211 | 100% | 2025-10-27 | 2025-11-05 |  | 01ADMIN | Construction | Electrical | IGMP | Phase 3 | Construction | DH1300 | BAB |  |  |  |
| QTS-44551 |  | DH 1300 / Mechanical Gallery 1301 // Install OH Mechanical Hangers | 7d | 2025-10-27 A | 2025-12-15 A | QTS-2211 | 100% | 2025-10-27 | 2025-11-04 |  | 01ADMIN | Construction | Mechanical | IGMP |  | Construction | DH2100 | BAB | Level 2 |  |  |
| QTS-1005160 |  | DH 1300 / Mechanical Gallery 1301 // Install OH Mechanical Piping | 10d | 2025-12-12 A | 2026-01-19 A | QTS-44551 | 100% | 2025-12-16 | 2025-12-27 | QTS-PHX3 DC1 - 6 day w/ Holidays | 01ADMIN | Construction | Mechanical | IGMP | Phase 3 | Construction | DH1300 | BAB |  |  |  |
| QTS-13961 |  | DH 1300 / Mechanical Gallery 1301 // Install OH Mechanical Piping | 10d | 2025-12-12 A | 2026-01-27 A | QTS-44551 | 100% | 2025-12-16 | 2025-12-27 | QTS-PHX3 DC1 - 6 day w/ Holidays | 01ADMIN | Construction | Mechanical | IGMP | Phase 3 | Construction | DH1300 | BAB |  |  |  |
| QTS-8661 |  | DH 1300 / Mechanical Gallery 1301 // Frame for 1301-1302 Wall | 5d | 2026-01-14 A | 2026-01-20 A | QTS-20831, QTS-6961 | 100% |  |  | QTS-PHX3 DC1 - 6 day w/ Holidays | 01ADMIN | Construction | Build Out | IGMP | Phase 3 | Construction | DH1300 | BAB |  |  |  |
| QTS-10731 |  | DH 1300 / Mechanical Gallery 1301 // Frame Fan Wall | 5d | 2026-01-21 A | 2026-01-26 A | QTS-10711, QTS-8661 | 100% |  |  | QTS-PHX3 DC1 - 6 day w/ Holidays |  | Construction | Build Out | IGMP | Phase 3 | Construction | DH1300 | BAB |  |  |  |
| QTS-11381 |  | DH 1300 / Mechanical Gallery 1301 // Hang Drywall for 1301-1302 Wall - MG Side - Top Out | 3d | 2026-01-21 A | 2026-01-23 A | QTS-8661 | 100% |  |  | QTS-PHX3 DC1 - 6 day w/ Holidays | 01ADMIN | Construction | Build Out | IGMP | Phase 3 | Construction | DH1300 | BAB |  |  |  |
| QTS-11701 |  | DH 1300 / Mechanical Gallery 1301 // In Wall Electrical Rough for Fan Wall | 2d | 2026-01-26 A | 2026-01-26 A | QTS-10731 SS | 100% | 2026-01-27 | 2026-01-28 | QTS-PHX3 DC1 - 6 day w/ Holidays |  | Construction | Electrical | IGMP | Phase 3 | Construction | DH1300 | BAB |  |  |  |
| QTS-12061 |  | DH 1300 / Mechanical Gallery 1301 // In Wall Inspection for Fan Wall | 1d | 2026-01-26 A | 2026-01-26 A | QTS-11701 FF | 100% |  |  | QTS-PHX3 DC1 - 6 day w/ Holidays |  | Construction | Electrical | IGMP | Phase 3 | Construction | DH1300 | BAB |  |  |  |
| QTS-12331 |  | DH 1300 / Mechanical Gallery 1301 // Hang, Tape, & Finish Fan Drywall | 5d | 2026-01-27 A | 2026-02-10 A | QTS-10731, QTS-12061 | 100% | 2026-01-27 | 2026-01-31 | QTS-PHX3 DC1 - 6 day w/ Holidays |  | Construction | Build Out | IGMP | Phase 3 | Construction | DH1300 | BAB |  |  |  |
| QTS-13971 |  | DH 1300 / Mechanical Gallery 1301 // Install Security Screen Above Fan Wall | 3d | 2026-01-30 A | 2026-02-05 A | QTS-99680, QTS-10731 | 100% | 2026-01-30 | 2026-02-02 | QTS-PHX3 DC1 - 6 day w/ Holidays |  | Construction | Build Out | IGMP | Phase 3 | Construction | DH1300 | BAB |  |  |  |
| QTS-1003910 |  | DH 1300 / Mechanical Gallery 1301 // Insulate for 1301-1302 Wall - Top Out | 2d | 2026-02-07 A | 2026-02-09 A | QTS-11381 | 100% |  |  | QTS-PHX3 DC1 - 6 day w/ Holidays | 01ADMIN | Construction | Electrical | IGMP | Phase 3 | Construction | DH1300 | BAB |  |  |  |
| QTS-1003830 |  | DH 1300 / Mechanical Gallery 1301 // Hang Drywall for 1301-1302 Wall - EG Side - One Side | 3d | 2026-02-10 A | 2026-02-13 A | QTS-1003910 | 100% | 2026-02-10 | 2026-02-12 | QTS-PHX3 DC1 - 6 day w/ Holidays | 01ADMIN | Construction | Build Out | IGMP | Phase 3 | Construction | DH1300 | BAB |  |  |  |
| QTS-1003840 |  | DH 1300 / Mechanical Gallery 1301 // Tape, & Finish Drywall for 1301-1302 Wall - EG Side - One Side | 4d | 2026-02-10 A | 2026-02-15 A | QTS-1003830 SS | 100% | 2026-02-10 | 2026-02-13 | QTS-PHX3 DC1 - 6 day w/ Holidays | 01ADMIN | Construction | Build Out | IGMP | Phase 3 | Construction | DH1300 | BAB |  |  |  |
| QTS-13101 |  | DH 1300 / Mechanical Gallery 1301 // Paint Fan Walls | 5d | 2026-02-15 A | 2026-02-16 A | QTS-12331 | 100% | 2026-02-16 | 2026-02-20 | QTS-PHX3 DC1 - 6 day w/ Holidays |  | Construction | Build Out | IGMP | Phase 3 | Construction | DH1300 | BAB |  |  |  |
| QTS-1003850 |  | DH 1300 / Mechanical Gallery 1301 // Prime & Paint Wall for 1301-1302 Wall - EG Side - One Side | 2d | 2026-02-20 A | 2026-02-23 A | QTS-1003840 | 100% | 2026-02-20 | 2026-02-21 | QTS-PHX3 DC1 - 6 day w/ Holidays | 01ADMIN | Construction | Build Out | IGMP | Phase 3 | Construction | DH1300 | BAB |  |  |  |
| QTS-1008850 |  | DH 1300 / Mechanical Gallery 1301 // Install OH FA Conduit & Grounding | 10d | 2026-03-02 A | 2026-07-10 A | QTS-1003820 FF, QTS-11381 | 100% | 2026-03-02 | 2026-03-12 | QTS-PHX3 DC1 - 6 day w/ Holidays | 01ADMIN | Construction | Electrical | IGMP | Phase 3 | Construction | DH1300 | BAB |  | Electrical |  |
| QTS-1007510 |  | DH 1300 / Mechanical Gallery 1301 // Load CRAHs Into Building | 3d | 2026-03-18 A | 2026-03-20 A | QTS-37751, QTS-37741, QTS-37731, QTS-37721, QTS-37711, QTS-37701, QTS-37691, QTS-37681, QTS-37671, QTS-37661, QTS-37651, QTS-37641, QTS-37631, QTS-37621 | 100% |  |  | QTS-PHX3 DC1 - 6 day w/ Holidays |  | Construction | Mechanical | IGMP | Phase 3 | Construction | DH1300 | BAB |  |  |  |
| QTS-46751 |  | DH 1300 / Mechanical Gallery 1301 // OFCI - L2 SET IN PLACE - Eq Type # - DH CRAH - 14 units | 6d | 2026-03-31 A | 2026-03-31 A | QTS-37751, QTS-37741, QTS-37731, QTS-37721, QTS-37711, QTS-37701, QTS-37691, QTS-37681, QTS-37671, QTS-37661, QTS-37651, QTS-37641, QTS-37631, QTS-37621, QTS-13101, QTS-13961, QTS-1005160, QTS-1007510 | 100% | 2026-04-01 | 2026-04-07 | QTS-PHX3 DC1 - 6 day w/ Holidays |  | Construction | Mechanical | IGMP | Phase 3 | Construction | DH1300 | BAB |  |  |  |
| QTS-10721 |  | DH 1300 / Mechanical Gallery 1301 // In Wall Electrical Rough for 1301-1302 Wall | 2d | 2026-04-01 A | 2026-04-06 A | QTS-8661 | 100% | 2026-04-01 | 2026-04-02 | QTS-PHX3 DC1 - 6 day w/ Holidays | 01ADMIN | Construction | Electrical | IGMP | Phase 3 | Construction | DH1300 | BAB |  |  |  |
| QTS-10921 |  | DH 1300 / Mechanical Gallery 1301 // In Wall Inspection for 1301-1302 Wall | 2d | 2026-04-10 A | 2026-04-10 A | QTS-10721 | 100% | 2026-04-15 | 2026-04-16 | QTS-PHX3 DC1 - 6 day w/ Holidays | 01ADMIN | Construction | Electrical | IGMP | Phase 3 | Construction | DH1300 | BAB |  |  |  |
| QTS-1003810 |  | DH 1300 / Mechanical Gallery 1301 // Tape, & Finish Drywall for 1301-1302 Wall - MG Side | 4d | 2026-04-13 A | 2026-06-19 A | QTS-11381 | 100% | 2026-04-13 | 2026-04-16 | QTS-PHX3 DC1 - 6 day w/ Holidays | 01ADMIN | Construction | Build Out | IGMP | Phase 3 | Construction | DH1300 | BAB |  | Ed Carter |  |
| QTS-1003920 |  | DH 1300 / Mechanical Gallery 1301 // Insulate for 1301-1302 Wall - Remaining | 2d | 2026-04-17 A | 2026-04-17 A | QTS-10921 | 100% | 2026-04-17 | 2026-04-18 | QTS-PHX3 DC1 - 6 day w/ Holidays | 01ADMIN | Construction | Electrical | IGMP | Phase 3 | Construction | DH1300 | BAB |  |  |  |
| QTS-46761 |  | DH 1300 / Mechanical Gallery 1301 // DH CRAH Unit Mechanical Connections | 10d | 2026-05-07 A | 2026-05-18 A | QTS-46751, QTS - 26111 | 100% |  |  | QTS-PHX3 DC1 - 6 day w/ Holidays |  | Construction | Mechanical | IGMP | Phase 3 | Construction | DH1300 | BAB |  |  |  |
| QTS-15661 |  | DH 1300 / Mechanical Gallery 1301 // Install Electrical Tray | 5d | 2026-06-10 A | 2026-06-28 A | QTS-46761, QTS-13961, QTS-1008850 SS | 100% | 2026-07-17 | 2026-07-22 | QTS-PHX3 DC1 - 6 day w/ Holidays |  | Construction | LV | IGMP | Phase 3 | Construction | DH1300 | BAB |  | Oscar Armenta |  |
| QTS-1003860 |  | DH 1300 / Mechanical Gallery 1301 // Hang Drywall for 1301-1302 Wall - MG Side - Remaining | 3d | 2026-06-24 A | 2026-06-26 A | QTS-1003830, QTS-1003920 | 100% | 2026-07-01 | 2026-07-06 | QTS-PHX3 DC1 - 6 day w/ Holidays | 01ADMIN | Construction | Build Out | IGMP | Phase 3 | Construction | DH1300 | BAB |  | Ed Carter |  |
| QTS-16401 |  | DH 1300 / Mechanical Gallery 1301 // OFCI - L2 SET IN PLACE - Eq Type # - MOD-03 - 7 units | 7d | 2026-06-28 A | 2026-07-13 A | QTS-37471, QTS-37461, QTS-37451, QTS-37441, QTS-37431, QTS-37421, QTS-37411, QTS-13951 | 100% | 2026-07-18 | 2026-07-25 | QTS-PHX3 DC1 - 6 day w/ Holidays |  | Construction | Electrical | IGMP | Phase 3 | Construction | DH1300 | BAB |  | Electrical |  |
| QTS-43931 |  | DH 1300 / Mechanical Gallery 1301 // OFCI - L2 SET IN PLACE - Eq Type # - MOD-02 - 7 units | 7d | 2026-06-28 A | 2026-07-13 A | QTS-13961, QTS-37481, QTS-37401, QTS-37391, QTS-37381, QTS-37371, QTS-37361, QTS-37351, QTS-13951 | 100% | 2026-07-18 | 2026-07-25 | QTS-PHX3 DC1 - 6 day w/ Holidays |  | Construction | Electrical | IGMP | Phase 3 | Construction | DH1300 | BAB |  | Electrical |  |
| QTS-1003820 |  | DH 1300 / Mechanical Gallery 1301 // Prime & Paint Wall for 1301-1302 Wall - MG Side | 2d | 2026-07-01 A | 2026-07-02 A | QTS-1003810 | 100% | 2026-07-08 | 2026-07-09 | QTS-PHX3 DC1 - 6 day w/ Holidays | 01ADMIN | Construction | Build Out | IGMP | Phase 3 | Construction | DH1300 | BAB |  | Ed Carter |  |
| QTS-1003870 |  | DH 1300 / Mechanical Gallery 1301 // Tape, & Finish Drywall for 1301-1302 Wall - MG Side - Remaining | 4d | 2026-07-01 A | 2026-07-07 A | QTS-1003860 | 100% | 2026-07-08 | 2026-07-11 | QTS-PHX3 DC1 - 6 day w/ Holidays | 01ADMIN | Construction | Build Out | IGMP | Phase 3 | Construction | DH1300 | BAB |  | Ed Carter |  |
| QTS-1003880 |  | DH 1300 / Mechanical Gallery 1301 // Prime & Paint Wall for 1301-1302 Wall - MG Side - Remaining | 2d | 2026-07-08 A | 2026-07-09 A | QTS-1003870 | 100% | 2026-07-15 | 2026-07-16 | QTS-PHX3 DC1 - 6 day w/ Holidays | 01ADMIN | Construction | Build Out | IGMP | Phase 3 | Construction | DH1300 | BAB |  | Ed Carter |  |
| QTS-14371 |  | DH 1300 / Mechanical Gallery 1301 // OFCI - L2 SET IN PLACE - Eq Type # - EG CRAH - 4 units | 7d | 2026-07-08 A | 2026-07-15 A | QTS-13961, QTS-37931, QTS-37921, QTS-37911, QTS-37901, QTS-13971, QTS-1003880, QTS-1003850 | 100% | 2026-07-15 | 2026-07-22 | QTS-PHX3 DC1 - 6 day w/ Holidays |  | Construction | Mechanical | IGMP | Phase 3 | Construction | DH1300 | BAB |  | Mechanical |  |
| QTS-3345 |  | DH 1300 / Gallery 1301 / Install CRAH / CDU Branch Piping | 7d | 2026-07-10 A | 2026-07-18 A | QTS-46751, QTS - 7160 | 100% | 2026-07-08 | 2026-07-15 | **GLOBAL - 6 Day Workweek w/ Basic Holidays |  |  | Mechanical |  |  |  |  | BAB |  | Mechanical | Bel-Aire |
| QTS-3470 |  | DH 1300 / Gallery 1301 / Install Leak Detection and Containment angle | 4d | 2026-07-15 A | 2026-07-17 A | QTS-46751 | 100% | 2026-07-22 | 2026-07-25 | **GLOBAL - 6 Day Workweek w/ Basic Holidays |  |  | Mechanical |  |  |  |  | BAB |  | Mechanical | Bel-Aire |
| QTS-3480 |  | DH 1300 / Gallery 1301 / Install Grounding Conduit | 3d | 2026-07-15 A | 2026-07-17 A | QTS-15661 | 100% | 2026-07-22 | 2026-07-24 | **GLOBAL - 6 Day Workweek w/ Basic Holidays |  |  | Electrical |  |  |  |  | BAB |  | Electrical | REI |
| QTS-17021 |  | DH 1300 / Mechanical Gallery 1301 // Set Humidifier | 1d | 2026-07-17 A | 2026-07-17 A | QTS-46761, QTS-36061, QTS-13971 | 100% | 2026-07-22 | 2026-07-22 | QTS-PHX3 DC1 - 6 day w/ Holidays |  | Construction | Mechanical | IGMP | Phase 3 | Construction | DH1300 | BAB |  | Mechanical | Bel-Aire |

Notes:
- QTS-13951: allucent_notes_20251216_165335: Zack Goertz on 2025-11-07T11:46:07.286Z: DH 1300 is priority after 12 and 2200. Which are behind. / Zack Goertz on 2025-11-10T17:17:12.528Z: See below comment / Jason Johnston on 2025-11-11 16:11: need update / Zack Goertz on 2025-11-17 13:11: Zone 3 is last priority. Framing has barely begun on level 2. Plus, a stop work has been issued. / Jason Johnston on 2025-12-09 20:35: Need update from team / Jason Johnston on 2025-12-16 08:12: not complete / allucent_notes_20251209_203830: Zack Goertz on 2025-11-07T11:46:07.286Z: DH 1300 is priority after 12 and 2200. Which are behind. / Zack Goertz on 2025-11-10T17:17:12.528Z: See below comment / Jason Johnston on 2025-11-11 16:11: need update / Zack Goertz on 2025-11-17 13:11: Zone 3 is last priority. Framing has barely begun on level 2. Plus, a stop work has been issued. / Jason Johnston on 2025-12-09 20:35: Need update from team / allucent_notes_20251202_153722: Zack Goertz on 2025-11-07T11:46:07.286Z: DH 1300 is priority after 12 and 2200. Which are behind. / Zack Goertz on 2025-11-10T17:17:12.528Z: See below comment / Jason Johnston on 2025-11-11 16:11: need update / Zack Goertz on 2025-11-17 13:11: Zone 3 is last priority. Framing has barely begun on level 2. Plus, a stop work has been issued. / allucent_notes_20251118_192630: Zack Goertz on 2025-11-07T11:46:07.286Z: DH 1300 is priority after 12 and 2200. Which are behind. / Zack Goertz on 2025-11-10T17:17:12.528Z: See below comment / Jason Johnston on 2025-11-11 16:11: need update / Zack Goertz on 2025-11-17 13:11: Zone 3 is last priority. Framing has barely begun on level 2. Plus, a stop work has been issued. / allucent_notes_20251111_182405: Zack Goertz on 2025-11-07T11:46:07.286Z: DH 1300 is priority after 12 and 2200. Which are behind. / Zack Goertz on 2025-11-10T17:17:12.528Z: See below comment / Jason Johnston on 2025-11-11 16:11: need update / allucent_notes_20251230_164549: Zack Goertz on 2025-11-07T11:46:07.286Z: DH 1300 is priority after 12 and 2200. Which are behind. / Zack Goertz on 2025-11-10T17:17:12.528Z: See below comment / Jason Johnston on 2025-11-11 16:11: need update / Zack Goertz on 2025-11-17 13:11: Zone 3 is last priority. Framing has barely begun on level 2. Plus, a stop work has been issued. / Jason Johnston on 2025-12-09 20:35: Need update from team / Jason Johnston on 2025-12-16 08:12: not complete / David Wiltberger on 2025-12-30 16:24: no update / allucent_notes: 2025-11-07T11:46:07.286Z - User: Zack Goertz - Date Added: 2025-11-07T11:46:07.286Z - Note: DH 1300 is priority after 12 and 2200. Which are behind. / 2025-11-10T17:17:12.528Z - User: Zack Goertz - Date Added: 2025-11-10T17:17:12.528Z - Note: See below
- QTS-44551: allucent_notes_20251216_165335: David Wiltberger on 2025-11-04 14:11: no floor to complete / Zack Goertz on 2025-11-17 13:11: Zone 3 is last priority. Framing has barely begun on level 2. Plus, a stop work has been issued. / allucent_notes_20251209_203830: David Wiltberger on 2025-11-04 14:11: no floor to complete / Zack Goertz on 2025-11-17 13:11: Zone 3 is last priority. Framing has barely begun on level 2. Plus, a stop work has been issued. / allucent_notes_20251202_153722: David Wiltberger on 2025-11-04 14:11: no floor to complete / Zack Goertz on 2025-11-17 13:11: Zone 3 is last priority. Framing has barely begun on level 2. Plus, a stop work has been issued. / allucent_notes_20251118_192630: David Wiltberger on 2025-11-04 14:11: no floor to complete / Zack Goertz on 2025-11-17 13:11: Zone 3 is last priority. Framing has barely begun on level 2. Plus, a stop work has been issued. / allucent_notes_20251111_182405: David Wiltberger on 2025-11-04 14:11: no floor to complete / allucent_notes_20251104_160200: David Wiltberger on 2025-11-04 14:11: no floor to complete / allucent_notes: 2025-11-04 14:11 - User: David Wiltberger - Date Added: 2025-11-04 14:11 - Note: no floor to complete / 2025-11-17 13:11 - User: Zack Goertz - Date Added: 2025-11-17 13:11 - Note: Zone 3 is last priority. Framing has barely begun on level 2. Plus, a stop
- QTS-1005160: allucent_notes_20251216_165335: Zack Goertz on 2025-11-17 13:11: Zone 3 is last priority. Bel-aire is behind and have not begun to do back to backs. / Jason Johnston on 2025-12-16 08:17: Started early with risers / allucent_notes_20251209_203830: Zack Goertz on 2025-11-17 13:11: Zone 3 is last priority. Bel-aire is behind and have not begun to do back to backs. / allucent_notes_20251118_192630: Zack Goertz on 2025-11-17 13:11: Zone 3 is last priority. Bel-aire is behind and have not begun to do back to backs. / allucent_notes_20251230_164549: Zack Goertz on 2025-11-17 13:11: Zone 3 is last priority. Bel-aire is behind and have not begun to do back to backs. / Jason Johnston on 2025-12-16 08:17: Started early with risers / David Wiltberger on 2025-12-30 16:24: no update / allucent_notes: 2025-11-17 13:11 - User: Zack Goertz - Date Added: 2025-11-17 13:11 - Note: Zone 3 is last priority. Bel-aire is behind and have not begun to do back to backs. / 2025-12-16 08:17 - User: Jason Johnston - Date Added: 2025-12-16 08:17 - Note: Started earl
- QTS-13961: allucent_notes_20251216_165335: Zack Goertz on 2025-11-17 13:11: Zone 3 is last priority. Bel-aire is behind and have not begun to do back to backs. / Jason Johnston on 2025-12-16 08:17: Started early with risers / allucent_notes_20251209_203830: Zack Goertz on 2025-11-17 13:11: Zone 3 is last priority. Bel-aire is behind and have not begun to do back to backs. / allucent_notes_20251118_192630: Zack Goertz on 2025-11-17 13:11: Zone 3 is last priority. Bel-aire is behind and have not begun to do back to backs. / allucent_notes_20251230_164549: Zack Goertz on 2025-11-17 13:11: Zone 3 is last priority. Bel-aire is behind and have not begun to do back to backs. / Jason Johnston on 2025-12-16 08:17: Started early with risers / David Wiltberger on 2025-12-30 16:24: no update / allucent_notes: 2025-11-17 13:11 - User: Zack Goertz - Date Added: 2025-11-17 13:11 - Note: Zone 3 is last priority. Bel-aire is behind and have not begun to do back to backs. / 2025-12-16 08:17 - User: Jason Johnston - Date Added: 2025-12-16 08:17 - Note: Started earl
- QTS-8661: allucent_notes_20251230_164549: David Wiltberger on 2025-12-30 16:25: no update / allucent_notes: 2025-12-30 16:25 - User: David Wiltberger - Date Added: 2025-12-30 16:25 - Note: no update
- QTS-1003810: Scheduler Notes: 3/10: waiting for in wall electrical / 3/24 : waiting for in wall electrical / Notes: 3/24 : waiting for in wall electrical 3/10: waiting for in wall electrical
- QTS-1003860: Scheduler Notes: 3/24: Waiting on MEP / Notes: 3/24: Waiting on MEP
- QTS-1003820: Scheduler Notes: 3/24 : waiting for in wall electrical / Notes: 3/24 : waiting for in wall electrical

| ID | WBS | Activity | Duration | Start | Finish | Predecessors | Complete | Remaining | Planned start | Planned finish | Total float | Free float | Calendar | Notes | Layton Discipline | Fragnet | Owner Impact Analysis | Layton Super | Fragnet Responsible Party | Contract | Trade Partner | Project Section | Baseline | Phase-1-1 | Project Section-1 | Location | TFO-CONST ONLY | NICK | Level |
| --- | --- | --- | --- | --- | --- | --- | --- | --- | --- | --- | --- | --- | --- | --- | --- | --- | --- | --- | --- | --- | --- | --- | --- | --- | --- | --- | --- | --- | --- |
|  | 2 | **Fragnet - Gallery 1301 Mechanical** |  | 2026-07-24 | 2026-08-28 |  |  |  |  |  |  |  |  |  |  |  |  |  |  |  |  |  |  |  |  |  |  |  |  |
| QTS-1013890 |  | DH 1300 / Gallery 1301 / Fragnet Delayed by E2 - Linx taking over | 9d | 2026-07-24 A | 2026-08-03 A | QTS-3525 | 100% |  | 2026-07-31 | 2026-08-10 |  |  | **GLOBAL - 6 Day Workweek w/ Basic Holidays | Delay in change of Contractors from E2 to Linx | LV | Fragnet | Y | Low Voltage | E2 Optics, LLC | BAB | E2/Prime |  |  |  |  |  |  |  |  |
| QTS-1013900 |  | DH 1300 / Gallery 1301 / Pull LV cable to Equipment - Delayed by E2 - Linx Taking over | 4d | 2026-08-04 A | 2026-08-28 | QTS-1013890 |  | 9d | 2026-08-06 | 2026-08-10 | -73d | 0d | **GLOBAL - 6 Day Workweek w/ Basic Holidays |  | LV | Fragnet | Y | Low Voltage | E2 Optics, LLC | BAB | E2/Prime |  |  |  |  |  |  |  |  |
| QTS-1013910 |  | DH 1300 / Gallery 1301 / Install LV Basket Tray Liner - Delayed by E2 - Linx Taking over | 2d | 2026-08-04 A | 2026-08-28 | QTS-1013890 |  | 9d | 2026-08-05 | 2026-08-06 | -73d | 0d | **GLOBAL - 6 Day Workweek w/ Basic Holidays |  | LV | Fragnet | Y | Low Voltage | E2 Optics, LLC | BAB | E2 |  |  |  |  |  |  |  |  |
|  | 1 | **Gallery 1301 Mechanical - Existing Scope** |  | 2026-07-20 | 2026-09-29 |  |  |  |  |  |  |  |  |  |  |  |  |  |  |  |  |  |  |  |  |  |  |  |  |
| QTS-3375 |  | DH 1300 / Gallery 1301 / Pull Wire from MOD's to POD's | 4d | 2026-07-20 A | 2026-07-28 A | QTS-16401, QTS-43931 | 100% |  | 2026-07-22 | 2026-07-25 |  |  | **GLOBAL - 6 Day Workweek w/ Basic Holidays |  | Electrical |  |  | Electrical |  | BAB | REI |  |  |  |  |  |  |  |  |
| QTS-3525 |  | DH 1300 / Gallery 1301 / Pull LV cable to Equipment | 4d | 2026-07-20 A | 2026-07-23 A | QTS-14371 | 100% |  | 2026-07-31 | 2026-08-04 |  |  | **GLOBAL - 6 Day Workweek w/ Basic Holidays |  | LV |  |  | Low Voltage |  | BAB | E2/Prime |  |  |  |  |  |  |  |  |
| QTS-3385 |  | DH 1300 / Gallery 1301 /Pull Wire from MOD's to CRAH's | 4d | 2026-07-21 A | 2026-08-06 A | QTS-3375 SS+2d, QTS-3480 | 100% |  | 2026-07-27 | 2026-07-30 |  |  | **GLOBAL - 6 Day Workweek w/ Basic Holidays | 8/6 done | Electrical |  |  | Electrical |  | BAB | REI |  |  |  |  |  |  |  |  |
| QTS-3500 |  | DH 1300 / Gallery 1301 / Install LV Basket Tray Liner | 2d | 2026-07-21 A | 2026-07-28 A | QTS-3480 | 100% |  | 2026-07-22 | 2026-07-23 |  |  | **GLOBAL - 6 Day Workweek w/ Basic Holidays |  | LV |  |  | Low Voltage |  | BAB | E2 |  |  |  |  |  |  |  |  |
| QTS-17241 |  | DH 1300 / Mechanical Gallery 1301 // Tie-In MEP to Humidifiers | 6d | 2026-07-25 A | 2026-08-07 A | QTS-13961 FF, QTS-14371, QTS-17021 | 100% |  | 2026-07-29 | 2026-08-04 |  |  | QTS-PHX3 DC1 - 6 day w/ Holidays |  | Electrical |  |  | Mechanical |  | BAB | Bel-Aire | Construction | IGMP | Phase 3 | Construction | DH1300 |  |  |  |
| QTS-3395 |  | TFO Scope // DH 1300 / Gallery 1301 / Pull Wire from MOD's to CDU's | 4d | 2026-07-27 A | 2026-08-04 A | QTS-3385 SS+2d, QTS - 9780, QTS - 8990 | 100% |  | 2026-07-29 | 2026-08-01 |  |  | **GLOBAL - 6 Day Workweek w/ Basic Holidays | 8/4 done | Electrical |  |  | Electrical |  | TFO | REI |  |  |  |  |  | TFO CONST | NICK |  |
| QTS-3490 |  | DH 1300 / Gallery 1301 / Pull and terminate Grounding @ Equipment | 4d | 2026-07-27 A | 2026-07-30 A | QTS-1008850 | 100% |  | 2026-07-29 | 2026-08-01 |  |  | **GLOBAL - 6 Day Workweek w/ Basic Holidays |  | Electrical |  |  | Electrical |  | BAB | REI |  |  |  |  |  |  |  |  |
| QTS-3560 |  | DH 1300 / Gallery 1301 / Final Paint | 2d | 2026-08-01 A | 2026-08-03 A | QTS-3490 | 100% |  | 2026-08-27 | 2026-08-28 |  |  | **GLOBAL - 6 Day Workweek w/ Basic Holidays |  | Build Out |  |  | Jason Hendley |  | BAB | PPC |  |  |  |  |  |  |  |  |
| QTS-3405 |  | DH 1300 / Gallery 1301 / Terminate Wire from MOD's to POD's | 4d | 2026-08-04 A | 2026-08-07 A | QTS-3375 | 100% |  | 2026-08-05 | 2026-08-08 |  |  | **GLOBAL - 6 Day Workweek w/ Basic Holidays |  | Electrical |  |  | Electrical |  | BAB | REI |  |  |  |  |  |  |  |  |
| QTS-3415 |  | DH 1300 / Gallery 1301 / Terminate Wire from MOD's to CRAH's | 4d | 2026-08-04 A | 2026-08-19 | QTS-3385 | 75% | 1d | 2026-08-06 | 2026-08-10 | -67d | 0d | **GLOBAL - 6 Day Workweek w/ Basic Holidays | Started 8/4 | Electrical |  |  | Electrical |  | BAB | REI |  |  |  |  |  |  |  |  |
| QTS-3435 |  | TFO Scope // DH 1300 / Gallery 1301 / Install Technical Loop Piping Hangers | 7d | 2026-08-05 A | 2026-08-19 | QTS-46751 | 86% | 1d | 2026-08-12 | 2026-08-19 | -59d | 0d | **GLOBAL - 6 Day Workweek w/ Basic Holidays |  | Mechanical |  |  | Mechanical |  | TFO | Bel-Aire |  |  |  |  |  | TFO CONST | NICK |  |
| QTS-3425 |  | TFO Scope // DH 1300 / Gallery 1301 / Terminate Wire from MOD's to CDU's | 3d | 2026-08-19 | 2026-08-21 | QTS-3395, QTS-3415 SS+2d |  |  |  |  | -22d | 1d | **GLOBAL - 6 Day Workweek w/ Basic Holidays |  | Electrical |  |  | Electrical |  | TFO | REI |  |  |  |  |  | TFO CONST | NICK |  |
| QTS-6130 |  | DH 1300 / Gallery 1301 / Insulate CRAH / CDU Branch Piping | 2d | 2026-08-19 | 2026-08-20 | QTS-3345, QTS - 7160 |  |  |  |  | -68d | 15d | **GLOBAL - 6 Day Workweek w/ Basic Holidays |  | Mechanical |  |  | Mechanical |  | BAB | Bel-Aire |  |  |  |  |  |  |  |  |
| QTS-44571 |  | DH 1300 / Mechanical Gallery 1301 // Install Security and Devices | 5d | 2026-08-24 | 2026-08-28 | QTS-15661, QTS-3425, QTS-1013900 FF |  |  |  |  | -23d | 54d | QTS-PHX3 DC1 - 6 day w/ Holidays |  | LV |  |  | Low Voltage |  | BAB | Securitas | Construction | IGMP |  | Construction | DH1300 |  |  | Level 2 |
| QTS-3515 |  | DH 1300 / Gallery 1301 / Install LV Conduit Drops from Equipment | 4d | 2026-08-25 | 2026-08-28 | QTS-3500, QTS-1013890, QTS-1013910 FF |  |  |  |  | -73d | 0d | **GLOBAL - 6 Day Workweek w/ Basic Holidays |  | LV |  |  | Low Voltage |  | BAB | E2 |  |  |  |  |  |  |  |  |
| QTS-3535 |  | DH 1300 / Gallery 1301 / Terminate / Test LV Cable @ DCIM / Equipment | 3d | 2026-08-26 | 2026-08-28 | QTS-3525, QTS-3515 FF, QTS-1013890, QTS-1013900 FF |  |  |  |  | -73d | 4d | **GLOBAL - 6 Day Workweek w/ Basic Holidays |  | LV |  |  | Low Voltage |  | BAB | E2 |  |  |  |  |  |  |  |  |
| QTS-3555 |  | DH 1300 / Gallery 1301 / Remove Temp lighting/ Power | 2d | 2026-08-31 | 2026-09-01 | QTS-7260 |  |  |  |  | -45d | 12d | **GLOBAL - 6 Day Workweek w/ Basic Holidays |  | Electrical |  |  | Electrical |  | BAB | REI |  |  |  |  |  |  |  |  |
| QTS-3545 |  | DH 1300 / Gallery 1301 / Install Fire Extinguishers and Fire Extinguisher Cabinets | 2d | 2026-09-01 | 2026-09-02 | QTS-3560, QTS-3910 |  |  |  |  | -57d | 0d | **GLOBAL - 6 Day Workweek w/ Basic Holidays |  | Build Out |  |  | Jake Shimmin |  | BAB | ISEC |  |  |  |  |  |  |  |  |
| QTS-3570 |  | DH 1300 / Gallery 1301 / Seal Concrete Floor | 2d | 2026-09-03 | 2026-09-04 | QTS-3545 |  |  |  |  | -50d | 0d | **GLOBAL - 6 Day Workweek w/ Basic Holidays |  | Build Out |  |  | Ben Ribble |  | BAB | Bldg Solutions |  |  |  |  |  |  |  |  |
| QTS-3445 |  | TFO Scope // DH 1300 / Gallery 1301 / Install Technical Loop Piping (Stainless) | 10d | 2026-09-04 | 2026-09-16 | QTS-3435 SS+4d, QTS-3665, QTS - 24771 |  |  |  |  | -57d | 0d | **GLOBAL - 6 Day Workweek w/ Basic Holidays |  | Mechanical |  |  | Mechanical |  | TFO | Bel-Aire |  |  |  |  |  | TFO CONST | NICK |  |
| QTS-3580 |  | DH 1300 / Gallery 1301 / Install Rubber Base | 2d | 2026-09-05 | 2026-09-08 | QTS-3570 |  |  |  |  | -50d | 7d | **GLOBAL - 6 Day Workweek w/ Basic Holidays |  | Build Out |  |  | Ben Ribble |  | BAB | Wholesale Flooring |  |  |  |  |  |  |  |  |
| QTS-3365 |  | TFO Scope // DH 1300 / Gallery 1301 / Fill and Flush Technical Loop | 13d | 2026-09-17 | 2026-09-29 | QTS-6130, QTS-6450 FF, QTS-1013620 FF, QTS-3445 |  |  |  |  | -41d | 0d | **GLOBAL - 7 Day Workweek w/ Basic Holidays |  | Mechanical |  |  | Mechanical |  | TFO | Bel-Aire |  |  |  |  |  | TFO CONST | NICK |  |
| QTS-3590 |  | DH 1300 / Gallery 1301 / Clean | 2d | 2026-09-17 | 2026-09-18 | QTS-3580, QTS-3515, QTS-3535, QTS-3555, QTS-3445 |  |  |  |  | -57d | 29d | **GLOBAL - 6 Day Workweek w/ Basic Holidays |  | Build Out |  |  | Ed Carter |  | BAB | AGDC |  |  |  |  |  |  |  |  |

Notes:
- QTS-1013890: Scheduler Notes: Delay in change of Contractors from E2 to Linx

| ID | WBS | Activity | Duration | Start | Finish | Predecessors | Complete | Remaining | Planned start | Planned finish | Total float | Free float | Calendar | Allucent CSI Group | Project Section | Layton Discipline | Baseline | Project Section-1 | Location | Level | Contract | Phase-1-1 | Layton Super | Trade Partner | Notes | TFO-CONST ONLY | NICK |
| --- | --- | --- | --- | --- | --- | --- | --- | --- | --- | --- | --- | --- | --- | --- | --- | --- | --- | --- | --- | --- | --- | --- | --- | --- | --- | --- | --- |
|  | 7 | **Gallery 1303 Mechanical** |  | 2025-10-27 | 2026-09-16 |  |  |  |  |  |  |  |  |  |  |  |  |  |  |  |  |  |  |  |  |  |  |
| QTS-44621 |  | DH 1300 / Mechanical Gallery 1303 // Install OH Mechanical Hangers | 7d | 2025-10-27 A | 2026-01-07 A | QTS-44551 SS | 100% |  | 2025-10-27 | 2025-11-03 |  |  | QTS-PHX3 DC1 - 6 day w/ Holidays | 01ADMIN | Construction | Mechanical | IGMP | Construction | DH2100 | Level 2 | BAB |  |  |  |  |  |  |
| QTS-10711 |  | DH 1300 / Mechanical Gallery 1303 // Frame for 1303 Exterior Wall | 5d | 2025-12-01 A | 2025-12-05 A | QTS-6971, QTS-6961 FF | 100% |  |  |  |  |  | QTS-PHX3 DC1 - 6 day w/ Holidays | 01ADMIN | Construction | Build Out | IGMP | Construction | DH1300 |  | BAB | Phase 3 |  |  |  |  |  |
| QTS-12321 |  | DH 1300 / Mechanical Gallery 1303 // Hang Drywall for 1303 Exterior Wall | 4d | 2025-12-29 A | 2026-01-02 A | QTS-39041, QTS-10711 | 100% |  |  |  |  |  | QTS-PHX3 DC1 - 6 day w/ Holidays |  | Construction | Build Out | IGMP | Construction | DH1300 |  | BAB | Phase 3 |  |  |  |  |  |
| QTS-1005150 |  | DH 1300 / Mechanical Gallery 1303 // Install OH Mechanical Piping | 10d | 2026-01-08 A | 2026-01-19 A | QTS-44621 | 100% |  | 2026-01-08 | 2026-01-20 |  |  | QTS-PHX3 DC1 - 6 day w/ Holidays | 01ADMIN | Construction | Mechanical | IGMP | Construction | DH1300 |  | BAB | Phase 3 |  |  |  |  |  |
| QTS-14831 |  | DH 1300 / Mechanical Gallery 1303 // Install OH Mechanical Piping | 10d | 2026-01-08 A | 2026-01-27 A | QTS-44621 | 100% |  | 2026-01-08 | 2026-01-20 |  |  | QTS-PHX3 DC1 - 6 day w/ Holidays | 01ADMIN | Construction | Mechanical | IGMP | Construction | DH1300 |  | BAB | Phase 3 |  |  |  |  |  |
| QTS-11691 |  | DH 1300 / Mechanical Gallery 1303 // Frame Fan Wall | 5d | 2026-01-23 A | 2026-02-07 A | QTS-10711, QTS-14831 SS | 100% |  | 2026-01-21 | 2026-01-26 |  |  | QTS-PHX3 DC1 - 6 day w/ Holidays |  | Construction | Build Out | IGMP | Construction | DH1300 |  | BAB | Phase 3 |  |  |  |  |  |
| QTS-13081 |  | DH 1300 / Mechanical Gallery 1303 // Hang Fan Drywall - MG Side | 3d | 2026-01-27 A | 2026-02-10 A | QTS-11691 | 100% |  | 2026-01-27 | 2026-01-29 |  |  | QTS-PHX3 DC1 - 6 day w/ Holidays |  | Construction | Build Out | IGMP | Construction | DH1300 |  | BAB | Phase 3 |  |  |  |  |  |
| QTS-1003940 |  | DH 1300 / Mechanical Gallery 1303 // Tape & Finish Fan Drywall - MG Side | 4d | 2026-02-09 A | 2026-02-13 A | QTS-13081 SS | 100% |  | 2026-02-09 | 2026-02-12 |  |  | QTS-PHX3 DC1 - 6 day w/ Holidays |  | Construction | Build Out | IGMP | Construction | DH1300 |  | BAB | Phase 3 |  |  |  |  |  |
| QTS-14841 |  | DH 1300 / Mechanical Gallery 1303 // Install Security Screen Above Fan Wall | 3d | 2026-02-13 A | 2026-02-27 A | QTS-99680, QTS-11691 | 100% |  | 2026-02-13 | 2026-02-16 |  |  | QTS-PHX3 DC1 - 6 day w/ Holidays |  | Construction | Build Out | IGMP | Construction | DH1300 |  | BAB | Phase 3 |  |  |  |  |  |
| QTS-13931 |  | DH 1300 / Mechanical Gallery 1303 // Paint Fan Wall - MG Side | 5d | 2026-02-20 A | 2026-03-20 A | QTS-13081, QTS-1003940 | 100% |  | 2026-02-20 | 2026-02-25 |  |  | QTS-PHX3 DC1 - 6 day w/ Holidays |  | Construction | Build Out | IGMP | Construction | DH1300 |  | BAB | Phase 3 |  |  |  |  |  |
| QTS-1007540 |  | DH 1300 / Mechanical Gallery 1303 // Frame Fan Wall - Remaining | 4d | 2026-03-17 A | 2026-03-20 A | QTS-1007520 FF | 100% |  |  |  |  |  | QTS-PHX3 DC1 - 6 day w/ Holidays | 01ADMIN | Construction | Build Out | IGMP | Construction | DH2300 |  | BAB | Phase 3 |  |  |  |  |  |
| QTS-1007520 |  | DH 1300 / Mechanical Gallery 1303 // Load CRAHs Into Building | 3d | 2026-03-18 A | 2026-03-20 A | QTS-37891, QTS-37881, QTS-37871, QTS-37861, QTS-37851, QTS-37841, QTS-37831, QTS-37821, QTS-37811, QTS-37801, QTS-37791, QTS-37781, QTS-37771, QTS-37761 | 100% |  |  |  |  |  | QTS-PHX3 DC1 - 6 day w/ Holidays |  | Construction | Mechanical | IGMP | Construction | DH1300 |  | BAB | Phase 3 |  |  |  |  |  |
| QTS-12611 |  | DH 1300 / Mechanical Gallery 1303 // In Wall Electrical Rough for Fan Wall | 2d | 2026-03-23 A | 2026-03-25 A | QTS-11691, QTS-15341, QTS-1007540 | 100% |  | 2026-03-23 | 2026-03-24 |  |  | QTS-PHX3 DC1 - 6 day w/ Holidays |  | Construction | Electrical | IGMP | Construction | DH1300 |  | BAB | Phase 3 |  |  |  |  |  |
| QTS-1003930 |  | DH 1300 / Mechanical Gallery 1303 // Tape, & Finish Drywall for 1303 Exterior Wall | 4d | 2026-03-25 A | 2026-03-28 A | QTS-12321, QTS-1004120 FF+6d | 100% |  |  |  |  |  | QTS-PHX3 DC1 - 6 day w/ Holidays |  | Construction | Build Out | IGMP | Construction | DH1300 |  | BAB | Phase 3 |  |  |  |  |  |
| QTS-12871 |  | DH 1300 / Mechanical Gallery 1303 // In Wall Inspection for Fan Wall | 1d | 2026-03-25 A | 2026-03-25 A | QTS-12611 FF | 100% |  |  |  |  |  | QTS-PHX3 DC1 - 6 day w/ Holidays |  | Construction | Electrical | IGMP | Construction | DH1300 |  | BAB | Phase 3 |  |  |  |  |  |
| QTS-15341 |  | DH 1300 / Mechanical Gallery 1303 // OFCI - L2 SET IN PLACE - Eq Type # - DH CRAH - 14 units | 6d | 2026-03-28 A | 2026-03-28 A | QTS-46751, QTS-13931, QTS-14831, QTS-37891, QTS-37881, QTS-37871, QTS-37861, QTS-37851, QTS-37841, QTS-37831, QTS-37821, QTS-37811, QTS-37801, QTS-37791, QTS-37781, QTS-37771, QTS-37761, QTS-14841, QTS-1005150, QTS-1007520 | 100% |  | 2026-04-01 | 2026-04-07 |  |  | QTS-PHX3 DC1 - 6 day w/ Holidays |  | Construction | Mechanical | IGMP | Construction | DH1300 |  | BAB | Phase 3 |  |  |  |  |  |
| QTS-1003950 |  | DH 1300 / Mechanical Gallery 1303 // Hang Fan Drywall - DH Side | 3d | 2026-04-08 A | 2026-04-10 A | QTS-12871 | 100% |  |  |  |  |  | QTS-PHX3 DC1 - 6 day w/ Holidays |  | Construction | Build Out | IGMP | Construction | DH1300 |  | BAB | Phase 3 |  |  |  |  |  |
| QTS-1003960 |  | DH 1300 / Mechanical Gallery 1303 // Tape & Finish Fan Drywall - DH Side | 4d | 2026-04-11 A | 2026-04-13 A | QTS-1003950 | 100% |  | 2026-04-11 | 2026-04-15 |  |  | QTS-PHX3 DC1 - 6 day w/ Holidays |  | Construction | Build Out | IGMP | Construction | DH1300 |  | BAB | Phase 3 |  |  |  |  |  |
| QTS-1010030 |  | DH 1300 / Mechanical Gallery 1303 // Pour Back Slab on Grade | 1d | 2026-04-13 A | 2026-04-13 A | QTS-1004120 | 100% |  |  |  |  |  | QTS-PHX3 DC1 - 6 day w/ Holidays |  | Construction | Build Out | IGMP | Construction | DH1300 |  | BAB | Phase 3 |  |  |  |  |  |
| QTS-1010040 |  | DH 1300 / Mechanical Gallery 1303 // Cure Slab on Grade | 4d | 2026-04-14 A | 2026-05-30 A | QTS-1010030 | 100% |  | 2026-04-14 | 2026-04-17 |  |  | QTS-PHX3 DC1 - 6 day w/ Holidays |  | Construction | Build Out | IGMP | Construction | DH1300 |  | BAB | Phase 3 | Ed Carter |  |  |  |  |
| QTS-14361 |  | DH 1300 / Mechanical Gallery 1303 // Top of Wall Fire Stop | 2d | 2026-04-14 A | 2026-04-14 A | QTS-1003960 | 100% |  | 2026-04-14 | 2026-04-15 |  |  | QTS-PHX3 DC1 - 6 day w/ Holidays |  | Construction | Build Out | IGMP | Construction | DH1300 |  | BAB | Phase 3 |  |  |  |  |  |
| QTS-1003970 |  | DH 1300 / Mechanical Gallery 1303 // Paint Fan Wall - DH Side | 5d | 2026-04-15 A | 2026-04-20 A | QTS-1003950, QTS-1003960 | 100% |  |  |  |  |  | QTS-PHX3 DC1 - 6 day w/ Holidays |  | Construction | Build Out | IGMP | Construction | DH1300 |  | BAB | Phase 3 |  |  |  |  |  |
| QTS-1010010 |  | DH 1300 / Mechanical Gallery 1303 // Complete Framing of Exterior Wall | 1d | 2026-06-01 A | 2026-06-02 A | QTS-1010040, QTS-1010030 | 100% |  | 2026-07-02 | 2026-07-02 |  |  | QTS-PHX3 DC1 - 6 day w/ Holidays |  | Construction | Build Out | IGMP | Construction | DH1300 |  | BAB | Phase 3 | Ed Carter |  |  |  |  |
| QTS-1010020 |  | DH 1300 / Mechanical Gallery 1303 // Complete Insulation of Exterior Wall | 1d | 2026-06-03 A | 2026-06-03 A | QTS-1010010 | 100% |  | 2026-07-06 | 2026-07-06 |  |  | QTS-PHX3 DC1 - 6 day w/ Holidays |  | Construction | Build Out | IGMP | Construction | DH1300 |  | BAB | Phase 3 | Ed Carter |  |  |  |  |
| QTS-1008870 |  | DH 1300 / Mechanical Gallery 1303 // Install OH FA Conduit & Grounding | 10d | 2026-06-04 A | 2026-07-14 A | QTS-14831 | 100% |  | 2026-06-03 | 2026-06-13 |  |  | QTS-PHX3 DC1 - 6 day w/ Holidays | 01ADMIN | Construction | Electrical | IGMP | Construction | DH1300 |  | BAB | Phase 3 | Oscar Armenta |  |  |  |  |
| QTS-1008880 |  | DH 1300 / Mechanical Gallery 1303 // Install OH EPMS/BMS Conduit & Grounding | 10d | 2026-06-04 A | 2026-07-14 A | QTS-14831 | 100% |  | 2026-06-04 | 2026-06-15 |  |  | QTS-PHX3 DC1 - 6 day w/ Holidays | 01ADMIN | Construction | Electrical | IGMP | Construction | DH1300 |  | BAB | Phase 3 | Oscar Armenta |  |  |  |  |
| QTS-1010050 |  | DH 1300 / Mechanical Gallery 1303 // Complete Hanging Drywall for Exterior Wall | 1d | 2026-06-04 A | 2026-06-04 A | QTS-1010020 | 100% |  | 2026-07-07 | 2026-07-07 |  |  | QTS-PHX3 DC1 - 6 day w/ Holidays |  | Construction | Build Out | IGMP | Construction | DH1300 |  | BAB | Phase 3 | Ed Carter |  |  |  |  |
| QTS-1010060 |  | DH 1300 / Mechanical Gallery 1303 // Complete Tape & Finish of Drywall for Exterior Wall | 4d | 2026-06-05 A | 2026-06-10 A | QTS-1010050 | 100% |  | 2026-06-24 | 2026-06-27 |  |  | QTS-PHX3 DC1 - 6 day w/ Holidays |  | Construction | Build Out | IGMP | Construction | DH1300 |  | BAB | Phase 3 | Ed Carter |  |  |  |  |
| QTS-13921 |  | DH 1300 / Mechanical Gallery 1303 // Paint Walls for 1303 Exterior Wall | 3d | 2026-07-01 A | 2026-07-06 A | QTS-1003930, QTS-1010060 | 100% |  | 2026-07-08 | 2026-07-10 |  |  | QTS-PHX3 DC1 - 6 day w/ Holidays |  | Construction | Build Out | IGMP | Construction | DH1300 |  | BAB | Phase 3 | Ed Carter |  |  |  |  |
| QTS-14821 |  | DH 1300 / Mechanical Gallery 1303 // Install VESDA | 8d | 2026-07-07 A | 2026-07-13 A | QTS-14811, QTS-1008870, QTS-1008880 | 100% |  | 2026-07-15 | 2026-07-23 |  |  | QTS-PHX3 DC1 - 6 day w/ Holidays | 01ADMIN | Construction | Electrical | IGMP | Construction | DH1300 |  | BAB | Phase 3 | Electrical |  |  |  |  |
| QTS-16601 |  | DH 1300 / Mechanical Gallery 1303 // Install Electrical Tray | 5d | 2026-07-13 A | 2026-07-17 A | QTS-14831, QTS-13921, QTS-14821 | 100% |  | 2026-07-24 | 2026-07-29 |  |  | QTS-PHX3 DC1 - 6 day w/ Holidays |  | Construction | LV | IGMP | Construction | DH1300 |  | BAB | Phase 3 | Low Voltage |  |  |  |  |
| QTS-4020 |  | DH 1300 / Gallery 1303 / Install Electrical Tray | 3d | 2026-07-13 A | 2026-07-17 A | QTS-15341 | 100% |  | 2026-07-15 | 2026-07-17 |  |  | **GLOBAL - 6 Day Workweek w/ Basic Holidays |  |  | Electrical |  |  |  |  | BAB |  | Electrical |  |  |  |  |
| QTS-4040 |  | DH 1300 / Gallery 1303 / Install Pathway for CRAH's / CDU's | 2d | 2026-07-18 A | 2026-07-20 A | QTS-4020 | 100% |  | 2026-07-25 | 2026-07-27 |  |  | **GLOBAL - 6 Day Workweek w/ Basic Holidays |  |  | Electrical |  |  |  |  | BAB |  | Electrical | REI |  |  |  |
| QTS-4440 |  | DH 1300 / Gallery 1303 / Pull LV cable to Equipment - Delayed by E2 - Linx taking over | 4d | 2026-07-20 A | 2026-07-23 A | QTS-4040 | 100% |  | 2026-07-29 | 2026-08-03 |  |  | **GLOBAL - 5 Day Workweek w/ Basic Holidays |  |  | LV |  |  |  |  | BAB |  | Low Voltage | E2/Prime |  |  |  |
| QTS-4060 |  | DH 1300 / Gallery 1303 / Pull Wire from MOD's to CRAH's | 4d | 2026-07-21 A | 2026-08-06 A | QTS-4020, QTS-4040 | 100% |  | 2026-07-28 | 2026-07-31 |  |  | **GLOBAL - 6 Day Workweek w/ Basic Holidays |  |  | Electrical |  |  |  |  | BAB |  | Electrical | REI | 8/6 done |  |  |
| QTS-4070 |  | TFO Scope // DH 1300 / Gallery 1303 / Pull Wire from MOD's to CDU's | 4d | 2026-07-25 A | 2026-08-07 A | QTS-4060 SS, QTS-4040, QTS - 9780, QTS - 8990 | 100% |  | 2026-08-01 | 2026-08-05 |  |  | **GLOBAL - 6 Day Workweek w/ Basic Holidays |  |  | Electrical |  |  |  |  | TFO |  | Electrical | REI | 8/7 done | TFO CONST | NICK |
| QTS-4030 |  | DH 1300 / Gallery 1303 / Install Grounding Conduits | 3d | 2026-07-27 A | 2026-07-30 A | QTS-4020 SS+1d | 100% |  | 2026-07-29 | 2026-07-31 |  |  | **GLOBAL - 6 Day Workweek w/ Basic Holidays |  |  | Electrical |  |  |  |  | BAB |  | Electrical | REI |  |  |  |
| QTS-4160 |  | DH 1300 / Gallery 1303 / Install LV Conduit Drops- Delayed by E2 - Linx taking over | 2d | 2026-07-31 A | 2026-08-04 A | QTS-1013890 | 100% |  | 2026-08-07 | 2026-08-08 |  |  | **GLOBAL - 6 Day Workweek w/ Basic Holidays |  |  | LV |  |  |  |  | BAB |  | Low Voltage | Prime | 7/31-8/4 done |  |  |
| QTS-1013920 |  | DH 1300 / Gallery 1303 / Pull LV cable to Equipment - Delayed by E2 - Linx taking over | 4d | 2026-08-04 A | 2026-08-28 | QTS-1013890 |  | 8d | 2026-08-05 | 2026-08-10 | -61d | 0d | **GLOBAL - 5 Day Workweek w/ Basic Holidays |  |  | LV |  |  |  |  | BAB |  | Low Voltage | E2/Prime | Started 8/4 |  |  |
| QTS-4090 |  | DH 1300 / Gallery 1303 / Terminate Wire from MOD's to CRAH's | 4d | 2026-08-19 | 2026-08-22 | QTS-4060 |  |  |  |  | -70d | 13d | **GLOBAL - 6 Day Workweek w/ Basic Holidays |  |  | Electrical |  |  |  |  | BAB |  | Electrical | REI |  |  |  |
| QTS-4100 |  | TFO Scope // DH 1300 / Gallery 1303 / Terminate Wire from MOD's to CDU's | 3d | 2026-08-19 | 2026-08-21 | QTS-4070 |  |  |  |  | -75d | 8d | **GLOBAL - 6 Day Workweek w/ Basic Holidays |  |  | Electrical |  |  |  |  | TFO |  | Electrical | REI |  | TFO CONST | NICK |
| QTS-4190 |  | DH 1300 / Gallery 1303 / Pull and Terminate Grounding @ Equipment | 4d | 2026-08-19 | 2026-08-22 | QTS-4020 |  |  |  |  | -76d | 2d | **GLOBAL - 6 Day Workweek w/ Basic Holidays |  |  | Electrical |  |  |  |  | BAB |  | Electrical | REI |  |  |  |
| QTS-4165 |  | DH 1300 / Gallery 1303 / Terminate / Test LV Cable @ DCIM / Equipment- Delayed by E2 - Linx taking over | 3d | 2026-08-26 | 2026-08-28 | QTS-4190, QTS-4440, QTS-4160, QTS-1013920 FF |  |  |  |  | -73d | 4d | **GLOBAL - 6 Day Workweek w/ Basic Holidays |  |  | LV |  |  |  |  | BAB |  | Low Voltage | E2 |  |  |  |
| QTS-4140 |  | DH 1300 / Gallery 1303 / Install LV Tray and Liner- Delayed by E2 - Linx taking over | 2d | 2026-08-27 | 2026-08-28 | QTS-15341, QTS-16601, QTS-1013890, QTS-1013920 FF |  |  |  |  | -24d | 0d | **GLOBAL - 6 Day Workweek w/ Basic Holidays |  |  | LV |  |  |  |  | BAB |  | Low Voltage | E2 |  |  |  |
| QTS-4150 |  | DH 1300 / Gallery 1303 / Install DCIM 1303 | 2d | 2026-08-29 | 2026-08-31 | QTS-4140 |  |  |  |  | -24d | 62d | **GLOBAL - 6 Day Workweek w/ Basic Holidays |  |  | Mechanical |  |  |  |  | BAB |  | Mechanical | E2 |  |  |  |
| QTS-4120 |  | TFO Scope // DH 1300 / Gallery 1303 / Install Technical Loop Piping (Stainless) | 10d | 2026-09-04 | 2026-09-16 | QTS-3445 SS, QTS-3665, QTS - 24771, QTS-4030 |  |  |  |  | -24d | 43d | **GLOBAL - 6 Day Workweek w/ Basic Holidays |  |  | Mechanical |  |  |  |  | TFO |  | Mechanical | Bel-Aire |  | TFO CONST | NICK |

Notes:
- QTS-44621: allucent_notes_20251216_165335: David Wiltberger on 2025-11-04 14:11: no floor to complete / Zack Goertz on 2025-11-17 13:11: Zone 3 is last priority. Framing has barely begun on level 2. Plus, a stop work has been issued. / David Wiltberger on 2025-12-09 15:58: Out of sequence / allucent_notes_20251209_203830: David Wiltberger on 2025-11-04 14:11: no floor to complete / Zack Goertz on 2025-11-17 13:11: Zone 3 is last priority. Framing has barely begun on level 2. Plus, a stop work has been issued. / David Wiltberger on 2025-12-09 15:58: Out of sequence / allucent_notes_20251202_153722: David Wiltberger on 2025-11-04 14:11: no floor to complete / Zack Goertz on 2025-11-17 13:11: Zone 3 is last priority. Framing has barely begun on level 2. Plus, a stop work has been issued. / allucent_notes_20251118_192630: David Wiltberger on 2025-11-04 14:11: no floor to complete / Zack Goertz on 2025-11-17 13:11: Zone 3 is last priority. Framing has barely begun on level 2. Plus, a stop work has been issued. / allucent_notes_20251111_182405: David Wiltberger on 2025-11-04 14:11: no floor to complete / allucent_notes_20251104_160200: David Wiltberger on 2025-11-04 14:11: no floor to complete / allucent_notes_20251230_164549: David Wiltberger on 2025-11-04 14:11: no floor to complete / Zack Goertz on 2025-11-17 13:11: Zone 3 is last priority. Framing has barely begun on level 2. Plus, a stop work has been issued. / David Wiltberger on 2025-12-09 15:58: Out of sequence / allucent_notes: 2025-11-04 14:11 - User: David Wiltberger - Date Added: 2025-11-04 14:11 - Note: no floor to complete / 2025-11-17 13:11 - User: Zack Goertz - Date Added: 2025-11-17 13:11 - Note: Zone 3 is last priority. Framing has barely begun on level 2. Plus, a stop

| ID | WBS | Activity | Duration | Start | Finish | Predecessors | Complete | Remaining | Planned start | Planned finish | Total float | Free float | Calendar | Allucent CSI Group | Project Section | Layton Discipline | Baseline | Phase-1-1 | Project Section-1 | Location | Layton Super | Contract | If Not Started or Finished Why? | Trade Partner | Notes | TFO-CONST ONLY | NICK |
| --- | --- | --- | --- | --- | --- | --- | --- | --- | --- | --- | --- | --- | --- | --- | --- | --- | --- | --- | --- | --- | --- | --- | --- | --- | --- | --- | --- |
|  | 1 | **Gallery 1302 Electrical** |  | 2026-03-02 | 2026-11-05 |  |  |  |  |  |  |  |  |  |  |  |  |  |  |  |  |  |  |  |  |  |  |
| QTS-14811 |  | DH 1300 / Electrical Gallery 1302 // Install VESDA | 8d | 2026-03-18 A | 2026-07-14 A | QTS-120000, QTS-13951 | 100% |  | 2026-03-18 | 2026-03-26 |  |  | QTS-PHX3 DC1 - 6 day w/ Holidays | 01ADMIN | Construction | Electrical | IGMP | Phase 3 | Construction | DH1300 | Oscar Armenta | BAB |  |  |  |  |  |
| QTS-46741 |  | DH 1300 / Electrical Gallery 1302 // Set EPMS/BMS Panels | 4d | 2026-06-01 A | 2026-06-30 A | QTS-1003850 | 100% |  | 2026-06-03 | 2026-06-06 |  |  | QTS-PHX3 DC1 - 6 day w/ Holidays |  | Construction | Electrical | IGMP | Phase 3 | Construction | DH1300 | Oscar Armenta | BAB | 1 Panel remaining |  |  |  |  |
| QTS-3080 |  | DH 1300 / Gallery 1302 / Pull Wire BSWY to ATS | 3d | 2026-07-18 A | 2026-07-21 A | QTS-4020 | 100% |  | 2026-07-24 | 2026-07-27 |  |  | **GLOBAL - 6 Day Workweek w/ Basic Holidays |  |  | Electrical |  |  |  |  | Electrical | BAB |  | REI |  |  |  |
| QTS-3140 |  | DH 1300 / Gallery 1302 / Pull LV Cable to DCIM and Equipment | 4d | 2026-07-18 A | 2026-07-22 A | QTS-46741 | 100% |  | 2026-07-29 | 2026-08-01 |  |  | **GLOBAL - 6 Day Workweek w/ Basic Holidays |  |  | LV |  |  |  |  | Low Voltage | BAB |  | E2 |  |  |  |
| QTS-3150 |  | DH 1300 / Gallery 1302 / Install Conduit for Grounding and Bonding | 3d | 2026-07-23 A | 2026-07-27 A | QTS-3140 | 100% |  | 2026-07-31 | 2026-08-03 |  |  | **GLOBAL - 6 Day Workweek w/ Basic Holidays |  |  | Electrical |  |  |  |  | Electrical | BAB |  | REI |  |  |  |
| QTS-3060 |  | DH 1300 / Gallery 1302 / Install Raceway to House Panels | 4d | 2026-07-24 A | 2026-07-27 A | QTS-46741 | 100% |  | 2026-08-03 | 2026-08-06 |  |  | **GLOBAL - 6 Day Workweek w/ Basic Holidays |  |  | Electrical |  |  |  |  | Electrical | BAB |  | REI |  |  |  |
| QTS-6620 |  | DH 1300 / Gallery 1302 / Terminate Wire BSWY to ATS | 6d | 2026-07-25 A | 2026-08-04 A | QTS-3080, QTS-16901, QTS-6641, QTS-6651, QTS-6661, QTS-6671, QTS-6681, QTS-17851, QTS-8431, QTS-8451, QTS-8471, QTS-8491, QTS-8511 | 100% |  | 2026-07-29 | 2026-08-04 |  |  | **GLOBAL - 6 Day Workweek w/ Basic Holidays |  |  | Electrical |  |  |  |  | Electrical | BAB |  | REI |  |  |  |
| QTS-3110 |  | DH 1300 / Gallery 1302 / Install SCP Panels | 2d | 2026-07-28 A | 2026-08-03 A | QTS-3150 | 100% |  | 2026-08-08 | 2026-08-10 |  |  | **GLOBAL - 6 Day Workweek w/ Basic Holidays |  |  | Mechanical |  |  |  |  | Mechanical | BAB |  | Prime | 8/3 done |  |  |
| QTS-3160 |  | DH 1300 / Gallery 1302 / Pull and Terminate Grounding | 3d | 2026-07-28 A | 2026-08-03 A | QTS-3150 | 100% |  | 2026-07-29 | 2026-07-31 |  |  | **GLOBAL - 6 Day Workweek w/ Basic Holidays |  |  | Electrical |  |  |  |  | Electrical | BAB |  | REI | 8/3 done |  |  |
| QTS-1010730 |  | DH 1300 / Electrical Gallery 1302 // Install Security Panel | 1d | 2026-07-29 A | 2026-07-29 A | QTS-1003850, QTS-38661 | 100% |  | 2026-08-05 | 2026-08-05 |  |  | QTS-PHX3 DC1 - 6 day w/ Holidays |  | Construction | LV | IGMP | Phase 2 | Construction | DH1300 | Low Voltage | BAB | Manpower | Securitas | 7/29 done |  |  |
| QTS-3120 |  | DH 1300 / Gallery 1302 / Install DCIM 1302 | 2d | 2026-07-30 A | 2026-08-03 A | QTS-1003320 | 100% |  | 2026-08-05 | 2026-08-06 |  |  | **GLOBAL - 6 Day Workweek w/ Basic Holidays |  |  | Mechanical |  |  |  |  | Mechanical | BAB |  | E2 | 7/30-8/3 done |  |  |
| QTS-3090 |  | DH 1300 / Gallery 1302 / Install LV Conduit Drops to Equipment / SCP Panels - Delayed by E2 - Linx Taking over | 2d | 2026-07-31 A | 2026-08-04 A | QTS-3130 | 100% |  | 2026-08-07 | 2026-08-08 |  |  | **GLOBAL - 6 Day Workweek w/ Basic Holidays |  |  | LV |  |  |  |  | Low Voltage | BAB |  | Prime | 7/31-8/4 done |  |  |
| QTS-3130 |  | DH 1300 / Gallery 1302 / Install EZ Path | 2d | 2026-07-31 A | 2026-08-03 A | QTS-3120 | 100% |  | 2026-08-05 | 2026-08-06 |  |  | **GLOBAL - 6 Day Workweek w/ Basic Holidays |  |  | Electrical |  |  |  |  | Low Voltage | BAB |  | E2 | 7/31-8/3 done |  |  |
| QTS-3250 |  | DH 1300 / Gallery 1302 / Final Paint | 2d | 2026-08-01 A | 2026-08-03 A | QTS-3060 | 100% |  | 2026-08-28 | 2026-08-29 |  |  | **GLOBAL - 6 Day Workweek w/ Basic Holidays |  |  | Build Out |  |  |  |  | Jason Hendley | BAB |  | PPC |  |  |  |
| QTS-3190 |  | TFO Scope // DH 1300 / Gallery 1302 / Install Supports for RPP Feeders | 4d | 2026-08-03 A | 2026-08-19 | QTS-3150 SS | 75% | 1d | 2026-08-10 | 2026-08-13 | -83d | 0d | **GLOBAL - 6 Day Workweek w/ Basic Holidays |  |  | Electrical |  |  |  |  | Electrical | TFO |  | REI | Started 8/3 | TFO CONST | NICK |
| QTS-1010900 |  | DH 1300 / Electrical Gallery 1302 // Install Security Panel Pathways | 1d | 2026-08-04 A | 2026-08-28 | QTS-1010730 |  | 9d | 2026-08-05 | 2026-08-05 | -28d | 0d | QTS-PHX3 DC1 - 6 day w/ Holidays |  | Construction | LV | IGMP | Phase 2 | Construction | DH1300 | Low Voltage | BAB | Manpower | Securitas | Started 8/4 |  |  |
| QTS-1013930 |  | DH 1300 / Gallery 1302 / Pull LV Cable to DCIM and Equipment - Delayed by E2 - Linx Taking over | 4d | 2026-08-04 A | 2026-08-28 | QTS-1013890 |  | 9d | 2026-08-05 | 2026-08-08 | -77d | 0d | **GLOBAL - 6 Day Workweek w/ Basic Holidays |  |  | LV |  |  |  |  | Low Voltage | BAB |  | E2 | Started 8/4 |  |  |
| QTS-3070 |  | DH 1300 / Gallery 1302 / Pull Wire to House Panels | 4d | 2026-08-04 A | 2026-08-19 | QTS-3060, QTS-3130 | 75% | 1d | 2026-08-07 | 2026-08-11 | -69d | 0d | **GLOBAL - 6 Day Workweek w/ Basic Holidays |  |  | Electrical |  |  |  |  | Electrical | BAB |  | REI | Started 8/4-8/7 |  |  |
| QTS-1010770 |  | DH 1300 / Electrical Gallery 1302 // Install Security Devices | 10d | 2026-08-11 A | 2026-08-28 | QTS-1013930 SS, QTS-1013930 FF | 40% | 6d | 2026-08-10 | 2026-08-20 | -22d | 64d | QTS-PHX3 DC1 - 6 day w/ Holidays |  | Construction | LV | IGMP | Phase 2 | Construction | DH1300 | Low Voltage | BAB |  | Securitas |  |  |  |
| QTS-3200 |  | TFO Scope // DH 1300 / Gallery 1302 / Pull MC for RPP Feeders | 6d | 2026-08-20 | 2026-08-26 | QTS-3190 |  |  |  |  | -83d | 0d | **GLOBAL - 6 Day Workweek w/ Basic Holidays |  |  | Electrical |  |  |  |  | Electrical | TFO |  | REI |  | TFO CONST | NICK |
| QTS-6630 |  | DH 1300 / Gallery 1302 / Terminate Wire to House Panels | 4d | 2026-08-20 | 2026-08-24 | QTS-3070 |  |  |  |  | -69d | 8d | **GLOBAL - 6 Day Workweek w/ Basic Holidays |  |  | Electrical |  |  |  |  | Electrical | BAB |  | REI |  |  |  |
| QTS-1010750 |  | DH 1300 / Electrical Gallery 1302 // Pull Cable from DCIM to Security Devices - purple | 6d | 2026-08-22 | 2026-08-28 | QTS-1010900 FF, QTS-3120 |  |  |  |  | -28d | 0d | QTS-PHX3 DC1 - 6 day w/ Holidays |  | Construction | LV | IGMP | Phase 2 | Construction | DH1300 | Low Voltage | BAB |  | E2 |  |  |  |
| QTS-3055 |  | DH 1300 / Gallery 1302 /Terminate Remaing ATS to COD Equipment to Equipment | 4d | 2026-08-27 | 2026-08-31 | QTS-46021, QTS-15781, QTS-3210 SS |  |  |  |  | -83d | 0d | **GLOBAL - 6 Day Workweek w/ Basic Holidays |  |  | Electrical |  |  |  |  | Electrical | BAB |  | REI |  |  |  |
| QTS-3100 |  | DH 1300 / Gallery 1302 / Install LV Tray Liner - Delayed by E2 - Linx Taking over | 2d | 2026-08-27 | 2026-08-28 | QTS-3120, QTS-1013890, QTS-1013930 FF |  |  |  |  | -77d | 0d | **GLOBAL - 6 Day Workweek w/ Basic Holidays |  |  | LV |  |  |  |  | Low Voltage | BAB |  | E2 |  |  |  |
| QTS-3210 |  | TFO Scope // DH 1300 / Gallery 1302 / Terminate MC for RPP Feeders | 5d | 2026-08-27 | 2026-09-01 | QTS-3200 |  |  |  |  | -83d | 0d | **GLOBAL - 6 Day Workweek w/ Basic Holidays |  |  | Electrical |  |  |  |  | Electrical | TFO |  | REI |  | TFO CONST | NICK |
| QTS-7260 |  | DH 1300 / Gallery 1302 / Install Lighting | 3d | 2026-08-27 | 2026-08-29 | QTS-3200 |  |  |  |  | -46d | 0d | **GLOBAL - 6 Day Workweek w/ Basic Holidays |  |  | Electrical |  |  |  |  | Electrical | BAB |  | REI |  |  |  |
| QTS-3240 |  | DH 1300 / Gallery 1302 / Hang Tape and Finish Drywall Patches | 3d | 2026-08-28 | 2026-08-31 | QTS-2860 |  |  |  |  | -44d | 6d | **GLOBAL - 6 Day Workweek w/ Basic Holidays |  |  | Build Out |  |  |  |  | Jason Hendley | BAB |  | PCI |  |  |  |
| QTS-1010740 |  | DH 1300 / Electrical Gallery 1302 // Pull Cable from Security Panel to Security Devices - purple | 6d | 2026-08-29 | 2026-09-04 | QTS-1010900 |  |  |  |  | -28d | 58d | QTS-PHX3 DC1 - 6 day w/ Holidays |  | Construction | LV | IGMP | Phase 2 | Construction | DH1300 | Low Voltage | BAB |  | E2 |  |  |  |
| QTS-1010760 |  | DH 1300 / Electrical Gallery 1302 // Terminate and Test Cable from DCIM to Security Devices | 6d | 2026-08-29 | 2026-09-04 | QTS-1010750 |  |  |  |  | -28d | 40d | QTS-PHX3 DC1 - 6 day w/ Holidays |  | Construction | LV | IGMP | Phase 2 | Construction | DH1300 | Low Voltage | BAB |  | E2 |  |  |  |
| QTS-3170 |  | DH 1300 / Gallery 1302 / Terminate LV cable @ SCP Panels - Delayed by E2 - Linx Taking over | 4d | 2026-08-29 | 2026-09-02 | QTS-3110, QTS-3140, QTS-1013930, QTS-3090 |  |  |  |  | -49d | 0d | **GLOBAL - 6 Day Workweek w/ Basic Holidays |  |  | LV |  |  |  |  | Low Voltage | BAB |  | Prime |  |  |  |
| QTS-3180 |  | DH 1300 / Gallery 1302 / Terminate/ Test LV Cable @ DCIM and equipment - Delayed by E2 - Linx Taking over | 4d | 2026-08-29 | 2026-09-02 | QTS-3140, QTS-1013890, QTS-3100 |  |  |  |  | -77d | 0d | **GLOBAL - 6 Day Workweek w/ Basic Holidays |  |  | LV |  |  |  |  | Low Voltage | BAB |  | E2 |  |  |  |
| QTS-7270 |  | DH 1300 / Gallery 1302 / Pull and Terminate Lighting | 3d | 2026-08-31 | 2026-09-02 | QTS-7260 |  |  |  |  | -46d | 4d | **GLOBAL - 6 Day Workweek w/ Basic Holidays |  |  | Electrical |  |  |  |  | Electrical | BAB |  | REI |  |  |  |
| QTS-3220 |  | DH 1300 / Gallery 1302 / Install Fire Extinguishers and Fire Extinguisher Cabinets | 2d | 2026-09-01 | 2026-09-02 | QTS-3250, QTS-3545 SS |  |  |  |  | -57d | 0d | **GLOBAL - 6 Day Workweek w/ Basic Holidays |  |  | Build Out |  |  |  |  | Jake Shimmin | BAB |  | ISEC |  |  |  |
| QTS-3260 |  | DH 1300 / Gallery 1302 / Seal Concrete Floor | 2d | 2026-09-03 | 2026-09-04 | QTS-3220 |  |  |  |  | -50d | 0d | **GLOBAL - 6 Day Workweek w/ Basic Holidays |  |  | Build Out |  |  |  |  | Ben Ribble | BAB |  | Bldg Solutions |  |  |  |
| QTS-3270 |  | DH 1300 / Gallery 1302 / Install Rubber Base | 2d | 2026-09-05 | 2026-09-08 | QTS-3260 |  |  |  |  | -50d | 0d | **GLOBAL - 6 Day Workweek w/ Basic Holidays |  |  | Build Out |  |  |  |  | Ben Ribble | BAB |  | Wholesale Flooring |  |  |  |
| QTS-3285 |  | DH 1300 / Gallery 1302 / Clean | 2d | 2026-09-09 | 2026-09-10 | QTS-3170, QTS-3270, QTS-7270, QTS-3240 |  |  |  |  | -50d | 36d | **GLOBAL - 6 Day Workweek w/ Basic Holidays |  |  | Build Out |  |  |  |  | Ed Carter | BAB |  | AGDC |  |  |  |
| QTS-3230 |  | TFO Scope // DH 1300 / Gallery 1302 / Patch Back and Fire Caulk RPP Feeder Pentrations | 4d | 2026-11-02 | 2026-11-05 | QTS-2240, QTS-3875 |  |  |  |  | -67d | 0d | **GLOBAL - 6 Day Workweek w/ Basic Holidays |  |  | Build Out |  |  |  |  | Ed Carter | TFO |  | Riteway |  | TFO CONST | NICK |

Notes:
- QTS-14811: allucent_notes_20251216_165335: Zack Goertz on 2025-11-11T18:32:05.605Z: ZOne 3 level 1 is not priority, plus, AF steel is doing their O.H. work / Zack Goertz on 2025-11-17 13:11: Zone 3 is last priority. Zone 3 level 2 is only beginning framing / allucent_notes_20251209_203830: Zack Goertz on 2025-11-11T18:32:05.605Z: ZOne 3 level 1 is not priority, plus, AF steel is doing their O.H. work / Zack Goertz on 2025-11-17 13:11: Zone 3 is last priority. Zone 3 level 2 is only beginning framing / allucent_notes_20251202_153722: Zack Goertz on 2025-11-11T18:32:05.605Z: ZOne 3 level 1 is not priority, plus, AF steel is doing their O.H. work / Zack Goertz on 2025-11-17 13:11: Zone 3 is last priority. Zone 3 level 2 is only beginning framing / allucent_notes_20251118_192630: Zack Goertz on 2025-11-11T18:32:05.605Z: ZOne 3 level 1 is not priority, plus, AF steel is doing their O.H. work / Zack Goertz on 2025-11-17 13:11: Zone 3 is last priority. Zone 3 level 2 is only beginning framing / allucent_notes_20251111_182405: Zack Goertz on 2025-11-11T18:32:05.605Z: ZOne 3 level 1 is not priority, plus, AF steel is doing their O.H. work / allucent_notes_20251230_164549: Zack Goertz on 2025-11-11T18:32:05.605Z: ZOne 3 level 1 is not priority, plus, AF steel is doing their O.H. work / Zack Goertz on 2025-11-17 13:11: Zone 3 is last priority. Zone 3 level 2 is only beginning framing / allucent_notes: 2025-11-11T18:32:05.605Z - User: Zack Goertz - Date Added: 2025-11-11T18:32:05.605Z - Note: ZOne 3 level 1 is not priority, plus, AF steel is doing their O.H. work / 2025-11-17 13:11 - User: Zack Goertz - Date Added: 2025-11-17 13:11 - Note: Zone 3 is la

| ID | WBS | Activity | Duration | Start | Finish | Predecessors | Complete | Planned start | Planned finish | Calendar | Project Section | Layton Discipline | Baseline | Phase-1-1 | Project Section-1 | Location | Layton Super | Contract |
| --- | --- | --- | --- | --- | --- | --- | --- | --- | --- | --- | --- | --- | --- | --- | --- | --- | --- | --- |
|  | 1 | **Electrical** |  | 2026-03-02 | 2026-06-22 |  |  |  |  |  |  |  |  |  |  |  |  |  |
|  | 7 | **DH 1300 IDF Cabinets** |  | 2026-04-22 | 2026-04-22 |  |  |  |  |  |  |  |  |  |  |  |  |  |
| QTS-38661 |  | DH 1300 / Electrical Gallery 1301/1302 // Install Fire Rated Plywood | 1d | 2026-04-22 A | 2026-04-22 A | QTS-14361 | 100% | 2026-06-24 | 2026-06-24 | QTS-PHX3 DC1 - 6 day w/ Holidays | Construction | Build Out | GMP | Phase 3 | Construction | DH1300 | Ed Carter | BAB |
|  | 1 | **A1300 Lineup** |  | 2026-03-02 | 2026-06-22 |  |  |  |  |  |  |  |  |  |  |  |  |  |
| QTS-14331 |  | Gallery 1302 / Lineup A1300 // Install Hangers & Supports | 3d | 2026-03-02 A | 2026-03-04 A | QTS-2221 | 100% |  |  | QTS-PHX3 DC1 - 6 day w/ Holidays | Construction | Electrical | IGMP | Phase 3 | Construction | DH1300 |  | BAB |
| QTS-16421 |  | Gallery 1302 / Lineup A1300 // Set Reserve Busway Segment | 2d | 2026-05-08 A | 2026-06-16 A | QTS-50061, QTS-15781 | 100% | 2026-07-11 | 2026-07-13 | QTS-PHX3 DC1 - 6 day w/ Holidays | Construction | Electrical | IGMP | Phase 3 | Construction | DH1300 | Oscar Armenta | BAB |
| QTS-15781 |  | Gallery 1302 / Lineup A1300 // OFCI - L2 SET IN PLACE - Eq Type # - COD/ATS-210-A - Skid 1-3 | 2d | 2026-05-29 A | 2026-06-01 A | QTS-37491, QTS-1003850, QTS-1003320 | 100% | 2026-06-05 | 2026-06-06 | QTS-PHX3 DC1 - 6 day w/ Holidays | Construction | Electrical | IGMP | Phase 3 | Construction | DH1300 |  | BAB |
| QTS-46021 |  | Gallery 1302 / Lineup A1300 // OFCI - L2 SET IN PLACE - Eq Type # - COD/ATS-210-A - Skid 4-6 | 2d | 2026-05-29 A | 2026-06-01 A | QTS-15781, QTS-1003320 | 100% | 2026-06-03 | 2026-06-04 | QTS-PHX3 DC1 - 6 day w/ Holidays | Construction | Electrical | IGMP | Phase 3 | Construction | DH1300 | Oscar Armenta | BAB |
| QTS-16901 |  | Gallery 1302 / Lineup A1300 // Pull LV Cables from POD to ATS | 4d | 2026-06-17 A | 2026-06-22 A | QTS-46021 FF+1d, QTS-13581, QTS-15781 | 100% | 2026-07-02 | 2026-07-08 | QTS-PHX3 DC1 - 6 day w/ Holidays | Construction | LV | IGMP | Phase 3 | Construction | DH1300 | Low Voltage | BAB |
| QTS-17851 |  | Gallery 1302 / Lineup A1300 // Pull LV Cables from Reserve Bus to ATS | 2d | 2026-06-17 A | 2026-06-19 A | QTS-15781, QTS-16421 | 100% | 2026-07-02 | 2026-07-06 | QTS-PHX3 DC1 - 6 day w/ Holidays | Construction | LV | IGMP | Phase 3 | Construction | DH1300 | Low Voltage | BAB |
|  | 2 | **B1300 Lineup** |  | 2026-03-02 | 2026-06-22 |  |  |  |  |  |  |  |  |  |  |  |  |  |
| QTS-2231 |  | Gallery 1302 / Lineup B1300 // Install Hangers & Supports | 3d | 2026-03-02 A | 2026-03-04 A | QTS-14331 SS | 100% |  |  | QTS-PHX3 DC1 - 6 day w/ Holidays | Construction | Electrical | IGMP | Phase 3 | Construction | DH1300 |  | BAB |
| QTS-5351 |  | Gallery 1302 / Lineup B1300 // Set Reserve Busway Segment | 2d | 2026-05-08 A | 2026-06-16 A | QTS-50061, QTS-4281 | 100% | 2026-07-11 | 2026-07-13 | QTS-PHX3 DC1 - 6 day w/ Holidays | Construction | Electrical | IGMP | Phase 3 | Construction | DH1300 | Oscar Armenta | BAB |
| QTS-4281 |  | Gallery 1302 / Lineup B1300 // OFCI - L2 SET IN PLACE - Eq Type # - COD/ATS-210-A - Skid 1-3 | 2d | 2026-05-29 A | 2026-06-01 A | QTS-46021, QTS-37501 | 100% | 2026-06-10 | 2026-06-11 | QTS-PHX3 DC1 - 6 day w/ Holidays | Construction | Electrical | IGMP | Phase 3 | Construction | DH1300 | Oscar Armenta | BAB |
| QTS-46031 |  | Gallery 1302 / Lineup B1300 // OFCI - L2 SET IN PLACE - Eq Type # - COD/ATS-210-A - Skid 4-6 | 2d | 2026-05-29 A | 2026-06-01 A | QTS-4281 | 100% | 2026-06-10 | 2026-06-11 | QTS-PHX3 DC1 - 6 day w/ Holidays | Construction | Electrical | IGMP | Phase 3 | Construction | DH1300 | Oscar Armenta | BAB |
| QTS-6641 |  | Gallery 1302 / Lineup B1300 // Pull LV Cables from POD to ATS | 4d | 2026-06-17 A | 2026-06-22 A | QTS-46031 FF+1d, QTS-13581, QTS-4281 | 100% | 2026-07-11 | 2026-07-15 | QTS-PHX3 DC1 - 6 day w/ Holidays | Construction | LV | IGMP | Phase 3 | Construction | DH1300 | Low Voltage | BAB |
| QTS-8431 |  | Gallery 1302 / Lineup B1300 // Pull LV Cables from Reserve Bus to ATS | 2d | 2026-06-17 A | 2026-06-19 A | QTS-4281, QTS-5351 | 100% | 2026-07-11 | 2026-07-13 | QTS-PHX3 DC1 - 6 day w/ Holidays | Construction | LV | IGMP | Phase 3 | Construction | DH1300 | Low Voltage | BAB |
|  | 3 | **C1300 Lineup** |  | 2026-03-03 | 2026-06-22 |  |  |  |  |  |  |  |  |  |  |  |  |  |
| QTS-2241 |  | Gallery 1302 / Lineup C1300 // Install Hangers & Supports | 3d | 2026-03-03 A | 2026-03-05 A | QTS-2231 | 100% |  |  | QTS-PHX3 DC1 - 6 day w/ Holidays | Construction | Electrical | IGMP | Phase 3 | Construction | DH1300 |  | BAB |
| QTS-5371 |  | Gallery 1302 / Lineup C1300 // Set Reserve Busway Segment | 2d | 2026-05-08 A | 2026-06-16 A | QTS-50061, QTS-4291 | 100% | 2026-07-20 | 2026-07-21 | QTS-PHX3 DC1 - 6 day w/ Holidays | Construction | Electrical | IGMP | Phase 3 | Construction | DH1300 | Oscar Armenta | BAB |
| QTS-4291 |  | Gallery 1302 / Lineup C1300 // OFCI - L2 SET IN PLACE - Eq Type # - COD/ATS-210-A - Skid 1-3 | 2d | 2026-05-29 A | 2026-05-30 A | QTS-46031, QTS-37511 | 100% | 2026-07-01 | 2026-07-02 | QTS-PHX3 DC1 - 6 day w/ Holidays | Construction | Electrical | IGMP | Phase 3 | Construction | DH1300 | Oscar Armenta | BAB |
| QTS-46041 |  | Gallery 1302 / Lineup C1300 // OFCI - L2 SET IN PLACE - Eq Type # - COD/ATS-210-A - Skid 4-6 | 2d | 2026-05-29 A | 2026-05-30 A | QTS-4291 | 100% | 2026-07-06 | 2026-07-07 | QTS-PHX3 DC1 - 6 day w/ Holidays | Construction | Electrical | IGMP | Phase 3 | Construction | DH1300 | Oscar Armenta | BAB |
| QTS-6651 |  | Gallery 1302 / Lineup C1300 // Pull LV Cables from POD to ATS | 4d | 2026-06-17 A | 2026-06-22 A | QTS-46041 FF+1d, QTS-13581, QTS-4291 | 100% | 2026-07-20 | 2026-07-23 | QTS-PHX3 DC1 - 6 day w/ Holidays | Construction | LV | IGMP | Phase 3 | Construction | DH1300 | Low Voltage | BAB |
| QTS-8451 |  | Gallery 1302 / Lineup C1300 // Pull LV Cables from Reserve Bus to ATS | 2d | 2026-06-17 A | 2026-06-19 A | QTS-4291, QTS-5371 | 100% | 2026-07-20 | 2026-07-21 | QTS-PHX3 DC1 - 6 day w/ Holidays | Construction | LV | IGMP | Phase 3 | Construction | DH1300 | Low Voltage | BAB |

| ID | WBS | Activity | Duration | Start | Finish | Predecessors | Complete | Planned start | Planned finish | Calendar | Project Section | Layton Discipline | Baseline | Phase-1-1 | Project Section-1 | Location | Contract | Layton Super | Notes | Allucent CSI Group | Phase-1 | Level | Fragnet | Fragnet Responsible Party |
| --- | --- | --- | --- | --- | --- | --- | --- | --- | --- | --- | --- | --- | --- | --- | --- | --- | --- | --- | --- | --- | --- | --- | --- | --- |
|  | 4 | **D1300 Lineup** |  | 2026-03-18 | 2026-06-22 |  |  |  |  |  |  |  |  |  |  |  |  |  |  |  |  |  |  |  |
| QTS-2251 |  | Gallery 1302 / Lineup D1300 // Install Hangers & Supports | 3d | 2026-03-18 A | 2026-03-20 A | QTS-2241 | 100% |  |  | QTS-PHX3 DC1 - 6 day w/ Holidays | Construction | Electrical | IGMP | Phase 3 | Construction | DH1300 | BAB |  |  |  |  |  |  |  |
| QTS-5391 |  | Gallery 1302 / Lineup D1300 // Set Reserve Busway Segment | 2d | 2026-05-08 A | 2026-06-16 A | QTS-50061, QTS-4301 | 100% | 2026-07-20 | 2026-07-21 | QTS-PHX3 DC1 - 6 day w/ Holidays | Construction | Electrical | IGMP | Phase 3 | Construction | DH1300 | BAB | Oscar Armenta |  |  |  |  |  |  |
| QTS-4301 |  | Gallery 1302 / Lineup D1300 // OFCI - L2 SET IN PLACE - Eq Type # - COD/ATS-210-A - Skid 1-3 | 2d | 2026-05-29 A | 2026-05-30 A | QTS-46041, QTS-37521 | 100% | 2026-07-08 | 2026-07-09 | QTS-PHX3 DC1 - 6 day w/ Holidays | Construction | Electrical | IGMP | Phase 3 | Construction | DH1300 | BAB | Oscar Armenta |  |  |  |  |  |  |
| QTS-46051 |  | Gallery 1302 / Lineup D1300 // OFCI - L2 SET IN PLACE - Eq Type # - COD/ATS-210-A - Skid 4-6 | 2d | 2026-05-29 A | 2026-05-30 A | QTS-4301 | 100% | 2026-07-10 | 2026-07-11 | QTS-PHX3 DC1 - 6 day w/ Holidays | Construction | Electrical | IGMP | Phase 3 | Construction | DH1300 | BAB | Oscar Armenta |  |  |  |  |  |  |
| QTS-6661 |  | Gallery 1302 / Lineup D1300 // Pull LV Cables from POD to ATS | 4d | 2026-06-17 A | 2026-06-22 A | QTS-46051 FF+1d, QTS-13581, QTS-4301 | 100% | 2026-07-20 | 2026-07-23 | QTS-PHX3 DC1 - 6 day w/ Holidays | Construction | LV | IGMP | Phase 3 | Construction | DH1300 | BAB | Low Voltage |  |  |  |  |  |  |
| QTS-8471 |  | Gallery 1302 / Lineup D1300 // Pull LV Cables from Reserve Bus to ATS | 2d | 2026-06-17 A | 2026-06-19 A | QTS-4301, QTS-5391 | 100% | 2026-07-20 | 2026-07-21 | QTS-PHX3 DC1 - 6 day w/ Holidays | Construction | Electrical | IGMP | Phase 3 | Construction | DH1300 | BAB | Oscar Armenta |  |  |  |  |  |  |
|  | 5 | **E1300 Lineup** |  | 2026-03-18 | 2026-06-22 |  |  |  |  |  |  |  |  |  |  |  |  |  |  |  |  |  |  |  |
| QTS-2261 |  | Gallery 1302 / Lineup E1300 // Install Hangers & Supports | 3d | 2026-03-18 A | 2026-03-20 A | QTS-2251 | 100% |  |  | QTS-PHX3 DC1 - 6 day w/ Holidays | Construction | Electrical | IGMP | Phase 3 | Construction | DH1300 | BAB |  |  |  |  |  |  |  |
| QTS-4311 |  | Gallery 1302 / Lineup E1300 // OFCI - L2 SET IN PLACE - Eq Type # - COD/ATS-210-A - Skid 1-3 | 2d | 2026-05-29 A | 2026-05-30 A | QTS-46051, QTS-37531 | 100% | 2026-07-06 | 2026-07-07 | QTS-PHX3 DC1 - 6 day w/ Holidays | Construction | Electrical | IGMP | Phase 3 | Construction | DH1300 | BAB | Oscar Armenta |  |  |  |  |  |  |
| QTS-46061 |  | Gallery 1302 / Lineup E1300 // OFCI - L2 SET IN PLACE - Eq Type # - COD/ATS-210-A - Skid 4-6 | 2d | 2026-05-29 A | 2026-05-30 A | QTS-4311 | 100% | 2026-07-08 | 2026-07-09 | QTS-PHX3 DC1 - 6 day w/ Holidays | Construction | Electrical | IGMP | Phase 3 | Construction | DH1300 | BAB | Oscar Armenta |  |  |  |  |  |  |
| QTS-6671 |  | Gallery 1302 / Lineup E1300 // Pull LV Cables from POD to ATS | 4d | 2026-06-17 A | 2026-06-22 A | QTS-46061 FF+1d, QTS-13581, QTS-4311 | 100% | 2026-07-28 | 2026-07-31 | QTS-PHX3 DC1 - 6 day w/ Holidays | Construction | LV | IGMP | Phase 3 | Construction | DH1300 | BAB |  |  |  |  |  |  |  |
| QTS-8491 |  | Gallery 1302 / Lineup E1300 // Pull LV Cables from Reserve Bus to ATS | 2d | 2026-06-17 A | 2026-06-19 A | QTS-4311 | 100% | 2026-07-30 | 2026-07-31 | QTS-PHX3 DC1 - 6 day w/ Holidays | Construction | LV | IGMP | Phase 3 | Construction | DH1300 | BAB |  |  |  |  |  |  |  |
|  | 6 | **F1300 Lineup** |  | 2026-03-27 | 2026-06-22 |  |  |  |  |  |  |  |  |  |  |  |  |  |  |  |  |  |  |  |
| QTS-2271 |  | Gallery 1302 / Lineup F1300 // Install Hangers & Supports | 3d | 2026-03-27 A | 2026-06-05 A | QTS-2261 | 100% | 2026-04-01 | 2026-04-03 | QTS-PHX3 DC1 - 6 day w/ Holidays | Construction | Electrical | IGMP | Phase 3 | Construction | DH1300 | BAB | Oscar Armenta | 04/21: To be completed on 04/23 |  |  |  |  |  |
| QTS-4321 |  | Gallery 1302 / Lineup F1300 // OFCI - L2 SET IN PLACE - Eq Type # - COD/ATS-210-A - Skid 1-3 | 2d | 2026-05-29 A | 2026-05-30 A | QTS-46061, QTS-37541 | 100% | 2026-07-13 | 2026-07-14 | QTS-PHX3 DC1 - 6 day w/ Holidays | Construction | Electrical | IGMP | Phase 3 | Construction | DH1300 | BAB | Oscar Armenta |  |  |  |  |  |  |
| QTS-46071 |  | Gallery 1302 / Lineup F1300 // OFCI - L2 SET IN PLACE - Eq Type # - COD/ATS-210-A - Skid 4-6 | 2d | 2026-05-29 A | 2026-05-30 A | QTS-4321 | 100% | 2026-07-15 | 2026-07-16 | QTS-PHX3 DC1 - 6 day w/ Holidays | Construction | Electrical | IGMP | Phase 3 | Construction | DH1300 | BAB | Oscar Armenta |  |  |  |  |  |  |
| QTS-6681 |  | Gallery 1302 / Lineup F1300 // Pull LV Cables from POD to ATS | 4d | 2026-06-17 A | 2026-06-22 A | QTS-46071 FF+1d, QTS-13581, QTS-4321 | 100% | 2026-07-28 | 2026-07-31 | QTS-PHX3 DC1 - 6 day w/ Holidays | Construction | LV | IGMP | Phase 3 | Construction | DH1300 | BAB |  |  |  |  |  |  |  |
| QTS-8511 |  | Gallery 1302 / Lineup F1300 // Pull LV Cables from Reserve Bus to ATS | 2d | 2026-06-17 A | 2026-06-19 A | QTS-4321 | 100% | 2026-07-30 | 2026-07-31 | QTS-PHX3 DC1 - 6 day w/ Holidays | Construction | LV | IGMP | Phase 3 | Construction | DH1300 | BAB |  |  |  |  |  |  |  |
|  | 9 | **R1300 Lineup** |  | 2026-03-03 | 2026-06-16 |  |  |  |  |  |  |  |  |  |  |  |  |  |  |  |  |  |  |  |
| QTS-2221 |  | Gallery 1302 / Lineup R1300 // Install Hangers & Supports | 3d | 2026-03-03 A | 2026-03-05 A | QTS-1003850 | 100% |  |  | QTS-PHX3 DC1 - 6 day w/ Holidays | Construction | Electrical | IGMP | Phase 3 | Construction | DH1300 | BAB |  |  |  |  |  |  |  |
| QTS-3041 |  | Gallery 1302 / Lineup R1300 // Install Raceways from LV POD to Reserve Busway | 5d | 2026-06-10 A | 2026-06-15 A | QTS-2221, QTS-2831 | 100% |  |  | QTS-PHX3 DC1 - 6 day w/ Holidays | Construction | Electrical | IGMP | Phase 3 | Construction | DH1300 | BAB | Oscar Armenta |  |  |  |  |  |  |
| QTS-4271 |  | Gallery 1302 / Lineup R1300 // Set Reserve Busway Segment | 4d | 2026-06-16 A | 2026-06-16 A | QTS-50061, QTS-3041 | 100% | 2026-06-16 | 2026-06-19 | QTS-PHX3 DC1 - 6 day w/ Holidays | Construction | Electrical | IGMP | Phase 3 | Construction | DH1300 | BAB | Oscar Armenta |  |  |  |  |  |  |
|  | 4 | **DH 1300 / Rooftop Mechanical** |  | 2025-09-08 | 2026-05-04 |  |  |  |  |  |  |  |  |  |  |  |  |  |  |  |  |  |  |  |
| QTS-2151 |  | DH 1300 / Rooftop Mechanical // OFCI - L2 SET IN PLACE - Eq Type # - Chiller #1RT40 - 7 units | 5d | 2025-09-08 A | 2025-09-10 A | QTS-2021, QTS-38021 FF, QTS-38011 FF, QTS-38001 FF, QTS-37991 FF, QTS-37981 FF, QTS-37971 FF, QTS-37961 FF | 100% | 2025-09-08 | 2025-09-12 |  | Construction | Mechanical | IGMP | Phase 3 | Construction | DH1300 | BAB |  |  |  |  |  |  |  |
| QTS-2181 |  | DH 1300 / Rooftop Mechanical // Set Doghouse Curbs | 8d | 2025-09-17 A | 2025-09-23 A | QTS-2051 SS | 100% | 2025-09-17 | 2025-09-26 |  | Construction | Electrical | IGMP | Phase 3 | Construction | DH1300 | BAB |  |  |  |  |  |  |  |
| QTS-2161 |  | DH 1300 / Rooftop Mechanical // Set Doghouses | 5d | 2025-09-24 A | 2025-09-30 A | QTS-19911, QTS-2181 | 100% |  |  |  | Construction | Electrical | IGMP | Phase 3 | Construction | DH1300 | BAB |  |  |  |  |  |  |  |
| QTS-101120 |  | DH 1300 / Rooftop Mechanical // Install Roof Protection | 2d | 2025-11-10 A | 2025-11-11 A | QTS-42671 | 100% |  |  |  | Construction | Mechanical | IGMP |  |  | DH2100 | BAB |  |  | 01ADMIN | Phase 1 | Level 2 |  |  |
| QTS-101160 |  | DH 1300 / Rooftop Mechanical // Install Grating, Toe Kicks, Hand Rails for TES Tanks | 5d | 2025-12-29 A | 2026-01-03 A | QTS-100920, QTS-100350, QTS-101120 | 100% |  |  | QTS-PHX3 DC1 - 6 day w/ Holidays | Construction | Mechanical | IGMP |  |  | DH2100 | BAB |  |  | 01ADMIN | Phase 1 | Level 2 |  |  |
| QTS-101180 |  | DH 1300 / Rooftop Mechanical // OFCI - ROOF SET IN PLACE - Eq Type # - TES Tanks - 7 units | 1d | 2026-01-06 A | 2026-01-10 A | QTS-101420 FF, QTS-101160 | 100% | 2026-01-06 | 2026-01-06 | QTS-PHX3 DC1 - 6 day w/ Holidays | Construction | Mechanical | IGMP |  |  | DH2100 | BAB |  |  | 01ADMIN | Phase 1 | Level 2 |  |  |
| QTS-2201 |  | DH 1300 / Rooftop Mechanical // OFCI - L2 SET IN PLACE - Eq Type # - DOAS-RT1300 - 2 units | 2d | 2026-01-12 A | 2026-01-13 A | QTS-101120, QTS-24581, QTS-38111, QTS-38101, QTS-23911 | 100% |  |  | QTS-PHX3 DC1 - 6 day w/ Holidays | Construction | Mechanical | IGMP | Phase 3 | Construction | DH1300 | BAB |  |  | 01ADMIN |  |  |  |  |
| QTS-1004850 |  | Fragnet / DH 1300 / Rooftop Mechanical // Procure Grating, Toe Kicks, And Hand Rails | 25d | 2026-02-03 A | 2026-03-23 A | QTS-1002000 | 100% | 2026-02-03 | 2026-03-09 |  | Construction | Core & Shell | IGMP |  |  | DH1300 | BAB |  | 3/23: Consolidating to be captured in zone 2 | 01ADMIN | Phase 1 | Level 2 | Fragnet | SteelFab Texas Inc. |
| QTS-1001960 |  | Fragnet / DH 1300 / Rooftop Mechanical // Install Grating, Toe Kicks, Hand Rails to Complete Chiller Deck | 10d | 2026-03-23 A | 2026-03-23 A | QTS-1002000, QTS-1004850 FF | 100% | 2026-04-07 | 2026-04-17 | QTS-PHX3 DC1 - 6 day w/ Holidays | Construction | Core & Shell | IGMP |  |  | DH1300 | BAB |  | 3/23: Consolidating to be captured in zone 2 | 01ADMIN | Phase 1 | Level 2 | Fragnet | SteelFab Texas Inc. |
| QTS-3451 |  | DH 1300 / Rooftop Mechanical // Set Vertical Inline Centrifugal Pumps | 5d | 2026-04-29 A | 2026-05-04 A | QTS-3441, QTS-2151 | 100% |  |  | QTS-PHX3 DC1 - 6 day w/ Holidays | Construction | Mechanical | IGMP | Phase 3 | Construction | DH1300 | BAB | Jorge Maldonado |  |  |  |  |  |  |

Notes:
- QTS-2271: Scheduler Notes: 04/21: To be completed on 04/23
- QTS-101120: allucent_notes_20251014_152335: David Wiltberger on 2025-08-19 09:08: changed pick order / David Wiltberger on 2025-09-02 10:09: Moving to accommodate roofing in Zone 1 / David Wiltberger on 2025-09-24 04:09: BAM not completed Potential Delay / David Wiltberger on 2025-09-30 12:09: BAM did not complete / David Wiltberger on 2025-10-14 10:10: set on recovery schedule / allucent_notes: David Wiltberger on 2025-08-19 09:08: changed pick order / allucent_notes: 2025-08-19 09:08 - User: David Wiltberger - Date Added: 2025-08-19 09:08 - Note: changed pick order / 2025-09-02 10:09 - User: David Wiltberger - Date Added: 2025-09-02 10:09 - Note: Moving to accommodate roofing in Zone 1 / 2025-09-24 04:09 - User: Dav
- QTS-101160: allucent_notes_20251216_165335: David Wiltberger on 2025-12-01 09:51: No TES tanks installed yet / allucent_notes_20251202_153722: David Wiltberger on 2025-12-01 09:51: No TES tanks installed yet / allucent_notes_20251014_152335: David Wiltberger on 2025-08-19 09:08: changed pick order / David Wiltberger on 2025-09-02 10:09: Moving to accommodate roofing in Zone 1 / David Wiltberger on 2025-09-24 04:09: BAM not completed Potential Delay / David Wiltberger on 2025-09-30 12:09: BAM did not complete / David Wiltberger on 2025-10-14 10:10: set on recovery schedule / allucent_notes: David Wiltberger on 2025-08-19 09:08: changed pick order / allucent_notes_20251230_164549: David Wiltberger on 2025-12-01 09:51: No TES tanks installed yet / allucent_notes: 2025-12-01 09:51 - User: David Wiltberger - Date Added: 2025-12-01 09:51 - Note: No TES tanks installed yet
- QTS-101180: allucent_notes_20251014_152335: David Wiltberger on 2025-08-19 09:08: changed pick order / David Wiltberger on 2025-09-02 10:09: Moving to accommodate roofing in Zone 1 / David Wiltberger on 2025-09-24 04:09: BAM not completed Potential Delay / David Wiltberger on 2025-09-30 12:09: BAM did not complete / David Wiltberger on 2025-10-14 10:10: set on recovery schedule / allucent_notes: David Wiltberger on 2025-08-19 09:08: changed pick order / allucent_notes: 2025-08-19 09:08 - User: David Wiltberger - Date Added: 2025-08-19 09:08 - Note: changed pick order / 2025-09-02 10:09 - User: David Wiltberger - Date Added: 2025-09-02 10:09 - Note: Moving to accommodate roofing in Zone 1 / 2025-09-24 04:09 - User: Dav
- QTS-1004850: allucent_notes_20251216_165335: David Wiltberger on 2025-12-02 06:45: Grating install not complete for installation / allucent_notes_20251209_203830: David Wiltberger on 2025-12-02 06:45: Grating install not complete for installation / allucent_notes_20251202_153722: David Wiltberger on 2025-12-02 06:45: Grating install not complete for installation / allucent_notes_20251014_152335: David Wiltberger on 2025-08-19 09:08: changed pick order / David Wiltberger on 2025-09-02 10:09: Moving to accommodate roofing in Zone / 1 / David Wiltberger on 2025-09-24 04:09: BAM not completed Potential Delay / David Wiltberger on 2025-09-30 12:09: BAM did not complete / David Wiltberger on 2025-10-14 10:10: set on recovery / schedule / allucent_notes: David Wiltberger on 2025-08-19 09:08: changed pick order / Scheduler Notes: David Wiltberger on 2025-08-19 09:08: changed pick order / David Wiltberger on 2025-09-02 10:09: Moving to accommodate roofing in Zone / 1 / David Wiltberger on 2025-09-24 04:09: BAM not completed Potential Delay / David Wiltberger on 2025-09-30 12:09: BAM did not complete / David Wiltberger on 2025-10-14 10:10: set on recovery schedule / David Wiltberger on 2025-12-02 06:45: Grating install not complete for / installation / 3/23: Consolidating to be captured in zone 2 / allucent_notes: 2025-12-02 06:45 - User: David Wiltberger - Date Added: 2025-12-02 06:45 - Note: Grating install not complete for installation
- QTS-1001960: allucent_notes_20251216_165335: David Wiltberger on 2025-12-02 06:45: Grating install not complete for installation / allucent_notes_20251209_203830: David Wiltberger on 2025-12-02 06:45: Grating install not complete for installation / allucent_notes_20251202_153722: David Wiltberger on 2025-12-02 06:45: Grating install not complete for installation / allucent_notes_20251014_152335: David Wiltberger on 2025-08-19 09:08: changed pick order / David Wiltberger on 2025-09-02 10:09: Moving to accommodate roofing in Zone 1 / David Wiltberger on 2025-09-24 04:09: BAM not completed Potential Delay / David Wiltberger on 2025-09-30 12:09: BAM did not complete / David Wiltberger on 2025-10-14 10:10: set on recovery schedule / allucent_notes: David Wiltberger on 2025-08-19 09:08: changed pick order / Scheduler Notes: David Wiltberger on 2025-08-19 09:08: changed pick order / David Wiltberger on 2025-09-02 10:09: Moving to accommodate roofing in Zone / 1 / David Wiltberger on 2025-09-24 04:09: BAM not completed Potential Delay / David Wiltberger on 2025-09-30 12:09: BAM did not complete / David Wiltberger on 2025-10-14 10:10: set on recovery schedule / David Wiltberger on 2025-12-02 06:45: Grating install not complete for / installation / 3/23: Consolidating to be captured in zone 2 / allucent_notes: 2025-12-02 06:45 - User: David Wiltberger - Date Added: 2025-12-02 06:45 - Note: Grating install not complete for installation

| ID | WBS | Activity | Duration | Start | Finish | Predecessors | Complete | Planned start | Planned finish | Calendar | Allucent CSI Group | Project Section | Phase-1 | Layton Discipline | Baseline | Location | Level | Fragnet | Owner Impact Analysis | Fragnet Responsible Party | Contract | Phase-1-1 | Project Section-1 |
| --- | --- | --- | --- | --- | --- | --- | --- | --- | --- | --- | --- | --- | --- | --- | --- | --- | --- | --- | --- | --- | --- | --- | --- |
|  | 1 | **Fragnet Bulletin 4 Grating** |  | 2025-10-10 | 2026-01-27 |  |  |  |  |  |  |  |  |  |  |  |  |  |  |  |  |  |  |
| QTS-1001950 |  | Fragnet / DH 1300 / Rooftop Mechanical // Bulletin 4 Received by Layton | 1d | 2025-10-10 A | 2025-10-10 A | QTS-1371 SS | 100% |  |  |  | 01ADMIN | Construction | Phase 1 | Mechanical | IGMP | DH2100 | Level 2 | Fragnet | Y | Bel-Aire Mechanical. LLC | BAB |  |  |
| QTS-1001970 |  | Fragnet / DH 1300 / Rooftop Mechanical // Updated Bulletin 4 Received by Layton | 3d | 2025-10-13 A | 2025-10-15 A | QTS-1001950 | 100% | 2025-10-10 | 2025-10-14 |  | 01ADMIN | Construction | Phase 1 | Mechanical | IGMP | DH2100 | Level 2 | Fragnet | Y | Bel-Aire Mechanical. LLC | BAB |  |  |
| QTS-1001980 |  | Fragnet / DH 1300 / Rooftop Mechanical // Layton Submitting Shop Drawings to QTS Design (DLB) | 23d | 2025-10-16 A | 2025-11-17 A | QTS-1001970 | 100% | 2025-10-10 | 2025-11-11 |  | 01ADMIN | Construction | Phase 1 | Mechanical | IGMP | DH2100 | Level 2 | Fragnet | Y | Bel-Aire Mechanical. LLC | BAB |  |  |
| QTS-1001990 |  | Fragnet / DH 1300 / Rooftop Mechanical // Layton Submitting Shop Drawings to QTS Design (Corgan) | 23d | 2025-11-18 A | 2025-12-09 A | QTS-1001980 | 100% | 2025-10-10 | 2025-11-11 |  | 01ADMIN | Construction | Phase 1 | Mechanical | IGMP | DH2100 | Level 2 | Fragnet | Y | Bel-Aire Mechanical. LLC | BAB |  |  |
| QTS-1002000 |  | Fragnet / DH 1300 / Rooftop Mechanical // QTS Design Response for Grating | 10d | 2025-12-10 A | 2026-01-27 A | QTS-1001990 | 100% | 2025-10-10 | 2025-10-23 |  | 01ADMIN | Construction | Phase 1 | Mechanical | IGMP | DH2100 | Level 2 | Fragnet | Y | Bel-Aire Mechanical. LLC | BAB |  |  |
|  | 5 | **DH 1300 / Mechanical Yard Buildout** |  | 2025-10-02 | 2026-03-06 |  |  |  |  |  |  |  |  |  |  |  |  |  |  |  |  |  |  |
| QTS-42541 |  | DH 1300 / Mechanical Yard // Excavate for MV Conduits | 4d | 2025-10-02 A | 2025-10-07 A | QTS-42491 SS, QTS-23261 | 100% |  |  |  |  | Construction |  | Core & Shell | IGMP | Gen Yard | Level 2 |  |  |  | BAB | Phase 1 | Construction |
| QTS-42551 |  | DH 1300 / Mechanical Yard // Install Conduit for MV Cables | 4d | 2025-10-03 A | 2025-10-15 A | QTS-42541 FF+1d | 100% | 2025-10-03 | 2025-10-08 |  | 01ADMIN | Construction |  | Core & Shell | IGMP | Gen Yard | Level 2 |  |  |  | BAB | Phase 1 | Construction |
| QTS-42561 |  | DH 1300 / Mechanical Yard // Slurry for MV Conduits | 3d | 2025-10-07 A | 2025-10-16 A | QTS-42551 FF+1d | 100% | 2025-10-07 | 2025-10-09 |  | 01ADMIN | Construction |  | Core & Shell | IGMP | Gen Yard | Level 2 |  |  |  | BAB | Phase 1 | Construction |
| QTS-42571 |  | DH 1300 / Mechanical Yard // Backfill Conduit for MV Cables | 4d | 2025-10-07 A | 2025-10-17 A | QTS-42561 FF+1d | 100% | 2025-10-07 | 2025-10-10 |  | 01ADMIN | Construction |  | Core & Shell | IGMP | Gen Yard | Level 2 |  |  |  | BAB | Phase 1 | Construction |
| QTS-1001470 |  | DH 1300 / Mechanical Yard // OFCI - L2 SET IN PLACE - Eq Type # - 2500KVA Transformers - 2 units (F13 & R13) | 3d | 2025-11-04 A | 2025-11-04 A | QTS-38171, QTS-38181 | 100% | 2025-12-30 | 2026-01-05 |  |  | Construction |  | Electrical | IGMP | Gen Yard | Level 1 |  |  |  | BAB | Phase 3 | Construction |
| QTS-2171 |  | DH 1300 / Mechanical Yard // Prep for Pier Footings | 3d | 2025-12-02 A | 2025-12-04 A | QTS-2041 SS, QTS-42571, QTS-2151 | 100% |  |  |  | 01ADMIN | Construction |  | Core & Shell | IGMP | Gen Yard | Level 1 |  |  |  | BAB | Phase 3 | Construction |
| QTS-4241 |  | DH 1300 / Mechanical Yard // Form, Reinforce, & Pour 24" Diameter Piers #1 | 6d | 2025-12-05 A | 2025-12-12 A | QTS-2171 FF, QTS-2171 | 100% |  |  |  | 01ADMIN | Construction |  | Core & Shell | IGMP | Gen Yard | Level 1 |  |  |  | BAB | Phase 3 | Construction |
|  | 2 | **Remaining Duration** |  | 2025-12-15 | 2026-03-06 |  |  |  |  |  |  |  |  |  |  |  |  |  |  |  |  |  |  |
| QTS-42881 |  | DH 1300 / Mechanical Yard // Form, Reinforce, & Pour 24" Diameter Piers #2 | 5d | 2025-12-15 A | 2025-12-16 A | QTS-4241 | 100% | 2025-12-15 | 2025-12-19 | QTS-PHX3 DC1 - 6 day w/ Holidays | 01ADMIN | Construction |  | Core & Shell | IGMP | Gen Yard | Level 1 |  |  |  | BAB | Phase 3 | Construction |
| QTS-11331 |  | DH 1300 / Mechanical Yard // Form, Reinforce, & Pour Thickened Slab On Grade for Transformers | 9d | 2025-12-16 A | 2025-12-16 A | QTS-42881 SS+1d, QTS-2171 | 100% | 2025-12-16 | 2025-12-26 | QTS-PHX3 DC1 - 6 day w/ Holidays | 01ADMIN | Construction |  | Core & Shell | IGMP | Gen Yard | Level 1 |  |  |  | BAB | Phase 3 | Construction |
| QTS-10041 |  | DH 1300 / Mechanical Yard // Form, Reinforce, & Pour Thickened Slab On Grade for UPS Pods | 5d | 2025-12-17 A | 2025-12-17 A | QTS-11331 | 100% | 2026-01-08 | 2026-01-13 | QTS-PHX3 DC1 - 6 day w/ Holidays | 01ADMIN | Construction |  | Core & Shell | IGMP | Gen Yard | Level 1 |  |  |  | BAB | Phase 3 | Construction |
| QTS-6631 |  | DH 1300 / Mechanical Yard // Place Gen Yard Gravel | 5d | 2025-12-18 A | 2025-12-18 A | QTS-10041, QTS-11331, QTS-42881 | 100% | 2025-12-18 | 2025-12-23 | QTS-PHX3 DC1 - 6 day w/ Holidays |  | Construction |  | Core & Shell | IGMP | Gen Yard | Level 1 |  |  |  | BAB | Phase 3 | Construction |
| QTS-12601 |  | DH 1300 / Mechanical Yard // Form, Reinforce, & Pour Thickened Slab On Grade for Generators | 10d | 2025-12-22 A | 2025-12-31 A | QTS-10041, QTS-11331 | 100% | 2025-12-22 | 2026-01-03 | QTS-PHX3 DC1 - 6 day w/ Holidays |  | Construction |  | Core & Shell | IGMP | Gen Yard | Level 1 |  |  |  | BAB | Phase 3 | Construction |
| QTS-14561 |  | DH 1300 / Mechanical Yard // OFCI - L2 SET IN PLACE - Eq Type # - 2500KVA Transformers - 4 units (A13, C13, D13 & E13) | 3d | 2026-01-06 A | 2026-01-06 A | QTS-1001470, QTS-38181, QTS-38171, QTS-38161, QTS-38151, QTS-38141, QTS-38121 | 100% | 2026-01-06 | 2026-01-08 | QTS-PHX3 DC1 - 6 day w/ Holidays | 01ADMIN | Construction |  | Electrical | IGMP | Gen Yard | Level 1 |  |  |  | BAB | Phase 3 | Construction |
| QTS-42581 |  | DH 1300 / Mechanical Yard // Wire Pull for MV Cables | 6d | 2026-02-16 A | 2026-02-24 A | QTS-42571 | 100% | 2026-02-16 | 2026-02-21 | QTS-PHX3 DC1 - 6 day w/ Holidays |  | Construction |  | Electrical | IGMP | Gen Yard | Level 2 |  |  |  | BAB | Phase 1 | Construction |
| QTS-13581 |  | DH 1300 / Mechanical Yard // OFCI - L2 SET IN PLACE - Eq Type # - 3000A UPS Pods - 7 units | 5d | 2026-02-18 A | 2026-02-24 A | QTS-10041, QTS-37611, QTS-37601 FF, QTS-37591 FF, QTS-37581 FF, QTS-37571 FF, QTS-37561 FF, QTS-37551 | 100% | 2026-02-26 | 2026-03-03 | QTS-PHX3 DC1 - 6 day w/ Holidays |  | Construction |  | Electrical | IGMP | Gen Yard | Level 1 |  |  |  | BAB | Phase 3 | Construction |
| QTS-7000 |  | DH 1300 / Mechanical Yard // OFCI - L2 SET IN PLACE - Eq Type # - 2500KW Generator #A-13 - 1 unit | 1d | 2026-02-25 A | 2026-03-05 A | QTS-12601, QTS-14561, QTS-40371 FF, QTS-40351 FF, QTS-40341 FF | 100% | 2026-02-25 | 2026-02-25 | QTS-PHX3 DC1 - 6 day w/ Holidays |  | Construction |  | Electrical |  | Gen Yard | Level 1 |  |  |  | BAB | Phase 3 | Construction |
| QTS-7010 |  | DH 1300 / Mechanical Yard // OFCI - L2 SET IN PLACE - Eq Type # - 2500KW Generator #B-13 - 1 unit | 1d | 2026-02-25 A | 2026-03-05 A | QTS-40211 FF, QTS-40191 FF, QTS-40181 FF, QTS-7000 SS | 100% | 2026-02-25 | 2026-02-25 | QTS-PHX3 DC1 - 6 day w/ Holidays |  | Construction |  | Electrical |  | Gen Yard | Level 1 |  |  |  | BAB | Phase 3 | Construction |
| QTS-7020 |  | DH 1300 / Mechanical Yard // OFCI - L2 SET IN PLACE - Eq Type # - 2500KW Generator #C-13 - 1 unit | 1d | 2026-02-25 A | 2026-03-05 A | QTS-40051 FF, QTS-40031 FF, QTS-40021 FF, QTS-7010 SS | 100% | 2026-02-25 | 2026-02-25 | QTS-PHX3 DC1 - 6 day w/ Holidays |  | Construction |  | Electrical |  | Gen Yard | Level 1 |  |  |  | BAB | Phase 3 | Construction |
| QTS-41431 |  | DH 1300 / Mechanical Yard // OFCI - L2 SET IN PLACE - Eq Type # - 2500KW Generator #E-13 - 1 unit | 1d | 2026-03-02 A | 2026-03-05 A | QTS-40771 FF, QTS-40751 FF, QTS-40741 FF, QTS-7030 | 100% | 2026-03-02 | 2026-03-02 | QTS-PHX3 DC1 - 6 day w/ Holidays |  | Construction |  | Electrical |  | Gen Yard | Level 1 |  |  |  | BAB | Phase 3 | Construction |
| QTS-41441 |  | DH 1300 / Mechanical Yard // OFCI - L2 SET IN PLACE - Eq Type # - 2500KW Generator #F-13 - 1 unit | 1d | 2026-03-02 A | 2026-03-05 A | QTS-40971 FF, QTS-40951 FF, QTS-40941 FF, QTS-41431 | 100% | 2026-03-02 | 2026-03-02 | QTS-PHX3 DC1 - 6 day w/ Holidays |  | Construction |  | Electrical |  | Gen Yard | Level 1 |  |  |  | BAB | Phase 3 | Construction |
| QTS-41451 |  | DH 1300 / Mechanical Yard // OFCI - L2 SET IN PLACE - Eq Type # - 2500KW Generator #R-13 - 1 unit | 1d | 2026-03-02 A | 2026-03-06 A | QTS-41171 FF, QTS-41151 FF, QTS-41141 FF, QTS-41441 | 100% | 2026-03-02 | 2026-03-02 | QTS-PHX3 DC1 - 6 day w/ Holidays |  | Construction |  | Electrical |  | Gen Yard | Level 1 |  |  |  | BAB | Phase 3 | Construction |
| QTS-7030 |  | DH 1300 / Mechanical Yard // OFCI - L2 SET IN PLACE - Eq Type # - 2500KW Generator #D-13 - 1 unit | 1d | 2026-03-02 A | 2026-03-05 A | QTS-40571 FF, QTS-40551 FF, QTS-40541 FF, QTS-7020 | 100% | 2026-03-02 | 2026-03-02 | QTS-PHX3 DC1 - 6 day w/ Holidays |  | Construction |  | Electrical |  | Gen Yard | Level 1 |  |  |  | BAB | Phase 3 | Construction |

Notes:
- QTS-1001950: allucent_notes_20251216_165335: David Wiltberger on 2025-12-02 06:45: Grating install not complete for installation / allucent_notes_20251209_203830: David Wiltberger on 2025-12-02 06:45: Grating install not complete for installation / allucent_notes_20251202_153722: David Wiltberger on 2025-12-02 06:45: Grating install not complete for installation / allucent_notes_20251014_152335: David Wiltberger on 2025-08-19 09:08: changed pick order / David Wiltberger on 2025-09-02 10:09: Moving to accommodate roofing in Zone 1 / David Wiltberger on 2025-09-24 04:09: BAM not completed Potential Delay / David Wiltberger on 2025-09-30 12:09: BAM did not complete / David Wiltberger on 2025-10-14 10:10: set on recovery schedule / allucent_notes: David Wiltberger on 2025-08-19 09:08: changed pick order / Scheduler Notes: David Wiltberger on 2025-08-19 09:08: changed pick order / David Wiltberger on 2025-09-02 10:09: Moving to accommodate roofing in Zone / 1 / David Wiltberger on 2025-09-24 04:09: BAM not completed Potential Delay / David Wiltberger on 2025-09-30 12:09: BAM did not complete / David Wiltberger on 2025-10-14 10:10: set on recovery / schedule / allucent_notes: 2025-12-02 06:45 - User: David Wiltberger - Date Added: 2025-12-02 06:45 - Note: Grating install not complete for installation
- QTS-1001970: allucent_notes_20251216_165335: David Wiltberger on 2025-12-02 06:45: Grating install not complete for installation / allucent_notes_20251209_203830: David Wiltberger on 2025-12-02 06:45: Grating install not complete for installation / allucent_notes_20251202_153722: David Wiltberger on 2025-12-02 06:45: Grating install not complete for installation / allucent_notes_20251014_152335: David Wiltberger on 2025-08-19 09:08: changed pick order / David Wiltberger on 2025-09-02 10:09: Moving to accommodate roofing in Zone 1 / David Wiltberger on 2025-09-24 04:09: BAM not completed Potential Delay / David Wiltberger on 2025-09-30 12:09: BAM did not complete / David Wiltberger on 2025-10-14 10:10: set on recovery schedule / allucent_notes: David Wiltberger on 2025-08-19 09:08: changed pick order / allucent_notes: 2025-12-02 06:45 - User: David Wiltberger - Date Added: 2025-12-02 06:45 - Note: Grating install not complete for installation
- QTS-1001980: allucent_notes_20251216_165335: David Wiltberger on 2025-12-02 06:45: Grating install not complete for installation / allucent_notes_20251209_203830: David Wiltberger on 2025-12-02 06:45: Grating install not complete for installation / allucent_notes_20251202_153722: David Wiltberger on 2025-12-02 06:45: Grating install not complete for installation / allucent_notes_20251014_152335: David Wiltberger on 2025-08-19 09:08: changed pick order / David Wiltberger on 2025-09-02 10:09: Moving to accommodate roofing in Zone 1 / David Wiltberger on 2025-09-24 04:09: BAM not completed Potential Delay / David Wiltberger on 2025-09-30 12:09: BAM did not complete / David Wiltberger on 2025-10-14 10:10: set on recovery schedule / allucent_notes: David Wiltberger on 2025-08-19 09:08: changed pick order / allucent_notes: 2025-12-02 06:45 - User: David Wiltberger - Date Added: 2025-12-02 06:45 - Note: Grating install not complete for installation
- QTS-1001990: allucent_notes_20251216_165335: David Wiltberger on 2025-12-02 06:45: Grating install not complete for installation / allucent_notes_20251209_203830: David Wiltberger on 2025-12-02 06:45: Grating install not complete for installation / allucent_notes_20251202_153722: David Wiltberger on 2025-12-02 06:45: Grating install not complete for installation / allucent_notes_20251014_152335: David Wiltberger on 2025-08-19 09:08: changed pick order / David Wiltberger on 2025-09-02 10:09: Moving to accommodate roofing in Zone 1 / David Wiltberger on 2025-09-24 04:09: BAM not completed Potential Delay / David Wiltberger on 2025-09-30 12:09: BAM did not complete / David Wiltberger on 2025-10-14 10:10: set on recovery schedule / allucent_notes: David Wiltberger on 2025-08-19 09:08: changed pick order / allucent_notes: 2025-12-02 06:45 - User: David Wiltberger - Date Added: 2025-12-02 06:45 - Note: Grating install not complete for installation
- QTS-1002000: allucent_notes_20251216_165335: David Wiltberger on 2025-12-02 06:45: Grating install not complete for installation / allucent_notes_20251209_203830: David Wiltberger on 2025-12-02 06:45: Grating install not complete for installation / allucent_notes_20251202_153722: David Wiltberger on 2025-12-02 06:45: Grating install not complete for installation / allucent_notes_20251014_152335: David Wiltberger on 2025-08-19 09:08: changed pick order / David Wiltberger on 2025-09-02 10:09: Moving to accommodate roofing in Zone 1 / David Wiltberger on 2025-09-24 04:09: BAM not completed Potential Delay / David Wiltberger on 2025-09-30 12:09: BAM did not complete / David Wiltberger on 2025-10-14 10:10: set on recovery schedule / allucent_notes: David Wiltberger on 2025-08-19 09:08: changed pick order / allucent_notes: 2025-12-02 06:45 - User: David Wiltberger - Date Added: 2025-12-02 06:45 - Note: Grating install not complete for installation
- QTS-42551: allucent_notes_20251021_145627: Jason Johnston on 2025-10-14 09:10: Rain delays / allucent_notes_20251014_152335: Jason Johnston on 2025-10-14 09:10: Rain delays / allucent_notes: 2025-10-14 09:10 - User: Jason Johnston - Date Added: 2025-10-14 09:10 - Note: Rain delays
- QTS-42881: allucent_notes_20251230_164549: David Wiltberger on 2025-12-30 16:25: no update / allucent_notes: 2025-12-30 16:25 - User: David Wiltberger - Date Added: 2025-12-30 16:25 - Note: no update

| ID | WBS | Activity | Duration | Start | Finish | Predecessors | Complete | Planned start | Planned finish | Total float | Free float | Calendar | Notes | Layton Discipline | TFO-CONST ONLY | Contract | NICK | Location | Layton Super | Trade Partner |
| --- | --- | --- | --- | --- | --- | --- | --- | --- | --- | --- | --- | --- | --- | --- | --- | --- | --- | --- | --- | --- |
|  | 6 | **Data Hall 1300 TFO** |  | 2025-11-11 | 2026-09-24 |  |  |  |  |  |  |  |  |  |  |  |  |  |  |  |
|  | 1 | **1300 - TFO Scope Buildout (3MW) - Lineup A - B** |  | 2025-11-11 | 2026-09-19 |  |  |  |  |  |  |  |  |  |  |  |  |  |  |  |
| QTS - 8860 |  | TFO Scope // DH 1300 / Lineup A - B / Install HAC Support Steel | 5d | 2025-11-11 A | 2025-11-11 A | QTS - 8250 | 100% | 2025-11-11 | 2025-11-17 |  |  | **GLOBAL - 5 Day Workweek w/ Basic Holidays | Changed 7-5 Days Tied to 6930 | Build Out | TFO CONST | TFO | NICK |  |  |  |
| QTS - 9230 |  | TFO Scope // DH 1300 / Lineup A - B / Uncrate QCools with HACs | 1d | 2026-07-08 A | 2026-07-08 A | QTS - 1020, QTS - 7100 | 100% | 2026-07-15 | 2026-07-15 |  |  | QTS-PHX3 DC1 - 6 day w/ Holidays |  | Mechanical | TFO CONST | TFO | NICK | DH1300 | Mechanical |  |
| QTS - 10050 |  | TFO Scope // DH 1300 / Lineup A - B / Install LV Cable Tray | 15d | 2026-08-19 | 2026-09-04 | QTS - 8890 FF, QTS-1013890 |  |  |  | -63d | 0d | QTS-PHX3 DC1 - 6 day w/ Holidays |  | LV | TFO CONST | TFO | NICK | DH1300 | Low Voltage | Prime |
| QTS - 8890 |  | TFO Scope // DH 1300 / Lineup A - B / Install LV Cable Tray Racks - Delayed by E2 - Linx Taking over | 4d | 2026-08-19 | 2026-08-22 | QTS - 9230, QTS-1013890 |  |  |  | -52d | 11d | QTS-PHX3 DC1 - 6 day w/ Holidays |  | LV | TFO CONST | TFO | NICK | DH1300 | Low Voltage | Prime |
| QTS - 9070 |  | TFO Scope // DH 1300 / Lineup A - B / Terminate I&C | 5d | 2026-08-28 | 2026-09-02 | QTS - 2620, QTS - 25921, QTS-1013890 |  |  |  | -23d | 0d | QTS-PHX3 DC1 - 6 day w/ Holidays |  | LV | TFO CONST | TFO | NICK | DH1300 | Low Voltage | Prime |
| QTS - 8930 |  | TFO Scope // DH 1300 / Lineup A - B / Pull LV Wire | 2d | 2026-09-05 | 2026-09-08 | QTS - 10050, QTS - 6290 |  |  |  | -63d | 0d | QTS-PHX3 DC1 - 6 day w/ Holidays |  | LV | TFO CONST | TFO | NICK | DH1300 | Low Voltage | Prime |
| QTS - 8950 |  | TFO Scope // DH 1300 / Lineup A - B / Terminate LV | 10d | 2026-09-09 | 2026-09-19 | QTS - 8930 |  |  |  | -59d | 16d | QTS-PHX3 DC1 - 6 day w/ Holidays |  | LV | TFO CONST | TFO | NICK | DH1300 | Low Voltage | Prime |
|  | 3 | **1300 - TFO Scope Buildout (3MW) - Lineup C - D** |  | 2025-11-12 | 2026-09-22 |  |  |  |  |  |  |  |  |  |  |  |  |  |  |  |
| QTS - 9320 |  | TFO Scope // DH 1300 / Lineup C - D / Install HAC Support Steel | 5d | 2025-11-12 A | 2025-11-12 A | QTS - 8860 | 100% | 2025-11-12 | 2025-11-18 |  |  | **GLOBAL - 5 Day Workweek w/ Basic Holidays | Changed 7-5 Days | Build Out | TFO CONST | TFO | NICK |  |  |  |
| QTS - 9490 |  | TFO Scope // DH 1300 / Lineup C - D / Uncrate QCools with HACs | 1d | 2026-07-08 A | 2026-07-08 A | QTS - 1020, QTS - 9230 | 100% | 2026-07-16 | 2026-07-16 |  |  | QTS-PHX3 DC1 - 6 day w/ Holidays |  | Mechanical | TFO CONST | TFO | NICK | DH1300 | Mechanical |  |
| QTS - 9450 |  | TFO Scope // DH 1300 / Lineup C - D / Terminate I&C | 5d | 2026-09-03 | 2026-09-09 | QTS - 9070, QTS - 25921 |  |  |  | -23d | 0d | QTS-PHX3 DC1 - 6 day w/ Holidays |  | LV | TFO CONST | TFO | NICK | DH1300 | Low Voltage | Prime |
| QTS - 9390 |  | TFO Scope // DH 1300 / Lineup C - D / Pull LV Wire | 2d | 2026-09-09 | 2026-09-10 | QTS - 6750, QTS - 8930 |  |  |  | -63d | 0d | QTS-PHX3 DC1 - 6 day w/ Holidays |  | LV | TFO CONST | TFO | NICK | DH1300 | Low Voltage | Prime |
| QTS - 9410 |  | TFO Scope // DH 1300 / Lineup C - D / Terminate LV | 10d | 2026-09-11 | 2026-09-22 | QTS - 9390 |  |  |  | -61d | 14d | QTS-PHX3 DC1 - 6 day w/ Holidays |  | LV | TFO CONST | TFO | NICK | DH1300 | Low Voltage | Prime |
|  | 2 | **1300 - TFO Scope Buildout (3MW) - Lineup E - F** |  | 2025-11-13 | 2026-09-24 |  |  |  |  |  |  |  |  |  |  |  |  |  |  |  |
| QTS - 9550 |  | TFO Scope // DH 1300 / Lineup E - F / Install HAC Support Steel | 5d | 2025-11-13 A | 2025-12-05 A | QTS - 9320 | 100% | 2025-11-13 | 2025-11-19 |  |  |  | Changed 7-5 Days | Build Out | TFO CONST | TFO | NICK |  |  |  |
| QTS - 9720 |  | TFO Scope // DH 1300 / Lineup E - F / Uncrate QCools with HACs | 1d | 2026-07-08 A | 2026-07-08 A | QTS - 9550 | 100% | 2026-07-17 | 2026-07-17 |  |  | QTS-PHX3 DC1 - 6 day w/ Holidays |  | Mechanical | TFO CONST | TFO | NICK | DH1300 | Mechanical |  |
| QTS - 9680 |  | TFO Scope // DH 1300 / Lineup E - F / Terminate I&C | 5d | 2026-09-10 | 2026-09-15 | QTS - 9450, QTS - 25921 |  |  |  | -23d | 44d | QTS-PHX3 DC1 - 6 day w/ Holidays |  | LV | TFO CONST | TFO | NICK | DH1300 | Low Voltage | Prime |
| QTS - 9620 |  | TFO Scope // DH 1300 / Lineup E - F / Pull LV Wire | 2d | 2026-09-11 | 2026-09-12 | QTS - 6980, QTS - 9390 |  |  |  | -63d | 0d | QTS-PHX3 DC1 - 6 day w/ Holidays |  | LV | TFO CONST | TFO | NICK | DH1300 | Low Voltage | Prime |
| QTS - 9640 |  | TFO Scope // DH 1300 / Lineup E - F / Terminate LV | 10d | 2026-09-14 | 2026-09-24 | QTS - 9620 |  |  |  | -63d | 12d | QTS-PHX3 DC1 - 6 day w/ Holidays |  | LV | TFO CONST | TFO | NICK | DH1300 | Low Voltage | Prime |
|  | 11 | **Gallery 1303 Mechanical TFO** |  | 2026-07-15 | 2026-07-17 |  |  |  |  |  |  |  |  |  |  |  |  |  |  |  |
|  | 10 | **TFO 1303 - CDU Mechanical Gallery** |  | 2026-07-15 | 2026-07-17 |  |  |  |  |  |  |  |  |  |  |  |  |  |  |  |
| QTS - 9780 |  | TFO Scope // DH 1300 - 1303 Mechanical Gallery / OFCI - L2 SET IN PLACE - CDU - 9 units | 3d | 2026-07-15 A | 2026-07-17 A | QTS - 26131 | 100% |  |  |  |  | QTS-PHX3 DC1 - 6 day w/ Holidays |  | Mechanical | TFO CONST | TFO | NICK | DH1300 | Mechanical |  |

Notes:
- QTS - 8860: Scheduler Notes: Changed 7-5 Days Tied to 6930
- QTS - 9320: Scheduler Notes: Changed 7-5 Days
- QTS - 9550: Scheduler Notes: Changed 7-5 Days

| ID | WBS | Activity | Duration | Start | Finish | Predecessors | Complete | Total float | Free float | Calendar | Layton Discipline | Location | Layton Super | TFO-CONST ONLY | Contract | NICK | Project Section | Baseline | Phase-1-1 | Project Section-1 | Level | Layton PM | Trade Partner | No PreUp |
| --- | --- | --- | --- | --- | --- | --- | --- | --- | --- | --- | --- | --- | --- | --- | --- | --- | --- | --- | --- | --- | --- | --- | --- | --- |
|  | 10 | **Gallery 1301 Mechanical TFO** |  | 2026-07-15 | 2026-07-17 |  |  |  |  |  |  |  |  |  |  |  |  |  |  |  |  |  |  |  |
|  | 9 | **TFO 1301 - CDU Mechanical Gallery** |  | 2026-07-15 | 2026-07-17 |  |  |  |  |  |  |  |  |  |  |  |  |  |  |  |  |  |  |  |
| QTS - 8990 |  | TFO Scope // DH 1300 - 1301 Mechanical Gallery / OFCI - L2 SET IN PLACE - CDU - 9 units | 3d | 2026-07-15 A | 2026-07-17 A | QTS - 26131 | 100% |  |  | QTS-PHX3 DC1 - 6 day w/ Holidays | Mechanical | DH1300 | Mechanical | TFO CONST | TFO | NICK |  |  |  |  |  |  |  |  |
|  | 23 | **DH 1300 Close Out** |  | 2026-10-09 | 2026-11-12 |  |  |  |  |  |  |  |  |  |  |  |  |  |  |  |  |  |  |  |
| QTS-1481 |  | DH 1300 / Closeout // LCC Worklist | 15d | 2026-10-09 | 2026-10-29 | QTS-13451, QTS-2161, QTS-1000970, QTS-22821, QTS-1003320, QTS-1003350, QTS-1003330, QTS-102560, QTS-102610, QTS-13441, QTS-13451 FF, QTS-13101, QTS-1003850, QTS-1003820, QTS-1003880, QTS-13931, QTS-1003970, QTS-13921, QTS-3970 |  | -72d | 0d |  | Closeout |  | Jake Shimmin |  | BAB |  | Close Out | IGMP | Phase 3 | Close Out | Level 1 | TTodaro | Layton |  |
| QTS-3341 |  | DH 1300 / Closeout // Final Clean | 5d | 2026-10-23 | 2026-10-29 | QTS-1481 FF, QTS-1481 SS, QTS-3040, QTS-3920, QTS-3590, QTS-3285 |  | -72d | 0d |  | Closeout |  | Jake Shimmin |  | BAB |  | Close Out | IGMP | Phase 3 | Close Out | Level 1 | TTodaro | Layton |  |
| QTS-4491 |  | DH 1300 / Closeout // A/E Punch List | 10d | 2026-10-30 | 2026-11-12 | QTS-102610, QTS-3341 |  | -72d | 0d |  | Closeout |  |  |  | BAB |  | Close Out | IGMP | Phase 3 | Close Out | Level 1 | TTodaro | Layton |  |
|  | 24 | **Data Hall 1300 Commissioning** |  | 2026-09-01 | 2026-11-19 |  |  |  |  |  |  |  |  |  |  |  |  |  |  |  |  |  |  |  |
|  | 6 | **1300 Path to Power (FTE)** |  | 2026-09-01 | 2026-11-19 |  |  |  |  |  |  |  |  |  |  |  |  |  |  |  |  |  |  |  |
| QTS-4430 |  | DH 1300 / L2 Checklist MV-XFMR | 1d | 2026-09-01 | 2026-09-01 | QTS-3055, QTS-3160, QTS-6620, QTS-3490, QTS-3405, QTS-4100, QTS-4190, QTS-1008040, QTS-1008500, QTS-1008410, QTS-1008150, QTS-1008290, QTS-1008460, QTS-1008350, QTS-1008230, QTS-1010210, QTS-1001220, QTS-4480, QTS-1008190 |  | -69d | 0d | **GLOBAL - 5 Day Workweek w/ Basic Holidays | Commissioning |  | Commissioning |  | BAB |  |  |  |  |  |  |  | REI/Layton | NO |
| QTS-6160 |  | DH 1300 / L2 Checklist SWD-BUS | 1d | 2026-09-01 | 2026-09-01 | QTS-4430 SS, QTS-1008060, QTS-1008170, QTS-1008250, QTS-1008310, QTS-1008370, QTS-1008430, QTS-1008480, QTS-1008080 |  | -69d | 0d | **GLOBAL - 5 Day Workweek w/ Basic Holidays | Commissioning |  | Commissioning |  | BAB |  |  |  |  |  |  |  | REI/Layton | NO |
| QTS-6140 |  | DH 1300 / Pre Energization Inspection MV-XFMR | 1d | 2026-09-02 | 2026-09-02 | QTS-4430 |  | -65d | 0d | **GLOBAL - 5 Day Workweek w/ Basic Holidays | Commissioning |  | Commissioning |  | BAB |  |  |  |  |  |  |  | REI/Layton | NO |
| QTS-6170 |  | DH 1300 / Pre Energization Inspection SWD-BUS | 1d | 2026-09-02 | 2026-09-02 | QTS-6160 |  | -65d | 0d | **GLOBAL - 5 Day Workweek w/ Basic Holidays | Commissioning |  | Commissioning |  | BAB |  |  |  |  |  |  |  | REI/Layton | NO |
| QTS-6190 |  | DH 1300 / L2 Checklist MOD-01 | 1d | 2026-09-02 | 2026-09-02 | QTS-6160, QTS-4430, QTS-13581 |  | -69d | 0d | **GLOBAL - 5 Day Workweek w/ Basic Holidays | Commissioning |  | Commissioning |  | BAB |  |  |  |  |  |  |  | REI/Layton | NO |
| QTS-6220 |  | DH 1300 / L2 Checklist POD / AHU | 1d | 2026-09-02 | 2026-09-02 | QTS-6190 SS |  | -69d | 0d | **GLOBAL - 5 Day Workweek w/ Basic Holidays | Commissioning |  | Commissioning |  | BAB |  |  |  |  |  |  |  | REI/Layton | NO |
| QTS-1014430 |  | DH 1300 / L2 Checklist SCPs | 1d | 2026-09-03 | 2026-09-03 | QTS-3170 |  | -41d | 0d | **GLOBAL - 5 Day Workweek w/ Basic Holidays | Commissioning |  | Commissioning |  | BAB |  |  |  |  |  |  |  | REI/Layton | NO |
| QTS-4170 |  | DH 1300 / DCIM L3 Network Live (QTS Install) | 3d | 2026-09-03 | 2026-09-08 | QTS-6630, QTS-3180, QTS-3535, QTS-4165 |  | -64d | 5d | **GLOBAL - 5 Day Workweek w/ Basic Holidays | Commissioning |  | Low Voltage |  | BAB |  |  |  |  |  |  |  | E2/QTS |  |
| QTS-6150 |  | DH 1300 / First Time Energization MV-XFMR | 1d | 2026-09-03 | 2026-09-03 | QTS-6140, QTS-1004770 |  | -65d | 0d | **GLOBAL - 5 Day Workweek w/ Basic Holidays | Commissioning |  | Mechanical |  | BAB |  |  |  |  |  |  |  | REI/Layton |  |
| QTS-6180 |  | DH 1300 / First Time Energization SWD-BUS | 1d | 2026-09-03 | 2026-09-03 | QTS-6170, QTS-6150 SS, QTS-6150 FF |  | -65d | 0d | **GLOBAL - 5 Day Workweek w/ Basic Holidays | Commissioning |  | Electrical |  | BAB |  |  |  |  |  |  |  | REI/Layton | NO |
| QTS-6200 |  | DH 1300 / Pre Energization Inspection MOD-01 | 1d | 2026-09-03 | 2026-09-03 | QTS-6190 |  | -65d | 0d | **GLOBAL - 5 Day Workweek w/ Basic Holidays | Commissioning |  | Commissioning |  | BAB |  |  |  |  |  |  |  | REI/Layton | NO |
| QTS-6230 |  | DH 1300 / Pre Energization Inspection POD / AHU | 1d | 2026-09-03 | 2026-09-03 | QTS-6220 |  | -43d | 0d | **GLOBAL - 5 Day Workweek w/ Basic Holidays | Commissioning |  | Commissioning |  | BAB |  |  |  |  |  |  |  | REI/Layton | NO |
| QTS-6250 |  | DH 1300 / L2 Checklist UPS-M | 1d | 2026-09-03 | 2026-09-03 | QTS-6220, QTS-6190 SS, QTS-13581 |  | -69d | 0d | **GLOBAL - 5 Day Workweek w/ Basic Holidays | Commissioning |  | Commissioning |  | BAB |  |  |  |  |  |  |  | REI/Layton | NO |
| QTS-1014440 |  | DH 1300 / Pre Energization Inspection SCPs | 1d | 2026-09-04 | 2026-09-04 | QTS-1014430 |  | -41d | 0d | **GLOBAL - 5 Day Workweek w/ Basic Holidays | Commissioning |  | Commissioning |  | BAB |  |  |  |  |  |  |  | REI/Layton | NO |
| QTS-6210 |  | DH 1300 / First Time Energization MOD-01 | 1d | 2026-09-04 | 2026-09-04 | QTS-6200, QTS-6180 |  | -65d | 0d | **GLOBAL - 5 Day Workweek w/ Basic Holidays | Commissioning |  | Electrical |  | BAB |  |  |  |  |  |  |  | REI/Layton | NO |
| QTS-6240 |  | DH 1300 / First Time Energization POD / AHU | 1d | 2026-09-04 | 2026-09-04 | QTS-6230, QTS-6210 SS, QTS-6210 FF |  | -43d | 6d | **GLOBAL - 5 Day Workweek w/ Basic Holidays | Commissioning |  | Electrical |  | BAB |  |  |  |  |  |  |  | REI/Layton | NO |
| QTS-6260 |  | DH 1300 / Pre Energization Inspection UPS-M | 1d | 2026-09-04 | 2026-09-04 | QTS-6250, QTS-6210 FF |  | -65d | 0d | **GLOBAL - 5 Day Workweek w/ Basic Holidays | Commissioning |  | Commissioning |  | BAB |  |  |  |  |  |  |  | REI/Layton | NO |
| QTS-6280 |  | DH 1300 / L2 Checklist CHWP | 1d | 2026-09-04 | 2026-09-04 | QTS-6250, QTS-1008690 |  | -69d | 0d | **GLOBAL - 5 Day Workweek w/ Basic Holidays | Commissioning |  | Commissioning |  | BAB |  |  |  |  |  |  |  | REI/Layton | NO |
| QTS-1014450 |  | DH 1300 / First Time Energization SCPs | 1d | 2026-09-08 | 2026-09-08 | QTS-1014440 |  | -41d | 22d | **GLOBAL - 5 Day Workweek w/ Basic Holidays | Commissioning |  | Commissioning |  | BAB |  |  |  |  |  |  |  | REI/Layton | NO |
| QTS-6270 |  | DH 1300 / First Time Energization UPS-M | 1d | 2026-09-08 | 2026-09-08 | QTS-6260, QTS-6210 SS |  | -65d | 0d | **GLOBAL - 5 Day Workweek w/ Basic Holidays | Commissioning |  | Electrical |  | BAB |  |  |  |  |  |  |  | REI/Layton | NO |
| QTS-6290 |  | DH 1300 / Pre Energization Inspection CHWP | 1d | 2026-09-08 | 2026-09-08 | QTS-6280 |  | -65d | 0d | **GLOBAL - 5 Day Workweek w/ Basic Holidays | Commissioning |  | Commissioning |  | BAB |  |  |  |  |  |  |  | REI/Layton | NO |
| QTS-6310 |  | DH 1300 / L2 Checklist MOD-02 | 1d | 2026-09-08 | 2026-09-08 | QTS-6250, QTS-3405, QTS-6280 |  | -69d | 0d | **GLOBAL - 5 Day Workweek w/ Basic Holidays | Commissioning |  | Commissioning |  | BAB |  |  |  |  |  |  |  | REI/Layton | NO |
| QTS-6340 |  | DH 1300 / L2 Checklist MOD-03 | 1d | 2026-09-08 | 2026-09-08 | QTS-6250, QTS-3405, QTS-6280 |  | -27d | 0d | **GLOBAL - 5 Day Workweek w/ Basic Holidays | Commissioning |  | Commissioning |  | BAB |  |  |  |  |  |  |  | REI/Layton | NO |
| QTS-6300 |  | DH 1300 / First Time Energization CHWP | 1d | 2026-09-09 | 2026-09-09 | QTS-6290, QTS-6270 |  | -65d | 4d | **GLOBAL - 5 Day Workweek w/ Basic Holidays | Commissioning |  | Electrical |  | BAB |  |  |  |  |  |  |  | REI/Layton | NO |
| QTS-6320 |  | DH 1300 / Pre Energization Inspection MOD-02 | 1d | 2026-09-09 | 2026-09-09 | QTS-6310 |  | -27d | 0d | **GLOBAL - 5 Day Workweek w/ Basic Holidays | Commissioning |  | Commissioning |  | BAB |  |  |  |  |  |  |  | REI/Layton | NO |
| QTS-6350 |  | DH 1300 / Pre Energization Inspection MOD-03 | 1d | 2026-09-09 | 2026-09-09 | QTS-6340 |  | -27d | 0d | **GLOBAL - 5 Day Workweek w/ Basic Holidays | Commissioning |  | Commissioning |  | BAB |  |  |  |  |  |  |  | REI/Layton | NO |
| QTS-6370 |  | DH 1300 / L2 Checklist CRAHs | 2d | 2026-09-09 | 2026-09-10 | QTS-3470, QTS-6130, QTS-3415, QTS-4090, QTS-6310, QTS-46761, QTS-50281 |  | -69d | 0d | **GLOBAL - 5 Day Workweek w/ Basic Holidays | Commissioning |  | Commissioning |  | BAB |  |  |  |  |  |  |  | REI/Layton | NO |
| QTS-6430 |  | DH 1300 / L2 Checklist CDU | 1d | 2026-09-09 | 2026-09-09 | QTS-3425, QTS-4100, QTS-6340 |  | -22d | 0d | **GLOBAL - 5 Day Workweek w/ Basic Holidays | Commissioning |  | Commissioning |  | BAB |  |  |  |  |  |  |  | REI/Layton | NO |
| QTS-6570 |  | DH 1300 / L2 Checklist DOAs | 1d | 2026-09-09 | 2026-09-09 | QTS-6310 |  | -12d | 0d | **GLOBAL - 5 Day Workweek w/ Basic Holidays | Commissioning |  | Commissioning |  | BAB |  |  |  |  |  |  |  | REI/Layton | NO |
| QTS-6330 |  | DH 1300 / First Time Energization MOD-02 | 1d | 2026-09-10 | 2026-09-10 | QTS-6320 |  | -27d | 0d | **GLOBAL - 5 Day Workweek w/ Basic Holidays | Commissioning |  | Electrical |  | BAB |  |  |  |  |  |  |  | REI/Layton | NO |
| QTS-6360 |  | DH 1300 / First Time Energization MOD-03 | 1d | 2026-09-10 | 2026-09-10 | QTS-6350 |  | -27d | 0d | **GLOBAL - 5 Day Workweek w/ Basic Holidays | Commissioning |  | Electrical |  | BAB |  |  |  |  |  |  |  | REI/Layton | NO |
| QTS-6440 |  | DH 1300 / Pre Energization Inspection CDU | 1d | 2026-09-10 | 2026-09-10 | QTS-6430 |  | -22d | 0d | **GLOBAL - 5 Day Workweek w/ Basic Holidays | Commissioning |  | Commissioning |  | BAB |  |  |  |  |  |  |  | REI/Layton |  |
| QTS-6580 |  | DH 1300 / Pre Energization Inspection DOAs | 1d | 2026-09-10 | 2026-09-10 | QTS-6570 |  | -12d | 0d | **GLOBAL - 5 Day Workweek w/ Basic Holidays | Commissioning |  | Commissioning |  | BAB |  |  |  |  |  |  |  | REI/Layton |  |
| QTS-1014280 |  | LDH 1300 / L2 Checklist GEN | 1d | 2026-09-11 | 2026-09-11 | QTS-6400 SS, QTS-1008160, QTS-1009160, QTS-1009190, QTS-1008240, QTS-1008300, QTS-1008360, QTS-1008420, QTS-1008470 |  | -28d | 0d | **GLOBAL - 5 Day Workweek w/ Basic Holidays | Commissioning |  | Commissioning |  | BAB |  |  |  |  |  |  |  | REI/Layton | NO |
| QTS-6380 |  | DH 1300 / Pre Energization Inspection CRAHs | 1d | 2026-09-11 | 2026-09-11 | QTS-6370 |  | -14d | 0d | **GLOBAL - 5 Day Workweek w/ Basic Holidays | Commissioning |  | Commissioning |  | BAB |  |  |  |  |  |  |  | REI/Layton |  |
| QTS-6400 |  | DH 1300 / L2 Checklist CHLR | 1d | 2026-09-11 | 2026-09-11 | QTS-6370, QTS-6160, QTS-1008690, QTS-1008660 |  | -69d | 0d | **GLOBAL - 5 Day Workweek w/ Basic Holidays | Commissioning |  | Commissioning |  | BAB |  |  |  |  |  |  |  | REI/Layton | NO |
| QTS-6450 |  | DH 1300 / First Time Energization CDU | 1d | 2026-09-11 | 2026-09-11 | QTS-6440, QTS-6360 |  | -22d | 0d | **GLOBAL - 5 Day Workweek w/ Basic Holidays | Commissioning |  | Electrical |  | BAB |  |  |  |  |  |  |  | REI/Layton | NO |
| QTS-6590 |  | DH 1300 / First Time Energization DOAS | 1d | 2026-09-11 | 2026-09-11 | QTS-6580, QTS-6330 |  | -12d | 2d | **GLOBAL - 5 Day Workweek w/ Basic Holidays | Commissioning |  | Electrical |  | BAB |  |  |  |  |  |  |  | REI/Layton | NO |
| QTS-1013620 |  | TFO Scope / DH 1300 / Startup CDU | 5d | 2026-09-14 | 2026-09-18 | QTS-6450 |  | -22d | 2d | **GLOBAL - 5 Day Workweek w/ Basic Holidays | Commissioning |  | Electrical | TFO CONST | TFO |  |  |  |  |  |  |  | QTS Vendor |  |
| QTS-1014290 |  | DH 1300 / Pre Energization Inspection GEN | 1d | 2026-09-14 | 2026-09-14 | QTS-1014280, QTS-1009190 |  | -28d | 0d | **GLOBAL - 5 Day Workweek w/ Basic Holidays | Commissioning |  | Commissioning |  | BAB |  |  |  |  |  |  |  | REI/Layton |  |
| QTS-6390 |  | DH 1300 / First Time Energization CRAHs | 2d | 2026-09-14 | 2026-09-15 | QTS-6380, QTS-6330 |  | -14d | 0d | **GLOBAL - 5 Day Workweek w/ Basic Holidays | Commissioning |  | Electrical |  | BAB |  |  |  |  |  |  |  | REI/Layton | NO |
| QTS-6410 |  | DH 1300 / Pre Energization Inspection CHLR | 1d | 2026-09-14 | 2026-09-14 | QTS-6400 |  | -69d | 0d | **GLOBAL - 5 Day Workweek w/ Basic Holidays | Commissioning |  | Commissioning |  | BAB |  |  |  |  |  |  |  | REI/Layton |  |
| QTS-6530 |  | DH 1300 / L2 Checklist BSWY | 1d | 2026-09-14 | 2026-09-14 | QTS-6620, QTS-6630, QTS-3160, QTS-6400 |  | -54d | 0d | **GLOBAL - 5 Day Workweek w/ Basic Holidays | Commissioning |  | Commissioning |  | BAB |  |  |  |  |  |  |  | REI/Layton | NO |
| QTS-1014300 |  | DH 1300 / First Time Energization GEN | 1d | 2026-09-15 | 2026-09-15 | QTS-1014290 |  | -28d | 0d | **GLOBAL - 5 Day Workweek w/ Basic Holidays | Commissioning |  | Commissioning |  | BAB |  |  |  |  |  |  |  | REI/Layton | NO |
| QTS-6420 |  | DH 1300 / First Time Energization CHLR | 1d | 2026-09-15 | 2026-09-15 | QTS-6410 |  | -69d | 0d | **GLOBAL - 5 Day Workweek w/ Basic Holidays | Commissioning |  | Electrical |  | BAB |  |  |  |  |  |  |  | REI/Layton | NO |
| QTS-6460 |  | DH 1300 / L2 Checklist ATS/COD (1, 3, 5) | 2d | 2026-09-15 | 2026-09-16 | QTS-3160, QTS-6530, QTS-3210 |  | -54d | 0d | **GLOBAL - 5 Day Workweek w/ Basic Holidays | Commissioning |  | Commissioning |  | BAB |  |  |  |  |  |  |  | REI/Layton | NO |
| QTS-6490 |  | DH 1300 / L2 Checklist ATS/COD (2, 4, 6) | 2d | 2026-09-15 | 2026-09-16 | QTS-3160, QTS-6530, QTS-3210 |  | -54d | 0d | **GLOBAL - 5 Day Workweek w/ Basic Holidays | Commissioning |  | Commissioning |  | BAB |  |  |  |  |  |  |  | REI/Layton | NO |
| QTS-6540 |  | DH 1300 / Pre Energization Inspection BSWY | 1d | 2026-09-15 | 2026-09-15 | QTS-6530 |  | -49d | 0d | **GLOBAL - 5 Day Workweek w/ Basic Holidays | Commissioning |  | Commissioning |  | BAB |  |  |  |  |  |  |  | REI/Layton |  |
| QTS-1013600 |  | DH 1300 / Startup CRAHs | 5d | 2026-09-16 | 2026-09-22 | QTS-6390, QTS-6590 |  | -14d | 0d | **GLOBAL - 5 Day Workweek w/ Basic Holidays | Commissioning |  | Mechanical |  | BAB |  |  |  |  |  |  |  | QTS Vendor |  |
| QTS-1013610 |  | DH 1300 / Startup CHLR | 3d | 2026-09-16 | 2026-09-18 | QTS-6420 |  | -62d | 2d | **GLOBAL - 5 Day Workweek w/ Basic Holidays | Commissioning |  | Mechanical |  | BAB |  |  |  |  |  |  |  | QTS Vendor |  |
| QTS-1014220 |  | DH 1300 / GEN Fire Marshall Inspection | 1d | 2026-09-16 | 2026-09-16 | QTS-1009130, QTS-1014300 |  | -28d | 0d | **GLOBAL - 5 Day Workweek w/ Basic Holidays | Commissioning |  | Commissioning |  | BAB |  |  |  |  |  |  |  | REI/Layton |  |
| QTS-4180 |  | DH 1300 / L3 Contorls Point to Point | 10d | 2026-09-16 | 2026-09-29 | QTS-4170, QTS-6300, QTS-6420, QTS-17241 |  | -69d | 0d | **GLOBAL - 5 Day Workweek w/ Basic Holidays | Commissioning |  | Electrical |  | BAB |  |  |  |  |  |  |  | Prime |  |
| QTS-6550 |  | DH 1300 / First Time Energization BSWY | 1d | 2026-09-16 | 2026-09-16 | QTS-6540, QTS-6240 |  | -49d | 15d | **GLOBAL - 5 Day Workweek w/ Basic Holidays | Commissioning |  | Electrical |  | BAB |  |  |  |  |  |  |  | REI/Layton | NO |
| QTS-6470 |  | DH 1300 / Pre Energization Inspection ATS/COD (1, 3, 5) | 1d | 2026-09-17 | 2026-09-17 | QTS-6460 |  | -51d | 0d | **GLOBAL - 5 Day Workweek w/ Basic Holidays | Commissioning |  | Commissioning |  | BAB |  |  |  |  |  |  |  | REI/Layton |  |
| QTS-6500 |  | DH 1300 / Pre Energization Inspection ATS/COD (2, 4, 6) | 1d | 2026-09-17 | 2026-09-17 | QTS-6490 |  | -51d | 0d | **GLOBAL - 5 Day Workweek w/ Basic Holidays | Commissioning |  | Commissioning |  | BAB |  |  |  |  |  |  |  | REI/Layton |  |
| QTS-1014230 |  | DH 1300 / GEN Fueling | 3d | 2026-09-18 | 2026-09-22 | QTS-1014220 FS+1d |  | -28d | 0d | **GLOBAL - 5 Day Workweek w/ Basic Holidays | Commissioning |  | Commissioning |  | BAB |  |  |  |  |  |  |  | REI/Layton |  |
| QTS-6480 |  | DH 1300 / First Time Energization ATS/COD (1, 3, 5) | 1d | 2026-09-18 | 2026-09-18 | QTS-6470, QTS-1080.6, QTS-1080.5 |  | -51d | 13d | **GLOBAL - 5 Day Workweek w/ Basic Holidays | Commissioning |  | Electrical |  | BAB |  |  |  |  |  |  |  | REI/Layton | NO |
| QTS-6520 |  | DH 1300 / First Time Energization ATS/COD (2, 4, 6) | 1d | 2026-09-18 | 2026-09-18 | QTS-6500, QTS-1080.6, QTS-1080.5 |  | -51d | 13d | **GLOBAL - 5 Day Workweek w/ Basic Holidays | Commissioning |  | Electrical |  | BAB |  |  |  |  |  |  |  | REI/Layton | NO |
| QTS-1014240 |  | DH 1300 / GEN Burns | 4d | 2026-09-23 | 2026-09-28 | QTS-1014230 |  | -28d | 28d | **GLOBAL - 5 Day Workweek w/ Basic Holidays | Commissioning |  | Commissioning |  | BAB |  |  |  |  |  |  |  | REI/Layton | NO |
| QTS-6600 |  | DH 1300 / L2 Checklist RPP | 3d | 2026-10-01 | 2026-10-05 | QTS-3765, QTS-3200, QTS-3210, QTS-6490, QTS-6460 |  | -64d | 0d | **GLOBAL - 5 Day Workweek w/ Basic Holidays | Commissioning |  | Commissioning |  | BAB |  |  |  |  |  |  |  | REI/Layton | NO |
| QTS-3960 |  | DH 1300 / Data Hall 1300 / Water Test and Balance | 5d | 2026-10-03 | 2026-10-08 | QTS-3845, QTS-4180 SS+5d |  | -75d | 0d | **GLOBAL - 6 Day Workweek w/ Basic Holidays | Commissioning |  | Mechanical |  | BAB |  |  |  |  |  |  |  | Able |  |

| ID | WBS | Activity | Duration | Start | Finish | Predecessors | Complete | Planned start | Planned finish | Total float | Free float | Calendar | Layton Discipline | Layton Super | Contract | Trade Partner | TFO-CONST ONLY | NICK | Project Section | Baseline | Phase-1-1 | Project Section-1 | Location | Allucent CSI Group | Level | Notes |
| --- | --- | --- | --- | --- | --- | --- | --- | --- | --- | --- | --- | --- | --- | --- | --- | --- | --- | --- | --- | --- | --- | --- | --- | --- | --- | --- |
| QTS-3970 |  | DH 1300 / Air Test and Balance | 5d | 2026-10-03 | 2026-10-08 | QTS-3855, QTS-3845, QTS-4180, QTS-1013610 |  |  |  | -86d | 0d | **GLOBAL - 6 Day Workweek w/ Basic Holidays | Commissioning | Mechanical | BAB | Able |  |  |  |  |  |  |  |  |  |  |
| QTS-6610 |  | DH 1300 / Pre Energization Inspection RPP | 1d | 2026-10-06 | 2026-10-06 | QTS-6600 |  |  |  | -64d | 0d | **GLOBAL - 5 Day Workweek w/ Basic Holidays | Commissioning | Commissioning | BAB | REI/Layton |  |  |  |  |  |  |  |  |  |  |
| QTS-6640 |  | DH 1300 / First Time Energization RPP | 1d | 2026-10-07 | 2026-10-07 | QTS-6610 |  |  |  | -64d | 0d | **GLOBAL - 5 Day Workweek w/ Basic Holidays | Commissioning | Electrical | BAB | REI/Layton |  |  |  |  |  |  |  |  |  |  |
| QTS-3980 |  | DH 1300 / Data Hall 1300 / L4 Electrical | 18d | 2026-10-09 | 2026-10-29 | QTS-3960, QTS-3970, QTS - 8950, QTS - 9410, QTS - 9640, QTS-1014450 |  |  |  | -75d | 2d | **GLOBAL - 6 Day Workweek w/ Basic Holidays | Commissioning | Electrical | BAB | ERS |  |  |  |  |  |  |  |  |  |  |
| QTS-3990 |  | DH 1300 / Data Hall 1300 / L4 Mechanical | 18d | 2026-10-12 | 2026-10-31 | QTS-3960, QTS-3970, QTS-3940 |  |  |  | -77d | 0d | **GLOBAL - 6 Day Workweek w/ Basic Holidays | Commissioning | Mechanical | BAB | ERS |  |  |  |  |  |  |  |  |  |  |
| QTS-4000 |  | DH 1300 / Data Hall 1300 / Air Cooled RVT/ IST | 2d | 2026-11-01 | 2026-11-02 | QTS-3980, QTS-3990, QTS-44571 |  |  |  | -90d | 0d | **GLOBAL - 7 Day Workweek w/ Basic Holidays | Commissioning | Mechanical | BAB | ERS |  |  |  |  |  |  |  |  |  |  |
| QTS-4010 |  | DH 1300 / Data Hall 1300 / L4 TFO Liquid Cooled | 12d | 2026-11-06 | 2026-11-19 | QTS-3365, QTS-3715, QTS-4000, QTS-3875, QTS-3950, QTS - 9680, QTS-17241, QTS-44571, QTS-3445, QTS-4120, QTS - 25921, QTS-2980, QTS-3230, QTS-1014240 |  |  |  | -67d | 0d | **GLOBAL - 6 Day Workweek w/ Basic Holidays | Commissioning | Mechanical | TFO | ERS | TFO CONST | NICK |  |  |  |  |  |  |  |  |
|  | 8 | **Data Hall 2300 (9MW)** |  | 2025-09-04 | 2026-10-27 |  |  |  |  |  |  |  |  |  |  |  |  |  |  |  |  |  |  |  |  |  |
| QTS-2081 |  | DH 2300 // Prime & Paint Exposed Structure | 10d | 2025-09-24 A | 2025-10-07 A | QTS-23261 FF+1d, QTS-23381 | 100% |  |  |  |  |  | Build Out | Doug Hayes | BAB |  |  |  | Construction | IGMP | Phase 3 | Construction | DH2300 |  |  |  |
| QTS-4661 |  | DH 2300 // Install Fire Sprinkler | 8d | 2025-10-08 A | 2025-10-17 A | QTS-23381, QTS-2081 | 100% |  |  |  |  |  | Mechanical |  | BAB |  |  |  | Construction | IGMP | Phase 3 | Construction | DH2300 | 01ADMIN |  |  |
| QTS-6951 |  | DH 2300 // Install Fire Caulking | 4d | 2025-10-08 A | 2025-10-13 A | QTS-4661 SS, QTS-2081 | 100% |  |  |  |  |  | Build Out | Doug Hayes | BAB |  |  |  | Construction | IGMP | Phase 3 | Construction | DH2300 | 01ADMIN |  |  |
| QTS-6941 |  | DH 2300 // Establish Control & Layout Walls | 5d | 2025-10-15 A | 2025-10-21 A | QTS-6951, QTS-2081 | 100% |  |  |  |  |  | Build Out | Doug Hayes | BAB |  |  |  | Construction | IGMP | Phase 3 | Construction | DH2300 | 01ADMIN |  |  |
| QTS-8631 |  | DH 2300 // Perimeter Insulation | 4d | 2025-10-22 A | 2025-10-27 A | QTS-19981, QTS-6941, QTS-6951 | 100% |  |  |  |  |  | Core & Shell |  | BAB |  |  |  | Construction | IGMP | Phase 3 | Construction | DH2300 | 01ADMIN |  |  |
|  | 8 | **Zone 3 Corridor 2307** |  | 2025-10-13 | 2026-09-10 |  |  |  |  |  |  |  |  |  |  |  |  |  |  |  |  |  |  |  |  |  |
| QTS-19981 |  | Zone 3 Gridlines 30-41 Corridor 2307 // Frame Exterior Walls | 2d | 2025-10-13 A | 2025-10-14 A | QTS-23381, QTS-23261, QTS-19611 | 100% |  |  |  |  |  | Build Out | Doug Hayes | BAB |  |  |  | Construction | IGMP |  |  |  | 01ADMIN | Level 2 |  |
| QTS-102650 |  | Zone 3 Gridlines 30-41 Corridor 2307 // Frame Corridor Walls | 5d | 2025-11-19 A | 2025-11-25 A | QTS-19981 | 100% |  |  |  |  |  | Build Out |  | BAB |  |  |  | Construction | IGMP |  |  |  | 01ADMIN | Level 2 |  |
| QTS-21251 |  | Zone 3 Gridlines 30-41 Corridor 2307 // Top Out Drywall on Exterior Wall | 7d | 2025-11-19 A | 2025-12-10 A | QTS-19981 | 100% | 2025-11-19 | 2025-12-01 |  |  |  | Build Out |  | BAB |  |  |  | Construction | IGMP |  |  |  | 01ADMIN | Level 2 |  |
| QTS-21761 |  | Zone 3 Gridlines 30-41 Corridor 2307 // Tape & Finish Drywall on Exterior Wall - Top Out | 7d | 2025-12-11 A | 2026-01-19 A | QTS-21251 | 100% | 2025-12-11 | 2025-12-18 |  |  | QTS-PHX3 DC1 - 6 day w/ Holidays | Build Out |  | BAB |  |  |  | Construction | IGMP |  |  |  | 01ADMIN | Level 2 |  |
| QTS-22741 |  | Zone 3 Gridlines 30-41 Corridor 2307 // Rough Fire Sprinklers | 5d | 2026-01-14 A | 2026-01-20 A | QTS-102650 | 100% |  |  |  |  | QTS-PHX3 DC1 - 6 day w/ Holidays | Mechanical |  | BAB |  |  |  | Construction | IGMP |  |  |  |  | Level 2 |  |
| QTS-102670 |  | Zone 3 Gridlines 30-41 Corridor 2307 // Top Out on Corridor-2302 Wall - EG Side | 7d | 2026-01-23 A | 2026-01-25 A | QTS-102650 | 100% | 2026-01-23 | 2026-01-30 |  |  | QTS-PHX3 DC1 - 6 day w/ Holidays | Build Out |  | BAB |  |  |  | Construction | IGMP |  |  |  | 01ADMIN | Level 2 |  |
| QTS-102700 |  | Zone 3 Gridlines 30-41 Corridor 2307 // Tape & Finish Remaining Drywall on Corridor Wall - EG Side | 4d | 2026-01-27 A | 2026-03-13 A | QTS-102680 | 100% | 2026-01-27 | 2026-01-30 |  |  | QTS-PHX3 DC1 - 6 day w/ Holidays | Build Out |  | BAB |  |  |  | Construction | IGMP |  |  |  | 01ADMIN | Level 2 |  |
| QTS-1001010 |  | Zone 3 Gridlines 30-41 Corridor 2307 // Install Hangers for Duct Work | 5d | 2026-01-28 A | 2026-02-02 A | QTS-22741, QTS-21251 | 100% |  |  |  |  | QTS-PHX3 DC1 - 6 day w/ Holidays | Mechanical |  | BAB |  |  |  | Construction | IGMP |  |  |  |  | Level 2 |  |
| QTS-20441 |  | Zone 3 Gridlines 30-41 Corridor 2307 // In Wall Rough Electrical | 5d | 2026-02-03 A | 2026-02-03 A | QTS-38981, QTS-19981 | 100% | 2026-02-11 | 2026-02-16 |  |  | QTS-PHX3 DC1 - 6 day w/ Holidays | Electrical |  | BAB |  |  |  | Construction | IGMP |  |  |  | 01ADMIN | Level 2 |  |
| QTS-20961 |  | Zone 3 Gridlines 30-41 Corridor 2307 // In Wall Inspections | 1d | 2026-02-04 A | 2026-02-04 A | QTS-20441 | 100% | 2026-02-17 | 2026-02-17 |  |  | QTS-PHX3 DC1 - 6 day w/ Holidays | Electrical |  | BAB |  |  |  | Construction | IGMP |  |  |  | 01ADMIN | Level 2 |  |
| QTS-21001 |  | Zone 3 Gridlines 30-41 Corridor 2307 // Insulate Corridor Wall | 2d | 2026-02-06 A | 2026-02-07 A | QTS-20961, QTS-102670 | 100% |  |  |  |  | QTS-PHX3 DC1 - 6 day w/ Holidays | Build Out |  | BAB |  |  |  | Construction | IGMP |  |  |  | 01ADMIN | Level 2 |  |
| QTS-102680 |  | Zone 3 Gridlines 30-41 Corridor 2307 // Hang Drywall on Corridor Wall - EG Side - Remaining | 3d | 2026-02-09 A | 2026-02-10 A | QTS-21001 | 100% | 2026-02-09 | 2026-02-11 |  |  | QTS-PHX3 DC1 - 6 day w/ Holidays | Build Out |  | BAB |  |  |  | Construction | IGMP |  |  |  | 01ADMIN | Level 2 |  |
| QTS-22201 |  | Zone 3 Gridlines 30-41 Corridor 2307 // Prime & Paint Exterior Wall - Top Out | 2d | 2026-02-11 A | 2026-02-12 A | QTS-21761 | 100% |  |  |  |  | QTS-PHX3 DC1 - 6 day w/ Holidays | Build Out |  | BAB |  |  |  | Construction | IGMP |  |  |  | 01ADMIN | Level 2 |  |
| QTS-1001020 |  | Zone 3 Gridlines 30-41 Corridor 2307 // Hang Drywall on Exterior Wall - Remaining | 7d | 2026-02-13 A | 2026-02-15 A | QTS-21251, QTS-20441 | 100% | 2026-02-11 | 2026-02-18 |  |  | QTS-PHX3 DC1 - 6 day w/ Holidays | Build Out |  | BAB |  |  |  | Construction | IGMP |  |  |  | 01ADMIN | Level 2 | 2/3/26: Inspections |
| QTS-102660 |  | Zone 3 Gridlines 30-41 Corridor 2307 // Top Out on Corridor-2302 Wall - Corridor Side | 7d | 2026-02-18 A | 2026-02-21 A | QTS-21001, QTS-102650 | 100% | 2026-02-18 | 2026-02-25 |  |  | QTS-PHX3 DC1 - 6 day w/ Holidays | Build Out |  | BAB |  |  |  | Construction | IGMP |  |  |  | 01ADMIN | Level 2 |  |
| QTS-102690 |  | Zone 3 Gridlines 30-41 Corridor 2307 // Hang Drywall on Corridor Wall - Corridor Side - Remaining | 3d | 2026-02-18 A | 2026-02-23 A | QTS-102680, QTS-102660, QTS-21001 | 100% | 2026-02-18 | 2026-02-20 |  |  | QTS-PHX3 DC1 - 6 day w/ Holidays | Build Out |  | BAB |  |  |  | Construction | IGMP |  |  |  | 01ADMIN | Level 2 |  |
| QTS-1003790 |  | Zone 3 Gridlines 30-41 Corridor 2307 // Tape & Finish Drywall on Exterior Wall - Remaining | 4d | 2026-03-11 A | 2026-03-14 A | QTS-1001020 | 100% |  |  |  |  | QTS-PHX3 DC1 - 6 day w/ Holidays | Build Out |  | BAB |  |  |  | Construction | IGMP |  |  |  | 01ADMIN | Level 2 |  |
| QTS-102710 |  | Zone 3 Gridlines 30-41 Corridor 2307 // Tape & Finish Drywall on Corridor Wall - Corridor Side - Remaining | 4d | 2026-03-14 A | 2026-03-18 A | QTS-102690, QTS-102700 | 100% |  |  |  |  | QTS-PHX3 DC1 - 6 day w/ Holidays | Build Out |  | BAB |  |  |  | Construction | IGMP |  |  |  | 01ADMIN | Level 2 |  |
| QTS-102720 |  | Zone 3 Gridlines 30-41 Corridor 2307 // Prime & Paint Corridor Wall - EG Side | 2d | 2026-03-17 A | 2026-03-19 A | QTS-102700 | 100% | 2026-03-17 | 2026-03-18 |  |  | QTS-PHX3 DC1 - 6 day w/ Holidays | Build Out |  | BAB |  |  |  | Construction | IGMP |  |  |  | 01ADMIN | Level 2 |  |
| QTS-1003780 |  | Zone 3 Gridlines 30-41 Corridor 2307 // Prime & Paint Exterior Wall | 2d | 2026-03-18 A | 2026-03-19 A | QTS-1003790 | 100% |  |  |  |  | QTS-PHX3 DC1 - 6 day w/ Holidays | Build Out |  | BAB |  |  |  | Construction | IGMP |  |  |  | 01ADMIN | Level 2 |  |
| QTS-102730 |  | Zone 3 Gridlines 30-41 Corridor 2307 // Prime & Paint Corridor Walls - Corridor Side - Remaining | 2d | 2026-03-19 A | 2026-03-20 A | QTS-102710 | 100% |  |  |  |  | QTS-PHX3 DC1 - 6 day w/ Holidays | Build Out |  | BAB |  |  |  | Construction | IGMP |  |  |  | 01ADMIN | Level 2 |  |
| QTS-24651 |  | Zone 3 Gridlines 30-41 Corridor 2307 // Install Fire Alarm Devices | 4d | 2026-03-26 A | 2026-03-26 A | QTS-102730 | 100% | 2026-03-26 | 2026-03-30 |  |  | QTS-PHX3 DC1 - 6 day w/ Holidays | Electrical |  | BAB |  |  |  | Construction | IGMP |  |  |  |  | Level 2 |  |
| QTS-23631 |  | Zone 3 Gridlines 30-41 Corridor 2307 // Rough Overhead Ductwork Gridlines 30-37 | 7d | 2026-04-16 A | 2026-04-28 A | QTS-1001010, QTS-22201, QTS-1003780, QTS-102720 | 100% | 2026-04-16 | 2026-04-23 |  |  | QTS-PHX3 DC1 - 6 day w/ Holidays | Mechanical |  | BAB |  |  |  | Construction | IGMP |  |  |  |  | Level 2 |  |
| QTS-4270 |  | DH 2300 / Corridor 2307 / Pull LV Cable from drops to LV Cable Tray | 2d | 2026-07-15 A | 2026-07-16 A | QTS-102720, QTS-1010170 | 100% | 2026-07-22 | 2026-07-23 |  |  | **GLOBAL - 6 Day Workweek w/ Basic Holidays | LV | Low Voltage | BAB | E2/Prime |  |  |  |  |  |  |  |  |  |  |
| QTS-4240 |  | DH 2300 / Corridor 2307 / Install Alarm Devices | 2d | 2026-07-17 A | 2026-07-18 A | QTS-24751 | 100% | 2026-08-07 | 2026-08-08 |  |  | **GLOBAL - 6 Day Workweek w/ Basic Holidays | Electrical | Electrical | BAB | Nexus |  |  |  |  |  |  |  |  |  |  |
| QTS-4250 |  | DH 2300 / Corridor 2307 / Install Lighting | 4d | 2026-07-22 A | 2026-07-25 A | QTS-4240 | 100% | 2026-07-29 | 2026-08-01 |  |  | **GLOBAL - 6 Day Workweek w/ Basic Holidays | Electrical | Electrical | BAB | REI |  |  |  |  |  |  |  |  |  | Manpower |
| QTS-4230 |  | DH 2300 / Corridor 2307 / Install Security Trim out | 2d | 2026-08-03 A | 2026-08-05 A | QTS-4240 | 100% | 2026-08-05 | 2026-08-06 |  |  | **GLOBAL - 6 Day Workweek w/ Basic Holidays | LV | Low Voltage | BAB | Securitas |  |  |  |  |  |  |  |  |  |  |
| QTS-4310 |  | DH 2300 / Corridor 2307 / Final Paint | 1d | 2026-08-03 A | 2026-08-04 A | QTS-4250 | 100% | 2026-08-07 | 2026-08-07 |  |  | **GLOBAL - 6 Day Workweek w/ Basic Holidays | Build Out | Jason Hendley | BAB | PPC |  |  |  |  |  |  |  |  |  |  |
| QTS-4260 |  | DH 2300 / Corridor 2307 / Install Electircal Trim | 2d | 2026-08-19 | 2026-08-20 | QTS-4250 |  |  |  | -37d | 0d | **GLOBAL - 6 Day Workweek w/ Basic Holidays | Build Out | Electrical | BAB | REI |  |  |  |  |  |  |  |  |  | Pushed due to manpower |
| QTS-4290 |  | DH 2300 / Corridor 2307 / Remove Temp Lighting / Power | 2d | 2026-08-21 | 2026-08-22 | QTS-4250, QTS-4260 |  |  |  | -36d | 14d | **GLOBAL - 6 Day Workweek w/ Basic Holidays | Electrical | Electrical | BAB | REI |  |  |  |  |  |  |  |  |  |  |
| QTS-4300 |  | DH 2300 / Corridor 2307 / Hang Tape and Finish Drywall Patches | 3d | 2026-08-21 | 2026-08-24 | QTS-4260 |  |  |  | -37d | 13d | **GLOBAL - 6 Day Workweek w/ Basic Holidays | Build Out | Jason Hendley | BAB | PCI |  |  |  |  |  |  |  |  |  |  |
| QTS-4280 |  | DH 2300 / Corridor 2307 / Install Fire Extinguishers and Cabinets | 2d | 2026-09-03 | 2026-09-04 | QTS-4310, QTS-3220 |  |  |  | -57d | 0d | **GLOBAL - 6 Day Workweek w/ Basic Holidays | Build Out | Ed Carter | BAB | ISEC |  |  |  |  |  |  |  |  |  |  |
| QTS-4320 |  | DH 2300 / Corridor 2307 / Burnish Concrete Floors | 1d | 2026-09-05 | 2026-09-05 | QTS-4280 |  |  |  | -50d | 0d | **GLOBAL - 6 Day Workweek w/ Basic Holidays | Build Out | Ben Ribble | BAB | Bldg Solutions |  |  |  |  |  |  |  |  |  |  |
| QTS-4330 |  | DH 2300 / Corridor 2307 / Install Rubber Base | 2d | 2026-09-08 | 2026-09-09 | QTS-4320 |  |  |  | -50d | 0d | **GLOBAL - 6 Day Workweek w/ Basic Holidays | Build Out | Ben Ribble | BAB | Wholesale Flooring |  |  |  |  |  |  |  |  |  |  |
| QTS-4340 |  | DH 2300 / Corridor 2307 / Clean | 1d | 2026-09-10 | 2026-09-10 | QTS-4330, QTS-4290, QTS-4230, QTS-4300 |  |  |  | -50d | 30d | **GLOBAL - 6 Day Workweek w/ Basic Holidays | Build Out | Ed Carter | BAB | AGDC |  |  |  |  |  |  |  |  |  |  |

Notes:
- QTS-6941: allucent_notes_20251021_145627: Jason Johnston on 2025-10-14 15:10: Moving out to accommodate acceleration in Zone 1 / Zack Goertz on 2025-10-21T17:24:54.415Z: Layout is complete, Work got shifted to BOH first. / allucent_notes_20251014_152335: Jason Johnston on 2025-10-14 15:10: Moving out to accommodate acceleration in Zone 1 / allucent_notes: 2025-10-14 15:10 - User: Jason Johnston - Date Added: 2025-10-14 15:10 - Note: Moving out to accommodate acceleration in Zone 1 / 2025-10-21T17:24:54.415Z - User: Zack Goertz - Date Added: 2025-10-21T17:24:54.415Z - Note: Layout is complete, Work got shi
- QTS-21251: allucent_notes_20251216_165335: Zack Goertz on 2025-12-01 10:36: Zone 3 is not a priority right now / allucent_notes_20251209_203830: Zack Goertz on 2025-12-01 10:36: Zone 3 is not a priority right now / allucent_notes_20251202_153722: Zack Goertz on 2025-12-01 10:36: Zone 3 is not a priority right now / allucent_notes: 2025-12-01 10:36 - User: Zack Goertz - Date Added: 2025-12-01 10:36 - Note: Zone 3 is not a priority right now
- QTS-21761: allucent_notes_20251230_164549: Jason Johnston on 2025-12-30 16:40: No update / allucent_notes: 2025-12-30 16:40 - User: Jason Johnston - Date Added: 2025-12-30 16:40 - Note: No update
- QTS-102700: allucent_notes_20251202_153722: Zack Goertz on 2025-12-01 10:37: Zone 3 is not a priority right now / allucent_notes: 2025-12-01 10:37 - User: Zack Goertz - Date Added: 2025-12-01 10:37 - Note: Zone 3 is not a priority right now
- QTS-20441: allucent_notes_20251027_224008: Scott Masterson on 2025-10-21 11:10: Layton needs to push these areas with REI. REI has had focus on other areas and REI needs to make up some time to get these areas caught up. / Scott Masterson on 2025-10-21 11:10: REI has been focus in Other areas and need to get caught up here. The Fan wall created a bit of shortage and out of sequence. / allucent_notes_20251021_145627: Scott Masterson on 2025-10-21 11:10: Layton needs to push these areas with REI. REI has had focus on other areas and REI needs to make up some time to get these areas caught up. / Scott Masterson on 2025-10-21 11:10: REI has been focus in Other areas and need to get caught up here. The Fan wall created a bit of shortage and out of sequence. / allucent_notes_20251230_164549: Scott Masterson on 2025-10-21 11:10: Layton needs to push these areas with REI. REI has had focus on other areas and REI needs to make up some time to get these areas caught up. / Scott Masterson on 2025-10-21 11:10: REI has been focus in Other areas and need to get caught up here. The Fan wall created a bit of shortage and out of sequence. / allucent_notes: 2025-10-21 11:10 - User: Scott Masterson - Date Added: 2025-10-21 11:10 - Note: Layton needs to push these areas with REI. REI has had focus on other areas and REI needs to make up some time to get these areas caught up. / 2025-10-21 11:10 - User: Scott
- QTS-1001020: allucent_notes_20251216_165335: Jason Johnston on 2025-12-16 07:51: Man power reallocated to BOH. / allucent_notes_20251209_203830: Zack Goertz on 2025-12-01 10:36: Zone 3 is not a priority right / now / allucent_notes_20251202_153722: Zack Goertz on 2025-12-01 10:36: Zone 3 is not a priority right now / allucent_notes_20251230_164549: Jason Johnston on 2025-12-16 07:51: Man power reallocated to / BOH. / Scheduler Notes: Zack Goertz on 2025-12-01 10:36: Zone 3 is not a priority right now / Jason Johnston on 2025-12-16 07:51: Man power reallocated to BOH. / 2/3/26: Inspections / allucent_notes: 2025-12-16 07:51 - User: Jason Johnston - Date Added: 2025-12-16 07:51 - Note: Man power reallocated to BOH.
- QTS-1003790: allucent_notes_20251230_164549: Jason Johnston on 2025-12-30 16:40: No update / allucent_notes: 2025-12-30 16:40 - User: Jason Johnston - Date Added: 2025-12-30 16:40 - Note: No update
- QTS-102710: allucent_notes_20251202_153722: Zack Goertz on 2025-12-01 10:37: Zone 3 is not a priority right now / allucent_notes: 2025-12-01 10:37 - User: Zack Goertz - Date Added: 2025-12-01 10:37 - Note: Zone 3 is not a priority right now
- QTS-102720: allucent_notes_20251202_153722: Zack Goertz on 2025-12-01 10:37: Zone 3 is not a priority right now / allucent_notes: 2025-12-01 10:37 - User: Zack Goertz - Date Added: 2025-12-01 10:37 - Note: Zone 3 is not a priority right now
- QTS-4260: Scheduler Notes: 8/4/26-Not started due to manpower

| ID | WBS | Activity | Duration | Start | Finish | Predecessors | Complete | Remaining | Planned start | Planned finish | Total float | Free float | Calendar | Project Section | Layton Discipline | Baseline | Location | Level | Fragnet | Owner Impact Analysis | Fragnet Responsible Party | Contract | Note/Comments | Layton Super | Allucent CSI Group | Phase-1-1 | Project Section-1 | TFO-CONST ONLY | Trade Partner | NICK |
| --- | --- | --- | --- | --- | --- | --- | --- | --- | --- | --- | --- | --- | --- | --- | --- | --- | --- | --- | --- | --- | --- | --- | --- | --- | --- | --- | --- | --- | --- | --- |
|  | 1 | **Fragnet / Lack of Manpower** |  | 2026-04-08 | 2026-05-01 |  |  |  |  |  |  |  |  |  |  |  |  |  |  |  |  |  |  |  |  |  |  |  |  |  |
| QTS-1010170 |  | Fragnet / Zone 3 Gridlines 30-41 Corridor 2307 // Lack Of Man Power | 8d | 2026-04-08 A | 2026-05-01 A | QTS-1371 | 100% |  | 2026-04-08 | 2026-04-16 |  |  | QTS-PHX3 DC1 - 6 day w/ Holidays | Construction | Electrical | IGMP | DH2300 | Level 2 | Fragnet | Y | Rosendin Electric Inc. | BAB |  |  |  |  |  |  |  |  |
|  | 2 | **Remaining Scope** |  | 2026-06-03 | 2026-07-14 |  |  |  |  |  |  |  |  |  |  |  |  |  |  |  |  |  |  |  |  |  |  |  |  |  |
| QTS-22921 |  | Zone 3 Gridlines 30-41 Corridor 2307 // Rough Overhead Conduit | 5d | 2026-06-03 A | 2026-07-14 A | QTS-23631, QTS-22201, QTS-102720, QTS-22741 SS+3d | 100% |  | 2026-06-03 | 2026-06-08 |  |  | QTS-PHX3 DC1 - 6 day w/ Holidays | Construction | Electrical | IGMP | DH2300 | Level 2 |  |  |  | BAB | 7/7: Conduit needs entension to basket tray | Oscar Armenta |  |  |  |  |  |  |
| QTS-24731 |  | Zone 3 Gridlines 30-41 Corridor 2307 // Install Basket Tray | 4d | 2026-06-15 A | 2026-06-18 A | QTS-22921 SS | 100% |  | 2026-07-10 | 2026-07-14 |  |  | QTS-PHX3 DC1 - 6 day w/ Holidays | Construction | Electrical | IGMP | DH2300 | Level 2 |  |  |  | BAB |  | Oscar Armenta |  |  |  |  |  |  |
|  | 3 | **Data Hall 2300** |  | 2026-01-25 | 2026-10-22 |  |  |  |  |  |  |  |  |  |  |  |  |  |  |  |  |  |  |  |  |  |  |  |  |  |
| QTS-11291 |  | DH 2300 // Install Hollow Metal Frames (West) | 1d | 2026-01-25 A | 2026-01-25 A | QTS-10581 | 100% |  | 2026-01-26 | 2026-01-26 |  |  | QTS-PHX3 DC1 - 6 day w/ Holidays | Construction | Build Out | IGMP | DH2300 |  |  |  |  | BAB |  |  | 01ADMIN | Phase 3 | Construction |  |  |  |
| QTS-10581 |  | DH 2300 // Frame Data Hall / Corridor Wall 2015-2016 (West) | 5d | 2026-01-26 A | 2026-01-27 A | QTS-8641, QTS-6951 | 100% |  | 2026-01-26 | 2026-01-30 |  |  | QTS-PHX3 DC1 - 6 day w/ Holidays | Construction | Build Out | IGMP | DH2300 |  |  |  |  | BAB |  |  | 01ADMIN | Phase 3 | Construction |  |  |  |
| QTS-102280 |  | DH 2300 // Hang Drywall (West) - Corridor Side | 2d | 2026-01-27 A | 2026-01-28 A | QTS-10581 FF | 100% |  |  |  |  |  | QTS-PHX3 DC1 - 6 day w/ Holidays | Construction | Build Out | IGMP | DH2200 |  |  |  |  | BAB |  |  |  | Phase 2 | Construction |  |  |  |
| QTS-10571 |  | DH 2300 // Frame Data Hall / Corridor Wall 2307 (East) | 5d | 2026-01-27 A | 2026-01-30 A | QTS-8631, QTS-6951, QTS-4661, QTS-6941, QTS-10351 | 100% |  | 2026-01-27 | 2026-01-31 |  |  | QTS-PHX3 DC1 - 6 day w/ Holidays | Construction | Build Out | IGMP | DH2300 |  |  |  |  | BAB |  |  | 01ADMIN | Phase 3 | Construction |  |  |  |
| QTS-102440 |  | DH 2300 // Top Out / Corridor Wall 2307 (East) - Data Hall Side | 3d | 2026-02-03 A | 2026-02-17 A | QTS-10571 | 100% |  | 2026-02-03 | 2026-02-05 |  |  | QTS-PHX3 DC1 - 6 day w/ Holidays | Construction | Build Out | IGMP | DH2100 | Level 2 |  |  |  | BAB |  |  | 01ADMIN |  | Construction |  |  |  |
| QTS-11301 |  | DH 2300 // Rough In-Wall Electrical (East) | 5d | 2026-02-11 A | 2026-03-20 A | QTS-10571, QTS-102440 | 100% |  | 2026-02-11 | 2026-02-16 |  |  | QTS-PHX3 DC1 - 6 day w/ Holidays | Construction | Electrical | IGMP | DH2300 |  |  |  |  | BAB |  |  | 01ADMIN | Phase 3 | Construction |  |  |  |
| QTS-102450 |  | DH 2300 // One Side Data Hall / Corridor Wall 2307 (East) - Data Hall Side | 3d | 2026-02-23 A | 2026-02-26 A | QTS-102440 | 100% |  | 2026-02-23 | 2026-02-25 |  |  | QTS-PHX3 DC1 - 6 day w/ Holidays | Construction | Build Out | IGMP | DH2100 | Level 2 |  |  |  | BAB |  |  | 01ADMIN |  | Construction |  |  |  |
| QTS-102480 |  | DH 2300 // Insulate & Vapor Barrier Data Hall / Corridor Wall 2307 (East) | 2d | 2026-03-31 A | 2026-04-08 A | QTS-102450 | 100% |  | 2026-03-31 | 2026-04-01 |  |  | QTS-PHX3 DC1 - 6 day w/ Holidays | Construction | Build Out | IGMP | DH2100 | Level 2 |  |  |  | BAB |  |  | 01ADMIN |  | Construction |  |  |  |
| QTS-102290 |  | DH 2300 // Tape & Finish Drywall (West) - Corridor Side | 5d | 2026-04-08 A | 2026-04-09 A | QTS-102280, QTS-12691 | 100% |  | 2026-04-08 | 2026-04-13 |  |  | QTS-PHX3 DC1 - 6 day w/ Holidays | Construction | Build Out | IGMP | DH2200 |  |  |  |  | BAB |  |  |  | Phase 2 | Construction |  |  |  |
| QTS-102460 |  | DH 2300 // Tape, & Finish Drywall (East) - Data Hall Side | 5d | 2026-04-08 A | 2026-04-09 A | QTS-102450, QTS-12691 | 100% |  | 2026-04-08 | 2026-04-13 |  |  | QTS-PHX3 DC1 - 6 day w/ Holidays | Construction | Build Out | IGMP | DH2200 |  |  |  |  | BAB |  |  |  | Phase 2 | Construction |  |  |  |
| QTS-11281 |  | DH 2300 // Rough In-Wall Electrical (West) | 5d | 2026-04-08 A | 2026-04-13 A | QTS-38981, QTS-10581, QTS-10571 | 100% |  |  |  |  |  | QTS-PHX3 DC1 - 6 day w/ Holidays | Construction | Electrical | IGMP | DH2300 |  |  |  |  | BAB |  |  | 01ADMIN | Phase 3 | Construction |  |  |  |
| QTS-102300 |  | DH 2300 // Vapor Barrier & Insulation (West) | 2d | 2026-04-10 A | 2026-04-11 A | QTS-102290 | 100% |  |  |  |  |  | QTS-PHX3 DC1 - 6 day w/ Holidays | Construction | Build Out | IGMP | DH2100 | Level 2 |  |  |  | BAB |  |  | 01ADMIN |  | Construction |  |  |  |
| QTS-12451 |  | DH 2300 // Hang Drywall (East) - Corridor Side | 2d | 2026-04-10 A | 2026-04-11 A | QTS-102480, QTS-12261, QTS-11301 FF, QTS-11301 | 100% |  |  |  |  |  | QTS-PHX3 DC1 - 6 day w/ Holidays | Construction | Build Out | IGMP | DH2300 |  |  |  |  | BAB |  |  |  | Phase 3 | Construction |  |  |  |
| QTS-102490 |  | DH 2300 // Frame Data Hall / Corridor Wall 2307 (East) - 14x14 Leave Outs | 1d | 2026-04-13 A | 2026-04-13 A | QTS - 7550 | 100% |  | 2026-07-18 | 2026-07-18 |  |  | QTS-PHX3 DC1 - 6 day w/ Holidays | Construction | Build Out | IGMP | DH2100 | Level 2 |  |  |  | BAB |  | Ed Carter | 01ADMIN |  | Construction |  |  |  |
| QTS-11311 |  | DH 2300 // Install Hollow Metal Frames (East) - 14x14 Leave Out | 1d | 2026-04-13 A | 2026-04-13 A | QTS-102490 FF, QTS-10571 | 100% |  | 2026-07-18 | 2026-07-18 |  |  | QTS-PHX3 DC1 - 6 day w/ Holidays | Construction | Build Out | IGMP | DH2300 |  |  |  |  | BAB |  | Ed Carter | 01ADMIN | Phase 3 | Construction |  |  |  |
| QTS-12261 |  | DH 2300 // In Wall Inspection for Fan Wall | 1d | 2026-04-14 A | 2026-04-14 A | QTS-11301, QTS-11281 | 100% |  |  |  |  |  | QTS-PHX3 DC1 - 6 day w/ Holidays | Construction | Electrical | IGMP | DH2300 |  |  |  |  | BAB |  |  | 01ADMIN | Phase 3 | Construction |  |  |  |
| QTS-102500 |  | DH 2300 // Hang Drywall Data Hall / Corridor Wall 2307 (East) - 14x14 Leave Outs | 1d | 2026-04-15 A | 2026-04-15 A | QTS-11311, QTS-102490 | 100% |  | 2026-07-20 | 2026-07-20 |  |  | QTS-PHX3 DC1 - 6 day w/ Holidays | Construction | Build Out | IGMP | DH2100 | Level 2 |  |  |  | BAB |  | Ed Carter | 01ADMIN |  | Construction |  |  |  |
| QTS-12441 |  | DH 2300 // Hang Drywall (West) - Data Hall Side | 2d | 2026-04-15 A | 2026-04-16 A | QTS-102300, QTS-12261, QTS-11291, QTS-10581, QTS-10571, QTS-11281 | 100% |  |  |  |  |  | QTS-PHX3 DC1 - 6 day w/ Holidays | Construction | Build Out | IGMP | DH2300 |  |  |  |  | BAB |  |  |  | Phase 3 | Construction |  |  |  |
| QTS-12731 |  | DH 2300 // Tape, & Finish Drywall (East) - Corridor Side | 5d | 2026-04-15 A | 2026-04-20 A | QTS-12451 | 100% |  |  |  |  |  | QTS-PHX3 DC1 - 6 day w/ Holidays | Construction | Build Out | IGMP | DH2300 |  |  |  |  | BAB |  |  |  | Phase 3 | Construction |  |  |  |
| QTS-12721 |  | DH 2300 // Tape, & Finish Drywall (West) - Data Hall Side | 5d | 2026-04-17 A | 2026-04-20 A | QTS-12441 | 100% |  | 2026-04-17 | 2026-04-22 |  |  | QTS-PHX3 DC1 - 6 day w/ Holidays | Construction | Build Out | IGMP | DH2300 |  |  |  |  | BAB |  |  |  | Phase 3 | Construction |  |  |  |
| QTS-102510 |  | DH 2300 // Tape & Finish Drywall Data Hall / Corridor Wall 2307 (East) - 14x14 Leave Outs | 5d | 2026-04-20 A | 2026-04-24 A | QTS-102500 | 100% |  | 2026-07-21 | 2026-07-25 |  |  | QTS-PHX3 DC1 - 6 day w/ Holidays | Construction | Build Out | IGMP | DH2100 | Level 2 |  |  |  | BAB |  | Ed Carter | 01ADMIN |  | Construction |  |  |  |
| QTS-102470 |  | DH 2300 // Paint Walls (East) - Data Hall Side | 2d | 2026-05-14 A | 2026-05-15 A | QTS-102460, QTS-102510 | 100% |  |  |  |  |  | QTS-PHX3 DC1 - 6 day w/ Holidays | Construction | Build Out | IGMP | DH2200 |  |  |  |  | BAB |  | Jay Perkins |  | Phase 2 | Construction |  |  |  |
| QTS-1000640 |  | DH 2300 // Install Overhead Conduit - Electrical | 5d | 2026-06-24 A | 2026-07-14 A | QTS-1000590, QTS-120000 | 100% |  | 2026-07-09 | 2026-07-14 |  |  | QTS-PHX3 DC1 - 6 day w/ Holidays | Construction | Electrical | IGMP | DH2100 | Level 2 |  |  |  | BAB | 7/7: FA ran/Needs light pathway | Oscar Armenta | 01ADMIN |  | Construction |  |  |  |
| QTS-13411 |  | DH 2300 // Paint Walls (West) - Corridor Side | 2d | 2026-06-24 A | 2026-06-25 A | QTS-12721, QTS-12441 | 100% |  | 2026-07-01 | 2026-07-02 |  |  | QTS-PHX3 DC1 - 6 day w/ Holidays | Construction | Build Out | IGMP | DH2300 |  |  |  |  | BAB |  | Ed Carter |  | Phase 3 | Construction |  |  |  |
| QTS-13421 |  | DH 2300 // Paint Walls (East) - Corridor Side | 2d | 2026-06-24 A | 2026-06-25 A | QTS-12731, QTS-12451 | 100% |  | 2026-07-01 | 2026-07-02 |  |  | QTS-PHX3 DC1 - 6 day w/ Holidays | Construction | Build Out | IGMP | DH2300 |  |  |  |  | BAB |  | Ed Carter |  | Phase 3 | Construction |  |  |  |
| QTS-1013480 |  | TFO SCOPE \\ DH 2300 / Data Hall 2300 / Pull MC to RPP Racks | 6d | 2026-07-20 A | 2026-07-31 A | QTS-13421, QTS-1000640 | 100% |  | 2026-07-22 | 2026-07-28 |  |  | **GLOBAL - 6 Day Workweek w/ Basic Holidays |  | Mechanical |  |  |  |  |  |  | TFO |  | Electrical |  |  |  | TFO CONST | REI | NICK |
| QTS-5020 |  | TFO SCOPE \\ DH 2300 / Install Technical Loop Piping (Stainless) | 10d | 2026-08-01 A | 2026-08-19 | QTS-13421, QTS-1013480 | 90% | 1d | 2026-08-06 | 2026-08-17 | -96d | 0d | **GLOBAL - 6 Day Workweek w/ Basic Holidays |  | Mechanical |  |  |  |  |  |  | TFO |  | Mechanical |  |  |  | TFO CONST | Bel-Aire | NICK |
| QTS-5240 |  | DH 2300 / Data Hall 2300 / Final Paint | 2d | 2026-08-03 A | 2026-08-04 A | QTS-13421 | 100% |  | 2026-09-22 | 2026-09-23 |  |  | **GLOBAL - 6 Day Workweek w/ Basic Holidays |  | Build Out |  |  |  |  |  |  | BAB |  | Jason Hendley |  |  |  |  | PPC |  |
| QTS-5000 |  | DH 2300 / Install CRAH Closure Metal | 4d | 2026-08-05 A | 2026-08-10 A | QTS-13421 | 100% |  | 2026-08-12 | 2026-08-15 |  |  | **GLOBAL - 6 Day Workweek w/ Basic Holidays |  | Mechanical |  |  |  |  |  |  | BAB |  | Jason Hendley |  |  |  |  | PCI |  |
| QTS-5250 |  | DH 2300 / Burnish Concrete Floor | 3d | 2026-08-19 | 2026-08-21 | QTS-5240 |  |  |  |  | -39d | 0d | **GLOBAL - 6 Day Workweek w/ Basic Holidays |  | Build Out |  |  |  |  |  |  | BAB |  | Ben Ribble |  |  |  |  | Bldg Solutions |  |
| QTS-5030 |  | TFO SCOPE \\ DH 2300 / Insulate Technical Loop Piping (Stainless) | 5d | 2026-08-20 | 2026-08-25 | QTS-5020, QTS - 24761 |  |  |  |  | -96d | 0d | **GLOBAL - 6 Day Workweek w/ Basic Holidays |  | Mechanical |  |  |  |  |  |  | TFO |  | Mechanical |  |  |  | TFO CONST | Bel-Aire | NICK |
| QTS-5260 |  | DH 2300 / Install Rubber Base | 2d | 2026-08-22 | 2026-08-24 | QTS-5250 |  |  |  |  | -39d | 35d | **GLOBAL - 6 Day Workweek w/ Basic Holidays |  | Build Out |  |  |  |  |  |  | BAB |  | Ben Ribble |  |  |  |  | Wholesale Flooring |  |
| QTS-5040 |  | TFO SCOPE \\ DH 2300 / Install Added Grid Support @ Drip pan | 6d | 2026-08-24 | 2026-08-29 | QTS-5030 SS+3d |  |  |  |  | -96d | 0d | **GLOBAL - 6 Day Workweek w/ Basic Holidays |  | Mechanical |  |  |  |  |  |  | TFO |  | Jason Hendley |  |  |  | TFO CONST | PCI | NICK |
| QTS-5050 |  | TFO SCOPE \\ DH 2300 / Install Drip pans | 6d | 2026-08-31 | 2026-09-05 | QTS-5040, QTS-5030 |  |  |  |  | -96d | 0d | **GLOBAL - 6 Day Workweek w/ Basic Holidays |  | Mechanical |  | DH2300 |  |  |  |  | TFO |  | Mechanical |  |  |  | TFO CONST |  | NICK |
| QTS-5270 |  | DH 2300 / Install Fire Extinguishers and Fire Extinguisher Cabinets | 3d | 2026-09-03 | 2026-09-05 | QTS-5240, QTS-4280 SS |  |  |  |  | -57d | 0d | **GLOBAL - 6 Day Workweek w/ Basic Holidays |  | Build Out |  |  |  |  |  |  | BAB |  | Jason Hendley |  |  |  |  | ISEC |  |
| QTS-5060 |  | TFO SCOPE \\ DH 2300 / Install LV Pathway for BACOP and Liquid Cooled Manifold Panel | 4d | 2026-09-08 | 2026-09-11 | QTS-5100 SS |  |  |  |  | -74d | 4d | **GLOBAL - 6 Day Workweek w/ Basic Holidays |  | LV |  |  |  |  |  |  | TFO |  | Low Voltage |  |  |  | TFO CONST | E2/Prime | NICK |
| QTS-5090 |  | DH 2300 / Install Remaining Telecom Sleeves | 3d | 2026-09-08 | 2026-09-10 | QTS-5100 SS |  |  |  |  | -73d | 5d | **GLOBAL - 6 Day Workweek w/ Basic Holidays |  | Mechanical |  |  |  |  |  |  | BAB |  | Electrical |  |  |  |  | REI |  |
| QTS-5100 |  | DH 2300 / Install Remaining Structural Ceiling Grid | 4d | 2026-09-08 | 2026-09-11 | QTS-5040, QTS-5050 |  |  |  |  | -96d | 0d | **GLOBAL - 6 Day Workweek w/ Basic Holidays |  | Build Out |  |  |  |  |  |  | BAB |  | Jason Hendley |  |  |  |  | PCI |  |
| QTS-5110 |  | TFO SCOPE \\ DH 2300 / Install RPP's | 5d | 2026-09-08 | 2026-09-12 | QTS-5100 SS |  |  |  |  | -96d | 0d | **GLOBAL - 6 Day Workweek w/ Basic Holidays |  | Mechanical |  |  |  |  |  |  | TFO |  | Electrical |  |  |  | TFO CONST | REI | NICK |
| QTS-5130 |  | DH 2300 / Install Device Tiles | 4d | 2026-09-08 | 2026-09-11 | QTS-5100 SS |  |  |  |  | -78d | 0d | **GLOBAL - 6 Day Workweek w/ Basic Holidays |  | Electrical |  |  |  |  |  |  | BAB |  | Electrical |  |  |  |  | PCI |  |
| QTS-5150 |  | DH 2300 / Install Vesda Piping and Fire Alarm Devices | 4d | 2026-09-08 | 2026-09-11 | QTS-5100 SS |  |  |  |  | -74d | 4d | **GLOBAL - 6 Day Workweek w/ Basic Holidays |  | Electrical |  |  |  |  |  |  | BAB |  | Electrical |  |  |  |  | Nexus |  |
| QTS-5160 |  | DH 2300 / Install Lighting | 5d | 2026-09-08 | 2026-09-12 | QTS-5100 SS |  |  |  |  | -75d | 3d | **GLOBAL - 6 Day Workweek w/ Basic Holidays |  | Electrical |  |  |  |  |  |  | BAB |  | Electrical |  |  |  |  | REI |  |
| QTS-5180 |  | DH 2300 / Install Humidity Sensors | 4d | 2026-09-08 | 2026-09-11 | QTS-5100 SS |  |  |  |  | -74d | 4d | **GLOBAL - 6 Day Workweek w/ Basic Holidays |  | Electrical |  |  |  |  |  |  | BAB |  | Electrical |  |  |  |  | Prime |  |
| QTS-5210 |  | TFO SCOPE \\ DH 2300 / Install HAC Panels | 3d | 2026-09-08 | 2026-09-10 | QTS-5100 SS |  |  |  |  | -67d | 13d | **GLOBAL - 6 Day Workweek w/ Basic Holidays |  | Mechanical |  |  |  |  |  |  | TFO |  | Mechanical |  |  |  | TFO CONST | AGDC | NICK |
| QTS-5070 |  | TFO SCOPE \\ DH 2300 / Install Liquid Cooled Manifold Panels | 4d | 2026-09-12 | 2026-09-16 | QTS-5130 |  |  |  |  | -24d | 35d | **GLOBAL - 6 Day Workweek w/ Basic Holidays |  | Build Out |  |  |  |  |  |  | TFO |  | Jason Hendley |  |  |  | TFO CONST | Prime | NICK |
| QTS-5080 |  | TFO SCOPE \\ DH 2300 / Install Grounding for RPP's | 4d | 2026-09-12 | 2026-09-16 | QTS-5130 |  |  |  |  | -78d | 0d | **GLOBAL - 6 Day Workweek w/ Basic Holidays |  | Electrical |  |  |  |  |  |  | TFO |  | Electrical |  |  |  | TFO CONST | REI | NICK |
| QTS-5140 |  | TFO SCOPE \\ DH 2300 / Install Q Cool Tray Hangers | 5d | 2026-09-12 | 2026-09-17 | QTS-5130 |  |  |  |  | -69d | 5d | **GLOBAL - 6 Day Workweek w/ Basic Holidays |  | Build Out |  |  |  |  |  |  | TFO |  | Mechanical |  |  |  | TFO CONST | Bel-Aire | NICK |
| QTS-5170 |  | DH 2300 / Install Fire Spinkler Heads | 4d | 2026-09-12 | 2026-09-16 | QTS-5130 |  |  |  |  | -78d | 0d | **GLOBAL - 6 Day Workweek w/ Basic Holidays |  | Build Out |  |  |  |  |  |  | BAB |  | Mechanical |  |  |  |  | Olympic |  |
| QTS-5120 |  | TFO SCOPE \\ DH 2300 / Terminate RPP Feeders | 5d | 2026-09-14 | 2026-09-18 | QTS-5110 |  |  |  |  | -96d | 1d | **GLOBAL - 6 Day Workweek w/ Basic Holidays |  | Electrical |  |  |  |  |  |  | TFO |  | Electrical |  |  |  | TFO CONST | REI | NICK |
| QTS-5190 |  | DH 2300 / Overhead Inspection | 1d | 2026-09-17 | 2026-09-17 | QTS-5060, QTS-5090, QTS-5130, QTS-5150, QTS-5160, QTS-5180, QTS-5080, QTS-5170, QTS-5100 |  |  |  |  | -78d | 0d | **GLOBAL - 6 Day Workweek w/ Basic Holidays |  | Build Out |  |  |  |  |  |  | BAB |  | Electrical |  |  |  |  | Layton |  |
| QTS-5200 |  | DH 2300 / Install Remaining Ceiling tiles | 5d | 2026-09-18 | 2026-09-23 | QTS-5190 |  |  |  |  | -78d | 0d | **GLOBAL - 6 Day Workweek w/ Basic Holidays |  | Build Out |  |  |  |  |  |  | BAB |  | Jason Hendley |  |  |  |  | PCI |  |
| QTS-5220 |  | TFO SCOPE \\ DH 2300 / Install Cable tray and Power Tray | 10d | 2026-09-24 | 2026-10-05 | QTS-5140, QTS-5200 |  |  |  |  | -74d | 0d | **GLOBAL - 6 Day Workweek w/ Basic Holidays |  | Electrical |  |  |  |  |  |  | TFO |  | Electrical |  |  |  | TFO CONST | REI | NICK |
| QTS-5300 |  | DH 2300 / Burn in Chillers | 3d | 2026-09-24 | 2026-09-26 | QTS-7050, QTS-7080, QTS-7290, QTS-7110 |  |  |  |  | -65d | 0d | **GLOBAL - 6 Day Workweek w/ Basic Holidays |  | Commissioning |  |  |  |  |  |  | BAB |  | Electrical |  |  |  |  | REI | NICK |
| QTS-5310 |  | TFO SCOPE \\ DH 2300 / Burn in RPP's | 3d | 2026-09-28 | 2026-09-30 | QTS-5300 |  |  |  |  | -36d | 23d | **GLOBAL - 6 Day Workweek w/ Basic Holidays |  | Electrical |  |  |  |  |  |  | TFO |  | Electrical |  |  |  | TFO CONST | REI | NICK |
| QTS-5230 |  | TFO SCOPE \\ DH 2300 / Install and Terminate RPP Branch (Whips) | 15d | 2026-10-06 | 2026-10-22 | QTS-5220 |  |  |  |  | -59d | 0d | **GLOBAL - 6 Day Workweek w/ Basic Holidays |  | Electrical |  |  |  |  |  |  | TFO |  | Electrical |  |  |  | TFO CONST | REI | NICK |
| QTS-5280 |  | DH 2300 / Clean | 3d | 2026-10-06 | 2026-10-08 | QTS-5260, QTS-5270, QTS-5000, QTS-5220 |  |  |  |  | -74d | 6d | **GLOBAL - 6 Day Workweek w/ Basic Holidays |  | Build Out |  |  |  |  |  |  | BAB |  | Ed Carter |  |  |  |  | AGDC |  |

Notes:
- QTS-1010170: Scheduler Notes: Manpower Delay
- QTS-10581: allucent_notes_20251230_164549: David Wiltberger on 2025-12-30 16:22: no update / allucent_notes: 2025-12-30 16:22 - User: David Wiltberger - Date Added: 2025-12-30 16:22 - Note: no update
- QTS-10571: allucent_notes_20251216_165335: Jason Johnston on 2025-10-28 16:10: Need to tie to fan wall finish. / allucent_notes_20251209_203830: Jason Johnston on 2025-10-28 16:10: Need to tie to fan wall finish. / allucent_notes_20251118_192630: Jason Johnston on 2025-10-28 16:10: Need to tie to fan wall finish. / allucent_notes_20251111_182405: Jason Johnston on 2025-10-28 16:10: Need to tie to fan wall finish. / allucent_notes_20251104_160200: Jason Johnston on 2025-10-28 16:10: Need to tie to fan wall finish. / allucent_notes_20251028_163138: Jason Johnston on 2025-10-28 16:10: Need to tie to fan wall finish. / allucent_notes_20251230_164549: Jason Johnston on 2025-10-28 16:10: Need to tie to fan wall finish. / Scheduler Notes: Jason Johnston on 2025-10-28 16:10: Need to tie to fan wall finish. / 1/20/26: Beam wrapping needs to complete before the framing can / begin. / Notes: 1/20/26: Beam wrapping needs to complete before the framing can begin. / allucent_notes: 2025-10-28 16:10 - User: Jason Johnston - Date Added: 2025-10-28 16:10 - Note: Need to tie to fan wall finish.
- QTS-102440: allucent_notes_20251014_152335: Zack Goertz on 2025-09-08T20:45:26.651Z: Not started. PCI has been put on notice that they are behind / Jason Johnston on 2025-10-08 08:10: not done / allucent_notes: 2025-09-08T20:45:26.651Z - User: Zack Goertz - Date Added: 2025-09-08T20:45:26.651Z - Note: Not started. PCI has been put on notice that they are behind / 2025-10-08 08:10 - User: Jason Johnston - Date Added: 2025-10-08 08:10 - Note: not done
- QTS-102450: allucent_notes_20251014_152335: Zack Goertz on 2025-09-08T20:45:26.651Z: Not started. PCI has been put on notice that they are behind / Jason Johnston on 2025-10-08 08:10: not done / allucent_notes: 2025-09-08T20:45:26.651Z - User: Zack Goertz - Date Added: 2025-09-08T20:45:26.651Z - Note: Not started. PCI has been put on notice that they are behind / 2025-10-08 08:10 - User: Jason Johnston - Date Added: 2025-10-08 08:10 - Note: not done
- QTS-102480: allucent_notes_20251014_152335: Zack Goertz on 2025-09-08T20:45:26.651Z: Not started. PCI has been put on notice that they are behind / Jason Johnston on 2025-10-08 08:10: not done / allucent_notes: 2025-09-08T20:45:26.651Z - User: Zack Goertz - Date Added: 2025-09-08T20:45:26.651Z - Note: Not started. PCI has been put on notice that they are behind / 2025-10-08 08:10 - User: Jason Johnston - Date Added: 2025-10-08 08:10 - Note: not done
- QTS-102490: allucent_notes_20251014_152335: Zack Goertz on 2025-09-08T20:45:26.651Z: Not started. PCI has been put on notice that they are behind / Jason Johnston on 2025-10-08 08:10: not done / allucent_notes: 2025-09-08T20:45:26.651Z - User: Zack Goertz - Date Added: 2025-09-08T20:45:26.651Z - Note: Not started. PCI has been put on notice that they are behind / 2025-10-08 08:10 - User: Jason Johnston - Date Added: 2025-10-08 08:10 - Note: not done
- QTS-102500: allucent_notes_20251014_152335: Zack Goertz on 2025-09-08T20:45:26.651Z: Not started. PCI has been put on notice that they are behind / Jason Johnston on 2025-10-08 08:10: not done / allucent_notes: 2025-09-08T20:45:26.651Z - User: Zack Goertz - Date Added: 2025-09-08T20:45:26.651Z - Note: Not started. PCI has been put on notice that they are behind / 2025-10-08 08:10 - User: Jason Johnston - Date Added: 2025-10-08 08:10 - Note: not done
- QTS-102510: allucent_notes_20251014_152335: Zack Goertz on 2025-09-08T20:45:26.651Z: Not started. PCI has been put on notice that they are behind / Jason Johnston on 2025-10-08 08:10: not done / allucent_notes: 2025-09-08T20:45:26.651Z - User: Zack Goertz - Date Added: 2025-09-08T20:45:26.651Z - Note: Not started. PCI has been put on notice that they are behind / 2025-10-08 08:10 - User: Jason Johnston - Date Added: 2025-10-08 08:10 - Note: not done
- QTS-1013480: Notes: 7/31 done
- QTS-5020: Notes: started 8/1

| ID | WBS | Activity | Duration | Start | Finish | Predecessors | Complete | Remaining | Planned start | Planned finish | Total float | Free float | Calendar | Allucent CSI Group | Project Section | Layton Discipline | Baseline | Phase-1-1 | Project Section-1 | Location | Contract | Level | Notes | Layton Super | Trade Partner | TFO-CONST ONLY | NICK |
| --- | --- | --- | --- | --- | --- | --- | --- | --- | --- | --- | --- | --- | --- | --- | --- | --- | --- | --- | --- | --- | --- | --- | --- | --- | --- | --- | --- |
|  | 2 | **Gallery 2301 Mechanical** |  | 2025-10-31 | 2026-09-21 |  |  |  |  |  |  |  |  |  |  |  |  |  |  |  |  |  |  |  |  |  |  |
| QTS-13881 |  | DH 2300 / Mechanical Gallery 2301 // Install VESDA | 8d | 2025-10-31 A | 2025-11-11 A | QTS-2081 | 100% |  |  |  |  |  |  | 01ADMIN | Construction | Electrical | IGMP | Phase 3 | Construction | DH2300 | BAB |  |  |  |  |  |  |
| QTS-44521 |  | DH 2300 / Mechanical Gallery 2301 // Install OH Mechanical Hangers | 7d | 2025-11-13 A | 2026-01-12 A | QTS-120000, QTS-2081 | 100% |  | 2025-11-21 | 2025-12-01 |  |  | QTS-PHX3 DC1 - 6 day w/ Holidays | 01ADMIN | Construction | Mechanical | IGMP |  | Construction | DH2100 | BAB | Level 2 |  |  |  |  |  |
| QTS-8641 |  | DH 2300 / Mechanical Gallery 2301 // Frame for 2301-2302 Wall | 5d | 2026-01-15 A | 2026-01-19 A | QTS-19981, QTS-6941, QTS-13891 | 100% |  | 2026-01-15 | 2026-01-21 |  |  | QTS-PHX3 DC1 - 6 day w/ Holidays | 01ADMIN | Construction | Build Out | IGMP | Phase 3 | Construction | DH2300 | BAB |  |  |  |  |  |  |
| QTS-13891 |  | DH 2300 / Mechanical Gallery 2301 // OH Mechanical Piping | 10d | 2026-01-23 A | 2026-02-08 A | QTS-44521 | 100% |  | 2026-01-23 | 2026-02-03 |  |  | QTS-PHX3 DC1 - 6 day w/ Holidays | 01ADMIN | Construction | Mechanical | IGMP | Phase 3 | Construction | DH2300 | BAB |  |  |  |  |  |  |
| QTS-10621 |  | DH 2300 / Mechanical Gallery 2301 // Frame Fan Wall | 5d | 2026-01-26 A | 2026-02-03 A | QTS-11611, QTS-10601, QTS-8641 | 100% |  | 2026-01-26 | 2026-01-30 |  |  | QTS-PHX3 DC1 - 6 day w/ Holidays | 01ADMIN | Construction | Build Out | IGMP | Phase 3 | Construction | DH2300 | BAB |  |  |  |  |  |  |
| QTS-12291 |  | DH 2300 / Mechanical Gallery 2301 // Hang, Tape, & Finish Fan Drywall - MG Side | 5d | 2026-02-07 A | 2026-03-11 A | QTS-12031 FF | 100% |  | 2026-02-07 | 2026-02-12 |  |  | QTS-PHX3 DC1 - 6 day w/ Holidays | 01ADMIN | Construction | Build Out | IGMP | Phase 3 | Construction | DH2300 | BAB |  | 3/17: In wall electrical delaying start on DH side |  |  |  |  |
| QTS-1003620 |  | DH 2300 / Mechanical Gallery 2301 // One Side Drywall for 2301-2302 Wall - EG Side | 3d | 2026-02-08 A | 2026-02-12 A | QTS-8641 | 100% |  | 2026-02-09 | 2026-02-11 |  |  | QTS-PHX3 DC1 - 6 day w/ Holidays | 01ADMIN | Construction | Build Out | IGMP | Phase 3 | Construction | DH2300 | BAB |  |  |  |  |  |  |
| QTS-13901 |  | DH 2300 / Mechanical Gallery 2301 // Install Security Screen Above Fan Wall | 3d | 2026-02-13 A | 2026-02-20 A | QTS-99680, QTS-10621 | 100% |  | 2026-02-13 | 2026-02-16 |  |  | QTS-PHX3 DC1 - 6 day w/ Holidays | 01ADMIN | Construction | Build Out | IGMP | Phase 3 | Construction | DH2300 | BAB |  |  |  |  |  |  |
| QTS-1003630 |  | DH 2300 / Mechanical Gallery 2301 // Tape & Drywall for 2301-2302 Wall - EG Side | 4d | 2026-02-17 A | 2026-03-16 A | QTS-1003620 | 100% |  | 2026-02-17 | 2026-02-20 |  |  | QTS-PHX3 DC1 - 6 day w/ Holidays | 01ADMIN | Construction | Build Out | IGMP | Phase 3 | Construction | DH2300 | BAB |  |  |  |  |  |  |
| QTS-1003650 |  | DH 2300 / Mechanical Gallery 2301 // Insulate for 2301-2302 Wall - Top Out | 2d | 2026-02-19 A | 2026-02-20 A | QTS-1003630 SS | 100% |  |  |  |  |  | QTS-PHX3 DC1 - 6 day w/ Holidays | 01ADMIN | Construction | Electrical | IGMP | Phase 3 | Construction | DH2300 | BAB |  |  |  |  |  |  |
| QTS-11321 |  | DH 2300 / Mechanical Gallery 2301 // One Side Drywall for 2301-2302 Wall - MG Side | 3d | 2026-02-23 A | 2026-03-27 A | QTS-1003650 | 100% |  | 2026-02-23 | 2026-02-25 |  |  | QTS-PHX3 DC1 - 6 day w/ Holidays | 01ADMIN | Construction | Build Out | IGMP | Phase 3 | Construction | DH2300 | BAB |  |  |  |  |  |  |
| QTS-11661 |  | DH 2300 / Mechanical Gallery 2301 // In Wall Electrical Rough for Fan Wall | 2d | 2026-02-25 A | 2026-02-26 A | QTS-10621 | 100% |  |  |  |  |  | QTS-PHX3 DC1 - 6 day w/ Holidays | 01ADMIN | Construction | Electrical | IGMP | Phase 3 | Construction | DH2300 | BAB |  |  |  |  |  |  |
| QTS-12031 |  | DH 2300 / Mechanical Gallery 2301 // In Wall Inspection for Fan Wall | 1d | 2026-03-11 A | 2026-03-11 A | QTS-11661 | 100% |  |  |  |  |  | QTS-PHX3 DC1 - 6 day w/ Holidays | 01ADMIN | Construction | Electrical | IGMP | Phase 3 | Construction | DH2300 | BAB |  |  |  |  |  |  |
| QTS-13071 |  | DH 2300 / Mechanical Gallery 2301 // Paint Fan Walls - MG Side | 5d | 2026-03-12 A | 2026-03-17 A | QTS-12291 | 100% |  |  |  |  |  | QTS-PHX3 DC1 - 6 day w/ Holidays |  | Construction | Build Out | IGMP | Phase 3 | Construction | DH2300 | BAB |  |  |  |  |  |  |
| QTS-13431 |  | DH 2300 / Mechanical Gallery 2301 // Top of Wall Fire Stop for 2301-2302 Wall | 2d | 2026-03-12 A | 2026-04-09 A | QTS-1003630 FF | 100% |  | 2026-03-12 | 2026-03-13 |  |  | QTS-PHX3 DC1 - 6 day w/ Holidays | 01ADMIN | Construction | Build Out | IGMP | Phase 3 | Construction | DH2300 | BAB |  |  |  |  |  |  |
| QTS-1003590 |  | DH 2300 / Mechanical Gallery 2301 // Tape & Drywall for 2301-2302 Wall - MG Side | 4d | 2026-03-14 A | 2026-03-27 A | QTS-11321 FF | 100% |  | 2026-03-14 | 2026-03-18 |  |  | QTS-PHX3 DC1 - 6 day w/ Holidays | 01ADMIN | Construction | Build Out | IGMP | Phase 3 | Construction | DH2300 | BAB |  |  |  |  |  |  |
| QTS-1007530 |  | DH 2300 / Mechanical Gallery 2301 // Load CRAH Into Building | 3d | 2026-03-18 A | 2026-03-20 A | QTS-36911, QTS-36901, QTS-36891, QTS-36881, QTS-36871, QTS-36861, QTS-36851, QTS-36841, QTS-36831, QTS-36821, QTS-36811, QTS-36801, QTS-36791, QTS-36781 | 100% |  |  |  |  |  | QTS-PHX3 DC1 - 6 day w/ Holidays |  | Construction | Mechanical | IGMP | Phase 3 | Construction | DH2300 | BAB |  |  |  |  |  |  |
| QTS-1008980 |  | DH 2300 / Mechanical Gallery 2301 // Hang, Tape, & Finish Fan Drywall - DH Side | 5d | 2026-03-25 A | 2026-04-13 A | QTS-11661 | 100% |  | 2026-03-25 | 2026-03-30 |  |  | QTS-PHX3 DC1 - 6 day w/ Holidays | 01ADMIN | Construction | Build Out | IGMP | Phase 3 | Construction | DH2300 | BAB |  | 3/17: In wall electrical delaying start on DH side |  |  |  |  |
| QTS-1003600 |  | DH 2300 / Mechanical Gallery 2301 // Prime & Paint for 2301-2302 Wall - MG Side | 2d | 2026-03-28 A | 2026-03-30 A | QTS-1003590 | 100% |  |  |  |  |  | QTS-PHX3 DC1 - 6 day w/ Holidays | 01ADMIN | Construction | Build Out | IGMP | Phase 3 | Construction | DH2300 | BAB |  |  |  |  |  |  |
| QTS-10611 |  | DH 2300 / Mechanical Gallery 2301 // In Wall Electrical Rough for 2301-2302 Wall | 2d | 2026-04-07 A | 2026-04-08 A | QTS-38981, QTS-8641 | 100% |  |  |  |  |  | QTS-PHX3 DC1 - 6 day w/ Holidays | 01ADMIN | Construction | Electrical | IGMP | Phase 3 | Construction | DH2300 | BAB |  |  |  |  |  |  |
| QTS-1003710 |  | DH 2300 / Mechanical Gallery 2301 // Insulate for 2301-2302 Wall - Remaining | 2d | 2026-04-08 A | 2026-04-09 A | QTS-1003630 SS | 100% |  |  |  |  |  | QTS-PHX3 DC1 - 6 day w/ Holidays | 01ADMIN | Construction | Electrical | IGMP | Phase 3 | Construction | DH2300 | BAB |  |  |  |  |  |  |
| QTS-10911 |  | DH 2300 / Mechanical Gallery 2301 // In Wall Inspection for 2301-2302 Wall | 1d | 2026-04-10 A | 2026-04-10 A | QTS-10611, QTS-1003710 | 100% |  |  |  |  |  | QTS-PHX3 DC1 - 6 day w/ Holidays | 01ADMIN | Construction | Electrical | IGMP | Phase 3 | Construction | DH2300 | BAB |  |  |  |  |  |  |
| QTS-1003640 |  | DH 2300 / Mechanical Gallery 2301 // Prime & Paint for 2301-2302 Wall - EG Side | 2d | 2026-04-11 A | 2026-04-13 A | QTS-1003630, QTS-13431, QTS-10911 | 100% |  |  |  |  |  | QTS-PHX3 DC1 - 6 day w/ Holidays | 01ADMIN | Construction | Build Out | IGMP | Phase 3 | Construction | DH2300 | BAB |  |  |  |  |  |  |
| QTS-1008970 |  | DH 2300 / Mechanical Gallery 2301 // Paint Fan Walls - DH Side | 3d | 2026-04-27 A | 2026-04-30 A | QTS-1008980 | 100% |  | 2026-07-01 | 2026-07-06 |  |  | QTS-PHX3 DC1 - 6 day w/ Holidays |  | Construction | Build Out | IGMP | Phase 3 | Construction | DH2300 | BAB |  |  | Ed Carter |  |  |  |
| QTS-1008790 |  | DH 2300 / Mechanical Gallery 2301 // Install OH FA Conduit & Grounding | 10d | 2026-05-13 A | 2026-07-01 A | QTS-1003600 | 100% |  | 2026-05-13 | 2026-05-23 |  |  | QTS-PHX3 DC1 - 6 day w/ Holidays | 01ADMIN | Construction | Electrical | IGMP | Phase 3 | Construction | DH2300 | BAB |  |  | Oscar Armenta |  |  |  |
| QTS-16351 |  | DH 2300 / Mechanical Gallery 2301 // OFCI - L2 SET IN PLACE - Eq Type # - MOD-03 - 7 units | 5d | 2026-06-27 A | 2026-07-02 A | QTS-36631, QTS-36621, QTS-36611, QTS-36601, QTS-36591, QTS-36581, QTS-36571, QTS-1003600 | 100% |  | 2026-07-14 | 2026-07-18 |  |  | QTS-PHX3 DC1 - 6 day w/ Holidays |  | Construction | Electrical | IGMP | Phase 3 | Construction | DH2300 | BAB |  |  | Oscar Armenta |  |  |  |
| QTS-43921 |  | DH 2300 / Mechanical Gallery 2301 // OFCI - L2 SET IN PLACE - Eq Type # - MOD-02 - 7 units | 10d | 2026-06-27 A | 2026-07-02 A | QTS-13891, QTS-36511 FF, QTS-36641, QTS-36561, QTS-36551, QTS-36541, QTS-36531, QTS-36521, QTS-36511, QTS-1003600 | 100% |  | 2026-07-14 | 2026-07-24 |  |  | QTS-PHX3 DC1 - 6 day w/ Holidays |  | Construction | Electrical | IGMP | Phase 3 | Construction | DH2300 | BAB |  |  | Oscar Armenta |  |  |  |
| QTS-14311 |  | DH 2300 / Mechanical Gallery 2301 // OFCI - L2 SET IN PLACE - Eq Type # - DH CRAH - 14 units | 5d | 2026-07-08 A | 2026-07-08 A | QTS-13071, QTS-13901, QTS-36911, QTS-36901, QTS-36891, QTS-36881, QTS-36871, QTS-36861, QTS-36851, QTS-36841, QTS-36831, QTS-36821, QTS-36811, QTS-36801, QTS-36791, QTS-36781, QTS-1003600, QTS-1007530, QTS-1008970 | 100% |  | 2026-07-08 | 2026-07-13 |  |  | QTS-PHX3 DC1 - 6 day w/ Holidays |  | Construction | Mechanical | IGMP | Phase 3 | Construction | DH2300 | BAB |  |  | Mechanical |  |  |  |
| QTS-46691 |  | DH 2300 / Mechanical Gallery 2301 // OFCI - L2 SET IN PLACE - Eq Type # - EG CRAH - 4 units | 6d | 2026-07-10 A | 2026-07-14 A | QTS-37091, QTS-37081, QTS-37071, QTS-37061, QTS-1003600 | 100% |  | 2026-07-15 | 2026-07-21 |  |  | QTS-PHX3 DC1 - 6 day w/ Holidays | 01ADMIN | Construction | Mechanical | IGMP | Phase 3 | Construction | DH2300 | BAB |  |  | Mechanical |  |  |  |
| QTS-4830 |  | DH 2300 / Gallery 2301 / Install Leak Detection and Containment Angle | 4d | 2026-07-13 A | 2026-07-15 A | QTS-14311 | 100% |  | 2026-07-27 | 2026-07-30 |  |  | **GLOBAL - 6 Day Workweek w/ Basic Holidays |  |  | Mechanical |  |  |  |  | BAB |  |  | Mechanical | Bel-Aire |  |  |
| QTS-17011 |  | DH 2300 / Mechanical Gallery 2301 // Set Humidifier | 1d | 2026-07-15 A | 2026-07-28 A | QTS-36051, QTS-13901 | 100% |  | 2026-08-01 | 2026-08-01 |  |  | QTS-PHX3 DC1 - 6 day w/ Holidays |  | Construction | Mechanical | IGMP | Phase 3 | Construction | DH2300 | BAB |  | trade damage / wall getting fixed 7/20 | Mechanical | Bel-Aire |  |  |
| QTS-4700 |  | DH 2300 / Gallery 2301 / Install EG CRAH's and Duct | 4d | 2026-07-15 A | 2026-07-15 A | QTS-37901, QTS-37911, QTS-37921, QTS-37931, QTS-46691 | 100% |  | 2026-07-15 | 2026-07-18 |  |  | **GLOBAL - 6 Day Workweek w/ Basic Holidays |  |  | Mechanical |  |  |  |  | BAB |  |  | Mechanical | Bel-Aire |  |  |
| QTS-4880 |  | DH 2300 / Gallery 2301 / Pull and LV cable to Equipment | 4d | 2026-07-16 A | 2026-08-07 A | QTS-14311 | 100% |  | 2026-07-30 | 2026-08-03 |  |  | **GLOBAL - 6 Day Workweek w/ Basic Holidays |  |  | LV |  |  |  |  | BAB |  | 8/7 done | Low Voltage | E2/Prime |  |  |
| QTS-4720 |  | DH 2300 / Gallery 2301 / Install Remaining Raceway MOD's to CRAH's | 2d | 2026-07-17 A | 2026-07-18 A | QTS-14311, QTS-1008790 | 100% |  | 2026-07-22 | 2026-07-23 |  |  | **GLOBAL - 6 Day Workweek w/ Basic Holidays |  |  | Mechanical |  |  |  |  | BAB |  |  | Electrical | REI |  |  |
| QTS-4840 |  | DH 2300 / Gallery 2301 / Install Grounding Conduit | 3d | 2026-07-18 A | 2026-07-22 A | QTS-3480 | 100% |  | 2026-07-25 | 2026-07-28 |  |  | **GLOBAL - 6 Day Workweek w/ Basic Holidays |  |  | Electrical |  |  |  |  | BAB |  |  | Electrical | REI |  |  |
| QTS-4670 |  | DH 2300 / Gallery 2301 / Install CRAH / CDU Branch Piping | 6d | 2026-07-20 A | 2026-08-19 | QTS-3345, QTS - 6370 | 83% | 1d | 2026-07-25 | 2026-07-31 | -82d | 0d | **GLOBAL - 6 Day Workweek w/ Basic Holidays |  |  | Mechanical |  |  |  |  | BAB |  |  | Mechanical | Bel-Aire |  |  |
| QTS-4710 |  | DH 2300 / Gallery 2301 / Pull Wire Remianing from MOD's to POD's | 3d | 2026-07-20 A | 2026-08-04 A | QTS-16351, QTS-43921 | 100% |  | 2026-07-27 | 2026-07-29 |  |  | **GLOBAL - 6 Day Workweek w/ Basic Holidays |  |  | Electrical |  |  |  |  | BAB |  | Missing 3 sets of wires | Electrical | REI |  |  |
| QTS-4860 |  | DH 2300 / Gallery 2301 / Install LV Basket Tray & Liner | 2d | 2026-07-21 A | 2026-07-27 A | QTS-46691 | 100% |  | 2026-07-24 | 2026-07-25 |  |  | **GLOBAL - 6 Day Workweek w/ Basic Holidays |  |  | LV |  |  |  |  | BAB |  |  | Low Voltage | E2 |  |  |
| QTS-17201 |  | DH 2300 / Mechanical Gallery 2301 // Tie-In MEP to Humidifiers | 6d | 2026-07-22 A | 2026-07-28 A | QTS-13891 FF, QTS-14311, QTS-17011 | 100% |  | 2026-07-23 | 2026-07-29 |  |  | QTS-PHX3 DC1 - 6 day w/ Holidays |  | Construction | Mechanical | IGMP | Phase 3 | Construction | DH2300 | BAB |  | Trade Damage | Mechanical | Bel-Aire |  |  |
| QTS-4850 |  | DH 2300 / Gallery 2301 / Pull and terminate Grounding @ Equipment | 4d | 2026-07-25 A | 2026-08-03 A | QTS-4840 | 100% |  | 2026-07-29 | 2026-08-01 |  |  | **GLOBAL - 6 Day Workweek w/ Basic Holidays |  |  | Electrical |  |  |  |  | BAB |  | Manpower | Electrical | REI |  |  |
| QTS-4870 |  | DH 2300 / Gallery 2301 / Install LV Conduit Drops from Equipment | 2d | 2026-07-28 A | 2026-07-31 A | QTS-4860 | 100% |  | 2026-08-08 | 2026-08-10 |  |  | **GLOBAL - 6 Day Workweek w/ Basic Holidays |  |  | LV |  |  |  |  | BAB |  | 7/31 done | Low Voltage | E2 |  |  |
| QTS-4920 |  | DH 2300 / Gallery 2301 / Final Paint | 2d | 2026-08-01 A | 2026-08-03 A | QTS-17201 | 100% |  | 2026-08-18 | 2026-08-19 |  |  | **GLOBAL - 6 Day Workweek w/ Basic Holidays |  |  | Build Out |  |  |  |  | BAB |  |  | Jason Hendley | PPC |  |  |
| QTS-44541 |  | DH 2300 / Mechanical Gallery 2301 // Install Security and Devices | 5d | 2026-08-19 | 2026-08-24 | QTS-4880 |  |  |  |  | -18d | 62d | QTS-PHX3 DC1 - 6 day w/ Holidays |  | Construction | LV | IGMP |  | Construction | DH2100 | BAB | Level 2 |  | Low Voltage | Securitas |  |  |
| QTS-4730 |  | DH 2300 / Gallery 2301 / Pull Wire from MOD's to CRAH's | 4d | 2026-08-19 | 2026-08-22 | QTS-4710 SS+2d |  |  |  |  | -90d | 0d | **GLOBAL - 6 Day Workweek w/ Basic Holidays |  |  | Electrical |  |  |  |  | BAB |  | Manpower | Electrical | REI |  |  |
| QTS-4750 |  | DH 2300 / Gallery 2301 / Terminate Wire from MOD's to POD's | 4d | 2026-08-19 | 2026-08-22 | QTS-4710, QTS-4850 |  |  |  |  | -88d | 2d | **GLOBAL - 6 Day Workweek w/ Basic Holidays |  |  | Electrical |  |  |  |  | BAB |  |  | Electrical | REI |  |  |
| QTS-4890 |  | DH 2300 / Gallery 2301 / Terminate / Test LV Cable @ DCIM / Equipment | 4d | 2026-08-19 | 2026-08-22 | QTS-4880, QTS-4870 |  |  |  |  | -68d | 7d | **GLOBAL - 6 Day Workweek w/ Basic Holidays |  |  | LV |  |  |  |  | BAB |  |  | Low Voltage | E2 |  |  |
| QTS-4680 |  | DH 2300 / Gallery 2301 / Insulate CRAH / CDU Branch Piping | 6d | 2026-08-20 | 2026-08-26 | QTS-14311, QTS-4670 |  |  |  |  | -82d | 8d | **GLOBAL - 6 Day Workweek w/ Basic Holidays |  |  | Mechanical |  |  |  |  | BAB |  |  | Mechanical | Bel-Aire |  |  |
| QTS-4780 |  | TFO SCOPE \\ DH 2300 / Gallery 2301 / Install Technical Loop Piping Hangers | 7d | 2026-08-20 | 2026-08-27 | QTS-3435 |  |  |  |  | -59d | 0d | **GLOBAL - 6 Day Workweek w/ Basic Holidays |  |  | Mechanical |  |  |  |  | TFO |  |  | Mechanical | Bel-Aire | TFO CONST | NICK |
| QTS-4740 |  | TFO SCOPE \\ DH 2300 / Gallery 2301 / Pull Wire from MOD's to CDU's | 2d | 2026-08-21 | 2026-08-22 | QTS-4730 SS+2d, QTS-16351, QTS-43921, QTS-4720 |  |  |  |  | -49d | 2d | **GLOBAL - 6 Day Workweek w/ Basic Holidays |  |  | Electrical |  |  |  |  | TFO |  |  | Electrical | REI | TFO CONST | NICK |
| QTS-4760 |  | DH 2300 / Gallery 2301 / Terminate Wire from MOD's to CRAH's | 4d | 2026-08-24 | 2026-08-27 | QTS-4730, QTS-4750 SS+2d |  |  |  |  | -90d | 0d | **GLOBAL - 6 Day Workweek w/ Basic Holidays |  |  | Electrical |  |  |  |  | BAB |  | Will push due to manpower wire pulls | Electrical | REI |  |  |
| QTS-4910 |  | DH 2300 / Gallery 2301 / Remove Temp lighting/ Power | 2d | 2026-08-24 | 2026-08-25 | QTS-7320, QTS-5020 |  |  |  |  | -39d | 20d | **GLOBAL - 6 Day Workweek w/ Basic Holidays |  |  | Electrical |  |  |  |  | BAB |  |  | Electrical | REI |  |  |
| QTS-4800 |  | TFO SCOPE \\ DH 2300 / Gallery 2301 / Install Technical Loop Piping (Stainless) | 10d | 2026-08-25 | 2026-09-04 | QTS-4780 SS+4d, QTS-5020, QTS - 24761 |  |  |  |  | -59d | 0d | **GLOBAL - 6 Day Workweek w/ Basic Holidays |  |  | Mechanical |  |  |  |  | TFO |  |  | Mechanical | Bel-Aire | TFO CONST | NICK |
| QTS-4770 |  | TFO SCOPE \\ DH 2300 / Gallery 2301 / Terminate Wire from MOD's to CDU's | 3d | 2026-08-26 | 2026-08-28 | QTS-4740, QTS-4760 SS+2d |  |  |  |  | -51d | 7d | **GLOBAL - 6 Day Workweek w/ Basic Holidays |  |  | Electrical |  |  |  |  | TFO |  | Will push due to manpower wire pulls | Electrical | REI | TFO CONST | NICK |
| QTS-4690 |  | TFO SCOPE \\ DH 2300 / Gallery 2301 / Fill and Flush Technical Loop | 13d | 2026-09-05 | 2026-09-18 | QTS-4680, QTS-6980 FF, QTS-1013590 FF, QTS-4800 |  |  |  |  | -69d | 0d | **GLOBAL - 7 Day Workweek w/ Basic Holidays |  |  | Mechanical |  |  |  |  | TFO |  |  | Mechanical | Bel-Aire | TFO CONST | NICK |
| QTS-4900 |  | DH 2300 / Gallery 2301 / Install Fire Extinguishers and Fire Extinguisher Cabinets | 2d | 2026-09-08 | 2026-09-09 | QTS-4920, QTS-5270 |  |  |  |  | -57d | 0d | **GLOBAL - 6 Day Workweek w/ Basic Holidays |  |  | Build Out |  |  |  |  | BAB |  |  | Jake Shimmin | ISEC |  |  |
| QTS-4930 |  | DH 2300 / Gallery 2301 / Seal Concrete Floor | 2d | 2026-09-10 | 2026-09-11 | QTS-4900 |  |  |  |  | -55d | 0d | **GLOBAL - 6 Day Workweek w/ Basic Holidays |  |  | Build Out |  |  |  |  | BAB |  |  | Ben Ribble | Bldg Solutions |  |  |
| QTS-4940 |  | DH 2300 / Gallery 2301 / Install Rubber Base | 2d | 2026-09-12 | 2026-09-14 | QTS-4930 |  |  |  |  | -55d | 4d | **GLOBAL - 6 Day Workweek w/ Basic Holidays |  |  | Build Out |  |  |  |  | BAB |  |  | Ben Ribble | Wholesale Flooring |  |  |
| QTS-4950 |  | DH 2300 / Gallery 2301 / Clean | 2d | 2026-09-19 | 2026-09-21 | QTS-4940, QTS-4690, QTS-4910 |  |  |  |  | -59d | 21d | **GLOBAL - 6 Day Workweek w/ Basic Holidays |  |  | Build Out |  |  |  |  | BAB |  |  | Ed Carter | AGDC |  |  |

Notes:
- QTS-13881: allucent_notes_20251118_192630: David Wiltberger on 2025-10-14 12:10: delayed by recovery / allucent_notes_20251111_182405: David Wiltberger on 2025-10-14 12:10: delayed by recovery / allucent_notes_20251104_160200: David Wiltberger on 2025-10-14 12:10: delayed by recovery / allucent_notes_20251028_163138: David Wiltberger on 2025-10-14 12:10: delayed by recovery / allucent_notes_20251027_224008: David Wiltberger on 2025-10-14 12:10: delayed by recovery / allucent_notes_20251021_145627: David Wiltberger on 2025-10-14 12:10: delayed by recovery / allucent_notes_20251014_152335: David Wiltberger on 2025-10-14 12:10: delayed by recovery / allucent_notes: 2025-10-14 12:10 - User: David Wiltberger - Date Added: 2025-10-14 12:10 - Note: delayed by recovery
- QTS-44521: allucent_notes_20251216_165335: David Wiltberger on 2025-10-14 12:10: delayed for recovery / David Wiltberger on 2025-11-04 14:11: changing order to recover / Zack Goertz on 2025-11-10T17:15:52.907Z: Bel-aire is very delayed / Jason Johnston on 2025-11-11 16:11: need framing. / David Wiltberger on 2025-12-01 10:13: have layout issue and correcting / David Wiltberger on 2025-12-02 06:49: correcting field layout / Jason Johnston on 2025-12-16 08:09: Hangers have not started. / allucent_notes_20251209_203830: David Wiltberger on 2025-10-14 12:10: delayed for recovery / David Wiltberger on 2025-11-04 14:11: changing order to recover / Zack Goertz on 2025-11-10T17:15:52.907Z: Bel-aire is very delayed / Jason Johnston on 2025-11-11 16:11: need framing. / David Wiltberger on 2025-12-01 10:13: have layout issue and correcting / David Wiltberger on 2025-12-02 06:49: correcting field layout / allucent_notes_20251202_153722: David Wiltberger on 2025-10-14 12:10: delayed for recovery / David Wiltberger on 2025-11-04 14:11: changing order to recover / Zack Goertz on 2025-11-10T17:15:52.907Z: Bel-aire is very delayed / Jason Johnston on 2025-11-11 16:11: need framing. / David Wiltberger on 2025-12-01 10:13: have layout issue and correcting / David Wiltberger on 2025-12-02 06:49: correcting field layout / allucent_notes_20251118_192630: David Wiltberger on 2025-10-14 12:10: delayed for recovery / David Wiltberger on 2025-11-04 14:11: changing order to recover / Zack Goertz on 2025-11-10T17:15:52.907Z: Bel-aire is very delayed / Jason Johnston on 2025-11-11 16:11: need framing. / allucent_notes_20251111_182405: David Wiltberger on 2025-10-14 12:10: delayed for recovery / David Wiltberger on 2025-11-04 14:11: changing order to recover / Zack Goertz on 2025-11-10T17:15:52.907Z: Bel-aire is very delayed / Jason Johnston on 2025-11-11 16:11: need framing. / allucent_notes_20251104_160200: David Wiltberger on 2025-10-14 12:10: delayed for recovery / David Wiltberger on 2025-11-04 14:11: changing order to recover / allucent_notes_20251028_163138: David Wiltberger on 2025-10-14 12:10: delayed for recovery / allucent_notes_20251027_224008: David Wiltberger on 2025-10-14 12:10: delayed for recovery / allucent_notes_20251021_145627: David Wiltberger on 2025-10-14 12:10: delayed for recovery / allucent_notes_20251014_152335: David Wiltberger on 2025-10-14 12:10: delayed for recovery / allucent_notes_20251230_164549: David Wiltberger on 2025-10-14 12:10: delayed for recovery / David Wiltberger on 2025-11-04 14:11: changing order to recover / Zack Goertz on 2025-11-10T17:15:52.907Z: Bel-aire is very delayed / Jason Johnston on 2025-11-11 16:11: need framing. / David Wiltberger on 2025-12-01 10:13: have layout issue and correcting / David Wiltberger on 2025-12-02 06:49: correcting field layout / Jason Johnston on 2025-12-16 08:09: Hangers have not started. / David Wiltberger on 2025-12-30 16:23: no update / allucent_notes: 2025-10-14 12:10 - User: David Wiltberger - Date Added: 2025-10-14 12:10 - Note: delayed for recovery / 2025-11-04 14:11 - User: David Wiltberger - Date Added: 2025-11-04 14:11 - Note: changing order to recover / 2025-11-10T17:15:52.907Z - User: Zack Go
- QTS-8641: allucent_notes_20251216_165335: Zack Goertz on 2025-10-27T14:03:46.929Z: Top track has been laid. Zone 2 is falling behind and pushing zone 3 / Jason Johnston on 2025-10-28T23:03:32.976Z: Unactualize this and move out to after BOH / Jason Johnston on 2025-10-28 16:10: unactualize. / Zack Goertz on 2025-10-29T19:32:19.063Z: Top and bottom track has started. But, I didnt realize zone 2 was a higher priority, so labor was adjusted accordingly. / Zack Goertz on 2025-11-03T16:48:10.388Z: Zone 3 is not the priority. Zone 2 is next and is falling behind waiting for Bel-aire to finish chiller mains and REI rough in / Jason Johnston on 2025-11-04 16:11: Update needed / Zack Goertz on 2025-11-07T13:26:24.821Z: Zone 3 is not a priority. Focus in on zone 2 first / Zack Goertz on 2025-11-10T17:15:24.993Z: Finally able to get PCI to start framing zone 3. Exterior and corridor walls are first / Zack Goertz on 2025-11-11T18:30:07.733Z: Finally able to get PCI to start framing zone 3. Exterior and corridor walls are first / Jason Johnston on 2025-11-11 16:11: not started / Sean Waisner on 2025-12-02 15:30: Have sequencing for priority needed / allucent_notes_20251209_203830: Zack Goertz on 2025-10-27T14:03:46.929Z: Top track has been laid. Zone 2 is falling behind and pushing zone 3 / Jason Johnston on 2025-10-28T23:03:32.976Z: Unactualize this and move out to after BOH / Jason Johnston on 2025-10-28 16:10: unactualize. / Zack Goertz on 2025-10-29T19:32:19.063Z: Top and bottom track has started. But, I didnt realize zone 2 was a higher priority, so labor was adjusted accordingly. / Zack Goertz on 2025-11-03T16:48:10.388Z: Zone 3 is not the priority. Zone 2 is next and is falling behind waiting for Bel-aire to finish chiller mains and REI rough in / Jason Johnston on 2025-11-04 16:11: Update needed / Zack Goertz on 2025-11-07T13:26:24.821Z: Zone 3 is not a priority. Focus in on zone 2 first / Zack Goertz on 2025-11-10T17:15:24.993Z: Finally able to get PCI to start framing zone 3. Exterior and corridor walls are first / Zack Goertz on 2025-11-11T18:30:07.733Z: Finally able to get PCI to start framing zone 3. Exterior and corridor walls are first / Jason Johnston on 2025-11-11 16:11: not started / Sean Waisner on 2025-12-02 15:30: Have sequencing for priority needed / allucent_notes_20251202_153722: Zack Goertz on 2025-10-27T14:03:46.929Z: Top track has been laid. Zone 2 is falling behind and pushing zone 3 / Jason Johnston on 2025-10-28T23:03:32.976Z: Unactualize this and move out to after BOH / Jason Johnston on 2025-10-28 16:10: unactualize. / Zack Goertz on 2025-10-29T19:32:19.063Z: Top and bottom track has started. But, I didnt realize zone 2 was a higher priority, so labor was adjusted accordingly. / Zack Goertz on 2025-11-03T16:48:10.388Z: Zone 3 is not the priority. Zone 2 is next and is falling behind waiting for Bel-aire to finish chiller mains and REI rough in / Jason Johnston on 2025-11-04 16:11: Update needed / Zack Goertz on 2025-11-07T13:26:24.821Z: Zone 3 is not a priority. Focus in on zone 2 first / Zack Goertz on 2025-11-10T17:15:24.993Z: Finally able to get PCI to start framing zone 3. Exterior and corridor walls are first / Zack Goertz on 2025-11-11T18:30:07.733Z: Finally able to get PCI to start framing zone 3. Exterior and corridor walls are first / Jason Johnston on 2025-11-11 16:11: not started / Sean Waisner on 2025-12-02 15:30: Have sequencing for priority needed / allucent_notes_20251118_192630: Zack Goertz on 2025-10-27T14:03:46.929Z: Top track has been laid. Zone 2 is falling behind and pushing zone 3 / Jason Johnston on 2025-10-28T23:03:32.976Z: Unactualize this and move out to after BOH / Jason Johnston on 2025-10-28 16:10: unactualize. / Zack Goertz on 2025-10-29T19:32:19.063Z: Top and bottom track has started. But, I didnt realize zone 2 was a higher priority, so labor was adjusted accordingly. / Zack Goertz on 2025-11-03T16:48:10.388Z: Zone 3 is not the priority. Zone 2 is next and is falling behind waiting for Bel-aire to finish chiller mains and REI rough in / Jason Johnston on 2025-11-04 16:11: Update needed / Zack Goertz on 2025-11-07T13:26:24.821Z: Zone 3 is not a priority. Focus in on zone 2 first / Zack Goertz on 2025-11-10T17:15:24.993Z: Finally able to get PCI to start framing zone 3. Exterior and corridor walls are first / Zack Goertz on 2025-11-11T18:30:07.733Z: Finally able to get PCI to start framing zone 3. Exterior and corridor walls are first / Jason Johnston on 2025-11-11 16:11: not started / allucent_notes_20251111_182405: Zack Goertz on 2025-10-27T14:03:46.929Z: Top track has been laid. Zone 2 is falling behind and pushing zone 3 / Jason Johnston on 2025-10-28T23:03:32.976Z: Unactualize this and move out to after BOH / Jason Johnston on 2025-10-28 16:10: unactualize. / Zack Goertz on 2025-10-29T19:32:19.063Z: Top and bottom track has started. But, I didnt realize zone 2 was a higher priority, so labor was adjusted accordingly. / Zack Goertz on 2025-11-03T16:48:10.388Z: Zone 3 is not the priority. Zone 2 is next and is falling behind waiting for Bel-aire to finish chiller mains and REI rough in / Jason Johnston on 2025-11-04 16:11: Update needed / Zack Goertz on 2025-11-07T13:26:24.821Z: Zone 3 is not a priority. Focus in on zone 2 first / Zack Goertz on 2025-11-10T17:15:24.993Z: Finally able to get PCI to start framing zone 3. Exterior and corridor walls are first / Zack Goertz on 2025-11-11T18:30:07.733Z: Finally able to get PCI to start framing zone 3. Exterior and corridor walls are first / Jason Johnston on 2025-11-11 16:11: not started / allucent_notes_20251104_160200: Zack Goertz on 2025-10-27T14:03:46.929Z: Top track has been laid. Zone 2 is falling behind and pushing zone 3 / Jason Johnston on 2025-10-28T23:03:32.976Z: Unactualize this and move out to after BOH / Jason Johnston on 2025-10-28 16:10: unactualize. / Zack Goertz on 2025-10-29T19:32:19.063Z: Top and bottom track has started. But, I didnt realize zone 2 was a higher priority, so labor was adjusted accordingly. / Zack Goertz on 2025-11-03T16:48:10.388Z: Zone 3 is not the priority. Zone 2 is next and is falling behind waiting for Bel-aire to finish chiller mains and REI rough in / Jason Johnston on 2025-11-04 16:11: Update needed / allucent_notes_20251028_163138: Zack Goertz on 2025-10-27T14:03:46.929Z: Top track has been laid. Zone 2 is falling behind and pushing zone 3 / Jason Johnston on 2025-10-28T23:03:32.976Z: Unactualize this and move out to after BOH / Jason Johnston on 2025-10-28 16:10: unactualize. / allucent_notes_20251027_224008: Zack Goertz on 2025-10-27T14:03:46.929Z: Top track has been laid. Zone 2 is falling behind and pushing zone 3 / allucent_notes_20251230_164549: Zack Goertz on 2025-10-27T14:03:46.929Z: Top track has been laid. Zone 2 is falling behind and pushing zone 3 / Jason Johnston on 2025-10-28T23:03:32.976Z: Unactualize this and move out to after BOH / Jason Johnston on 2025-10-28 16:10: unactualize. / Zack Goertz on 2025-10-29T19:32:19.063Z: Top and bottom track has started. But, I didnt realize zone 2 was a higher priority, so labor was adjusted accordingly. / Zack Goertz on 2025-11-03T16:48:10.388Z: Zone 3 is not the priority. Zone 2 is next and is falling behind waiting for Bel-aire to finish chiller mains and REI rough in / Jason Johnston on 2025-11-04 16:11: Update needed / Zack Goertz on 2025-11-07T13:26:24.821Z: Zone 3 is not a priority. Focus in on zone 2 first / Zack Goertz on 2025-11-10T17:15:24.993Z: Finally able to get PCI to start framing zone 3. Exterior and corridor walls are first / Zack Goertz on 2025-11-11T18:30:07.733Z: Finally able to get PCI to start framing zone 3. Exterior and corridor walls are first / Jason Johnston on 2025-11-11 16:11: not started / Sean Waisner on 2025-12-02 15:30: Have sequencing for priority needed / David Wiltberger on 2025-12-30 16:23: no update / allucent_notes: 2025-10-27T14:03:46.929Z - User: Zack Goertz - Date Added: 2025-10-27T14:03:46.929Z - Note: Top track has been laid. Zone 2 is falling behind and pushing zone 3 / 2025-10-28T23:03:32.976Z - User: Jason Johnston - Date Added: 2025-10-28T23:03:32.976Z - No
- QTS-12291: Scheduler Notes: 3/17: In wall electrical delaying start on DH side
- QTS-1003620: allucent_notes_20251216_165335: Jason Johnston on 2025-11-04 16:11: Update needed / Zack Goertz on 2025-11-07T13:27:02.345Z: ZOne 2 is the first priority. No work is happening in zone 3 at this time / Zack Goertz on 2025-11-10T17:15:34.188Z: Finally able to get PCI to start framing zone 3. Exterior and corridor walls are first / Jason Johnston on 2025-11-11 16:11: need walls. / allucent_notes_20251209_203830: Jason Johnston on 2025-11-04 16:11: Update needed / Zack Goertz on 2025-11-07T13:27:02.345Z: ZOne 2 is the first priority. No work is happening in zone 3 at this time / Zack Goertz on 2025-11-10T17:15:34.188Z: Finally able to get PCI to start framing zone 3. Exterior and corridor walls are first / Jason Johnston on 2025-11-11 16:11: need walls. / allucent_notes_20251202_153722: Jason Johnston on 2025-11-04 16:11: Update needed / Zack Goertz on 2025-11-07T13:27:02.345Z: ZOne 2 is the first priority. No work is happening in zone 3 at this time / Zack Goertz on 2025-11-10T17:15:34.188Z: Finally able to get PCI to start framing zone 3. Exterior and corridor walls are first / Jason Johnston on 2025-11-11 16:11: need walls. / allucent_notes_20251118_192630: Jason Johnston on 2025-11-04 16:11: Update needed / Zack Goertz on 2025-11-07T13:27:02.345Z: ZOne 2 is the first priority. No work is happening in zone 3 at this time / Zack Goertz on 2025-11-10T17:15:34.188Z: Finally able to get PCI to start framing zone 3. Exterior and corridor walls are first / Jason Johnston on 2025-11-11 16:11: need walls. / allucent_notes_20251111_182405: Jason Johnston on 2025-11-04 16:11: Update needed / Zack Goertz on 2025-11-07T13:27:02.345Z: ZOne 2 is the first priority. No work is happening in zone 3 at this time / Zack Goertz on 2025-11-10T17:15:34.188Z: Finally able to get PCI to start framing zone 3. Exterior and corridor walls are first / Jason Johnston on 2025-11-11 16:11: need walls. / allucent_notes_20251104_160200: Jason Johnston on 2025-11-04 16:11: Update needed / allucent_notes_20251230_164549: Jason Johnston on 2025-11-04 16:11: Update needed / Zack Goertz on 2025-11-07T13:27:02.345Z: ZOne 2 is the first priority. No work is happening in zone 3 at this time / Zack Goertz on 2025-11-10T17:15:34.188Z: Finally able to get PCI to start framing zone 3. Exterior and corridor walls are first / Jason Johnston on 2025-11-11 16:11: need walls. / allucent_notes: 2025-11-04 16:11 - User: Jason Johnston - Date Added: 2025-11-04 16:11 - Note: Update needed / 2025-11-07T13:27:02.345Z - User: Zack Goertz - Date Added: 2025-11-07T13:27:02.345Z - Note: ZOne 2 is the first priority. No work is happening in zone 3 at thi
- QTS-1003630: allucent_notes_20251216_165335: Jason Johnston on 2025-11-04 16:11: Update needed / Zack Goertz on 2025-11-07T13:27:02.345Z: ZOne 2 is the first priority. No work is happening in zone 3 at this time / Zack Goertz on 2025-11-10T17:15:34.188Z: Finally able to get PCI to start framing zone 3. Exterior and corridor walls are first / Jason Johnston on 2025-11-11 16:11: need walls. / allucent_notes_20251209_203830: Jason Johnston on 2025-11-04 16:11: Update needed / Zack Goertz on 2025-11-07T13:27:02.345Z: ZOne 2 is the first priority. No work is happening in zone 3 at this time / Zack Goertz on 2025-11-10T17:15:34.188Z: Finally able to get PCI to start framing zone 3. Exterior and corridor walls are first / Jason Johnston on 2025-11-11 16:11: need walls. / allucent_notes_20251202_153722: Jason Johnston on 2025-11-04 16:11: Update needed / Zack Goertz on 2025-11-07T13:27:02.345Z: ZOne 2 is the first priority. No work is happening in zone 3 at this time / Zack Goertz on 2025-11-10T17:15:34.188Z: Finally able to get PCI to start framing zone 3. Exterior and corridor walls are first / Jason Johnston on 2025-11-11 16:11: need walls. / allucent_notes_20251118_192630: Jason Johnston on 2025-11-04 16:11: Update needed / Zack Goertz on 2025-11-07T13:27:02.345Z: ZOne 2 is the first priority. No work is happening in zone 3 at this time / Zack Goertz on 2025-11-10T17:15:34.188Z: Finally able to get PCI to start framing zone 3. Exterior and corridor walls are first / Jason Johnston on 2025-11-11 16:11: need walls. / allucent_notes_20251111_182405: Jason Johnston on 2025-11-04 16:11: Update needed / Zack Goertz on 2025-11-07T13:27:02.345Z: ZOne 2 is the first priority. No work is happening in zone 3 at this time / Zack Goertz on 2025-11-10T17:15:34.188Z: Finally able to get PCI to start framing zone 3. Exterior and corridor walls are first / Jason Johnston on 2025-11-11 16:11: need walls. / allucent_notes_20251104_160200: Jason Johnston on 2025-11-04 16:11: Update needed / allucent_notes_20251230_164549: Jason Johnston on 2025-11-04 16:11: Update needed / Zack Goertz on 2025-11-07T13:27:02.345Z: ZOne 2 is the first priority. No work is happening in zone 3 at this time / Zack Goertz on 2025-11-10T17:15:34.188Z: Finally able to get PCI to start framing zone 3. Exterior and corridor walls are first / Jason Johnston on 2025-11-11 16:11: need walls. / allucent_notes: 2025-11-04 16:11 - User: Jason Johnston - Date Added: 2025-11-04 16:11 - Note: Update needed / 2025-11-07T13:27:02.345Z - User: Zack Goertz - Date Added: 2025-11-07T13:27:02.345Z - Note: ZOne 2 is the first priority. No work is happening in zone 3 at thi
- QTS-11321: allucent_notes_20251216_165335: Jason Johnston on 2025-11-04 16:11: Update needed / Zack Goertz on 2025-11-07T13:27:02.345Z: ZOne 2 is the first priority. No work is happening in zone 3 at this time / Zack Goertz on 2025-11-10T17:15:34.188Z: Finally able to get PCI to start framing zone 3. Exterior and corridor walls are first / Jason Johnston on 2025-11-11 16:11: need walls. / allucent_notes_20251209_203830: Jason Johnston on 2025-11-04 16:11: Update needed / Zack Goertz on 2025-11-07T13:27:02.345Z: ZOne 2 is the first priority. No work is happening in zone 3 at this time / Zack Goertz on 2025-11-10T17:15:34.188Z: Finally able to get PCI to start framing zone 3. Exterior and corridor walls are first / Jason Johnston on 2025-11-11 16:11: need walls. / allucent_notes_20251202_153722: Jason Johnston on 2025-11-04 16:11: Update needed / Zack Goertz on 2025-11-07T13:27:02.345Z: ZOne 2 is the first priority. No work is happening in zone 3 at this time / Zack Goertz on 2025-11-10T17:15:34.188Z: Finally able to get PCI to start framing zone 3. Exterior and corridor walls are first / Jason Johnston on 2025-11-11 16:11: need walls. / allucent_notes_20251118_192630: Jason Johnston on 2025-11-04 16:11: Update needed / Zack Goertz on 2025-11-07T13:27:02.345Z: ZOne 2 is the first priority. No work is happening in zone 3 at this time / Zack Goertz on 2025-11-10T17:15:34.188Z: Finally able to get PCI to start framing zone 3. Exterior and corridor walls are first / Jason Johnston on 2025-11-11 16:11: need walls. / allucent_notes_20251111_182405: Jason Johnston on 2025-11-04 16:11: Update needed / Zack Goertz on 2025-11-07T13:27:02.345Z: ZOne 2 is the first priority. No work is happening in zone 3 at this time / Zack Goertz on 2025-11-10T17:15:34.188Z: Finally able to get PCI to start framing zone 3. Exterior and corridor walls are first / Jason Johnston on 2025-11-11 16:11: need walls. / allucent_notes_20251104_160200: Jason Johnston on 2025-11-04 16:11: Update needed / allucent_notes_20251230_164549: Jason Johnston on 2025-11-04 16:11: Update needed / Zack Goertz on 2025-11-07T13:27:02.345Z: ZOne 2 is the first priority. No work is happening in zone 3 at this time / Zack Goertz on 2025-11-10T17:15:34.188Z: Finally able to get PCI to start framing zone 3. Exterior and corridor walls are first / Jason Johnston on 2025-11-11 16:11: need walls. / allucent_notes: 2025-11-04 16:11 - User: Jason Johnston - Date Added: 2025-11-04 16:11 - Note: Update needed / 2025-11-07T13:27:02.345Z - User: Zack Goertz - Date Added: 2025-11-07T13:27:02.345Z - Note: ZOne 2 is the first priority. No work is happening in zone 3 at thi
- QTS-1003590: allucent_notes_20251216_165335: Jason Johnston on 2025-11-04 16:11: Update needed / Zack Goertz on 2025-11-07T13:27:02.345Z: ZOne 2 is the first priority. No work is happening in zone 3 at this time / Zack Goertz on 2025-11-10T17:15:34.188Z: Finally able to get PCI to start framing zone 3. Exterior and corridor walls are first / Jason Johnston on 2025-11-11 16:11: need walls. / allucent_notes_20251209_203830: Jason Johnston on 2025-11-04 16:11: Update needed / Zack Goertz on 2025-11-07T13:27:02.345Z: ZOne 2 is the first priority. No work is happening in zone 3 at this time / Zack Goertz on 2025-11-10T17:15:34.188Z: Finally able to get PCI to start framing zone 3. Exterior and corridor walls are first / Jason Johnston on 2025-11-11 16:11: need walls. / allucent_notes_20251202_153722: Jason Johnston on 2025-11-04 16:11: Update needed / Zack Goertz on 2025-11-07T13:27:02.345Z: ZOne 2 is the first priority. No work is happening in zone 3 at this time / Zack Goertz on 2025-11-10T17:15:34.188Z: Finally able to get PCI to start framing zone 3. Exterior and corridor walls are first / Jason Johnston on 2025-11-11 16:11: need walls. / allucent_notes_20251118_192630: Jason Johnston on 2025-11-04 16:11: Update needed / Zack Goertz on 2025-11-07T13:27:02.345Z: ZOne 2 is the first priority. No work is happening in zone 3 at this time / Zack Goertz on 2025-11-10T17:15:34.188Z: Finally able to get PCI to start framing zone 3. Exterior and corridor walls are first / Jason Johnston on 2025-11-11 16:11: need walls. / allucent_notes_20251111_182405: Jason Johnston on 2025-11-04 16:11: Update needed / Zack Goertz on 2025-11-07T13:27:02.345Z: ZOne 2 is the first priority. No work is happening in zone 3 at this time / Zack Goertz on 2025-11-10T17:15:34.188Z: Finally able to get PCI to start framing zone 3. Exterior and corridor walls are first / Jason Johnston on 2025-11-11 16:11: need walls. / allucent_notes_20251104_160200: Jason Johnston on 2025-11-04 16:11: Update needed / allucent_notes_20251230_164549: Jason Johnston on 2025-11-04 16:11: Update needed / Zack Goertz on 2025-11-07T13:27:02.345Z: ZOne 2 is the first priority. No work is happening in zone 3 at this time / Zack Goertz on 2025-11-10T17:15:34.188Z: Finally able to get PCI to start framing zone 3. Exterior and corridor walls are first / Jason Johnston on 2025-11-11 16:11: need walls. / allucent_notes: 2025-11-04 16:11 - User: Jason Johnston - Date Added: 2025-11-04 16:11 - Note: Update needed / 2025-11-07T13:27:02.345Z - User: Zack Goertz - Date Added: 2025-11-07T13:27:02.345Z - Note: ZOne 2 is the first priority. No work is happening in zone 3 at thi
- QTS-1008980: Scheduler Notes: 3/17: In wall electrical delaying start on DH side
- QTS-1003600: allucent_notes_20251216_165335: Jason Johnston on 2025-11-04 16:11: Update needed / Zack Goertz on 2025-11-07T13:27:02.345Z: ZOne 2 is the first priority. No work is happening in zone 3 at this time / Zack Goertz on 2025-11-10T17:15:34.188Z: Finally able to get PCI to start framing zone 3. Exterior and corridor walls are first / Jason Johnston on 2025-11-11 16:11: need walls. / allucent_notes_20251209_203830: Jason Johnston on 2025-11-04 16:11: Update needed / Zack Goertz on 2025-11-07T13:27:02.345Z: ZOne 2 is the first priority. No work is happening in zone 3 at this time / Zack Goertz on 2025-11-10T17:15:34.188Z: Finally able to get PCI to start framing zone 3. Exterior and corridor walls are first / Jason Johnston on 2025-11-11 16:11: need walls. / allucent_notes_20251202_153722: Jason Johnston on 2025-11-04 16:11: Update needed / Zack Goertz on 2025-11-07T13:27:02.345Z: ZOne 2 is the first priority. No work is happening in zone 3 at this time / Zack Goertz on 2025-11-10T17:15:34.188Z: Finally able to get PCI to start framing zone 3. Exterior and corridor walls are first / Jason Johnston on 2025-11-11 16:11: need walls. / allucent_notes_20251118_192630: Jason Johnston on 2025-11-04 16:11: Update needed / Zack Goertz on 2025-11-07T13:27:02.345Z: ZOne 2 is the first priority. No work is happening in zone 3 at this time / Zack Goertz on 2025-11-10T17:15:34.188Z: Finally able to get PCI to start framing zone 3. Exterior and corridor walls are first / Jason Johnston on 2025-11-11 16:11: need walls. / allucent_notes_20251111_182405: Jason Johnston on 2025-11-04 16:11: Update needed / Zack Goertz on 2025-11-07T13:27:02.345Z: ZOne 2 is the first priority. No work is happening in zone 3 at this time / Zack Goertz on 2025-11-10T17:15:34.188Z: Finally able to get PCI to start framing zone 3. Exterior and corridor walls are first / Jason Johnston on 2025-11-11 16:11: need walls. / allucent_notes_20251104_160200: Jason Johnston on 2025-11-04 16:11: Update needed / allucent_notes_20251230_164549: Jason Johnston on 2025-11-04 16:11: Update needed / Zack Goertz on 2025-11-07T13:27:02.345Z: ZOne 2 is the first priority. No work is happening in zone 3 at this time / Zack Goertz on 2025-11-10T17:15:34.188Z: Finally able to get PCI to start framing zone 3. Exterior and corridor walls are first / Jason Johnston on 2025-11-11 16:11: need walls. / allucent_notes: 2025-11-04 16:11 - User: Jason Johnston - Date Added: 2025-11-04 16:11 - Note: Update needed / 2025-11-07T13:27:02.345Z - User: Zack Goertz - Date Added: 2025-11-07T13:27:02.345Z - Note: ZOne 2 is the first priority. No work is happening in zone 3 at thi
- QTS-10611: allucent_notes_20251216_165335: David Wiltberger on 2025-12-02 14:03: no fan wall built yet / allucent_notes_20251209_203830: David Wiltberger on 2025-12-02 14:03: no fan wall built yet / allucent_notes_20251230_164549: David Wiltberger on 2025-12-02 14:03: no fan wall built yet / allucent_notes: 2025-12-02 14:03 - User: David Wiltberger - Date Added: 2025-12-02 14:03 - Note: no fan wall built yet
- QTS-1003640: allucent_notes_20251216_165335: Jason Johnston on 2025-11-04 16:11: Update needed / Zack Goertz on 2025-11-07T13:27:02.345Z: ZOne 2 is the first priority. No work is happening in zone 3 at this time / Zack Goertz on 2025-11-10T17:15:34.188Z: Finally able to get PCI to start framing zone 3. Exterior and corridor walls are first / Jason Johnston on 2025-11-11 16:11: need walls. / allucent_notes_20251209_203830: Jason Johnston on 2025-11-04 16:11: Update needed / Zack Goertz on 2025-11-07T13:27:02.345Z: ZOne 2 is the first priority. No work is happening in zone 3 at this time / Zack Goertz on 2025-11-10T17:15:34.188Z: Finally able to get PCI to start framing zone 3. Exterior and corridor walls are first / Jason Johnston on 2025-11-11 16:11: need walls. / allucent_notes_20251202_153722: Jason Johnston on 2025-11-04 16:11: Update needed / Zack Goertz on 2025-11-07T13:27:02.345Z: ZOne 2 is the first priority. No work is happening in zone 3 at this time / Zack Goertz on 2025-11-10T17:15:34.188Z: Finally able to get PCI to start framing zone 3. Exterior and corridor walls are first / Jason Johnston on 2025-11-11 16:11: need walls. / allucent_notes_20251118_192630: Jason Johnston on 2025-11-04 16:11: Update needed / Zack Goertz on 2025-11-07T13:27:02.345Z: ZOne 2 is the first priority. No work is happening in zone 3 at this time / Zack Goertz on 2025-11-10T17:15:34.188Z: Finally able to get PCI to start framing zone 3. Exterior and corridor walls are first / Jason Johnston on 2025-11-11 16:11: need walls. / allucent_notes_20251111_182405: Jason Johnston on 2025-11-04 16:11: Update needed / Zack Goertz on 2025-11-07T13:27:02.345Z: ZOne 2 is the first priority. No work is happening in zone 3 at this time / Zack Goertz on 2025-11-10T17:15:34.188Z: Finally able to get PCI to start framing zone 3. Exterior and corridor walls are first / Jason Johnston on 2025-11-11 16:11: need walls. / allucent_notes_20251104_160200: Jason Johnston on 2025-11-04 16:11: Update needed / allucent_notes_20251230_164549: Jason Johnston on 2025-11-04 16:11: Update needed / Zack Goertz on 2025-11-07T13:27:02.345Z: ZOne 2 is the first priority. No work is happening in zone 3 at this time / Zack Goertz on 2025-11-10T17:15:34.188Z: Finally able to get PCI to start framing zone 3. Exterior and corridor walls are first / Jason Johnston on 2025-11-11 16:11: need walls. / allucent_notes: 2025-11-04 16:11 - User: Jason Johnston - Date Added: 2025-11-04 16:11 - Note: Update needed / 2025-11-07T13:27:02.345Z - User: Zack Goertz - Date Added: 2025-11-07T13:27:02.345Z - Note: ZOne 2 is the first priority. No work is happening in zone 3 at thi
- QTS-17201: Scheduler Notes: 7/28/26 - Trade Damage

| ID | WBS | Activity | Duration | Start | Finish | Predecessors | Complete | Remaining | Planned start | Planned finish | Total float | Free float | Calendar | Allucent CSI Group | Project Section | Layton Discipline | Baseline | Phase-1-1 | Project Section-1 | Location | Layton Super | Contract | Level | Trade Partner | TFO-CONST ONLY | NICK |
| --- | --- | --- | --- | --- | --- | --- | --- | --- | --- | --- | --- | --- | --- | --- | --- | --- | --- | --- | --- | --- | --- | --- | --- | --- | --- | --- |
|  | 7 | **Gallery 2303 Mechanical** |  | 2025-11-06 | 2026-09-18 |  |  |  |  |  |  |  |  |  |  |  |  |  |  |  |  |  |  |  |  |  |
| QTS-10601 |  | DH 2300 / Mechanical Gallery 2303 // Frame 2303 Exterior Wall | 5d | 2025-11-06 A | 2025-11-12 A | QTS-19981 | 100% |  |  |  |  |  |  | 01ADMIN | Construction | Build Out | IGMP | Phase 3 | Construction | DH2300 | Doug Hayes | BAB |  |  |  |  |
| QTS-12281 |  | DH 2300 / Mechanical Gallery 2303 // Hang, Tape, & Finish Drywall for 2303 Exterior Wall | 10d | 2025-12-15 A | 2026-03-02 A | QTS-38981, QTS-10601, QTS-8651 FF | 100% |  | 2025-12-15 | 2025-12-26 |  |  | QTS-PHX3 DC1 - 6 day w/ Holidays | 01ADMIN | Construction | Build Out | IGMP | Phase 3 | Construction | DH2300 |  | BAB |  |  |  |  |
| QTS-44611 |  | DH 2300 / Mechanical Gallery 2303 // Install OH Mechanical Hangers | 7d | 2026-01-21 A | 2026-01-27 A | QTS-44521 | 100% |  | 2026-01-21 | 2026-01-28 |  |  | QTS-PHX3 DC1 - 6 day w/ Holidays | 01ADMIN | Construction | Mechanical | IGMP |  | Construction | DH2100 |  | BAB | Level 2 |  |  |  |
| QTS-11651 |  | DH 2300 / Mechanical Gallery 2303 // Frame Fan Wall | 5d | 2026-02-10 A | 2026-02-15 A | QTS-10621, QTS-10601, QTS-14791 SS | 100% |  | 2026-02-10 | 2026-02-14 |  |  | QTS-PHX3 DC1 - 6 day w/ Holidays | 01ADMIN | Construction | Build Out | IGMP | Phase 3 | Construction | DH2300 |  | BAB |  |  |  |  |
| QTS-14791 |  | DH 2300 / Mechanical Gallery 2303 // Install OH Mechanical Piping | 10d | 2026-02-10 A | 2026-05-18 A | QTS-44611 | 100% |  | 2026-02-10 | 2026-02-20 |  |  | QTS-PHX3 DC1 - 6 day w/ Holidays | 01ADMIN | Construction | Mechanical | IGMP | Phase 3 | Construction | DH2300 |  | BAB |  |  |  |  |
| QTS-13051 |  | DH 2300 / Mechanical Gallery 2303 // Hang Fan Drywall - MG Side | 2d | 2026-02-16 A | 2026-02-18 A | QTS-11651 | 100% |  | 2026-02-16 | 2026-02-17 |  |  | QTS-PHX3 DC1 - 6 day w/ Holidays | 01ADMIN | Construction | Build Out | IGMP | Phase 3 | Construction | DH2300 |  | BAB |  |  |  |  |
| QTS-1003720 |  | DH 2300 / Mechanical Gallery 2303 // Tape, & Finish Fan Drywall - MG Side | 4d | 2026-02-18 A | 2026-03-10 A | QTS-13051 | 100% |  | 2026-02-18 | 2026-02-21 |  |  | QTS-PHX3 DC1 - 6 day w/ Holidays | 01ADMIN | Construction | Build Out | IGMP | Phase 3 | Construction | DH2300 |  | BAB |  |  |  |  |
| QTS-14801 |  | DH 2300 / Mechanical Gallery 2303 // Install Security Screen Above Fan Wall | 3d | 2026-02-20 A | 2026-02-26 A | QTS-99680 | 100% |  | 2026-02-20 | 2026-02-23 |  |  | QTS-PHX3 DC1 - 6 day w/ Holidays |  | Construction | Build Out | IGMP | Phase 3 | Construction | DH2300 |  | BAB |  |  |  |  |
| QTS-12591 |  | DH 2300 / Mechanical Gallery 2303 // In Wall Electrical Rough for Fan Wall | 2d | 2026-02-25 A | 2026-02-26 A | QTS-11651 | 100% |  |  |  |  |  | QTS-PHX3 DC1 - 6 day w/ Holidays | 01ADMIN | Construction | Electrical | IGMP | Phase 3 | Construction | DH2300 |  | BAB |  |  |  |  |
| QTS-12861 |  | DH 2300 / Mechanical Gallery 2303 // In Wall Inspection for Fan Wall | 1d | 2026-02-27 A | 2026-02-27 A | QTS-12591 | 100% |  |  |  |  |  | QTS-PHX3 DC1 - 6 day w/ Holidays | 01ADMIN | Construction | Electrical | IGMP | Phase 3 | Construction | DH2300 |  | BAB |  |  |  |  |
| QTS-1007500 |  | DH 2300 / Mechanical Gallery 2303 // Load CRAH Into Building | 3d | 2026-03-18 A | 2026-03-20 A | QTS-37051, QTS-37041, QTS-37031, QTS-37021, QTS-37011, QTS-37001, QTS-36991, QTS-36981, QTS-36971, QTS-36961, QTS-36951, QTS-36941, QTS-36931, QTS-36921 | 100% |  |  |  |  |  | QTS-PHX3 DC1 - 6 day w/ Holidays |  | Construction | Mechanical | IGMP | Phase 3 | Construction | DH2300 |  | BAB |  |  |  |  |
| QTS-1007460 |  | DH 2300 / Mechanical Gallery 2303 // Frame Fan Wall - Remaining | 4d | 2026-03-25 A | 2026-03-28 A | QTS-1004120 | 100% |  |  |  |  |  | QTS-PHX3 DC1 - 6 day w/ Holidays | 01ADMIN | Construction | Build Out | IGMP | Phase 3 | Construction | DH2300 |  | BAB |  |  |  |  |
| QTS-1007470 |  | DH 2300 / Mechanical Gallery 2303 // In Wall Electrical Fan Wall - Remaining | 4d | 2026-03-30 A | 2026-03-31 A | QTS-1007460 | 100% |  | 2026-03-30 | 2026-04-02 |  |  | QTS-PHX3 DC1 - 6 day w/ Holidays | 01ADMIN | Construction | Build Out | IGMP | Phase 3 | Construction | DH2300 |  | BAB |  |  |  |  |
| QTS-1007480 |  | DH 2300 / Mechanical Gallery 2303 // Hang Drywall Fan Wall - Remaining | 4d | 2026-04-08 A | 2026-04-11 A | QTS-1007470 | 100% |  |  |  |  |  | QTS-PHX3 DC1 - 6 day w/ Holidays | 01ADMIN | Construction | Build Out | IGMP | Phase 3 | Construction | DH2300 |  | BAB |  |  |  |  |
| QTS-1007490 |  | DH 2300 / Mechanical Gallery 2303 // Tape & Finish Drywall Fan Wall - Remaining | 4d | 2026-04-13 A | 2026-04-14 A | QTS-1007480 | 100% |  | 2026-04-13 | 2026-04-16 |  |  | QTS-PHX3 DC1 - 6 day w/ Holidays | 01ADMIN | Construction | Build Out | IGMP | Phase 3 | Construction | DH2300 |  | BAB |  |  |  |  |
| QTS-1003730 |  | DH 2300 / Mechanical Gallery 2303 // Hang Fan Drywall - DH Side | 2d | 2026-05-05 A | 2026-05-07 A | QTS-13051, QTS-12861 | 100% |  | 2026-07-18 | 2026-07-20 |  |  | QTS-PHX3 DC1 - 6 day w/ Holidays | 01ADMIN | Construction | Build Out | IGMP | Phase 3 | Construction | DH2300 | Ed Carter | BAB |  |  |  |  |
| QTS-1003740 |  | DH 2300 / Mechanical Gallery 2303 // Tape, & Finish Fan Drywall - DH Side | 4d | 2026-05-08 A | 2026-05-12 A | QTS-1003730 | 100% |  | 2026-07-21 | 2026-07-24 |  |  | QTS-PHX3 DC1 - 6 day w/ Holidays | 01ADMIN | Construction | Build Out | IGMP | Phase 3 | Construction | DH2300 | Ed Carter | BAB |  |  |  |  |
| QTS-13861 |  | DH 2300 / Mechanical Gallery 2303 // Prime & Paint Fan Wall - MG Side | 2d | 2026-06-14 A | 2026-06-15 A | QTS-1003720, QTS-1007490, QTS-1003740 | 100% |  | 2026-07-01 | 2026-07-02 |  |  | QTS-PHX3 DC1 - 6 day w/ Holidays |  | Construction | Build Out | IGMP | Phase 3 | Construction | DH2300 | Ed Carter | BAB |  |  |  |  |
| QTS-1007090 |  | DH 2300 / Mechanical Gallery 2303 // Hang, Tape, & Finish Drywall for 2303 Exterior Wall (After Final Tilt Panel) | 10d | 2026-06-16 A | 2026-06-25 A | QTS-1004120 | 100% |  | 2026-07-01 | 2026-07-14 |  |  | QTS-PHX3 DC1 - 6 day w/ Holidays |  |  | Build Out |  |  |  | DH2300 | Ed Carter | BAB |  |  |  |  |
| QTS-13851 |  | DH 2300 / Mechanical Gallery 2303 // Paint for 2303 Exterior Wall | 3d | 2026-06-24 A | 2026-06-27 A | QTS-12281, QTS-1007090 | 100% |  | 2026-07-15 | 2026-07-17 |  |  | QTS-PHX3 DC1 - 6 day w/ Holidays | 01ADMIN | Construction | Build Out | IGMP | Phase 3 | Construction | DH2300 | Ed Carter | BAB |  |  |  |  |
| QTS-15321 |  | DH 2300 / Mechanical Gallery 2303 // OFCI - L2 SET IN PLACE - Eq Type # - DH CRAH - 14 units | 5d | 2026-07-08 A | 2026-07-08 A | QTS-14311, QTS-14791, QTS-37051, QTS-37041, QTS-37031, QTS-37021, QTS-37011, QTS-37001, QTS-36991, QTS-36981, QTS-36971, QTS-36961, QTS-36951, QTS-36941, QTS-36931, QTS-36921, QTS-14801, QTS-13861, QTS-1007500 | 100% |  | 2026-07-14 | 2026-07-18 |  |  | QTS-PHX3 DC1 - 6 day w/ Holidays |  | Construction | Mechanical | IGMP | Phase 3 | Construction | DH2300 | Mechanical | BAB |  |  |  |  |
| QTS-5410 |  | DH 2300 / Gallery 2303 / Install Grounding Conduits | 4d | 2026-07-22 A | 2026-07-25 A | QTS-1007500 | 100% |  | 2026-07-29 | 2026-08-01 |  |  | **GLOBAL - 6 Day Workweek w/ Basic Holidays |  |  | Electrical |  |  |  |  | Electrical | BAB |  | REI |  |  |
| QTS-5480 |  | DH 2300 / Gallery 2303 / Install LV Conduit Drops | 2d | 2026-07-24 A | 2026-07-27 A | QTS-15321 | 100% |  | 2026-08-12 | 2026-08-13 |  |  | **GLOBAL - 6 Day Workweek w/ Basic Holidays |  |  | LV |  |  |  |  | Low Voltage | BAB |  | Prime |  |  |
| QTS-5380 |  | DH 2300 / Gallery 2303 / Install CRAH / CDU Branch Piping | 5d | 2026-07-28 A | 2026-08-03 A | QTS - 6370 | 100% |  | 2026-08-07 | 2026-08-12 |  |  | **GLOBAL - 6 Day Workweek w/ Basic Holidays |  |  | Mechanical |  |  |  |  | Mechanical | BAB |  | Bel-Aire |  |  |
| QTS-5590 |  | DH 2300 / Gallery 2303 / Final Paint | 2d | 2026-08-01 A | 2026-08-03 A | QTS-5480 | 100% |  | 2026-08-18 | 2026-08-19 |  |  | **GLOBAL - 6 Day Workweek w/ Basic Holidays |  |  | Build Out |  |  |  |  | Jason Hendley | BAB |  | PPC |  |  |
| QTS-5400 |  | DH 2300 / Gallery 2303 / Install Electrical Tray | 4d | 2026-08-03 A | 2026-08-06 A | QTS-4020, QTS-5380 | 100% |  | 2026-08-06 | 2026-08-10 |  |  | **GLOBAL - 6 Day Workweek w/ Basic Holidays |  |  | Electrical |  |  |  |  | Electrical | BAB |  | REI |  |  |
| QTS-5420 |  | DH 2300 / Gallery 2303 / Install Pathway for CRAH's / CDU's | 3d | 2026-08-03 A | 2026-08-05 A | QTS-5410, QTS-15321 | 100% |  | 2026-08-05 | 2026-08-07 |  |  | **GLOBAL - 6 Day Workweek w/ Basic Holidays |  |  | Electrical |  |  |  |  | Electrical | BAB |  | REI |  |  |
| QTS-5560 |  | DH 2300 / Gallery 2303 / Pull and Terminate Grounding @ Equipment | 4d | 2026-08-03 A | 2026-08-06 A | QTS-5480 | 100% |  | 2026-08-10 | 2026-08-13 |  |  | **GLOBAL - 6 Day Workweek w/ Basic Holidays |  |  | Electrical |  |  |  |  | Electrical | BAB |  | REI |  |  |
| QTS-5460 |  | DH 2300 / Gallery 2303 / Install Remaining LV Tray and Liner | 3d | 2026-08-06 A | 2026-08-19 | QTS-5480 | 67% | 1d | 2026-08-08 | 2026-08-11 | -75d | 0d | **GLOBAL - 6 Day Workweek w/ Basic Holidays |  |  | LV |  |  |  |  | Low Voltage | BAB |  | E2 |  |  |
| QTS-14301 |  | DH 2300 / Mechanical Gallery 2303 // Top of Wall Fire Stop for 2303 Exterior Wall | 2d | 2026-08-19 | 2026-08-20 | QTS-13851 |  |  |  |  | -15d | 65d | QTS-PHX3 DC1 - 6 day w/ Holidays |  | Construction | Mechanical | IGMP | Phase 3 | Construction | DH2300 | Mechanical | BAB |  | Riteway |  |  |
| QTS-5390 |  | DH 2300 / Gallery 2303 / Insulate CRAH / CDU Branch Piping | 3d | 2026-08-19 | 2026-08-21 | QTS-5380 |  |  |  |  | -78d | 13d | **GLOBAL - 6 Day Workweek w/ Basic Holidays |  |  | Mechanical |  |  |  |  | Mechanical | BAB |  | Bel-Aire |  |  |
| QTS-5510 |  | DH 2300 / Gallery 2303 / Pull Wire for CRAH's | 4d | 2026-08-19 | 2026-08-22 | QTS-5400, QTS-5420 |  |  |  |  | -83d | 0d | **GLOBAL - 6 Day Workweek w/ Basic Holidays |  |  | Electrical |  |  |  |  | Electrical | BAB |  | REI |  |  |
| QTS-5470 |  | DH 2300 / Gallery 2303 / Install DCIM 2303 | 2d | 2026-08-20 | 2026-08-21 | QTS-5460 |  |  |  |  | -75d | 0d | **GLOBAL - 6 Day Workweek w/ Basic Holidays |  |  | Mechanical |  |  |  |  | Jason Hendley | BAB |  | E2 |  |  |
| QTS-5490 |  | DH 2300 / Gallery 2303 / Pull LV Cable to Equipment | 4d | 2026-08-22 | 2026-08-26 | QTS-5480, QTS-2971, QTS-5470 |  |  |  |  | -75d | 0d | **GLOBAL - 6 Day Workweek w/ Basic Holidays |  |  | LV |  |  |  |  | Low Voltage | BAB |  | E2/Prime |  |  |
| QTS-5520 |  | TFO SCOPE \\ DH 2300 / Gallery 2303 / Pull Wire for CDU's | 4d | 2026-08-24 | 2026-08-27 | QTS-5420, QTS-5510 |  |  |  |  | -53d | 0d | **GLOBAL - 6 Day Workweek w/ Basic Holidays |  |  | Electrical |  |  |  |  | Electrical | TFO |  | REI | TFO CONST | NICK |
| QTS-5540 |  | DH 2300 / Gallery 2303 / Terminate Wire from MOD's to CRAH's | 4d | 2026-08-24 | 2026-08-27 | QTS-5510 |  |  |  |  | -83d | 8d | **GLOBAL - 6 Day Workweek w/ Basic Holidays |  |  | Electrical |  |  |  |  | Electrical | BAB |  | REI |  |  |
| QTS-5580 |  | DH 2300 / Gallery 2303 / Remove Temp lighting/ Power | 2d | 2026-08-24 | 2026-08-25 | QTS-7320 |  |  |  |  | -39d | 18d | **GLOBAL - 6 Day Workweek w/ Basic Holidays |  |  | Electrical |  |  |  |  | Electrical | BAB |  | REI |  |  |
| QTS-5500 |  | DH 2300 / Gallery 2303 / Terminate / Test LV Cable @ DCIM / Equipment | 4d | 2026-08-27 | 2026-08-31 | QTS-5560, QTS-5490 |  |  |  |  | -75d | 0d | **GLOBAL - 6 Day Workweek w/ Basic Holidays |  |  | LV |  |  |  |  | Low Voltage | BAB |  | E2 |  |  |
| QTS-5430 |  | TFO SCOPE \\ DH 2300 / Gallery 2303 / Install Technical Loop Hangers | 5d | 2026-08-28 | 2026-09-02 | QTS-4780 |  |  |  |  | -56d | 0d | **GLOBAL - 6 Day Workweek w/ Basic Holidays |  |  | Mechanical |  |  |  |  | Mechanical | TFO |  | Bel-Aire | TFO CONST | NICK |
| QTS-5550 |  | TFO SCOPE \\ DH 2300 / Gallery 2303 / Terminate Wire from MOD's to CDU's | 3d | 2026-08-28 | 2026-08-31 | QTS-5520 |  |  |  |  | -53d | 5d | **GLOBAL - 6 Day Workweek w/ Basic Holidays |  |  | Electrical |  |  |  |  | Electrical | TFO |  | REI | TFO CONST | NICK |
| QTS-5440 |  | TFO SCOPE \\ DH 2300 / Gallery 2303 / Install Technical Loop Piping (Stainless) | 10d | 2026-09-03 | 2026-09-15 | QTS-5430, QTS-5020, QTS - 24761 |  |  |  |  | -56d | 1d | **GLOBAL - 6 Day Workweek w/ Basic Holidays |  |  | Mechanical |  |  |  |  | Mechanical | TFO |  | Bel-Aire | TFO CONST | NICK |
| QTS-5570 |  | DH 2300 / Gallery 2303 / Install Fire Extinguishers and Fire Extinguisher Cabinets | 2d | 2026-09-10 | 2026-09-11 | QTS-5590, QTS-4900 |  |  |  |  | -57d | 0d | **GLOBAL - 6 Day Workweek w/ Basic Holidays |  |  | Build Out |  |  |  |  | Jake Shimmin | BAB |  | ISEC |  |  |
| QTS-5600 |  | DH 2300 / Gallery 2303 / Seal Concrete Floor | 2d | 2026-09-12 | 2026-09-14 | QTS-5570 |  |  |  |  | -57d | 0d | **GLOBAL - 6 Day Workweek w/ Basic Holidays |  |  | Build Out |  |  |  |  | Ben Ribble | BAB |  | Bldg Solutions |  |  |
| QTS-5610 |  | DH 2300 / Gallery 2303 / Install Rubber Base | 2d | 2026-09-15 | 2026-09-16 | QTS-5600 |  |  |  |  | -57d | 0d | **GLOBAL - 6 Day Workweek w/ Basic Holidays |  |  | Build Out |  |  |  |  | Ben Ribble | BAB |  | Wholesale Flooring |  |  |
| QTS-5620 |  | DH 2300 / Gallery 2303 / Clean | 2d | 2026-09-17 | 2026-09-18 | QTS-5610, QTS-5580, QTS-5440 |  |  |  |  | -57d | 23d | **GLOBAL - 6 Day Workweek w/ Basic Holidays |  |  | Build Out |  |  |  |  | Ed Carter | BAB |  | AGDC |  |  |

Notes:
- QTS-10601: allucent_notes_20251118_192630: Zack Goertz on 2025-11-03T16:48:44.461Z: Zone 3 is not the priority. Zone 2 is next and is falling behind waiting for Bel-aire to finish chiller mains and REI rough in / allucent_notes_20251111_182405: Zack Goertz on 2025-11-03T16:48:44.461Z: Zone 3 is not the priority. Zone 2 is next and is falling behind waiting for Bel-aire to finish chiller mains and REI rough in / allucent_notes_20251104_160200: Zack Goertz on 2025-11-03T16:48:44.461Z: Zone 3 is not the priority. Zone 2 is next and is falling behind waiting for Bel-aire to finish chiller mains and REI rough in / allucent_notes: 2025-11-03T16:48:44.461Z - User: Zack Goertz - Date Added: 2025-11-03T16:48:44.461Z - Note: Zone 3 is not the priority. Zone 2 is next and is falling behind waiting for Bel-aire to finish chiller mains and REI rough in
- QTS-12281: allucent_notes_20251216_165335: Zack Goertz on 2025-11-17 13:11: Zone 3 is last priority. Framing has barely begun on level 2. Plus, a stop work has been issued. / allucent_notes_20251209_203830: Zack Goertz on 2025-11-17 13:11: Zone 3 is last priority. Framing has barely begun on level 2. Plus, a stop work has been issued. / allucent_notes_20251202_153722: Zack Goertz on 2025-11-17 13:11: Zone 3 is last priority. Framing has barely begun on level 2. Plus, a stop work has been issued. / allucent_notes_20251118_192630: Zack Goertz on 2025-11-17 13:11: Zone 3 is last priority. Framing has barely begun on level 2. Plus, a stop work has been issued. / allucent_notes: 2025-11-17 13:11 - User: Zack Goertz - Date Added: 2025-11-17 13:11 - Note: Zone 3 is last priority. Framing has barely begun on level 2. Plus, a stop work has been issued.
- QTS-11651: allucent_notes_20251118_192630: Zack Goertz on 2025-11-17 13:11: Zone 3 is last priority. Framing has barely begun on level 2. Plus, a stop work has been issued. Fan walls are last priority of all doors / allucent_notes: 2025-11-17 13:11 - User: Zack Goertz - Date Added: 2025-11-17 13:11 - Note: Zone 3 is last priority. Framing has barely begun on level 2. Plus, a stop work has been issued. Fan walls are last priority of all doors
- QTS-1003720: Scheduler Notes: 3/10: Ending activity until final tilt panel is installed. / Notes: 3/10: Ending activity until final tilt panel is installed.
- QTS-1007090: Scheduler Notes: Adding to close out QTS-12281 until final tilt panel is / installed / Notes: Adding to close out QTS-12281 until final tilt panel is installed / allucent_notes: 2025-11-17 13:11 - User: Zack Goertz - Date Added: 2025-11-17 13:11 - Note: Zone 3 is last priority. Framing has barely begun on level 2. Plus, a stop work has been issued.
- QTS-5410: Notes: Manpower
- QTS-5380: Notes: 8/3 done
- QTS-5400: Notes: Started 8/3
- QTS-5420: Notes: 8/3-8/5 done
- QTS-5560: Notes: Started 8/3
- QTS-5460: Notes: Started 8/6
- QTS-5510: Notes: Will push due to manpower wire pulls
- QTS-5520: Notes: Will push due to manpower wire pulls
- QTS-5540: Notes: Will push due to manpower wire pulls

| ID | WBS | Activity | Duration | Start | Finish | Predecessors | Complete | Remaining | Planned start | Planned finish | Total float | Free float | Calendar | Allucent CSI Group | Project Section | Layton Discipline | Baseline | Phase-1-1 | Project Section-1 | Location | Contract | Level | Layton Super | Trade Partner | NICK | Notes | TFO-CONST ONLY |
| --- | --- | --- | --- | --- | --- | --- | --- | --- | --- | --- | --- | --- | --- | --- | --- | --- | --- | --- | --- | --- | --- | --- | --- | --- | --- | --- | --- |
|  | 1 | **Gallery 2302 Electrical** |  | 2025-12-10 | 2026-10-27 |  |  |  |  |  |  |  |  |  |  |  |  |  |  |  |  |  |  |  |  |  |  |
| QTS-14771 |  | DH 2300 / Electrical Gallery 2302 // Install VESDA | 8d | 2025-12-10 A | 2026-01-10 A | QTS-120000, QTS-13881 | 100% |  | 2025-12-10 | 2025-12-18 |  |  | QTS-PHX3 DC1 - 6 day w/ Holidays | 01ADMIN | Construction | Electrical | IGMP | Phase 3 | Construction | DH2300 | BAB |  |  |  |  |  |  |
| QTS-1008830 |  | DH 2300 / Electrical Gallery 2302 // Install OH FA Conduit & Grounding | 10d | 2026-03-30 A | 2026-05-01 A | QTS-1003640 | 100% |  | 2026-03-30 | 2026-04-09 |  |  | QTS-PHX3 DC1 - 6 day w/ Holidays | 01ADMIN | Construction | Electrical | IGMP |  | Construction | DH2100 | BAB | Level 2 | Oscar Armenta |  |  |  |  |
| QTS-1008840 |  | DH 2300 / Electrical Gallery 2302 // Install OH EPMS/BMS Conduit & Grounding | 10d | 2026-04-27 A | 2026-07-02 A | QTS-1003640 | 100% |  | 2026-04-27 | 2026-05-07 |  |  | QTS-PHX3 DC1 - 6 day w/ Holidays | 01ADMIN | Construction | Electrical | IGMP |  | Construction | DH2100 | BAB | Level 2 | Oscar Armenta |  |  |  |  |
| QTS-17791 |  | DH 2300 / Electrical Gallery 2302 // Install Raceway From Pod to Dog House - Zone 3 Second Floor | 6d | 2026-05-04 A | 2026-07-01 A | QTS-14771, QTS-2021, QTS-102720, QTS-13571 | 100% |  | 2026-05-20 | 2026-05-27 |  |  | QTS-PHX3 DC1 - 6 day w/ Holidays | 01ADMIN | Construction | Electrical | IGMP | Phase 3 | Construction | DH2300 | BAB |  | Oscar Armenta |  |  |  |  |
| QTS-16871 |  | DH 2300 / Electrical Gallery 2302 // House Panels | 2d | 2026-06-03 A | 2026-06-04 A | QTS-15771, QTS-14991 | 100% |  |  |  |  |  | QTS-PHX3 DC1 - 6 day w/ Holidays |  | Construction | Electrical | IGMP | Phase 3 | Construction | DH2300 | BAB |  | Oscar Armenta |  |  |  |  |
| QTS-14291 |  | DH 2300 / Electrical Gallery 2302 // Install Electrical Tray | 5d | 2026-06-10 A | 2026-06-15 A | QTS-14991, QTS-1008830, QTS-1008840, QTS-17791, QTS-16871 | 100% |  | 2026-07-20 | 2026-07-24 |  |  | QTS-PHX3 DC1 - 6 day w/ Holidays |  | Construction | Electrical | IGMP | Phase 3 | Construction | DH2300 | BAB |  | Oscar Armenta |  |  |  |  |
| QTS-15311 |  | DH 2300 / Electrical Gallery 2302 // Install Basket Tray for LV | 5d | 2026-06-16 A | 2026-06-22 A | QTS-14291 | 100% |  | 2026-07-20 | 2026-07-24 |  |  | QTS-PHX3 DC1 - 6 day w/ Holidays |  | Construction | Electrical | IGMP | Phase 3 | Construction | DH2300 | BAB |  | Oscar Armenta |  |  |  |  |
| QTS-4520 |  | TFO SCOPE \\ DH 2300 / Gallery 2302 / Remove Drywall at RPP Feeder Penetration | 4d | 2026-07-15 A | 2026-07-18 A | QTS-15771, QTS-45961 | 100% |  | 2026-07-22 | 2026-07-25 |  |  | **GLOBAL - 6 Day Workweek w/ Basic Holidays |  |  | Build Out |  |  |  |  | TFO |  | Ed Carter | PCI | NICK |  |  |
| QTS-4450 |  | DH 2300 / Gallery 2302 /Pull LV Cable to DCIM and Equipment | 4d | 2026-07-16 A | 2026-08-19 | QTS-15311 | 75% | 1d | 2026-07-31 | 2026-08-04 | -69d | 0d | **GLOBAL - 6 Day Workweek w/ Basic Holidays |  |  | LV |  |  |  |  | BAB |  | Low Voltage | E2 |  | Delays due to other trades |  |
| QTS-4490 |  | DH 2300 / Gallery 2302 / Terminate LV cable @ SCP Panels | 4d | 2026-07-16 A | 2026-08-19 | QTS-15311 | 75% | 1d | 2026-08-05 | 2026-08-08 | -37d | 0d | **GLOBAL - 6 Day Workweek w/ Basic Holidays |  |  | LV |  |  |  |  | BAB |  | Low Voltage | Prime |  | Delays due to other trades |  |
| QTS-4530 |  | TFO SCOPE \\ DH 2300 / Gallery 2302 / Install Supports for RPP Feeders | 4d | 2026-07-16 A | 2026-08-19 | QTS-4520 | 75% | 1d | 2026-07-28 | 2026-07-31 | -86d | 0d | **GLOBAL - 6 Day Workweek w/ Basic Holidays |  |  | Mechanical |  |  |  |  | TFO |  | Electrical | REI | NICK |  | TFO CONST |
| QTS-4390 |  | DH 2300 / Gallery 2302 / Pull Wire BSWY to ATS | 4d | 2026-07-17 A | 2026-07-22 A | QTS-17791 | 100% |  | 2026-07-24 | 2026-07-28 |  |  | **GLOBAL - 6 Day Workweek w/ Basic Holidays |  |  | Electrical |  |  |  |  | BAB |  | Electrical | REI |  |  |  |
| QTS-4400 |  | DH 2300 / Gallery 2302 // Install LV Conduit Drops to Equipment / SCP Panels | 2d | 2026-07-18 A | 2026-07-21 A | QTS-4410 | 100% |  | 2026-07-29 | 2026-07-30 |  |  | **GLOBAL - 6 Day Workweek w/ Basic Holidays |  |  | LV |  |  |  |  | BAB |  | Low Voltage | Prime |  |  |  |
| QTS-4410 |  | DH 2300 / Gallery 2302 / Install LV Tray Liner | 2d | 2026-07-18 A | 2026-07-20 A | QTS-14291 | 100% |  | 2026-07-27 | 2026-07-28 |  |  | **GLOBAL - 6 Day Workweek w/ Basic Holidays |  |  | LV |  |  |  |  | BAB |  | Low Voltage | E2 |  |  |  |
| QTS-4540 |  | TFO SCOPE \\ DH 2300 / Gallery 2302 / Pull MC for RPP Feeders | 6d | 2026-07-21 A | 2026-08-04 A | QTS-4530 SS, QTS-14291 | 100% |  | 2026-07-25 | 2026-07-31 |  |  | **GLOBAL - 6 Day Workweek w/ Basic Holidays |  |  | Electrical |  |  |  |  | TFO |  | Electrical | REI | NICK | 8/4 done | TFO CONST |
| QTS-4420 |  | DH 2300 / Gallery 2302 / Install SCP Panels | 2d | 2026-07-23 A | 2026-07-23 A | QTS-4400 | 100% |  | 2026-07-29 | 2026-07-30 |  |  | **GLOBAL - 6 Day Workweek w/ Basic Holidays |  |  | Mechanical |  |  |  |  | BAB |  | Electrical | Prime |  |  |  |
| QTS-1010790 |  | DH 2300 / Electrical Gallery 2302 // Pull Cable from Security Panel to Security Devices | 6d | 2026-07-24 A | 2026-08-19 | QTS-4420 | 83% | 1d | 2026-07-31 | 2026-08-06 | -44d | 7d | QTS-PHX3 DC1 - 6 day w/ Holidays |  | Construction | LV | IGMP | Phase 2 | Construction | DH2300 | BAB |  | Low Voltage | E2 |  |  |  |
| QTS-1010800 |  | DH 2300 / Electrical Gallery 2302 // Pull Cable from DCIM to Security Devices - purple | 6d | 2026-07-24 A | 2026-08-19 | QTS-4420 | 83% | 1d | 2026-07-31 | 2026-08-06 | -50d | 1d | QTS-PHX3 DC1 - 6 day w/ Holidays |  | Construction | LV | IGMP | Phase 2 | Construction | DH2300 | BAB |  | Low Voltage | E2 |  |  |  |
| QTS-4435 |  | DH 2300 / Gallery 2302 / Install DCIM 2302 | 2d | 2026-07-24 A | 2026-07-25 A | QTS-4400 | 100% |  | 2026-07-31 | 2026-08-01 |  |  | **GLOBAL - 6 Day Workweek w/ Basic Holidays |  |  | LV |  |  |  |  | BAB |  | Low Voltage | E2 |  |  |  |
| QTS-4445 |  | DH 2300 / Gallery 2302 / Install EZ Path | 2d | 2026-07-27 A | 2026-07-28 A | QTS-4435 | 100% |  | 2026-08-03 | 2026-08-04 |  |  | **GLOBAL - 6 Day Workweek w/ Basic Holidays |  |  | Electrical |  |  |  |  | BAB |  | Electrical | E2 |  |  |  |
| QTS-4460 |  | DH 2300 / Gallery 2302 / Install Conduit for Grounding and Bonding | 3d | 2026-07-27 A | 2026-08-19 | QTS-14291 | 67% | 1d | 2026-07-31 | 2026-08-03 | -77d | 0d | **GLOBAL - 6 Day Workweek w/ Basic Holidays |  |  | Electrical |  |  |  |  | BAB |  | Electrical | REI |  | Manpower |  |
| QTS-7300 |  | DH 2300 / Gallery 2302 / Terminate Wire BSWY to ATS | 4d | 2026-07-27 A | 2026-08-22 | QTS-4390, QTS-16881, QTS-6581, QTS-6591, QTS-6601, QTS-6611, QTS-6621, QTS-17811, QTS-8331, QTS-8351, QTS-8371, QTS-8391, QTS-8411 |  | 4d | 2026-07-30 | 2026-08-03 | -86d | 4d | **GLOBAL - 6 Day Workweek w/ Basic Holidays |  |  | Electrical |  |  |  |  | BAB |  | Electrical | REI |  |  |  |
| QTS-4370 |  | DH 2300 / Gallery 2302 / Install Raceway to House Panels ( UPS/ DH/ CHK) | 3d | 2026-07-28 A | 2026-08-19 | QTS-14291 | 67% | 1d | 2026-07-29 | 2026-07-31 | -81d | 0d | **GLOBAL - 6 Day Workweek w/ Basic Holidays |  |  | Mechanical |  |  |  |  | BAB |  | Electrical | REI |  | Manpower |  |
| QTS-4580 |  | DH 2300 / Gallery 2302 / Final Paint | 2d | 2026-08-01 A | 2026-08-03 A | QTS-4445 | 100% |  | 2026-08-18 | 2026-08-19 |  |  | **GLOBAL - 6 Day Workweek w/ Basic Holidays |  |  | Build Out |  |  |  |  | BAB |  | Jason Hendley | PPC |  |  |  |
| QTS-1010780 |  | DH 2300 / Electrical Gallery 2302 // Install Security Panel | 1d | 2026-08-19 | 2026-08-19 | QTS-1003640, QTS-38631 |  |  |  |  | -51d | 0d | QTS-PHX3 DC1 - 6 day w/ Holidays |  | Construction | LV | IGMP | Phase 2 | Construction | DH2300 | BAB |  | Low Voltage | Securitas |  |  |  |
| QTS-4350 |  | DH 2300 / Gallery 2302 / Terminate Remaing ATS to COD Equipment to Equipment | 2d | 2026-08-19 | 2026-08-20 | QTS-14291, QTS-4550 SS |  |  |  |  | -84d | 6d | **GLOBAL - 6 Day Workweek w/ Basic Holidays |  |  | Electrical |  |  |  |  | BAB |  | Electrical | REI |  | Manpower |  |
| QTS-4550 |  | TFO SCOPE \\ DH 2300 / Gallery 2302 / Terminate MC for RPP Feeders @ COD's | 5d | 2026-08-19 | 2026-08-24 | QTS-4540 |  |  |  |  | -84d | 0d | **GLOBAL - 6 Day Workweek w/ Basic Holidays |  |  | Electrical |  |  |  |  | TFO |  | Electrical | REI | NICK | Manpower | TFO CONST |
| QTS-1010890 |  | DH 2300 / Electrical Gallery 2302 // Install Security Panel Pathways | 1d | 2026-08-20 | 2026-08-20 | QTS-1010780 |  |  |  |  | -51d | 0d | QTS-PHX3 DC1 - 6 day w/ Holidays |  | Construction | LV | IGMP | Phase 2 | Construction | DH2300 | BAB |  | Low Voltage | REI |  |  |  |
| QTS-4380 |  | DH 2300 / Gallery 2302 / Pull Wire to House Panels | 4d | 2026-08-20 | 2026-08-24 | QTS-4370 |  |  |  |  | -81d | 0d | **GLOBAL - 6 Day Workweek w/ Basic Holidays |  |  | Electrical |  |  |  |  | BAB |  | Electrical | REI |  | Manpower |  |
| QTS-4470 |  | DH 2300 / Gallery 2302 / Pull and Terminate Grounding | 4d | 2026-08-20 | 2026-08-24 | QTS-4460 |  |  |  |  | -77d | 13d | **GLOBAL - 6 Day Workweek w/ Basic Holidays |  |  | Electrical |  |  |  |  | BAB |  | Electrical | REI |  | Manpower |  |
| QTS-4510 |  | DH 2300 / Gallery 2302 / Terminate/ Test LV Cable @ DCIM and equipment | 4d | 2026-08-20 | 2026-08-24 | QTS-4450, QTS-4270 |  |  |  |  | -69d | 6d | **GLOBAL - 6 Day Workweek w/ Basic Holidays |  |  | LV |  |  |  |  | BAB |  | Low Voltage | E2 |  |  |  |
| QTS-7320 |  | DH 2300 / Gallery 2302 / Install Lights | 3d | 2026-08-20 | 2026-08-22 | QTS-4540, QTS-5020 |  |  |  |  | -40d | 0d | **GLOBAL - 6 Day Workweek w/ Basic Holidays |  |  | Electrical |  |  |  |  | BAB |  | Electrical | REI |  | Manpower |  |
| QTS-1010810 |  | DH 2300 / Electrical Gallery 2302 // Terminate and Test Cable from DCIM to Security Devices | 6d | 2026-08-21 | 2026-08-27 | QTS-1010800, QTS-1010890 |  |  |  |  | -51d | 0d | QTS-PHX3 DC1 - 6 day w/ Holidays |  | Construction | LV | IGMP | Phase 2 | Construction | DH2300 | BAB |  | Low Voltage | E2 |  |  |  |
| QTS-7330 |  | DH 2300 / Gallery 2302 / Pull and Terminate Lighting | 3d | 2026-08-24 | 2026-08-26 | QTS-7320 |  |  |  |  | -40d | 17d | **GLOBAL - 6 Day Workweek w/ Basic Holidays |  |  | Electrical |  |  |  |  | BAB |  | Electrical | REI |  | Manpower |  |
| QTS-7310 |  | DH 2300 / Gallery 2302 / Terminate Wire to House Panels | 4d | 2026-08-25 | 2026-08-28 | QTS-4380, QTS-4445 |  |  |  |  | -81d | 2d | **GLOBAL - 6 Day Workweek w/ Basic Holidays |  |  | Electrical |  |  |  |  | BAB |  | Electrical | REI |  | Manpower |  |
| QTS-1010820 |  | DH 2300 / Electrical Gallery 2302 // Install Security Devices | 10d | 2026-08-28 | 2026-09-09 | QTS-1010810, QTS-1010790, QTS-4420 |  |  |  |  | -51d | 6d | QTS-PHX3 DC1 - 6 day w/ Holidays |  | Construction | LV | IGMP | Phase 2 | Construction | DH2300 | BAB |  | Low Voltage | Securitas |  |  |  |
| QTS-4560 |  | DH 2300 / Gallery 2302 / Install Fire Extinguishers and Fire Extinguisher Cabinets | 2d | 2026-09-10 | 2026-09-11 | QTS-4580, QTS-5570 SS |  |  |  |  | -57d | 0d | **GLOBAL - 6 Day Workweek w/ Basic Holidays |  |  | Build Out |  |  |  |  | BAB |  | Jake Shimmin | ISEC |  |  |  |
| QTS-4590 |  | DH 2300 / Gallery 2302 / Seal Concrete Floor | 2d | 2026-09-12 | 2026-09-14 | QTS-4560 |  |  |  |  | -57d | 0d | **GLOBAL - 6 Day Workweek w/ Basic Holidays |  |  | Build Out |  |  |  |  | BAB |  | Ben Ribble | Bldg Solutions |  |  |  |
| QTS-4600 |  | DH 2300 / Gallery 2302 / Install Rubber Base | 2d | 2026-09-15 | 2026-09-16 | QTS-4590 |  |  |  |  | -57d | 0d | **GLOBAL - 6 Day Workweek w/ Basic Holidays |  |  | Build Out |  |  |  |  | BAB |  | Ben Ribble | Wholesale Flooring |  |  |  |
| QTS-4610 |  | DH 2300 / Gallery 2302 / Clean | 2d | 2026-09-17 | 2026-09-18 | QTS-4490, QTS-4600, QTS-7330, QTS-1010820 |  |  |  |  | -57d | 23d | **GLOBAL - 6 Day Workweek w/ Basic Holidays |  |  | Build Out |  |  |  |  | BAB |  | Ed Carter | AGDC |  |  |  |
| QTS-4570 |  | TFO SCOPE \\ DH 2300 / Gallery 2302 / Patch Back and Fire Caulk RPP Feeder Pentrations | 4d | 2026-10-23 | 2026-10-27 | QTS-5230, QTS-4530 |  |  |  |  | -59d | 0d | **GLOBAL - 6 Day Workweek w/ Basic Holidays |  |  | Build Out |  |  |  |  | TFO |  | Ed Carter | Riteway | NICK |  | TFO CONST |

Notes:
- QTS-14771: allucent_notes_20251216_165335: Zack Goertz on 2025-11-17 13:11: Zone 3 is last priority. Framing has barely begun on level 2. Plus, a stop work has been issued. / Luis Vea on 2025-12-01 10:47: walls are not completed / allucent_notes_20251209_203830: Zack Goertz on 2025-11-17 13:11: Zone 3 is last priority. Framing has barely begun on level 2. Plus, a stop work has been issued. / Luis Vea on 2025-12-01 10:47: walls are not completed / allucent_notes_20251202_153722: Zack Goertz on 2025-11-17 13:11: Zone 3 is last priority. Framing has barely begun on level 2. Plus, a stop work has been issued. / Luis Vea on 2025-12-01 10:47: walls are not completed / allucent_notes_20251118_192630: Zack Goertz on 2025-11-17 13:11: Zone 3 is last priority. Framing has barely begun on level 2. Plus, a stop work has been issued. / allucent_notes_20251230_164549: Zack Goertz on 2025-11-17 13:11: Zone 3 is last priority. Framing has barely begun on level 2. Plus, a stop work has been issued. / Luis Vea on 2025-12-01 10:47: walls are not completed / David Wiltberger on 2025-12-30 16:23: no update / allucent_notes: 2025-11-17 13:11 - User: Zack Goertz - Date Added: 2025-11-17 13:11 - Note: Zone 3 is last priority. Framing has barely begun on level 2. Plus, a stop work has been issued. / 2025-12-01 10:47 - User: Luis Vea - Date Added: 2025-12-01 10:47 - Note: walls

| ID | WBS | Activity | Duration | Start | Finish | Predecessors | Complete | Planned start | Planned finish | Calendar | Project Section | Layton Discipline | Baseline | Phase-1-1 | Project Section-1 | Location | Layton Super | Contract | Allucent CSI Group | Notes |
| --- | --- | --- | --- | --- | --- | --- | --- | --- | --- | --- | --- | --- | --- | --- | --- | --- | --- | --- | --- | --- |
|  | 1 | **Electrical** |  | 2026-03-11 | 2026-06-30 |  |  |  |  |  |  |  |  |  |  |  |  |  |  |  |
|  | 7 | **DH 2300 IDF Cabinets** |  | 2026-05-07 | 2026-05-07 |  |  |  |  |  |  |  |  |  |  |  |  |  |  |  |
| QTS-38631 |  | DH 2300 / Electrical Gallery 2302/2303 // Install Fire Rated Plywood | 1d | 2026-05-07 A | 2026-05-07 A | QTS-13431 | 100% | 2026-07-08 | 2026-07-08 | QTS-PHX3 DC1 - 6 day w/ Holidays | Construction | Build Out | GMP | Phase 3 | Construction | DH2300 | Ed Carter | BAB |  |  |
|  | 1 | **A2300 Lineup** |  | 2026-03-11 | 2026-06-16 |  |  |  |  |  |  |  |  |  |  |  |  |  |  |  |
| QTS-14271 |  | Gallery 2302 / Lineup A2300 // Install Hangers & Supports | 3d | 2026-03-11 A | 2026-03-13 A | QTS-14771 | 100% |  |  | QTS-PHX3 DC1 - 6 day w/ Holidays | Construction | Electrical | IGMP | Phase 3 | Construction | DH2300 |  | BAB | 01ADMIN |  |
| QTS-14991 |  | Gallery 2302 / Lineup A2300 // Install Raceways from LV POD to COD | 7d | 2026-03-25 A | 2026-03-31 A | QTS-14271 | 100% | 2026-04-01 | 2026-04-08 | QTS-PHX3 DC1 - 6 day w/ Holidays | Construction | LV | IGMP | Phase 3 | Construction | DH2300 |  | BAB |  |  |
| QTS-16371 |  | Gallery 2302 / Lineup A2300 // Set Reserve Busway Segment | 2d | 2026-03-26 A | 2026-04-02 A | QTS-50051, QTS-15771, QTS-14991 | 100% | 2026-03-26 | 2026-03-27 | QTS-PHX3 DC1 - 6 day w/ Holidays | Construction | Electrical | IGMP | Phase 3 | Construction | DH2300 |  | BAB |  |  |
| QTS-15771 |  | Gallery 2302 / Lineup A2300 // OFCI - L2 SET IN PLACE - Eq Type # - COD/ATS-210-A - Skid 1-3 | 2d | 2026-04-29 A | 2026-04-30 A | QTS-36651, QTS-1003640 | 100% |  |  | QTS-PHX3 DC1 - 6 day w/ Holidays | Construction | Electrical | IGMP | Phase 3 | Construction | DH2300 |  | BAB | 01ADMIN |  |
| QTS-45961 |  | Gallery 2302 / Lineup A2300 // OFCI - L2 SET IN PLACE - Eq Type # - COD/ATS-210-A - Skid 4-6 | 2d | 2026-04-29 A | 2026-04-30 A | QTS-15771, QTS-1003640 | 100% |  |  | QTS-PHX3 DC1 - 6 day w/ Holidays | Construction | Electrical | IGMP | Phase 3 | Construction | DH2300 |  | BAB |  |  |
| QTS-16881 |  | Gallery 2302 / Lineup A2300 // Pull LV Cables from POD to ATS | 4d | 2026-06-10 A | 2026-06-16 A | QTS-45961 FF+1d, QTS-13571, QTS-14991, QTS-15771, QTS-6561 | 100% | 2026-07-01 | 2026-07-07 | QTS-PHX3 DC1 - 6 day w/ Holidays | Construction | LV | IGMP | Phase 3 | Construction | DH2300 | Low Voltage | BAB |  |  |
| QTS-17811 |  | Gallery 2302 / Lineup A2300 // Pull LV Cables from Reserve Bus to ATS | 2d | 2026-06-10 A | 2026-06-12 A | QTS-15771, QTS-16371, QTS-14991, QTS-8231 | 100% | 2026-07-01 | 2026-07-02 | QTS-PHX3 DC1 - 6 day w/ Holidays | Construction | Electrical | IGMP | Phase 3 | Construction | DH2300 | Oscar Armenta | BAB |  |  |
|  | 2 | **B2300 Lineup** |  | 2026-03-11 | 2026-06-16 |  |  |  |  |  |  |  |  |  |  |  |  |  |  |  |
| QTS-2101 |  | Gallery 2302 / Lineup B2300 // Install Hangers & Supports | 3d | 2026-03-11 A | 2026-03-13 A | QTS-14271 SS | 100% |  |  | QTS-PHX3 DC1 - 6 day w/ Holidays | Construction | Electrical | IGMP | Phase 3 | Construction | DH2300 |  | BAB | 01ADMIN |  |
| QTS-2981 |  | Gallery 2302 / Lineup B2300 // Install Raceways from LV POD to COD | 7d | 2026-03-25 A | 2026-06-12 A | QTS-14991 SS, QTS-2101 | 100% | 2026-04-01 | 2026-04-08 | QTS-PHX3 DC1 - 6 day w/ Holidays | Construction | Electrical | IGMP | Phase 3 | Construction | DH2300 | Oscar Armenta | BAB |  | 4/14: 50% complete |
| QTS-4191 |  | Gallery 2302 / Lineup B2300 // OFCI - L2 SET IN PLACE - Eq Type # - COD/ATS-210-A - Skid 1-3 | 2d | 2026-04-29 A | 2026-04-30 A | QTS-45961, QTS-36661 | 100% | 2026-05-20 | 2026-05-21 | QTS-PHX3 DC1 - 6 day w/ Holidays | Construction | Electrical | IGMP | Phase 3 | Construction | DH2300 |  | BAB |  |  |
| QTS-45971 |  | Gallery 2302 / Lineup B2300 // OFCI - L2 SET IN PLACE - Eq Type # - COD/ATS-210-A - Skid 4-6 | 2d | 2026-05-01 A | 2026-05-01 A | QTS-4191 | 100% | 2026-05-01 | 2026-05-02 | QTS-PHX3 DC1 - 6 day w/ Holidays | Construction | Electrical | IGMP | Phase 3 | Construction | DH2300 |  | BAB |  |  |
| QTS-5251 |  | Gallery 2302 / Lineup B2300 // Set Reserve Busway Segment | 2d | 2026-05-01 A | 2026-05-02 A | QTS-50051, QTS-4191 | 100% |  |  | QTS-PHX3 DC1 - 6 day w/ Holidays | Construction | Electrical | IGMP | Phase 3 | Construction | DH2300 |  | BAB |  |  |
| QTS-6581 |  | Gallery 2302 / Lineup B2300 // Pull LV Cables from POD to ATS | 4d | 2026-06-10 A | 2026-06-16 A | QTS-45971 FF+1d, QTS-13571, QTS-4191 | 100% | 2026-07-02 | 2026-07-08 | QTS-PHX3 DC1 - 6 day w/ Holidays | Construction | LV | IGMP | Phase 3 | Construction | DH2300 | Low Voltage | BAB |  |  |
| QTS-8331 |  | Gallery 2302 / Lineup B2300 // Pull LV Cables from Reserve Bus to ATS | 2d | 2026-06-10 A | 2026-06-12 A | QTS-4191, QTS-5251 | 100% | 2026-07-02 | 2026-07-06 | QTS-PHX3 DC1 - 6 day w/ Holidays | Construction | LV | IGMP | Phase 3 | Construction | DH2300 | Low Voltage | BAB |  |  |
|  | 3 | **C2300 Lineup** |  | 2026-03-11 | 2026-06-16 |  |  |  |  |  |  |  |  |  |  |  |  |  |  |  |
| QTS-2111 |  | Gallery 2302 / Lineup C2300 // Install Hangers & Supports | 3d | 2026-03-11 A | 2026-03-13 A | QTS-2101 | 100% |  |  | QTS-PHX3 DC1 - 6 day w/ Holidays | Construction | Electrical | IGMP | Phase 3 | Construction | DH2300 |  | BAB |  |  |
| QTS-2991 |  | Gallery 2302 / Lineup C2300 // Install Raceways from LV POD to COD | 7d | 2026-03-30 A | 2026-06-12 A | QTS-2981 SS, QTS-2111 | 100% | 2026-03-30 | 2026-04-06 | QTS-PHX3 DC1 - 6 day w/ Holidays | Construction | Electrical | IGMP | Phase 3 | Construction | DH2300 | Oscar Armenta | BAB |  | 4/14: 50% complete |
| QTS-4201 |  | Gallery 2302 / Lineup C2300 // OFCI - L2 SET IN PLACE - Eq Type # - COD/ATS-210-A - Skid 1-3 | 2d | 2026-04-29 A | 2026-04-30 A | QTS-45971, QTS-36671 | 100% | 2026-06-03 | 2026-06-04 | QTS-PHX3 DC1 - 6 day w/ Holidays | Construction | Electrical | IGMP | Phase 3 | Construction | DH2300 |  | BAB |  |  |
| QTS-45981 |  | Gallery 2302 / Lineup C2300 // OFCI - L2 SET IN PLACE - Eq Type # - COD/ATS-210-A - Skid 4-6 | 2d | 2026-04-29 A | 2026-04-30 A | QTS-4201 | 100% | 2026-06-03 | 2026-06-04 | QTS-PHX3 DC1 - 6 day w/ Holidays | Construction | Electrical | IGMP | Phase 3 | Construction | DH2300 | Oscar Armenta | BAB |  |  |
| QTS-6591 |  | Gallery 2302 / Lineup C2300 // Pull LV Cables from POD to ATS | 4d | 2026-06-10 A | 2026-06-16 A | QTS-45981 FF+1d, QTS-13571, QTS-4201 | 100% | 2026-07-06 | 2026-07-09 | QTS-PHX3 DC1 - 6 day w/ Holidays | Construction | LV | IGMP | Phase 3 | Construction | DH2300 | Low Voltage | BAB |  |  |
| QTS-8351 |  | Gallery 2302 / Lineup C2300 // Pull LV Cables from Reserve Bus to ATS | 2d | 2026-06-10 A | 2026-06-12 A | QTS-4201 | 100% | 2026-07-08 | 2026-07-09 | QTS-PHX3 DC1 - 6 day w/ Holidays | Construction | LV | IGMP | Phase 3 | Construction | DH2300 | Low Voltage | BAB |  |  |

Notes:
- QTS-2981: Scheduler Notes: 4/14: 50% complete
- QTS-2991: Scheduler Notes: 4/14: 50% complete

| ID | WBS | Activity | Duration | Start | Finish | Predecessors | Complete | Planned start | Planned finish | Calendar | Project Section | Layton Discipline | Baseline | Phase-1-1 | Project Section-1 | Location | Contract | Notes | Layton Super |
| --- | --- | --- | --- | --- | --- | --- | --- | --- | --- | --- | --- | --- | --- | --- | --- | --- | --- | --- | --- |
|  | 4 | **D2300 Lineup** |  | 2026-03-28 | 2026-06-16 |  |  |  |  |  |  |  |  |  |  |  |  |  |  |
| QTS-2121 |  | Gallery 2302 / Lineup D2300 // Install Hangers & Supports | 3d | 2026-03-28 A | 2026-03-31 A | QTS-2111 | 100% | 2026-04-01 | 2026-04-03 | QTS-PHX3 DC1 - 6 day w/ Holidays | Construction | Electrical | IGMP | Phase 3 | Construction | DH2300 | BAB |  |  |
| QTS-3001 |  | Gallery 2302 / Lineup D2300 // Install Raceways from LV POD to COD | 7d | 2026-03-30 A | 2026-06-12 A | QTS-2991 SS, QTS-2121 | 100% | 2026-03-30 | 2026-04-06 | QTS-PHX3 DC1 - 6 day w/ Holidays | Construction | Electrical | IGMP | Phase 3 | Construction | DH2300 | BAB | 4/14: 50% complete | Oscar Armenta |
| QTS-4211 |  | Gallery 2302 / Lineup D2300 // OFCI - L2 SET IN PLACE - Eq Type # - COD/ATS-210-A - Skid 1-3 | 2d | 2026-04-27 A | 2026-04-28 A | QTS-45981, QTS-36681 | 100% |  |  | QTS-PHX3 DC1 - 6 day w/ Holidays | Construction | Electrical | IGMP | Phase 3 | Construction | DH2300 | BAB |  | Oscar Armenta |
| QTS-45991 |  | Gallery 2302 / Lineup D2300 // OFCI - L2 SET IN PLACE - Eq Type # - COD/ATS-210-A - Skid 4-6 | 2d | 2026-04-29 A | 2026-04-30 A | QTS-4211 | 100% | 2026-06-12 | 2026-06-13 | QTS-PHX3 DC1 - 6 day w/ Holidays | Construction | Electrical | IGMP | Phase 3 | Construction | DH2300 | BAB |  | Oscar Armenta |
| QTS-6601 |  | Gallery 2302 / Lineup D2300 // Pull LV Cables from POD to ATS | 4d | 2026-06-10 A | 2026-06-16 A | QTS-45991 FF+1d, QTS-13571, QTS-4211 | 100% | 2026-07-06 | 2026-07-09 | QTS-PHX3 DC1 - 6 day w/ Holidays | Construction | LV | IGMP | Phase 3 | Construction | DH2300 | BAB |  | Low Voltage |
| QTS-8371 |  | Gallery 2302 / Lineup D2300 // Pull LV Cables from Reserve Bus to ATS | 2d | 2026-06-10 A | 2026-06-12 A | QTS-45991 | 100% | 2026-07-08 | 2026-07-09 | QTS-PHX3 DC1 - 6 day w/ Holidays | Construction | LV | IGMP | Phase 3 | Construction | DH2300 | BAB |  | Low Voltage |
|  | 5 | **E2300 Lineup** |  | 2026-03-28 | 2026-06-16 |  |  |  |  |  |  |  |  |  |  |  |  |  |  |
| QTS-2131 |  | Gallery 2302 / Lineup E2300 // Install Hangers & Supports | 3d | 2026-03-28 A | 2026-03-31 A | QTS-2121 | 100% | 2026-04-04 | 2026-04-07 | QTS-PHX3 DC1 - 6 day w/ Holidays | Construction | Electrical | IGMP | Phase 3 | Construction | DH2300 | BAB |  |  |
| QTS-4221 |  | Gallery 2302 / Lineup E2300 // OFCI - L2 SET IN PLACE - Eq Type # - COD/ATS-210-A - Skid 1-3 | 2d | 2026-04-29 A | 2026-04-30 A | QTS-45991, QTS-36691 | 100% | 2026-07-08 | 2026-07-09 | QTS-PHX3 DC1 - 6 day w/ Holidays | Construction | Electrical | IGMP | Phase 3 | Construction | DH2300 | BAB |  | Oscar Armenta |
| QTS-46001 |  | Gallery 2302 / Lineup E2300 // OFCI - L2 SET IN PLACE - Eq Type # - COD/ATS-210-A - Skid 4-6 | 2d | 2026-04-29 A | 2026-04-30 A | QTS-4221 | 100% | 2026-07-08 | 2026-07-09 | QTS-PHX3 DC1 - 6 day w/ Holidays | Construction | Electrical | IGMP | Phase 3 | Construction | DH2300 | BAB |  | Oscar Armenta |
| QTS-3011 |  | Gallery 2302 / Lineup E2300 // Install Raceways from LV POD to COD | 7d | 2026-06-01 A | 2026-06-12 A | QTS-3001, QTS-2131 | 100% | 2026-07-08 | 2026-07-15 | QTS-PHX3 DC1 - 6 day w/ Holidays | Construction | LV | IGMP | Phase 3 | Construction | DH2300 | BAB |  | Oscar Armenta |
| QTS-6611 |  | Gallery 2302 / Lineup E2300 // Pull LV Cables from POD to ATS | 4d | 2026-06-10 A | 2026-06-16 A | QTS-13571, QTS-3011 SS, QTS-3011 FF | 100% | 2026-07-14 | 2026-07-17 | QTS-PHX3 DC1 - 6 day w/ Holidays | Construction | LV | IGMP | Phase 3 | Construction | DH2300 | BAB |  | Low Voltage |
| QTS-8391 |  | Gallery 2302 / Lineup E2300 // Pull LV Cables from Reserve Bus to ATS | 2d | 2026-06-10 A | 2026-06-12 A | QTS-13571, QTS-3011 SS, QTS-3011 FF | 100% | 2026-07-16 | 2026-07-17 | QTS-PHX3 DC1 - 6 day w/ Holidays | Construction | LV | IGMP | Phase 3 | Construction | DH2300 | BAB |  | Low Voltage |
|  | 6 | **F2300 Lineup** |  | 2026-04-08 | 2026-06-16 |  |  |  |  |  |  |  |  |  |  |  |  |  |  |
| QTS-2141 |  | Gallery 2302 / Lineup F2300 // Install Hangers & Supports | 3d | 2026-04-08 A | 2026-04-10 A | QTS-2131 | 100% |  |  | QTS-PHX3 DC1 - 6 day w/ Holidays | Construction | Electrical | IGMP | Phase 3 | Construction | DH2300 | BAB |  |  |
| QTS-4231 |  | Gallery 2302 / Lineup F2300 // OFCI - L2 SET IN PLACE - Eq Type # - COD/ATS-210-A - Skid 1-3 | 2d | 2026-04-29 A | 2026-04-30 A | QTS-46001, QTS-36701 | 100% | 2026-07-10 | 2026-07-11 | QTS-PHX3 DC1 - 6 day w/ Holidays | Construction | Electrical | IGMP | Phase 3 | Construction | DH2300 | BAB |  | Oscar Armenta |
| QTS-46011 |  | Gallery 2302 / Lineup F2300 // OFCI - L2 SET IN PLACE - Eq Type # - COD/ATS-210-A - Skid 4-6 | 2d | 2026-04-29 A | 2026-04-30 A | QTS-4231 | 100% | 2026-07-13 | 2026-07-14 | QTS-PHX3 DC1 - 6 day w/ Holidays | Construction | Electrical | IGMP | Phase 3 | Construction | DH2300 | BAB |  | Oscar Armenta |
| QTS-3021 |  | Gallery 2302 / Lineup F2300 // Install Raceways from LV POD to COD | 7d | 2026-06-08 A | 2026-06-15 A | QTS-2141 | 100% | 2026-06-26 | 2026-07-06 | QTS-PHX3 DC1 - 6 day w/ Holidays | Construction | LV | IGMP | Phase 3 | Construction | DH2300 | BAB |  | Oscar Armenta |
| QTS-6621 |  | Gallery 2302 / Lineup F2300 // Pull LV Cables from POD to ATS | 4d | 2026-06-10 A | 2026-06-16 A | QTS-13571, QTS-3021 | 100% | 2026-07-10 | 2026-07-14 | QTS-PHX3 DC1 - 6 day w/ Holidays | Construction | LV | IGMP | Phase 3 | Construction | DH2300 | BAB |  | Low Voltage |
| QTS-8411 |  | Gallery 2302 / Lineup F2300 // Pull LV Cables from Reserve Bus to ATS | 2d | 2026-06-10 A | 2026-06-12 A | QTS-3021, QTS-46011 | 100% | 2026-07-13 | 2026-07-14 | QTS-PHX3 DC1 - 6 day w/ Holidays | Construction | LV | IGMP | Phase 3 | Construction | DH2300 | BAB |  | Low Voltage |
|  | 9 | **R2300 Lineup** |  | 2026-04-11 | 2026-06-30 |  |  |  |  |  |  |  |  |  |  |  |  |  |  |
| QTS-2091 |  | Gallery 2302 / Lineup R2300 // Install Hangers & Supports | 3d | 2026-04-11 A | 2026-04-14 A | QTS-2141 | 100% |  |  | QTS-PHX3 DC1 - 6 day w/ Holidays | Construction | Electrical | IGMP | Phase 3 | Construction | DH2300 | BAB |  |  |
| QTS-2971 |  | Gallery 2302 / Lineup R2300 // Install Raceways from LV POD to Reserve Busway | 5d | 2026-06-08 A | 2026-06-30 A | QTS-3021, QTS-2091 | 100% | 2026-07-07 | 2026-07-11 | QTS-PHX3 DC1 - 6 day w/ Holidays | Construction | LV | IGMP | Phase 3 | Construction | DH2300 | BAB |  | Oscar Armenta |

Notes:
- QTS-3001: Scheduler Notes: 4/14: 50% complete

| ID | WBS | Activity | Duration | Start | Finish | Predecessors | Complete | Remaining | Planned start | Planned finish | Total float | Free float | Calendar | Project Section | Layton Discipline | Baseline | Phase-1-1 | Project Section-1 | Location | Contract | Allucent CSI Group | Phase-1 | Level | Layton Super | Trade Partner | Notes |
| --- | --- | --- | --- | --- | --- | --- | --- | --- | --- | --- | --- | --- | --- | --- | --- | --- | --- | --- | --- | --- | --- | --- | --- | --- | --- | --- |
|  | 4 | **DH 2300 / Rooftop Mechanical** |  | 2025-09-04 | 2026-09-11 |  |  |  |  |  |  |  |  |  |  |  |  |  |  |  |  |  |  |  |  |  |
| QTS-2021 |  | DH 2300 / Rooftop Mechanical // OFCI - L2 SET IN PLACE - Eq Type # - Chiller #1RT40 - 7 units | 5d | 2025-09-04 A | 2025-09-05 A | QTS-37181 FF, QTS-37171 FF, QTS-37161 FF, QTS-37151 FF, QTS-37141 FF, QTS-37131 FF, QTS-37121 FF | 100% |  | 2025-09-04 | 2025-09-10 |  |  |  | Construction | Mechanical | IGMP | Phase 3 | Construction | DH2300 | BAB |  |  |  |  |  |  |
| QTS-2051 |  | DH 2300 / Rooftop Mechanical // Set Doghouse Curbs | 5d | 2025-09-17 A | 2025-09-23 A | QTS-1921 | 100% |  |  |  |  |  |  | Construction | Electrical | IGMP | Phase 3 | Construction | DH2300 | BAB |  |  |  |  |  |  |
| QTS-2031 |  | DH 2300 / Rooftop Mechanical // Set Doghouses | 5d | 2025-09-24 A | 2025-09-30 A | QTS-19911, QTS-2051 | 100% |  |  |  |  |  |  | Construction | Electrical | IGMP | Phase 3 | Construction | DH2300 | BAB |  |  |  |  |  |  |
| QTS-101360 |  | DH 2300 / Rooftop Mechanical // Install Roof Protection | 2d | 2025-11-10 A | 2025-11-11 A | QTS-42671 | 100% |  |  |  |  |  |  | Construction | Mechanical | IGMP |  |  | DH2100 | BAB | 01ADMIN | Phase 1 | Level 2 |  |  |  |
| QTS-101400 |  | DH 2300 / Rooftop Mechanical // Install Grating, Toe Kicks, Hand Rails for TES Tanks | 5d | 2025-12-29 A | 2026-01-03 A | QTS-100920, QTS-100350, QTS-101360 | 100% |  |  |  |  |  | QTS-PHX3 DC1 - 6 day w/ Holidays | Construction | Mechanical | IGMP |  |  | DH2100 | BAB | 01ADMIN | Phase 1 | Level 2 |  |  |  |
| QTS-101420 |  | DH 2300 / Rooftop Mechanical // OFCI - ROOF SET IN PLACE - Eq Type # - TES Tanks - 7 units | 1d | 2026-01-06 A | 2026-01-10 A | QTS-101400 | 100% |  | 2026-01-06 | 2026-01-06 |  |  | QTS-PHX3 DC1 - 6 day w/ Holidays | Construction | Mechanical | IGMP |  |  | DH2100 | BAB | 01ADMIN | Phase 1 | Level 2 |  |  |  |
| QTS-2071 |  | DH 2300 / Rooftop Mechanical // OFCI - L2 SET IN PLACE - Eq Type # - DOAS-RT2300 - 2 units | 2d | 2026-01-12 A | 2026-01-13 A | QTS-101360, QTS-24581, QTS-37271, QTS-37261, QTS-23911 | 100% |  |  |  |  |  | QTS-PHX3 DC1 - 6 day w/ Holidays | Construction | Mechanical | IGMP | Phase 3 | Construction | DH2300 | BAB | 01ADMIN |  |  |  |  |  |
| QTS-3441 |  | DH 2300 / Rooftop Mechanical // Set Vertical Inline Centrifugal Pumps | 5d | 2026-01-21 A | 2026-01-26 A | QTS-3431, QTS-2021 | 100% |  |  |  |  |  | QTS-PHX3 DC1 - 6 day w/ Holidays | Construction | Mechanical | IGMP | Phase 3 | Construction | DH2300 | BAB | 01ADMIN |  |  |  |  |  |
| QTS-50251 |  | Zone 3 / Rooftop // Rough In Plumbing from to DOAS | 1d | 2026-01-21 A | 2026-04-22 A | QTS-2071 | 100% |  | 2026-01-21 | 2026-01-21 |  |  | QTS-PHX3 DC1 - 6 day w/ Holidays | Construction | Mechanical | DC | Phase 1 | Construction | FOH | BAB | 01ADMIN |  | Roof |  |  |  |
| QTS-101410 |  | Zone 3 / Rooftop // Rough In Condensate Drain from DOAS | 2d | 2026-05-13 A | 2026-05-14 A | QTS-50251 | 100% |  |  |  |  |  | QTS-PHX3 DC1 - 6 day w/ Holidays | Construction | Mechanical | IGMP |  |  | DH2100 | BAB | 01ADMIN | Phase 1 | Level 2 |  |  |  |
| QTS-101430 |  | Zone 3 / Rooftop // Finalize Detailing for TES Tank CHW Piping/ Fabrication | 7d | 2026-05-13 A | 2026-05-19 A | QTS-101420 | 100% |  | 2026-05-13 | 2026-05-20 |  |  | QTS-PHX3 DC1 - 6 day w/ Holidays | Construction | Mechanical | IGMP |  |  | DH2100 | BAB | 01ADMIN | Phase 1 | Level 2 |  |  |  |
| QTS-101450 |  | Zone 3 / Rooftop // Install CHW Piping - 7 Units | 10d | 2026-06-15 A | 2026-06-26 A | QTS-101430 | 100% |  | 2026-07-15 | 2026-07-25 |  |  | QTS-PHX3 DC1 - 6 day w/ Holidays | Construction | Mechanical | IGMP |  |  | DH2100 | BAB | 01ADMIN | Phase 1 | Level 2 | Mechanical |  |  |
| QTS-101370 |  | Zone 3 / Rooftop // Install 12" CHWS/R Run-Outs to RPH Vaults | 13d | 2026-06-30 A | 2026-07-18 A | QTS-101420, QTS-101360 | 100% |  | 2026-07-15 | 2026-07-29 |  |  | QTS-PHX3 DC1 - 6 day w/ Holidays | Construction | Mechanical | IGMP |  |  | DH2100 | BAB | 01ADMIN | Phase 1 | Level 2 | Mechanical |  |  |
| QTS-101380 |  | Zone 3 / Rooftop // Assemble & Install CHWS/R Piping from Mainline Piping to ACC Deck | 23d | 2026-06-30 A | 2026-07-18 A | QTS-101370 SS, QTS-101420 | 100% |  | 2026-07-15 | 2026-08-10 |  |  | QTS-PHX3 DC1 - 6 day w/ Holidays | Construction | Mechanical | IGMP |  |  | DH2100 | BAB | 01ADMIN | Phase 1 | Level 2 | Mechanical |  |  |
| QTS-101390 |  | Zone 3 / Rooftop // Assemble & Install CHW Pump Assemblies at ACC Deck to Chillers | 28d | 2026-06-30 A | 2026-07-18 A | QTS-101380 SS, QTS-101420 | 100% |  | 2026-07-15 | 2026-08-15 |  |  | QTS-PHX3 DC1 - 6 day w/ Holidays | Construction | Mechanical | IGMP |  |  | DH2100 | BAB | 01ADMIN | Phase 1 | Level 2 | Mechanical |  |  |
| QTS-101440 |  | Zone 3 / Rooftop // Install Mainline Piping from RPH Vaults to Galleries (Risers) L2 / L1 | 10d | 2026-07-20 A | 2026-08-19 | QTS-101390 SS+8d, QTS-101420 | 90% | 1d | 2026-07-15 | 2026-07-25 | -83d | 0d | QTS-PHX3 DC1 - 6 day w/ Holidays | Construction | Mechanical | IGMP |  |  | DH2100 | BAB | 01ADMIN | Phase 1 | Level 2 | Mechanical | Bel-Aire |  |
| QTS-101460 |  | Zone 3 / Rooftop // Set RPH Vault Housings (Weather Tight Enclosure)) | 5d | 2026-07-20 A | 2026-08-21 | QTS-101440 FF+2d, QTS-101420 | 80% | 1d | 2026-08-01 | 2026-08-06 | -83d | 0d | QTS-PHX3 DC1 - 6 day w/ Holidays | Construction | Mechanical | IGMP |  |  | DH2100 | BAB | 01ADMIN | Phase 1 | Level 2 | Mechanical | Bel-Aire |  |
| QTS-101470 |  | Zone 3 / Rooftop // Pressure Test (Air) Industrial Loop (L1) | 1d | 2026-07-20 A | 2026-08-21 | QTS-101460 SS, QTS-101440 SS, QTS-101450 |  | 1d | 2026-08-04 | 2026-08-04 | -83d | 0d | QTS-PHX3 DC1 - 6 day w/ Holidays | Construction | Mechanical | IGMP |  |  | DH2100 | BAB | 01ADMIN | Phase 1 | Level 2 | Mechanical | Bel-Aire |  |
| QTS-101480 |  | Zone 3 / Rooftop // Pressure Test (Air) Industrial Loop (L2) | 1d | 2026-07-20 A | 2026-08-21 | QTS-101470 SS, QTS-101450 |  | 1d | 2026-08-05 | 2026-08-05 | -83d | 0d | QTS-PHX3 DC1 - 6 day w/ Holidays | Construction | Mechanical | IGMP |  |  | DH2100 | BAB | 01ADMIN | Phase 1 | Level 2 | Mechanical | Bel-Aire | Excludes TES tank CHK-26603-1 |
| QTS-101490 |  | Zone 3 / Rooftop // Pressure Test (Air) Industrial Loop (Roof) | 1d | 2026-07-20 A | 2026-08-21 | QTS-101480 SS, QTS-101450 |  | 1d | 2026-08-06 | 2026-08-06 | -83d | 0d | QTS-PHX3 DC1 - 6 day w/ Holidays | Construction | Mechanical | IGMP |  |  | DH2100 | BAB | 01ADMIN | Phase 1 | Level 2 | Mechanical | Bel-Aire |  |
| QTS-101500 |  | Zone 3 / Rooftop // Install Temp Flush Pump, Power Source for Pump & Other Associated Components | 1d | 2026-07-20 A | 2026-07-20 A | QTS-101490 SS, QTS-101450 | 100% |  | 2026-08-03 | 2026-08-03 |  |  | QTS-PHX3 DC1 - 6 day w/ Holidays | Construction | Mechanical | IGMP |  |  | DH2100 | BAB | 01ADMIN | Phase 1 | Level 2 | Mechanical | Bel-Aire |  |
| QTS-101540 |  | Zone 3 / Rooftop // Hydro-Test (Water) Industrial Loop (L1) | 1d | 2026-08-21 | 2026-08-21 | QTS-101500, QTS-101370, QTS-101380, QTS-101390 |  |  |  |  | -83d | 0d | QTS-PHX3 DC1 - 6 day w/ Holidays | Construction | Mechanical | IGMP |  |  | DH2100 | BAB | 01ADMIN | Phase 1 | Level 2 | Mechanical | Bel-Aire | TES tank CHK-26603-1 |
| QTS-101550 |  | Zone 3 / Rooftop // Hydro-Test (Water) Industrial Loop (L2) | 1d | 2026-08-22 | 2026-08-22 | QTS-101540 |  |  |  |  | -83d | 0d | QTS-PHX3 DC1 - 6 day w/ Holidays | Construction | Mechanical | IGMP |  |  | DH2100 | BAB | 01ADMIN | Phase 1 | Level 2 | Mechanical | Bel-Aire | TES tank CHK-26603-1 |
| QTS-101560 |  | Zone 3 / Rooftop // Hydro-Test (Water) Industrial Loop (Roof) | 1d | 2026-08-24 | 2026-08-24 | QTS-101550 |  |  |  |  | -83d | 0d | QTS-PHX3 DC1 - 6 day w/ Holidays | Construction | Mechanical | IGMP |  |  | DH2100 | BAB | 01ADMIN | Phase 1 | Level 2 | Mechanical | Bel-Aire | TES tank CHK-26603-1 |
| QTS-101570 |  | Zone 3 / Rooftop // Fill and Flush Industrial Loop (Zone 3 - All Levels) | 10d | 2026-08-25 | 2026-09-03 | QTS-101560, QTS-101480, QTS-101490, QTS-101470, QTS-101460 |  |  |  |  | -101d | 0d | QTS-PHX3 DC1 - 7 day No Holidays | Construction | Mechanical | IGMP |  |  | DH2100 | BAB | 01ADMIN | Phase 1 | Level 2 | Mechanical | Bel-Aire |  |
| QTS-1014330 |  | Zone 3 / Rooftop // De-install Temp Flush Pump - Zone 3 | 6d | 2026-09-04 | 2026-09-11 | QTS-101570 |  |  |  |  | -85d | 26d | QTS-PHX3 DC1 - 6 day w/ Holidays | Construction | Mechanical | IGMP |  |  | DH2200 | BAB | 01ADMIN | Phase 2 | Roof | Mechanical | Bel-Aire |  |

Notes:
- QTS-101360: allucent_notes_20251014_152335: David Wiltberger on 2025-08-19 09:08: changed pick order / David Wiltberger on 2025-09-02 10:09: Moving to accommodate roofing in Zone 1 / David Wiltberger on 2025-09-24 04:09: BAM not completed Potential Delay / David Wiltberger on 2025-09-30 12:09: BAM did not complete / David Wiltberger on 2025-10-14 10:10: set on recovery schedule / allucent_notes: David Wiltberger on 2025-08-19 09:08: changed pick order / allucent_notes: 2025-08-19 09:08 - User: David Wiltberger - Date Added: 2025-08-19 09:08 - Note: changed pick order / 2025-09-02 10:09 - User: David Wiltberger - Date Added: 2025-09-02 10:09 - Note: Moving to accommodate roofing in Zone 1 / 2025-09-24 04:09 - User: Dav
- QTS-101400: allucent_notes_20251202_153722: David Wiltberger on 2025-12-01 09:52: No TES tanks set yet / allucent_notes_20251014_152335: David Wiltberger on 2025-08-19 09:08: changed pick order / David Wiltberger on 2025-09-02 10:09: Moving to accommodate roofing in Zone 1 / David Wiltberger on 2025-09-24 04:09: BAM not completed Potential Delay / David Wiltberger on 2025-09-30 12:09: BAM did not complete / David Wiltberger on 2025-10-14 10:10: set on recovery schedule / allucent_notes: David Wiltberger on 2025-08-19 09:08: changed pick order / allucent_notes: 2025-12-01 09:52 - User: David Wiltberger - Date Added: 2025-12-01 09:52 - Note: No TES tanks set yet
- QTS-101420: allucent_notes_20251014_152335: David Wiltberger on 2025-08-19 09:08: changed pick order / David Wiltberger on 2025-09-02 10:09: Moving to accommodate roofing in Zone 1 / David Wiltberger on 2025-09-24 04:09: BAM not completed Potential Delay / David Wiltberger on 2025-09-30 12:09: BAM did not complete / David Wiltberger on 2025-10-14 10:10: set on recovery schedule / allucent_notes: David Wiltberger on 2025-08-19 09:08: changed pick order / allucent_notes: 2025-08-19 09:08 - User: David Wiltberger - Date Added: 2025-08-19 09:08 - Note: changed pick order / 2025-09-02 10:09 - User: David Wiltberger - Date Added: 2025-09-02 10:09 - Note: Moving to accommodate roofing in Zone 1 / 2025-09-24 04:09 - User: Dav
- QTS-101410: allucent_notes_20251014_152335: David Wiltberger on 2025-08-19 09:08: changed pick order / David Wiltberger on 2025-09-02 10:09: Moving to accommodate roofing in Zone 1 / David Wiltberger on 2025-09-24 04:09: BAM not completed Potential Delay / David Wiltberger on 2025-09-30 12:09: BAM did not complete / David Wiltberger on 2025-10-14 10:10: set on recovery schedule / allucent_notes: David Wiltberger on 2025-08-19 09:08: changed pick order / allucent_notes: 2025-08-19 09:08 - User: David Wiltberger - Date Added: 2025-08-19 09:08 - Note: changed pick order / 2025-09-02 10:09 - User: David Wiltberger - Date Added: 2025-09-02 10:09 - Note: Moving to accommodate roofing in Zone 1 / 2025-09-24 04:09 - User: Dav
- QTS-101430: allucent_notes_20251014_152335: David Wiltberger on 2025-08-19 09:08: changed pick order / David Wiltberger on 2025-09-02 10:09: Moving to accommodate roofing in Zone 1 / David Wiltberger on 2025-09-24 04:09: BAM not completed Potential Delay / David Wiltberger on 2025-09-30 12:09: BAM did not complete / David Wiltberger on 2025-10-14 10:10: set on recovery schedule / allucent_notes: David Wiltberger on 2025-08-19 09:08: changed pick order / allucent_notes: 2025-08-19 09:08 - User: David Wiltberger - Date Added: 2025-08-19 09:08 - Note: changed pick order / 2025-09-02 10:09 - User: David Wiltberger - Date Added: 2025-09-02 10:09 - Note: Moving to accommodate roofing in Zone 1 / 2025-09-24 04:09 - User: Dav
- QTS-101450: allucent_notes_20251014_152335: David Wiltberger on 2025-08-19 09:08: changed pick order / David Wiltberger on 2025-09-02 10:09: Moving to accommodate roofing in Zone 1 / David Wiltberger on 2025-09-24 04:09: BAM not completed Potential Delay / David Wiltberger on 2025-09-30 12:09: BAM did not complete / David Wiltberger on 2025-10-14 10:10: set on recovery schedule / allucent_notes: David Wiltberger on 2025-08-19 09:08: changed pick order / allucent_notes: 2025-08-19 09:08 - User: David Wiltberger - Date Added: 2025-08-19 09:08 - Note: changed pick order / 2025-09-02 10:09 - User: David Wiltberger - Date Added: 2025-09-02 10:09 - Note: Moving to accommodate roofing in Zone 1 / 2025-09-24 04:09 - User: Dav
- QTS-101370: allucent_notes_20251202_153722: David Wiltberger on 2025-11-17 16:11: out of sequence / allucent_notes_20251118_192630: David Wiltberger on 2025-11-17 16:11: out of sequence / allucent_notes_20251014_152335: David Wiltberger on 2025-08-19 09:08: changed pick order / David Wiltberger on 2025-09-02 10:09: Moving to accommodate roofing in Zone 1 / David Wiltberger on 2025-09-24 04:09: BAM not completed Potential Delay / David Wiltberger on 2025-09-30 12:09: BAM did not complete / David Wiltberger on 2025-10-14 10:10: set on recovery schedule / allucent_notes: David Wiltberger on 2025-08-19 09:08: changed pick order / allucent_notes: 2025-11-17 16:11 - User: David Wiltberger - Date Added: 2025-11-17 16:11 - Note: out of sequence
- QTS-101380: allucent_notes_20251014_152335: David Wiltberger on 2025-08-19 09:08: changed pick order / David Wiltberger on 2025-09-02 10:09: Moving to accommodate roofing in Zone 1 / David Wiltberger on 2025-09-24 04:09: BAM not completed Potential Delay / David Wiltberger on 2025-09-30 12:09: BAM did not complete / David Wiltberger on 2025-10-14 10:10: set on recovery schedule / allucent_notes: David Wiltberger on 2025-08-19 09:08: changed pick order / allucent_notes: 2025-08-19 09:08 - User: David Wiltberger - Date Added: 2025-08-19 09:08 - Note: changed pick order / 2025-09-02 10:09 - User: David Wiltberger - Date Added: 2025-09-02 10:09 - Note: Moving to accommodate roofing in Zone 1 / 2025-09-24 04:09 - User: Dav
- QTS-101390: allucent_notes_20251014_152335: David Wiltberger on 2025-08-19 09:08: changed pick order / David Wiltberger on 2025-09-02 10:09: Moving to accommodate roofing in Zone 1 / David Wiltberger on 2025-09-24 04:09: BAM not completed Potential Delay / David Wiltberger on 2025-09-30 12:09: BAM did not complete / David Wiltberger on 2025-10-14 10:10: set on recovery schedule / allucent_notes: David Wiltberger on 2025-08-19 09:08: changed pick order / allucent_notes: 2025-08-19 09:08 - User: David Wiltberger - Date Added: 2025-08-19 09:08 - Note: changed pick order / 2025-09-02 10:09 - User: David Wiltberger - Date Added: 2025-09-02 10:09 - Note: Moving to accommodate roofing in Zone 1 / 2025-09-24 04:09 - User: Dav
- QTS-101440: allucent_notes_20251014_152335: David Wiltberger on 2025-08-19 09:08: changed pick order / David Wiltberger on 2025-09-02 10:09: Moving to accommodate roofing in Zone 1 / David Wiltberger on 2025-09-24 04:09: BAM not completed Potential Delay / David Wiltberger on 2025-09-30 12:09: BAM did not complete / David Wiltberger on 2025-10-14 10:10: set on recovery schedule / allucent_notes: David Wiltberger on 2025-08-19 09:08: changed pick order / allucent_notes: 2025-08-19 09:08 - User: David Wiltberger - Date Added: 2025-08-19 09:08 - Note: changed pick order / 2025-09-02 10:09 - User: David Wiltberger - Date Added: 2025-09-02 10:09 - Note: Moving to accommodate roofing in Zone 1 / 2025-09-24 04:09 - User: Dav
- QTS-101460: allucent_notes_20251014_152335: David Wiltberger on 2025-08-19 09:08: changed pick order / David Wiltberger on 2025-09-02 10:09: Moving to accommodate roofing in Zone 1 / David Wiltberger on 2025-09-24 04:09: BAM not completed Potential Delay / David Wiltberger on 2025-09-30 12:09: BAM did not complete / David Wiltberger on 2025-10-14 10:10: set on recovery schedule / allucent_notes: David Wiltberger on 2025-08-19 09:08: changed pick order / allucent_notes: 2025-08-19 09:08 - User: David Wiltberger - Date Added: 2025-08-19 09:08 - Note: changed pick order / 2025-09-02 10:09 - User: David Wiltberger - Date Added: 2025-09-02 10:09 - Note: Moving to accommodate roofing in Zone 1 / 2025-09-24 04:09 - User: Dav
- QTS-101470: allucent_notes_20251014_152335: David Wiltberger on 2025-08-19 09:08: changed pick order / David Wiltberger on 2025-09-02 10:09: Moving to accommodate roofing in Zone 1 / David Wiltberger on 2025-09-24 04:09: BAM not completed Potential Delay / David Wiltberger on 2025-09-30 12:09: BAM did not complete / David Wiltberger on 2025-10-14 10:10: set on recovery schedule / allucent_notes: David Wiltberger on 2025-08-19 09:08: changed pick order / allucent_notes: 2025-08-19 09:08 - User: David Wiltberger - Date Added: 2025-08-19 09:08 - Note: changed pick order / 2025-09-02 10:09 - User: David Wiltberger - Date Added: 2025-09-02 10:09 - Note: Moving to accommodate roofing in Zone 1 / 2025-09-24 04:09 - User: Dav
- QTS-101480: allucent_notes_20251014_152335: David Wiltberger on 2025-08-19 09:08: changed pick order / David Wiltberger on 2025-09-02 10:09: Moving to accommodate roofing in Zone 1 / David Wiltberger on 2025-09-24 04:09: BAM not completed Potential Delay / David Wiltberger on 2025-09-30 12:09: BAM did not complete / David Wiltberger on 2025-10-14 10:10: set on recovery schedule / allucent_notes: David Wiltberger on 2025-08-19 09:08: changed pick order / allucent_notes: 2025-08-19 09:08 - User: David Wiltberger - Date Added: 2025-08-19 09:08 - Note: changed pick order / 2025-09-02 10:09 - User: David Wiltberger - Date Added: 2025-09-02 10:09 - Note: Moving to accommodate roofing in Zone 1 / 2025-09-24 04:09 - User: Dav
- QTS-101490: allucent_notes_20251014_152335: David Wiltberger on 2025-08-19 09:08: changed pick order / David Wiltberger on 2025-09-02 10:09: Moving to accommodate roofing in Zone 1 / David Wiltberger on 2025-09-24 04:09: BAM not completed Potential Delay / David Wiltberger on 2025-09-30 12:09: BAM did not complete / David Wiltberger on 2025-10-14 10:10: set on recovery schedule / allucent_notes: David Wiltberger on 2025-08-19 09:08: changed pick order / allucent_notes: 2025-08-19 09:08 - User: David Wiltberger - Date Added: 2025-08-19 09:08 - Note: changed pick order / 2025-09-02 10:09 - User: David Wiltberger - Date Added: 2025-09-02 10:09 - Note: Moving to accommodate roofing in Zone 1 / 2025-09-24 04:09 - User: Dav
- QTS-101500: allucent_notes_20251014_152335: David Wiltberger on 2025-08-19 09:08: changed pick order / David Wiltberger on 2025-09-02 10:09: Moving to accommodate roofing in Zone 1 / David Wiltberger on 2025-09-24 04:09: BAM not completed Potential Delay / David Wiltberger on 2025-09-30 12:09: BAM did not complete / David Wiltberger on 2025-10-14 10:10: set on recovery schedule / allucent_notes: David Wiltberger on 2025-08-19 09:08: changed pick order / allucent_notes: 2025-08-19 09:08 - User: David Wiltberger - Date Added: 2025-08-19 09:08 - Note: changed pick order / 2025-09-02 10:09 - User: David Wiltberger - Date Added: 2025-09-02 10:09 - Note: Moving to accommodate roofing in Zone 1 / 2025-09-24 04:09 - User: Dav
- QTS-101540: allucent_notes_20251014_152335: David Wiltberger on 2025-08-19 09:08: changed pick order / David Wiltberger on 2025-09-02 10:09: Moving to accommodate roofing in Zone 1 / David Wiltberger on 2025-09-24 04:09: BAM not completed Potential Delay / David Wiltberger on 2025-09-30 12:09: BAM did not complete / David Wiltberger on 2025-10-14 10:10: set on recovery schedule / allucent_notes: David Wiltberger on 2025-08-19 09:08: changed pick order / allucent_notes: 2025-08-19 09:08 - User: David Wiltberger - Date Added: 2025-08-19 09:08 - Note: changed pick order / 2025-09-02 10:09 - User: David Wiltberger - Date Added: 2025-09-02 10:09 - Note: Moving to accommodate roofing in Zone 1 / 2025-09-24 04:09 - User: Dav
- QTS-101550: allucent_notes_20251014_152335: David Wiltberger on 2025-08-19 09:08: changed pick order / David Wiltberger on 2025-09-02 10:09: Moving to accommodate roofing in Zone 1 / David Wiltberger on 2025-09-24 04:09: BAM not completed Potential Delay / David Wiltberger on 2025-09-30 12:09: BAM did not complete / David Wiltberger on 2025-10-14 10:10: set on recovery schedule / allucent_notes: David Wiltberger on 2025-08-19 09:08: changed pick order / allucent_notes: 2025-08-19 09:08 - User: David Wiltberger - Date Added: 2025-08-19 09:08 - Note: changed pick order / 2025-09-02 10:09 - User: David Wiltberger - Date Added: 2025-09-02 10:09 - Note: Moving to accommodate roofing in Zone 1 / 2025-09-24 04:09 - User: Dav
- QTS-101560: allucent_notes_20251014_152335: David Wiltberger on 2025-08-19 09:08: changed pick order / David Wiltberger on 2025-09-02 10:09: Moving to accommodate roofing in Zone 1 / David Wiltberger on 2025-09-24 04:09: BAM not completed Potential Delay / David Wiltberger on 2025-09-30 12:09: BAM did not complete / David Wiltberger on 2025-10-14 10:10: set on recovery schedule / allucent_notes: David Wiltberger on 2025-08-19 09:08: changed pick order / allucent_notes: 2025-08-19 09:08 - User: David Wiltberger - Date Added: 2025-08-19 09:08 - Note: changed pick order / 2025-09-02 10:09 - User: David Wiltberger - Date Added: 2025-09-02 10:09 - Note: Moving to accommodate roofing in Zone 1 / 2025-09-24 04:09 - User: Dav
- QTS-101570: allucent_notes_20251014_152335: David Wiltberger on 2025-08-19 09:08: changed pick order / David Wiltberger on 2025-09-02 10:09: Moving to accommodate roofing in Zone 1 / David Wiltberger on 2025-09-24 04:09: BAM not completed Potential Delay / David Wiltberger on 2025-09-30 12:09: BAM did not complete / David Wiltberger on 2025-10-14 10:10: set on recovery schedule / allucent_notes: David Wiltberger on 2025-08-19 09:08: changed pick order / allucent_notes: 2025-08-19 09:08 - User: David Wiltberger - Date Added: 2025-08-19 09:08 - Note: changed pick order / 2025-09-02 10:09 - User: David Wiltberger - Date Added: 2025-09-02 10:09 - Note: Moving to accommodate roofing in Zone 1 / 2025-09-24 04:09 - User: Dav
- QTS-1014330: allucent_notes_20251014_152335: David Wiltberger on 2025-08-19 09:08: changed pick order / David Wiltberger on 2025-09-02 10:09: Moving to accommodate roofing in Zone 1 / David Wiltberger on 2025-09-24 04:09: BAM not completed Potential Delay / David Wiltberger on 2025-09-30 12:09: BAM did not complete / David Wiltberger on 2025-10-14 10:10: set on recovery schedule / allucent_notes: David Wiltberger on 2025-08-19 09:08: changed pick order / allucent_notes: 2025-08-19 09:08 - User: David Wiltberger - Date Added: 2025-08-19 09:08 - Note: changed pick order / 2025-09-02 10:09 - User: David Wiltberger - Date Added: 2025-09-02 10:09 - Note: Moving to accommodate roofing in Zone 1 / 2025-09-24 04:09 - User: Dav

| ID | WBS | Activity | Duration | Start | Finish | Predecessors | Complete | Remaining | Planned start | Planned finish | Total float | Free float | Calendar | Allucent CSI Group | Project Section | Phase-1 | Layton Discipline | Baseline | Location | Level | Fragnet | Fragnet Responsible Party | Contract | Layton Super | Notes | Phase-1-1 | Project Section-1 | Trade Partner | Owner Impact Analysis |
| --- | --- | --- | --- | --- | --- | --- | --- | --- | --- | --- | --- | --- | --- | --- | --- | --- | --- | --- | --- | --- | --- | --- | --- | --- | --- | --- | --- | --- | --- |
|  | 3 | **Fragnet / Lack of Man Power** |  | 2026-04-11 | 2026-04-24 |  |  |  |  |  |  |  |  |  |  |  |  |  |  |  |  |  |  |  |  |  |  |  |  |
| QTS-1010180 |  | Fragnet / Zone 3 / Rooftop // Lack of Man Power | 5d | 2026-04-11 A | 2026-04-24 A | QTS-1371 | 100% |  | 2026-04-11 | 2026-04-16 |  |  | QTS-PHX3 DC1 - 6 day w/ Holidays | 01ADMIN | Construction | Phase 2 | Electrical | IGMP | DH2200 | Roof | Fragnet | Rosendin Electric Inc. | BAB |  |  |  |  |  |  |
|  | 2 | **Remaining Scope** |  | 2026-04-27 | 2026-08-22 |  |  |  |  |  |  |  |  |  |  |  |  |  |  |  |  |  |  |  |  |  |  |  |  |
| QTS-1008700 |  | Zone 3 / Rooftop // Install Raceway From Dog House to Chillers & Pumps | 14d | 2026-04-27 A | 2026-06-30 A | QTS-1007570 FF, QTS-1010180 | 100% |  | 2026-04-27 | 2026-05-12 |  |  | QTS-PHX3 DC1 - 6 day w/ Holidays | 01ADMIN | Construction | Phase 2 | Electrical | IGMP | DH2200 | Roof |  |  | BAB | Oscar Armenta |  |  |  |  |  |
| QTS-50261 |  | Zone 3 / Rooftop // Rough In Power from to DOAS | 3d | 2026-07-18 A | 2026-07-21 A | QTS-50251, QTS-1008700 | 100% |  | 2026-07-22 | 2026-07-24 |  |  | QTS-PHX3 DC1 - 6 day w/ Holidays |  | Construction |  | Electrical | DC | FOH | Roof |  |  | BAB | Electrical | Manpower | Phase 1 | Construction | REI |  |
| QTS-1008570 |  | Zone 3 / Rooftop // Pull Wire From Dog House to Chillers | 9d | 2026-07-20 A | 2026-07-28 A | QTS-1008700 | 100% |  | 2026-07-22 | 2026-07-31 |  |  | QTS-PHX3 DC1 - 6 day w/ Holidays | 01ADMIN | Construction | Phase 2 | Electrical | IGMP | DH2200 | Roof |  |  | BAB | Electrical |  |  |  | REI |  |
| QTS-4360 |  | DH 2300 / Gallery 2302 / Pull Wire to CHLR, CHWP for SWD | 6d | 2026-07-20 A | 2026-08-19 | QTS-4390 SS+2d | 83% | 1d | 2026-07-22 | 2026-07-28 | -83d | 0d | **GLOBAL - 6 Day Workweek w/ Basic Holidays |  |  |  | Electrical |  |  |  |  |  | BAB | Electrical |  |  |  | REI |  |
| QTS-4480 |  | DH 2300 / Gallery 2302 / Terminate Wire @ CHLR / CHWP / VFD | 6d | 2026-07-28 A | 2026-08-19 | QTS-4360 FF, QTS-1008700 | 83% | 1d | 2026-08-06 | 2026-08-12 | -83d | 7d | **GLOBAL - 6 Day Workweek w/ Basic Holidays |  |  |  | Electrical |  |  |  |  |  | BAB | Electrical | Chiller is done, chwp/vfd still working |  |  | REI |  |
| QTS-1008610 |  | Zone 3 / Rooftop // Pull Wire to DOAS | 2d | 2026-08-19 | 2026-08-20 | QTS-50261 |  |  |  |  | -69d | 0d | QTS-PHX3 DC1 - 6 day w/ Holidays | 01ADMIN | Construction | Phase 2 | Electrical | IGMP | DH2200 | Roof |  |  | BAB | Electrical | Manpower |  |  | REI |  |
| QTS-1008660 |  | Zone 3 / Rooftop // Pull Control Wire From Dog House to Chiller | 1d | 2026-08-19 | 2026-08-19 | QTS-1008700 |  |  |  |  | -79d | 0d | QTS-PHX3 DC1 - 6 day w/ Holidays | 01ADMIN | Construction | Phase 2 | Electrical | IGMP | DH2200 | Roof |  |  | BAB | Electrical | Manpower |  |  | REI |  |
| QTS-50271 |  | Zone 3 / Rooftop // Rough In Controls from to DOAS | 1d | 2026-08-19 | 2026-08-19 | QTS-50261 FF, QTS-50251 |  |  |  |  | -70d | 0d | QTS-PHX3 DC1 - 6 day w/ Holidays |  | Construction |  | Mechanical | DC | FOH | Roof |  |  | BAB | Low Voltage |  | Phase 1 | Construction | Prime |  |
| QTS-1008620 |  | Zone 3 / Rooftop // Pull Control Wire to DOAS | 2d | 2026-08-20 | 2026-08-21 | QTS-50271 |  |  |  |  | -70d | 0d | QTS-PHX3 DC1 - 6 day w/ Holidays | 01ADMIN | Construction | Phase 2 | Electrical | IGMP | DH2200 | Roof |  |  | BAB | Electrical | Manpower |  |  | Prime |  |
| QTS-1008670 |  | Zone 3 / Rooftop // Pull Control Wire From Dog House to TES Tanks | 1d | 2026-08-20 | 2026-08-20 | QTS-1008660 |  |  |  |  | -79d | 0d | QTS-PHX3 DC1 - 6 day w/ Holidays | 01ADMIN | Construction | Phase 2 | Electrical | IGMP | DH2200 | Roof |  |  | BAB | Electrical | Need protection around TES Tanks |  |  | Prime |  |
| QTS-1008680 |  | Zone 3 / Rooftop // Terminate Control Wire From Dog House to Chiller | 1d | 2026-08-20 | 2026-08-20 | QTS-1008660, QTS-1008570 |  |  |  |  | -79d | 0d | QTS-PHX3 DC1 - 6 day w/ Holidays | 01ADMIN | Construction | Phase 2 | Electrical | IGMP | DH2200 | Roof |  |  | BAB | Electrical | Manpower |  |  | Prime |  |
| QTS-1008630 |  | Zone 3 / Rooftop // Terminate Wire at DOAS | 1d | 2026-08-21 | 2026-08-21 | QTS-1008610, QTS-1008610 FF |  |  |  |  | -69d | 1d | QTS-PHX3 DC1 - 6 day w/ Holidays | 01ADMIN | Construction | Phase 2 | Electrical | IGMP | DH2200 | Roof |  |  | BAB | Electrical |  |  |  | REI |  |
| QTS-1008690 |  | Zone 3 / Rooftop // Terminate Control Wire From Dog House to TES Tanks | 1d | 2026-08-21 | 2026-08-21 | QTS-1008680, QTS-1008670 |  |  |  |  | -79d | 10d | QTS-PHX3 DC1 - 6 day w/ Holidays | 01ADMIN | Construction | Phase 2 | Electrical | IGMP | DH2200 | Roof |  |  | BAB | Electrical | Need protection around TES Tanks |  |  | Prime |  |
| QTS-1008640 |  | Zone 3 / Rooftop // Terminate Control Wire at DOAS | 1d | 2026-08-22 | 2026-08-22 | QTS-1008620, QTS-1008620 FF, QTS-4360 |  |  |  |  | -70d | 0d | QTS-PHX3 DC1 - 6 day w/ Holidays | 01ADMIN | Construction | Phase 2 | Electrical | IGMP | DH2200 | Roof |  |  | BAB | Electrical | Manpower |  |  | Prime |  |
|  | 1 | **Fragnet Bulletin 4 Grating** |  | 2025-10-10 | 2026-08-04 |  |  |  |  |  |  |  |  |  |  |  |  |  |  |  |  |  |  |  |  |  |  |  |  |
| QTS-1001890 |  | Fragnet / DH 2300 / Rooftop Mechanical // Bulletin 4 Received by Layton | 1d | 2025-10-10 A | 2025-10-10 A | QTS-1371 SS | 100% |  |  |  |  |  |  | 01ADMIN | Construction | Phase 1 | Mechanical | IGMP | DH2100 | Level 2 | Fragnet | Bel-Aire Mechanical. LLC | BAB |  |  |  |  |  | Y |
| QTS-1001910 |  | Fragnet / DH 2300 / Rooftop Mechanical // Updated Bulletin 4 Received by Layton | 3d | 2025-10-13 A | 2025-10-15 A | QTS-1001890 | 100% |  | 2025-10-10 | 2025-10-14 |  |  |  | 01ADMIN | Construction | Phase 1 | Mechanical | IGMP | DH2100 | Level 2 | Fragnet | Bel-Aire Mechanical. LLC | BAB |  |  |  |  |  | Y |
| QTS-1001920 |  | Fragnet / DH 2300 / Rooftop Mechanical // Layton Submitting Shop Drawings to QTS Design (DLB) | 23d | 2025-10-16 A | 2025-11-17 A | QTS-1001910 | 100% |  | 2025-10-10 | 2025-11-11 |  |  |  | 01ADMIN | Construction | Phase 1 | Mechanical | IGMP | DH2100 | Level 2 | Fragnet | Bel-Aire Mechanical. LLC | BAB |  |  |  |  |  | Y |
| QTS-1001930 |  | Fragnet / DH 2300 / Rooftop Mechanical // Layton Submitting Shop Drawings to QTS Design (Corgan) | 23d | 2025-11-18 A | 2025-12-09 A | QTS-1001920 | 100% |  | 2025-10-10 | 2025-11-11 |  |  |  | 01ADMIN | Construction | Phase 1 | Mechanical | IGMP | DH2100 | Level 2 | Fragnet | Bel-Aire Mechanical. LLC | BAB |  |  |  |  |  | Y |
| QTS-1001940 |  | Fragnet / DH 2300 / Rooftop Mechanical // QTS Design Response for Grating | 10d | 2025-12-10 A | 2026-01-27 A | QTS-1001930 | 100% |  | 2025-10-10 | 2025-10-23 |  |  |  | 01ADMIN | Construction | Phase 1 | Mechanical | IGMP | DH2100 | Level 2 | Fragnet | Bel-Aire Mechanical. LLC | BAB |  |  |  |  |  | Y |
| QTS-1004840 |  | Fragnet / Zone 3 / Rooftop // Procure Grating, Toe Kicks, And Hand Rails | 25d | 2026-02-03 A | 2026-07-02 A | QTS-1001940, QTS-1009900 FF+4d | 100% |  | 2026-02-03 | 2026-03-09 |  |  |  | 01ADMIN | Construction | Phase 1 | Build Out | IGMP | DH2100 | Level 2 | Fragnet | SteelFab Texas Inc. | BAB | Freddy Arrizon |  |  |  |  | Y |
| QTS-1001900 |  | Fragnet / Zone 3 / Rooftop // Install Grating, Toe Kicks, Hand Rails to Complete Chiller Deck | 6d | 2026-07-28 A | 2026-08-04 A | QTS-1001940, QTS-1004840, QTS-1001780 SS | 100% |  | 2026-08-20 | 2026-08-26 |  |  | QTS-PHX3 DC1 - 6 day w/ Holidays | 01ADMIN | Construction | Phase 1 | Build Out | IGMP | DH2100 | Level 2 | Fragnet | SteelFab Texas Inc. | BAB | Bobby Martinez |  |  |  | Steel Fab | Y |

Notes:
- QTS-1010180: allucent_notes_20251014_152335: David Wiltberger on 2025-08-19 09:08: changed pick order / David Wiltberger on 2025-09-02 10:09: Moving to accommodate roofing in Zone 1 / David Wiltberger on 2025-09-24 04:09: BAM not completed Potential Delay / David Wiltberger on 2025-09-30 12:09: BAM did not complete / David Wiltberger on 2025-10-14 10:10: set on recovery schedule / allucent_notes: David Wiltberger on 2025-08-19 09:08: changed pick order / Scheduler Notes: David Wiltberger on 2025-08-19 09:08: changed pick order / David Wiltberger on 2025-09-02 10:09: Moving to accommodate roofing in Zone / 1 / David Wiltberger on 2025-09-24 04:09: BAM not completed Potential Delay / David Wiltberger on 2025-09-30 12:09: BAM did not complete / David Wiltberger on 2025-10-14 10:10: set on recovery / schedule / allucent_notes: 2025-08-19 09:08 - User: David Wiltberger - Date Added: 2025-08-19 09:08 - Note: changed pick order / 2025-09-02 10:09 - User: David Wiltberger - Date Added: 2025-09-02 10:09 - Note: Moving to accommodate roofing in Zone 1 / 2025-09-24 04:09 - User: Dav
- QTS-1008700: allucent_notes_20251014_152335: David Wiltberger on 2025-08-19 09:08: changed pick order / David Wiltberger on 2025-09-02 10:09: Moving to accommodate roofing in Zone 1 / David Wiltberger on 2025-09-24 04:09: BAM not completed Potential Delay / David Wiltberger on 2025-09-30 12:09: BAM did not complete / David Wiltberger on 2025-10-14 10:10: set on recovery schedule / allucent_notes: David Wiltberger on 2025-08-19 09:08: changed pick order / allucent_notes: 2025-08-19 09:08 - User: David Wiltberger - Date Added: 2025-08-19 09:08 - Note: changed pick order / 2025-09-02 10:09 - User: David Wiltberger - Date Added: 2025-09-02 10:09 - Note: Moving to accommodate roofing in Zone 1 / 2025-09-24 04:09 - User: Dav
- QTS-1008570: allucent_notes_20251014_152335: David Wiltberger on 2025-08-19 09:08: changed pick order / David Wiltberger on 2025-09-02 10:09: Moving to accommodate roofing in Zone 1 / David Wiltberger on 2025-09-24 04:09: BAM not completed Potential Delay / David Wiltberger on 2025-09-30 12:09: BAM did not complete / David Wiltberger on 2025-10-14 10:10: set on recovery schedule / allucent_notes: David Wiltberger on 2025-08-19 09:08: changed pick order / allucent_notes: 2025-08-19 09:08 - User: David Wiltberger - Date Added: 2025-08-19 09:08 - Note: changed pick order / 2025-09-02 10:09 - User: David Wiltberger - Date Added: 2025-09-02 10:09 - Note: Moving to accommodate roofing in Zone 1 / 2025-09-24 04:09 - User: Dav
- QTS-4480: Scheduler Notes: 8/4/26-Chiller is done, chwp/vfd still working
- QTS-1008610: allucent_notes_20251014_152335: David Wiltberger on 2025-08-19 09:08: changed pick order / David Wiltberger on 2025-09-02 10:09: Moving to accommodate roofing in Zone 1 / David Wiltberger on 2025-09-24 04:09: BAM not completed Potential Delay / David Wiltberger on 2025-09-30 12:09: BAM did not complete / David Wiltberger on 2025-10-14 10:10: set on recovery schedule / allucent_notes: David Wiltberger on 2025-08-19 09:08: changed pick order / allucent_notes: 2025-08-19 09:08 - User: David Wiltberger - Date Added: 2025-08-19 09:08 - Note: changed pick order / 2025-09-02 10:09 - User: David Wiltberger - Date Added: 2025-09-02 10:09 - Note: Moving to accommodate roofing in Zone 1 / 2025-09-24 04:09 - User: Dav
- QTS-1008660: allucent_notes_20251014_152335: David Wiltberger on 2025-08-19 09:08: changed pick order / David Wiltberger on 2025-09-02 10:09: Moving to accommodate roofing in Zone 1 / David Wiltberger on 2025-09-24 04:09: BAM not completed Potential Delay / David Wiltberger on 2025-09-30 12:09: BAM did not complete / David Wiltberger on 2025-10-14 10:10: set on recovery schedule / allucent_notes: David Wiltberger on 2025-08-19 09:08: changed pick order / allucent_notes: 2025-08-19 09:08 - User: David Wiltberger - Date Added: 2025-08-19 09:08 - Note: changed pick order / 2025-09-02 10:09 - User: David Wiltberger - Date Added: 2025-09-02 10:09 - Note: Moving to accommodate roofing in Zone 1 / 2025-09-24 04:09 - User: Dav
- QTS-1008620: allucent_notes_20251014_152335: David Wiltberger on 2025-08-19 09:08: changed pick order / David Wiltberger on 2025-09-02 10:09: Moving to accommodate roofing in Zone 1 / David Wiltberger on 2025-09-24 04:09: BAM not completed Potential Delay / David Wiltberger on 2025-09-30 12:09: BAM did not complete / David Wiltberger on 2025-10-14 10:10: set on recovery schedule / allucent_notes: David Wiltberger on 2025-08-19 09:08: changed pick order / allucent_notes: 2025-08-19 09:08 - User: David Wiltberger - Date Added: 2025-08-19 09:08 - Note: changed pick order / 2025-09-02 10:09 - User: David Wiltberger - Date Added: 2025-09-02 10:09 - Note: Moving to accommodate roofing in Zone 1 / 2025-09-24 04:09 - User: Dav
- QTS-1008670: allucent_notes_20251014_152335: David Wiltberger on 2025-08-19 09:08: changed pick order / David Wiltberger on 2025-09-02 10:09: Moving to accommodate roofing in Zone 1 / David Wiltberger on 2025-09-24 04:09: BAM not completed Potential Delay / David Wiltberger on 2025-09-30 12:09: BAM did not complete / David Wiltberger on 2025-10-14 10:10: set on recovery schedule / allucent_notes: David Wiltberger on 2025-08-19 09:08: changed pick order / allucent_notes: 2025-08-19 09:08 - User: David Wiltberger - Date Added: 2025-08-19 09:08 - Note: changed pick order / 2025-09-02 10:09 - User: David Wiltberger - Date Added: 2025-09-02 10:09 - Note: Moving to accommodate roofing in Zone 1 / 2025-09-24 04:09 - User: Dav
- QTS-1008680: allucent_notes_20251014_152335: David Wiltberger on 2025-08-19 09:08: changed pick order / David Wiltberger on 2025-09-02 10:09: Moving to accommodate roofing in Zone 1 / David Wiltberger on 2025-09-24 04:09: BAM not completed Potential Delay / David Wiltberger on 2025-09-30 12:09: BAM did not complete / David Wiltberger on 2025-10-14 10:10: set on recovery schedule / allucent_notes: David Wiltberger on 2025-08-19 09:08: changed pick order / allucent_notes: 2025-08-19 09:08 - User: David Wiltberger - Date Added: 2025-08-19 09:08 - Note: changed pick order / 2025-09-02 10:09 - User: David Wiltberger - Date Added: 2025-09-02 10:09 - Note: Moving to accommodate roofing in Zone 1 / 2025-09-24 04:09 - User: Dav
- QTS-1008630: allucent_notes_20251014_152335: David Wiltberger on 2025-08-19 09:08: changed pick order / David Wiltberger on 2025-09-02 10:09: Moving to accommodate roofing in Zone 1 / David Wiltberger on 2025-09-24 04:09: BAM not completed Potential Delay / David Wiltberger on 2025-09-30 12:09: BAM did not complete / David Wiltberger on 2025-10-14 10:10: set on recovery schedule / allucent_notes: David Wiltberger on 2025-08-19 09:08: changed pick order / allucent_notes: 2025-08-19 09:08 - User: David Wiltberger - Date Added: 2025-08-19 09:08 - Note: changed pick order / 2025-09-02 10:09 - User: David Wiltberger - Date Added: 2025-09-02 10:09 - Note: Moving to accommodate roofing in Zone 1 / 2025-09-24 04:09 - User: Dav
- QTS-1008690: allucent_notes_20251014_152335: David Wiltberger on 2025-08-19 09:08: changed pick order / David Wiltberger on 2025-09-02 10:09: Moving to accommodate roofing in Zone 1 / David Wiltberger on 2025-09-24 04:09: BAM not completed Potential Delay / David Wiltberger on 2025-09-30 12:09: BAM did not complete / David Wiltberger on 2025-10-14 10:10: set on recovery schedule / allucent_notes: David Wiltberger on 2025-08-19 09:08: changed pick order / allucent_notes: 2025-08-19 09:08 - User: David Wiltberger - Date Added: 2025-08-19 09:08 - Note: changed pick order / 2025-09-02 10:09 - User: David Wiltberger - Date Added: 2025-09-02 10:09 - Note: Moving to accommodate roofing in Zone 1 / 2025-09-24 04:09 - User: Dav
- QTS-1008640: allucent_notes_20251014_152335: David Wiltberger on 2025-08-19 09:08: changed pick order / David Wiltberger on 2025-09-02 10:09: Moving to accommodate roofing in Zone 1 / David Wiltberger on 2025-09-24 04:09: BAM not completed Potential Delay / David Wiltberger on 2025-09-30 12:09: BAM did not complete / David Wiltberger on 2025-10-14 10:10: set on recovery schedule / allucent_notes: David Wiltberger on 2025-08-19 09:08: changed pick order / allucent_notes: 2025-08-19 09:08 - User: David Wiltberger - Date Added: 2025-08-19 09:08 - Note: changed pick order / 2025-09-02 10:09 - User: David Wiltberger - Date Added: 2025-09-02 10:09 - Note: Moving to accommodate roofing in Zone 1 / 2025-09-24 04:09 - User: Dav
- QTS-1001890: allucent_notes_20251216_165335: David Wiltberger on 2025-12-02 06:45: Grating install not complete for installation / allucent_notes_20251209_203830: David Wiltberger on 2025-12-02 06:45: Grating install not complete for installation / allucent_notes_20251202_153722: David Wiltberger on 2025-12-02 06:45: Grating install not complete for installation / allucent_notes_20251014_152335: David Wiltberger on 2025-08-19 09:08: changed pick order / David Wiltberger on 2025-09-02 10:09: Moving to accommodate roofing in Zone 1 / David Wiltberger on 2025-09-24 04:09: BAM not completed Potential Delay / David Wiltberger on 2025-09-30 12:09: BAM did not complete / David Wiltberger on 2025-10-14 10:10: set on recovery schedule / allucent_notes: David Wiltberger on 2025-08-19 09:08: changed pick order / Scheduler Notes: David Wiltberger on 2025-08-19 09:08: changed pick order / David Wiltberger on 2025-09-02 10:09: Moving to accommodate roofing in Zone / 1 / David Wiltberger on 2025-09-24 04:09: BAM not completed Potential Delay / David Wiltberger on 2025-09-30 12:09: BAM did not complete / David Wiltberger on 2025-10-14 10:10: set on recovery / schedule / allucent_notes: 2025-12-02 06:45 - User: David Wiltberger - Date Added: 2025-12-02 06:45 - Note: Grating install not complete for installation
- QTS-1001910: allucent_notes_20251216_165335: David Wiltberger on 2025-12-02 06:45: Grating install not complete for installation / allucent_notes_20251209_203830: David Wiltberger on 2025-12-02 06:45: Grating install not complete for installation / allucent_notes_20251202_153722: David Wiltberger on 2025-12-02 06:45: Grating install not complete for installation / allucent_notes_20251014_152335: David Wiltberger on 2025-08-19 09:08: changed pick order / David Wiltberger on 2025-09-02 10:09: Moving to accommodate roofing in Zone 1 / David Wiltberger on 2025-09-24 04:09: BAM not completed Potential Delay / David Wiltberger on 2025-09-30 12:09: BAM did not complete / David Wiltberger on 2025-10-14 10:10: set on recovery schedule / allucent_notes: David Wiltberger on 2025-08-19 09:08: changed pick order / allucent_notes: 2025-12-02 06:45 - User: David Wiltberger - Date Added: 2025-12-02 06:45 - Note: Grating install not complete for installation
- QTS-1001920: allucent_notes_20251216_165335: David Wiltberger on 2025-12-02 06:45: Grating install not complete for installation / allucent_notes_20251209_203830: David Wiltberger on 2025-12-02 06:45: Grating install not complete for installation / allucent_notes_20251202_153722: David Wiltberger on 2025-12-02 06:45: Grating install not complete for installation / allucent_notes_20251014_152335: David Wiltberger on 2025-08-19 09:08: changed pick order / David Wiltberger on 2025-09-02 10:09: Moving to accommodate roofing in Zone 1 / David Wiltberger on 2025-09-24 04:09: BAM not completed Potential Delay / David Wiltberger on 2025-09-30 12:09: BAM did not complete / David Wiltberger on 2025-10-14 10:10: set on recovery schedule / allucent_notes: David Wiltberger on 2025-08-19 09:08: changed pick order / allucent_notes: 2025-12-02 06:45 - User: David Wiltberger - Date Added: 2025-12-02 06:45 - Note: Grating install not complete for installation
- QTS-1001930: allucent_notes_20251216_165335: David Wiltberger on 2025-12-02 06:45: Grating install not complete for installation / allucent_notes_20251209_203830: David Wiltberger on 2025-12-02 06:45: Grating install not complete for installation / allucent_notes_20251202_153722: David Wiltberger on 2025-12-02 06:45: Grating install not complete for installation / allucent_notes_20251014_152335: David Wiltberger on 2025-08-19 09:08: changed pick order / David Wiltberger on 2025-09-02 10:09: Moving to accommodate roofing in Zone 1 / David Wiltberger on 2025-09-24 04:09: BAM not completed Potential Delay / David Wiltberger on 2025-09-30 12:09: BAM did not complete / David Wiltberger on 2025-10-14 10:10: set on recovery schedule / allucent_notes: David Wiltberger on 2025-08-19 09:08: changed pick order / allucent_notes: 2025-12-02 06:45 - User: David Wiltberger - Date Added: 2025-12-02 06:45 - Note: Grating install not complete for installation
- QTS-1001940: allucent_notes_20251216_165335: David Wiltberger on 2025-12-02 06:45: Grating install not complete for installation / allucent_notes_20251209_203830: David Wiltberger on 2025-12-02 06:45: Grating install not complete for installation / allucent_notes_20251202_153722: David Wiltberger on 2025-12-02 06:45: Grating install not complete for installation / allucent_notes_20251014_152335: David Wiltberger on 2025-08-19 09:08: changed pick order / David Wiltberger on 2025-09-02 10:09: Moving to accommodate roofing in Zone 1 / David Wiltberger on 2025-09-24 04:09: BAM not completed Potential Delay / David Wiltberger on 2025-09-30 12:09: BAM did not complete / David Wiltberger on 2025-10-14 10:10: set on recovery schedule / allucent_notes: David Wiltberger on 2025-08-19 09:08: changed pick order / allucent_notes: 2025-12-02 06:45 - User: David Wiltberger - Date Added: 2025-12-02 06:45 - Note: Grating install not complete for installation
- QTS-1004840: allucent_notes_20251216_165335: David Wiltberger on 2025-12-02 06:45: Grating install not complete for installation / allucent_notes_20251209_203830: David Wiltberger on 2025-12-02 06:45: Grating install not complete for installation / allucent_notes_20251202_153722: David Wiltberger on 2025-12-02 06:45: Grating install not complete for installation / allucent_notes_20251014_152335: David Wiltberger on 2025-08-19 09:08: changed pick order / David Wiltberger on 2025-09-02 10:09: Moving to accommodate roofing in Zone 1 / David Wiltberger on 2025-09-24 04:09: BAM not completed Potential Delay / David Wiltberger on 2025-09-30 12:09: BAM did not complete / David Wiltberger on 2025-10-14 10:10: set on recovery schedule / allucent_notes: David Wiltberger on 2025-08-19 09:08: changed pick order / allucent_notes: 2025-12-02 06:45 - User: David Wiltberger - Date Added: 2025-12-02 06:45 - Note: Grating install not complete for installation
- QTS-1001900: allucent_notes_20251216_165335: David Wiltberger on 2025-12-02 06:45: Grating install not complete for installation / allucent_notes_20251209_203830: David Wiltberger on 2025-12-02 06:45: Grating install not complete for installation / allucent_notes_20251202_153722: David Wiltberger on 2025-12-02 06:45: Grating install not complete for installation / allucent_notes_20251014_152335: David Wiltberger on 2025-08-19 09:08: changed pick order / David Wiltberger on 2025-09-02 10:09: Moving to accommodate roofing in Zone 1 / David Wiltberger on 2025-09-24 04:09: BAM not completed Potential Delay / David Wiltberger on 2025-09-30 12:09: BAM did not complete / David Wiltberger on 2025-10-14 10:10: set on recovery schedule / allucent_notes: David Wiltberger on 2025-08-19 09:08: changed pick order / allucent_notes: 2025-12-02 06:45 - User: David Wiltberger - Date Added: 2025-12-02 06:45 - Note: Grating install not complete for installation

| ID | WBS | Activity | Duration | Start | Finish | Predecessors | Complete | Planned start | Planned finish | Calendar | Project Section | Layton Discipline | Baseline | Phase-1-1 | Project Section-1 | Location | Level | Contract | Allucent CSI Group | Phase-1 | Notes | TFO-CONST ONLY | NICK | Equipment | Layton Super | Trade Partner | If Not Started or Finished Why? |
| --- | --- | --- | --- | --- | --- | --- | --- | --- | --- | --- | --- | --- | --- | --- | --- | --- | --- | --- | --- | --- | --- | --- | --- | --- | --- | --- | --- |
|  | 5 | **DH 2300 / Mechanical Yard Buildout** |  | 2025-10-02 | 2026-08-28 |  |  |  |  |  |  |  |  |  |  |  |  |  |  |  |  |  |  |  |  |  |  |
| QTS-42491 |  | DH 2300 / Mechanical Yard // Excavate for MV Conduit | 4d | 2025-10-02 A | 2025-10-07 A | QTS-42371, QTS-99200 | 100% |  |  |  | Construction | Core & Shell | IGMP | Phase 1 | Construction | Gen Yard | Level 2 | BAB |  |  |  |  |  |  |  |  |  |
| QTS-42501 |  | DH 2300 / Mechanical Yard // Install Conduit for MV Cables | 4d | 2025-10-03 A | 2025-10-15 A | QTS-42491 FF+1d | 100% | 2025-10-03 | 2025-10-08 |  | Construction | Core & Shell | IGMP | Phase 1 | Construction | Gen Yard | Level 2 | BAB | 01ADMIN |  |  |  |  |  |  |  |  |
| QTS-42511 |  | DH 2300 / Mechanical Yard // Slurry for MV Conduits | 3d | 2025-10-07 A | 2025-10-16 A | QTS-42501 FF+1d | 100% | 2025-10-07 | 2025-10-09 |  | Construction | Core & Shell | IGMP | Phase 1 | Construction | Gen Yard | Level 2 | BAB | 01ADMIN |  |  |  |  |  |  |  |  |
| QTS-42521 |  | DH 2300 / Mechanical Yard // Backfill Conduit for MV Cables | 4d | 2025-10-07 A | 2025-10-17 A | QTS-42511 FF+1d | 100% | 2025-10-07 | 2025-10-10 |  | Construction | Core & Shell | IGMP | Phase 1 | Construction | Gen Yard | Level 2 | BAB | 01ADMIN |  |  |  |  |  |  |  |  |
| QTS-99420 |  | DH 2300 / Mechanical Yard // Form, Reinforce, & Pour Thickened Slab On Grade for MVGs | 5d | 2025-10-20 A | 2025-10-27 A | QTS-42491 | 100% | 2025-12-16 | 2025-12-22 |  | Construction | Core & Shell | IGMP |  |  | Gen Yard | Level 2 | BAB | 01ADMIN | Phase 1 |  |  |  |  |  |  |  |
| QTS-99430 |  | DH 2300 / Mechanical Yard // OFCI - L2 SET IN PLACE - Eq Type # - DC1-MVG-A2 - 1 unit | 1d | 2025-10-28 A | 2025-10-28 A | QTS-99340 FF, QTS-99420 | 100% |  |  |  | Construction | Electrical | IGMP |  |  | Gen Yard | Level 2 | BAB |  | Phase 1 |  |  |  |  |  |  |  |
| QTS-99440 |  | DH 2300 / Mechanical Yard // OFCI - L2 SET IN PLACE - Eq Type # - DC1-MVG-C2/G1 - 1 unit | 1d | 2025-10-28 A | 2025-10-28 A | QTS-99350 FF, QTS-99430 FF | 100% |  |  |  | Construction | Electrical | IGMP |  |  | Gen Yard | Level 2 | BAB |  | Phase 1 |  |  |  |  |  |  |  |
| QTS-14541 |  | DH 2300 / Mechanical Yard // OFCI - L2 SET IN PLACE - Eq Type # - 2500KVA Transformers - 2 units (A23 & R23) | 1d | 2025-11-04 A | 2025-11-04 A | QTS-99440 FF, QTS-37341, QTS-37281 | 100% | 2026-01-14 | 2026-01-14 |  | Construction | Electrical | IGMP | Phase 3 | Construction | Gen Yard | Level 1 | BAB |  |  |  |  |  |  |  |  |  |
| QTS-2041 |  | DH 2300 / Mechanical Yard // Prep for Pier Footings | 3d | 2025-11-24 A | 2025-11-26 A | QTS-12561 SS+5d, QTS-42521, QTS-2021 | 100% |  |  |  | Construction | Core & Shell | IGMP | Phase 3 | Construction | Gen Yard | Level 1 | BAB | 01ADMIN |  |  |  |  |  |  |  |  |
| QTS-2961 |  | DH 2300 / Mechanical Yard // Form, Reinforce, & Pour 24" Diameter Piers #1 | 6d | 2025-12-01 A | 2025-12-01 A | QTS-2041 | 100% | 2025-12-01 | 2025-12-08 |  | Construction | Core & Shell | IGMP | Phase 3 | Construction | Gen Yard | Level 1 | BAB | 01ADMIN |  |  |  |  |  |  |  |  |
| QTS-4151 |  | DH 2300 / Mechanical Yard // Form, Reinforce, & Pour 24" Diameter Piers #2 | 5d | 2025-12-02 A | 2025-12-12 A | QTS-2961 FF+5d, QTS-2961 SS+5d | 100% | 2025-12-02 | 2025-12-08 |  | Construction | Core & Shell | IGMP | Phase 3 | Construction | Gen Yard | Level 1 | BAB | 01ADMIN |  |  |  |  |  |  |  |  |
|  | 2 | **Remaining Duration** |  | 2025-12-10 | 2026-08-28 |  |  |  |  |  |  |  |  |  |  |  |  |  |  |  |  |  |  |  |  |  |  |
| QTS-11271 |  | DH 2300 / Mechanical Yard // Form, Reinforce, & Pour Thickened Slab On Grade for Transformers | 9d | 2025-12-10 A | 2025-12-10 A | QTS-4151 SS+1d | 100% | 2025-12-10 | 2025-12-22 |  | Construction | Core & Shell | IGMP | Phase 3 | Construction | Gen Yard | Level 1 | BAB | 01ADMIN |  |  |  |  |  |  |  |  |
| QTS-10011 |  | DH 2300 / Mechanical Yard // Form, Reinforce, & Pour Thickened Slab On Grade for UPS Pods | 5d | 2025-12-16 A | 2025-12-22 A | QTS-11271 | 100% |  |  |  | Construction | Core & Shell | IGMP | Phase 3 | Construction | Gen Yard | Level 1 | BAB | 01ADMIN |  |  |  |  |  |  |  |  |
| QTS-12581 |  | DH 2300 / Mechanical Yard // Form, Reinforce, & Pour Thickened Slab On Grade for Generators | 10d | 2025-12-22 A | 2026-01-09 A | QTS-10011 | 100% | 2025-12-22 | 2026-01-03 | QTS-PHX3 DC1 - 6 day w/ Holidays | Construction | Core & Shell | IGMP | Phase 3 | Construction | Gen Yard | Level 1 | BAB | 01ADMIN |  |  |  |  |  |  |  |  |
| QTS-1001460 |  | DH 2300 / Mechanical Yard // OFCI - L2 SET IN PLACE - Eq Type # - 2500KVA Transformers - 4 units (B13-F23) | 3d | 2026-01-06 A | 2026-01-06 A | QTS-37331, QTS-37321, QTS-37311, QTS-37301, QTS-37291, QTS-11271, QTS-14541 | 100% | 2026-01-06 | 2026-01-08 | QTS-PHX3 DC1 - 6 day w/ Holidays | Construction | Electrical | IGMP | Phase 3 | Construction | Gen Yard | Level 1 | BAB | 01ADMIN |  |  |  |  |  |  |  |  |
| QTS-6571 |  | DH 2300 / Mechanical Yard // Place Gen Yard Gravel | 5d | 2026-01-07 A | 2026-01-07 A | QTS-10011, QTS-11271, QTS-4151 | 100% | 2026-01-07 | 2026-01-12 | QTS-PHX3 DC1 - 6 day w/ Holidays | Construction | Core & Shell | IGMP | Phase 3 | Construction | Gen Yard | Level 1 | BAB | 01ADMIN |  |  |  |  |  |  |  |  |
| QTS-42531 |  | DH 2300 / Mechanical Yard // Wire Pull for MV Cables | 6d | 2026-02-16 A | 2026-02-24 A | QTS-42521 | 100% | 2026-02-16 | 2026-02-21 | QTS-PHX3 DC1 - 6 day w/ Holidays | Construction | Electrical | IGMP | Phase 1 | Construction | Gen Yard | Level 2 | BAB |  |  |  |  |  |  |  |  |  |
| QTS-13571 |  | DH 2300 / Mechanical Yard // OFCI - L2 SET IN PLACE - Eq Type # - 3000A UPS Pods - 7 units | 5d | 2026-02-17 A | 2026-02-20 A | QTS-10011, QTS-36771 FF, QTS-36761 FF, QTS-36751 FF, QTS-36741 FF, QTS-36731 FF, QTS-36721 FF, QTS-36711 | 100% | 2026-02-17 | 2026-02-21 | QTS-PHX3 DC1 - 6 day w/ Holidays | Construction | Electrical | IGMP | Phase 3 | Construction | Gen Yard | Level 1 | BAB |  |  |  |  |  |  |  |  |  |
| QTS-50001 |  | Zone 3 / Mechanical Yard // Install Cable Bus | 10d | 2026-02-24 A | 2026-04-08 A | QTS-49721, QTS-6571 | 100% | 2026-02-24 | 2026-03-06 | QTS-PHX3 DC1 - 6 day w/ Holidays | Construction | Electrical | IGMP | Phase 1 | Construction | Gen Yard | Level 1 | BAB |  |  | 3/24: 90% complete. |  |  |  |  |  |  |
| QTS-41461 |  | DH 2300 / Mechanical Yard // OFCI - L2 SET IN PLACE - Eq Type # - 2500KW Generator #A-23 - 1 unit | 1d | 2026-02-25 A | 2026-03-05 A | QTS-1001460, QTS-40331 FF, QTS-40311 FF, QTS-40301 FF, QTS-14541, QTS-12581 | 100% | 2026-02-25 | 2026-02-25 | QTS-PHX3 DC1 - 6 day w/ Holidays | Construction | Electrical |  | Phase 3 | Construction | Gen Yard | Level 1 | BAB | 01ADMIN |  |  |  |  |  |  |  |  |
| QTS-41471 |  | DH 2300 / Mechanical Yard // OFCI - L2 SET IN PLACE - Eq Type # - 2500KW Generator #B-23 - 1 unit | 1d | 2026-02-25 A | 2026-03-05 A | QTS-40171 FF, QTS-40151 FF, QTS-40141 FF, QTS-41461 SS | 100% | 2026-02-25 | 2026-02-25 | QTS-PHX3 DC1 - 6 day w/ Holidays | Construction | Electrical |  | Phase 3 | Construction | Gen Yard | Level 1 | BAB | 01ADMIN |  |  |  |  |  |  |  |  |
| QTS-41481 |  | DH 2300 / Mechanical Yard // OFCI - L2 SET IN PLACE - Eq Type # - 2500KW Generator #C-23 - 1 unit | 1d | 2026-02-25 A | 2026-03-05 A | QTS-40011 FF, QTS-39991 FF, QTS-39981 FF, QTS-41471 SS | 100% | 2026-02-25 | 2026-02-25 | QTS-PHX3 DC1 - 6 day w/ Holidays | Construction | Electrical |  | Phase 3 | Construction | Gen Yard | Level 1 | BAB |  |  |  |  |  |  |  |  |  |
| QTS-41491 |  | DH 2300 / Mechanical Yard // OFCI - L2 SET IN PLACE - Eq Type # - 2500KW Generator #D-23 - 1 unit | 1d | 2026-03-02 A | 2026-03-05 A | QTS-40531 FF, QTS-40511 FF, QTS-40501 FF, QTS-41481 | 100% | 2026-03-12 | 2026-03-12 | QTS-PHX3 DC1 - 6 day w/ Holidays | Construction | Electrical |  | Phase 3 | Construction | Gen Yard | Level 1 | BAB |  |  |  |  |  |  |  |  |  |
| QTS-41501 |  | DH 2300 / Mechanical Yard // OFCI - L2 SET IN PLACE - Eq Type # - 2500KW Generator #E-23 - 1 unit | 1d | 2026-03-02 A | 2026-03-05 A | QTS-40731 FF, QTS-40711 FF, QTS-40701 FF, QTS-41491 FF, QTS-13571 | 100% | 2026-03-13 | 2026-03-13 | QTS-PHX3 DC1 - 6 day w/ Holidays | Construction | Electrical |  | Phase 3 | Construction | Gen Yard | Level 1 | BAB |  |  |  |  |  |  |  |  |  |
| QTS-41511 |  | DH 2300 / Mechanical Yard // OFCI - L2 SET IN PLACE - Eq Type # - 2500KW Generator #F-23 - 1 unit | 1d | 2026-03-02 A | 2026-03-05 A | QTS-40931 FF, QTS-40911 FF, QTS-40901 FF, QTS-41501 | 100% | 2026-03-14 | 2026-03-14 | QTS-PHX3 DC1 - 6 day w/ Holidays | Construction | Electrical |  | Phase 3 | Construction | Gen Yard | Level 1 | BAB |  |  |  |  |  |  |  |  |  |
| QTS-41521 |  | DH 2300 / Mechanical Yard // OFCI - L2 SET IN PLACE - Eq Type # - 2500KW Generator #R-23 - 1 unit | 1d | 2026-03-02 A | 2026-03-06 A | QTS-41131 FF, QTS-41111 FF, QTS-41101 FF, QTS-41511 | 100% | 2026-03-16 | 2026-03-16 | QTS-PHX3 DC1 - 6 day w/ Holidays | Construction | Electrical |  | Phase 3 | Construction | Gen Yard | Level 1 | BAB |  |  |  |  |  |  |  |  |  |
| QTS-2061 |  | Zone 3 / Mechanical Yard // Install FRP Platforms | 10d | 2026-03-10 A | 2026-03-27 A | QTS-36081, QTS-13571, QTS-41501, QTS-41491, QTS-41481, QTS-41471, QTS-41461, QTS-36071 | 100% | 2026-03-10 | 2026-03-20 | QTS-PHX3 DC1 - 6 day w/ Holidays | Construction | Core & Shell | IGMP | Phase 3 | Construction | Gen Yard | Level 1 | TFO |  |  |  | TFO CONST | NICK |  |  |  |  |
| QTS-1008500 |  | Zone 3 / Mechanical Yard // Pull Electrical Wire From UPS Pods to Transformers | 10d | 2026-03-27 A | 2026-04-28 A | QTS-50001 SS, QTS-13571 | 100% | 2026-04-02 | 2026-04-13 | QTS-PHX3 DC1 - 6 day w/ Holidays | Construction | Mechanical | IGMP | Phase 2 | Construction | Gen Yard | Level 1 | BAB |  |  |  |  |  | XFMR | Dave Wiltberger |  |  |
| QTS-1008510 |  | Zone 3 / Mechanical Yard // Pull Electrical Wire From UPS Pods to Generators | 10d | 2026-03-27 A | 2026-04-28 A | QTS-1008500 SS, QTS-1008500 FF | 100% | 2026-04-07 | 2026-04-17 | QTS-PHX3 DC1 - 6 day w/ Holidays | Construction | Mechanical | IGMP | Phase 2 | Construction | Gen Yard | Level 1 | BAB |  |  |  |  |  | GEN | Dave Wiltberger |  |  |
| QTS-1000310 |  | Zone 3 / Mechanical Yard // OFCI - L2 SET IN PLACE - Eq Type # - 2500KW Generator SCR - 14 units | 3d | 2026-04-01 A | 2026-04-06 A | QTS-41521, QTS-41121, QTS-40921, QTS-40721, QTS-40521, QTS-40001, QTS-40161, QTS-40321, QTS-40201, QTS-40041, QTS-40561, QTS-40761, QTS-40961, QTS-41161, QTS-40361 | 100% | 2026-07-01 | 2026-07-06 | QTS-PHX3 DC1 - 6 day w/ Holidays | Construction | Electrical |  | Phase 1 | Construction | Gen Yard | Level 1 | BAB | 01ADMIN |  |  |  |  | GEN | Oscar Armenta |  |  |
| QTS-1004420 |  | Zone 3 / Mechanical Yard // OFCI - L2 SET IN PLACE - Eq Type # - 2500KVA Transformers - 1 units (B13) | 1d | 2026-04-23 A | 2026-04-23 A | QTS-38131, QTS-1010400 | 100% |  |  | QTS-PHX3 DC1 - 6 day w/ Holidays | Construction | Electrical | IGMP | Phase 3 | Construction | Gen Yard | Level 1 | BAB | 01ADMIN |  |  |  |  |  |  |  |  |
| QTS-1010210 |  | Zone 3 / Mechanical Yard // Install Cable Bus - B13 XFMR | 2d | 2026-04-23 A | 2026-04-30 A | QTS-1004420 | 100% | 2026-04-23 | 2026-04-24 | QTS-PHX3 DC1 - 6 day w/ Holidays | Construction | Mechanical | IGMP | Phase 1 | Construction | Gen Yard | Level 1 | BAB |  |  | 3/24: 90% complete. |  |  |  | Dave Wiltberger |  |  |
| QTS-15171 |  | Zone 3 / Mechanical Yard // Install Raceway from Transformers to UPS Pods | 5d | 2026-04-27 A | 2026-05-08 A | QTS-1001460, QTS-15941 SS+2d, QTS-14541 | 100% | 2026-05-08 | 2026-05-13 | QTS-PHX3 DC1 - 6 day w/ Holidays | Construction | Electrical | IGMP | Phase 3 | Construction | Gen Yard | Level 1 | BAB |  |  | Pull in Opportunity |  |  | XFMR |  |  |  |
| QTS-15941 |  | Zone 3 / Mechanical Yard // Install Raceway from Generators to UPS Pods | 10d | 2026-04-27 A | 2026-05-08 A | QTS-50001, QTS-41521 | 100% | 2026-05-06 | 2026-05-16 | QTS-PHX3 DC1 - 6 day w/ Holidays | Construction | Electrical | IGMP | Phase 3 | Construction | Gen Yard | Level 1 | BAB |  |  |  |  |  | GEN |  |  |  |
| QTS-1008380 |  | Zone 3 / Mechanical Yard // Terminate Electrical Wire at Transformer F23 | 2d | 2026-05-28 A | 2026-05-29 A | QTS-15171 | 100% |  |  | QTS-PHX3 DC1 - 6 day w/ Holidays | Construction | Electrical | IGMP | Phase 2 | Construction | Gen Yard | Level 1 | BAB |  |  |  |  |  | XFMR | Oscar Armenta |  |  |
| QTS-1008410 |  | Zone 3 / Mechanical Yard // Terminate Electrical Wire at Transformer E13 | 2d | 2026-06-01 A | 2026-06-08 A | QTS-1008380 | 100% | 2026-06-12 | 2026-06-13 | QTS-PHX3 DC1 - 6 day w/ Holidays | Construction | Electrical | IGMP | Phase 2 | Construction | Gen Yard | Level 1 | BAB |  |  |  |  |  | XFMR | Oscar Armenta |  |  |
| QTS-1008460 |  | Zone 3 / Mechanical Yard // Terminate Electrical Wire at Transformer F13 | 2d | 2026-06-01 A | 2026-06-08 A | QTS-1008410 | 100% | 2026-06-10 | 2026-06-11 | QTS-PHX3 DC1 - 6 day w/ Holidays | Construction | Electrical | IGMP | Phase 2 | Construction | Gen Yard | Level 1 | BAB |  |  |  |  |  | XFMR | Oscar Armenta |  |  |
| QTS-1008100 |  | Zone 3 / Mechanical Yard // Pull Control Wire from Generators to UPS Pods | 3d | 2026-06-03 A | 2026-06-05 A | QTS-15941 | 100% |  |  | QTS-PHX3 DC1 - 6 day w/ Holidays | Construction | Electrical | IGMP | Phase 2 | Construction | Gen Yard | Level 1 | BAB |  |  |  |  |  | GEN | Oscar Armenta |  |  |
| QTS-1009140 |  | Zone 3 / Mechanical Yard // Rough In Conduit for Security Devices in Generators | 5d | 2026-06-04 A | 2026-07-17 A | QTS-15941 | 100% | 2026-06-03 | 2026-06-08 | QTS-PHX3 DC1 - 6 day w/ Holidays | Construction | Electrical | IGMP | Phase 2 | Construction | Gen Yard | Level 1 | BAB |  |  |  |  |  | GEN | Electrical | REI |  |
| QTS-1008320 |  | Zone 3 / Mechanical Yard // Terminate Electrical Wire at Transformer E23 | 2d | 2026-06-24 A | 2026-06-25 A | QTS-1008410 | 100% |  |  | QTS-PHX3 DC1 - 6 day w/ Holidays | Construction | Electrical | IGMP | Phase 2 | Construction | Gen Yard | Level 1 | BAB |  |  |  |  |  | XFMR | Oscar Armenta |  |  |
| QTS-1008070 |  | Zone 3 / Mechanical Yard // Terminate Electrical Wire at Transformer A23 | 2d | 2026-06-25 A | 2026-06-26 A | QTS-1008150 | 100% | 2026-07-06 | 2026-07-07 | QTS-PHX3 DC1 - 6 day w/ Holidays | Construction | Electrical | IGMP | Phase 2 | Construction | Gen Yard | Level 1 | BAB |  |  |  |  |  | XFMR | Oscar Armenta |  |  |
| QTS-1008120 |  | Zone 3 / Mechanical Yard // Terminate Electrical Wire at Transformer B23 | 2d | 2026-06-25 A | 2026-06-26 A | QTS-1008320 | 100% | 2026-07-08 | 2026-07-09 | QTS-PHX3 DC1 - 6 day w/ Holidays | Construction | Electrical | IGMP | Phase 2 | Construction | Gen Yard | Level 1 | BAB |  |  |  |  |  | XFMR | Oscar Armenta |  |  |
| QTS-1008150 |  | Zone 3 / Mechanical Yard // Terminate Electrical Wire at Transformer A13 | 2d | 2026-06-25 A | 2026-06-26 A | QTS-1008120 | 100% | 2026-07-01 | 2026-07-02 | QTS-PHX3 DC1 - 6 day w/ Holidays | Construction | Electrical | IGMP | Phase 2 | Construction | Gen Yard | Level 1 | BAB |  |  |  |  |  | XFMR | Oscar Armenta |  |  |
| QTS-1008230 |  | Zone 3 / Mechanical Yard // Terminate Electrical Wire at Transformer B13 | 2d | 2026-06-25 A | 2026-06-26 A | QTS-1004420, QTS-1008200 | 100% | 2026-07-01 | 2026-07-02 | QTS-PHX3 DC1 - 6 day w/ Holidays | Construction | Electrical | IGMP | Phase 2 | Construction | Gen Yard | Level 1 | BAB |  |  |  |  |  | XFMR | Oscar Armenta |  |  |
| QTS-1008200 |  | Zone 3 / Mechanical Yard // Terminate Electrical Wire at Transformer C23 | 2d | 2026-06-26 A | 2026-06-27 A | QTS-1008290 | 100% | 2026-07-06 | 2026-07-07 | QTS-PHX3 DC1 - 6 day w/ Holidays | Construction | Electrical | IGMP | Phase 2 | Construction | Gen Yard | Level 1 | BAB |  |  |  |  |  | XFMR | Oscar Armenta |  |  |
| QTS-1008260 |  | Zone 3 / Mechanical Yard // Terminate Electrical Wire at Transformer D23 | 2d | 2026-06-26 A | 2026-06-27 A | QTS-1008350 | 100% | 2026-06-29 | 2026-06-30 | QTS-PHX3 DC1 - 6 day w/ Holidays | Construction | Electrical | IGMP | Phase 2 | Construction | Gen Yard | Level 1 | BAB |  |  |  |  |  | XFMR | Oscar Armenta |  |  |
| QTS-1008290 |  | Zone 3 / Mechanical Yard // Terminate Electrical Wire at Transformer C13 | 2d | 2026-06-26 A | 2026-06-27 A | QTS-1008260 | 100% | 2026-07-01 | 2026-07-02 | QTS-PHX3 DC1 - 6 day w/ Holidays | Construction | Electrical | IGMP | Phase 2 | Construction | Gen Yard | Level 1 | BAB |  |  |  |  |  | XFMR | Oscar Armenta |  |  |
| QTS-1008350 |  | Zone 3 / Mechanical Yard // Terminate Electrical Wire at Transformer D13 | 2d | 2026-06-26 A | 2026-06-27 A | QTS-1008320 | 100% |  |  | QTS-PHX3 DC1 - 6 day w/ Holidays | Construction | Electrical | IGMP | Phase 2 | Construction | Gen Yard | Level 1 | BAB |  |  |  |  |  | XFMR | Oscar Armenta |  |  |
| QTS-1008480 |  | Zone 3 / Mechanical Yard // Terminate Electrical Wire at UPS Pod F13 | 2d | 2026-07-01 A | 2026-07-02 A | QTS-1008490 SS | 100% | 2026-07-24 | 2026-07-25 | QTS-PHX3 DC1 - 6 day w/ Holidays | Construction | Electrical | IGMP | Phase 2 | Construction | Gen Yard | Level 1 | BAB |  |  |  |  |  | SWD | Oscar Armenta |  |  |
| QTS-1008490 |  | Zone 3 / Mechanical Yard // Terminate Electrical Wire at UPS Pod R23 | 2d | 2026-07-01 A | 2026-07-02 A | QTS-1008200 | 100% | 2026-07-24 | 2026-07-25 | QTS-PHX3 DC1 - 6 day w/ Holidays | Construction | Electrical | IGMP | Phase 2 | Construction | Gen Yard | Level 1 | BAB |  |  |  |  |  | SWD | Oscar Armenta |  |  |
| QTS-1008040 |  | Zone 3 / Mechanical Yard // Terminate Electrical Wire at Transformer R13 | 2d | 2026-07-01 A | 2026-07-02 A | QTS-1008500 | 100% | 2026-07-15 | 2026-07-16 | QTS-PHX3 DC1 - 6 day w/ Holidays | Construction | Electrical | IGMP | Phase 2 | Construction | Gen Yard | Level 1 | BAB |  |  |  |  |  | XFMR | Electrical |  |  |
| QTS-1008050 |  | Zone 3 / Mechanical Yard // Terminate Electrical Wire at Generator R13 | 2d | 2026-07-01 A | 2026-07-02 A | QTS-1008040 SS, QTS-1008510, QTS-41451 | 100% | 2026-07-15 | 2026-07-16 | QTS-PHX3 DC1 - 6 day w/ Holidays | Construction | Electrical | IGMP | Phase 2 | Construction | Gen Yard | Level 1 | BAB |  |  |  |  |  | GEN | Electrical |  |  |
| QTS-1008280 |  | Zone 3 / Mechanical Yard // Terminate Electrical Wire at UPS Pod D23 | 2d | 2026-07-01 A | 2026-07-02 A | QTS-1008370 | 100% | 2026-07-15 | 2026-07-16 | QTS-PHX3 DC1 - 6 day w/ Holidays | Construction | Electrical | IGMP | Phase 2 | Construction | Gen Yard | Level 1 | BAB |  |  |  |  |  | SWD | Electrical |  |  |
| QTS-1008450 |  | Zone 3 / Mechanical Yard // Terminate Electrical Wire at Generator R23 | 2d | 2026-07-01 A | 2026-07-02 A | QTS-1008510 | 100% | 2026-07-15 | 2026-07-16 | QTS-PHX3 DC1 - 6 day w/ Holidays | Construction | Electrical | IGMP | Phase 2 | Construction | Gen Yard | Level 1 | BAB |  |  |  |  |  | GEN | Electrical |  |  |
| QTS-42871 |  | Zone 3 / Mechanical Yard // Terminate MV at Transformers - Line Side | 10d | 2026-07-02 A | 2026-07-16 A | QTS-42531 | 100% | 2026-07-15 | 2026-07-25 | QTS-PHX3 DC1 - 6 day w/ Holidays | Construction | Electrical | IGMP | Phase 1 | Construction | Gen Yard | Level 1 | BAB |  |  | Waiting on transformer4/3/2026 to be installed |  |  | XFMR | Electrical |  | Waiting on transformer4/3/2026 to be installed |
| QTS-1008160 |  | Zone 3 / Mechanical Yard // Terminate Electrical Wire at Generator A13 | 2d | 2026-07-05 A | 2026-07-06 A | QTS-1008150 SS | 100% | 2026-07-15 | 2026-07-16 | QTS-PHX3 DC1 - 6 day w/ Holidays | Construction | Electrical | IGMP | Phase 2 | Construction | Gen Yard | Level 1 | BAB |  |  |  |  |  | GEN | Oscar Armenta |  |  |
| QTS-1008210 |  | Zone 3 / Mechanical Yard // Terminate Electrical Wire at Generator C23 | 2d | 2026-07-05 A | 2026-07-06 A | QTS-1008200 SS | 100% | 2026-07-15 | 2026-07-16 | QTS-PHX3 DC1 - 6 day w/ Holidays | Construction | Electrical | IGMP | Phase 2 | Construction | Gen Yard | Level 1 | BAB |  |  |  |  |  | GEN | Oscar Armenta |  |  |
| QTS-1008240 |  | Zone 3 / Mechanical Yard // Terminate Electrical Wire at Generator B13 | 2d | 2026-07-05 A | 2026-07-06 A | QTS-1008230 SS | 100% | 2026-07-15 | 2026-07-16 | QTS-PHX3 DC1 - 6 day w/ Holidays | Construction | Electrical | IGMP | Phase 2 | Construction | Gen Yard | Level 1 | BAB |  |  |  |  |  | GEN | Oscar Armenta |  |  |
| QTS-1008270 |  | Zone 3 / Mechanical Yard // Terminate Electrical Wire at Generator D23 | 2d | 2026-07-05 A | 2026-07-06 A | QTS-1008260 SS | 100% | 2026-07-15 | 2026-07-16 | QTS-PHX3 DC1 - 6 day w/ Holidays | Construction | Electrical | IGMP | Phase 2 | Construction | Gen Yard | Level 1 | BAB |  |  |  |  |  | GEN | Oscar Armenta |  |  |
| QTS-1008300 |  | Zone 3 / Mechanical Yard // Terminate Electrical Wire at Generator C13 | 2d | 2026-07-05 A | 2026-07-06 A | QTS-1008290 SS | 100% | 2026-07-15 | 2026-07-16 | QTS-PHX3 DC1 - 6 day w/ Holidays | Construction | Electrical | IGMP | Phase 2 | Construction | Gen Yard | Level 1 | BAB |  |  |  |  |  | GEN | Oscar Armenta |  |  |
| QTS-1008330 |  | Zone 3 / Mechanical Yard // Terminate Electrical Wire at Generator E23 | 2d | 2026-07-05 A | 2026-07-06 A | QTS-1008320 SS | 100% | 2026-07-15 | 2026-07-16 | QTS-PHX3 DC1 - 6 day w/ Holidays | Construction | Electrical | IGMP | Phase 2 | Construction | Gen Yard | Level 1 | BAB |  |  |  |  |  | GEN | Oscar Armenta |  |  |
| QTS-1008360 |  | Zone 3 / Mechanical Yard // Terminate Electrical Wire at Generator D13 | 2d | 2026-07-05 A | 2026-07-06 A | QTS-1008350 SS | 100% | 2026-07-15 | 2026-07-16 | QTS-PHX3 DC1 - 6 day w/ Holidays | Construction | Electrical | IGMP | Phase 2 | Construction | Gen Yard | Level 1 | BAB |  |  |  |  |  | GEN | Oscar Armenta |  |  |
| QTS-1008390 |  | Zone 3 / Mechanical Yard // Terminate Electrical Wire at Generator F23 | 2d | 2026-07-05 A | 2026-07-06 A | QTS-1008380 SS | 100% | 2026-07-15 | 2026-07-16 | QTS-PHX3 DC1 - 6 day w/ Holidays | Construction | Electrical | IGMP | Phase 2 | Construction | Gen Yard | Level 1 | BAB |  |  |  |  |  | GEN | Oscar Armenta |  |  |
| QTS-1008420 |  | Zone 3 / Mechanical Yard // Terminate Electrical Wire at Generator E13 | 2d | 2026-07-05 A | 2026-07-06 A | QTS-1008410 SS | 100% | 2026-07-15 | 2026-07-16 | QTS-PHX3 DC1 - 6 day w/ Holidays | Construction | Electrical | IGMP | Phase 2 | Construction | Gen Yard | Level 1 | BAB |  |  |  |  |  | GEN | Oscar Armenta |  |  |
| QTS-1008470 |  | Zone 3 / Mechanical Yard // Terminate Electrical Wire at Generator F13 | 2d | 2026-07-05 A | 2026-07-06 A | QTS-1008460 SS | 100% | 2026-07-15 | 2026-07-16 | QTS-PHX3 DC1 - 6 day w/ Holidays | Construction | Electrical | IGMP | Phase 2 | Construction | Gen Yard | Level 1 | BAB |  |  |  |  |  | GEN | Oscar Armenta |  |  |
| QTS-1008400 |  | Zone 3 / Mechanical Yard // Terminate Electrical Wire at UPS Pod F23 | 2d | 2026-07-06 A | 2026-07-07 A | QTS-1008480 | 100% | 2026-07-24 | 2026-07-25 | QTS-PHX3 DC1 - 6 day w/ Holidays | Construction | Electrical | IGMP | Phase 2 | Construction | Gen Yard | Level 1 | BAB |  |  |  |  |  | SWD | Oscar Armenta |  |  |
| QTS-1008430 |  | Zone 3 / Mechanical Yard // Terminate Electrical Wire at UPS Pod E13 | 2d | 2026-07-06 A | 2026-07-07 A | QTS-1008400 | 100% | 2026-07-24 | 2026-07-25 | QTS-PHX3 DC1 - 6 day w/ Holidays | Construction | Electrical | IGMP | Phase 2 | Construction | Gen Yard | Level 1 | BAB |  |  |  |  |  | SWD | Oscar Armenta |  |  |
| QTS-1008080 |  | Zone 3 / Mechanical Yard // Terminate Electrical Wire at Generator A23 | 2d | 2026-07-07 A | 2026-07-08 A | QTS-1008070 SS, QTS-1008130 | 100% | 2026-07-15 | 2026-07-16 | QTS-PHX3 DC1 - 6 day w/ Holidays | Construction | Electrical | IGMP | Phase 2 | Construction | Gen Yard | Level 1 | BAB |  |  |  |  |  | GEN | Oscar Armenta |  |  |

Notes:
- QTS-42501: allucent_notes_20251021_145627: Jason Johnston on 2025-10-14 09:10: Rain delays / allucent_notes_20251014_152335: Jason Johnston on 2025-10-14 09:10: Rain delays / allucent_notes: 2025-10-14 09:10 - User: Jason Johnston - Date Added: 2025-10-14 09:10 - Note: Rain delays
- QTS-11271: allucent_notes_20251230_164549: David Wiltberger on 2025-12-30 16:23: no update / allucent_notes: 2025-12-30 16:23 - User: David Wiltberger - Date Added: 2025-12-30 16:23 - Note: no update
- QTS-50001: Scheduler Notes: 3/24: 90% complete.
- QTS-1010210: Scheduler Notes: 3/24: 90% complete.
- QTS-15171: Scheduler Notes: Pull in Opportunity
- QTS-42871: Scheduler Notes: Waiting on transformer4/3/2026 to be installed

| ID | WBS | Activity | Duration | Start | Finish | Predecessors | Complete | Planned start | Planned finish | Total float | Free float | Calendar | Project Section | Layton Discipline | Baseline | Phase-1-1 | Project Section-1 | Location | Level | Equipment | Layton Super | Contract | Allucent CSI Group | Phase-1 | Notes | Trade Partner | TFO-CONST ONLY | NICK |
| --- | --- | --- | --- | --- | --- | --- | --- | --- | --- | --- | --- | --- | --- | --- | --- | --- | --- | --- | --- | --- | --- | --- | --- | --- | --- | --- | --- | --- |
| QTS-1008130 |  | Zone 3 / Mechanical Yard // Terminate Electrical Wire at Generator B23 | 2d | 2026-07-07 A | 2026-07-08 A | QTS-1008210 | 100% | 2026-07-15 | 2026-07-16 |  |  | QTS-PHX3 DC1 - 6 day w/ Holidays | Construction | Electrical | IGMP | Phase 2 | Construction | Gen Yard | Level 1 | GEN | Oscar Armenta | BAB |  |  |  |  |  |  |
| QTS-1008340 |  | Zone 3 / Mechanical Yard // Terminate Electrical Wire at UPS Pod E23 | 2d | 2026-07-07 A | 2026-07-08 A | QTS-1008430 | 100% | 2026-07-24 | 2026-07-25 |  |  | QTS-PHX3 DC1 - 6 day w/ Holidays | Construction | Electrical | IGMP | Phase 2 | Construction | Gen Yard | Level 1 | SWD | Oscar Armenta | BAB |  |  |  |  |  |  |
| QTS-1008370 |  | Zone 3 / Mechanical Yard // Terminate Electrical Wire at UPS Pod D13 | 2d | 2026-07-07 A | 2026-07-08 A | QTS-1008340 | 100% | 2026-07-27 | 2026-07-28 |  |  | QTS-PHX3 DC1 - 6 day w/ Holidays | Construction | Electrical | IGMP | Phase 2 | Construction | Gen Yard | Level 1 | SWD | Oscar Armenta | BAB |  |  |  |  |  |  |
| QTS-1008060 |  | Zone 3 / Mechanical Yard // Terminate Electrical Wire at UPS Pod R13 | 2d | 2026-07-08 A | 2026-07-09 A | QTS-1008500, QTS-1008510, QTS-1008090 | 100% | 2026-07-29 | 2026-07-30 |  |  | QTS-PHX3 DC1 - 6 day w/ Holidays | Construction | Electrical | IGMP | Phase 2 | Construction | Gen Yard | Level 1 | SWD | Electrical | BAB |  |  |  |  |  |  |
| QTS-1008090 |  | Zone 3 / Mechanical Yard // Terminate Electrical Wire at UPS Pod A23 | 2d | 2026-07-08 A | 2026-07-09 A | QTS-1008170 | 100% | 2026-07-27 | 2026-07-28 |  |  | QTS-PHX3 DC1 - 6 day w/ Holidays | Construction | Electrical | IGMP | Phase 2 | Construction | Gen Yard | Level 1 | SWD | Electrical | BAB |  |  |  |  |  |  |
| QTS-1008140 |  | Zone 3 / Mechanical Yard // Terminate Electrical Wire at UPS Pod B23 | 2d | 2026-07-08 A | 2026-07-09 A | QTS-1008220 | 100% | 2026-07-22 | 2026-07-23 |  |  | QTS-PHX3 DC1 - 6 day w/ Holidays | Construction | Electrical | IGMP | Phase 2 | Construction | Gen Yard | Level 1 | SWD | Electrical | BAB |  |  |  |  |  |  |
| QTS-1008170 |  | Zone 3 / Mechanical Yard // Terminate Electrical Wire at UPS Pod A13 | 2d | 2026-07-08 A | 2026-07-09 A | QTS-1008140 | 100% | 2026-07-24 | 2026-07-25 |  |  | QTS-PHX3 DC1 - 6 day w/ Holidays | Construction | Electrical | IGMP | Phase 2 | Construction | Gen Yard | Level 1 | SWD | Electrical | BAB |  |  |  |  |  |  |
| QTS-1008220 |  | Zone 3 / Mechanical Yard // Terminate Electrical Wire at UPS Pod C23 | 2d | 2026-07-08 A | 2026-07-09 A | QTS-1008310 | 100% | 2026-07-20 | 2026-07-21 |  |  | QTS-PHX3 DC1 - 6 day w/ Holidays | Construction | Electrical | IGMP | Phase 2 | Construction | Gen Yard | Level 1 | SWD | Electrical | BAB |  |  |  |  |  |  |
| QTS-1008250 |  | Zone 3 / Mechanical Yard // Terminate Electrical Wire at UPS Pod B13 | 2d | 2026-07-08 A | 2026-07-09 A | QTS-1008220 | 100% | 2026-07-22 | 2026-07-23 |  |  | QTS-PHX3 DC1 - 6 day w/ Holidays | Construction | Electrical | IGMP | Phase 2 | Construction | Gen Yard | Level 1 | SWD | Electrical | BAB |  |  |  |  |  |  |
| QTS-1001220 |  | Zone 3 / Mechanical Yard // Pressure Test Generator Tanks | 2d | 2026-07-13 A | 2026-07-13 A | QTS-1000310 FF, QTS-40361 | 100% | 2026-07-15 | 2026-07-16 |  |  | QTS-PHX3 DC1 - 6 day w/ Holidays | Construction | Electrical | IGMP |  |  | Gen Yard | Level 1 | GEN | Oscar Armenta | BAB | 01ADMIN | Phase 1 |  |  |  |  |
| QTS-1008310 |  | Zone 3 / Mechanical Yard // Terminate Electrical Wire at UPS Pod C13 | 2d | 2026-07-17 A | 2026-07-18 A | QTS-1008280 | 100% |  |  |  |  | QTS-PHX3 DC1 - 6 day w/ Holidays | Construction | Electrical | IGMP | Phase 2 | Construction | Gen Yard | Level 1 | SWD | Electrical | BAB |  |  |  |  |  |  |
| QTS-1008110 |  | Zone 3 / Mechanical Yard // Pull Control Wire from Transformers to UPS Pods | 3d | 2026-08-19 | 2026-08-21 | QTS-1008100 SS+2d, QTS-15171 |  |  |  | -89d | 0d | QTS-PHX3 DC1 - 6 day w/ Holidays | Construction | Electrical | IGMP | Phase 2 | Construction | Gen Yard | Level 1 | XFMR | Electrical | BAB |  |  | Manpower | Prime |  |  |
| QTS-1008180 |  | Zone 3 / Mechanical Yard // Terminate Control Wire from Generators to UPS Pods | 5d | 2026-08-19 | 2026-08-24 | QTS-1008100 |  |  |  | -88d | 1d | QTS-PHX3 DC1 - 6 day w/ Holidays | Construction | Electrical | IGMP | Phase 2 | Construction | Gen Yard | Level 1 | GEN | Electrical | BAB |  |  | Manpower | Prime |  |  |
| QTS-1009150 |  | Zone 3 / Mechanical Yard // Pull Wire for Security Devices From DCIM to Generators - network | 7d | 2026-08-19 | 2026-08-26 | QTS-1009140 |  |  |  | -20d | 0d | QTS-PHX3 DC1 - 6 day w/ Holidays | Construction | LV | IGMP | Phase 2 | Construction | Gen Yard | Level 1 | GEN | Low Voltage | BAB |  |  | Manpower | E2 |  |  |
| QTS-1009160 |  | Zone 3 / Mechanical Yard // Install Labels on Generator Tanks | 1d | 2026-08-19 | 2026-08-19 | QTS-1001220 |  |  |  | -15d | 18d | QTS-PHX3 DC1 - 6 day w/ Holidays | Construction | Electrical | IGMP | Phase 2 | Construction | Gen Yard | Level 1 | GEN | Mechanical | BAB |  |  |  |  |  |  |
| QTS-1008190 |  | Zone 3 / Mechanical Yard // Terminate Control Wire from Transformers to UPS Pods | 5d | 2026-08-22 | 2026-08-27 | QTS-1008180 SS+2d, QTS-1008110 |  |  |  | -89d | 0d | QTS-PHX3 DC1 - 6 day w/ Holidays | Construction | Electrical | IGMP | Phase 2 | Construction | Gen Yard | Level 1 | XFMR | Electrical | BAB |  |  | Manpower | Prime |  |  |
| QTS-1009130 |  | Zone 3 / Mechanical Yard // Install Security Devices in Generators | 2d | 2026-08-27 | 2026-08-28 | QTS-1009150 |  |  |  | -20d | 12d | QTS-PHX3 DC1 - 6 day w/ Holidays | Construction | LV | IGMP | Phase 2 | Construction | Gen Yard | Level 1 | GEN | Low Voltage | BAB |  |  |  | Securitas |  |  |
|  | 6 | **Data Hall 2300 TFO** |  | 2026-02-23 | 2026-09-05 |  |  |  |  |  |  |  |  |  |  |  |  |  |  |  |  |  |  |  |  |  |  |  |
|  | 4 | **Fragnet - Data Hall 2300 TFO** |  | 2026-07-22 | 2026-08-03 |  |  |  |  |  |  |  |  |  |  |  |  |  |  |  |  |  |  |  |  |  |  |  |
| QTS - 26571 |  | TFO Scope // DH 2300 / Lineup Fragnet E2 Delays - Linx taking over | 4d | 2026-07-22 A | 2026-08-03 A | QTS - 6290 | 100% | 2026-07-29 | 2026-08-01 |  |  | QTS-PHX3 DC1 - 6 day w/ Holidays |  | LV |  |  |  | DH2300 |  |  | Low Voltage | TFO |  |  |  | Prime | TFO CONST | NICK |
|  | 5 | **Data Hall 2300 TFO - Existing Scope** |  | 2026-02-23 | 2026-09-05 |  |  |  |  |  |  |  |  |  |  |  |  |  |  |  |  |  |  |  |  |  |  |  |
|  | 1 | **2300 - TFO Scope Buildout (3MW) - Lineup A - B** |  | 2026-02-23 | 2026-08-26 |  |  |  |  |  |  |  |  |  |  |  |  |  |  |  |  |  |  |  |  |  |  |  |
| QTS - 6240 |  | TFO Scope // DH 2300 / Lineup A - B / Install HAC Support Steel | 5d | 2026-02-23 A | 2026-02-27 A | QTS - 5630 | 100% |  |  |  |  | QTS-PHX3 DC1 - 6 day w/ Holidays |  | Electrical |  |  |  | DH2300 |  |  |  | TFO |  |  |  |  | TFO CONST | NICK |
| QTS - 6610 |  | TFO Scope // DH 2300 / Lineup A - B / Uncrate QCools with HACs | 1d | 2026-07-01 A | 2026-07-01 A | QTS - 1020, QTS - 8420, QTS - 10210, QTS - 6240, QTS - 7550 | 100% | 2026-07-15 | 2026-07-15 |  |  | QTS-PHX3 DC1 - 6 day w/ Holidays |  | Mechanical |  |  |  | DH2300 |  |  | Mechanical | TFO |  |  |  |  | TFO CONST | NICK |
| QTS - 6290 |  | TFO Scope // DH 2300 / Lineup A - B / Raise HAC, QCool & Trays | 5d | 2026-07-02 A | 2026-07-08 A | QTS - 6610 | 100% | 2026-07-16 | 2026-07-21 |  |  | QTS-PHX3 DC1 - 6 day w/ Holidays |  | Mechanical |  |  |  | DH2300 |  |  | Mechanical | TFO |  |  |  |  | TFO CONST | NICK |
| QTS - 6270 |  | TFO Scope // DH 2300 / Lineup A - B / Install LV Cable Tray Racks | 4d | 2026-07-29 A | 2026-08-04 A | QTS - 1020, QTS - 6610, QTS - 26571 | 100% | 2026-08-06 | 2026-08-10 |  |  | QTS-PHX3 DC1 - 6 day w/ Holidays |  | LV |  |  |  | DH2300 |  |  | Low Voltage | TFO |  |  | 8/4 done | Prime | TFO CONST | NICK |
| QTS - 6310 |  | TFO Scope // DH 2300 / Lineup A - B / Pull LV Wire | 2d | 2026-08-19 | 2026-08-20 | QTS - 6290, QTS - 6270 FF |  |  |  | -48d | 0d | QTS-PHX3 DC1 - 6 day w/ Holidays |  | LV |  |  |  | DH2300 |  |  | Low Voltage | TFO |  |  |  | Prime | TFO CONST | NICK |
| QTS - 6460 |  | TFO Scope // DH 2300 / Lineup A - B / Terminate - BMS & EPMS Connections | 7d | 2026-08-19 | 2026-08-26 | QTS - 6270 |  |  |  | -7d | 52d | QTS-PHX3 DC1 - 6 day w/ Holidays |  | LV |  |  |  | DH2300 |  |  | Low Voltage | TFO |  |  |  | Prime | TFO CONST | NICK |
| QTS - 6330 |  | TFO Scope // DH 2300 / Lineup A - B / Terminate LV | 4d | 2026-08-21 | 2026-08-25 | QTS - 6310 |  |  |  | -38d | 31d | QTS-PHX3 DC1 - 6 day w/ Holidays |  | LV |  |  |  | DH2300 |  |  | Low Voltage | TFO |  |  |  | Prime | TFO CONST | NICK |

| ID | WBS | Activity | Duration | Start | Finish | Predecessors | Complete | Planned start | Planned finish | Total float | Free float | Calendar | Layton Discipline | Location | TFO-CONST ONLY | Contract | NICK | Layton Super | Trade Partner | Project Section | Baseline | Phase-1-1 | Project Section-1 | Level | Layton PM |
| --- | --- | --- | --- | --- | --- | --- | --- | --- | --- | --- | --- | --- | --- | --- | --- | --- | --- | --- | --- | --- | --- | --- | --- | --- | --- |
|  | 3 | **2300 - TFO Scope Buildout (3MW) - Lineup C - D** |  | 2026-03-02 | 2026-09-03 |  |  |  |  |  |  |  |  |  |  |  |  |  |  |  |  |  |  |  |  |
| QTS - 6700 |  | TFO Scope // DH 2300 / Lineup C - D / Install HAC Support Steel | 5d | 2026-03-02 A | 2026-03-06 A | QTS - 6240 | 100% |  |  |  |  | QTS-PHX3 DC1 - 6 day w/ Holidays | Electrical | DH2300 | TFO CONST | TFO | NICK |  |  |  |  |  |  |  |  |
| QTS - 6870 |  | TFO Scope // DH 2300 / Lineup C - D / Uncrate QCools with HACs | 1d | 2026-07-01 A | 2026-07-01 A | QTS - 1020, QTS - 10210, QTS - 6700, QTS - 7550, QTS - 6610 SS+5d | 100% | 2026-07-21 | 2026-07-21 |  |  | QTS-PHX3 DC1 - 6 day w/ Holidays | Mechanical | DH2300 | TFO CONST | TFO | NICK | Mechanical |  |  |  |  |  |  |  |
| QTS - 6750 |  | TFO Scope // DH 2300 / Lineup C - D / Raise HAC, QCool & Trays | 6d | 2026-07-02 A | 2026-07-08 A | QTS - 6870 | 100% | 2026-07-22 | 2026-07-28 |  |  | QTS-PHX3 DC1 - 6 day w/ Holidays | Build Out | DH2300 | TFO CONST | TFO | NICK | Mechanical |  |  |  |  |  |  |  |
| QTS - 6840 |  | TFO Scope // DH 2300 / Lineup C - D / Terminate - BMS & EPMS Connections | 7d | 2026-08-19 | 2026-08-26 | QTS - 6270 |  |  |  | -7d | 52d | QTS-PHX3 DC1 - 6 day w/ Holidays | LV | DH2300 | TFO CONST | TFO | NICK | Low Voltage | Prime |  |  |  |  |  |  |
| QTS - 6770 |  | TFO Scope // DH 2300 / Lineup C - D / Pull LV Wire | 2d | 2026-08-21 | 2026-08-22 | QTS - 6750, QTS - 6310 |  |  |  | -48d | 0d | QTS-PHX3 DC1 - 6 day w/ Holidays | LV | DH2300 | TFO CONST | TFO | NICK | Low Voltage | Prime |  |  |  |  |  |  |
| QTS - 6790 |  | TFO Scope // DH 2300 / Lineup C - D / Terminate LV | 10d | 2026-08-24 | 2026-09-03 | QTS - 6770 |  |  |  | -46d | 23d | QTS-PHX3 DC1 - 6 day w/ Holidays | LV | DH2300 | TFO CONST | TFO | NICK | Low Voltage | Prime |  |  |  |  |  |  |
|  | 2 | **2300 - TFO Scope Buildout (3MW) - Lineup E - F** |  | 2026-04-08 | 2026-09-05 |  |  |  |  |  |  |  |  |  |  |  |  |  |  |  |  |  |  |  |  |
| QTS - 6930 |  | TFO Scope // DH 2300 / Lineup E - F / Install HAC Support Steel | 5d | 2026-04-08 A | 2026-04-13 A | QTS - 6700 | 100% |  |  |  |  | QTS-PHX3 DC1 - 6 day w/ Holidays | Electrical | DH2300 | TFO CONST | TFO | NICK |  |  |  |  |  |  |  |  |
| QTS - 7100 |  | TFO Scope // DH 2300 / Lineup E - F / Uncrate QCools with HACs | 1d | 2026-07-01 A | 2026-07-01 A | QTS - 1020, QTS - 10210, QTS - 6930, QTS - 7550, QTS - 6870 SS+5d | 100% | 2026-07-27 | 2026-07-27 |  |  | QTS-PHX3 DC1 - 6 day w/ Holidays | Mechanical | DH2300 | TFO CONST | TFO | NICK | Mechanical |  |  |  |  |  |  |  |
| QTS - 6980 |  | TFO Scope // DH 2300 / Lineup E - F / Raise HAC, QCool & Trays | 6d | 2026-07-02 A | 2026-07-08 A | QTS - 7100 | 100% | 2026-07-28 | 2026-08-03 |  |  | QTS-PHX3 DC1 - 6 day w/ Holidays | Build Out | DH2300 | TFO CONST | TFO | NICK | Mechanical |  |  |  |  |  |  |  |
| QTS - 7070 |  | TFO Scope // DH 2300 / Lineup E - F / Terminate - BMS & EPMS Connections | 5d | 2026-08-19 | 2026-08-24 | QTS - 6270 |  |  |  | -5d | 54d | QTS-PHX3 DC1 - 6 day w/ Holidays | LV | DH2300 | TFO CONST | TFO | NICK | Low Voltage | Prime |  |  |  |  |  |  |
| QTS - 7000 |  | TFO Scope // DH 2300 / Lineup E - F / Pull LV Wire | 2d | 2026-08-24 | 2026-08-25 | QTS - 6980, QTS - 6770 |  |  |  | -48d | 0d | QTS-PHX3 DC1 - 6 day w/ Holidays | LV | DH2300 | TFO CONST | TFO | NICK | Low Voltage | Prime |  |  |  |  |  |  |
| QTS - 7020 |  | TFO Scope // DH 2300 / Lineup E - F / Terminate LV | 10d | 2026-08-26 | 2026-09-05 | QTS - 7000 |  |  |  | -48d | 21d | QTS-PHX3 DC1 - 6 day w/ Holidays | LV | DH2300 | TFO CONST | TFO | NICK | Low Voltage | Prime |  |  |  |  |  |  |
|  | 10 | **Gallery 2301 Mechanical TFO** |  | 2026-07-15 | 2026-07-17 |  |  |  |  |  |  |  |  |  |  |  |  |  |  |  |  |  |  |  |  |
|  | 9 | **TFO 2301 - CDU Mechanical Gallery** |  | 2026-07-15 | 2026-07-17 |  |  |  |  |  |  |  |  |  |  |  |  |  |  |  |  |  |  |  |  |
| QTS - 6370 |  | TFO Scope // DH 2300 - 2301 Mechanical Gallery / OFCI - L2 SET IN PLACE - CDU - 9 units | 3d | 2026-07-15 A | 2026-07-17 A | QTS - 26131 | 100% |  |  |  |  | QTS-PHX3 DC1 - 6 day w/ Holidays | Mechanical | DH2300 | TFO CONST | TFO | NICK | Mechanical |  |  |  |  |  |  |  |
|  | 11 | **Gallery 2303 Mechanical TFO** |  | 2026-07-15 | 2026-07-17 |  |  |  |  |  |  |  |  |  |  |  |  |  |  |  |  |  |  |  |  |
|  | 10 | **TFO 2303 - CDU Mechanical Gallery** |  | 2026-07-15 | 2026-07-17 |  |  |  |  |  |  |  |  |  |  |  |  |  |  |  |  |  |  |  |  |
| QTS - 7160 |  | TFO Scope // DH 2300 - 2303 Mechanical Gallery / OFCI - L2 SET IN PLACE - CDU - 9 units | 3d | 2026-07-15 A | 2026-07-17 A | QTS - 26131 | 100% |  |  |  |  | QTS-PHX3 DC1 - 6 day w/ Holidays | Mechanical | DH2300 | TFO CONST | TFO | NICK | Mechanical |  |  |  |  |  |  |  |
|  | 22 | **DH 2300 Close Out** |  | 2026-10-02 | 2026-11-05 |  |  |  |  |  |  |  |  |  |  |  |  |  |  |  |  |  |  |  |  |
| QTS-1471 |  | DH 2300 / Closeout // LCC Worklist | 15d | 2026-10-02 | 2026-10-22 | QTS-13421, QTS-2031, QTS-22201, QTS-102720, QTS-1003780, QTS-102730, QTS-102470, QTS-13411, QTS-13421 FF, QTS-13071, QTS-1003600, QTS-1003640, QTS-1008970, QTS-13861, QTS-13851, QTS-5330 |  |  |  | -67d | 0d |  | Closeout |  |  | BAB |  | Jake Shimmin | Layton | Close Out | IGMP | Phase 3 | Close Out | Level 2 | TTodaro |
| QTS-3331 |  | DH 2300 / Closeout // Final Clean | 5d | 2026-10-16 | 2026-10-22 | QTS-1471 FF, QTS-1471 SS, QTS-4340, QTS-5280, QTS-4950, QTS-5620, QTS-4610 |  |  |  | -67d | 0d |  | Closeout |  |  | BAB |  | Jake Shimmin | Layton | Close Out | IGMP | Phase 3 | Close Out | Level 2 | TTodaro |
| QTS-4481 |  | DH 2300 / Closeout // A/E Punch List | 10d | 2026-10-23 | 2026-11-05 | QTS-3331 |  |  |  | -67d | 0d |  | Closeout |  |  | BAB |  |  | Layton | Close Out | IGMP | Phase 3 | Close Out | Level 2 | TTodaro |

| ID | WBS | Activity | Duration | Start | Finish | Predecessors | Total float | Free float | Calendar | Layton Discipline | Layton Super | Contract | Trade Partner | No PreUp | Project Section | Baseline | Phase-1-1 | Project Section-1 | Location | Level | TFO-CONST ONLY | NICK |
| --- | --- | --- | --- | --- | --- | --- | --- | --- | --- | --- | --- | --- | --- | --- | --- | --- | --- | --- | --- | --- | --- | --- |
|  | 12 | **Data Hall 2300 Commissioning** |  | 2026-08-20 | 2026-11-10 |  |  |  |  |  |  |  |  |  |  |  |  |  |  |  |  |  |
|  | 6 | **2300 Path to Power (FTE)** |  | 2026-08-20 | 2026-11-10 |  |  |  |  |  |  |  |  |  |  |  |  |  |  |  |  |  |
| QTS-1014470 |  | DH 2300 / L2 Checklist SCPs | 1d | 2026-08-20 | 2026-08-20 | QTS-4490 | -31d | 0d | **GLOBAL - 5 Day Workweek w/ Basic Holidays | Commissioning | Commissioning | BAB | REI/Layton | NO |  |  |  |  |  |  |  |  |
| QTS-1014460 |  | DH 2300 / Pre Energization Inspection SCPs | 1d | 2026-08-21 | 2026-08-21 | QTS-1014470 | -31d | 0d | **GLOBAL - 5 Day Workweek w/ Basic Holidays | Commissioning | Commissioning | BAB | REI/Layton | NO |  |  |  |  |  |  |  |  |
| QTS-1014480 |  | DH 2300 / First Time Energization SCPs | 1d | 2026-08-24 | 2026-08-24 | QTS-1014460 | -31d | 27d | **GLOBAL - 5 Day Workweek w/ Basic Holidays | Commissioning | Commissioning | BAB | REI/Layton | NO |  |  |  |  |  |  |  |  |
| QTS-50281 |  | DH 2300 / Pre Energization Inspection DOAS | 1d | 2026-08-24 | 2026-08-24 | QTS-101410, QTS-50271, QTS-1008630, QTS-1008640 | -70d | 12d | QTS-PHX3 DC1 - 6 day w/ Holidays | Commissioning | Commissioning | BAB | REI/Layton | NO | Construction | DC | Phase 1 | Construction | FOH | Roof |  |  |
| QTS-6660 |  | DH 2300 / L2 Checklist MV-XFMR | 1d | 2026-08-28 | 2026-08-28 | QTS-4350, QTS-7300, QTS-4480, QTS-4750, QTS-4760, QTS-1008070, QTS-1008190, QTS-42871, QTS-42531, QTS-1008120, QTS-1008260, QTS-1008320, QTS-1008200 | -75d | 0d | **GLOBAL - 5 Day Workweek w/ Basic Holidays | Commissioning | Commissioning | BAB | REI/Layton | NO |  |  |  |  |  |  |  |  |
| QTS-6690 |  | DH 2300 / L2 Checklist SWD-BUS | 1d | 2026-08-28 | 2026-08-28 | QTS-6660 SS, QTS-1008190, QTS-1008180, QTS-1008090, QTS-1008490, QTS-1008140, QTS-1008220, QTS-1008280, QTS-1008340, QTS-1008400 | -75d | 0d | **GLOBAL - 5 Day Workweek w/ Basic Holidays | Commissioning | Commissioning | BAB | REI/Layton | NO |  |  |  |  |  |  |  |  |
| QTS-6670 |  | DH 2300 / Pre Energization Inspection MV-XFMR | 1d | 2026-08-31 | 2026-08-31 | QTS-6660 | -63d | 0d | **GLOBAL - 5 Day Workweek w/ Basic Holidays | Commissioning | Commissioning | BAB | REI/Layton | NO |  |  |  |  |  |  |  |  |
| QTS-6700 |  | DH 2300 / Pre Energization Inspection SWD-BUS | 1d | 2026-08-31 | 2026-08-31 | QTS-6690 | -63d | 0d | **GLOBAL - 5 Day Workweek w/ Basic Holidays | Commissioning | Commissioning | BAB | REI/Layton | NO |  |  |  |  |  |  |  |  |
| QTS-6720 |  | DH 2300 / L2 Checklist MOD-01 | 1d | 2026-08-31 | 2026-08-31 | QTS-6660, QTS-6690 | -75d | 0d | **GLOBAL - 5 Day Workweek w/ Basic Holidays | Commissioning | Commissioning | BAB | REI/Layton | NO |  |  |  |  |  |  |  |  |
| QTS-6650 |  | DH 2300 / DCIM L3 Network Live (QTS Install) | 3d | 2026-09-01 | 2026-09-03 | QTS-4510, QTS-4890, QTS-5500, QTS-7310 | -62d | 5d | **GLOBAL - 5 Day Workweek w/ Basic Holidays | Commissioning | Low Voltage | BAB | E2/QTS |  |  |  |  |  |  |  |  |  |
| QTS-6680 |  | DH 2300 / First Time Energization MV-XFMR | 1d | 2026-09-01 | 2026-09-01 | QTS-6670, QTS-1004770 | -63d | 0d | **GLOBAL - 5 Day Workweek w/ Basic Holidays | Commissioning | Mechanical | BAB | REI/Layton |  |  |  |  |  |  |  |  |  |
| QTS-6710 |  | DH 2300 / First Time Energization SWD-BUS | 1d | 2026-09-01 | 2026-09-01 | QTS-6700, QTS-6680 SS, QTS-2061, QTS-6680 FF | -63d | 0d | **GLOBAL - 5 Day Workweek w/ Basic Holidays | Commissioning | Electrical | BAB | REI/Layton | NO |  |  |  |  |  |  |  |  |
| QTS-6730 |  | DH 2300 / Pre Energization Inspection MOD-01 | 1d | 2026-09-01 | 2026-09-01 | QTS-6720 | -63d | 0d | **GLOBAL - 5 Day Workweek w/ Basic Holidays | Commissioning | Commissioning | BAB | REI/Layton | NO |  |  |  |  |  |  |  |  |
| QTS-6750 |  | DH 2300 / L2 Checklist POD / AHU | 1d | 2026-09-01 | 2026-09-01 | QTS-6720 | -75d | 0d | **GLOBAL - 5 Day Workweek w/ Basic Holidays | Commissioning | Commissioning | BAB | REI/Layton | NO |  |  |  |  |  |  |  |  |
| QTS-6740 |  | DH 2300 / First Time Energization MOD-01 | 1d | 2026-09-02 | 2026-09-02 | QTS-6730, QTS-6710 | -63d | 1d | **GLOBAL - 5 Day Workweek w/ Basic Holidays | Commissioning | Electrical | BAB | REI/Layton | NO |  |  |  |  |  |  |  |  |
| QTS-6760 |  | DH 2300 / Pre Energization Inspection POD / AHU | 1d | 2026-09-02 | 2026-09-02 | QTS-6750 | -42d | 0d | **GLOBAL - 5 Day Workweek w/ Basic Holidays | Commissioning | Commissioning | BAB | REI/Layton | NO |  |  |  |  |  |  |  |  |
| QTS-6780 |  | DH 2300 / L2 Checklist UPS-M | 1d | 2026-09-02 | 2026-09-02 | QTS-6720, QTS-6750 | -75d | 0d | **GLOBAL - 5 Day Workweek w/ Basic Holidays | Commissioning | Commissioning | BAB | REI/Layton | NO |  |  |  |  |  |  |  |  |
| QTS-6770 |  | DH 2300 / First Time Energization POD / AHU | 1d | 2026-09-03 | 2026-09-03 | QTS-6760, QTS-6740 SS, QTS-6740 FF | -42d | 5d | **GLOBAL - 5 Day Workweek w/ Basic Holidays | Commissioning | Electrical | BAB | REI/Layton | NO |  |  |  |  |  |  |  |  |
| QTS-6790 |  | DH 2300 / Pre Energization Inspection UPS-M | 1d | 2026-09-03 | 2026-09-03 | QTS-6780, QTS-6740 FF | -64d | 0d | **GLOBAL - 5 Day Workweek w/ Basic Holidays | Commissioning | Commissioning | BAB | REI/Layton | NO |  |  |  |  |  |  |  |  |
| QTS-6810 |  | DH 2300 / L2 Checklist CHWP | 1d | 2026-09-03 | 2026-09-03 | QTS-6780, QTS-4480, QTS-1008690 | -75d | 0d | **GLOBAL - 5 Day Workweek w/ Basic Holidays | Commissioning | Commissioning | BAB | REI/Layton | NO |  |  |  |  |  |  |  |  |
| QTS-6800 |  | DH 2300 / First Time Energization UPS-M | 1d | 2026-09-04 | 2026-09-04 | QTS-6790, QTS-6740 SS | -64d | 0d | **GLOBAL - 5 Day Workweek w/ Basic Holidays | Commissioning | Electrical | BAB | REI/Layton | NO |  |  |  |  |  |  |  |  |
| QTS-6820 |  | DH 2300 / Pre Energization Inspection CHWP | 1d | 2026-09-04 | 2026-09-04 | QTS-6810 | -64d | 0d | **GLOBAL - 5 Day Workweek w/ Basic Holidays | Commissioning | Commissioning | BAB | REI/Layton | NO |  |  |  |  |  |  |  |  |
| QTS-6840 |  | DH 2300 / L2 Checklist MOD-02 | 1d | 2026-09-04 | 2026-09-04 | QTS-6780, QTS-6810, QTS-4750 | -75d | 0d | **GLOBAL - 5 Day Workweek w/ Basic Holidays | Commissioning | Commissioning | BAB | REI/Layton | NO |  |  |  |  |  |  |  |  |
| QTS-6870 |  | DH 2300 / L2 Checklist MOD-03 | 1d | 2026-09-04 | 2026-09-04 | QTS-6780, QTS-6810, QTS-4750 | -48d | 0d | **GLOBAL - 5 Day Workweek w/ Basic Holidays | Commissioning | Commissioning | BAB | REI/Layton | NO |  |  |  |  |  |  |  |  |
| QTS-6830 |  | DH 2300 / First Time Energization CHWP | 1d | 2026-09-08 | 2026-09-08 | QTS-6820, QTS-6800 | -64d | 3d | **GLOBAL - 5 Day Workweek w/ Basic Holidays | Commissioning | Electrical | BAB | REI/Layton | NO |  |  |  |  |  |  |  |  |
| QTS-6850 |  | DH 2300 / Pre Energization Inspection MOD-02 | 1d | 2026-09-08 | 2026-09-08 | QTS-6840 | -26d | 0d | **GLOBAL - 5 Day Workweek w/ Basic Holidays | Commissioning | Commissioning | BAB | REI/Layton | NO |  |  |  |  |  |  |  |  |
| QTS-6880 |  | DH 2300 / Pre Energization Inspection MOD-03 | 1d | 2026-09-08 | 2026-09-08 | QTS-6870 | -48d | 0d | **GLOBAL - 5 Day Workweek w/ Basic Holidays | Commissioning | Commissioning | BAB | REI/Layton | NO |  |  |  |  |  |  |  |  |
| QTS-6900 |  | DH 2300 / L2 Checklist CRAHs | 1d | 2026-09-08 | 2026-09-08 | QTS-6840, QTS-4760, QTS-5540, QTS-4830, QTS-4680, QTS-5390, QTS-4700 | -75d | 0d | **GLOBAL - 5 Day Workweek w/ Basic Holidays | Commissioning | Commissioning | BAB | REI/Layton | NO |  |  |  |  |  |  |  |  |
| QTS-6960 |  | DH 2300 / L2 Checklist CDU | 1d | 2026-09-08 | 2026-09-08 | QTS-6870, QTS-4770, QTS-5550 | -48d | 0d | **GLOBAL - 5 Day Workweek w/ Basic Holidays | Commissioning | Commissioning | BAB | REI/Layton | NO |  |  |  |  |  |  |  |  |
| QTS-1014250 |  | DH 2300 / L2 Checklist GEN | 1d | 2026-09-09 | 2026-09-09 | QTS-6930 SS, QTS-1000310, QTS-1001220, QTS-1008080, QTS-1008130, QTS-1008270, QTS-1008330, QTS-1008390, QTS-1008450, QTS-1008050 | -26d | 0d | **GLOBAL - 5 Day Workweek w/ Basic Holidays | Commissioning | Commissioning | BAB | REI/Layton | NO |  |  |  |  |  |  |  |  |
| QTS-6860 |  | DH 2300 / First Time Energization MOD-02 | 1d | 2026-09-09 | 2026-09-09 | QTS-6850 | -26d | 0d | **GLOBAL - 5 Day Workweek w/ Basic Holidays | Commissioning | Electrical | BAB | REI/Layton | NO |  |  |  |  |  |  |  |  |
| QTS-6890 |  | DH 2300 / First Time Energization MOD-03 | 1d | 2026-09-09 | 2026-09-09 | QTS-6880 | -48d | 0d | **GLOBAL - 5 Day Workweek w/ Basic Holidays | Commissioning | Electrical | BAB | REI/Layton | NO |  |  |  |  |  |  |  |  |
| QTS-6910 |  | DH 2300 / Pre Energization Inspection CRAHs | 1d | 2026-09-09 | 2026-09-09 | QTS-6900 | -11d | 0d | **GLOBAL - 5 Day Workweek w/ Basic Holidays | Commissioning | Commissioning | BAB | REI/Layton | NO |  |  |  |  |  |  |  |  |
| QTS-6930 |  | DH 2300 / L2 Checklist CHLR | 1d | 2026-09-09 | 2026-09-09 | QTS-6690, QTS-6900, QTS-4480, QTS-1008680, QTS-1008690 | -75d | 0d | **GLOBAL - 5 Day Workweek w/ Basic Holidays | Commissioning | Commissioning | BAB | REI/Layton | NO |  |  |  |  |  |  |  |  |
| QTS-6970 |  | DH 2300 / Pre Energization Inspection CDU | 1d | 2026-09-09 | 2026-09-09 | QTS-6960 | -48d | 0d | **GLOBAL - 5 Day Workweek w/ Basic Holidays | Commissioning | Commissioning | BAB | REI/Layton | NO |  |  |  |  |  |  |  |  |
| QTS-1014260 |  | DH 2300 / Pre Energization Inspection GEN | 1d | 2026-09-10 | 2026-09-10 | QTS-1014250 | -26d | 0d | **GLOBAL - 5 Day Workweek w/ Basic Holidays | Commissioning | Commissioning | BAB | REI/Layton |  |  |  |  |  |  |  |  |  |
| QTS-6920 |  | DH 2300 / First Time Energization CRAHs | 1d | 2026-09-10 | 2026-09-10 | QTS-6910, QTS-6860 | -11d | 0d | **GLOBAL - 5 Day Workweek w/ Basic Holidays | Commissioning | Electrical | BAB | REI/Layton | NO |  |  |  |  |  |  |  |  |
| QTS-6940 |  | DH 2300 / Pre Energization Inspection CHLR | 1d | 2026-09-10 | 2026-09-10 | QTS-6930 | -67d | 0d | **GLOBAL - 5 Day Workweek w/ Basic Holidays | Commissioning | Commissioning | BAB | REI/Layton |  |  |  |  |  |  |  |  |  |
| QTS-6980 |  | DH 2300 / First Time Energization CDU | 1d | 2026-09-10 | 2026-09-10 | QTS-6970, QTS-6890 | -48d | 0d | **GLOBAL - 5 Day Workweek w/ Basic Holidays | Commissioning | Electrical | BAB | REI/Layton | NO |  |  |  |  |  |  |  |  |
| QTS-7090 |  | DH 2300 / L2 Checklist BSWY | 1d | 2026-09-10 | 2026-09-10 | QTS-6930, QTS-4470, QTS-7310, QTS-7300 | -75d | 0d | **GLOBAL - 5 Day Workweek w/ Basic Holidays | Commissioning | Commissioning | BAB | REI/Layton | NO |  |  |  |  |  |  |  |  |
| QTS-7140 |  | DH 2300 / First Time Energization DOAS | 1d | 2026-09-10 | 2026-09-10 | QTS-6860, QTS-50281 | -11d | 0d | **GLOBAL - 5 Day Workweek w/ Basic Holidays | Commissioning | Electrical | BAB | REI/Layton | NO |  |  |  |  |  |  |  |  |
| QTS-1013570 |  | DH 2300 / Startup CRAHs | 5d | 2026-09-11 | 2026-09-17 | QTS-6920, QTS-7140 | -11d | 0d | **GLOBAL - 5 Day Workweek w/ Basic Holidays | Commissioning | Mechanical | BAB | QTS Vendor |  |  |  |  |  |  |  |  |  |
| QTS-1013590 |  | TFO Scope / DH 2300 / Startup CDU | 5d | 2026-09-11 | 2026-09-17 | QTS-6980 | -48d | 1d | **GLOBAL - 5 Day Workweek w/ Basic Holidays | Commissioning | Electrical | TFO | QTS Vendor |  |  |  |  |  |  |  | TFO CONST |  |
| QTS-1014270 |  | DH 2300 / First Time Energization GEN | 1d | 2026-09-11 | 2026-09-11 | QTS-1014260 | -26d | 0d | **GLOBAL - 5 Day Workweek w/ Basic Holidays | Commissioning | Commissioning | BAB | REI/Layton | NO |  |  |  |  |  |  |  |  |
| QTS-6950 |  | DH 2300 / First Time Energization CHLR | 1d | 2026-09-11 | 2026-09-11 | QTS-6940 | -67d | 0d | **GLOBAL - 5 Day Workweek w/ Basic Holidays | Commissioning | Electrical | BAB | REI/Layton | NO |  |  |  |  |  |  |  |  |
| QTS-6990 |  | DH 2300 / L2 Checklist ATS/COD (1, 3, 5) | 1d | 2026-09-11 | 2026-09-11 | QTS-4470, QTS-7090 | -75d | 0d | **GLOBAL - 5 Day Workweek w/ Basic Holidays | Commissioning | Commissioning | BAB | REI/Layton | NO |  |  |  |  |  |  |  |  |
| QTS-7060 |  | DH 2300 / L2 Checklist ATS/COD (2, 4, 6) | 1d | 2026-09-11 | 2026-09-11 | QTS-4470, QTS-7090 | -75d | 0d | **GLOBAL - 5 Day Workweek w/ Basic Holidays | Commissioning | Commissioning | BAB | REI/Layton | NO |  |  |  |  |  |  |  |  |
| QTS-7100 |  | DH 2300 / Pre Energization Inspection BSWY | 1d | 2026-09-11 | 2026-09-11 | QTS-7090 | -47d | 0d | **GLOBAL - 5 Day Workweek w/ Basic Holidays | Commissioning | Commissioning | BAB | REI/Layton |  |  |  |  |  |  |  |  |  |
| QTS-1013580 |  | DH 2300 / Startup CHLR | 3d | 2026-09-14 | 2026-09-16 | QTS-6950 | -60d | 1d | **GLOBAL - 5 Day Workweek w/ Basic Holidays | Commissioning | Mechanical | BAB | QTS Vendor |  |  |  |  |  |  |  |  |  |
| QTS-1014190 |  | DH 2300 / GEN Fire Marshall Inspection | 1d | 2026-09-14 | 2026-09-14 | QTS-1009130, QTS-1014270 | -26d | 0d | **GLOBAL - 5 Day Workweek w/ Basic Holidays | Commissioning | Commissioning | BAB | REI/Layton |  |  |  |  |  |  |  |  |  |
| QTS-7040 |  | DH 2300 / Pre Energization Inspection ATS/COD (1, 3, 5) | 1d | 2026-09-14 | 2026-09-14 | QTS-6990 | -48d | 0d | **GLOBAL - 5 Day Workweek w/ Basic Holidays | Commissioning | Commissioning | BAB | REI/Layton |  |  |  |  |  |  |  |  |  |
| QTS-7070 |  | DH 2300 / Pre Energization Inspection ATS/COD (2, 4, 6) | 1d | 2026-09-14 | 2026-09-14 | QTS-7060 | -48d | 0d | **GLOBAL - 5 Day Workweek w/ Basic Holidays | Commissioning | Commissioning | BAB | REI/Layton |  |  |  |  |  |  |  |  |  |
| QTS-7110 |  | DH 2300 / First Time Energization BSWY | 1d | 2026-09-14 | 2026-09-14 | QTS-7100, QTS-6770 | -47d | 7d | **GLOBAL - 5 Day Workweek w/ Basic Holidays | Commissioning | Electrical | BAB | REI/Layton | NO |  |  |  |  |  |  |  |  |
| QTS-7340 |  | DH 2300 / L3 Contorls Point to Point | 10d | 2026-09-14 | 2026-09-25 | QTS-6650, QTS-6830, QTS-6950, QTS-17201 | -67d | 0d | **GLOBAL - 5 Day Workweek w/ Basic Holidays | Commissioning | Mechanical | BAB | Prime |  |  |  |  |  |  |  |  |  |
| QTS-7050 |  | DH 2300 / First Time Energization ATS/COD (1, 3, 5) | 1d | 2026-09-15 | 2026-09-15 | QTS-7040 | -48d | 6d | **GLOBAL - 5 Day Workweek w/ Basic Holidays | Commissioning | Electrical | BAB | REI/Layton | NO |  |  |  |  |  |  |  |  |
| QTS-7080 |  | DH 2300 / First Time Energization ATS/COD (2, 4, 6) | 1d | 2026-09-15 | 2026-09-15 | QTS-7070 | -48d | 6d | **GLOBAL - 5 Day Workweek w/ Basic Holidays | Commissioning | Electrical | BAB | REI/Layton | NO |  |  |  |  |  |  |  |  |
| QTS-1014200 |  | DH 2300 / GEN Fueling | 3d | 2026-09-16 | 2026-09-18 | QTS-1014190 FS+1d | -26d | 0d | **GLOBAL - 5 Day Workweek w/ Basic Holidays | Commissioning | Commissioning | BAB | REI/Layton |  |  |  |  |  |  |  |  |  |
| QTS-1014210 |  | DH 2300 / GEN Burns | 4d | 2026-09-21 | 2026-09-24 | QTS-1014200 | -26d | 23d | **GLOBAL - 5 Day Workweek w/ Basic Holidays | Commissioning | Commissioning | BAB | REI/Layton | NO |  |  |  |  |  |  |  |  |
| QTS-7150 |  | DH 2300 / L2 Checklist RPP | 1d | 2026-09-21 | 2026-09-21 | QTS-6990, QTS-7060, QTS-4540, QTS-4550, QTS-5120 | -80d | 0d | **GLOBAL - 5 Day Workweek w/ Basic Holidays | Commissioning | Commissioning | BAB | REI/Layton | NO |  |  |  |  |  |  |  |  |
| QTS-7280 |  | DH 2300 / Pre Energization Inspection RPP | 1d | 2026-09-22 | 2026-09-22 | QTS-7150 | -80d | 0d | **GLOBAL - 5 Day Workweek w/ Basic Holidays | Commissioning | Commissioning | BAB | REI/Layton |  |  |  |  |  |  |  |  |  |
| QTS-7290 |  | DH 2300 / First Time Energization RPP | 1d | 2026-09-23 | 2026-09-23 | QTS-7280 | -80d | 0d | **GLOBAL - 5 Day Workweek w/ Basic Holidays | Commissioning | Electrical | BAB | REI/Layton |  |  |  |  |  |  |  |  |  |
| QTS-5320 |  | DH 2300 / Water Test and Balance | 5d | 2026-09-24 | 2026-09-29 | QTS-5200, QTS-7340 SS+5d, QTS-101570 | -67d | 2d | **GLOBAL - 6 Day Workweek w/ Basic Holidays | Commissioning | Mechanical | BAB | Able |  |  |  |  |  |  |  |  |  |
| QTS-5330 |  | DH 2300 / Air Test and Balance | 5d | 2026-09-26 | 2026-10-01 | QTS-5210, QTS-5200, QTS-7340, QTS-1013580 | -80d | 0d | **GLOBAL - 6 Day Workweek w/ Basic Holidays | Commissioning | Mechanical | BAB | Able |  |  |  |  |  |  |  |  |  |
| QTS-5340 |  | DH 2300 / L4 Electrical | 18d | 2026-10-02 | 2026-10-22 | QTS-5320, QTS-5330, QTS - 6330, QTS - 7020, QTS - 6790, QTS-1008080, QTS-1009190, QTS-1014480 | -69d | 0d | **GLOBAL - 6 Day Workweek w/ Basic Holidays | Commissioning | Electrical | BAB | ERS |  |  |  |  |  |  |  |  |  |
| QTS-5350 |  | DH 2300 / L4 Mechanical | 18d | 2026-10-02 | 2026-10-22 | QTS-5300, QTS-5320, QTS-5330 | -69d | 0d | **GLOBAL - 6 Day Workweek w/ Basic Holidays | Commissioning | Mechanical | BAB | ERS |  |  |  |  |  |  |  |  |  |
| QTS-5360 |  | DH 2300 / Air Cooled RVT/ IST | 2d | 2026-10-23 | 2026-10-24 | QTS-5340, QTS-5350 | -81d | 1d | **GLOBAL - 7 Day Workweek w/ Basic Holidays | Commissioning | Mechanical | BAB | ERS |  |  |  |  |  |  |  |  |  |
| QTS-5370 |  | DH 2300 / L4 TFO Liquid Cooled | 12d | 2026-10-28 | 2026-11-10 | QTS-5070, QTS-5360, QTS-4690, QTS-5230, QTS - 6460, QTS - 6840, QTS - 7070, QTS-4800, QTS-5440, QTS - 25911, QTS-4570, QTS-5310, QTS-1014210 | -59d | 0d | **GLOBAL - 6 Day Workweek w/ Basic Holidays | Commissioning | Mechanical | TFO | ERS |  |  |  |  |  |  |  | TFO CONST | NICK |

| ID | WBS | Activity | Duration | Start | Finish | Predecessors | Complete | Planned start | Planned finish | Vendor Responsible Party | Allucent CSI Group | Layton Discipline | CX Level | Equipment | Fragnet | Owner Impact Analysis | Fragnet Responsible Party | Contract | Delay Notice 07-26 |
| --- | --- | --- | --- | --- | --- | --- | --- | --- | --- | --- | --- | --- | --- | --- | --- | --- | --- | --- | --- |
|  | 6 | **Closeout** |  | 2025-12-09 | 2026-10-27 |  |  |  |  |  |  |  |  |  |  |  |  |  |  |
|  | 4 | **Closeout** |  |  |  |  |  |  |  |  |  |  |  |  |  |  |  |  |  |
|  | 1 | **FOH / BOH / Corridors / Common Areas** |  |  |  |  |  |  |  |  |  |  |  |  |  |  |  |  |  |
|  | 1 | **Commissioning** |  | 2025-12-09 | 2026-10-27 |  |  |  |  |  |  |  |  |  |  |  |  |  |  |
|  | 1 | **Fragnet - Commissioning** |  | 2026-01-10 | 2026-08-05 |  |  |  |  |  |  |  |  |  |  |  |  |  |  |
| DC1-COMM-1020 |  | Fragnet - Arc Flash Labels Not Outlined & Ready for Installation | 2d | 2026-01-10 A | 2026-08-05 A | QTS-1000510 | 100% | 2026-06-24 | 2026-06-25 | YCY | 01ADMIN | Commissioning | L2 | GEN | Fragnet | Y | Quality Technology Services | BAB | Delay 07-26 |
|  | 01 | **DC1-House Cx** |  | 2025-12-09 | 2026-10-27 |  |  |  |  |  |  |  |  |  |  |  |  |  |  |
|  | 02 | **DC1-House Cx L2 Commissioning** |  | 2025-12-09 | 2026-08-21 |  |  |  |  |  |  |  |  |  |  |  |  |  |  |
|  | 01 | **DC1-Front of House (FOH) Cx L2** |  | 2025-12-10 | 2026-08-19 |  |  |  |  |  |  |  |  |  |  |  |  |  |  |
|  | 01 | **DC1-FOH-GEN-HSE-1 Cx L2** |  | 2026-06-29 | 2026-07-24 |  |  |  |  |  |  |  |  |  |  |  |  |  |  |
| DC1-GEN-HSE-L2-1000 |  | GEN-HSE-1 L2 Checklist | 2d | 2026-06-29 A | 2026-07-24 A | QTS-41651, QTS-1004480 FF+1d, QTS-1012280, DC1-COMM-1020 SS, QTS-1014040 | 100% | 2026-06-24 | 2026-06-25 | YCY | 01ADMIN | Commissioning | L2 | GEN |  | Y |  | BAB |  |
|  | 02 | **DC1-FOH-XFMR-HSE-1 Cx L2** |  | 2025-12-11 | 2026-02-26 |  |  |  |  |  |  |  |  |  |  |  |  |  |  |
| DC1-XFMR-HSE-L2-1000 |  | XFMR-HSE-1 L2 Checklist | 2d | 2025-12-11 A | 2026-02-26 A | QTS-41631, QTS-1004480 FF+1d | 100% | 2025-12-11 | 2025-12-12 | VTC | 01ADMIN | Commissioning | L2 |  |  |  |  |  |  |
|  | 03 | **DC1-FOH-SWBD-HSE-1 Cx L2** |  | 2026-02-24 | 2026-02-26 |  |  |  |  |  |  |  |  |  |  |  |  |  |  |
| DC1-SWBD-HSE-L2-1000 |  | SWBD-HSE-1 L2 Checklist | 2d | 2026-02-24 A | 2026-02-26 A | QTS-1000510, QTS-41651, QTS-41631, QTS-44221, QTS-1004480 FF+1d, QTS-120330 FF, DC1-COMM-1020 SS | 100% | 2026-02-24 | 2026-02-25 | PHE | 01ADMIN | Commissioning | L2 |  |  |  |  |  |  |
|  | 04 | **DC1-FOH-UPSs HSE Cx L2** |  | 2026-03-04 | 2026-04-01 |  |  |  |  |  |  |  |  |  |  |  |  |  |  |
| DC1-STS-HSE-L2-1040 |  | STS-HSE-01 L2 Checklist | 2d | 2026-03-04 A | 2026-03-04 A | QTS-27291, QTS-44221 | 100% | 2026-03-10 | 2026-03-11 | VER | 01ADMIN | Commissioning | L2 | STS |  |  |  |  |  |
| DC1-XFMR-HSE-L2-1030 |  | XFMR-STS-HSE-01 L2 Checklist | 2d | 2026-03-04 A | 2026-03-04 A | QTS-44221, DC1-COMM-1020 SS | 100% | 2026-03-17 | 2026-03-18 | ROS | 01ADMIN | Commissioning | L2 | STS |  |  |  |  |  |
| DC1-PNL-HSE-L2-1000 |  | PNL-UPS-HSE-01 L2 Checklist | 2d | 2026-03-13 A | 2026-03-14 A | QTS-27311, QTS-4831, QTS-44221 | 100% | 2026-03-16 | 2026-03-17 | ROS | 01ADMIN | Commissioning | L2 | UPS |  |  |  |  |  |
| DC1-UPS-HSE-L2-1000 |  | UPS-HSE-01 L2 Checklist | 4d | 2026-03-16 A | 2026-03-16 A | QTS-44221 | 100% | 2026-03-16 | 2026-03-19 | VER | 01ADMIN | Commissioning | L2 | UPS |  |  |  |  |  |
| DC1-PNL-HSE-L2-1010 |  | PNL-UPS-HSE-02 L2 Checklist | 2d | 2026-04-01 A | 2026-04-01 A | DC1-PNL-HSE-L2-1000 SS | 100% | 2026-04-08 | 2026-04-09 | ROS | 01ADMIN | Commissioning | L2 | UPS |  |  |  |  |  |
| DC1-STS-HSE-L2-1050 |  | STS-HSE-02 L2 Checklist | 2d | 2026-04-01 A | 2026-04-01 A | QTS-4821, DC1-STS-HSE-L2-1040 FF, DC1-STS-HSE-L2-1040 | 100% | 2026-04-08 | 2026-04-09 | VER | 01ADMIN | Commissioning | L2 | STS |  |  |  |  |  |
| DC1-UPS-HSE-L2-1010 |  | UPS-HSE-02 L2 Checklist | 4d | 2026-04-01 A | 2026-04-01 A | DC1-UPS-HSE-L2-1000 SS | 100% | 2026-04-08 | 2026-04-13 | VER | 01ADMIN | Commissioning | L2 | UPS |  |  |  |  |  |
| DC1-XFMR-HSE-L2-1040 |  | XFMR-STS-HSE-02 L2 Checklist | 2d | 2026-04-01 A | 2026-04-01 A | QTS-44221, QTS-1004480 FF+1d | 100% | 2026-04-08 | 2026-04-09 | ROS | 01ADMIN | Commissioning | L2 | STS |  |  |  |  |  |

Notes:
- DC1-COMM-1020: allucent_notes_20251216_165335: Riley Warring on 2025-12-16 14:18: In progress as of 12/16 / Riley Warring on 2025-12-16 14:18: Started 12/16 / allucent_notes_20251230_164549: Riley Warring on 2025-12-16 14:18: In progress as of 12/16 / Riley Warring on 2025-12-16 14:18: Started 12/16 / Riley Warring on 2025-12-29 12:01: Checklist not complete in Cx Alloy / Scheduler Notes: Riley Warring on 2025-12-16 14:18: In progress as of 12/16 / Riley Warring on 2025-12-16 14:18: Started 12/16 / Riley Warring on 2025-12-29 12:01: Checklist not complete in Cx / Alloy / Steps: EC Installation Checklist (done); MC Installation Checklist (done); CC Installation Checklist (done); Vendor Pre-Energization Checklist (done); CXA Pre-Energization Inspection; PEI/Clean-Walk / allucent_notes: 2025-12-16 14:18 - User: Riley Warring - Date Added: 2025-12-16 14:18 - Note: In progress as of 12/16 / 2025-12-16 14:18 - User: Riley Warring - Date Added: 2025-12-16 14:18 - Note: Started 12/16 / 2025-12-29 12:01 - User: Riley Warring - Date Added: 20
- DC1-GEN-HSE-L2-1000: allucent_notes_20251216_165335: Riley Warring on 2025-12-16 14:18: In progress as of 12/16 / Riley Warring on 2025-12-16 14:18: Started 12/16 / allucent_notes_20251230_164549: Riley Warring on 2025-12-16 14:18: In progress as of 12/16 / Riley Warring on 2025-12-16 14:18: Started 12/16 / Riley Warring on 2025-12-29 12:01: Checklist not complete in Cx Alloy / Steps: EC Installation Checklist (done); MC Installation Checklist (done); CC Installation Checklist (done); Vendor Pre-Energization Checklist (done); CXA Pre-Energization Inspection; PEI/Clean-Walk / allucent_notes: 2025-12-16 14:18 - User: Riley Warring - Date Added: 2025-12-16 14:18 - Note: In progress as of 12/16 / 2025-12-16 14:18 - User: Riley Warring - Date Added: 2025-12-16 14:18 - Note: Started 12/16 / 2025-12-29 12:01 - User: Riley Warring - Date Added: 20
- DC1-XFMR-HSE-L2-1000: allucent_notes_20251216_165335: Jason Johnston on 2025-12-09 15:15: Need to confirm who is responsible for updating this / Riley Warring on 2025-12-16 14:09: Not complete / allucent_notes_20251209_203830: Jason Johnston on 2025-12-09 15:15: Need to confirm who is responsible for updating this / allucent_notes_20251230_164549: Jason Johnston on 2025-12-09 15:15: Need to confirm who is responsible for updating this / Riley Warring on 2025-12-16 14:09: Not complete / Riley Warring on 2025-12-29 12:02: Checklist not complete in Cx Alloy. / Ongoing CT issue preventing L2 complete / Steps: EC Installation Checklist; CC Installation Checklist (done); Vendor Pre-Energization Checklist (done); CXA Pre-Energization Inspection; PEI/Clean-Walk / allucent_notes: 2025-12-09 15:15 - User: Jason Johnston - Date Added: 2025-12-09 15:15 - Note: Need to confirm who is responsible for updating this / 2025-12-16 14:09 - User: Riley Warring - Date Added: 2025-12-16 14:09 - Note: Not complete / 2025-12-29 12:02 - User: R
- DC1-SWBD-HSE-L2-1000: allucent_notes_20251216_165335: Riley Warring on 2025-12-16 14:10: Not started / Riley Warring on 2025-12-16 14:11: Not started as of 12/16 / allucent_notes_20251230_164549: Riley Warring on 2025-12-16 14:10: Not started / Riley Warring on 2025-12-16 14:11: Not started as of 12/16 / Riley Warring on 2025-12-29 12:03: Checklist not complete in Cx Alloy / Open issues preventing L2 complete / Steps: EC Installation Checklist (done); CC Installation Checklist (done); Vendor Pre-Energization Checklist (done); CXA Pre-Energization Inspection (done); PEI/Clean-Walk / allucent_notes: 2025-12-16 14:10 - User: Riley Warring - Date Added: 2025-12-16 14:10 - Note: Not started / 2025-12-16 14:11 - User: Riley Warring - Date Added: 2025-12-16 14:11 - Note: Not started as of 12/16 / 2025-12-29 12:03 - User: Riley Warring - Date Added: 2025
- DC1-STS-HSE-L2-1040: allucent_notes_20251216_165335: Riley Warring on 2025-12-16 14:13: Not started / Riley Warring on 2025-12-16 14:13: Not started as of 12/16 / allucent_notes_20251230_164549: Riley Warring on 2025-12-16 14:13: Not started / Riley Warring on 2025-12-16 14:13: Not started as of 12/16 / Riley Warring on 2025-12-29 12:03: Checklist not started in Cx Alloy / Steps: EC Installation Checklist (done); Vendor Pre-Energization Checklist (done); CXA Pre-Energization Inspection; PEI/Clean-Walk / allucent_notes: 2025-12-16 14:13 - User: Riley Warring - Date Added: 2025-12-16 14:13 - Note: Not started / 2025-12-16 14:13 - User: Riley Warring - Date Added: 2025-12-16 14:13 - Note: Not started as of 12/16 / 2025-12-29 12:03 - User: Riley Warring - Date Added: 2025
- DC1-XFMR-HSE-L2-1030: allucent_notes_20251216_165335: Riley Warring on 2025-12-16 14:14: Not started as of 12/16 / Riley Warring on 2025-12-16 14:14: Not started as of 12/16 / allucent_notes_20251230_164549: Riley Warring on 2025-12-16 14:14: Not started as of 12/16 / Riley Warring on 2025-12-16 14:14: Not started as of 12/16 / Riley Warring on 2025-12-29 12:05: Checklist not started in Cx Alloy / Steps: EC Installation Checklist (done); CXA Pre-Energization Inspection; PEI/Clean-Walk / allucent_notes: 2025-12-16 14:14 - User: Riley Warring - Date Added: 2025-12-16 14:14 - Note: Not started as of 12/16 / 2025-12-16 14:14 - User: Riley Warring - Date Added: 2025-12-16 14:14 - Note: Not started as of 12/16 / 2025-12-29 12:05 - User: Riley Warring - Date
- DC1-PNL-HSE-L2-1000: allucent_notes_20251216_165335: Riley Warring on 2025-12-16 14:11: Not started / Riley Warring on 2025-12-16 14:12: Not started as of 12/16 / allucent_notes_20251230_164549: Riley Warring on 2025-12-16 14:11: Not started / Riley Warring on 2025-12-16 14:12: Not started as of 12/16 / Riley Warring on 2025-12-29 12:05: Checklist not complete in Cx Alloy / Steps: EC Installation Checklist (done); GC Verification (done); CXA Pre-Energization Inspection; PEI/Clean-Walk / allucent_notes: 2025-12-16 14:11 - User: Riley Warring - Date Added: 2025-12-16 14:11 - Note: Not started / 2025-12-16 14:12 - User: Riley Warring - Date Added: 2025-12-16 14:12 - Note: Not started as of 12/16 / 2025-12-29 12:05 - User: Riley Warring - Date Added: 2025
- DC1-UPS-HSE-L2-1000: allucent_notes_20251216_165335: Riley Warring on 2025-12-16 14:14: Not started / Riley Warring on 2025-12-16 14:14: Not started as of 12/16 / allucent_notes_20251230_164549: Riley Warring on 2025-12-16 14:14: Not started / Riley Warring on 2025-12-16 14:14: Not started as of 12/16 / Riley Warring on 2025-12-29 12:05: Checklist not started in Cx Alloy / Steps: EC Installation Checklist (done); CC Installation Checklist (done); Vendor Pre-Energization Checklist (done); CXA Pre-Energization Inspection; PEI/Clean-Walk / allucent_notes: 2025-12-16 14:14 - User: Riley Warring - Date Added: 2025-12-16 14:14 - Note: Not started / 2025-12-16 14:14 - User: Riley Warring - Date Added: 2025-12-16 14:14 - Note: Not started as of 12/16 / 2025-12-29 12:05 - User: Riley Warring - Date Added: 202
- DC1-PNL-HSE-L2-1010: Steps: EC Installation Checklist; CXA Pre-Energization Inspection; PEI/Clean-Walk
- DC1-STS-HSE-L2-1050: Steps: EC Installation Checklist; CC Installation Checklist; CXA Pre-Energization Inspection; PEI/Clean-Walk
- DC1-UPS-HSE-L2-1010: allucent_notes_20251216_165335: Riley Warring on 2025-12-16 14:14: Not started as of 12/16 / allucent_notes_20251230_164549: Riley Warring on 2025-12-16 14:14: Not started as of 12/16 / Steps: EC Installation Checklist; CC Installation Checklist; Vendor Pre-Energization Checklist; CXA Pre-Energization Inspection; PEI/Clean-Walk / allucent_notes: 2025-12-16 14:14 - User: Riley Warring - Date Added: 2025-12-16 14:14 - Note: Not started as of 12/16
- DC1-XFMR-HSE-L2-1040: allucent_notes_20251216_165335: Riley Warring on 2025-12-16 14:12: Will not be complete by 12/17 / allucent_notes_20251230_164549: Riley Warring on 2025-12-16 14:12: Will not be complete by 12/17 / Riley Warring on 2025-12-29 12:04: Checklist not complete in Cx Alloy / Ongoing CT issues preventing L2 complete / Steps: EC Installation Checklist; CXA Pre-Energization Inspection; PEI/Clean-Walk / allucent_notes: 2025-12-16 14:12 - User: Riley Warring - Date Added: 2025-12-16 14:12 - Note: Will not be complete by 12/17 / 2025-12-29 12:04 - User: Riley Warring - Date Added: 2025-12-29 12:04 - Note: Checklist not complete in Cx AlloyOngoing CT issues preventing L2

| ID | WBS | Activity | Duration | Start | Finish | Predecessors | Complete | Remaining | Planned start | Planned finish | Total float | Free float | Vendor Responsible Party | Allucent CSI Group | Layton Discipline | CX Level | Equipment | Location | Contract | Sort | Fed From | Layton Super |
| --- | --- | --- | --- | --- | --- | --- | --- | --- | --- | --- | --- | --- | --- | --- | --- | --- | --- | --- | --- | --- | --- | --- |
|  | 05 | **DC1-FOH-PNLs HSE Cx L2** |  | 2026-03-14 | 2026-07-23 |  |  |  |  |  |  |  |  |  |  |  |  |  |  |  |  |  |
| DC1-FOH-PNL-L2-1000 |  | PNL-ADM1 L2 Checklist | 2d | 2026-03-14 A | 2026-03-16 A | DC1-SWBD-HSE-L2-1000 FF | 100% |  | 2026-03-16 | 2026-03-17 |  |  | ROS | 01ADMIN | Commissioning | L2 | PANEL |  |  |  |  |  |
| DC1-FOH-PNL-L2-1020 |  | PNL-ADM2 L2 Checklist | 2d | 2026-03-30 A | 2026-03-31 A | DC1-SWBD-HSE-L2-1000 FF | 100% |  |  |  |  |  | ROS | 01ADMIN | Commissioning | L2 | PANEL |  |  |  |  |  |
| DC1-FOH-PNL-L2-1010 |  | PNL-DH11 L2 Checklist | 2d | 2026-07-22 A | 2026-07-23 A | DC1-SWBD-HSE-L2-1000 | 100% |  |  |  |  |  | ROS | 01ADMIN | Commissioning | L2 | PANEL | FOH | BAB |  |  |  |
| DC1-FOH-PNL-L2-1030 |  | PNL-DH21 L2 Checklist | 2d | 2026-07-22 A | 2026-07-23 A | DC1-SWBD-HSE-L2-1000 | 100% |  |  |  |  |  | ROS | 01ADMIN | Commissioning | L2 | PANEL | FOH | BAB |  |  |  |
|  | 06 | **DC1-FOH-RTUs HSE Cx L2** |  | 2026-03-17 | 2026-03-26 |  |  |  |  |  |  |  |  |  |  |  |  |  |  |  |  |  |
| DC1-FOH-RTU-L2-1000 |  | RTU-RT-01 L2 Checklist | 2d | 2026-03-17 A | 2026-03-26 A | QTS-48941 FF, QTS-48931, QTS-48921, QTS-48911 | 100% |  | 2026-03-17 | 2026-03-18 |  |  | TAS | 01ADMIN | Commissioning | L2 | RTU |  |  |  |  |  |
| DC1-FOH-RTU-L2-1010 |  | RTU-RT-02 L2 Checklist | 2d | 2026-03-17 A | 2026-03-26 A | QTS-48981 FF, QTS-48971, QTS-48961, QTS-48951 | 100% |  | 2026-03-17 | 2026-03-18 |  |  | TAS | 01ADMIN | Commissioning | L2 | RTU |  |  | x |  |  |
|  | 07 | **DC1-FOH-Split Units-HSE Cx L2** |  | 2025-12-10 | 2026-08-19 |  |  |  |  |  |  |  |  |  |  |  |  |  |  |  |  |  |
|  | 01 | **DC1-FOH-Split Units-Floor 1-HSE Cx L2** |  | 2025-12-10 | 2026-08-19 |  |  |  |  |  |  |  |  |  |  |  |  |  |  |  |  |  |
| DC1-SS-L2-Cx-2690 |  | DC1-House SDF 0163 Split Units L2 Complete (2) | 1d | 2025-12-10 A | 2026-08-19 | QTS-21421 | 100% | 1d | 2025-12-10 | 2025-12-10 | -75d | 0d | BAM | 01ADMIN | Commissioning | L2 | SPLIT UNIT |  |  |  | HDP-A21-01 |  |
| DC1-SS-L2-Cx-2700 |  | DC1-House MMR1A 0134 Split Units L2 Complete (5) | 1d | 2025-12-10 A | 2026-07-22 A | QTS-5491 | 100% |  | 2025-12-10 | 2025-12-10 |  |  | BAM | 01ADMIN | Commissioning | L2 | SPLIT UNIT |  |  |  | HDP-A21-01, B21-01, C21-01, D21-01 |  |
| DC1-SS-L2-Cx-2710 |  | DC1-House EMERG ELEC 0172 Split Units L2 Complete (3) | 1d | 2025-12-10 A | 2026-07-30 A | QTS-27461 | 100% |  | 2025-12-10 | 2025-12-10 |  |  | BAM | 01ADMIN | Commissioning | L2 | SPLIT UNIT |  |  |  | HDP-B21-01 |  |
| DC1-SS-L2-Cx-2670 |  | DC1-House ELEV MACH 0156 Split Units L2 Complete (1) | 1d | 2025-12-11 A | 2026-07-22 A | DC1-SS-L2-Cx-2710 SS | 100% |  | 2025-12-11 | 2025-12-11 |  |  | BAM | 01ADMIN | Commissioning | L2 | SPLIT UNIT | FOH | BAB |  | HDP-C21-01 |  |
| DC1-SS-L2-Cx-2680 |  | DC1-House ELEC 0173 Split Units L2 Complete (4) | 1d | 2025-12-12 A | 2026-08-06 A | DC1-SS-L2-Cx-2670 SS | 100% |  | 2025-12-12 | 2025-12-12 |  |  | BAM | 01ADMIN | Commissioning | L2 | SPLIT UNIT |  |  |  | HDP-A12-01 |  |
| DC1-SS-L2-Cx-2660 |  | DC1-House DCIM 0133 Split Units L2 Complete (5) | 1d | 2025-12-15 A | 2026-07-24 A | DC1-SS-L2-Cx-2680 SS | 100% |  | 2025-12-15 | 2025-12-15 |  |  | BAM | 01ADMIN | Commissioning | L2 | SPLIT UNIT |  |  |  | HDP-D21-01 |  |
|  | 02 | **DC1-FOH-Split Units-Floor 2-HSE Cx L2** |  | 2025-12-10 | 2026-08-05 |  |  |  |  |  |  |  |  |  |  |  |  |  |  |  |  |  |
| DC1-SS-L2-Cx-2720 |  | DC1 House House Electrical 0273 Split Units L2 Complete (4) | 1d | 2025-12-10 A | 2026-06-15 A | QTS-5531 | 100% |  | 2025-12-10 | 2025-12-10 |  |  | BAM | 01ADMIN | Commissioning | L2 | SPLIT UNIT | FOH |  |  | HDP-B21-01, C21-01, D21-01 | Travis Todaro |
| DC1-SS-L2-Cx-2730 |  | DC1 House MMR2A 0212 Split Units L2 Complete (5) | 1d | 2025-12-10 A | 2026-08-05 A | QTS-28361 | 100% |  | 2025-12-10 | 2025-12-10 |  |  | BAM | 01ADMIN | Commissioning | L2 | SPLIT UNIT |  |  |  | HDP-A21-01, B21-01, C21-01, D21-01 |  |
| DC1-SS-L2-Cx-2740 |  | DC1 House IDF 0213 Split Units L2 Complete (2) | 1d | 2025-12-10 A | 2026-07-29 A | QTS-28141 | 100% |  | 2025-12-10 | 2025-12-10 |  |  | BAM | 01ADMIN | Commissioning | L2 | SPLIT UNIT | FOH | BAB |  | HDP-A21-01, B21-01 |  |
| DC1-SS-L2-Cx-3060 |  | DC1 House ELEV MACH 0224 Split Units L2 Complete (1) | 1d | 2026-06-01 A | 2026-07-24 A | DC1-FOH-PNL-L2-1020, DC1-COMM-1020 SS | 100% |  | 2026-07-15 | 2026-07-15 |  |  | BAM | 01ADMIN | Commissioning | L2 | SPLIT UNIT | FOH | BAB |  |  |  |
|  | 02 | **DC1-Back of House (BOH) Cx L2** |  | 2025-12-09 | 2026-08-21 |  |  |  |  |  |  |  |  |  |  |  |  |  |  |  |  |  |
|  | 01 | **DC1-BOH-XFMR-HSE-2 Cx L2** |  | 2025-12-09 | 2026-07-22 |  |  |  |  |  |  |  |  |  |  |  |  |  |  |  |  |  |
| DC1-XFMR-HSE-L2-1010 |  | XFMR-HSE-2 L2 Checklist | 2d | 2025-12-09 A | 2026-07-22 A | QTS-1004480 FF+1d, QTS-1004470 | 100% |  | 2025-12-09 | 2025-12-10 |  |  | VTC | 01ADMIN | Commissioning | L2 | XFMR | BOH | BAB |  |  |  |

Notes:
- DC1-FOH-PNL-L2-1000: Steps: EC Installation Checklist (done); CC Installation Checklist; GC Verification (done); CXA Pre-Energization Inspection; PEI/Clean-Walk
- DC1-FOH-PNL-L2-1020: Steps: EC Installation Checklist; CC Installation Checklist; CXA Pre-Energization Inspection; PEI/Clean-Walk
- DC1-FOH-PNL-L2-1010: Steps: EC Installation Checklist (done); GC Installation Checklist (done); CXA Pre-Energization Inspection; PEI/Clean-Walk
- DC1-FOH-PNL-L2-1030: Steps: EC Installation Checklist (done); GC Installation Checklist (done); CXA Pre-Energization Inspection; PEI/Clean-Walk
- DC1-FOH-RTU-L2-1000: allucent_notes_20251216_165335: Riley Warring on 2025-12-16 14:15: Not started as of 12/16 / Riley Warring on 2025-12-16 14:15: Not started as of 12/16 / allucent_notes_20251230_164549: Riley Warring on 2025-12-16 14:15: Not started as of 12/16 / Riley Warring on 2025-12-16 14:15: Not started as of 12/16 / Steps: EC Installation Checklist (done); MC Installation Checklist (done); CC Installation Checklist (done); Vendor Pre-Energization Checklist (done); CXA Pre-Energization Inspection; PEI/Clean-Walk (done) / allucent_notes: 2025-12-16 14:15 - User: Riley Warring - Date Added: 2025-12-16 14:15 - Note: Not started as of 12/16 / 2025-12-16 14:15 - User: Riley Warring - Date Added: 2025-12-16 14:15 - Note: Not started as of 12/16
- DC1-FOH-RTU-L2-1010: allucent_notes_20251216_165335: Riley Warring on 2025-12-16 14:15: Not started as of 12/16 / Riley Warring on 2025-12-16 14:15: Not started as of 12/16 / allucent_notes_20251230_164549: Riley Warring on 2025-12-16 14:15: Not started as of 12/16 / Riley Warring on 2025-12-16 14:15: Not started as of 12/16 / Steps: EC Installation Checklist (done); MC Installation Checklist (done); CC Installation Checklist; Vendor Pre-Energization Checklist (done); CXA Pre-Energization Inspection; PEI/Clean-Walk / allucent_notes: 2025-12-16 14:15 - User: Riley Warring - Date Added: 2025-12-16 14:15 - Note: Not started as of 12/16 / 2025-12-16 14:15 - User: Riley Warring - Date Added: 2025-12-16 14:15 - Note: Not started as of 12/16
- DC1-SS-L2-Cx-2690: allucent_notes_20251216_165335: Jason Johnston on 2025-12-09 15:15: Need to confirm who is responsible for updating this / Riley Warring on 2025-12-16 14:32: Prime has not completed L2.2s / allucent_notes_20251209_203830: Jason Johnston on 2025-12-09 15:15: Need to confirm who is responsible for updating this / allucent_notes_20251230_164549: Jason Johnston on 2025-12-09 15:15: Need to confirm who is responsible for updating this / Riley Warring on 2025-12-16 14:32: Prime has not completed L2.2s / Jason Johnston on 2025-12-30 16:43: No update / Steps: SS-0163-01; SS-0163-02 / allucent_notes: 2025-12-09 15:15 - User: Jason Johnston - Date Added: 2025-12-09 15:15 - Note: Need to confirm who is responsible for updating this / 2025-12-16 14:32 - User: Riley Warring - Date Added: 2025-12-16 14:32 - Note: Prime has not completed L2.2s / 2025-12-3
- DC1-SS-L2-Cx-2700: allucent_notes_20251216_165335: Jason Johnston on 2025-12-09 15:15: Need to confirm who is responsible for updating this / Riley Warring on 2025-12-16 14:32: Prime has not completed L2.2s / allucent_notes_20251209_203830: Jason Johnston on 2025-12-09 15:15: Need to confirm who is responsible for updating this / allucent_notes_20251230_164549: Jason Johnston on 2025-12-09 15:15: Need to confirm who is responsible for updating this / Riley Warring on 2025-12-16 14:32: Prime has not completed L2.2s / Jason Johnston on 2025-12-30 16:43: No update / Steps: SS-0134-01 (done); SS-0134-02 (done); SS-0134-03 (done); SS-0134-04 (done); SS-0134-05 / allucent_notes: 2025-12-09 15:15 - User: Jason Johnston - Date Added: 2025-12-09 15:15 - Note: Need to confirm who is responsible for updating this / 2025-12-16 14:32 - User: Riley Warring - Date Added: 2025-12-16 14:32 - Note: Prime has not completed L2.2s / 2025-12-3
- DC1-SS-L2-Cx-2710: allucent_notes_20251216_165335: Jason Johnston on 2025-12-09 15:15: Need to confirm who is responsible for updating this / Riley Warring on 2025-12-16 14:32: Prime has not completed L2.2s / allucent_notes_20251209_203830: Jason Johnston on 2025-12-09 15:15: Need to confirm who is responsible for updating this / allucent_notes_20251230_164549: Jason Johnston on 2025-12-09 15:15: Need to confirm who is responsible for updating this / Riley Warring on 2025-12-16 14:32: Prime has not completed L2.2s / Jason Johnston on 2025-12-30 16:43: No update / Steps: SS-0172-01; SS-0172-02; SS-0172-03 (done) / allucent_notes: 2025-12-09 15:15 - User: Jason Johnston - Date Added: 2025-12-09 15:15 - Note: Need to confirm who is responsible for updating this / 2025-12-16 14:32 - User: Riley Warring - Date Added: 2025-12-16 14:32 - Note: Prime has not completed L2.2s / 2025-12-3
- DC1-SS-L2-Cx-2670: allucent_notes_20251216_165335: Riley Warring on 2025-12-16 14:32: Prime has not completed L2.2s / allucent_notes_20251230_164549: Riley Warring on 2025-12-16 14:32: Prime has not completed L2.2s / Jason Johnston on 2025-12-30 16:43: No update / Steps: SS-0156-01 (done) / allucent_notes: 2025-12-16 14:32 - User: Riley Warring - Date Added: 2025-12-16 14:32 - Note: Prime has not completed L2.2s / 2025-12-30 16:43 - User: Jason Johnston - Date Added: 2025-12-30 16:43 - Note: No update
- DC1-SS-L2-Cx-2680: allucent_notes_20251216_165335: Riley Warring on 2025-12-16 14:32: Prime has not completed L2.2s / allucent_notes_20251230_164549: Riley Warring on 2025-12-16 14:32: Prime has not completed L2.2s / Jason Johnston on 2025-12-30 16:43: No update / Steps: SS-0173-01 (done); SS-0173-02 (done); SS-0173-03 (done); SS-0173-04 (done) / allucent_notes: 2025-12-16 14:32 - User: Riley Warring - Date Added: 2025-12-16 14:32 - Note: Prime has not completed L2.2s / 2025-12-30 16:43 - User: Jason Johnston - Date Added: 2025-12-30 16:43 - Note: No update
- DC1-SS-L2-Cx-2660: allucent_notes_20251216_165335: Riley Warring on 2025-12-16 14:32: Prime has not completed L2.2s / allucent_notes_20251230_164549: Riley Warring on 2025-12-16 14:32: Prime has not completed L2.2s / Jason Johnston on 2025-12-30 16:43: No update / Steps: SS-0133-01 (done); SS-0133-02 (done); SS-0133-03; SS-0133-04 (done); SS-0133-05 / allucent_notes: 2025-12-16 14:32 - User: Riley Warring - Date Added: 2025-12-16 14:32 - Note: Prime has not completed L2.2s / 2025-12-30 16:43 - User: Jason Johnston - Date Added: 2025-12-30 16:43 - Note: No update
- DC1-SS-L2-Cx-2720: allucent_notes_20251216_165335: Jason Johnston on 2025-12-09 15:15: Need to confirm who is responsible for updating this / Riley Warring on 2025-12-16 14:32: Prime has not completed L2.2s / allucent_notes_20251209_203830: Jason Johnston on 2025-12-09 15:15: Need to confirm who is responsible for updating this / allucent_notes_20251230_164549: Jason Johnston on 2025-12-09 15:15: Need to confirm who is responsible for updating this / Riley Warring on 2025-12-16 14:32: Prime has not completed L2.2s / Jason Johnston on 2025-12-30 16:43: No update / Steps: SS-0273-01 (done); SS-0273-02 (done); SS-0273-03 (done); SS-0273-04 (done) / allucent_notes: 2025-12-09 15:15 - User: Jason Johnston - Date Added: 2025-12-09 15:15 - Note: Need to confirm who is responsible for updating this / 2025-12-16 14:32 - User: Riley Warring - Date Added: 2025-12-16 14:32 - Note: Prime has not completed L2.2s / 2025-12-3
- DC1-SS-L2-Cx-2730: allucent_notes_20251216_165335: Jason Johnston on 2025-12-09 15:16: Need to confirm who is responsible for updating this / Riley Warring on 2025-12-16 14:32: Prime has not completed L2.2s / allucent_notes_20251209_203830: Jason Johnston on 2025-12-09 15:16: Need to confirm who is responsible for updating this / allucent_notes_20251230_164549: Jason Johnston on 2025-12-09 15:16: Need to confirm who is responsible for updating this / Riley Warring on 2025-12-16 14:32: Prime has not completed L2.2s / Jason Johnston on 2025-12-30 16:43: No update / Steps: SS-0212-01; SS-0212-02; SS-0212-03; SS-0212-04; SS-0212-05 / allucent_notes: 2025-12-09 15:16 - User: Jason Johnston - Date Added: 2025-12-09 15:16 - Note: Need to confirm who is responsible for updating this / 2025-12-16 14:32 - User: Riley Warring - Date Added: 2025-12-16 14:32 - Note: Prime has not completed L2.2s / 2025-12-3
- DC1-SS-L2-Cx-2740: allucent_notes_20251216_165335: Jason Johnston on 2025-12-09 15:16: Need to confirm who is responsible for updating this / Riley Warring on 2025-12-16 14:32: Prime has not completed L2.2s / allucent_notes_20251209_203830: Jason Johnston on 2025-12-09 15:16: Need to confirm who is responsible for updating this / allucent_notes_20251230_164549: Jason Johnston on 2025-12-09 15:16: Need to confirm who is responsible for updating this / Riley Warring on 2025-12-16 14:32: Prime has not completed L2.2s / Jason Johnston on 2025-12-30 16:44: No update / Steps: SS-0213-01; SS-0213-02 (done) / allucent_notes: 2025-12-09 15:16 - User: Jason Johnston - Date Added: 2025-12-09 15:16 - Note: Need to confirm who is responsible for updating this / 2025-12-16 14:32 - User: Riley Warring - Date Added: 2025-12-16 14:32 - Note: Prime has not completed L2.2s / 2025-12-3
- DC1-SS-L2-Cx-3060: Steps: SS-0224-01 (done)
- DC1-XFMR-HSE-L2-1010: Steps: EC Installation Checklist (done); Vendor Pre-Energization Checklist (done); CC Installation Checklist (done); CXA Pre-Energization Inspection; PEI/Clean-Walk

| ID | WBS | Activity | Duration | Start | Finish | Predecessors | Complete | Remaining | Planned start | Planned finish | Total float | Free float | Vendor Responsible Party | Allucent CSI Group | Layton Discipline | Location | CX Level | Equipment | Contract | Layton Super | Sort | Fed From |
| --- | --- | --- | --- | --- | --- | --- | --- | --- | --- | --- | --- | --- | --- | --- | --- | --- | --- | --- | --- | --- | --- | --- |
|  | 02 | **DC1-BOH-GEN-HSE-2 Cx L2** |  | 2026-07-07 | 2026-07-29 |  |  |  |  |  |  |  |  |  |  |  |  |  |  |  |  |  |
| DC1-GEN-HSE-L2-1010 |  | GEN-HSE-2 L2 Checklist | 2d | 2026-07-07 A | 2026-07-29 A | QTS-41831, QTS-1004480 FF+1d, QTS-1010390, QTS-1012280, QTS-1014040 | 100% |  | 2026-07-08 | 2026-07-09 |  |  | YCY | 01ADMIN | Commissioning | BOH | L2 | GEN | BAB |  |  |  |
|  | 03 | **DC1-BOH-SWBD-HSE-2 Cx L2** |  | 2026-06-24 | 2026-06-25 |  |  |  |  |  |  |  |  |  |  |  |  |  |  |  |  |  |
| DC1-SWBD-HSE-L2-1010 |  | SWBD-HSE-2 L2 Checklist | 2d | 2026-06-24 A | 2026-06-25 A | QTS-42081, QTS-26501, QTS-41811, QTS-41831, QTS-1004480 FF+1d, QTS-1011910, QTS-1012310, DC1-COMM-1020 SS | 100% |  |  |  |  |  | PHE |  | Commissioning | BOH | L2 | SWBD |  | Travis Todaro |  |  |
|  | 04 | **DC1-BOH-UPSs HSE Cx L2** |  | 2026-07-14 | 2026-08-20 |  |  |  |  |  |  |  |  |  |  |  |  |  |  |  |  |  |
| DC1-PNL-HSE-L2-1030 |  | PNL-UPS-HSE-04 L2 Checklist | 2d | 2026-07-14 A | 2026-08-19 | DC1-PNL-HSE-L2-1010 | 50% | 1d | 2026-07-15 | 2026-07-16 | -15d | 0d | ROS | 01ADMIN | Commissioning | BOH | L2 | UPS | BAB |  |  |  |
| DC1-XFMR-HSE-L2-1050 |  | XFMR-STS-HSE-03 L2 Checklist | 2d | 2026-07-29 A | 2026-07-29 A | DC1-XFMR-HSE-L2-1040, DC1-COMM-1020 SS | 100% |  | 2026-07-29 | 2026-07-30 |  |  | ROS | 01ADMIN | Commissioning | BOH | L2 | STS | BAB |  |  |  |
| DC1-XFMR-HSE-L2-1060 |  | XFMR-STS-HSE-04 L2 Checklist | 2d | 2026-07-29 A | 2026-07-29 A | DC1-XFMR-HSE-L2-1050 SS, DC1-COMM-1020 SS | 100% |  | 2026-07-29 | 2026-07-30 |  |  | ROS | 01ADMIN | Commissioning | BOH | L2 | STS | BAB |  |  |  |
| DC1-PNL-HSE-L2-1020 |  | PNL-UPS-HSE-03 L2 Checklist | 2d | 2026-08-19 | 2026-08-20 | DC1-PNL-HSE-L2-1010 |  |  |  |  | -16d | 0d | ROS | 01ADMIN | Commissioning | BOH | L2 | UPS | BAB |  |  |  |
| DC1-STS-HSE-L2-1060 |  | STS-HSE-03 L2 Checklist | 2d | 2026-08-19 | 2026-08-20 | QTS-27921, DC1-STS-HSE-L2-1050 |  |  |  |  | -16d | 1d | VER | 01ADMIN | Commissioning | BOH | L2 | STS | BAB |  |  |  |
| DC1-STS-HSE-L2-1070 |  | STS-HSE-04 L2 Checklist | 2d | 2026-08-19 | 2026-08-20 | QTS-28591 |  |  |  |  | -16d | 1d | VER | 01ADMIN | Commissioning | BOH | L2 | STS | BAB |  |  |  |
| DC1-UPS-HSE-L2-1020 |  | UPS-HSE-03 L2 Checklist | 2d | 2026-08-19 | 2026-08-20 | QTS-27931 |  |  |  |  | -17d | 0d | VER | 01ADMIN | Commissioning | BOH | L2 | UPS | BAB |  |  |  |
| DC1-UPS-HSE-L2-1030 |  | UPS-HSE-04 L2 Checklist | 2d | 2026-08-19 | 2026-08-20 | QTS-28601 |  |  |  |  | -17d | 0d | VER | 01ADMIN | Commissioning | BOH | L2 | UPS | BAB |  |  |  |
|  | 05 | **DC1-BOH-PNLs HSE Cx L2** |  | 2026-06-24 | 2026-08-20 |  |  |  |  |  |  |  |  |  |  |  |  |  |  |  |  |  |
| DC1-BOH-PNL-L2-1060 |  | PNL-BOH1 L2 Checklist | 2d | 2026-06-24 A | 2026-06-25 A | QTS-26501 | 100% |  |  |  |  |  | ROS | 01ADMIN | Commissioning | BOH | L2 | PANEL |  | Travis Todaro |  |  |
| DC1-BOH-PNL-L2-1090 |  | PNL-BOH2 L2 Checklist | 2d | 2026-06-24 A | 2026-06-25 A | QTS-26501 | 100% |  |  |  |  |  | ROS | 01ADMIN | Commissioning | BOH | L2 | PANEL |  | Travis Todaro |  |  |
| DC1-BOH-PNL-L2-1040 |  | PNL-DH12 L2 Checklist | 2d | 2026-08-19 | 2026-08-20 | QTS-26501 |  |  |  |  | -16d | 0d | ROS | 01ADMIN | Commissioning | BOH | L2 | PANEL | BAB |  |  |  |
| DC1-BOH-PNL-L2-1050 |  | PNL-DH13 L2 Checklist | 2d | 2026-08-19 | 2026-08-20 | QTS-26501 |  |  |  |  | -16d | 0d | ROS | 01ADMIN | Commissioning | BOH | L2 | PANEL | BAB |  |  |  |
| DC1-BOH-PNL-L2-1070 |  | PNL-DH22 L2 Checklist | 2d | 2026-08-19 | 2026-08-20 | QTS-26501 |  |  |  |  | -16d | 0d | ROS | 01ADMIN | Commissioning | BOH | L2 | PANEL | BAB |  |  |  |
| DC1-BOH-PNL-L2-1080 |  | PNL-DH23 L2 Checklist | 2d | 2026-08-19 | 2026-08-20 | QTS-26501 |  |  |  |  | -16d | 0d | ROS | 01ADMIN | Commissioning | BOH | L2 | PANEL | BAB |  |  |  |
|  | 06 | **DC1-BOH-RTUs HSE Cx L2** |  | 2026-07-30 | 2026-07-30 |  |  |  |  |  |  |  |  |  |  |  |  |  |  |  |  |  |
| DC1-FOH-RTU-L2-1020 |  | RTU-RT-03 L2 Checklist | 2d | 2026-07-30 A | 2026-07-30 A | QTS-49011, QTS-49001, QTS-48991, QTS-1007170 | 100% |  | 2026-07-30 | 2026-07-31 |  |  | TAS |  | Commissioning | BOH | L2 | RTU | BAB |  | x |  |
|  | 07 | **DC1-BOH-Split Units-HSE Cx L2** |  | 2026-01-14 | 2026-08-21 |  |  |  |  |  |  |  |  |  |  |  |  |  |  |  |  |  |
|  | 08 | **DC1-BOH-Split Units-Floor 1-HSE Cx L2** |  | 2026-01-19 | 2026-08-19 |  |  |  |  |  |  |  |  |  |  |  |  |  |  |  |  |  |
| DC1-SS-L2-Cx-2790 |  | DC1 House MMR1B 1068 Split Units L2 Complete (4) | 1d | 2026-01-19 A | 2026-08-11 A | QTS-28531, DC1-COMM-1020 SS | 100% |  | 2026-01-21 | 2026-01-21 |  |  | BAM |  | Commissioning | BOH | L2 | SPLIT UNIT | BAB |  |  | HDP-E22-01, F22-01, G22-01, J22-01 |
| DC1-SS-L2-Cx-2760 |  | DC1 House ELEV MACH 1062 Split Units L2 Complete (1) | 1d | 2026-03-25 A | 2026-08-19 | DC1-SS-L2-Cx-2770 FF, QTS-27581, DC1-COMM-1020 SS |  | 1d | 2026-03-25 | 2026-03-25 | -15d | 0d | BAM |  | Commissioning | BOH | L2 | SPLIT UNIT | BAB |  |  | HDP-K22-01 |
| DC1-SS-L2-Cx-2770 |  | DC1 House IDF 1064 Split Units L2 Complete (2) | 1d | 2026-03-25 A | 2026-08-19 | QTS-27581 FF, QTS-27581 SS, DC1-COMM-1020 SS |  | 1d | 2026-03-25 | 2026-03-25 | -15d | 0d | BAM | 01ADMIN | Commissioning | BOH | L2 | SPLIT UNIT | BAB |  |  | HDP-J22-01, K22-01 |
| DC1-SS-L2-Cx-2780 |  | DC1-House House Electrical 1066 Split Units L2 Complete (4) | 1d | 2026-03-25 A | 2026-08-19 | QTS-28021, QTS-1005280 FF, QTS-1009380 FF, DC1-COMM-1020 SS |  | 1d | 2026-03-25 | 2026-03-25 | -15d | 0d | BAM | 01ADMIN | Commissioning | BOH | L2 | SPLIT UNIT | BAB |  |  | HDP-H22-01, J22-01, K22-01 |
| DC1-SS-L2-Cx-5010 |  | DC1 House ELEC 1081 Split Units L2 Complete (3) | 1d | 2026-03-25 A | 2026-08-11 A | QTS-27581, DC1-COMM-1020 SS | 100% |  | 2026-03-25 | 2026-03-25 |  |  | BAM |  | Commissioning | BOH | L2 | SPLIT UNIT | BAB |  |  |  |

Notes:
- DC1-GEN-HSE-L2-1010: Steps: EC Installation Checklist (done); MC Installation Checklist; CC Installation Checklist; Vendor Pre-Energization Checklist; CXA Pre-Energization Inspection; PEI/Clean-Walk
- DC1-SWBD-HSE-L2-1010: Steps: EC Installation Checklist; CC Installation Checklist; Vendor Pre-Energization Checklist; CXA Pre-Energization Inspection; PEI/Clean-Walk
- DC1-PNL-HSE-L2-1030: Steps: EC Installation Checklist (done); CC Installation Checklist; Vendor Pre-Energization Checklist; CXA Pre-Energization Inspection; PEI/Clean-Walk
- DC1-XFMR-HSE-L2-1050: Steps: EC Installation Checklist; CC Installation Checklist; Vendor Pre-Energization Checklist; CXA Pre-Energization Inspection; PEI/Clean-Walk
- DC1-XFMR-HSE-L2-1060: Steps: EC Installation Checklist; CC Installation Checklist; Vendor Pre-Energization Checklist; CXA Pre-Energization Inspection; PEI/Clean-Walk
- DC1-PNL-HSE-L2-1020: Steps: EC Installation Checklist; CC Installation Checklist; Vendor Pre-Energization Checklist; CXA Pre-Energization Inspection; PEI/Clean-Walk
- DC1-STS-HSE-L2-1060: Steps: EC Installation Checklist; CC Installation Checklist; Vendor Pre-Energization Checklist (done); CXA Pre-Energization Inspection; PEI/Clean-Walk
- DC1-STS-HSE-L2-1070: Steps: EC Installation Checklist; CC Installation Checklist; Vendor Pre-Energization Checklist (done); CXA Pre-Energization Inspection; PEI/Clean-Walk
- DC1-UPS-HSE-L2-1020: Steps: EC Installation Checklist; CC Installation Checklist; Vendor Pre-Energization Checklist; CXA Pre-Energization Inspection; PEI/Clean-Walk
- DC1-UPS-HSE-L2-1030: Steps: EC Installation Checklist; CC Installation Checklist; Vendor Pre-Energization Checklist; CXA Pre-Energization Inspection; PEI/Clean-Walk
- DC1-BOH-PNL-L2-1060: allucent_notes_20251216_165335: Jason Johnston on 2025-12-09 15:16: Need to confirm who is responsible for updating this / Riley Warring on 2025-12-16 14:16: Not started as of 12/16 / Riley Warring on 2025-12-16 14:17: Not started as of 12/16 / allucent_notes_20251209_203830: Jason Johnston on 2025-12-09 15:16: Need to confirm who is responsible for updating this / allucent_notes_20251230_164549: Jason Johnston on 2025-12-09 15:16: Need to confirm who is responsible for updating this / Riley Warring on 2025-12-16 14:16: Not started as of 12/16 / Riley Warring on 2025-12-16 14:17: Not started as of 12/16 / Riley Warring on 2025-12-29 12:07: Checklist not started in Cx Alloy / Steps: EC Installation Checklist; CC Installation Checklist; Vendor Pre-Energization Checklist; CXA Pre-Energization Inspection; PEI/Clean-Walk / allucent_notes: 2025-12-09 15:16 - User: Jason Johnston - Date Added: 2025-12-09 15:16 - Note: Need to confirm who is responsible for updating this / 2025-12-16 14:16 - User: Riley Warring - Date Added: 2025-12-16 14:16 - Note: Not started as of 12/16 / 2025-12-16 14:1
- DC1-BOH-PNL-L2-1090: allucent_notes_20251216_165335: Jason Johnston on 2025-12-09 15:16: Need to confirm who is responsible for updating this / Riley Warring on 2025-12-16 14:17: Not started as of 12/16 / Riley Warring on 2025-12-16 14:17: Not started as of 12/16 / allucent_notes_20251209_203830: Jason Johnston on 2025-12-09 15:16: Need to confirm who is responsible for updating this / allucent_notes_20251230_164549: Jason Johnston on 2025-12-09 15:16: Need to confirm who is responsible for updating this / Riley Warring on 2025-12-16 14:17: Not started as of 12/16 / Riley Warring on 2025-12-16 14:17: Not started as of 12/16 / Riley Warring on 2025-12-29 12:07: Checklist not started in Cx Alloy / Steps: EC Installation Checklist; CC Installation Checklist; Vendor Pre-Energization Checklist; CXA Pre-Energization Inspection; PEI/Clean-Walk / allucent_notes: 2025-12-09 15:16 - User: Jason Johnston - Date Added: 2025-12-09 15:16 - Note: Need to confirm who is responsible for updating this / 2025-12-16 14:17 - User: Riley Warring - Date Added: 2025-12-16 14:17 - Note: Not started as of 12/16 / 2025-12-16 14:1
- DC1-BOH-PNL-L2-1040: allucent_notes_20251216_165335: Jason Johnston on 2025-12-09 15:16: Need to confirm who is responsible for updating this / Riley Warring on 2025-12-16 14:16: Not started as of 12/16 / Riley Warring on 2025-12-16 14:17: Not started as of 12/16 / allucent_notes_20251209_203830: Jason Johnston on 2025-12-09 15:16: Need to confirm who is responsible for updating this / allucent_notes_20251230_164549: Jason Johnston on 2025-12-09 15:16: Need to confirm who is responsible for updating this / Riley Warring on 2025-12-16 14:16: Not started as of 12/16 / Riley Warring on 2025-12-16 14:17: Not started as of 12/16 / Riley Warring on 2025-12-29 12:07: Checklist not started in Cx Alloy / Steps: EC Installation Checklist; CC Installation Checklist; Vendor Pre-Energization Checklist; CXA Pre-Energization Inspection; PEI/Clean-Walk / allucent_notes: 2025-12-09 15:16 - User: Jason Johnston - Date Added: 2025-12-09 15:16 - Note: Need to confirm who is responsible for updating this / 2025-12-16 14:16 - User: Riley Warring - Date Added: 2025-12-16 14:16 - Note: Not started as of 12/16 / 2025-12-16 14:1
- DC1-BOH-PNL-L2-1050: allucent_notes_20251216_165335: Jason Johnston on 2025-12-09 15:16: Need to confirm who is responsible for updating this / Riley Warring on 2025-12-16 14:17: Not started as of 12/16 / Riley Warring on 2025-12-16 14:17: Not started as of 12/16 / allucent_notes_20251209_203830: Jason Johnston on 2025-12-09 15:16: Need to confirm who is responsible for updating this / allucent_notes_20251230_164549: Jason Johnston on 2025-12-09 15:16: Need to confirm who is responsible for updating this / Riley Warring on 2025-12-16 14:17: Not started as of 12/16 / Riley Warring on 2025-12-16 14:17: Not started as of 12/16 / Riley Warring on 2025-12-29 12:07: Checklist not started in Cx Alloy / Steps: EC Installation Checklist; CC Installation Checklist; Vendor Pre-Energization Checklist; CXA Pre-Energization Inspection; PEI/Clean-Walk / allucent_notes: 2025-12-09 15:16 - User: Jason Johnston - Date Added: 2025-12-09 15:16 - Note: Need to confirm who is responsible for updating this / 2025-12-16 14:17 - User: Riley Warring - Date Added: 2025-12-16 14:17 - Note: Not started as of 12/16 / 2025-12-16 14:1
- DC1-BOH-PNL-L2-1070: allucent_notes_20251216_165335: Jason Johnston on 2025-12-09 15:16: Need to confirm who is responsible for updating this / Riley Warring on 2025-12-16 14:17: Not started as of 12/16 / Riley Warring on 2025-12-16 14:17: Not started as of 12/16 / allucent_notes_20251209_203830: Jason Johnston on 2025-12-09 15:16: Need to confirm who is responsible for updating this / allucent_notes_20251230_164549: Jason Johnston on 2025-12-09 15:16: Need to confirm who is responsible for updating this / Riley Warring on 2025-12-16 14:17: Not started as of 12/16 / Riley Warring on 2025-12-16 14:17: Not started as of 12/16 / Riley Warring on 2025-12-29 12:07: Checklist not started in Cx Alloy / Steps: EC Installation Checklist; CC Installation Checklist; Vendor Pre-Energization Checklist; CXA Pre-Energization Inspection; PEI/Clean-Walk / allucent_notes: 2025-12-09 15:16 - User: Jason Johnston - Date Added: 2025-12-09 15:16 - Note: Need to confirm who is responsible for updating this / 2025-12-16 14:17 - User: Riley Warring - Date Added: 2025-12-16 14:17 - Note: Not started as of 12/16 / 2025-12-16 14:1
- DC1-BOH-PNL-L2-1080: allucent_notes_20251216_165335: Jason Johnston on 2025-12-09 15:16: Need to confirm who is responsible for updating this / Riley Warring on 2025-12-16 14:17: Not started as of 12/16 / Riley Warring on 2025-12-16 14:17: Not started as of 12/16 / allucent_notes_20251209_203830: Jason Johnston on 2025-12-09 15:16: Need to confirm who is responsible for updating this / allucent_notes_20251230_164549: Jason Johnston on 2025-12-09 15:16: Need to confirm who is responsible for updating this / Riley Warring on 2025-12-16 14:17: Not started as of 12/16 / Riley Warring on 2025-12-16 14:17: Not started as of 12/16 / Riley Warring on 2025-12-29 12:07: Checklist not started in Cx Alloy / Steps: EC Installation Checklist; CC Installation Checklist; Vendor Pre-Energization Checklist; CXA Pre-Energization Inspection; PEI/Clean-Walk / allucent_notes: 2025-12-09 15:16 - User: Jason Johnston - Date Added: 2025-12-09 15:16 - Note: Need to confirm who is responsible for updating this / 2025-12-16 14:17 - User: Riley Warring - Date Added: 2025-12-16 14:17 - Note: Not started as of 12/16 / 2025-12-16 14:1
- DC1-FOH-RTU-L2-1020: Steps: EC Installation Checklist; MC Installation Checklist; CC Installation Checklist; Vendor Pre-Energization Checklist; CXA Pre-Energization Inspection; PEI/Clean-Walk
- DC1-SS-L2-Cx-2790: Steps: SS-1068-01 (done); SS-1068-02; SS-1068-03 (done); SS-1068-04
- DC1-SS-L2-Cx-2760: Steps: SS-1062-01 (done)
- DC1-SS-L2-Cx-2770: Steps: SS-1064-01; SS-1064-02
- DC1-SS-L2-Cx-2780: Steps: SS-1066-01 (done); SS-1066-02; SS-1066-03; SS-1066-04
- DC1-SS-L2-Cx-5010: Steps: SS-1081-01 (done); SS-1081-02; SS-1081-03 (done)

| ID | WBS | Activity | Duration | Start | Finish | Predecessors | Complete | Remaining | Planned start | Planned finish | Total float | Free float | Constraint | Fed From | Vendor Responsible Party | Allucent CSI Group | Layton Discipline | Location | CX Level | Equipment | Contract | Owner Impact Analysis | NICK | Layton Super |
| --- | --- | --- | --- | --- | --- | --- | --- | --- | --- | --- | --- | --- | --- | --- | --- | --- | --- | --- | --- | --- | --- | --- | --- | --- |
|  | 09 | **DC1-BOH-Split Units-Floor 2-HSE Cx L2** |  | 2026-01-14 | 2026-08-19 |  |  |  |  |  |  |  |  |  |  |  |  |  |  |  |  |  |  |  |
| DC1-SS-L2-Cx-2800 |  | DC1 House ELEC 2085 Split Units L2 Complete (4) | 1d | 2026-01-14 A | 2026-08-19 | QTS-28691, DC1-COMM-1020 SS |  | 1d | 2026-01-14 | 2026-01-14 | -17d | 0d |  | HDP-G22-01, H22-01, J22-01 | BAM | 01ADMIN | Commissioning | BOH | L2 | SPLIT UNIT | BAB |  |  |  |
| DC1-SS-L2-Cx-2810 |  | DC1 House MMR2B 2068 Split Units L2 Complete (4) | 1d | 2026-01-14 A | 2026-08-19 | QTS-28831, DC1-COMM-1020 SS |  | 1d | 2026-01-14 | 2026-01-14 | -15d | 0d |  | HDP-E22-01, F22-01, G22-01, J22-01 | BAM | 01ADMIN | Commissioning | BOH | L2 | SPLIT UNIT | BAB |  |  |  |
| DC1-SS-L2-Cx-2820 |  | DC1 House IDF 2064 Split Units L2 Complete (2) | 1d | 2026-01-14 A | 2026-08-19 | QTS-28331, DC1-COMM-1020 SS |  | 1d | 2026-01-14 | 2026-01-14 | -15d | 0d |  | HDP-J22-01, K22-01 | BAM | 01ADMIN | Commissioning | BOH | L2 | SPLIT UNIT | BAB |  |  |  |
|  | 1 | **DC1-BOH-Split Units-Floor 3-HSE Cx L2** |  | 2026-08-20 | 2026-08-21 |  |  |  |  |  |  |  |  |  |  |  |  |  |  |  |  |  |  |  |
| DC1-SS-L2-Cx-5020 |  | DC1 House Elevator Penthouse Lobby 3065-2 Split Units L2 Complete (1) | 1d | 2026-08-20 | 2026-08-20 | DC1-SS-L2-Cx-2800, DC1-COMM-1020 FF, DC1-COMM-1020 SS |  |  |  |  | -17d | 0d |  |  | BAM | 01ADMIN | Commissioning | BOH | L2 | SPLIT UNIT | BAB |  |  |  |
| DC1-SS-L2-Cx-2830 |  | DC1 House ELEV MACH 3065-1 Split Units L2 Complete (1) | 1d | 2026-08-21 | 2026-08-21 | DC1-SS-L2-Cx-5020, DC1-COMM-1020 FF, DC1-COMM-1020 SS |  |  |  |  | -17d | 0d |  | HDP-D21-01 | BAM | 01ADMIN | Commissioning | BOH | L2 | SPLIT UNIT | BAB |  |  |  |
|  | 03 | **DC1-House Cx L3 Commissioning** |  | 2026-02-27 | 2026-09-08 |  |  |  |  |  |  |  |  |  |  |  |  |  |  |  |  |  |  |  |
|  | 01 | **DC1-Front of House (FOH) Cx L3** |  | 2026-02-27 | 2026-08-25 |  |  |  |  |  |  |  |  |  |  |  |  |  |  |  |  |  |  |  |
|  | 01 | **DC1-FOH-GEN-HSE-1 Cx L3** |  | 2026-07-25 | 2026-08-24 |  |  |  |  |  |  |  |  |  |  |  |  |  |  |  |  |  |  |  |
| DC1-GEN-HSE-L3-1000 |  | FOH GEN-HSE-1 FTE | 1d | 2026-07-25 A | 2026-07-25 A | DC1-SWBD-HSE-L3-1000, DC1-GEN-HSE-L2-1000 | 100% |  | 2026-07-23 | 2026-07-23 |  |  |  |  | ROS | 01ADMIN | Commissioning |  | L3 | GEN | BAB | Y |  |  |
| DC1-GEN-HSE-L3-1010 |  | FOH GEN-HSE-1 L3 Startup | 2d | 2026-08-19 | 2026-08-20 | DC1-GEN-HSE-L3-1000 |  |  |  |  | -74d | 0d |  |  | YCY | 01ADMIN | Commissioning |  | L3 | GEN | BAB | Y |  |  |
| DC1-GEN-HSE-L3-1020 |  | FOH GEN-HSE-1 L3 BMS/EPMS Programming | 1d | 2026-08-21 | 2026-08-21 | DC1-GEN-HSE-L3-1010 |  |  |  |  | -74d | 0d |  |  | PRM | 01ADMIN | Commissioning |  | L3 | GEN | BAB | Y |  |  |
| DC1-GEN-HSE-L3-1060 |  | FOH GEN-HSE-1 L3 Burn In | 1d | 2026-08-24 | 2026-08-24 | DC1-GEN-HSE-L3-1020 |  |  |  |  | -74d | 1d |  |  | YCY | 01ADMIN | Commissioning |  | L3 | GEN | BAB | Y | NICK |  |
|  | 02 | **DC1-FOH-XFMR-HSE-1 Cx L3** |  | 2026-02-27 | 2026-08-19 |  |  |  |  |  |  |  |  |  |  |  |  |  |  |  |  |  |  |  |
| DC1-XFMR-HSE-L3-1000 |  | FOH XFMR-HSE-1 FTE | 1d | 2026-02-27 A | 2026-02-27 A | DC1-XFMR-HSE-L2-1000 | 100% |  |  |  |  |  |  |  | ROS | 01ADMIN | Commissioning |  | L3 |  |  |  |  |  |
| DC1-XFMR-HSE-L3-1010 |  | FOH XFMR-HSE-1 L3 Startup | 2d | 2026-06-01 A | 2026-06-01 A | DC1-XFMR-HSE-L3-1000 | 100% |  | 2026-06-24 | 2026-06-25 |  |  |  |  | VTC | 01ADMIN | Commissioning | FOH | L3 | XFMR |  |  |  | Travis Todaro |
| DC1-XFMR-HSE-L3-1020 |  | FOH XFMR-HSE-1 L3 BMS/EPMS Programming | 1d | 2026-08-19 | 2026-08-19 | DC1-XFMR-HSE-L3-1010 |  |  |  |  | -71d | 4d |  |  | PRM | 01ADMIN | Commissioning | FOH | L3 | XFMR | BAB |  |  |  |
|  | 03 | **DC1-FOH-SWBD-HSE-1 Cx L3** |  | 2026-03-03 | 2026-08-21 |  |  |  |  |  |  |  |  |  |  |  |  |  |  |  |  |  |  |  |
| DC1-SWBD-HSE-L3-1000 |  | FOH SWBD-HSE-1 FTE | 1d | 2026-03-03 A | 2026-03-03 A | DC1-XFMR-HSE-L3-1000, DC1-SWBD-HSE-L2-1000 | 100% |  |  |  |  |  |  |  | ROS | 01ADMIN | Commissioning |  | L3 |  |  |  |  |  |
| DC1-SWBD-HSE-L3-1010 |  | FOH SWBD-HSE-1 L3 Startup | 2d | 2026-08-19 | 2026-08-20 | DC1-SWBD-HSE-L3-1000, QTS - 26611 |  |  |  |  | -73d | 0d |  |  | PHE | 01ADMIN | Commissioning | FOH | L3 | SWBD | BAB |  |  |  |
| DC1-SWBD-HSE-L3-1020 |  | FOH SWBD-HSE-1 L3 BMS/EPMS Programming | 1d | 2026-08-21 | 2026-08-21 | DC1-SWBD-HSE-L3-1000, DC1-SWBD-HSE-L3-1010 |  |  |  |  | -73d | 2d |  |  | PRM | 01ADMIN | Commissioning | FOH | L3 | SWBD | BAB |  |  |  |
|  | 04 | **DC1-FOH-UPSs Cx L3** |  | 2026-03-05 | 2026-08-21 |  |  |  |  |  |  |  |  |  |  |  |  |  |  |  |  |  |  |  |
|  | 01 | **DC1-FOH-UPS-HSE Cx L3** |  | 2026-03-16 | 2026-08-21 |  |  |  |  |  |  |  |  |  |  |  |  |  |  |  |  |  |  |  |
|  | 01 | **DC1-FOH-UPS-HSE-01 Cx L3** |  | 2026-03-16 | 2026-08-21 |  |  |  |  |  |  |  |  |  |  |  |  |  |  |  |  |  |  |  |
| DC1-FOH-UPS-L3-1000 |  | FOH-HSE UPS-HSE-01 FTE | 1d | 2026-03-16 A | 2026-03-16 A | DC1-SWBD-HSE-L3-1000, DC1-UPS-HSE-L2-1000 | 100% |  |  |  |  |  |  |  | ROS | 01ADMIN | Commissioning |  | L3 | UPS |  |  |  |  |
| DC1-FOH-UPS-L3-1010 |  | FOH-HSE UPS-HSE-01 L3 Startup | 2d | 2026-08-19 | 2026-08-20 | DC1-FOH-UPS-L3-1000, QTS-1012050, QTS-1013980 |  |  |  |  | -73d | 0d | start on or after 2026-08-17 |  | ROS | 01ADMIN | Commissioning | FOH | L3 | UPS | BAB |  |  |  |
| DC1-FOH-UPS-L3-1020 |  | FOH-HSE UPS-HSE-01 L3 BMS/EPMS Programming | 1d | 2026-08-21 | 2026-08-21 | DC1-FOH-UPS-L3-1010 |  |  |  |  | -73d | 2d |  |  | PRM | 01ADMIN | Commissioning | FOH | L3 | UPS | BAB |  |  |  |

Notes:
- DC1-SS-L2-Cx-2800: Steps: SS-2085-01 (done); SS-2085-02; SS-2085-03 (done); SS-2085-04
- DC1-SS-L2-Cx-2810: Steps: SS-2068-01 (done); SS-2068-02; SS-2068-03 (done); SS-2068-04
- DC1-SS-L2-Cx-2820: Steps: SS-2064-01 (done); SS-2064-02 (done)
- DC1-SS-L2-Cx-5020: Steps: SS-3065-2-02
- DC1-SS-L2-Cx-2830: Steps: SS-3065-1-01
- DC1-GEN-HSE-L3-1010: Steps: EC Startup Report; MC Startup Report; Vendor Startup
- DC1-GEN-HSE-L3-1060: Steps: EC Startup Report; MC Startup Report; Vendor Startup
- DC1-XFMR-HSE-L3-1010: Steps: EC Startup Report; Vendor Startup
- DC1-SWBD-HSE-L3-1010: Steps: EC Startup Report; Vendor Startup
- DC1-FOH-UPS-L3-1010: Steps: EC Startup Report; Vendor Startup

| ID | WBS | Activity | Duration | Start | Finish | Predecessors | Complete | Planned start | Planned finish | Total float | Free float | Vendor Responsible Party | Layton Discipline | CX Level | Equipment | Location | Contract | Layton Super |
| --- | --- | --- | --- | --- | --- | --- | --- | --- | --- | --- | --- | --- | --- | --- | --- | --- | --- | --- |
|  | 02 | **DC1-FOH-UPS-HSE-02 Cx L3** |  | 2026-04-01 | 2026-08-21 |  |  |  |  |  |  |  |  |  |  |  |  |  |
| DC1-FOH-UPS-L3-1030 |  | FOH-HSE UPS-HSE-02 FTE | 1d | 2026-04-01 A | 2026-04-01 A | DC1-UPS-HSE-L2-1010 | 100% |  |  |  |  | ROS | Commissioning | L3 | UPS |  |  |  |
| DC1-FOH-UPS-L3-1040 |  | FOH-HSE UPS-HSE-02 L3 Startup | 2d | 2026-08-19 | 2026-08-20 | DC1-FOH-UPS-L3-1030, QTS-1012050, QTS-1013980, DC1-FOH-UPS-L3-1010 SS |  |  |  | -73d | 0d | VER | Commissioning | L3 | UPS | FOH | BAB |  |
| DC1-FOH-UPS-L3-1050 |  | FOH-HSE UPS-HSE-02 L3 BMS/EPMS Programming | 1d | 2026-08-21 | 2026-08-21 | DC1-FOH-UPS-L3-1040 |  |  |  | -73d | 2d | PRM | Commissioning | L3 | UPS | FOH | BAB |  |
|  | 02 | **DC1-FOH-STS-HSE Cx L3** |  | 2026-03-05 | 2026-08-21 |  |  |  |  |  |  |  |  |  |  |  |  |  |
|  | 01 | **DC1-FOH-STS-HSE-01 Cx L3** |  | 2026-03-05 | 2026-08-21 |  |  |  |  |  |  |  |  |  |  |  |  |  |
| DC1-FOH-STS-L3-1000 |  | FOH-HSE STS-HSE-01 FTE | 1d | 2026-03-05 A | 2026-03-05 A | DC1-FOH-UPS-L3-1000 SS, DC1-STS-HSE-L2-1040 | 100% |  |  |  |  | ROS | Commissioning | L3 | STS |  |  |  |
| DC1-FOH-STS-L3-1010 |  | FOH-HSE STS-HSE-01 L3 Startup | 2d | 2026-08-19 | 2026-08-20 | DC1-FOH-STS-L3-1000, QTS-1013980 |  |  |  | -73d | 0d | VER | Commissioning | L3 | STS | FOH | BAB |  |
| DC1-FOH-STS-L3-1020 |  | FOH-HSE STS-HSE-01 L3 BMS/EPMS Programming | 1d | 2026-08-21 | 2026-08-21 | DC1-FOH-STS-L3-1010 |  |  |  | -73d | 2d | PRM | Commissioning | L3 | STS | FOH | BAB |  |
|  | 02 | **DC1-FOH-STS-HSE-02 Cx L3** |  | 2026-04-02 | 2026-08-21 |  |  |  |  |  |  |  |  |  |  |  |  |  |
| DC1-FOH-STS-L3-1030 |  | FOH-HSE STS-HSE-02 FTE | 1d | 2026-04-02 A | 2026-04-02 A | DC1-FOH-UPS-L3-1030, DC1-FOH-UPS-L3-1000, DC1-STS-HSE-L2-1050 | 100% | 2026-04-09 | 2026-04-09 |  |  | ROS | Commissioning | L3 | STS |  |  |  |
| DC1-FOH-STS-L3-1040 |  | FOH-HSE STS-HSE-02 L3 Startup | 2d | 2026-08-19 | 2026-08-20 | DC1-FOH-STS-L3-1030, QTS-1013980 |  |  |  | -73d | 0d | VER | Commissioning | L3 | STS | FOH | BAB |  |
| DC1-FOH-STS-L3-1050 |  | FOH-HSE STS-HSE-02 L3 BMS/EPMS Programming | 1d | 2026-08-21 | 2026-08-21 | DC1-FOH-STS-L3-1040 |  |  |  | -73d | 2d | PRM | Commissioning | L3 | STS | FOH | BAB |  |
|  | 03 | **DC1-FOH-XFMR-HSE Cx L3** |  | 2026-03-05 | 2026-08-19 |  |  |  |  |  |  |  |  |  |  |  |  |  |
|  | 01 | **DC1-FOH-XFMR-HSE-01 Cx L3** |  | 2026-03-05 | 2026-08-19 |  |  |  |  |  |  |  |  |  |  |  |  |  |
| DC1-FOH-XFMR-L3-1000 |  | FOH-HSE XFMR-STS-HSE-01 FTE | 1d | 2026-03-05 A | 2026-03-05 A | DC1-FOH-STS-L3-1000 SS, DC1-XFMR-HSE-L2-1030 | 100% |  |  |  |  | ROS | Commissioning | L3 | STS |  |  |  |
| DC1-FOH-XFMR-L3-1010 |  | FOH-HSE XFMR-STS-HSE-01 L3 Startup | 2d | 2026-06-01 A | 2026-06-01 A | DC1-FOH-XFMR-L3-1000 | 100% | 2026-06-24 | 2026-06-25 |  |  | ROS | Commissioning | L3 | STS | FOH |  | Travis Todaro |
| DC1-FOH-XFMR-L3-1020 |  | FOH-HSE XFMR-STS-HSE-01 L3 BMS/EPMS Programming | 1d | 2026-08-19 | 2026-08-19 | DC1-FOH-XFMR-L3-1010 |  |  |  | -71d | 4d | PRM | Commissioning | L3 | STS | FOH | BAB |  |
|  | 02 | **DC1-FOH-XFMR-HSE-02 Cx L3** |  | 2026-04-02 | 2026-08-19 |  |  |  |  |  |  |  |  |  |  |  |  |  |
| DC1-FOH-XFMR-L3-1030 |  | FOH-HSE XFMR-STS-HSE-02 FTE | 1d | 2026-04-02 A | 2026-04-02 A | DC1-FOH-STS-L3-1030, DC1-XFMR-HSE-L2-1040 | 100% |  |  |  |  | ROS | Commissioning | L3 | STS |  |  |  |
| DC1-FOH-XFMR-L3-1040 |  | FOH-HSE XFMR-STS-HSE-02 L3 Startup | 2d | 2026-06-01 A | 2026-06-01 A | DC1-FOH-XFMR-L3-1030 | 100% | 2026-06-24 | 2026-06-25 |  |  | ROS | Commissioning | L3 | STS | FOH |  | Travis Todaro |
| DC1-FOH-XFMR-L3-1050 |  | FOH-HSE XFMR-STS-HSE-02 L3 BMS/EPMS Programming | 1d | 2026-08-19 | 2026-08-19 | DC1-FOH-XFMR-L3-1040 |  |  |  | -71d | 4d | PRM | Commissioning | L3 | STS | FOH | BAB |  |
|  | 04 | **DC1-FOH-PNL-UPS-HSE Cx L3** |  | 2026-03-16 | 2026-08-21 |  |  |  |  |  |  |  |  |  |  |  |  |  |
|  | 01 | **DC1-FOH-PNL-UPS-HSE-01 Cx L3** |  | 2026-03-16 | 2026-08-21 |  |  |  |  |  |  |  |  |  |  |  |  |  |
| DC1-FOH-PNL-L3-2000 |  | FOH-HSE UPS-HSE-01 FTE | 1d | 2026-03-16 A | 2026-03-16 A | DC1-FOH-XFMR-L3-1000 SS, DC1-PNL-HSE-L2-1000 | 100% |  |  |  |  | ROS | Commissioning | L3 | UPS |  |  |  |
| DC1-FOH-PNL-L3-2010 |  | FOH-HSE UPS-HSE-01 L3 Startup | 2d | 2026-08-19 | 2026-08-20 | DC1-FOH-PNL-L3-2000, QTS-1012050, QTS-1013980 |  |  |  | -73d | 0d | VER | Commissioning | L3 | UPS | FOH | BAB |  |
| DC1-FOH-PNL-L3-2020 |  | FOH-HSE UPS-HSE-01 L3 BMS/EPMS Programming | 1d | 2026-08-21 | 2026-08-21 | DC1-FOH-PNL-L3-2010 |  |  |  | -73d | 2d | PRM | Commissioning | L3 | UPS | FOH | BAB |  |

Notes:
- DC1-FOH-UPS-L3-1040: Steps: EC Startup Report; Vendor Startup
- DC1-FOH-STS-L3-1010: Steps: EC Startup Report; Vendor Startup
- DC1-FOH-STS-L3-1040: Steps: EC Startup Report; Vendor Startup
- DC1-FOH-XFMR-L3-1010: Steps: EC Startup Report; Vendor Startup
- DC1-FOH-XFMR-L3-1040: Steps: EC Startup Report; Vendor Startup
- DC1-FOH-PNL-L3-2010: Steps: EC Startup Report; Vendor Startup

| ID | WBS | Activity | Duration | Start | Finish | Predecessors | Complete | Planned start | Planned finish | Total float | Free float | Vendor Responsible Party | Layton Discipline | CX Level | Equipment | Location | Contract | Layton Super |
| --- | --- | --- | --- | --- | --- | --- | --- | --- | --- | --- | --- | --- | --- | --- | --- | --- | --- | --- |
|  | 02 | **DC1-FOH-PNL-UPS-HSE-02 Cx L3** |  | 2026-04-02 | 2026-08-21 |  |  |  |  |  |  |  |  |  |  |  |  |  |
| DC1-FOH-PNL-L3-2030 |  | FOH-HSE UPS-HSE-02 FTE | 1d | 2026-04-02 A | 2026-04-02 A | DC1-FOH-XFMR-L3-1030, DC1-PNL-HSE-L2-1010 | 100% |  |  |  |  | ROS | Commissioning | L3 | UPS |  |  |  |
| DC1-FOH-PNL-L3-2040 |  | FOH-HSE UPS-HSE-02 L3 Startup | 2d | 2026-08-19 | 2026-08-20 | DC1-FOH-PNL-L3-2030, QTS-1012050, QTS-1013980 |  |  |  | -73d | 0d | ROS | Commissioning | L3 | UPS | FOH | BAB |  |
| DC1-FOH-PNL-L3-2050 |  | FOH-HSE UPS-HSE-02 L3 BMS/EPMS Programming | 1d | 2026-08-21 | 2026-08-21 | DC1-FOH-PNL-L3-2040 |  |  |  | -73d | 2d | PRM | Commissioning | L3 | UPS | FOH | BAB |  |
|  | 05 | **DC1-FOH-PNLs Cx L3** |  | 2026-03-17 | 2026-08-19 |  |  |  |  |  |  |  |  |  |  |  |  |  |
|  | 01 | **DC1-FOH-PNL-ADM1 Cx L3** |  | 2026-03-17 | 2026-08-19 |  |  |  |  |  |  |  |  |  |  |  |  |  |
| DC1-FOH-PNL-L3-1000 |  | FOH PNL-ADM1 FTE | 1d | 2026-03-17 A | 2026-03-17 A | DC1-FOH-PNL-L3-2000 SS, DC1-FOH-PNL-L2-1000 | 100% |  |  |  |  | ROS | Commissioning | L3 | PANEL |  |  |  |
| DC1-FOH-PNL-L3-1010 |  | FOH PNL-ADM1 L3 Startup | 2d | 2026-06-01 A | 2026-06-01 A | DC1-FOH-PNL-L3-1000 | 100% | 2026-06-24 | 2026-06-25 |  |  | ROS | Commissioning | L3 | PANEL | FOH |  | Travis Todaro |
| DC1-FOH-PNL-L3-1020 |  | FOH PNL-ADM1 L3 BMS/EPMS Programming | 1d | 2026-08-19 | 2026-08-19 | DC1-FOH-PNL-L3-1010 |  |  |  | -71d | 4d | PRM | Commissioning | L3 | PANEL | FOH | BAB |  |
|  | 02 | **DC1-FOH-PNL-DH11 Cx L3** |  | 2026-07-24 | 2026-07-25 |  |  |  |  |  |  |  |  |  |  |  |  |  |
| DC1-FOH-PNL-L3-1030 |  | FOH PNL-DH11 FTE | 1d | 2026-07-24 A | 2026-07-24 A | DC1-FOH-PNL-L3-2000, DC1-FOH-PNL-L2-1010 | 100% |  |  |  |  | ROS | Commissioning | L3 | PANEL | FOH | BAB |  |
| DC1-FOH-PNL-L3-1040 |  | FOH PNL-DH11 L3 Startup | 2d | 2026-07-24 A | 2026-07-24 A | DC1-FOH-PNL-L3-1030 | 100% | 2026-07-27 | 2026-07-28 |  |  | ROS | Commissioning | L3 | PANEL | FOH | BAB |  |
| DC1-FOH-PNL-L3-1050 |  | FOH PNL-DH11 L3 BMS/EPMS Programming | 1d | 2026-07-25 A | 2026-07-25 A | DC1-FOH-PNL-L3-1040 | 100% | 2026-07-29 | 2026-07-29 |  |  | PRM | Commissioning | L3 | PANEL | FOH | BAB |  |
|  | 03 | **DC1-FOH-PNL-ADM2 Cx L3** |  | 2026-04-01 | 2026-08-19 |  |  |  |  |  |  |  |  |  |  |  |  |  |
| DC1-FOH-PNL-L3-1060 |  | FOH PNL-ADM2 FTE | 1d | 2026-04-01 A | 2026-04-01 A | DC1-FOH-PNL-L3-2000, DC1-FOH-PNL-L2-1020 | 100% |  |  |  |  | ROS | Commissioning | L3 | PANEL |  |  |  |
| DC1-FOH-PNL-L3-1070 |  | FOH PNL-ADM2 L3 Startup | 2d | 2026-06-01 A | 2026-06-01 A | DC1-FOH-PNL-L3-1060 | 100% | 2026-06-24 | 2026-06-25 |  |  | ROS | Commissioning | L3 | PANEL | FOH |  | Travis Todaro |
| DC1-FOH-PNL-L3-1080 |  | FOH PNL-ADM2 L3 BMS/EPMS Programming | 1d | 2026-08-19 | 2026-08-19 | DC1-FOH-PNL-L3-1070 |  |  |  | -71d | 4d | PRM | Commissioning | L3 | PANEL | FOH | BAB |  |
|  | 04 | **DC1-FOH-PNL-DH21 Cx L3** |  | 2026-07-24 | 2026-07-24 |  |  |  |  |  |  |  |  |  |  |  |  |  |
| DC1-FOH-PNL-L3-1090 |  | FOH PNL-DH21 FTE | 1d | 2026-07-24 A | 2026-07-24 A | DC1-FOH-PNL-L3-2000, DC1-FOH-PNL-L2-1030 | 100% |  |  |  |  | ROS | Commissioning | L3 | PANEL | FOH | BAB |  |
| DC1-FOH-PNL-L3-1100 |  | FOH PNL-DH21 L3 Startup | 2d | 2026-07-24 A | 2026-07-24 A | DC1-FOH-PNL-L3-1090 | 100% | 2026-07-27 | 2026-07-28 |  |  | ROS | Commissioning | L3 | PANEL | FOH | BAB |  |
| DC1-FOH-PNL-L3-1110 |  | FOH PNL-DH21 L3 BMS/EPMS Programming | 1d | 2026-07-24 A | 2026-07-24 A | DC1-FOH-PNL-L3-1100 | 100% | 2026-07-29 | 2026-07-29 |  |  | PRM | Commissioning | L3 | PANEL | FOH | BAB |  |
|  | 06 | **DC1-FOH-RTUs Cx L3** |  | 2026-04-27 | 2026-08-21 |  |  |  |  |  |  |  |  |  |  |  |  |  |
|  | 01 | **DC1-FOH-RTU-RT-01 Cx L3** |  | 2026-04-27 | 2026-08-21 |  |  |  |  |  |  |  |  |  |  |  |  |  |
| DC1-FOH-RTU-L3-1000 |  | FOH RTU-RT-01 FTE | 1d | 2026-04-27 A | 2026-04-27 A | DC1-FOH-PNL-L3-2000, DC1-FOH-RTU-L2-1000 | 100% |  |  |  |  | ROS | Commissioning | L3 | RTU |  |  |  |
| DC1-FOH-RTU-L3-1010 |  | FOH RTU-RT-01 L3 Startup | 2d | 2026-08-19 | 2026-08-20 | DC1-FOH-RTU-L3-1000 |  |  |  | -99d | 0d | TAS | Commissioning | L3 | RTU | FOH | BAB |  |
| DC1-FOH-RTU-L3-1020 |  | FOH RTU-RT-01 L3 BMS/EPMS Programming | 1d | 2026-08-21 | 2026-08-21 | DC1-FOH-RTU-L3-1010 |  |  |  | -99d | 0d | PRM | Commissioning | L3 | RTU | FOH | BAB |  |

Notes:
- DC1-FOH-PNL-L3-2040: Steps: EC Startup Report; Vendor Startup
- DC1-FOH-PNL-L3-1010: Steps: EC Startup Report; Vendor Startup
- DC1-FOH-PNL-L3-1040: Steps: EC Startup Report; Vendor Startup
- DC1-FOH-PNL-L3-1070: Steps: EC Startup Report; Vendor Startup
- DC1-FOH-PNL-L3-1100: Steps: EC Startup Report; Vendor Startup
- DC1-FOH-RTU-L3-1010: Steps: EC Startup Report; MC Startup Report; Vendor Startup

| ID | WBS | Activity | Duration | Start | Finish | Predecessors | Complete | Planned start | Planned finish | Total float | Free float | Vendor Responsible Party | Layton Discipline | CX Level | Equipment | Location | Contract | Fed From |
| --- | --- | --- | --- | --- | --- | --- | --- | --- | --- | --- | --- | --- | --- | --- | --- | --- | --- | --- |
|  | 02 | **DC1-FOH-RTU-RT-02 Cx L3** |  | 2026-04-27 | 2026-08-21 |  |  |  |  |  |  |  |  |  |  |  |  |  |
| DC1-FOH-RTU-L3-1030 |  | FOH RTU-RT-02 FTE | 1d | 2026-04-27 A | 2026-04-27 A | DC1-FOH-PNL-L3-2000, DC1-FOH-RTU-L2-1010 | 100% | 2026-04-22 | 2026-04-22 |  |  | ROS | Commissioning | L3 | RTU |  |  |  |
| DC1-FOH-RTU-L3-1040 |  | FOH RTU-RT-02 L3 Startup | 2d | 2026-08-19 | 2026-08-20 | DC1-FOH-RTU-L3-1030 |  |  |  | -99d | 0d | TAS | Commissioning | L3 | RTU | FOH | BAB |  |
| DC1-FOH-RTU-L3-1050 |  | FOH RTU-RT-02 L3 BMS/EPMS Programming | 1d | 2026-08-21 | 2026-08-21 | DC1-FOH-RTU-L3-1040 |  |  |  | -99d | 0d | PRM | Commissioning | L3 | RTU | FOH | BAB |  |
|  | 07 | **DC1-FOH-Split Units-Floor 1-HSE Cx L3** |  | 2026-07-22 | 2026-08-25 |  |  |  |  |  |  |  |  |  |  |  |  |  |
|  | 01 | **DC1-House SDF 0163 Split Units L3** |  | 2026-08-20 | 2026-08-25 |  |  |  |  |  |  |  |  |  |  |  |  |  |
| DC1-SS-L3-Cx-2880 |  | DC1-House SDF 0163 Split Units FTE | 1d | 2026-08-20 | 2026-08-20 | DC1-FOH-PNL-L3-1060, DC1-SS-L2-Cx-2690 |  |  |  | -75d | 0d | ROS | Commissioning | L3 | SPLIT UNIT | FOH | BAB | HDP-A21-01 |
| DC1-SS-L3-Cx-3020 |  | DC1-House SDF 0163 Split Units L3 Startup | 2d | 2026-08-21 | 2026-08-24 | DC1-SS-L3-Cx-2880 |  |  |  | -75d | 0d | BAM | Commissioning | L3 | SPLIT UNIT | FOH | BAB | HDP-A21-01 |
| DC1-SS-L3-Cx-3030 |  | DC1-House SDF 0163 Split Units L3 BMS/EPMS Programming | 1d | 2026-08-25 | 2026-08-25 | DC1-SS-L3-Cx-3020 |  |  |  | -75d | 0d | PRM | Commissioning | L3 | SPLIT UNIT | FOH | BAB | HDP-A21-01 |
|  | 02 | **DC1-House MMR1A 0134 Split Units L3** |  | 2026-07-23 | 2026-07-24 |  |  |  |  |  |  |  |  |  |  |  |  |  |
| DC1-SS-L3-Cx-2840 |  | DC1-House MMR1A 0134 Split Units FTE | 1d | 2026-07-23 A | 2026-07-23 A | DC1-FOH-PNL-L3-1060, DC1-SS-L2-Cx-2700 | 100% | 2026-07-30 | 2026-07-30 |  |  | ROS | Commissioning | L3 | SPLIT UNIT | FOH | BAB | HDP-A21-01, B21-01, C21-01, D21-01 |
| DC1-SS-L3-Cx-3040 |  | DC1-House MMR1A 0134 Split Units L3 Startup | 2d | 2026-07-24 A | 2026-07-24 A | DC1-SS-L3-Cx-2840 | 100% | 2026-07-31 | 2026-08-03 |  |  | BAM | Commissioning | L3 | SPLIT UNIT | FOH | BAB | HDP-A21-01, B21-01, C21-01, D21-01 |
| DC1-SS-L3-Cx-3050 |  | DC1-House MMR1A 0134 Split Units L3 BMS/EPMS Programming | 1d | 2026-07-24 A | 2026-07-24 A | DC1-SS-L3-Cx-3040 | 100% | 2026-08-04 | 2026-08-04 |  |  | PRM | Commissioning | L3 | SPLIT UNIT | FOH | BAB | HDP-A21-01, B21-01, C21-01, D21-01 |
|  | 03 | **DC1-House EMERG ELEC 0172 Split Units L3** |  | 2026-07-30 | 2026-07-30 |  |  |  |  |  |  |  |  |  |  |  |  |  |
| DC1-SS-L3-Cx-2870 |  | DC1-House EMERG ELEC 0172 Split Units FTE | 1d | 2026-07-30 A | 2026-07-30 A | DC1-FOH-PNL-L3-1060, DC1-SS-L2-Cx-2710 | 100% |  |  |  |  | ROS | Commissioning | L3 | SPLIT UNIT | FOH | BAB | HDP-B21-01 |
| DC1-SS-L3-Cx-3070 |  | DC1-House EMERG ELEC 0172 Split Units L3 Startup | 2d | 2026-07-30 A | 2026-07-30 A | DC1-SS-L3-Cx-2870 | 100% | 2026-07-31 | 2026-08-03 |  |  | BAM | Commissioning | L3 | SPLIT UNIT | FOH | BAB |  |
| DC1-SS-L3-Cx-3075 |  | DC1-House EMERG ELEC 0172 Split Units L3 BMS/EPMS Programming | 1d | 2026-07-30 A | 2026-07-30 A | DC1-SS-L3-Cx-3070 | 100% | 2026-08-04 | 2026-08-04 |  |  | PRM | Commissioning | L3 | SPLIT UNIT | FOH | BAB |  |
|  | 04 | **DC1-House ELEV MACH 0156 Split Units L3** |  | 2026-07-22 | 2026-07-22 |  |  |  |  |  |  |  |  |  |  |  |  |  |
| DC1-SS-L3-Cx-2850 |  | DC1-House ELEV MACH 0156 Split Units FTE | 1d | 2026-07-22 A | 2026-07-22 A | DC1-FOH-PNL-L3-1060, DC1-SS-L2-Cx-2670 | 100% | 2026-07-27 | 2026-07-27 |  |  | ROS | Commissioning | L3 | SPLIT UNIT | FOH | BAB | HDP-C21-01 |
| DC1-SS-L3-Cx-3080 |  | DC1-House ELEV MACH 0156 Split Units L3 Startup | 2d | 2026-07-22 A | 2026-07-22 A | DC1-SS-L3-Cx-2850 | 100% | 2026-07-28 | 2026-07-29 |  |  | BAM | Commissioning | L3 | SPLIT UNIT | FOH | BAB |  |
| DC1-SS-L3-Cx-3090 |  | DC1-House ELEV MACH 0156 Split Units L3 BMS/EPMS Programming | 1d | 2026-07-22 A | 2026-07-22 A | DC1-SS-L3-Cx-3080 | 100% | 2026-07-30 | 2026-07-30 |  |  | PRM | Commissioning | L3 | SPLIT UNIT | FOH | BAB |  |
|  | 05 | **DC1-House ELEC 0173 Split Units L3** |  | 2026-08-07 | 2026-08-08 |  |  |  |  |  |  |  |  |  |  |  |  |  |
| DC1-SS-L3-Cx-2860 |  | DC1-House ELEC 0173 Split Units FTE | 1d | 2026-08-07 A | 2026-08-07 A | DC1-FOH-PNL-L3-1060, DC1-SS-L2-Cx-2680 | 100% | 2026-08-06 | 2026-08-06 |  |  | ROS | Commissioning | L3 | SPLIT UNIT | FOH | BAB | HDP-A12-01 |
| DC1-SS-L3-Cx-3110 |  | DC1-House ELEC 0173 Split Units L3 BMS/EPMS Programming | 1d | 2026-08-07 A | 2026-08-07 A | DC1-SS-L3-Cx-3100 | 100% | 2026-08-11 | 2026-08-11 |  |  | PRM | Commissioning | L3 | SPLIT UNIT | FOH | BAB |  |
| DC1-SS-L3-Cx-3100 |  | DC1-House ELEC 0173 Split Units L3 Startup | 2d | 2026-08-08 A | 2026-08-08 A | DC1-SS-L3-Cx-2860 | 100% | 2026-08-07 | 2026-08-10 |  |  | BAM | Commissioning | L3 | SPLIT UNIT | FOH | BAB |  |

Notes:
- DC1-FOH-RTU-L3-1040: Steps: EC Startup Report; MC Startup Report; Vendor Startup
- DC1-SS-L3-Cx-3020: Steps: EC Startup Report; MC Startup Report; Vendor Startup
- DC1-SS-L3-Cx-3040: Steps: EC Startup Report; MC Startup Report; Vendor Startup
- DC1-SS-L3-Cx-3070: Steps: EC Startup Report; MC Startup Report; Vendor Startup
- DC1-SS-L3-Cx-3080: Steps: EC Startup Report; MC Startup Report; Vendor Startup
- DC1-SS-L3-Cx-3100: Steps: EC Startup Report; MC Startup Report; Vendor Startup

| ID | WBS | Activity | Duration | Start | Finish | Predecessors | Complete | Planned start | Planned finish | Total float | Free float | Fed From | Vendor Responsible Party | Layton Discipline | Location | CX Level | Equipment | Contract | Layton Super |
| --- | --- | --- | --- | --- | --- | --- | --- | --- | --- | --- | --- | --- | --- | --- | --- | --- | --- | --- | --- |
|  | 06 | **DC1-House DCIM 0133 Split Units L3** |  | 2026-07-24 | 2026-08-21 |  |  |  |  |  |  |  |  |  |  |  |  |  |  |
| DC1-SS-L3-Cx-2890 |  | DC1-House DCIM 0133 Split Units FTE | 1d | 2026-07-24 A | 2026-07-24 A | DC1-FOH-PNL-L3-1060, DC1-SS-L2-Cx-2660 | 100% | 2026-07-30 | 2026-07-30 |  |  | HDP-D21-01 | ROS | Commissioning | FOH | L3 | SPLIT UNIT | BAB |  |
| DC1-SS-L3-Cx-3120 |  | DC1-House DCIM 0133 Split Units L3 Startup | 2d | 2026-08-19 | 2026-08-20 | DC1-SS-L3-Cx-2890 |  |  |  | -73d | 0d |  | BAM | Commissioning | FOH | L3 | SPLIT UNIT | BAB |  |
| DC1-SS-L3-Cx-3130 |  | DC1-House DCIM 0133 Split Units L3 BMS/EPMS Programming | 1d | 2026-08-21 | 2026-08-21 | DC1-SS-L3-Cx-3120 |  |  |  | -73d | 2d |  | PRM | Commissioning | FOH | L3 | SPLIT UNIT | BAB |  |
|  | 08 | **DC1-FOH-Split Units-Floor 2-HSE Cx L3** |  | 2026-06-15 | 2026-08-06 |  |  |  |  |  |  |  |  |  |  |  |  |  |  |
|  | 01 | **DC1 House MMR2A 0212 Split Units L3** |  | 2026-08-05 | 2026-08-06 |  |  |  |  |  |  |  |  |  |  |  |  |  |  |
| DC1-SS-L3-Cx-2900 |  | DC1 House MMR2A 0212 Split Units FTE | 1d | 2026-08-05 A | 2026-08-05 A | DC1-FOH-PNL-L3-1060, DC1-SS-L2-Cx-2730 | 100% | 2026-08-06 | 2026-08-06 |  |  | HDP-A21-01, B21-01, C21-01, D21-01 | ROS | Commissioning | FOH | L3 | SPLIT UNIT | BAB |  |
| DC1-SS-L3-Cx-3140 |  | DC1 House MMR2A 0212 Split Units L3 Startup | 2d | 2026-08-06 A | 2026-08-06 A | DC1-SS-L3-Cx-2900 | 100% | 2026-08-07 | 2026-08-10 |  |  |  | BAM | Commissioning | FOH | L3 | SPLIT UNIT | BAB |  |
| DC1-SS-L3-Cx-3150 |  | DC1 House MMR2A 0212 Split Units L3 BMS/EPMS Programming | 1d | 2026-08-06 A | 2026-08-06 A | DC1-SS-L3-Cx-3140 | 100% | 2026-08-11 | 2026-08-11 |  |  |  | PRM | Commissioning | FOH | L3 | SPLIT UNIT | BAB |  |
|  | 02 | **DC1 House IDF 0213 Split Units L3** |  | 2026-07-30 | 2026-07-30 |  |  |  |  |  |  |  |  |  |  |  |  |  |  |
| DC1-SS-L3-Cx-2910 |  | DC1 House IDF 0213 Split Units FTE | 1d | 2026-07-30 A | 2026-07-30 A | DC1-FOH-PNL-L3-1060, DC1-SS-L2-Cx-2740 | 100% | 2026-08-03 | 2026-08-03 |  |  | HDP-A21-01, B21-01 | ROS | Commissioning | FOH | L3 | SPLIT UNIT | BAB |  |
| DC1-SS-L3-Cx-3160 |  | DC1 House IDF 0213 Split Units L3 Startup | 2d | 2026-07-30 A | 2026-07-30 A | DC1-SS-L3-Cx-2910 | 100% | 2026-08-04 | 2026-08-05 |  |  |  | BAM | Commissioning | FOH | L3 | SPLIT UNIT | BAB |  |
| DC1-SS-L3-Cx-3170 |  | DC1 House IDF 0213 Split Units L3 BMS/EPMS Programming | 1d | 2026-07-30 A | 2026-07-30 A | DC1-SS-L3-Cx-3160 | 100% | 2026-08-06 | 2026-08-06 |  |  |  | PRM | Commissioning | FOH | L3 | SPLIT UNIT | BAB |  |
|  | 03 | **DC1 House House Electrical 0273 Split Units L3** |  | 2026-06-15 | 2026-07-21 |  |  |  |  |  |  |  |  |  |  |  |  |  |  |
| DC1-SS-L3-Cx-2920 |  | DC1 House House Electrical 0273 Split Units FTE | 1d | 2026-06-15 A | 2026-06-15 A | DC1-FOH-PNL-L3-1060, DC1-SS-L2-Cx-2720 | 100% | 2026-07-20 | 2026-07-20 |  |  | HDP-B21-01, C21-01, D21-01 | ROS | Commissioning | FOH | L3 | SPLIT UNIT |  | Travis Todaro |
| DC1-SS-L3-Cx-3180 |  | DC1 House House Electrical 0273 Split Units L3 Startup | 2d | 2026-06-15 A | 2026-06-15 A | DC1-SS-L3-Cx-2920 | 100% | 2026-07-21 | 2026-07-22 |  |  |  | BAM | Commissioning | FOH | L3 | SPLIT UNIT |  | Travis Todaro |
| DC1-SS-L3-Cx-3190 |  | DC1 House House Electrical 0273 Split Units L3 BMS/EPMS Programming | 1d | 2026-07-21 A | 2026-07-21 A | DC1-SS-L3-Cx-3180 | 100% | 2026-07-22 | 2026-07-22 |  |  |  | PRM | Commissioning | FOH | L3 | SPLIT UNIT |  |  |
|  | 1 | **DC1 House ELEV MACH 0224 Split Units L3** |  | 2026-07-24 | 2026-07-24 |  |  |  |  |  |  |  |  |  |  |  |  |  |  |
| DC1-SS-L3-Cx-5090 |  | DC1 House ELEV MACH 0224 Split Units FTE | 1d | 2026-07-24 A | 2026-07-24 A | DC1-FOH-PNL-L3-1060, DC1-SS-L2-Cx-3060 | 100% | 2026-07-23 | 2026-07-23 |  |  | HDP-B21-01, C21-01, D21-01 | ROS | Commissioning | FOH | L3 | SPLIT UNIT | BAB |  |
| DC1-SS-L3-Cx-5100 |  | DC1 House ELEV MACH 0224 Split Units L3 Startup | 2d | 2026-07-24 A | 2026-07-24 A | DC1-SS-L3-Cx-5090 | 100% | 2026-07-24 | 2026-07-27 |  |  |  | BAM | Commissioning | FOH | L3 | SPLIT UNIT | BAB |  |
| DC1-SS-L3-Cx-5110 |  | DC1 House ELEV MACH 0224 Split Units L3 BMS/EPMS Programming | 1d | 2026-07-24 A | 2026-07-24 A | DC1-SS-L3-Cx-5100 | 100% | 2026-07-28 | 2026-07-28 |  |  |  | PRM | Commissioning | FOH | L3 | SPLIT UNIT | BAB |  |
|  | 02 | **DC1-Back of House (BOH) Cx L3** |  | 2026-06-25 | 2026-08-27 |  |  |  |  |  |  |  |  |  |  |  |  |  |  |
|  | 01 | **DC1-BOH-GEN-HSE-2 Cx L3** |  | 2026-07-30 | 2026-08-21 |  |  |  |  |  |  |  |  |  |  |  |  |  |  |
| DC1-GEN-HSE-L3-1030 |  | BOH GEN-HSE-2 FTE | 1d | 2026-07-30 A | 2026-07-30 A | DC1-SWBD-HSE-L3-1030, DC1-GEN-HSE-L2-1010 | 100% |  |  |  |  |  | ROS | Commissioning | BOH | L3 | GEN | BAB |  |
| DC1-GEN-HSE-L3-1040 |  | BOH GEN-HSE-2 L3 Startup | 2d | 2026-08-19 | 2026-08-20 | DC1-GEN-HSE-L3-1030 |  |  |  | -13d | 0d |  | YCY | Commissioning | BOH | L3 | GEN | BAB |  |
| DC1-GEN-HSE-L3-1050 |  | BOH GEN-HSE-2 L3 BMS/EPMS Programming | 1d | 2026-08-21 | 2026-08-21 | DC1-GEN-HSE-L3-1040 |  |  |  | -13d | 4d |  | PRM | Commissioning | BOH | L3 | GEN | BAB |  |

Notes:
- DC1-SS-L3-Cx-3120: Steps: EC Startup Report; MC Startup Report; Vendor Startup
- DC1-SS-L3-Cx-3140: Steps: EC Startup Report; MC Startup Report; Vendor Startup
- DC1-SS-L3-Cx-3160: Steps: EC Startup Report; MC Startup Report; Vendor Startup
- DC1-SS-L3-Cx-3180: Steps: EC Startup Report; MC Startup Report; Vendor Startup
- DC1-SS-L3-Cx-5100: Steps: EC Startup Report; MC Startup Report; Vendor Startup
- DC1-GEN-HSE-L3-1040: Steps: EC Startup Report; MC Startup Report; Vendor Startup

| ID | WBS | Activity | Duration | Start | Finish | Predecessors | Complete | Planned start | Planned finish | Total float | Free float | Vendor Responsible Party | Allucent CSI Group | Layton Discipline | Location | CX Level | Equipment | Contract | Layton Super |
| --- | --- | --- | --- | --- | --- | --- | --- | --- | --- | --- | --- | --- | --- | --- | --- | --- | --- | --- | --- |
|  | 02 | **DC1-BOH-XFMR-HSE-2 Cx L3** |  | 2026-07-23 | 2026-08-21 |  |  |  |  |  |  |  |  |  |  |  |  |  |  |
| DC1-XFMR-HSE-L3-1030 |  | BOH XFMR-HSE-2 FTE | 1d | 2026-07-23 A | 2026-07-23 A | DC1-XFMR-HSE-L2-1010, QTS - 26611 | 100% |  |  |  |  | ROS | 01ADMIN | Commissioning | BOH | L3 | XFMR | BAB |  |
| DC1-XFMR-HSE-L3-1040 |  | BOH XFMR-HSE-2 L3 Startup | 2d | 2026-08-19 | 2026-08-20 | DC1-XFMR-HSE-L3-1030 |  |  |  | -13d | 0d | VTC | 01ADMIN | Commissioning | BOH | L3 | XFMR | BAB |  |
| DC1-XFMR-HSE-L3-1050 |  | BOH XFMR-HSE-2 L3 BMS/EPMS Programming | 1d | 2026-08-21 | 2026-08-21 | DC1-XFMR-HSE-L3-1040 |  |  |  | -13d | 4d | PRM | 01ADMIN | Commissioning | BOH | L3 | XFMR | BAB |  |
|  | 03 | **DC1-BOH-SWBD-HSE-2 Cx L3** |  | 2026-06-25 | 2026-08-21 |  |  |  |  |  |  |  |  |  |  |  |  |  |  |
| DC1-SWBD-HSE-L3-1030 |  | BOH SWBD-HSE-2 FTE | 1d | 2026-06-25 A | 2026-06-25 A | DC1-SWBD-HSE-L2-1010, QTS - 26611 | 100% | 2026-06-26 | 2026-06-26 |  |  | ROS |  | Commissioning | BOH | L3 | SWBD |  | Travis Todaro |
| DC1-SWBD-HSE-L3-1040 |  | BOH SWBD-HSE-2 L3 Startup | 2d | 2026-08-19 | 2026-08-20 | DC1-SWBD-HSE-L3-1030 |  |  |  | -13d | 0d | PHE |  | Commissioning | BOH | L3 | SWBD | BAB |  |
| DC1-SWBD-HSE-L3-1050 |  | BOH SWBD-HSE-2 L3 BMS/EPMS Programming | 1d | 2026-08-21 | 2026-08-21 | DC1-SWBD-HSE-L3-1040 |  |  |  | -13d | 4d | PRM |  | Commissioning | BOH | L3 | SWBD | BAB |  |
|  | 04 | **DC1-BOH-UPSs Cx L3** |  | 2026-07-30 | 2026-08-27 |  |  |  |  |  |  |  |  |  |  |  |  |  |  |
|  | 01 | **DC1-BOH-UPS-HSE Cx L3** |  | 2026-08-21 | 2026-08-26 |  |  |  |  |  |  |  |  |  |  |  |  |  |  |
|  | 03 | **DC1-BOH-UPS-HSE-03 Cx L3** |  | 2026-08-21 | 2026-08-26 |  |  |  |  |  |  |  |  |  |  |  |  |  |  |
| DC1-BOH-UPS-L3-1060 |  | BOH-HSE UPS-HSE-03 FTE | 1d | 2026-08-21 | 2026-08-21 | DC1-SWD-L3-CX-1180, DC1-UPS-HSE-L2-1020 |  |  |  | -17d | 0d | ROS |  | Commissioning | BOH | L3 | UPS | BAB |  |
| DC1-BOH-UPS-L3-1070 |  | BOH-HSE UPS-HSE-03 L3 Startup | 2d | 2026-08-24 | 2026-08-25 | DC1-BOH-UPS-L3-1060, QTS-1012050, QTS-1013980 |  |  |  | -16d | 0d | ROS |  | Commissioning | BOH | L3 | UPS | BAB |  |
| DC1-BOH-UPS-L3-1080 |  | BOH-HSE UPS-HSE-03 L3 BMS/EPMS Programming | 1d | 2026-08-26 | 2026-08-26 | DC1-BOH-UPS-L3-1070 |  |  |  | -16d | 1d | PRM |  | Commissioning | BOH | L3 | UPS | BAB |  |
|  | 04 | **DC1-BOH-UPS-HSE-04 Cx L3** |  | 2026-08-21 | 2026-08-26 |  |  |  |  |  |  |  |  |  |  |  |  |  |  |
| DC1-BOH-UPS-L3-1090 |  | BOH-HSE UPS-HSE-04 FTE | 1d | 2026-08-21 | 2026-08-21 | DC1-SWBD-HSE-L3-1030, DC1-UPS-HSE-L2-1030 |  |  |  | -17d | 0d | ROS |  | Commissioning | BOH | L3 | UPS | BAB |  |
| DC1-BOH-UPS-L3-1100 |  | BOH-HSE UPS-HSE-04 L3 Startup | 2d | 2026-08-24 | 2026-08-25 | DC1-BOH-UPS-L3-1090, QTS-1012050, QTS-1013980 |  |  |  | -16d | 0d | ROS |  | Commissioning | BOH | L3 | UPS | BAB |  |
| DC1-BOH-UPS-L3-1110 |  | BOH-HSE UPS-HSE-04 L3 BMS/EPMS Programming | 1d | 2026-08-26 | 2026-08-26 | DC1-BOH-UPS-L3-1100 |  |  |  | -16d | 1d | PRM |  | Commissioning | BOH | L3 | UPS | BAB |  |
|  | 02 | **DC1-BOH-STS-HSE Cx L3** |  | 2026-08-24 | 2026-08-27 |  |  |  |  |  |  |  |  |  |  |  |  |  |  |
|  | 03 | **DC1-BOH-STS-HSE-03 Cx L3** |  | 2026-08-24 | 2026-08-27 |  |  |  |  |  |  |  |  |  |  |  |  |  |  |
| DC1-BOH-STS-L3-1060 |  | BOH-HSE STS-HSE-03 FTE | 1d | 2026-08-24 | 2026-08-24 | DC1-BOH-UPS-L3-1090, DC1-BOH-UPS-L3-1060, DC1-STS-HSE-L2-1060 |  |  |  | -17d | 0d | ROS |  | Commissioning | BOH | L3 | STS | BAB |  |
| DC1-BOH-STS-L3-1070 |  | BOH-HSE STS-HSE-03 L3 Startup | 2d | 2026-08-25 | 2026-08-26 | DC1-BOH-STS-L3-1060, QTS-1013980 |  |  |  | -17d | 0d | VER |  | Commissioning | BOH | L3 | STS | BAB |  |
| DC1-BOH-STS-L3-1080 |  | BOH-HSE STS-HSE-03 L3 BMS/EPMS Programming | 1d | 2026-08-27 | 2026-08-27 | DC1-BOH-STS-L3-1070 |  |  |  | -17d | 0d | PRM |  | Commissioning | BOH | L3 | STS | BAB |  |
|  | 04 | **DC1-BOH-STS-HSE-04 Cx L3** |  | 2026-08-24 | 2026-08-27 |  |  |  |  |  |  |  |  |  |  |  |  |  |  |
| DC1-BOH-STS-L3-1090 |  | BOH-HSE STS-HSE-04 FTE | 1d | 2026-08-24 | 2026-08-24 | DC1-BOH-UPS-L3-1090, DC1-BOH-UPS-L3-1060, DC1-STS-HSE-L2-1070 |  |  |  | -17d | 0d | ROS |  | Commissioning | BOH | L3 | STS | BAB |  |
| DC1-BOH-STS-L3-1100 |  | BOH-HSE STS-HSE-04 L3 Startup | 2d | 2026-08-25 | 2026-08-26 | DC1-BOH-STS-L3-1090, QTS-1013980 |  |  |  | -17d | 0d | VER |  | Commissioning | BOH | L3 | STS | BAB |  |
| DC1-BOH-STS-L3-1110 |  | BOH-HSE STS-HSE-04 L3 BMS/EPMS Programming | 1d | 2026-08-27 | 2026-08-27 | DC1-BOH-STS-L3-1100 |  |  |  | -17d | 0d | PRM |  | Commissioning | BOH | L3 | STS | BAB |  |

Notes:
- DC1-XFMR-HSE-L3-1040: Steps: EC Startup Report; Vendor Startup
- DC1-SWBD-HSE-L3-1040: Steps: EC Startup Report; Vendor Startup
- DC1-BOH-UPS-L3-1070: Steps: EC Startup Report; Vendor Startup
- DC1-BOH-UPS-L3-1100: Steps: EC Startup Report; Vendor Startup
- DC1-BOH-STS-L3-1070: Steps: EC Startup Report; Vendor Startup
- DC1-BOH-STS-L3-1100: Steps: EC Startup Report; Vendor Startup

| ID | WBS | Activity | Duration | Start | Finish | Predecessors | Complete | Planned start | Planned finish | Total float | Free float | Vendor Responsible Party | Layton Discipline | Location | CX Level | Equipment | Contract | Layton Super |
| --- | --- | --- | --- | --- | --- | --- | --- | --- | --- | --- | --- | --- | --- | --- | --- | --- | --- | --- |
|  | 03 | **DC1-BOH-XFMR-HSE Cx L3** |  | 2026-07-30 | 2026-08-21 |  |  |  |  |  |  |  |  |  |  |  |  |  |
|  | 03 | **DC1-BOH-XFMR-HSE-03 Cx L3** |  | 2026-07-30 | 2026-08-21 |  |  |  |  |  |  |  |  |  |  |  |  |  |
| DC1-BOH-XFMR-L3-1060 |  | BOH-HSE XFMR-STS-HSE-03 FTE | 1d | 2026-07-30 A | 2026-07-30 A | DC1-XFMR-HSE-L2-1050 | 100% | 2026-08-04 | 2026-08-04 |  |  | ROS | Commissioning | BOH | L3 | STS | BAB |  |
| DC1-BOH-XFMR-L3-1070 |  | BOH-HSE XFMR-STS-HSE-03 L3 Startup | 2d | 2026-08-19 | 2026-08-20 | DC1-BOH-XFMR-L3-1060 |  |  |  | -13d | 0d | ROS | Commissioning | BOH | L3 | STS | BAB |  |
| DC1-BOH-XFMR-L3-1080 |  | BOH-HSE XFMR-STS-HSE-03 L3 BMS/EPMS Programming | 1d | 2026-08-21 | 2026-08-21 | DC1-BOH-XFMR-L3-1070 |  |  |  | -13d | 4d | PRM | Commissioning | BOH | L3 | STS | BAB |  |
|  | 04 | **DC1-BOH-XFMR-HSE-04 Cx L3** |  | 2026-07-30 | 2026-08-21 |  |  |  |  |  |  |  |  |  |  |  |  |  |
| DC1-BOH-XFMR-L3-1090 |  | BOH-HSE XFMR-STS-HSE-04 FTE | 1d | 2026-07-30 A | 2026-07-30 A | DC1-XFMR-HSE-L2-1060 | 100% | 2026-08-04 | 2026-08-04 |  |  | ROS | Commissioning | BOH | L3 | STS | BAB |  |
| DC1-BOH-XFMR-L3-1100 |  | BOH-HSE XFMR-STS-HSE-04 L3 Startup | 2d | 2026-08-19 | 2026-08-20 | DC1-BOH-XFMR-L3-1090 |  |  |  | -13d | 0d | ROS | Commissioning | BOH | L3 | STS | BAB |  |
| DC1-BOH-XFMR-L3-1110 |  | BOH-HSE XFMR-STS-HSE-04 L3 BMS/EPMS Programming | 1d | 2026-08-21 | 2026-08-21 | DC1-SWBD-HSE-L3-1030, DC1-BOH-XFMR-L3-1100 |  |  |  | -13d | 4d | PRM | Commissioning | BOH | L3 | STS | BAB |  |
|  | 04 | **DC1-BOH-PNL-UPS-HSE Cx L3** |  | 2026-08-20 | 2026-08-26 |  |  |  |  |  |  |  |  |  |  |  |  |  |
|  | 03 | **DC1-BOH-PNL-UPS-HSE-03 Cx L3** |  | 2026-08-21 | 2026-08-26 |  |  |  |  |  |  |  |  |  |  |  |  |  |
| DC1-BOH-PNL-L3-2060 |  | BOH-HSE UPS-HSE-03 FTE | 1d | 2026-08-21 | 2026-08-21 | DC1-BOH-XFMR-L3-1060, DC1-PNL-HSE-L2-1020 |  |  |  | -16d | 0d | ROS | Commissioning | BOH | L3 | UPS | BAB |  |
| DC1-BOH-PNL-L3-2070 |  | BOH-HSE UPS-HSE-03 L3 Startup | 2d | 2026-08-24 | 2026-08-25 | DC1-BOH-PNL-L3-2060, QTS-1012050, QTS-1013980 |  |  |  | -16d | 0d | VER | Commissioning | BOH | L3 | UPS | BAB |  |
| DC1-BOH-PNL-L3-2080 |  | BOH-HSE UPS-HSE-03 L3 BMS/EPMS Programming | 1d | 2026-08-26 | 2026-08-26 | DC1-BOH-PNL-L3-2070, QTS-13531 |  |  |  | -16d | 1d | PRM | Commissioning | BOH | L3 | UPS | BAB |  |
|  | 1 | **DC1-BOH-PNL-UPS-HSE-04 Cx L3** |  | 2026-08-20 | 2026-08-25 |  |  |  |  |  |  |  |  |  |  |  |  |  |
| DC1-BOH-PNL-L3-2090 |  | BOH-HSE UPS-HSE-04 FTE | 1d | 2026-08-20 | 2026-08-20 | DC1-BOH-XFMR-L3-1090, DC1-PNL-HSE-L2-1030 |  |  |  | -15d | 0d | ROS | Commissioning | BOH | L3 | UPS | BAB |  |
| DC1-BOH-PNL-L3-2100 |  | BOH-HSE UPS-HSE-04 L3 Startup | 2d | 2026-08-21 | 2026-08-24 | DC1-BOH-PNL-L3-2090, QTS-1012050, QTS-1013980 |  |  |  | -15d | 0d | VER | Commissioning | BOH | L3 | UPS | BAB |  |
| DC1-BOH-PNL-L3-2110 |  | BOH-HSE UPS-HSE-04 L3 BMS/EPMS Programming | 1d | 2026-08-25 | 2026-08-25 | DC1-BOH-PNL-L3-2100 |  |  |  | -15d | 2d | PRM | Commissioning | BOH | L3 | UPS | BAB |  |
|  | 05 | **DC1-BOH-PNLs Cx L3** |  | 2026-06-25 | 2026-08-26 |  |  |  |  |  |  |  |  |  |  |  |  |  |
|  | 01 | **DC1-BOH-PNL-BOH1 Cx L3** |  | 2026-06-25 | 2026-08-19 |  |  |  |  |  |  |  |  |  |  |  |  |  |
| DC1-BOH-PNL-L3-1000 |  | BOH PNL-BOH1 FTE | 1d | 2026-06-25 A | 2026-06-25 A | DC1-SWBD-HSE-L3-1030, DC1-BOH-PNL-L2-1060 | 100% | 2026-06-29 | 2026-06-29 |  |  | ROS | Commissioning | BOH | L3 | PANEL |  | Travis Todaro |
| DC1-BOH-PNL-L3-1010 |  | BOH PNL-BOH1 L3 Startup | 2d | 2026-06-25 A | 2026-06-25 A | DC1-BOH-PNL-L3-1000 | 100% | 2026-06-30 | 2026-07-01 |  |  | ROS | Commissioning | BOH | L3 | PANEL |  | Travis Todaro |
| DC1-BOH-PNL-L3-1020 |  | BOH PNL-BOH1 L3 BMS/EPMS Programming | 1d | 2026-08-19 | 2026-08-19 | DC1-BOH-PNL-L3-1010 |  |  |  | -11d | 6d | PRM | Commissioning | BOH | L3 | PANEL | BAB |  |
|  | 02 | **DC1-BOH-PNL-BOH2 Cx L3** |  | 2026-06-25 | 2026-08-19 |  |  |  |  |  |  |  |  |  |  |  |  |  |
| DC1-BOH-PNL-L3-1030 |  | BOH PNL-BOH2 FTE | 1d | 2026-06-25 A | 2026-06-29 A | DC1-SWBD-HSE-L3-1030, DC1-BOH-PNL-L2-1090 | 100% | 2026-06-29 | 2026-06-29 |  |  | ROS | Commissioning | BOH | L3 | PANEL |  | Travis Todaro |
| DC1-BOH-PNL-L3-1040 |  | BOH PNL-BOH2 L3 Startup | 2d | 2026-06-25 A | 2026-06-25 A | DC1-BOH-PNL-L3-1030 | 100% | 2026-06-30 | 2026-07-01 |  |  | ROS | Commissioning | BOH | L3 | PANEL |  | Travis Todaro |
| DC1-BOH-PNL-L3-1050 |  | BOH PNL-BOH2 L3 BMS/EPMS Programming | 1d | 2026-08-19 | 2026-08-19 | DC1-BOH-PNL-L3-1040 |  |  |  | -11d | 6d | PRM | Commissioning | BOH | L3 | PANEL | BAB |  |

Notes:
- DC1-BOH-XFMR-L3-1070: Steps: EC Startup Report; Vendor Startup
- DC1-BOH-XFMR-L3-1100: Steps: EC Startup Report; Vendor Startup
- DC1-BOH-PNL-L3-2070: Steps: EC Startup Report; Vendor Startup
- DC1-BOH-PNL-L3-2100: Steps: EC Startup Report; Vendor Startup
- DC1-BOH-PNL-L3-1010: Steps: EC Startup Report; Vendor Startup
- DC1-BOH-PNL-L3-1040: Steps: EC Startup Report; Vendor Startup

| ID | WBS | Activity | Duration | Start | Finish | Predecessors | Complete | Planned start | Planned finish | Total float | Free float | Vendor Responsible Party | Layton Discipline | Location | CX Level | Equipment | Contract |
| --- | --- | --- | --- | --- | --- | --- | --- | --- | --- | --- | --- | --- | --- | --- | --- | --- | --- |
|  | 03 | **DC1-BOH-PNL-DH12 Cx L3** |  | 2026-08-21 | 2026-08-26 |  |  |  |  |  |  |  |  |  |  |  |  |
| DC1-BOH-PNL-L3-1060 |  | BOH PNL-DH12 FTE | 1d | 2026-08-21 | 2026-08-21 | DC1-SWBD-HSE-L3-1030, DC1-BOH-PNL-L2-1040 |  |  |  | -16d | 0d | ROS | Commissioning | BOH | L3 | PANEL | BAB |
| DC1-BOH-PNL-L3-1070 |  | BOH PNL-DH12 L3 Startup | 2d | 2026-08-24 | 2026-08-25 | DC1-BOH-PNL-L3-1060 |  |  |  | -16d | 0d | ROS | Commissioning | BOH | L3 | PANEL | BAB |
| DC1-BOH-PNL-L3-1080 |  | BOH PNL-DH12 L3 BMS/EPMS Programming | 1d | 2026-08-26 | 2026-08-26 | DC1-BOH-PNL-L3-1070 |  |  |  | -16d | 1d | PRM | Commissioning | BOH | L3 | PANEL | BAB |
|  | 04 | **DC1-BOH-PNL-DH13 Cx L3** |  | 2026-08-21 | 2026-08-26 |  |  |  |  |  |  |  |  |  |  |  |  |
| DC1-BOH-PNL-L3-1090 |  | BOH PNL-DH13 FTE | 1d | 2026-08-21 | 2026-08-21 | DC1-SWBD-HSE-L3-1030, DC1-BOH-PNL-L2-1050 |  |  |  | -16d | 0d | ROS | Commissioning | BOH | L3 | PANEL | BAB |
| DC1-BOH-PNL-L3-1100 |  | BOH PNL-DH13 L3 Startup | 2d | 2026-08-24 | 2026-08-25 | DC1-BOH-PNL-L3-1090 |  |  |  | -16d | 0d | ROS | Commissioning | BOH | L3 | PANEL | BAB |
| DC1-BOH-PNL-L3-1110 |  | BOH PNL-DH13 L3 BMS/EPMS Programming | 1d | 2026-08-26 | 2026-08-26 | DC1-BOH-PNL-L3-1100 |  |  |  | -16d | 1d | PRM | Commissioning | BOH | L3 | PANEL | BAB |
|  | 05 | **DC1-BOH-PNL-DH22 Cx L3** |  | 2026-08-21 | 2026-08-26 |  |  |  |  |  |  |  |  |  |  |  |  |
| DC1-BOH-PNL-L3-1120 |  | BOH PNL-DH22 FTE | 1d | 2026-08-21 | 2026-08-21 | DC1-SWBD-HSE-L3-1030, DC1-BOH-PNL-L2-1070 |  |  |  | -16d | 0d | ROS | Commissioning | BOH | L3 | PANEL | BAB |
| DC1-BOH-PNL-L3-1130 |  | BOH PNL-DH22 L3 Startup | 2d | 2026-08-24 | 2026-08-25 | DC1-BOH-PNL-L3-1120 |  |  |  | -16d | 0d | ROS | Commissioning | BOH | L3 | PANEL | BAB |
| DC1-BOH-PNL-L3-1140 |  | BOH PNL-DH22 L3 BMS/EPMS Programming | 1d | 2026-08-26 | 2026-08-26 | DC1-BOH-PNL-L3-1130 |  |  |  | -16d | 1d | PRM | Commissioning | BOH | L3 | PANEL | BAB |
|  | 06 | **DC1-BOH-PNL-DH23 Cx L3** |  | 2026-08-21 | 2026-08-26 |  |  |  |  |  |  |  |  |  |  |  |  |
| DC1-BOH-PNL-L3-1150 |  | BOH PNL-DH23 FTE | 1d | 2026-08-21 | 2026-08-21 | DC1-SWBD-HSE-L3-1030, DC1-BOH-PNL-L2-1080 |  |  |  | -16d | 0d | ROS | Commissioning | BOH | L3 | PANEL | BAB |
| DC1-BOH-PNL-L3-1160 |  | BOH PNL-DH23 L3 Startup | 2d | 2026-08-24 | 2026-08-25 | DC1-BOH-PNL-L3-1150 |  |  |  | -16d | 0d | ROS | Commissioning | BOH | L3 | PANEL | BAB |
| DC1-BOH-PNL-L3-1170 |  | BOH PNL-DH23 L3 BMS/EPMS Programming | 1d | 2026-08-26 | 2026-08-26 | DC1-BOH-PNL-L3-1160 |  |  |  | -16d | 1d | PRM | Commissioning | BOH | L3 | PANEL | BAB |
|  | 06 | **DC1-BOH-RTUs Cx L3** |  | 2026-08-19 | 2026-08-24 |  |  |  |  |  |  |  |  |  |  |  |  |
| DC1-FOH-RTU-L3-1060 |  | BOH RTU-RT-03 FTE | 1d | 2026-08-19 | 2026-08-19 | DC1-SWBD-HSE-L3-1030, DC1-FOH-RTU-L2-1020 |  |  |  | -69d | 0d | ROS | Commissioning | BOH | L3 | RTU | BAB |
| DC1-FOH-RTU-L3-1070 |  | BOH RTU-RT-03 L3 Startup | 2d | 2026-08-20 | 2026-08-21 | DC1-FOH-RTU-L3-1060, QTS-49021 |  |  |  | -69d | 0d | TAS | Commissioning | BOH | L3 | RTU | BAB |
| DC1-FOH-RTU-L3-1080 |  | BOH RTU-RT-03 L3 BMS/EPMS Programming | 1d | 2026-08-24 | 2026-08-24 | DC1-FOH-RTU-L3-1070 |  |  |  | -69d | 0d | PRM | Commissioning | BOH | L3 | RTU | BAB |
|  | 07 | **DC1-BOH-Split Units-Floor 1-HSE Cx L3** |  | 2026-08-11 | 2026-08-25 |  |  |  |  |  |  |  |  |  |  |  |  |
|  | 01 | **DC1 House ELEC 1081 SPlit Units L3** |  | 2026-08-11 | 2026-08-11 |  |  |  |  |  |  |  |  |  |  |  |  |
| DC1-SS-L3-Cx-5030 |  | DC1 House ELEC 1081 Split Units FTE | 1d | 2026-08-11 A | 2026-08-11 A | DC1-BOH-PNL-L3-1030, DC1-SS-L2-Cx-5010 | 100% | 2026-08-13 | 2026-08-13 |  |  | ROS | Commissioning | BOH | L3 | SPLIT UNIT | BAB |
| DC1-SS-L3-Cx-5050 |  | DC1 House ELEC 1081 Split Units L3 Startup | 2d | 2026-08-11 A | 2026-08-11 A | DC1-SS-L3-Cx-5030 | 100% | 2026-08-14 | 2026-08-17 |  |  | BAM | Commissioning | BOH | L3 | SPLIT UNIT | BAB |
| DC1-SS-L3-Cx-5060 |  | DC1 House ELEC 1081 Split Units L3 BMS/EPMS Programming | 1d | 2026-08-11 A | 2026-08-11 A | DC1-SS-L3-Cx-5050 | 100% | 2026-08-18 | 2026-08-18 |  |  | PRM | Commissioning | BOH | L3 | SPLIT UNIT | BAB |

Notes:
- DC1-BOH-PNL-L3-1070: Steps: EC Startup Report; Vendor Startup
- DC1-BOH-PNL-L3-1100: Steps: EC Startup Report; Vendor Startup
- DC1-BOH-PNL-L3-1130: Steps: EC Startup Report; Vendor Startup
- DC1-BOH-PNL-L3-1160: Steps: EC Startup Report; Vendor Startup
- DC1-FOH-RTU-L3-1070: Steps: EC Startup Report; MC Startup Report; Vendor Startup
- DC1-SS-L3-Cx-5050: Steps: EC Startup Report; MC Startup Report; Vendor Startup

| ID | WBS | Activity | Duration | Start | Finish | Predecessors | Complete | Planned start | Planned finish | Total float | Free float | Fed From | Vendor Responsible Party | Layton Discipline | Location | CX Level | Equipment | Contract |
| --- | --- | --- | --- | --- | --- | --- | --- | --- | --- | --- | --- | --- | --- | --- | --- | --- | --- | --- |
|  | 02 | **DC1 House MMR1B 1068 Split Units L3** |  | 2026-08-11 | 2026-08-11 |  |  |  |  |  |  |  |  |  |  |  |  |  |
| DC1-SS-L3-Cx-2930 |  | DC1 House MMR1B 1068 Split Units FTE | 1d | 2026-08-11 A | 2026-08-11 A | DC1-BOH-PNL-L3-1030, DC1-SS-L2-Cx-2790 | 100% | 2026-08-13 | 2026-08-13 |  |  | HDP-E22-01, F22-01, G22-01, J22-01 | ROS | Commissioning | BOH | L3 | SPLIT UNIT | BAB |
| DC1-SS-L3-Cx-3200 |  | DC1 House MMR1B 1068 Split Units L3 Startup | 2d | 2026-08-11 A | 2026-08-11 A | DC1-SS-L3-Cx-2930 | 100% | 2026-08-14 | 2026-08-17 |  |  |  | BAM | Commissioning | BOH | L3 | SPLIT UNIT | BAB |
| DC1-SS-L3-Cx-3210 |  | DC1 House MMR1B 1068 Split Units L3 BMS/EPMS Programming | 1d | 2026-08-11 A | 2026-08-11 A | DC1-SS-L3-Cx-3200 | 100% | 2026-08-18 | 2026-08-18 |  |  |  | PRM | Commissioning | BOH | L3 | SPLIT UNIT | BAB |
|  | 03 | **DC1-House House Electrical 1066 Split Units L3** |  | 2026-08-20 | 2026-08-25 |  |  |  |  |  |  |  |  |  |  |  |  |  |
| DC1-SS-L3-Cx-2940 |  | DC1-House House Electrical 1066 Split Units FTE | 1d | 2026-08-20 | 2026-08-20 | DC1-BOH-PNL-L3-1030, DC1-SS-L2-Cx-2780 |  |  |  | -15d | 0d | HDP-H22-01, J22-01, K22-01 | ROS | Commissioning | BOH | L3 | SPLIT UNIT | BAB |
| DC1-SS-L3-Cx-3220 |  | DC1-House House Electrical 1066 Split Units L3 Startup | 2d | 2026-08-21 | 2026-08-24 | DC1-SS-L3-Cx-2940 |  |  |  | -15d | 0d |  | BAM | Commissioning | BOH | L3 | SPLIT UNIT | BAB |
| DC1-SS-L3-Cx-3230 |  | DC1-House House Electrical 1066 Split Units L3 BMS/EPMS Programming | 1d | 2026-08-25 | 2026-08-25 | DC1-SS-L3-Cx-3220 |  |  |  | -15d | 2d |  | PRM | Commissioning | BOH | L3 | SPLIT UNIT | BAB |
|  | 04 | **DC1 House IDF 1064 Split Units L3** |  | 2026-08-20 | 2026-08-25 |  |  |  |  |  |  |  |  |  |  |  |  |  |
| DC1-SS-L3-Cx-2950 |  | DC1 House IDF 1064 Split Units FTE | 1d | 2026-08-20 | 2026-08-20 | DC1-BOH-PNL-L3-1030, DC1-SS-L2-Cx-2770 |  |  |  | -15d | 0d | HDP-J22-01, K22-01 | ROS | Commissioning | BOH | L3 | SPLIT UNIT | BAB |
| DC1-SS-L3-Cx-3240 |  | DC1 House IDF 1064 Split Units L3 Startup | 2d | 2026-08-21 | 2026-08-24 | DC1-SS-L3-Cx-2950 |  |  |  | -15d | 0d |  | BAM | Commissioning | BOH | L3 | SPLIT UNIT | BAB |
| DC1-SS-L3-Cx-3250 |  | DC1 House IDF 1064 Split Units L3 BMS/EPMS Programming | 1d | 2026-08-25 | 2026-08-25 | DC1-SS-L3-Cx-3240 |  |  |  | -15d | 2d |  | PRM | Commissioning | BOH | L3 | SPLIT UNIT | BAB |
|  | 05 | **DC1 House ELEV MACH 1062 Split Units L3** |  | 2026-08-20 | 2026-08-25 |  |  |  |  |  |  |  |  |  |  |  |  |  |
| DC1-SS-L3-Cx-2960 |  | DC1 House ELEV MACH 1062 Split Units FTE | 1d | 2026-08-20 | 2026-08-20 | DC1-BOH-PNL-L3-1030, DC1-SS-L2-Cx-2760 |  |  |  | -15d | 0d | HDP-K22-01 | ROS | Commissioning | BOH | L3 | SPLIT UNIT | BAB |
| DC1-SS-L3-Cx-3260 |  | DC1 House ELEV MACH 1062 Split Units L3 Startup | 2d | 2026-08-21 | 2026-08-24 | DC1-SS-L3-Cx-2960 |  |  |  | -15d | 0d |  | BAM | Commissioning | BOH | L3 | SPLIT UNIT | BAB |
| DC1-SS-L3-Cx-3270 |  | DC1 House ELEV MACH 1062 Split Units L3 BMS/EPMS Programming | 1d | 2026-08-25 | 2026-08-25 | DC1-SS-L3-Cx-3260 |  |  |  | -15d | 2d |  | PRM | Commissioning | BOH | L3 | SPLIT UNIT | BAB |
|  | 06 | **DC1 House MMR2A 0212 Split Units L3** |  |  |  |  |  |  |  |  |  |  |  |  |  |  |  |  |
|  | 08 | **DC1-BOH-Split Units-Floor 2-HSE Cx L3** |  | 2026-08-20 | 2026-08-25 |  |  |  |  |  |  |  |  |  |  |  |  |  |
|  | 01 | **DC1 House MMR2B 2068 Split Units L3** |  | 2026-08-20 | 2026-08-25 |  |  |  |  |  |  |  |  |  |  |  |  |  |
| DC1-SS-L3-Cx-2980 |  | DC1 House MMR2B 2068 Split Units FTE | 1d | 2026-08-20 | 2026-08-20 | DC1-BOH-PNL-L3-1030, DC1-SS-L2-Cx-2810 |  |  |  | -15d | 0d | HDP-E22-01, F22-01, G22-01, J22-01 | ROS | Commissioning | BOH | L3 | SPLIT UNIT | BAB |
| DC1-SS-L3-Cx-3300 |  | DC1 House MMR2B 2068 Split Units L3 Startup | 2d | 2026-08-21 | 2026-08-24 | DC1-SS-L3-Cx-2980 |  |  |  | -15d | 0d |  | BAM | Commissioning | BOH | L3 | SPLIT UNIT | BAB |
| DC1-SS-L3-Cx-3310 |  | DC1 House MMR2B 2068 Split Units L3 BMS/EPMS Programming | 1d | 2026-08-25 | 2026-08-25 | DC1-SS-L3-Cx-3300 |  |  |  | -15d | 2d |  | PRM | Commissioning | BOH | L3 | SPLIT UNIT | BAB |
|  | 02 | **DC1 House ELEC 2085 Split Units L3** |  | 2026-08-20 | 2026-08-25 |  |  |  |  |  |  |  |  |  |  |  |  |  |
| DC1-SS-L3-Cx-2990 |  | DC1 House ELEC 2085 Split Units FTE | 1d | 2026-08-20 | 2026-08-20 | DC1-BOH-PNL-L3-1030, DC1-SS-L2-Cx-2800 |  |  |  | -15d | 0d | HDP-G22-01, H22-01, J22-01 | ROS | Commissioning | BOH | L3 | SPLIT UNIT | BAB |
| DC1-SS-L3-Cx-3320 |  | DC1 House ELEC 2085 Split Units L3 Startup | 2d | 2026-08-21 | 2026-08-24 | DC1-SS-L3-Cx-2990 |  |  |  | -15d | 0d |  | BAM | Commissioning | BOH | L3 | SPLIT UNIT | BAB |
| DC1-SS-L3-Cx-3330 |  | DC1 House ELEC 2085 Split Units L3 BMS/EPMS Programming | 1d | 2026-08-25 | 2026-08-25 | DC1-SS-L3-Cx-3320 |  |  |  | -15d | 2d |  | PRM | Commissioning | BOH | L3 | SPLIT UNIT | BAB |

Notes:
- DC1-SS-L3-Cx-3200: Steps: EC Startup Report; MC Startup Report; Vendor Startup
- DC1-SS-L3-Cx-3220: Steps: EC Startup Report; MC Startup Report; Vendor Startup
- DC1-SS-L3-Cx-3240: Steps: EC Startup Report; MC Startup Report; Vendor Startup
- DC1-SS-L3-Cx-3260: Steps: EC Startup Report; MC Startup Report; Vendor Startup
- DC1-SS-L3-Cx-3300: Steps: EC Startup Report; MC Startup Report; Vendor Startup
- DC1-SS-L3-Cx-3320: Steps: EC Startup Report; MC Startup Report; Vendor Startup

| ID | WBS | Activity | Duration | Start | Finish | Predecessors | Total float | Free float | Calendar | Fed From | Vendor Responsible Party | Layton Discipline | Location | CX Level | Equipment | Contract | Owner Impact Analysis |
| --- | --- | --- | --- | --- | --- | --- | --- | --- | --- | --- | --- | --- | --- | --- | --- | --- | --- |
|  | 03 | **DC1 House IDF 2064 Split Units L3** |  | 2026-08-20 | 2026-08-25 |  |  |  |  |  |  |  |  |  |  |  |  |
| DC1-SS-L3-Cx-3000 |  | DC1 House IDF 2064 Split Units FTE | 1d | 2026-08-20 | 2026-08-20 | DC1-BOH-PNL-L3-1030, DC1-SS-L2-Cx-2820 | -15d | 0d |  | HDP-J22-01, K22-01 | ROS | Commissioning | BOH | L3 | SPLIT UNIT | BAB |  |
| DC1-SS-L3-Cx-3340 |  | DC1 House IDF 2064 Split Units L3 Startup | 2d | 2026-08-21 | 2026-08-24 | DC1-SS-L3-Cx-3000 | -15d | 0d |  |  | BAM | Commissioning | BOH | L3 | SPLIT UNIT | BAB |  |
| DC1-SS-L3-Cx-3350 |  | DC1 House IDF 2064 Split Units L3 BMS/EPMS Programming | 1d | 2026-08-25 | 2026-08-25 | DC1-SS-L3-Cx-3340 | -15d | 2d |  |  | PRM | Commissioning | BOH | L3 | SPLIT UNIT | BAB |  |
|  | 09 | **DC1-BOH-Split Units-Floor 3-HSE Cx L2** |  | 2026-08-21 | 2026-08-27 |  |  |  |  |  |  |  |  |  |  |  |  |
|  | 01 | **DC1 House Elevator Penthouse Lobby 3065-2 Split Units L3** |  | 2026-08-21 | 2026-08-26 |  |  |  |  |  |  |  |  |  |  |  |  |
| DC1-SS-L3-Cx-5040 |  | DC1 House Elevator Penthouse Lobby 3065-2 Split Units FTE | 1d | 2026-08-21 | 2026-08-21 | DC1-BOH-PNL-L3-1030, DC1-SS-L2-Cx-5020 | -16d | 0d |  |  | ROS | Commissioning | BOH | L3 | SPLIT UNIT | BAB |  |
| DC1-SS-L3-Cx-5070 |  | DC1 House Elevator Penthouse Lobby 3065-2 Split Units L3 Startup | 2d | 2026-08-24 | 2026-08-25 | DC1-SS-L3-Cx-5040 | -16d | 0d |  |  | BAM | Commissioning | BOH | L3 | SPLIT UNIT | BAB |  |
| DC1-SS-L3-Cx-5080 |  | DC1 House Elevator Penthouse Lobby 3065-2 Split Units L3 BMS/EPMS Programming | 1d | 2026-08-26 | 2026-08-26 | DC1-SS-L3-Cx-5070 | -16d | 1d |  |  | PRM | Commissioning | BOH | L3 | SPLIT UNIT | BAB |  |
|  | 02 | **DC1 House ELEV MACH 3065-1 Split Units L3** |  | 2026-08-24 | 2026-08-27 |  |  |  |  |  |  |  |  |  |  |  |  |
| DC1-SS-L3-Cx-3010 |  | DC1 House ELEV MACH 3065-1 Split Units FTE | 1d | 2026-08-24 | 2026-08-24 | DC1-BOH-PNL-L3-1030, DC1-SS-L2-Cx-2830 | -17d | 0d |  | HDP-D21-01 | ROS | Commissioning | BOH | L3 | SPLIT UNIT | BAB |  |
| DC1-SS-L3-Cx-3360 |  | DC1 House ELEV MACH 3065-1 Split Units L3 Startup | 2d | 2026-08-25 | 2026-08-26 | DC1-SS-L3-Cx-3010 | -17d | 0d |  |  | BAM | Commissioning | BOH | L3 | SPLIT UNIT | BAB |  |
| DC1-SS-L3-Cx-3370 |  | DC1 House ELEV MACH 3065-1 Split Units L3 BMS/EPMS Programming | 1d | 2026-08-27 | 2026-08-27 | DC1-SS-L3-Cx-3360 | -17d | 0d |  |  | PRM | Commissioning | BOH | L3 | SPLIT UNIT | BAB |  |
|  | 03 | **DC1 House TAB** |  | 2026-08-22 | 2026-09-08 |  |  |  |  |  |  |  |  |  |  |  |  |
| DC1-HSE-TAB-1000 |  | DC1 FOH TAB | 10d | 2026-08-22 | 2026-08-31 | DC1-FOH-RTU-L3-1050, DC1-FOH-RTU-L3-1020, QTS - 24341, QTS-1004630, QTS-1004710, QTS-1004730, QTS-1005010, QTS-1005320, QTS-50681, QTS - 25991, QTS-1009810, QTS - 26231, QTS-1011530, QTS-1011440, QTS-1011500 | -141d | 0d | QTS-PHX3 DC1 - 7 day No Holidays |  | LAY | Commissioning |  | L3 |  | BAB |  |
| DC1-HSE-TAB-1010 |  | DC1 BOH TAB | 10d | 2026-08-25 | 2026-09-08 | DC1-FOH-RTU-L3-1080, QTS-1007150, QTS-1007160 | -69d | 0d |  |  | LAY | Commissioning | BOH | L3 |  | BAB |  |
|  | 1 | **DC1-House Cx L4 Commissioning** |  | 2026-08-26 | 2026-10-27 |  |  |  |  |  |  |  |  |  |  |  |  |
|  | 1 | **DC1-Front of House (FOH) Cx L4** |  | 2026-08-26 | 2026-10-20 |  |  |  |  |  |  |  |  |  |  |  |  |
| DC1-L4-Cx-1100 |  | DC1 Data Hall FOH Air Cooled L4 | 15d | 2026-08-26 | 2026-09-16 | DC1-GEN-HSE-L3-1020, DC1-XFMR-HSE-L3-1020, DC1-SWBD-HSE-L3-1020, DC1-FOH-UPS-L3-1020, DC1-FOH-UPS-L3-1050, DC1-FOH-STS-L3-1020, DC1-FOH-STS-L3-1050, DC1-FOH-XFMR-L3-1020, DC1-FOH-XFMR-L3-1050, DC1-FOH-PNL-L3-2020, DC1-FOH-PNL-L3-2050, DC1-FOH-PNL-L3-1020, DC1-FOH-PNL-L3-1050, DC1-FOH-PNL-L3-1080, DC1-FOH-PNL-L3-1110, DC1-FOH-RTU-L3-1020, DC1-FOH-RTU-L3-1050, DC1-SS-L3-Cx-3030, DC1-SS-L3-Cx-3050, DC1-SS-L3-Cx-3075, DC1-SS-L3-Cx-3090, DC1-SS-L3-Cx-3110, DC1-SS-L3-Cx-3130, DC1-SS-L3-Cx-3150, DC1-SS-L3-Cx-3170, DC1-SS-L3-Cx-3190, DC1-SS-L3-Cx-5110, DC1-GEN-HSE-L3-1060 | -75d | 24d |  |  | LAY | Commissioning |  | L4 |  | BAB | Y |
| DC1-L4-Cx-1090 |  | DC1 Data Hall FOH BMS/EPMS Integration | 15d | 2026-09-01 | 2026-09-22 | DC1-HSE-TAB-1000 | -99d | 0d |  |  | LAY | Commissioning |  | L4 |  | BAB |  |
| DC1-L4-Cx-1110 |  | DC1 Data Hall FOH Mechanical L4 | 20d | 2026-09-23 | 2026-10-20 | DC1-L4-Cx-1090, DC1-HSE-TAB-1000 | -99d | 0d |  |  | LAY | Commissioning |  | L4 |  | BAB |  |
|  | 2 | **DC1-Back of House (BOH) Cx L4** |  | 2026-08-28 | 2026-10-27 |  |  |  |  |  |  |  |  |  |  |  |  |
| DC1-L4-Cx-1130 |  | DC1 Data Hall BOH Air Cooled L4 | 20d | 2026-08-28 | 2026-09-25 | DC1-GEN-HSE-L3-1050, DC1-XFMR-HSE-L3-1050, DC1-SWBD-HSE-L3-1050, DC1-BOH-UPS-L3-1080, DC1-BOH-UPS-L3-1110, DC1-BOH-STS-L3-1080, DC1-BOH-STS-L3-1110, DC1-BOH-XFMR-L3-1080, DC1-BOH-XFMR-L3-1110, DC1-BOH-PNL-L3-2080, DC1-BOH-PNL-L3-2110, DC1-BOH-PNL-L3-1020, DC1-BOH-PNL-L3-1050, DC1-BOH-PNL-L3-1080, DC1-BOH-PNL-L3-1110, DC1-BOH-PNL-L3-1140, DC1-BOH-PNL-L3-1170, DC1-FOH-RTU-L3-1080, DC1-SS-L3-Cx-5060, DC1-SS-L3-Cx-3210, DC1-SS-L3-Cx-3230, DC1-SS-L3-Cx-3250, DC1-SS-L3-Cx-3270, DC1-SS-L3-Cx-3310, DC1-SS-L3-Cx-3330, DC1-SS-L3-Cx-3350, DC1-SS-L3-Cx-5080, DC1-SS-L3-Cx-3370 | -17d | 22d |  |  | LAY | Commissioning |  | L4 |  | BAB |  |
| DC1-L4-Cx-1120 |  | DC1 Data Hall BOH BMS/EPMS Integration | 15d | 2026-09-09 | 2026-09-29 | DC1-HSE-TAB-1010 | -39d | 0d |  |  | LAY | Commissioning |  | L4 |  | BAB |  |
| DC1-L4-Cx-1140 |  | DC1 Data Hall BOH Mechanical L4 | 20d | 2026-09-30 | 2026-10-27 | DC1-L4-Cx-1120, DC1-HSE-TAB-1010 | -39d | 0d |  |  | LAY | Commissioning |  | L4 |  | BAB |  |

Notes:
- DC1-SS-L3-Cx-3340: Steps: EC Startup Report; MC Startup Report; Vendor Startup
- DC1-SS-L3-Cx-5070: Steps: EC Startup Report; MC Startup Report; Vendor Startup
- DC1-SS-L3-Cx-3360: Steps: EC Startup Report; MC Startup Report; Vendor Startup

| ID | WBS | Activity | Duration | Start | Finish | Predecessors | Complete | Planned start | Planned finish | Vendor Responsible Party | Allucent CSI Group | Layton Discipline | Location | CX Level | Equipment | Sort |
| --- | --- | --- | --- | --- | --- | --- | --- | --- | --- | --- | --- | --- | --- | --- | --- | --- |
|  | 02 | **Data Hall 2100 Commissioning** |  | 2025-12-17 | 2026-07-28 |  |  |  |  |  |  |  |  |  |  |  |
|  | 02 | **Data Hall 2100 Cx L2** |  | 2025-12-17 | 2026-06-08 |  |  |  |  |  |  |  |  |  |  |  |
|  | 01 | **DC1-DH2100 Generators Cx L2** |  | 2026-03-16 | 2026-04-23 |  |  |  |  |  |  |  |  |  |  |  |
| DC1-GEN-L2-1000 |  | DH2100 GEN-A21 L2 Checklist | 3d | 2026-03-16 A | 2026-04-23 A | QTS-1001180, QTS-1000270, QTS-25591, QTS-1004490 FF, QTS-1005190, QTS-1005270, QTS-1006150 FF+2d, QTS-1007070 FF | 100% | 2026-03-16 | 2026-03-18 | HLT | 01ADMIN | Commissioning | DH2100 | L2 | GEN |  |
| DC1-GEN-L2-1010 |  | DH2100 GEN-B21 L2 Checklist | 3d | 2026-03-16 A | 2026-04-23 A | QTS-1001180, QTS-1000270, DC1-GEN-L2-1000 SS, QTS-1004490 FF, QTS-1006240 FF+2d, QTS-1007070 FF | 100% | 2026-03-16 | 2026-03-18 | HLT |  | Commissioning | DH2100 | L2 | GEN |  |
| DC1-GEN-L2-1020 |  | DH2100 GEN-C21 L2 Checklist | 3d | 2026-03-16 A | 2026-04-23 A | QTS-1001180, QTS-1000270, DC1-GEN-L2-1010 SS, QTS-1004490 FF, QTS-1006330 FF, QTS-1007070 FF | 100% | 2026-03-16 | 2026-03-18 | HLT |  | Commissioning | DH2100 | L2 | GEN |  |
| DC1-GEN-L2-1030 |  | DH2100 GEN-D21 L2 Checklist | 3d | 2026-03-16 A | 2026-04-23 A | QTS-1001180, QTS-1000270, DC1-GEN-L2-1020 SS, QTS-1004490 FF, QTS-1006420 FF+2d, QTS-1007070 FF | 100% | 2026-03-16 | 2026-03-18 | HLT |  | Commissioning | DH2100 | L2 | GEN |  |
| DC1-GEN-L2-1040 |  | DH2100 GEN-E21 L2 Checklist | 3d | 2026-03-25 A | 2026-04-23 A | QTS-1001180, QTS-1000270, DC1-GEN-L2-1030 SS, QTS-1004490 FF, QTS-1006510 FF+2d, QTS-1007070 FF | 100% | 2026-03-25 | 2026-03-27 | HLT |  | Commissioning | DH2100 | L2 | GEN |  |
| DC1-GEN-L2-1050 |  | DH2100 GEN-F21 L2 Checklist | 3d | 2026-03-25 A | 2026-04-23 A | QTS-1001180, QTS-1000270, DC1-GEN-L2-1040 SS, QTS-1004490 FF, QTS-1006600 FF+2d, QTS-1007070 FF | 100% | 2026-03-25 | 2026-03-27 | HLT |  | Commissioning | DH2100 | L2 | GEN |  |
| DC1-GEN-L2-1060 |  | DH2100 GEN-R21 L2 Checklist | 3d | 2026-03-25 A | 2026-04-23 A | QTS-1001180, QTS-1000270, QTS-1004490 FF, QTS-1006690 FF+2d, QTS-1007070 FF | 100% | 2026-03-25 | 2026-03-27 | HLT |  | Commissioning | DH2100 | L2 | GEN |  |
|  | 02 | **DC1-DH2100 MV XFMRs Cx L2** |  | 2025-12-17 | 2026-03-21 |  |  |  |  |  |  |  |  |  |  |  |
| DC1-XFMR-L2-1000 |  | DH2100 XFMR-A21 L2 Checklist | 3d | 2025-12-17 A | 2026-03-21 A | QTS-42801, DC1-XFMR-L2-1060 SS, QTS-1004480 FF+1d | 100% | 2025-12-17 | 2025-12-19 | VTC |  | Commissioning | DH2100 | L2 | XFMR |  |
| DC1-XFMR-L2-1040 |  | DH2100 XFMR-E21 L2 Checklist | 3d | 2026-01-09 A | 2026-03-21 A | QTS-42801, DC1-XFMR-L2-1030 SS, QTS-1004480 FF+1d | 100% | 2026-02-09 | 2026-02-11 | VTC |  | Commissioning | DH2100 | L2 | XFMR |  |
| DC1-XFMR-L2-1050 |  | DH2100 XFMR-F21 L2 Checklist | 3d | 2026-01-09 A | 2026-03-21 A | QTS-42801, DC1-XFMR-L2-1040 SS, QTS-1004480 FF+1d | 100% | 2026-01-09 | 2026-01-13 | VTC |  | Commissioning | DH2100 | L2 | XFMR |  |
| DC1-XFMR-L2-1020 |  | DH2100 XFMR-C21 L2 Checklist | 3d | 2026-01-13 A | 2026-03-21 A | QTS-42801, DC1-XFMR-L2-1010 SS, QTS-1004480 FF+1d | 100% | 2026-01-13 | 2026-01-15 | VTC |  | Commissioning | DH2100 | L2 | XFMR |  |
| DC1-XFMR-L2-1030 |  | DH2100 XFMR-D21 L2 Checklist | 3d | 2026-01-13 A | 2026-03-21 A | QTS-42801, DC1-XFMR-L2-1020 SS, QTS-1004480 FF+1d | 100% | 2026-01-13 | 2026-01-15 | VTC |  | Commissioning | DH2100 | L2 | XFMR |  |
| DC1-XFMR-L2-1060 |  | DH2100 XFMR-R21 L2 Checklist | 3d | 2026-01-13 A | 2026-03-21 A | QTS-42801, QTS-24911, QTS-1004480 FF+1d, QTS-1005180 | 100% | 2026-01-13 | 2026-01-15 | VTC |  | Commissioning | DH2100 | L2 | XFMR |  |
| DC1-XFMR-L2-1010 |  | DH2100 XFMR-B21 L2 Checklist | 3d | 2026-02-19 A | 2026-03-21 A | QTS-42801, DC1-XFMR-L2-1000 SS, QTS-1004480 FF+1d | 100% | 2026-02-19 | 2026-02-23 | VTC |  | Commissioning | DH2100 | L2 | XFMR |  |
|  | 03 | **DC1-DH2100 PODS** |  | 2026-01-21 | 2026-03-30 |  |  |  |  |  |  |  |  |  |  |  |
|  | 01 | **DC1-DH2100 SWDs Cx L2** |  | 2026-01-21 | 2026-03-23 |  |  |  |  |  |  |  |  |  |  |  |
| DC1-SWD-L2-1000 |  | DH2100 SWD-A21 L2 Checklist | 1d | 2026-01-21 A | 2026-03-23 A | DC1-SWD-L2-1060 SS, QTS-1004480 FF+1d | 100% | 2026-01-21 | 2026-01-21 | SIE |  | Commissioning | DH2100 | L2 | SWD |  |
| DC1-SWD-L2-1040 |  | DH2100 SWD-E21 L2 Checklist | 1d | 2026-01-21 A | 2026-03-23 A | QTS-1004480 FF+1d | 100% | 2026-01-21 | 2026-01-21 | SIE |  | Commissioning | DH2100 | L2 | SWD |  |
| DC1-SWD-L2-1060 |  | DH2100 SWD-R21 L2 Checklist | 1d | 2026-01-21 A | 2026-03-23 A | QTS-25591 FF, QTS-24911 FF, QTS-1004480 FF+1d, QTS-1005180 FF, QTS-1005190 FF, QTS-1005270 FF | 100% | 2026-01-21 | 2026-01-21 | SIE |  | Commissioning | DH2100 | L2 | SWD |  |
| DC1-SWD-L2-1010 |  | DH2100 SWD-B21 L2 Checklist | 1d | 2026-02-03 A | 2026-03-23 A | DC1-SWD-L2-1000 SS, QTS-1004480 FF+1d | 100% | 2026-02-03 | 2026-02-03 | SIE |  | Commissioning | DH2100 | L2 | SWD |  |
| DC1-SWD-L2-1020 |  | DH2100 SWD-C21 L2 Checklist | 1d | 2026-03-18 A | 2026-03-23 A | DC1-SWD-L2-1010 SS, QTS-1004480 FF+1d | 100% | 2026-03-18 | 2026-03-18 | SIE |  | Commissioning | DH2100 | L2 | SWD |  |
| DC1-SWD-L2-1030 |  | DH2100 SWD-D21 L2 Checklist | 1d | 2026-03-18 A | 2026-03-23 A | DC1-SWD-L2-1020 SS, QTS-1004480 FF+1d | 100% | 2026-03-18 | 2026-03-18 | SIE |  | Commissioning | DH2100 | L2 | SWD |  |
| DC1-SWD-L2-1050 |  | DH2100 SWD-F21 L2 Checklist | 1d | 2026-03-18 A | 2026-03-23 A | DC1-SWD-L2-1040 SS, QTS-1004480 FF+1d | 100% | 2026-03-18 | 2026-03-18 | SIE |  | Commissioning | DH2100 | L2 | SWD | x |

Notes:
- DC1-GEN-L2-1000: Steps: EC Installation Checklist (done); MC Installation Checklist; CC Installation Checklist (done); Vendor Pre-Energization Checklist (done); CXA Pre-Energization Inspection; PEI/Clean-Walk
- DC1-GEN-L2-1010: Steps: EC Installation Checklist (done); MC Installation Checklist; CC Installation Checklist (done); Vendor Pre-Energization Checklist (done); CXA Pre-Energization Inspection; PEI/Clean-Walk
- DC1-GEN-L2-1020: Steps: EC Installation Checklist (done); MC Installation Checklist; CC Installation Checklist (done); Vendor Pre-Energization Checklist (done); CXA Pre-Energization Inspection; PEI/Clean-Walk
- DC1-GEN-L2-1030: Steps: EC Installation Checklist (done); MC Installation Checklist; CC Installation Checklist (done); Vendor Pre-Energization Checklist (done); CXA Pre-Energization Inspection; PEI/Clean-Walk
- DC1-GEN-L2-1040: Steps: EC Installation Checklist (done); MC Installation Checklist; CC Installation Checklist (done); Vendor Pre-Energization Checklist (done); CXA Pre-Energization Inspection; PEI/Clean-Walk
- DC1-GEN-L2-1050: Steps: EC Installation Checklist (done); MC Installation Checklist; CC Installation Checklist (done); Vendor Pre-Energization Checklist (done); CXA Pre-Energization Inspection; PEI/Clean-Walk
- DC1-GEN-L2-1060: Steps: EC Installation Checklist (done); MC Installation Checklist; CC Installation Checklist (done); Vendor Pre-Energization Checklist (done); CXA Pre-Energization Inspection; PEI/Clean-Walk
- DC1-XFMR-L2-1000: Steps: EC Installation Checklist (done); CC Installation Checklist (done); Vendor Pre-Energization Checklist (done); CXA Pre-Energization Inspection; PEI/Clean-Walk
- DC1-XFMR-L2-1040: Steps: EC Installation Checklist (done); CC Installation Checklist (done); Vendor Pre-Energization Checklist (done); CXA Pre-Energization Inspection; PEI/Clean-Walk
- DC1-XFMR-L2-1050: Steps: EC Installation Checklist (done); CC Installation Checklist (done); Vendor Pre-Energization Checklist (done); CXA Pre-Energization Inspection; PEI/Clean-Walk
- DC1-XFMR-L2-1020: Steps: EC Installation Checklist (done); CC Installation Checklist (done); Vendor Pre-Energization Checklist (done); CXA Pre-Energization Inspection; PEI/Clean-Walk
- DC1-XFMR-L2-1030: Steps: EC Installation Checklist (done); CC Installation Checklist (done); Vendor Pre-Energization Checklist (done); CXA Pre-Energization Inspection; PEI/Clean-Walk
- DC1-XFMR-L2-1060: Steps: EC Installation Checklist (done); CC Installation Checklist (done); Vendor Pre-Energization Checklist (done); CXA Pre-Energization Inspection; PEI/Clean-Walk
- DC1-XFMR-L2-1010: Steps: EC Installation Checklist (done); CC Installation Checklist (done); Vendor Pre-Energization Checklist (done); CXA Pre-Energization Inspection; PEI/Clean-Walk
- DC1-SWD-L2-1000: Steps: EC Pre-Energization Checklist (done); Vendor Pre-Energization Checklist (done); CXA Pre-Energization Inspection (done); PEI/Clean-Walk (done)
- DC1-SWD-L2-1040: Steps: EC Pre-Energization Checklist (done); Vendor Pre-Energization Checklist (done); CXA Pre-Energization Inspection (done); PEI/Clean-Walk (done)
- DC1-SWD-L2-1060: Steps: EC Pre-Energization Checklist (done); Vendor Pre-Energization Checklist (done); CXA Pre-Energization Inspection (done); PEI/Clean-Walk (done)
- DC1-SWD-L2-1010: Steps: EC Pre-Energization Checklist (done); Vendor Pre-Energization Checklist (done); CXA Pre-Energization Inspection (done); PEI/Clean-Walk (done)
- DC1-SWD-L2-1020: Steps: EC Pre-Energization Checklist (done); Vendor Pre-Energization Checklist (done); CXA Pre-Energization Inspection (done); PEI/Clean-Walk (done)
- DC1-SWD-L2-1030: Steps: EC Pre-Energization Checklist (done); Vendor Pre-Energization Checklist (done); CXA Pre-Energization Inspection (done); PEI/Clean-Walk (done)
- DC1-SWD-L2-1050: Steps: EC Pre-Energization Checklist (done); Vendor Pre-Energization Checklist (done); CXA Pre-Energization Inspection (done); PEI/Clean-Walk (done)

| ID | WBS | Activity | Duration | Start | Finish | Predecessors | Complete | Planned start | Planned finish | Vendor Responsible Party | Layton Discipline | Location | CX Level | Equipment |
| --- | --- | --- | --- | --- | --- | --- | --- | --- | --- | --- | --- | --- | --- | --- |
|  | 02 | **DC1-DH2100 MOD-01s Cx L2** |  |  |  |  |  |  |  |  |  |  |  |  |
|  | 03 | **DC1-DH2100 UPS-M Cx L2** |  | 2026-03-30 | 2026-03-30 |  |  |  |  |  |  |  |  |  |
| DC1-UPS-M-L2-1000 |  | DH2100 UPS-M-A21 L2 Checklist | 1d | 2026-03-30 A | 2026-03-30 A | QTS-27361, QTS-1006140 FF+2d | 100% |  |  | VER | Commissioning | DH2100 | L2 | UPS |
| DC1-UPS-M-L2-1010 |  | DH2100 UPS-M-B21 L2 Checklist | 1d | 2026-03-30 A | 2026-03-30 A | DC1-UPS-M-L2-1000 SS, QTS-1006230 FF+2d | 100% | 2026-04-16 | 2026-04-16 | VER | Commissioning | DH2100 | L2 | UPS |
| DC1-UPS-M-L2-1020 |  | DH2100 UPS-M-C21 L2 Checklist | 1d | 2026-03-30 A | 2026-03-30 A | DC1-UPS-M-L2-1010 SS, QTS-1006320 FF+2d | 100% | 2026-04-16 | 2026-04-16 | VER | Commissioning | DH2100 | L2 | UPS |
| DC1-UPS-M-L2-1030 |  | DH2100 UPS-M-D21 L2 Checklist | 1d | 2026-03-30 A | 2026-03-30 A | DC1-UPS-M-L2-1020 SS, QTS-1006410 FF+2d | 100% | 2026-04-16 | 2026-04-16 | VER | Commissioning | DH2100 | L2 | UPS |
| DC1-UPS-M-L2-1040 |  | DH2100 UPS-M-E21 L2 Checklist | 1d | 2026-03-30 A | 2026-03-30 A | DC1-UPS-M-L2-1030 SS, QTS-1006500 FF+2d | 100% | 2026-04-16 | 2026-04-16 | VER | Commissioning | DH2100 | L2 | UPS |
| DC1-UPS-M-L2-1050 |  | DH2100 UPS-M-F21 L2 Checklist | 1d | 2026-03-30 A | 2026-03-30 A | DC1-UPS-M-L2-1040 SS, QTS-1006590 FF+2d | 100% | 2026-04-16 | 2026-04-16 | VER | Commissioning | DH2100 | L2 | UPS |
| DC1-UPS-M-L2-1060 |  | DH2100 UPS-M-R21 L2 Checklist | 1d | 2026-03-30 A | 2026-03-30 A | DC1-UPS-M-L2-1050 SS, QTS-1006680 FF+2d | 100% | 2026-04-16 | 2026-04-16 | VER | Commissioning | DH2100 | L2 | UPS |
|  | 04 | **DC1-DH2100 COMPRESSOR/FAN UNITS Cx L2** |  |  |  |  |  |  |  |  |  |  |  |  |
|  | 01 | **DC1-DH2100 POD-AC UNITS A21 Cx L2** |  |  |  |  |  |  |  |  |  |  |  |  |
|  | 02 | **DC1-DH2100 POD-AC UNITS B21 Cx L2** |  |  |  |  |  |  |  |  |  |  |  |  |
|  | 03 | **DC1-DH2100 POD-AC UNITS C21 Cx L2** |  |  |  |  |  |  |  |  |  |  |  |  |
|  | 04 | **DC1-DH2100 POD-AC UNITS D21 Cx L2** |  |  |  |  |  |  |  |  |  |  |  |  |
|  | 05 | **DC1-DH2100 POD-AC UNITS E21 Cx L2** |  |  |  |  |  |  |  |  |  |  |  |  |
|  | 06 | **DC1-DH2100 POD-AC UNITS F21 Cx L2** |  |  |  |  |  |  |  |  |  |  |  |  |
|  | 07 | **DC1-DH2100 POD-AC UNITS R21 Cx L2** |  |  |  |  |  |  |  |  |  |  |  |  |
|  | 04 | **DC1-DH2100 BUS-R1X/BUS-R2X Cx L2** |  | 2026-04-22 | 2026-05-06 |  |  |  |  |  |  |  |  |  |
| DC1-BUS-L2-1010 |  | DH2100 BUS-R1 (R11) CATCHER BUS Duct L2 Checklist | 3d | 2026-04-22 A | 2026-04-27 A | QTS-7081, DC1-COMM-1020 SS | 100% | 2026-04-22 | 2026-04-24 | LAY | Commissioning | DH2100 | L2 | BUS DUCT |
| DC1-BUS-L2-1000 |  | DH2100 BUS-R2 (R21) MAINTENANCE BUS Duct L2 Checklist | 1d | 2026-05-05 A | 2026-05-06 A | QTS-7031 | 100% | 2026-05-05 | 2026-05-05 | LAY | Commissioning | DH2100 | L2 | BUS DUCT |
|  | 05 | **DC1-DH2100 ATS Cx L2** |  | 2026-05-05 | 2026-05-19 |  |  |  |  |  |  |  |  |  |
|  | 01 | **DC1-DH2100 ATS-A21 Cx L2** |  | 2026-05-05 | 2026-05-18 |  |  |  |  |  |  |  |  |  |
| DC1-ATS-L2-1000 |  | DH2100 ATS-A21-01 L2 Checklist | 3d | 2026-05-05 A | 2026-05-18 A | QTS-43941, QTS-1006980 FF+2d | 100% | 2026-05-05 | 2026-05-07 | MAV | Commissioning | DH2100 | L2 | ATS |
| DC1-ATS-L2-1010 |  | DH2100 ATS-A21-02 L2 Checklist | 3d | 2026-05-05 A | 2026-05-18 A | QTS-43941, QTS-1006980 FF+2d | 100% | 2026-05-27 | 2026-05-29 | MAV | Commissioning | DH2100 | L2 | ATS |
| DC1-ATS-L2-1020 |  | DH2100 ATS-A21-03 L2 Checklist | 3d | 2026-05-05 A | 2026-05-18 A | QTS-43941, QTS-1006980 FF+2d | 100% | 2026-05-27 | 2026-05-29 | MAV | Commissioning | DH2100 | L2 | ATS |
| DC1-ATS-L2-1030 |  | DH2100 ATS-A21-04 L2 Checklist | 3d | 2026-05-05 A | 2026-05-18 A | QTS-43941, QTS-1006980 FF+2d | 100% | 2026-05-27 | 2026-05-29 | MAV | Commissioning | DH2100 | L2 | ATS |
| DC1-ATS-L2-1040 |  | DH2100 ATS-A21-05 L2 Checklist | 3d | 2026-05-05 A | 2026-05-18 A | QTS-43941, QTS-1006980 FF+2d | 100% | 2026-05-27 | 2026-05-29 | MAV | Commissioning | DH2100 | L2 | ATS |
| DC1-ATS-L2-1050 |  | DH2100 ATS-A21-06 L2 Checklist | 3d | 2026-05-05 A | 2026-05-18 A | QTS-43941, QTS-1006980 FF+2d | 100% | 2026-05-27 | 2026-05-29 | MAV | Commissioning | DH2100 | L2 | ATS |

Notes:
- DC1-UPS-M-L2-1000: Steps: EC Pre-Energization Checklist; Vendor Pre-Energization Checklist; CXA Pre-Energization Inspection; PEI/Clean-Walk
- DC1-UPS-M-L2-1010: Steps: EC Pre-Energization Checklist; Vendor Pre-Energization Checklist; CXA Pre-Energization Inspection; PEI/Clean-Walk
- DC1-UPS-M-L2-1020: Steps: EC Pre-Energization Checklist; Vendor Pre-Energization Checklist; CXA Pre-Energization Inspection; PEI/Clean-Walk
- DC1-UPS-M-L2-1030: Steps: EC Pre-Energization Checklist; Vendor Pre-Energization Checklist; CXA Pre-Energization Inspection; PEI/Clean-Walk
- DC1-UPS-M-L2-1040: Steps: EC Pre-Energization Checklist; Vendor Pre-Energization Checklist; CXA Pre-Energization Inspection; PEI/Clean-Walk
- DC1-UPS-M-L2-1050: Steps: EC Pre-Energization Checklist; Vendor Pre-Energization Checklist; CXA Pre-Energization Inspection; PEI/Clean-Walk
- DC1-UPS-M-L2-1060: Steps: EC Pre-Energization Checklist; Vendor Pre-Energization Checklist; CXA Pre-Energization Inspection; PEI/Clean-Walk
- DC1-BUS-L2-1010: Steps: EC Pre-Energization Checklist; Vendor Pre-Energization Checklist; CXA Pre-Energization Inspection; PEI/Clean-Walk
- DC1-BUS-L2-1000: Steps: EC Pre-Energization Checklist; Vendor Pre-Energization Checklist; CXA Pre-Energization Inspection; PEI/Clean-Walk
- DC1-ATS-L2-1000: Steps: EC Installation Checklist; CC Installation Checklist; Vendor Pre-Energization Checklist; CXA Pre-Energization Inspection; PEI/Clean-Walk
- DC1-ATS-L2-1010: Steps: EC Installation Checklist; CC Installation Checklist; Vendor Pre-Energization Checklist; CXA Pre-Energization Inspection; PEI/Clean-Walk
- DC1-ATS-L2-1020: Steps: EC Installation Checklist; CC Installation Checklist; Vendor Pre-Energization Checklist; CXA Pre-Energization Inspection; PEI/Clean-Walk
- DC1-ATS-L2-1030: Steps: EC Installation Checklist; CC Installation Checklist; Vendor Pre-Energization Checklist; CXA Pre-Energization Inspection; PEI/Clean-Walk
- DC1-ATS-L2-1040: Steps: EC Installation Checklist; CC Installation Checklist; Vendor Pre-Energization Checklist; CXA Pre-Energization Inspection; PEI/Clean-Walk
- DC1-ATS-L2-1050: Steps: EC Installation Checklist; CC Installation Checklist; Vendor Pre-Energization Checklist; CXA Pre-Energization Inspection; PEI/Clean-Walk

| ID | WBS | Activity | Duration | Start | Finish | Predecessors | Complete | Planned start | Planned finish | Vendor Responsible Party | Layton Discipline | Location | CX Level | Equipment |
| --- | --- | --- | --- | --- | --- | --- | --- | --- | --- | --- | --- | --- | --- | --- |
|  | 02 | **DC1-DH2100 ATS-B21 Cx L2** |  | 2026-05-05 | 2026-05-18 |  |  |  |  |  |  |  |  |  |
| DC1-ATS-L2-1060 |  | DH2100 ATS-B21-01 L2 Checklist | 3d | 2026-05-05 A | 2026-05-18 A | QTS-8761, QTS-1006960 FF+2d | 100% | 2026-05-27 | 2026-05-29 | MAV | Commissioning | DH2100 | L2 | ATS |
| DC1-ATS-L2-1070 |  | DH2100 ATS-B21-02 L2 Checklist | 3d | 2026-05-05 A | 2026-05-18 A | QTS-8761, QTS-1006960 FF+2d | 100% | 2026-05-27 | 2026-05-29 | MAV | Commissioning | DH2100 | L2 | ATS |
| DC1-ATS-L2-1080 |  | DH2100 ATS-B21-03 L2 Checklist | 3d | 2026-05-05 A | 2026-05-18 A | QTS-8761, QTS-1006960 FF+2d | 100% | 2026-05-27 | 2026-05-29 | MAV | Commissioning | DH2100 | L2 | ATS |
| DC1-ATS-L2-1090 |  | DH2100 ATS-B21-04 L2 Checklist | 3d | 2026-05-05 A | 2026-05-18 A | QTS-8761, QTS-1006960 FF+2d | 100% | 2026-05-27 | 2026-05-29 | MAV | Commissioning | DH2100 | L2 | ATS |
| DC1-ATS-L2-1100 |  | DH2100 ATS-B21-05 L2 Checklist | 3d | 2026-05-05 A | 2026-05-18 A | QTS-8761, QTS-1006960 FF+2d | 100% | 2026-05-27 | 2026-05-29 | MAV | Commissioning | DH2100 | L2 | ATS |
| DC1-ATS-L2-1110 |  | DH2100 ATS-B21-06 L2 Checklist | 3d | 2026-05-05 A | 2026-05-18 A | QTS-8761, QTS-1006960 FF+2d | 100% | 2026-05-27 | 2026-05-29 | MAV | Commissioning | DH2100 | L2 | ATS |
|  | 03 | **DC1-DH2100 ATS-C21 Cx L2** |  | 2026-05-05 | 2026-05-18 |  |  |  |  |  |  |  |  |  |
| DC1-ATS-L2-1120 |  | DH2100 ATS-C21-01 L2 Checklist | 3d | 2026-05-05 A | 2026-05-18 A | QTS-8791, QTS-1006940 FF+2d | 100% | 2026-05-27 | 2026-05-29 | MAV | Commissioning | DH2100 | L2 | ATS |
| DC1-ATS-L2-1130 |  | DH2100 ATS-C21-02 L2 Checklist | 3d | 2026-05-05 A | 2026-05-18 A | QTS-8791, QTS-1006940 FF+2d | 100% | 2026-05-27 | 2026-05-29 | MAV | Commissioning | DH2100 | L2 | ATS |
| DC1-ATS-L2-1140 |  | DH2100 ATS-C21-03 L2 Checklist | 3d | 2026-05-05 A | 2026-05-18 A | QTS-8791, QTS-1006940 FF+2d | 100% | 2026-05-27 | 2026-05-29 | MAV | Commissioning | DH2100 | L2 | ATS |
| DC1-ATS-L2-1150 |  | DH2100 ATS-C21-04 L2 Checklist | 3d | 2026-05-05 A | 2026-05-18 A | QTS-8791, QTS-1006940 FF+2d | 100% | 2026-05-27 | 2026-05-29 | MAV | Commissioning | DH2100 | L2 | ATS |
| DC1-ATS-L2-1160 |  | DH2100 ATS-C21-05 L2 Checklist | 3d | 2026-05-05 A | 2026-05-18 A | QTS-8791, QTS-1006940 FF+2d | 100% | 2026-05-27 | 2026-05-29 | MAV | Commissioning | DH2100 | L2 | ATS |
| DC1-ATS-L2-1170 |  | DH2100 ATS-C21-06 L2 Checklist | 3d | 2026-05-05 A | 2026-05-18 A | QTS-8791, QTS-1006940 FF+2d | 100% | 2026-05-27 | 2026-05-29 | MAV | Commissioning | DH2100 | L2 | ATS |
|  | 04 | **DC1-DH2100 ATS-D21 Cx L2** |  | 2026-05-05 | 2026-05-18 |  |  |  |  |  |  |  |  |  |
| DC1-ATS-L2-1180 |  | DH2100 ATS-D21-01 L2 Checklist | 3d | 2026-05-05 A | 2026-05-18 A | QTS-8811, QTS-1006920 FF+2d | 100% | 2026-05-27 | 2026-05-29 | MAV | Commissioning | DH2100 | L2 | ATS |
| DC1-ATS-L2-1190 |  | DH2100 ATS-D21-02 L2 Checklist | 3d | 2026-05-05 A | 2026-05-18 A | QTS-8811, QTS-1006920 FF+2d | 100% | 2026-05-27 | 2026-05-29 | MAV | Commissioning | DH2100 | L2 | ATS |
| DC1-ATS-L2-1200 |  | DH2100 ATS-D21-03 L2 Checklist | 3d | 2026-05-05 A | 2026-05-18 A | QTS-8811, QTS-1006920 FF+2d | 100% | 2026-05-27 | 2026-05-29 | MAV | Commissioning | DH2100 | L2 | ATS |
| DC1-ATS-L2-1210 |  | DH2100 ATS-D21-04 L2 Checklist | 3d | 2026-05-05 A | 2026-05-18 A | QTS-8811, QTS-1006920 FF+2d | 100% | 2026-05-27 | 2026-05-29 | MAV | Commissioning | DH2100 | L2 | ATS |
| DC1-ATS-L2-1220 |  | DH2100 ATS-D21-05 L2 Checklist | 3d | 2026-05-05 A | 2026-05-18 A | QTS-8811, QTS-1006920 FF+2d | 100% | 2026-05-27 | 2026-05-29 | MAV | Commissioning | DH2100 | L2 | ATS |
| DC1-ATS-L2-1230 |  | DH2100 ATS-D21-06 L2 Checklist | 3d | 2026-05-05 A | 2026-05-18 A | QTS-8811, QTS-1006920 FF+2d | 100% | 2026-05-27 | 2026-05-29 | MAV | Commissioning | DH2100 | L2 | ATS |
|  | 05 | **DC1-DH2100 ATS-E21 Cx L2** |  | 2026-05-11 | 2026-05-19 |  |  |  |  |  |  |  |  |  |
| DC1-ATS-L2-1240 |  | DH2100 ATS-E21-01 L2 Checklist | 3d | 2026-05-11 A | 2026-05-19 A | QTS-8841, QTS-1006900 FF+2d | 100% | 2026-05-27 | 2026-05-29 | MAV | Commissioning | DH2100 | L2 | ATS |
| DC1-ATS-L2-1250 |  | DH2100 ATS-E21-02 L2 Checklist | 3d | 2026-05-11 A | 2026-05-19 A | QTS-8841, QTS-1006900 FF+2d | 100% | 2026-05-27 | 2026-05-29 | MAV | Commissioning | DH2100 | L2 | ATS |
| DC1-ATS-L2-1260 |  | DH2100 ATS-E21-03 L2 Checklist | 3d | 2026-05-11 A | 2026-05-19 A | QTS-8841, QTS-1006900 FF+2d | 100% | 2026-05-27 | 2026-05-29 | MAV | Commissioning | DH2100 | L2 | ATS |
| DC1-ATS-L2-1270 |  | DH2100 ATS-E21-04 L2 Checklist | 3d | 2026-05-11 A | 2026-05-19 A | QTS-8841, QTS-1006900 FF+2d | 100% | 2026-05-27 | 2026-05-29 | MAV | Commissioning | DH2100 | L2 | ATS |
| DC1-ATS-L2-1280 |  | DH2100 ATS-E21-05 L2 Checklist | 3d | 2026-05-11 A | 2026-05-19 A | QTS-8841, QTS-1006900 FF+2d | 100% | 2026-05-27 | 2026-05-29 | MAV | Commissioning | DH2100 | L2 | ATS |
| DC1-ATS-L2-1290 |  | DH2100 ATS-E21-06 L2 Checklist | 3d | 2026-05-11 A | 2026-05-19 A | QTS-8841, QTS-1006900 FF+2d | 100% | 2026-05-27 | 2026-05-29 | MAV | Commissioning | DH2100 | L2 | ATS |

Notes:
- DC1-ATS-L2-1060: Steps: EC Installation Checklist; CC Installation Checklist; Vendor Pre-Energization Checklist; CXA Pre-Energization Inspection; PEI/Clean-Walk
- DC1-ATS-L2-1070: Steps: EC Installation Checklist; CC Installation Checklist; Vendor Pre-Energization Checklist; CXA Pre-Energization Inspection; PEI/Clean-Walk
- DC1-ATS-L2-1080: Steps: EC Installation Checklist; CC Installation Checklist; Vendor Pre-Energization Checklist; CXA Pre-Energization Inspection; PEI/Clean-Walk
- DC1-ATS-L2-1090: Steps: EC Installation Checklist; CC Installation Checklist; Vendor Pre-Energization Checklist; CXA Pre-Energization Inspection; PEI/Clean-Walk
- DC1-ATS-L2-1100: Steps: EC Installation Checklist; CC Installation Checklist; Vendor Pre-Energization Checklist; CXA Pre-Energization Inspection; PEI/Clean-Walk
- DC1-ATS-L2-1110: Steps: EC Installation Checklist; CC Installation Checklist; Vendor Pre-Energization Checklist; CXA Pre-Energization Inspection; PEI/Clean-Walk
- DC1-ATS-L2-1120: Steps: EC Installation Checklist; CC Installation Checklist; Vendor Pre-Energization Checklist; CXA Pre-Energization Inspection; PEI/Clean-Walk
- DC1-ATS-L2-1130: Steps: EC Installation Checklist; CC Installation Checklist; Vendor Pre-Energization Checklist; CXA Pre-Energization Inspection; PEI/Clean-Walk
- DC1-ATS-L2-1140: Steps: EC Installation Checklist; CC Installation Checklist; Vendor Pre-Energization Checklist; CXA Pre-Energization Inspection; PEI/Clean-Walk
- DC1-ATS-L2-1150: Steps: EC Installation Checklist; CC Installation Checklist; Vendor Pre-Energization Checklist; CXA Pre-Energization Inspection; PEI/Clean-Walk
- DC1-ATS-L2-1160: Steps: EC Installation Checklist; CC Installation Checklist; Vendor Pre-Energization Checklist; CXA Pre-Energization Inspection; PEI/Clean-Walk
- DC1-ATS-L2-1170: Steps: EC Installation Checklist; CC Installation Checklist; Vendor Pre-Energization Checklist; CXA Pre-Energization Inspection; PEI/Clean-Walk
- DC1-ATS-L2-1180: Steps: EC Installation Checklist; CC Installation Checklist; Vendor Pre-Energization Checklist; CXA Pre-Energization Inspection; PEI/Clean-Walk
- DC1-ATS-L2-1190: Steps: EC Installation Checklist; CC Installation Checklist; Vendor Pre-Energization Checklist; CXA Pre-Energization Inspection; PEI/Clean-Walk
- DC1-ATS-L2-1200: Steps: EC Installation Checklist; CC Installation Checklist; Vendor Pre-Energization Checklist; CXA Pre-Energization Inspection; PEI/Clean-Walk
- DC1-ATS-L2-1210: Steps: EC Installation Checklist; CC Installation Checklist; Vendor Pre-Energization Checklist; CXA Pre-Energization Inspection; PEI/Clean-Walk
- DC1-ATS-L2-1220: Steps: EC Installation Checklist; CC Installation Checklist; Vendor Pre-Energization Checklist; CXA Pre-Energization Inspection; PEI/Clean-Walk
- DC1-ATS-L2-1230: Steps: EC Installation Checklist; CC Installation Checklist; Vendor Pre-Energization Checklist; CXA Pre-Energization Inspection; PEI/Clean-Walk
- DC1-ATS-L2-1240: Steps: EC Installation Checklist; CC Installation Checklist; Vendor Pre-Energization Checklist; CXA Pre-Energization Inspection; PEI/Clean-Walk
- DC1-ATS-L2-1250: Steps: EC Installation Checklist; CC Installation Checklist; Vendor Pre-Energization Checklist; CXA Pre-Energization Inspection; PEI/Clean-Walk
- DC1-ATS-L2-1260: Steps: EC Installation Checklist; CC Installation Checklist; Vendor Pre-Energization Checklist; CXA Pre-Energization Inspection; PEI/Clean-Walk
- DC1-ATS-L2-1270: Steps: EC Installation Checklist; CC Installation Checklist; Vendor Pre-Energization Checklist; CXA Pre-Energization Inspection; PEI/Clean-Walk
- DC1-ATS-L2-1280: Steps: EC Installation Checklist; CC Installation Checklist; Vendor Pre-Energization Checklist; CXA Pre-Energization Inspection; PEI/Clean-Walk
- DC1-ATS-L2-1290: Steps: EC Installation Checklist; CC Installation Checklist; Vendor Pre-Energization Checklist; CXA Pre-Energization Inspection; PEI/Clean-Walk

| ID | WBS | Activity | Duration | Start | Finish | Predecessors | Complete | Planned start | Planned finish | Vendor Responsible Party | Layton Discipline | Location | CX Level | Equipment |
| --- | --- | --- | --- | --- | --- | --- | --- | --- | --- | --- | --- | --- | --- | --- |
|  | 06 | **DC1-DH2100 ATS-F21 Cx L2** |  | 2026-05-11 | 2026-05-19 |  |  |  |  |  |  |  |  |  |
| DC1-ATS-L2-1300 |  | DH2100 ATS-F21-01 L2 Checklist | 3d | 2026-05-11 A | 2026-05-19 A | QTS-8871, QTS-1006880 FF+2d | 100% | 2026-05-27 | 2026-05-29 | MAV | Commissioning | DH2100 | L2 | ATS |
| DC1-ATS-L2-1310 |  | DH2100 ATS-F21-02 L2 Checklist | 3d | 2026-05-11 A | 2026-05-19 A | QTS-8871, QTS-1006880 FF+2d | 100% | 2026-05-27 | 2026-05-29 | MAV | Commissioning | DH2100 | L2 | ATS |
| DC1-ATS-L2-1320 |  | DH2100 ATS-F21-03 L2 Checklist | 3d | 2026-05-11 A | 2026-05-19 A | QTS-8871, QTS-1006880 FF+2d | 100% | 2026-05-27 | 2026-05-29 | MAV | Commissioning | DH2100 | L2 | ATS |
| DC1-ATS-L2-1330 |  | DH2100 ATS-F21-04 L2 Checklist | 3d | 2026-05-11 A | 2026-05-19 A | QTS-8871, QTS-1006880 FF+2d | 100% | 2026-05-27 | 2026-05-29 | MAV | Commissioning | DH2100 | L2 | ATS |
| DC1-ATS-L2-1340 |  | DH2100 ATS-F21-05 L2 Checklist | 3d | 2026-05-11 A | 2026-05-19 A | QTS-8871, QTS-1006880 FF+2d | 100% | 2026-05-27 | 2026-05-29 | MAV | Commissioning | DH2100 | L2 | ATS |
| DC1-ATS-L2-1350 |  | DH2100 ATS-F21-06 L2 Checklist | 3d | 2026-05-11 A | 2026-05-19 A | QTS-8871, QTS-1006880 FF+2d | 100% | 2026-05-27 | 2026-05-29 | MAV | Commissioning | DH2100 | L2 | ATS |
|  | 06 | **DC1-DH2100 CODs Cx L2** |  | 2026-05-12 | 2026-05-20 |  |  |  |  |  |  |  |  |  |
|  | 01 | **DC1-DH2100 COD A21 Cx L2** |  | 2026-05-13 | 2026-05-18 |  |  |  |  |  |  |  |  |  |
| DC1-COD-L2-1000 |  | DH2100 COD-A21-01 L2 Checklist | 3d | 2026-05-13 A | 2026-05-18 A | QTS-25231, QTS - 24891, QTS-1006130 FF+2d | 100% | 2026-05-27 | 2026-05-29 | SIE | Commissioning | DH2100 | L2 | COD |
| DC1-COD-L2-1010 |  | DH2100 COD-A21-02 L2 Checklist | 3d | 2026-05-13 A | 2026-05-18 A | QTS-25231, QTS - 24891, QTS-1006130 FF+2d | 100% | 2026-05-27 | 2026-05-29 | SIE | Commissioning | DH2100 | L2 | COD |
| DC1-COD-L2-1020 |  | DH2100 COD-A21-03 L2 Checklist | 3d | 2026-05-13 A | 2026-05-18 A | QTS-25231, QTS - 24891, QTS-1006130 FF+2d | 100% | 2026-05-27 | 2026-05-29 | SIE | Commissioning | DH2100 | L2 | COD |
| DC1-COD-L2-1030 |  | DH2100 COD-A21-04 L2 Checklist | 3d | 2026-05-13 A | 2026-05-18 A | QTS-25231, QTS - 24891, QTS-1006130 FF+2d | 100% | 2026-05-27 | 2026-05-29 | SIE | Commissioning | DH2100 | L2 | COD |
| DC1-COD-L2-1040 |  | DH2100 COD-A21-05 L2 Checklist | 3d | 2026-05-13 A | 2026-05-18 A | QTS-25231, QTS - 24891, QTS-1006130 FF+2d | 100% | 2026-05-27 | 2026-05-29 | SIE | Commissioning | DH2100 | L2 | COD |
| DC1-COD-L2-1050 |  | DH2100 COD-A21-06 L2 Checklist | 3d | 2026-05-13 A | 2026-05-18 A | QTS-25231, QTS - 24891, QTS-1006130 FF+2d | 100% | 2026-05-27 | 2026-05-29 | SIE | Commissioning | DH2100 | L2 | COD |
|  | 02 | **DC1-DH2100 COD B21 Cx L2** |  | 2026-05-12 | 2026-05-18 |  |  |  |  |  |  |  |  |  |
| DC1-COD-L2-1060 |  | DH2100 COD-B21-01 L2 Checklist | 3d | 2026-05-12 A | 2026-05-18 A | QTS-8751, QTS - 24891, QTS-1006220 FF+2d | 100% | 2026-05-27 | 2026-05-29 | SIE | Commissioning | DH2100 | L2 | COD |
| DC1-COD-L2-1070 |  | DH2100 COD-B21-02 L2 Checklist | 3d | 2026-05-12 A | 2026-05-18 A | QTS-8751, QTS - 24891, QTS-1006220 FF+2d | 100% | 2026-05-27 | 2026-05-29 | SIE | Commissioning | DH2100 | L2 | COD |
| DC1-COD-L2-1080 |  | DH2100 COD-B21-03 L2 Checklist | 3d | 2026-05-12 A | 2026-05-18 A | QTS-8751, QTS - 24891, QTS-1006220 FF+2d | 100% | 2026-05-27 | 2026-05-29 | SIE | Commissioning | DH2100 | L2 | COD |
| DC1-COD-L2-1090 |  | DH2100 COD-B21-04 L2 Checklist | 3d | 2026-05-12 A | 2026-05-18 A | QTS-8751, QTS - 24891, QTS-1006220 FF+2d | 100% | 2026-05-27 | 2026-05-29 | SIE | Commissioning | DH2100 | L2 | COD |
| DC1-COD-L2-1100 |  | DH2100 COD-B21-05 L2 Checklist | 3d | 2026-05-12 A | 2026-05-18 A | QTS-8751, QTS - 24891, QTS-1006220 FF+2d | 100% | 2026-05-27 | 2026-05-29 | SIE | Commissioning | DH2100 | L2 | COD |
| DC1-COD-L2-1110 |  | DH2100 COD-B21-06 L2 Checklist | 3d | 2026-05-12 A | 2026-05-18 A | QTS-8751, QTS - 24891, QTS-1006220 FF+2d | 100% | 2026-05-27 | 2026-05-29 | SIE | Commissioning | DH2100 | L2 | COD |
|  | 03 | **DC1-DH2100 COD C21 Cx L2** |  | 2026-05-12 | 2026-05-20 |  |  |  |  |  |  |  |  |  |
| DC1-COD-L2-1120 |  | DH2100 COD-C21-01 L2 Checklist | 3d | 2026-05-12 A | 2026-05-20 A | QTS-8781, QTS-1006310 FF+2d, QTS - 25701 | 100% | 2026-05-27 | 2026-05-29 | SIE | Commissioning | DH2100 | L2 | COD |
| DC1-COD-L2-1130 |  | DH2100 COD-C21-02 L2 Checklist | 3d | 2026-05-12 A | 2026-05-20 A | QTS-8781, QTS-1006310 FF+2d, QTS - 25701 | 100% | 2026-05-27 | 2026-05-29 | SIE | Commissioning | DH2100 | L2 | COD |
| DC1-COD-L2-1140 |  | DH2100 COD-C21-03 L2 Checklist | 3d | 2026-05-12 A | 2026-05-20 A | QTS-8781, QTS-1006310 FF+2d, QTS - 25701 | 100% | 2026-05-27 | 2026-05-29 | SIE | Commissioning | DH2100 | L2 | COD |
| DC1-COD-L2-1150 |  | DH2100 COD-C21-04 L2 Checklist | 3d | 2026-05-12 A | 2026-05-20 A | QTS-8781, QTS-1006310 FF+2d, QTS - 25701 | 100% | 2026-05-27 | 2026-05-29 | SIE | Commissioning | DH2100 | L2 | COD |
| DC1-COD-L2-1160 |  | DH2100 COD-C21-05 L2 Checklist | 3d | 2026-05-12 A | 2026-05-20 A | QTS-8781, QTS-1006310 FF+2d, QTS - 25701 | 100% | 2026-05-27 | 2026-05-29 | SIE | Commissioning | DH2100 | L2 | COD |
| DC1-COD-L2-1170 |  | DH2100 COD-C21-06 L2 Checklist | 3d | 2026-05-12 A | 2026-05-20 A | QTS-8781, QTS-1006310 FF+2d, QTS - 25701 | 100% | 2026-05-27 | 2026-05-29 | SIE | Commissioning | DH2100 | L2 | COD |

Notes:
- DC1-ATS-L2-1300: Steps: EC Installation Checklist; CC Installation Checklist; Vendor Pre-Energization Checklist; CXA Pre-Energization Inspection; PEI/Clean-Walk
- DC1-ATS-L2-1310: Steps: EC Installation Checklist; CC Installation Checklist; Vendor Pre-Energization Checklist; CXA Pre-Energization Inspection; PEI/Clean-Walk
- DC1-ATS-L2-1320: Steps: EC Installation Checklist; CC Installation Checklist; Vendor Pre-Energization Checklist; CXA Pre-Energization Inspection; PEI/Clean-Walk
- DC1-ATS-L2-1330: Steps: EC Installation Checklist; CC Installation Checklist; Vendor Pre-Energization Checklist; CXA Pre-Energization Inspection; PEI/Clean-Walk
- DC1-ATS-L2-1340: Steps: EC Installation Checklist; CC Installation Checklist; Vendor Pre-Energization Checklist; CXA Pre-Energization Inspection; PEI/Clean-Walk
- DC1-ATS-L2-1350: Steps: EC Installation Checklist; CC Installation Checklist; Vendor Pre-Energization Checklist; CXA Pre-Energization Inspection; PEI/Clean-Walk
- DC1-COD-L2-1000: Steps: EC Installation Checklist; CC Installation Checklist; Vendor Pre-Energization Checklist; CXA Pre-Energization Inspection; PEI/Clean-Walk
- DC1-COD-L2-1010: Steps: EC Installation Checklist; CC Installation Checklist; Vendor Pre-Energization Checklist; CXA Pre-Energization Inspection; PEI/Clean-Walk
- DC1-COD-L2-1020: Steps: EC Installation Checklist; CC Installation Checklist; Vendor Pre-Energization Checklist; CXA Pre-Energization Inspection; PEI/Clean-Walk
- DC1-COD-L2-1030: Steps: EC Installation Checklist; CC Installation Checklist; Vendor Pre-Energization Checklist; CXA Pre-Energization Inspection; PEI/Clean-Walk
- DC1-COD-L2-1040: Steps: EC Installation Checklist; CC Installation Checklist; Vendor Pre-Energization Checklist; CXA Pre-Energization Inspection; PEI/Clean-Walk
- DC1-COD-L2-1050: Steps: EC Installation Checklist; CC Installation Checklist; Vendor Pre-Energization Checklist; CXA Pre-Energization Inspection; PEI/Clean-Walk
- DC1-COD-L2-1060: Steps: EC Installation Checklist; CC Installation Checklist; Vendor Pre-Energization Checklist; CXA Pre-Energization Inspection; PEI/Clean-Walk
- DC1-COD-L2-1070: Steps: EC Installation Checklist; CC Installation Checklist; Vendor Pre-Energization Checklist; CXA Pre-Energization Inspection; PEI/Clean-Walk
- DC1-COD-L2-1080: Steps: EC Installation Checklist; CC Installation Checklist; Vendor Pre-Energization Checklist; CXA Pre-Energization Inspection; PEI/Clean-Walk
- DC1-COD-L2-1090: Steps: EC Installation Checklist; CC Installation Checklist; Vendor Pre-Energization Checklist; CXA Pre-Energization Inspection; PEI/Clean-Walk
- DC1-COD-L2-1100: Steps: EC Installation Checklist; CC Installation Checklist; Vendor Pre-Energization Checklist; CXA Pre-Energization Inspection; PEI/Clean-Walk
- DC1-COD-L2-1110: Steps: EC Installation Checklist; CC Installation Checklist; Vendor Pre-Energization Checklist; CXA Pre-Energization Inspection; PEI/Clean-Walk
- DC1-COD-L2-1120: Steps: EC Installation Checklist; CC Installation Checklist; Vendor Pre-Energization Checklist; CXA Pre-Energization Inspection; PEI/Clean-Walk
- DC1-COD-L2-1130: Steps: EC Installation Checklist; CC Installation Checklist; Vendor Pre-Energization Checklist; CXA Pre-Energization Inspection; PEI/Clean-Walk
- DC1-COD-L2-1140: Steps: EC Installation Checklist; CC Installation Checklist; Vendor Pre-Energization Checklist; CXA Pre-Energization Inspection; PEI/Clean-Walk
- DC1-COD-L2-1150: Steps: EC Installation Checklist; CC Installation Checklist; Vendor Pre-Energization Checklist; CXA Pre-Energization Inspection; PEI/Clean-Walk
- DC1-COD-L2-1160: Steps: EC Installation Checklist; CC Installation Checklist; Vendor Pre-Energization Checklist; CXA Pre-Energization Inspection; PEI/Clean-Walk
- DC1-COD-L2-1170: Steps: EC Installation Checklist; CC Installation Checklist; Vendor Pre-Energization Checklist; CXA Pre-Energization Inspection; PEI/Clean-Walk

| ID | WBS | Activity | Duration | Start | Finish | Predecessors | Complete | Planned start | Planned finish | Vendor Responsible Party | Layton Discipline | Location | CX Level | Equipment |
| --- | --- | --- | --- | --- | --- | --- | --- | --- | --- | --- | --- | --- | --- | --- |
|  | 04 | **DC1-DH2100 COD D21 Cx L2** |  | 2026-05-12 | 2026-05-19 |  |  |  |  |  |  |  |  |  |
| DC1-COD-L2-1180 |  | DH2100 COD-D21-01 L2 Checklist | 3d | 2026-05-12 A | 2026-05-19 A | QTS-8821, QTS-1006400 FF+2d, QTS - 25701 | 100% | 2026-05-27 | 2026-05-29 | SIE | Commissioning | DH2100 | L2 | COD |
| DC1-COD-L2-1190 |  | DH2100 COD-D21-02 L2 Checklist | 3d | 2026-05-12 A | 2026-05-19 A | QTS-8821, QTS-1006400 FF+2d, QTS - 25701 | 100% | 2026-05-27 | 2026-05-29 | SIE | Commissioning | DH2100 | L2 | COD |
| DC1-COD-L2-1200 |  | DH2100 COD-D21-03 L2 Checklist | 3d | 2026-05-12 A | 2026-05-19 A | QTS-8821, QTS-1006400 FF+2d, QTS - 25701 | 100% | 2026-05-27 | 2026-05-29 | SIE | Commissioning | DH2100 | L2 | COD |
| DC1-COD-L2-1210 |  | DH2100 COD-D21-04 L2 Checklist | 3d | 2026-05-12 A | 2026-05-19 A | QTS-8821, QTS-1006400 FF+2d, QTS - 25701 | 100% | 2026-05-27 | 2026-05-29 | SIE | Commissioning | DH2100 | L2 | COD |
| DC1-COD-L2-1220 |  | DH2100 COD-D21-05 L2 Checklist | 3d | 2026-05-12 A | 2026-05-19 A | QTS-8821, QTS-1006400 FF+2d, QTS - 25701 | 100% | 2026-05-27 | 2026-05-29 | SIE | Commissioning | DH2100 | L2 | COD |
| DC1-COD-L2-1230 |  | DH2100 COD-D21-06 L2 Checklist | 3d | 2026-05-12 A | 2026-05-19 A | QTS-8821, QTS-1006400 FF+2d, QTS - 25701 | 100% | 2026-05-27 | 2026-05-29 | SIE | Commissioning | DH2100 | L2 | COD |
|  | 05 | **DC1-DH2100 COD E21 Cx L2** |  | 2026-05-12 | 2026-05-19 |  |  |  |  |  |  |  |  |  |
| DC1-COD-L2-1240 |  | DH2100 COD-E21-01 L2 Checklist | 3d | 2026-05-12 A | 2026-05-19 A | QTS-8851, QTS-1006490 FF+2d, QTS - 25711, QTS - 26151 | 100% | 2026-05-27 | 2026-05-29 | SIE | Commissioning | DH2100 | L2 | COD |
| DC1-COD-L2-1250 |  | DH2100 COD-E21-02 L2 Checklist | 3d | 2026-05-12 A | 2026-05-19 A | QTS-8851, QTS-1006490 FF+2d, QTS - 25711, QTS - 26151 | 100% | 2026-05-27 | 2026-05-29 | SIE | Commissioning | DH2100 | L2 | COD |
| DC1-COD-L2-1260 |  | DH2100 COD-E21-03 L2 Checklist | 3d | 2026-05-12 A | 2026-05-19 A | QTS-8851, QTS-1006490 FF+2d, QTS - 25711, QTS - 26151 | 100% | 2026-05-27 | 2026-05-29 | SIE | Commissioning | DH2100 | L2 | COD |
| DC1-COD-L2-1270 |  | DH2100 COD-E21-04 L2 Checklist | 3d | 2026-05-12 A | 2026-05-19 A | QTS-8851, QTS-1006490 FF+2d, QTS - 25711, QTS - 26151 | 100% | 2026-05-27 | 2026-05-29 | SIE | Commissioning | DH2100 | L2 | COD |
| DC1-COD-L2-1280 |  | DH2100 COD-E21-05 L2 Checklist | 3d | 2026-05-12 A | 2026-05-19 A | QTS-8851, QTS-1006490 FF+2d, QTS - 25711, QTS - 26151 | 100% | 2026-05-27 | 2026-05-29 | SIE | Commissioning | DH2100 | L2 | COD |
| DC1-COD-L2-1290 |  | DH2100 COD-E21-06 L2 Checklist | 3d | 2026-05-12 A | 2026-05-19 A | QTS-8851, QTS-1006490 FF+2d, QTS - 25711, QTS - 26151 | 100% | 2026-05-27 | 2026-05-29 | SIE | Commissioning | DH2100 | L2 | COD |
|  | 06 | **DC1-DH2100 COD F21 Cx L2** |  | 2026-05-12 | 2026-05-19 |  |  |  |  |  |  |  |  |  |
| DC1-COD-L2-1300 |  | DH2100 COD-F21-01 L2 Checklist | 3d | 2026-05-12 A | 2026-05-19 A | QTS-8881, QTS-1006580 FF+2d, QTS - 25711, QTS - 26151 | 100% | 2026-05-12 | 2026-05-14 | SIE | Commissioning | DH2100 | L2 | COD |
| DC1-COD-L2-1310 |  | DH2100 COD-F21-02 L2 Checklist | 3d | 2026-05-12 A | 2026-05-19 A | QTS-8881, QTS-1006580 FF+2d, QTS - 25711, QTS - 26151 | 100% | 2026-05-12 | 2026-05-14 | SIE | Commissioning | DH2100 | L2 | COD |
| DC1-COD-L2-1320 |  | DH2100 COD-F21-03 L2 Checklist | 3d | 2026-05-12 A | 2026-05-19 A | QTS-8881, QTS-1006580 FF+2d, QTS - 25711, QTS - 26151 | 100% | 2026-05-12 | 2026-05-14 | SIE | Commissioning | DH2100 | L2 | COD |
| DC1-COD-L2-1330 |  | DH2100 COD-F21-04 L2 Checklist | 3d | 2026-05-12 A | 2026-05-19 A | QTS-8881, QTS-1006580 FF+2d, QTS - 25711, QTS - 26151 | 100% | 2026-05-12 | 2026-05-14 | SIE | Commissioning | DH2100 | L2 | COD |
| DC1-COD-L2-1340 |  | DH2100 COD-F21-05 L2 Checklist | 3d | 2026-05-12 A | 2026-05-19 A | QTS-8881, QTS-1006580 FF+2d, QTS - 25711, QTS - 26151 | 100% | 2026-05-12 | 2026-05-14 | SIE | Commissioning | DH2100 | L2 | COD |
| DC1-COD-L2-1350 |  | DH2100 COD-F21-06 L2 Checklist | 3d | 2026-05-12 A | 2026-05-19 A | QTS-8881, QTS-1006580 FF+2d, QTS - 25711, QTS - 26151 | 100% | 2026-05-12 | 2026-05-14 | SIE | Commissioning | DH2100 | L2 | COD |
|  | 07 | **DC1-DH2100 RPPs Cx L2** |  | 2026-05-18 | 2026-06-08 |  |  |  |  |  |  |  |  |  |
|  | 01 | **DC1-DH2100 RPP A21 Cx L2** |  | 2026-05-18 | 2026-06-02 |  |  |  |  |  |  |  |  |  |
| DC1-RPP-L2-1000 |  | DH2100 RPP-A21-01 A/B L2 Checklist | 3d | 2026-05-18 A | 2026-06-02 A | QTS - 1290 | 100% | 2026-05-18 | 2026-05-20 | SQD | Commissioning | DH2100 | L2 | RPP |
| DC1-RPP-L2-1010 |  | DH2100 RPP-A21-02 A/B L2 Checklist | 3d | 2026-05-18 A | 2026-06-02 A | QTS - 1290 | 100% | 2026-05-18 | 2026-05-20 | SQD | Commissioning | DH2100 | L2 | RPP |
| DC1-RPP-L2-1020 |  | DH2100 RPP-A21-03 A/B L2 Checklist | 3d | 2026-05-18 A | 2026-06-02 A | QTS - 1290 | 100% | 2026-05-18 | 2026-05-20 | SQD | Commissioning | DH2100 | L2 | RPP |
| DC1-RPP-L2-1030 |  | DH2100 RPP-A21-04 A/B L2 Checklist | 3d | 2026-05-18 A | 2026-06-02 A | QTS - 1290 | 100% | 2026-05-18 | 2026-05-20 | SQD | Commissioning | DH2100 | L2 | RPP |
| DC1-RPP-L2-1040 |  | DH2100 RPP-A21-05 A/B L2 Checklist | 3d | 2026-05-18 A | 2026-06-02 A | QTS - 1290 | 100% | 2026-05-18 | 2026-05-20 | SQD | Commissioning | DH2100 | L2 | RPP |
| DC1-RPP-L2-1050 |  | DH2100 RPP-A21-06 A/B L2 Checklist | 3d | 2026-05-18 A | 2026-06-02 A | QTS - 1290 | 100% | 2026-05-18 | 2026-05-20 | SQD | Commissioning | DH2100 | L2 | RPP |

Notes:
- DC1-COD-L2-1180: Steps: EC Installation Checklist; CC Installation Checklist; Vendor Pre-Energization Checklist; CXA Pre-Energization Inspection; PEI/Clean-Walk
- DC1-COD-L2-1190: Steps: EC Installation Checklist; CC Installation Checklist; Vendor Pre-Energization Checklist; CXA Pre-Energization Inspection; PEI/Clean-Walk
- DC1-COD-L2-1200: Steps: EC Installation Checklist; CC Installation Checklist; Vendor Pre-Energization Checklist; CXA Pre-Energization Inspection; PEI/Clean-Walk
- DC1-COD-L2-1210: Steps: EC Installation Checklist; CC Installation Checklist; Vendor Pre-Energization Checklist; CXA Pre-Energization Inspection; PEI/Clean-Walk
- DC1-COD-L2-1220: Steps: EC Installation Checklist; CC Installation Checklist; Vendor Pre-Energization Checklist; CXA Pre-Energization Inspection; PEI/Clean-Walk
- DC1-COD-L2-1230: Steps: EC Installation Checklist; CC Installation Checklist; Vendor Pre-Energization Checklist; CXA Pre-Energization Inspection; PEI/Clean-Walk
- DC1-COD-L2-1240: Steps: EC Installation Checklist; CC Installation Checklist; Vendor Pre-Energization Checklist; CXA Pre-Energization Inspection; PEI/Clean-Walk
- DC1-COD-L2-1250: Steps: EC Installation Checklist; CC Installation Checklist; Vendor Pre-Energization Checklist; CXA Pre-Energization Inspection; PEI/Clean-Walk
- DC1-COD-L2-1260: Steps: EC Installation Checklist; CC Installation Checklist; Vendor Pre-Energization Checklist; CXA Pre-Energization Inspection; PEI/Clean-Walk
- DC1-COD-L2-1270: Steps: EC Installation Checklist; CC Installation Checklist; Vendor Pre-Energization Checklist; CXA Pre-Energization Inspection; PEI/Clean-Walk
- DC1-COD-L2-1280: Steps: EC Installation Checklist; CC Installation Checklist; Vendor Pre-Energization Checklist; CXA Pre-Energization Inspection; PEI/Clean-Walk
- DC1-COD-L2-1290: Steps: EC Installation Checklist; CC Installation Checklist; Vendor Pre-Energization Checklist; CXA Pre-Energization Inspection; PEI/Clean-Walk
- DC1-COD-L2-1300: Steps: EC Installation Checklist; CC Installation Checklist; Vendor Pre-Energization Checklist; CXA Pre-Energization Inspection; PEI/Clean-Walk
- DC1-COD-L2-1310: Steps: EC Installation Checklist; CC Installation Checklist; Vendor Pre-Energization Checklist; CXA Pre-Energization Inspection; PEI/Clean-Walk
- DC1-COD-L2-1320: Steps: EC Installation Checklist; CC Installation Checklist; Vendor Pre-Energization Checklist; CXA Pre-Energization Inspection; PEI/Clean-Walk
- DC1-COD-L2-1330: Steps: EC Installation Checklist; CC Installation Checklist; Vendor Pre-Energization Checklist; CXA Pre-Energization Inspection; PEI/Clean-Walk
- DC1-COD-L2-1340: Steps: EC Installation Checklist; CC Installation Checklist; Vendor Pre-Energization Checklist; CXA Pre-Energization Inspection; PEI/Clean-Walk
- DC1-COD-L2-1350: Steps: EC Installation Checklist; CC Installation Checklist; Vendor Pre-Energization Checklist; CXA Pre-Energization Inspection; PEI/Clean-Walk
- DC1-RPP-L2-1000: Steps: EC Installation Checklist; CC Installation Checklist; Vendor Pre-Energization Checklist; CXA Pre-Energization Inspection; PEI/Clean-Walk
- DC1-RPP-L2-1010: Steps: EC Installation Checklist; CC Installation Checklist; Vendor Pre-Energization Checklist; CXA Pre-Energization Inspection; PEI/Clean-Walk
- DC1-RPP-L2-1020: Steps: EC Installation Checklist; CC Installation Checklist; Vendor Pre-Energization Checklist; CXA Pre-Energization Inspection; PEI/Clean-Walk
- DC1-RPP-L2-1030: Steps: EC Installation Checklist; CC Installation Checklist; Vendor Pre-Energization Checklist; CXA Pre-Energization Inspection; PEI/Clean-Walk
- DC1-RPP-L2-1040: Steps: EC Installation Checklist; CC Installation Checklist; Vendor Pre-Energization Checklist; CXA Pre-Energization Inspection; PEI/Clean-Walk
- DC1-RPP-L2-1050: Steps: EC Installation Checklist; CC Installation Checklist; Vendor Pre-Energization Checklist; CXA Pre-Energization Inspection; PEI/Clean-Walk

| ID | WBS | Activity | Duration | Start | Finish | Predecessors | Complete | Planned start | Planned finish | Vendor Responsible Party | Layton Discipline | Location | CX Level | Equipment | Layton Super |
| --- | --- | --- | --- | --- | --- | --- | --- | --- | --- | --- | --- | --- | --- | --- | --- |
|  | 02 | **DC1-DH2100 RPP B21 Cx L2** |  | 2026-05-18 | 2026-06-02 |  |  |  |  |  |  |  |  |  |  |
| DC1-RPP-L2-1060 |  | DH2100 RPP-B21-01 A/B L2 Checklist | 3d | 2026-05-18 A | 2026-06-02 A | QTS - 1290 | 100% | 2026-05-18 | 2026-05-20 | SQD | Commissioning | DH2100 | L2 | RPP |  |
| DC1-RPP-L2-1070 |  | DH2100 RPP-B21-02 A/B L2 Checklist | 3d | 2026-05-18 A | 2026-06-02 A | QTS - 1290 | 100% | 2026-05-18 | 2026-05-20 | SQD | Commissioning | DH2100 | L2 | RPP |  |
| DC1-RPP-L2-1080 |  | DH2100 RPP-B21-03 A/B L2 Checklist | 3d | 2026-05-18 A | 2026-06-02 A | QTS - 1290 | 100% | 2026-05-18 | 2026-05-20 | SQD | Commissioning | DH2100 | L2 | RPP |  |
| DC1-RPP-L2-1090 |  | DH2100 RPP-B21-04 A/B L2 Checklist | 3d | 2026-05-18 A | 2026-06-02 A | QTS - 1290 | 100% | 2026-05-18 | 2026-05-20 | SQD | Commissioning | DH2100 | L2 | RPP |  |
| DC1-RPP-L2-1100 |  | DH2100 RPP-B21-05 A/B L2 Checklist | 3d | 2026-05-18 A | 2026-06-02 A | QTS - 1290 | 100% | 2026-05-18 | 2026-05-20 | SQD | Commissioning | DH2100 | L2 | RPP |  |
| DC1-RPP-L2-1110 |  | DH2100 RPP-B21-06 A/B L2 Checklist | 3d | 2026-05-18 A | 2026-06-02 A | QTS - 1290 | 100% | 2026-05-18 | 2026-05-20 | SQD | Commissioning | DH2100 | L2 | RPP |  |
|  | 03 | **DC1-DH2100 RPP C21 Cx L2** |  | 2026-05-18 | 2026-06-02 |  |  |  |  |  |  |  |  |  |  |
| DC1-RPP-L2-1120 |  | DH2100 RPP-C21-01 A/B L2 Checklist | 3d | 2026-05-18 A | 2026-06-02 A | QTS - 3030 | 100% | 2026-05-18 | 2026-05-20 | SQD | Commissioning | DH2100 | L2 | RPP |  |
| DC1-RPP-L2-1130 |  | DH2100 RPP-C21-02 A/B L2 Checklist | 3d | 2026-05-18 A | 2026-06-02 A | QTS - 3030 | 100% | 2026-05-18 | 2026-05-20 | SQD | Commissioning | DH2100 | L2 | RPP |  |
| DC1-RPP-L2-1140 |  | DH2100 RPP-C21-03 A/B L2 Checklist | 3d | 2026-05-18 A | 2026-06-02 A | QTS - 3030 | 100% | 2026-05-18 | 2026-05-20 | SQD | Commissioning | DH2100 | L2 | RPP |  |
| DC1-RPP-L2-1150 |  | DH2100 RPP-C21-04 A/B L2 Checklist | 3d | 2026-05-18 A | 2026-06-02 A | QTS - 3030 | 100% | 2026-05-18 | 2026-05-20 | SQD | Commissioning | DH2100 | L2 | RPP |  |
| DC1-RPP-L2-1160 |  | DH2100 RPP-C21-05 A/B L2 Checklist | 3d | 2026-05-18 A | 2026-06-02 A | QTS - 3030 | 100% | 2026-05-18 | 2026-05-20 | SQD | Commissioning | DH2100 | L2 | RPP |  |
| DC1-RPP-L2-1170 |  | DH2100 RPP-C21-06 A/B L2 Checklist | 3d | 2026-05-18 A | 2026-06-02 A | QTS - 3030 | 100% | 2026-05-18 | 2026-05-20 | SQD | Commissioning | DH2100 | L2 | RPP |  |
|  | 04 | **DC1-DH2100 RPP D21 Cx L2** |  | 2026-05-18 | 2026-06-08 |  |  |  |  |  |  |  |  |  |  |
| DC1-RPP-L2-1180 |  | DH2100 RPP-D21-01 A/B L2 Checklist | 3d | 2026-05-18 A | 2026-06-08 A | QTS - 3030 | 100% | 2026-05-18 | 2026-05-20 | SQD | Commissioning | DH2100 | L2 | RPP | Travis Todaro |
| DC1-RPP-L2-1190 |  | DH2100 RPP-D21-02 A/B L2 Checklist | 3d | 2026-05-18 A | 2026-06-08 A | QTS - 3030 | 100% | 2026-05-18 | 2026-05-20 | SQD | Commissioning | DH2100 | L2 | RPP | Travis Todaro |
| DC1-RPP-L2-1200 |  | DH2100 RPP-D21-03 A/B L2 Checklist | 3d | 2026-05-18 A | 2026-06-08 A | QTS - 3030 | 100% | 2026-05-18 | 2026-05-20 | SQD | Commissioning | DH2100 | L2 | RPP | Travis Todaro |
| DC1-RPP-L2-1210 |  | DH2100 RPP-D21-04 A/B L2 Checklist | 3d | 2026-05-18 A | 2026-06-08 A | QTS - 3030 | 100% | 2026-05-18 | 2026-05-20 | SQD | Commissioning | DH2100 | L2 | RPP | Travis Todaro |
| DC1-RPP-L2-1220 |  | DH2100 RPP-D21-05 A/B L2 Checklist | 3d | 2026-05-18 A | 2026-06-08 A | QTS - 3030 | 100% | 2026-05-18 | 2026-05-20 | SQD | Commissioning | DH2100 | L2 | RPP | Travis Todaro |
| DC1-RPP-L2-1230 |  | DH2100 RPP-D21-06 A/B L2 Checklist | 3d | 2026-05-18 A | 2026-06-08 A | QTS - 3030 | 100% | 2026-05-18 | 2026-05-20 | SQD | Commissioning | DH2100 | L2 | RPP | Travis Todaro |
|  | 05 | **DC1-DH2100 RPP E21 Cx L2** |  | 2026-05-18 | 2026-06-08 |  |  |  |  |  |  |  |  |  |  |
| DC1-RPP-L2-1240 |  | DH2100 RPP-E21-01 A/B L2 Checklist | 3d | 2026-05-18 A | 2026-06-08 A | QTS - 3260 | 100% | 2026-05-18 | 2026-05-20 | SQD | Commissioning | DH2100 | L2 | RPP | Travis Todaro |
| DC1-RPP-L2-1250 |  | DH2100 RPP-E21-02 A/B L2 Checklist | 3d | 2026-05-18 A | 2026-06-08 A | QTS - 3260 | 100% | 2026-05-18 | 2026-05-20 | SQD | Commissioning | DH2100 | L2 | RPP | Travis Todaro |
| DC1-RPP-L2-1260 |  | DH2100 RPP-E21-03 A/B L2 Checklist | 3d | 2026-05-18 A | 2026-06-08 A | QTS - 3260 | 100% | 2026-05-18 | 2026-05-20 | SQD | Commissioning | DH2100 | L2 | RPP | Travis Todaro |
| DC1-RPP-L2-1270 |  | DH2100 RPP-E21-04 A/B L2 Checklist | 3d | 2026-05-18 A | 2026-06-08 A | QTS - 3260 | 100% | 2026-05-18 | 2026-05-20 | SQD | Commissioning | DH2100 | L2 | RPP | Travis Todaro |
| DC1-RPP-L2-1280 |  | DH2100 RPP-E21-05 A/B L2 Checklist | 3d | 2026-05-18 A | 2026-06-08 A | QTS - 3260 | 100% | 2026-05-18 | 2026-05-20 | SQD | Commissioning | DH2100 | L2 | RPP | Travis Todaro |
| DC1-RPP-L2-1290 |  | DH2100 RPP-E21-06 A/B L2 Checklist | 3d | 2026-05-18 A | 2026-06-08 A | QTS - 3260 | 100% | 2026-05-18 | 2026-05-20 | SQD | Commissioning | DH2100 | L2 | RPP | Travis Todaro |

Notes:
- DC1-RPP-L2-1060: Steps: EC Installation Checklist; CC Installation Checklist; Vendor Pre-Energization Checklist; CXA Pre-Energization Inspection; PEI/Clean-Walk
- DC1-RPP-L2-1070: Steps: EC Installation Checklist; CC Installation Checklist; Vendor Pre-Energization Checklist; CXA Pre-Energization Inspection; PEI/Clean-Walk
- DC1-RPP-L2-1080: Steps: EC Installation Checklist; CC Installation Checklist; Vendor Pre-Energization Checklist; CXA Pre-Energization Inspection; PEI/Clean-Walk
- DC1-RPP-L2-1090: Steps: EC Installation Checklist; CC Installation Checklist; Vendor Pre-Energization Checklist; CXA Pre-Energization Inspection; PEI/Clean-Walk
- DC1-RPP-L2-1100: Steps: EC Installation Checklist; CC Installation Checklist; Vendor Pre-Energization Checklist; CXA Pre-Energization Inspection; PEI/Clean-Walk
- DC1-RPP-L2-1110: Steps: EC Installation Checklist; CC Installation Checklist; Vendor Pre-Energization Checklist; CXA Pre-Energization Inspection; PEI/Clean-Walk
- DC1-RPP-L2-1120: Steps: EC Installation Checklist; CC Installation Checklist; Vendor Pre-Energization Checklist; CXA Pre-Energization Inspection; PEI/Clean-Walk
- DC1-RPP-L2-1130: Steps: EC Installation Checklist; CC Installation Checklist; Vendor Pre-Energization Checklist; CXA Pre-Energization Inspection; PEI/Clean-Walk
- DC1-RPP-L2-1140: Steps: EC Installation Checklist; CC Installation Checklist; Vendor Pre-Energization Checklist; CXA Pre-Energization Inspection; PEI/Clean-Walk
- DC1-RPP-L2-1150: Steps: EC Installation Checklist; CC Installation Checklist; Vendor Pre-Energization Checklist; CXA Pre-Energization Inspection; PEI/Clean-Walk
- DC1-RPP-L2-1160: Steps: EC Installation Checklist; CC Installation Checklist; Vendor Pre-Energization Checklist; CXA Pre-Energization Inspection; PEI/Clean-Walk
- DC1-RPP-L2-1170: Steps: EC Installation Checklist; CC Installation Checklist; Vendor Pre-Energization Checklist; CXA Pre-Energization Inspection; PEI/Clean-Walk
- DC1-RPP-L2-1180: Steps: EC Installation Checklist; CC Installation Checklist; Vendor Pre-Energization Checklist; CXA Pre-Energization Inspection; PEI/Clean-Walk
- DC1-RPP-L2-1190: Steps: EC Installation Checklist; CC Installation Checklist; Vendor Pre-Energization Checklist; CXA Pre-Energization Inspection; PEI/Clean-Walk
- DC1-RPP-L2-1200: Steps: EC Installation Checklist; CC Installation Checklist; Vendor Pre-Energization Checklist; CXA Pre-Energization Inspection; PEI/Clean-Walk
- DC1-RPP-L2-1210: Steps: EC Installation Checklist; CC Installation Checklist; Vendor Pre-Energization Checklist; CXA Pre-Energization Inspection; PEI/Clean-Walk
- DC1-RPP-L2-1220: Steps: EC Installation Checklist; CC Installation Checklist; Vendor Pre-Energization Checklist; CXA Pre-Energization Inspection; PEI/Clean-Walk
- DC1-RPP-L2-1230: Steps: EC Installation Checklist; CC Installation Checklist; Vendor Pre-Energization Checklist; CXA Pre-Energization Inspection; PEI/Clean-Walk
- DC1-RPP-L2-1240: Steps: EC Installation Checklist; CC Installation Checklist; Vendor Pre-Energization Checklist; CXA Pre-Energization Inspection; PEI/Clean-Walk
- DC1-RPP-L2-1250: Steps: EC Installation Checklist; CC Installation Checklist; Vendor Pre-Energization Checklist; CXA Pre-Energization Inspection; PEI/Clean-Walk
- DC1-RPP-L2-1260: Steps: EC Installation Checklist; CC Installation Checklist; Vendor Pre-Energization Checklist; CXA Pre-Energization Inspection; PEI/Clean-Walk
- DC1-RPP-L2-1270: Steps: EC Installation Checklist; CC Installation Checklist; Vendor Pre-Energization Checklist; CXA Pre-Energization Inspection; PEI/Clean-Walk
- DC1-RPP-L2-1280: Steps: EC Installation Checklist; CC Installation Checklist; Vendor Pre-Energization Checklist; CXA Pre-Energization Inspection; PEI/Clean-Walk
- DC1-RPP-L2-1290: Steps: EC Installation Checklist; CC Installation Checklist; Vendor Pre-Energization Checklist; CXA Pre-Energization Inspection; PEI/Clean-Walk

| ID | WBS | Activity | Duration | Start | Finish | Predecessors | Complete | Planned start | Planned finish | Calendar | Vendor Responsible Party | Layton Discipline | Location | CX Level | Equipment | Layton Super | Allucent CSI Group |
| --- | --- | --- | --- | --- | --- | --- | --- | --- | --- | --- | --- | --- | --- | --- | --- | --- | --- |
|  | 06 | **DC1-DH2100 RPP F21 Cx L2** |  | 2026-05-18 | 2026-06-08 |  |  |  |  |  |  |  |  |  |  |  |  |
| DC1-RPP-L2-1300 |  | DH2100 RPP-F21-01 A/B L2 Checklist | 3d | 2026-05-18 A | 2026-06-08 A | QTS - 3260 | 100% | 2026-05-18 | 2026-05-20 |  | SQD | Commissioning | DH2100 | L2 | RPP | Travis Todaro |  |
| DC1-RPP-L2-1310 |  | DH2100 RPP-F21-02 A/B L2 Checklist | 3d | 2026-05-18 A | 2026-06-08 A | QTS - 3260 | 100% | 2026-05-18 | 2026-05-20 |  | SQD | Commissioning | DH2100 | L2 | RPP | Travis Todaro |  |
| DC1-RPP-L2-1320 |  | DH2100 RPP-F21-03 A/B L2 Checklist | 3d | 2026-05-18 A | 2026-06-08 A | QTS - 3260 | 100% | 2026-05-18 | 2026-05-20 |  | SQD | Commissioning | DH2100 | L2 | RPP | Travis Todaro |  |
| DC1-RPP-L2-1330 |  | DH2100 RPP-F21-04 A/B L2 Checklist | 3d | 2026-05-18 A | 2026-06-08 A | QTS - 3260 | 100% | 2026-05-18 | 2026-05-20 |  | SQD | Commissioning | DH2100 | L2 | RPP | Travis Todaro |  |
| DC1-RPP-L2-1340 |  | DH2100 RPP-F21-05 A/B L2 Checklist | 3d | 2026-05-18 A | 2026-06-08 A | QTS - 3260 | 100% | 2026-05-18 | 2026-05-20 |  | SQD | Commissioning | DH2100 | L2 | RPP | Travis Todaro |  |
| DC1-RPP-L2-1350 |  | DH2100 RPP-F21-06 A/B L2 Checklist | 3d | 2026-05-18 A | 2026-06-08 A | QTS - 3260 | 100% | 2026-05-18 | 2026-05-20 |  | SQD | Commissioning | DH2100 | L2 | RPP | Travis Todaro |  |
|  | 08 | **DC1-DH2100 MOD-02 Cx L2** |  | 2026-03-30 | 2026-05-06 |  |  |  |  |  |  |  |  |  |  |  |  |
| DC1-MOD02-L2-1060 |  | DH2100 MOD-R21-02 L2 Checklist | 3d | 2026-03-30 A | 2026-05-06 A | QTS-1006660 FF+2d, QTS-1008720 FF | 100% | 2026-03-30 | 2026-04-01 |  | PHE | Commissioning | DH2100 | L2 | MOD-02 |  |  |
| DC1-MOD02-L2-1000 |  | DH2100 MOD-A21-02 L2 Checklist | 3d | 2026-04-13 A | 2026-05-06 A | QTS-1006120 FF+2d, QTS-1008720 | 100% | 2026-04-13 | 2026-04-15 |  | PHE | Commissioning | DH2100 | L2 | MOD-02 |  |  |
| DC1-MOD02-L2-1010 |  | DH2100 MOD-B21-02 L2 Checklist | 3d | 2026-04-13 A | 2026-05-06 A | QTS-1006210 FF+2d, QTS-1008720 | 100% | 2026-04-13 | 2026-04-15 |  | PHE | Commissioning | DH2100 | L2 | MOD-02 |  |  |
| DC1-MOD02-L2-1020 |  | DH2100 MOD-C21-02 L2 Checklist | 3d | 2026-04-13 A | 2026-05-06 A | QTS-1006300 FF+2d, QTS-1008720 | 100% | 2026-04-13 | 2026-04-15 |  | PHE | Commissioning | DH2100 | L2 | MOD-02 |  |  |
| DC1-MOD02-L2-1030 |  | DH2100 MOD-D21-02 L2 Checklist | 3d | 2026-04-13 A | 2026-05-06 A | QTS-1006390 FF+2d, QTS-1008720 | 100% | 2026-04-13 | 2026-04-15 |  | PHE | Commissioning | DH2100 | L2 | MOD-02 |  |  |
| DC1-MOD02-L2-1040 |  | DH2100 MOD-E21-02 L2 Checklist | 3d | 2026-04-13 A | 2026-05-06 A | QTS-1006480 FF+2d, QTS-1008720 | 100% | 2026-04-13 | 2026-04-15 |  | PHE | Commissioning | DH2100 | L2 | MOD-02 |  |  |
| DC1-MOD02-L2-1050 |  | DH2100 MOD-F21-02 L2 Checklist | 3d | 2026-04-13 A | 2026-05-06 A | QTS-1006570 FF+2d, QTS-1008720 | 100% | 2026-04-13 | 2026-04-15 |  | PHE | Commissioning | DH2100 | L2 | MOD-02 |  |  |
|  | 09 | **DC1-DH2100 MOD-03 Cx L2** |  | 2026-03-30 | 2026-06-02 |  |  |  |  |  |  |  |  |  |  |  |  |
| DC1-MOD03-L2-1060 |  | DH2100 MOD-R21-03 L2 Checklist | 3d | 2026-03-30 A | 2026-04-09 A | QTS-1001600 FF, QTS-1008720 FF | 100% | 2026-03-30 | 2026-04-01 | QTS-PHX3 DC1 - 6 day w/ Holidays | PHE | Commissioning | DH2100 | L2 | MOD-03 |  |  |
| DC1-MOD03-L2-1000 |  | DH2100 MOD-A21-03 L2 Checklist | 3d | 2026-04-13 A | 2026-06-02 A | QTS-1001600, QTS-1008720 | 100% | 2026-04-13 | 2026-04-15 | QTS-PHX3 DC1 - 6 day w/ Holidays | PHE | Commissioning | DH2100 | L2 | MOD-03 |  |  |
| DC1-MOD03-L2-1010 |  | DH2100 MOD-B21-03 L2 Checklist | 3d | 2026-05-14 A | 2026-06-02 A | QTS-1001600, QTS-1008720 | 100% | 2026-05-14 | 2026-05-16 | QTS-PHX3 DC1 - 6 day w/ Holidays | PHE | Commissioning | DH2100 | L2 | MOD-03 |  |  |
| DC1-MOD03-L2-1020 |  | DH2100 MOD-C21-03 L2 Checklist | 3d | 2026-05-14 A | 2026-06-02 A | QTS-1001600, QTS-1008720 | 100% | 2026-05-27 | 2026-05-29 | QTS-PHX3 DC1 - 6 day w/ Holidays | PHE | Commissioning | DH2100 | L2 | MOD-03 |  |  |
| DC1-MOD03-L2-1030 |  | DH2100 MOD-D21-03 L2 Checklist | 3d | 2026-05-14 A | 2026-06-02 A | QTS-1001600, QTS-1008720 | 100% | 2026-05-27 | 2026-05-29 | QTS-PHX3 DC1 - 6 day w/ Holidays | PHE | Commissioning | DH2100 | L2 | MOD-03 |  |  |
| DC1-MOD03-L2-1040 |  | DH2100 MOD-E21-03 L2 Checklist | 3d | 2026-05-14 A | 2026-06-02 A | QTS-1001600, QTS-1008720 | 100% | 2026-05-27 | 2026-05-29 | QTS-PHX3 DC1 - 6 day w/ Holidays | PHE | Commissioning | DH2100 | L2 | MOD-03 |  |  |
| DC1-MOD03-L2-1050 |  | DH2100 MOD-F21-03 L2 Checklist | 3d | 2026-05-14 A | 2026-06-02 A | QTS-1001600, QTS-1008720 | 100% | 2026-05-27 | 2026-05-29 | QTS-PHX3 DC1 - 6 day w/ Holidays | PHE | Commissioning | DH2100 | L2 | MOD-03 |  |  |
|  | 10 | **DC1-DH2100 CDUs Cx L2** |  |  |  |  |  |  |  |  |  |  |  |  |  |  |  |
|  | 11 | **DC1-DH2100 CHLR Cx L2** |  | 2026-03-16 | 2026-04-22 |  |  |  |  |  |  |  |  |  |  |  |  |
| DC1-CHLR-L2-1000 |  | DH2100 CHLR-1RT40-A21 L2 Checklist | 3d | 2026-03-16 A | 2026-04-22 A | QTS-39752, QTS-1004910, QTS-1006070 FF+2d, DC1-COMM-1020 SS | 100% | 2026-03-16 | 2026-03-18 |  | TAS | Commissioning | DH2100 | L2 | CHILLER |  |  |
| DC1-CHLR-L2-1010 |  | DH2100 CHLR-1RT40-B21 L2 Checklist | 3d | 2026-03-16 A | 2026-04-22 A | QTS-1004910, QTS-1006160 FF+2d, DC1-COMM-1020 SS | 100% | 2026-03-16 | 2026-03-18 |  | TAS | Commissioning | DH2100 | L2 | CHILLER |  |  |
| DC1-CHLR-L2-1020 |  | DH2100 CHLR-1RT40-C21 L2 Checklist | 3d | 2026-03-16 A | 2026-04-22 A | QTS-1004910, QTS-1006250 FF+2d, DC1-COMM-1020 SS | 100% | 2026-03-16 | 2026-03-18 |  | TAS | Commissioning | DH2100 | L2 | CHILLER |  |  |
| DC1-CHLR-L2-1030 |  | DH2100 CHLR-1RT40-D21 L2 Checklist | 3d | 2026-03-16 A | 2026-04-22 A | QTS-1004910, QTS-1006340 FF+2d, DC1-COMM-1020 SS | 100% | 2026-03-16 | 2026-03-18 |  | TAS | Commissioning | DH2100 | L2 | CHILLER |  | 01ADMIN |
| DC1-CHLR-L2-1040 |  | DH2100 CHLR-1RT40-E21 L2 Checklist | 3d | 2026-03-16 A | 2026-04-22 A | QTS-26191, QTS-1004900, QTS-1006470 FF+2d, DC1-COMM-1020 SS | 100% | 2026-03-16 | 2026-03-18 |  | TAS | Commissioning | DH2100 | L2 | CHILLER |  | 01ADMIN |
| DC1-CHLR-L2-1050 |  | DH2100 CHLR-1RT40-F21 L2 Checklist | 3d | 2026-03-16 A | 2026-04-22 A | QTS-1004900, QTS-1006560 FF+2d, DC1-COMM-1020 SS | 100% | 2026-03-16 | 2026-03-18 |  | TAS | Commissioning | DH2100 | L2 | CHILLER |  |  |
| DC1-CHLR-L2-1060 |  | DH2100 CHLR-1RT40-R21 L2 Checklist | 3d | 2026-03-16 A | 2026-04-22 A | QTS-1004900, QTS-1006650 FF+2d, DC1-COMM-1020 SS | 100% | 2026-03-16 | 2026-03-18 |  | TAS | Commissioning | DH2100 | L2 | CHILLER |  |  |

Notes:
- DC1-RPP-L2-1300: Steps: EC Installation Checklist; CC Installation Checklist; Vendor Pre-Energization Checklist; CXA Pre-Energization Inspection; PEI/Clean-Walk
- DC1-RPP-L2-1310: Steps: EC Installation Checklist; CC Installation Checklist; Vendor Pre-Energization Checklist; CXA Pre-Energization Inspection; PEI/Clean-Walk
- DC1-RPP-L2-1320: Steps: EC Installation Checklist; CC Installation Checklist; Vendor Pre-Energization Checklist; CXA Pre-Energization Inspection; PEI/Clean-Walk
- DC1-RPP-L2-1330: Steps: EC Installation Checklist; CC Installation Checklist; Vendor Pre-Energization Checklist; CXA Pre-Energization Inspection; PEI/Clean-Walk
- DC1-RPP-L2-1340: Steps: EC Installation Checklist; CC Installation Checklist; Vendor Pre-Energization Checklist; CXA Pre-Energization Inspection; PEI/Clean-Walk
- DC1-RPP-L2-1350: Steps: EC Installation Checklist; CC Installation Checklist; Vendor Pre-Energization Checklist; CXA Pre-Energization Inspection; PEI/Clean-Walk
- DC1-MOD02-L2-1060: Steps: EC Installation Checklist; CC Installation Checklist (done); Vendor Pre-Energization Checklist; CXA Pre-Energization Inspection; PEI/Clean-Walk
- DC1-MOD02-L2-1000: Steps: EC Installation Checklist (done); CC Installation Checklist; Vendor Pre-Energization Checklist; CXA Pre-Energization Inspection; PEI/Clean-Walk
- DC1-MOD02-L2-1010: Steps: EC Installation Checklist; CC Installation Checklist; Vendor Pre-Energization Checklist; CXA Pre-Energization Inspection; PEI/Clean-Walk
- DC1-MOD02-L2-1020: Steps: EC Installation Checklist (done); CC Installation Checklist; Vendor Pre-Energization Checklist; CXA Pre-Energization Inspection; PEI/Clean-Walk
- DC1-MOD02-L2-1030: Steps: EC Installation Checklist (done); CC Installation Checklist; Vendor Pre-Energization Checklist; CXA Pre-Energization Inspection; PEI/Clean-Walk
- DC1-MOD02-L2-1040: Steps: EC Installation Checklist; CC Installation Checklist; Vendor Pre-Energization Checklist; CXA Pre-Energization Inspection; PEI/Clean-Walk
- DC1-MOD02-L2-1050: Steps: EC Installation Checklist; CC Installation Checklist; Vendor Pre-Energization Checklist; CXA Pre-Energization Inspection; PEI/Clean-Walk
- DC1-MOD03-L2-1060: Steps: EC Installation Checklist; CC Installation Checklist (done); Vendor Pre-Energization Checklist; CXA Pre-Energization Inspection; PEI/Clean-Walk
- DC1-MOD03-L2-1000: Steps: EC Installation Checklist; CC Installation Checklist; Vendor Pre-Energization Checklist; CXA Pre-Energization Inspection; PEI/Clean-Walk
- DC1-MOD03-L2-1010: Steps: EC Installation Checklist (done); CC Installation Checklist; Vendor Pre-Energization Checklist; CXA Pre-Energization Inspection; PEI/Clean-Walk
- DC1-MOD03-L2-1020: Steps: EC Installation Checklist (done); CC Installation Checklist; Vendor Pre-Energization Checklist; CXA Pre-Energization Inspection; PEI/Clean-Walk
- DC1-MOD03-L2-1030: Steps: EC Installation Checklist; CC Installation Checklist; Vendor Pre-Energization Checklist; CXA Pre-Energization Inspection; PEI/Clean-Walk
- DC1-MOD03-L2-1040: Steps: EC Installation Checklist; CC Installation Checklist; Vendor Pre-Energization Checklist; CXA Pre-Energization Inspection; PEI/Clean-Walk
- DC1-MOD03-L2-1050: Steps: EC Installation Checklist; CC Installation Checklist; Vendor Pre-Energization Checklist; CXA Pre-Energization Inspection; PEI/Clean-Walk
- DC1-CHLR-L2-1000: Steps: EC Installation Checklist; MC Installation Checklist; CC Installation Checklist (done); Vendor Pre-Energization Checklist (done); CXA Pre-Energization Inspection; PEI/Clean-Walk
- DC1-CHLR-L2-1010: Steps: EC Installation Checklist; MC Installation Checklist; CC Installation Checklist (done); Vendor Pre-Energization Checklist (done); CXA Pre-Energization Inspection; PEI/Clean-Walk
- DC1-CHLR-L2-1020: Steps: EC Installation Checklist; MC Installation Checklist; CC Installation Checklist (done); Vendor Pre-Energization Checklist (done); CXA Pre-Energization Inspection; PEI/Clean-Walk
- DC1-CHLR-L2-1030: Steps: EC Installation Checklist; MC Installation Checklist; CC Installation Checklist (done); Vendor Pre-Energization Checklist (done); CXA Pre-Energization Inspection; PEI/Clean-Walk
- DC1-CHLR-L2-1040: Steps: EC Installation Checklist; MC Installation Checklist; CC Installation Checklist (done); Vendor Pre-Energization Checklist (done); CXA Pre-Energization Inspection; PEI/Clean-Walk
- DC1-CHLR-L2-1050: Steps: EC Installation Checklist; MC Installation Checklist; CC Installation Checklist (done); Vendor Pre-Energization Checklist (done); CXA Pre-Energization Inspection; PEI/Clean-Walk
- DC1-CHLR-L2-1060: Steps: EC Installation Checklist; MC Installation Checklist; CC Installation Checklist (done); Vendor Pre-Energization Checklist (done); CXA Pre-Energization Inspection; PEI/Clean-Walk

| ID | WBS | Activity | Duration | Start | Finish | Predecessors | Complete | Planned start | Planned finish | Vendor Responsible Party | Layton Discipline | Location | CX Level | Equipment | Allucent CSI Group |
| --- | --- | --- | --- | --- | --- | --- | --- | --- | --- | --- | --- | --- | --- | --- | --- |
|  | 12 | **DC1-DH2100 CHWP Cx L2** |  | 2026-03-12 | 2026-04-09 |  |  |  |  |  |  |  |  |  |  |
| DC1-CHWP-L2-Cx-1000 |  | DH2100 CHWP-1RT40-A21 L2 Checklist | 3d | 2026-03-12 A | 2026-04-09 A | QTS-39772, QTS-1004910, DC1-COMM-1020 SS | 100% | 2026-03-12 | 2026-03-16 | LAY | Commissioning | DH2100 | L2 | CHWP |  |
| DC1-CHWP-L2-Cx-1010 |  | DH2100 CHWP-1RT40-B21 L2 Checklist | 3d | 2026-03-12 A | 2026-04-09 A | QTS-1004910, QTS-39772, DC1-COMM-1020 SS | 100% | 2026-03-12 | 2026-03-16 | LAY | Commissioning | DH2100 | L2 | CHWP |  |
| DC1-CHWP-L2-Cx-1020 |  | DH2100 CHWP-1RT40-C21 L2 Checklist | 3d | 2026-03-12 A | 2026-04-09 A | QTS-1004910, QTS-39772, DC1-COMM-1020 SS | 100% | 2026-03-12 | 2026-03-16 | LAY | Commissioning | DH2100 | L2 | CHWP |  |
| DC1-CHWP-L2-Cx-1030 |  | DH2100 CHWP-1RT40-D21 L2 Checklist | 3d | 2026-03-13 A | 2026-04-09 A | QTS-39772, QTS-1004910, DC1-COMM-1020 SS | 100% | 2026-03-13 | 2026-03-17 | LAY | Commissioning | DH2100 | L2 | CHWP | 01ADMIN |
| DC1-CHWP-L2-Cx-1040 |  | DH2100 CHWP-1RT40-E21 L2 Checklist | 3d | 2026-03-13 A | 2026-04-09 A | QTS-27361, QTS-1004900, DC1-COMM-1020 SS | 100% | 2026-03-13 | 2026-03-17 | LAY | Commissioning | DH2100 | L2 | CHWP |  |
| DC1-CHWP-L2-Cx-1050 |  | DH2100 CHWP-1RT40-F21 L2 Checklist | 3d | 2026-03-13 A | 2026-04-09 A | QTS-1004900, DC1-COMM-1020 SS | 100% | 2026-03-13 | 2026-03-17 | LAY | Commissioning | DH2100 | L2 | CHWP |  |
| DC1-CHWP-L2-Cx-1060 |  | DH2100 CHWP-1RT40-R21 L2 Checklist | 3d | 2026-03-13 A | 2026-04-09 A | QTS-1004900, DC1-COMM-1020 SS | 100% | 2026-03-13 | 2026-03-17 | LAY | Commissioning | DH2100 | L2 | CHWP |  |
|  | 13 | **DC1-DH2100 CRAH/DOAS Cx L2** |  | 2026-03-03 | 2026-05-18 |  |  |  |  |  |  |  |  |  |  |
| DC1-DOAS-L2-1000 |  | DH2100 DOAS-01 L2 Checklist | 3d | 2026-03-03 A | 2026-05-18 A | QTS-100180 FF, QTS-45711 FF | 100% | 2026-03-03 | 2026-03-05 | TAS | Commissioning | DH2100 | L2 | DOAS |  |
| DC1-DOAS-L2-1010 |  | DH2100 DOAS-02 L2 Checklist | 3d | 2026-03-03 A | 2026-05-18 A | QTS-100180 FF, QTS-45711 FF | 100% | 2026-03-03 | 2026-03-05 | TAS | Commissioning | DH2100 | L2 | DOAS |  |
| DC1-CRAH-L2-1280 |  | DH2100 CRAH-EG2102-01 L2 Checklist | 3d | 2026-05-04 A | 2026-05-07 A | QTS-24321, QTS-23981, QTS-46431, QTS-45721 | 100% | 2026-05-04 | 2026-05-06 | VER | Commissioning | DH2100 | L2 | EG CRAH |  |
| DC1-CRAH-L2-1290 |  | DH2100 CRAH-EG2102-02 L2 Checklist | 3d | 2026-05-04 A | 2026-05-07 A | QTS-24321, QTS-23981, QTS-46431, QTS-45721 | 100% | 2026-05-20 | 2026-05-22 | VER | Commissioning | DH2100 | L2 | EG CRAH |  |
| DC1-CRAH-L2-1300 |  | DH2100 CRAH-EG2102-03 L2 Checklist | 3d | 2026-05-04 A | 2026-05-07 A | QTS-24321, QTS-23981, QTS-46431, QTS-45721 | 100% | 2026-05-04 | 2026-05-06 | VER | Commissioning | DH2100 | L2 | EG CRAH |  |
| DC1-CRAH-L2-1310 |  | DH2100 CRAH-EG2102-04 L2 Checklist | 3d | 2026-05-04 A | 2026-05-07 A | QTS-24321, QTS-23981, QTS-46431, QTS-45721 | 100% | 2026-05-04 | 2026-05-06 | VER | Commissioning | DH2100 | L2 | EG CRAH |  |
| DC1-CRAH-L2-1000 |  | DH2100 CRAH-DH-01 L2 Checklist | 3d | 2026-05-14 A | 2026-05-18 A | QTS-24321, QTS-23981, QTS-45721, QTS-23971, QTS-23971 FF, QTS-1005100 | 100% |  |  | UMAS | Commissioning | DH2100 | L2 | DH CRAH |  |
| DC1-CRAH-L2-1010 |  | DH2100 CRAH-DH-02 L2 Checklist | 3d | 2026-05-14 A | 2026-05-18 A | QTS-24321, QTS-23981, QTS-23971, QTS-45721, QTS-23971 FF, QTS-1005100 | 100% |  |  | UMAS | Commissioning | DH2100 | L2 | DH CRAH |  |
| DC1-CRAH-L2-1020 |  | DH2100 CRAH-DH-03 L2 Checklist | 3d | 2026-05-14 A | 2026-05-18 A | QTS-24321, QTS-23981, QTS-23971, QTS-45721, QTS-23971 FF, QTS-1005100 | 100% |  |  | UMAS | Commissioning | DH2100 | L2 | DH CRAH |  |
| DC1-CRAH-L2-1030 |  | DH2100 CRAH-DH-04 L2 Checklist | 3d | 2026-05-14 A | 2026-05-18 A | QTS-24321, QTS-23981, QTS-23971, QTS-45721, QTS-23971 FF, QTS-1005100 | 100% |  |  | UMAS | Commissioning | DH2100 | L2 | DH CRAH |  |
| DC1-CRAH-L2-1040 |  | DH2100 CRAH-DH-05 L2 Checklist | 3d | 2026-05-14 A | 2026-05-18 A | QTS-24321, QTS-23981, QTS-23971, QTS-45721, QTS-23971 FF, QTS-1005100 | 100% |  |  | UMAS | Commissioning | DH2100 | L2 | DH CRAH |  |
| DC1-CRAH-L2-1050 |  | DH2100 CRAH-DH-06 L2 Checklist | 3d | 2026-05-14 A | 2026-05-18 A | QTS-24321, QTS-23981, QTS-23971, QTS-45721, QTS-23971 FF, QTS-1005100 | 100% |  |  | UMAS | Commissioning | DH2100 | L2 | DH CRAH |  |
| DC1-CRAH-L2-1060 |  | DH2100 CRAH-DH-07 L2 Checklist | 3d | 2026-05-14 A | 2026-05-18 A | QTS-24321, QTS-23981, QTS-23971, QTS-45721, QTS-23971 FF, QTS-1005100 | 100% |  |  | UMAS | Commissioning | DH2100 | L2 | DH CRAH |  |
| DC1-CRAH-L2-1070 |  | DH2100 CRAH-DH-08 L2 Checklist | 3d | 2026-05-14 A | 2026-05-18 A | QTS-24321, QTS-23981, QTS-23971, QTS-45721, QTS-23971 FF, QTS-1005100 | 100% |  |  | UMAS | Commissioning | DH2100 | L2 | DH CRAH |  |
| DC1-CRAH-L2-1080 |  | DH2100 CRAH-DH-09 L2 Checklist | 3d | 2026-05-14 A | 2026-05-18 A | QTS-24321, QTS-23981, QTS-23971, QTS-45721, QTS-23971 FF, QTS-1005100 | 100% |  |  | UMAS | Commissioning | DH2100 | L2 | DH CRAH |  |
| DC1-CRAH-L2-1090 |  | DH2100 CRAH-DH-10 L2 Checklist | 3d | 2026-05-14 A | 2026-05-18 A | QTS-24321, QTS-23981, QTS-23971, QTS-45721, QTS-23971 FF, QTS-1005100 | 100% |  |  | UMAS | Commissioning | DH2100 | L2 | DH CRAH |  |
| DC1-CRAH-L2-1100 |  | DH2100 CRAH-DH-11 L2 Checklist | 3d | 2026-05-14 A | 2026-05-18 A | QTS-24321, QTS-23981, QTS-23971, QTS-45721, QTS-23971 FF, QTS-1005100 | 100% |  |  | UMAS | Commissioning | DH2100 | L2 | DH CRAH |  |
| DC1-CRAH-L2-1110 |  | DH2100 CRAH-DH-12 L2 Checklist | 3d | 2026-05-14 A | 2026-05-18 A | QTS-24321, QTS-23981, QTS-23971, QTS-45721, QTS-23971 FF, QTS-1005100 | 100% |  |  | UMAS | Commissioning | DH2100 | L2 | DH CRAH |  |
| DC1-CRAH-L2-1120 |  | DH2100 CRAH-DH-13 L2 Checklist | 3d | 2026-05-14 A | 2026-05-18 A | QTS-24321, QTS-23981, QTS-23971, QTS-45721, QTS-23971 FF, QTS-1005100 | 100% |  |  | UMAS | Commissioning | DH2100 | L2 | DH CRAH |  |
| DC1-CRAH-L2-1130 |  | DH2100 CRAH-DH-14 L2 Checklist | 3d | 2026-05-14 A | 2026-05-18 A | QTS-24321, QTS-23981, QTS-23971, QTS-45721, QTS-1005100 | 100% |  |  | UMAS | Commissioning | DH2100 | L2 | DH CRAH |  |
| DC1-CRAH-L2-1140 |  | DH2100 CRAH-DH-15 L2 Checklist | 3d | 2026-05-14 A | 2026-05-18 A | QTS-24321, QTS-23981, QTS-24311, QTS-45721 | 100% |  |  | UMAS | Commissioning | DH2100 | L2 | DH CRAH |  |
| DC1-CRAH-L2-1150 |  | DH2100 CRAH-DH-16 L2 Checklist | 3d | 2026-05-14 A | 2026-05-18 A | QTS-24321, QTS-23981, QTS-24311, QTS-45721 | 100% |  |  | UMAS | Commissioning | DH2100 | L2 | DH CRAH |  |
| DC1-CRAH-L2-1160 |  | DH2100 CRAH-DH-17 L2 Checklist | 3d | 2026-05-14 A | 2026-05-18 A | QTS-24321, QTS-23981, QTS-24311, QTS-45721 | 100% |  |  | UMAS | Commissioning | DH2100 | L2 | DH CRAH |  |
| DC1-CRAH-L2-1170 |  | DH2100 CRAH-DH-18 L2 Checklist | 3d | 2026-05-14 A | 2026-05-18 A | QTS-24321, QTS-23981, QTS-24311, QTS-45721 | 100% |  |  | UMAS | Commissioning | DH2100 | L2 | DH CRAH |  |
| DC1-CRAH-L2-1180 |  | DH2100 CRAH-DH-19 L2 Checklist | 3d | 2026-05-14 A | 2026-05-18 A | QTS-24321, QTS-23981, QTS-24311, QTS-45721 | 100% |  |  | UMAS | Commissioning | DH2100 | L2 | DH CRAH |  |
| DC1-CRAH-L2-1190 |  | DH2100 CRAH-DH-20 L2 Checklist | 3d | 2026-05-14 A | 2026-05-18 A | QTS-24321, QTS-23981, QTS-24311, QTS-45721 | 100% |  |  | UMAS | Commissioning | DH2100 | L2 | DH CRAH |  |
| DC1-CRAH-L2-1200 |  | DH2100 CRAH-DH-21 L2 Checklist | 3d | 2026-05-14 A | 2026-05-18 A | QTS-24321, QTS-23981, QTS-24311, QTS-45721 | 100% |  |  | UMAS | Commissioning | DH2100 | L2 | DH CRAH |  |
| DC1-CRAH-L2-1210 |  | DH2100 CRAH-DH-22 L2 Checklist | 3d | 2026-05-14 A | 2026-05-18 A | QTS-24321, QTS-23981, QTS-24311, QTS-45721 | 100% |  |  | UMAS | Commissioning | DH2100 | L2 | DH CRAH |  |
| DC1-CRAH-L2-1220 |  | DH2100 CRAH-DH-23 L2 Checklist | 3d | 2026-05-14 A | 2026-05-18 A | QTS-24321, QTS-23981, QTS-24311, QTS-45721 | 100% |  |  | UMAS | Commissioning | DH2100 | L2 | DH CRAH |  |
| DC1-CRAH-L2-1230 |  | DH2100 CRAH-DH-24 L2 Checklist | 3d | 2026-05-14 A | 2026-05-18 A | QTS-24321, QTS-23981, QTS-24311, QTS-45721 | 100% |  |  | UMAS | Commissioning | DH2100 | L2 | DH CRAH |  |
| DC1-CRAH-L2-1240 |  | DH2100 CRAH-DH-25 L2 Checklist | 3d | 2026-05-14 A | 2026-05-18 A | QTS-24321, QTS-23981, QTS-24311, QTS-45721 | 100% |  |  | UMAS | Commissioning | DH2100 | L2 | DH CRAH |  |
| DC1-CRAH-L2-1250 |  | DH2100 CRAH-DH-26 L2 Checklist | 3d | 2026-05-14 A | 2026-05-18 A | QTS-24321, QTS-23981, QTS-24311, QTS-45721 | 100% |  |  | UMAS | Commissioning | DH2100 | L2 | DH CRAH |  |
| DC1-CRAH-L2-1260 |  | DH2100 CRAH-DH-27 L2 Checklist | 3d | 2026-05-14 A | 2026-05-18 A | QTS-24321, QTS-23981, QTS-24311, QTS-45721 | 100% |  |  | UMAS | Commissioning | DH2100 | L2 | DH CRAH |  |
| DC1-CRAH-L2-1270 |  | DH2100 CRAH-DH-28 L2 Checklist | 3d | 2026-05-14 A | 2026-05-18 A | QTS-24321, QTS-23981, QTS-24311, QTS-45721 | 100% |  |  | UMAS | Commissioning | DH2100 | L2 | DH CRAH |  |

Notes:
- DC1-CHWP-L2-Cx-1000: Steps: EC Installation Checklist; MC Installation Checklist; CC Installation Checklist (done); Vendor Pre-Energization Checklist; CXA Pre-Energization Inspection; PEI/Clean-Walk
- DC1-CHWP-L2-Cx-1010: Steps: EC Installation Checklist; MC Installation Checklist; CC Installation Checklist (done); Vendor Pre-Energization Checklist; CXA Pre-Energization Inspection; PEI/Clean-Walk
- DC1-CHWP-L2-Cx-1020: Steps: EC Installation Checklist; MC Installation Checklist; CC Installation Checklist (done); Vendor Pre-Energization Checklist; CXA Pre-Energization Inspection; PEI/Clean-Walk
- DC1-CHWP-L2-Cx-1030: Steps: EC Installation Checklist; MC Installation Checklist; CC Installation Checklist (done); Vendor Pre-Energization Checklist; CXA Pre-Energization Inspection; PEI/Clean-Walk
- DC1-CHWP-L2-Cx-1040: Steps: EC Installation Checklist; MC Installation Checklist; CC Installation Checklist (done); Vendor Pre-Energization Checklist; CXA Pre-Energization Inspection; PEI/Clean-Walk
- DC1-CHWP-L2-Cx-1050: Steps: EC Installation Checklist; MC Installation Checklist; CC Installation Checklist (done); Vendor Pre-Energization Checklist; CXA Pre-Energization Inspection; PEI/Clean-Walk
- DC1-CHWP-L2-Cx-1060: Steps: EC Installation Checklist; MC Installation Checklist; CC Installation Checklist (done); Vendor Pre-Energization Checklist; CXA Pre-Energization Inspection; PEI/Clean-Walk
- DC1-DOAS-L2-1000: Steps: EC Installation Checklist; MC Installation Checklist (done); CC Installation Checklist; Vendor Pre-Energization Checklist; CXA Pre-Energization Inspection; PEI/Clean-Walk
- DC1-DOAS-L2-1010: Steps: EC Installation Checklist; MC Installation Checklist (done); CC Installation Checklist; Vendor Pre-Energization Checklist; CXA Pre-Energization Inspection; PEI/Clean-Walk
- DC1-CRAH-L2-1280: Steps: EC Installation Checklist (done); MC Installation Checklist (done); CC Installation Checklist (done); Vendor Pre-Energization Checklist (done); CXA Pre-Energization Inspection (done); PEI/Clean-Walk (done)
- DC1-CRAH-L2-1290: Steps: EC Installation Checklist (done); MC Installation Checklist (done); CC Installation Checklist (done); Vendor Pre-Energization Checklist (done); CXA Pre-Energization Inspection (done); PEI/Clean-Walk (done)
- DC1-CRAH-L2-1300: Steps: EC Installation Checklist (done); MC Installation Checklist (done); CC Installation Checklist (done); Vendor Pre-Energization Checklist (done); CXA Pre-Energization Inspection (done); PEI/Clean-Walk (done)
- DC1-CRAH-L2-1310: Steps: EC Installation Checklist (done); MC Installation Checklist (done); CC Installation Checklist (done); Vendor Pre-Energization Checklist (done); CXA Pre-Energization Inspection (done); PEI/Clean-Walk (done)
- DC1-CRAH-L2-1000: Steps: EC Installation Checklist; MC Installation Checklist; CC Installation Checklist; Vendor Pre-Energization Checklist; CXA Pre-Energization Inspection; PEI/Clean-Walk
- DC1-CRAH-L2-1010: Steps: EC Installation Checklist; MC Installation Checklist; CC Installation Checklist; Vendor Pre-Energization Checklist; CXA Pre-Energization Inspection; PEI/Clean-Walk
- DC1-CRAH-L2-1020: Steps: EC Installation Checklist; MC Installation Checklist; CC Installation Checklist; Vendor Pre-Energization Checklist; CXA Pre-Energization Inspection; PEI/Clean-Walk
- DC1-CRAH-L2-1030: Steps: EC Installation Checklist; MC Installation Checklist; CC Installation Checklist; Vendor Pre-Energization Checklist; CXA Pre-Energization Inspection; PEI/Clean-Walk
- DC1-CRAH-L2-1040: Steps: EC Installation Checklist; MC Installation Checklist; CC Installation Checklist; Vendor Pre-Energization Checklist; CXA Pre-Energization Inspection; PEI/Clean-Walk
- DC1-CRAH-L2-1050: Steps: EC Installation Checklist; MC Installation Checklist; CC Installation Checklist; Vendor Pre-Energization Checklist; CXA Pre-Energization Inspection; PEI/Clean-Walk
- DC1-CRAH-L2-1060: Steps: EC Installation Checklist; MC Installation Checklist; CC Installation Checklist; Vendor Pre-Energization Checklist; CXA Pre-Energization Inspection; PEI/Clean-Walk
- DC1-CRAH-L2-1070: Steps: EC Installation Checklist; MC Installation Checklist; CC Installation Checklist; Vendor Pre-Energization Checklist; CXA Pre-Energization Inspection; PEI/Clean-Walk
- DC1-CRAH-L2-1080: Steps: EC Installation Checklist; MC Installation Checklist; CC Installation Checklist; Vendor Pre-Energization Checklist; CXA Pre-Energization Inspection; PEI/Clean-Walk
- DC1-CRAH-L2-1090: Steps: EC Installation Checklist; MC Installation Checklist; CC Installation Checklist; Vendor Pre-Energization Checklist; CXA Pre-Energization Inspection; PEI/Clean-Walk
- DC1-CRAH-L2-1100: Steps: EC Installation Checklist; MC Installation Checklist; CC Installation Checklist; Vendor Pre-Energization Checklist; CXA Pre-Energization Inspection; PEI/Clean-Walk
- DC1-CRAH-L2-1110: Steps: EC Installation Checklist; MC Installation Checklist; CC Installation Checklist; Vendor Pre-Energization Checklist; CXA Pre-Energization Inspection; PEI/Clean-Walk
- DC1-CRAH-L2-1120: Steps: EC Installation Checklist; MC Installation Checklist; CC Installation Checklist; Vendor Pre-Energization Checklist; CXA Pre-Energization Inspection; PEI/Clean-Walk
- DC1-CRAH-L2-1130: Steps: EC Installation Checklist; MC Installation Checklist; CC Installation Checklist; Vendor Pre-Energization Checklist; CXA Pre-Energization Inspection; PEI/Clean-Walk
- DC1-CRAH-L2-1140: Steps: EC Installation Checklist; MC Installation Checklist; CC Installation Checklist; Vendor Pre-Energization Checklist; CXA Pre-Energization Inspection; PEI/Clean-Walk
- DC1-CRAH-L2-1150: Steps: EC Installation Checklist; MC Installation Checklist; CC Installation Checklist; Vendor Pre-Energization Checklist; CXA Pre-Energization Inspection; PEI/Clean-Walk
- DC1-CRAH-L2-1160: Steps: EC Installation Checklist; MC Installation Checklist; CC Installation Checklist; Vendor Pre-Energization Checklist; CXA Pre-Energization Inspection; PEI/Clean-Walk
- DC1-CRAH-L2-1170: Steps: EC Installation Checklist; MC Installation Checklist; CC Installation Checklist; Vendor Pre-Energization Checklist; CXA Pre-Energization Inspection; PEI/Clean-Walk
- DC1-CRAH-L2-1180: Steps: EC Installation Checklist; MC Installation Checklist; CC Installation Checklist; Vendor Pre-Energization Checklist; CXA Pre-Energization Inspection; PEI/Clean-Walk
- DC1-CRAH-L2-1190: Steps: EC Installation Checklist; MC Installation Checklist; CC Installation Checklist; Vendor Pre-Energization Checklist; CXA Pre-Energization Inspection; PEI/Clean-Walk
- DC1-CRAH-L2-1200: Steps: EC Installation Checklist; MC Installation Checklist; CC Installation Checklist; Vendor Pre-Energization Checklist; CXA Pre-Energization Inspection; PEI/Clean-Walk
- DC1-CRAH-L2-1210: Steps: EC Installation Checklist; MC Installation Checklist; CC Installation Checklist; Vendor Pre-Energization Checklist; CXA Pre-Energization Inspection; PEI/Clean-Walk
- DC1-CRAH-L2-1220: Steps: EC Installation Checklist; MC Installation Checklist; CC Installation Checklist; Vendor Pre-Energization Checklist; CXA Pre-Energization Inspection; PEI/Clean-Walk
- DC1-CRAH-L2-1230: Steps: EC Installation Checklist; MC Installation Checklist; CC Installation Checklist; Vendor Pre-Energization Checklist; CXA Pre-Energization Inspection; PEI/Clean-Walk
- DC1-CRAH-L2-1240: Steps: EC Installation Checklist; MC Installation Checklist; CC Installation Checklist; Vendor Pre-Energization Checklist; CXA Pre-Energization Inspection; PEI/Clean-Walk
- DC1-CRAH-L2-1250: Steps: EC Installation Checklist; MC Installation Checklist; CC Installation Checklist; Vendor Pre-Energization Checklist; CXA Pre-Energization Inspection; PEI/Clean-Walk
- DC1-CRAH-L2-1260: Steps: EC Installation Checklist; MC Installation Checklist; CC Installation Checklist; Vendor Pre-Energization Checklist; CXA Pre-Energization Inspection; PEI/Clean-Walk
- DC1-CRAH-L2-1270: Steps: EC Installation Checklist; MC Installation Checklist; CC Installation Checklist; Vendor Pre-Energization Checklist; CXA Pre-Energization Inspection; PEI/Clean-Walk

| ID | WBS | Activity | Duration | Start | Finish | Predecessors | Complete | Planned start | Planned finish | Vendor Responsible Party | Layton Discipline | Location | CX Level | Equipment | Contract |
| --- | --- | --- | --- | --- | --- | --- | --- | --- | --- | --- | --- | --- | --- | --- | --- |
|  | 1 | **DC1-DH2100 CDU SCP Cx L2** |  |  |  |  |  |  |  |  |  |  |  |  |  |
|  | 03 | **Data Hall 2100 Cx L3** |  | 2026-03-23 | 2026-07-28 |  |  |  |  |  |  |  |  |  |  |
|  | 01 | **DC1-DH2100 Generators Cx L3** |  | 2026-04-24 | 2026-07-28 |  |  |  |  |  |  |  |  |  |  |
|  | 01 | **DC1-DH2100-GEN-A21 Cx L3** |  | 2026-04-24 | 2026-07-28 |  |  |  |  |  |  |  |  |  |  |
| DC1-GEN-L3-CX-1000 |  | DC1-GEN-A21 FTE | 1d | 2026-04-24 A | 2026-04-24 A | DC1-SWD-L3-CX-1000, DC1-GEN-L2-1000 | 100% |  |  | ROS | Commissioning | DH2100 | L3 | GEN |  |
| DC1-GEN-L3-CX-1010 |  | DC1-GEN-A21 L3 Startup | 2d | 2026-05-11 A | 2026-07-22 A | DC1-GEN-L3-CX-1000 | 100% | 2026-05-11 | 2026-05-12 | HLT | Commissioning | DH2100 | L3 | GEN | BAB |
| DC1-GEN-L3-CX-1020 |  | DC1-GEN-A21 BMS/EPMS Programming | 1d | 2026-07-28 A | 2026-07-28 A | DC1-GEN-L3-CX-1010 | 100% | 2026-07-29 | 2026-07-29 | PRM | Commissioning | DH2100 | L3 | GEN | BAB |
|  | 02 | **DC1-DH2100-GEN-B21 Cx L3** |  | 2026-04-24 | 2026-07-28 |  |  |  |  |  |  |  |  |  |  |
| DC1-GEN-L3-CX-1030 |  | DC1-GEN-B21 FTE | 1d | 2026-04-24 A | 2026-04-24 A | DC1-SWD-L3-CX-1030, DC1-GEN-L2-1010 | 100% |  |  | ROS | Commissioning | DH2100 | L3 | GEN |  |
| DC1-GEN-L3-CX-1040 |  | DC1-GEN-B21 L3 Startup | 2d | 2026-05-11 A | 2026-07-22 A | DC1-GEN-L3-CX-1030 | 100% | 2026-06-03 | 2026-06-04 | HLT | Commissioning | DH2100 | L3 | GEN | BAB |
| DC1-GEN-L3-CX-1050 |  | DC1-GEN-B21 BMS/EPMS Programming | 1d | 2026-07-28 A | 2026-07-28 A | DC1-GEN-L3-CX-1040 | 100% | 2026-07-29 | 2026-07-29 | PRM | Commissioning | DH2100 | L3 | GEN | BAB |
|  | 03 | **DC1-DH2100-GEN-C21 Cx L3** |  | 2026-04-27 | 2026-07-28 |  |  |  |  |  |  |  |  |  |  |
| DC1-GEN-L3-CX-1060 |  | DC1-GEN-C21 FTE | 1d | 2026-04-27 A | 2026-04-27 A | DC1-SWD-L3-CX-1060, DC1-GEN-L2-1020 | 100% |  |  | ROS | Commissioning | DH2100 | L3 | GEN |  |
| DC1-GEN-L3-CX-1070 |  | DC1-GEN-C21 L3 Startup | 2d | 2026-05-11 A | 2026-07-22 A | DC1-GEN-L3-CX-1060 | 100% | 2026-06-03 | 2026-06-04 | HLT | Commissioning | DH2100 | L3 | GEN | BAB |
| DC1-GEN-L3-CX-1080 |  | DC1-GEN-C21 BMS/EPMS Programming | 1d | 2026-07-28 A | 2026-07-28 A | DC1-GEN-L3-CX-1070 | 100% | 2026-07-29 | 2026-07-29 | PRM | Commissioning | DH2100 | L3 | GEN | BAB |
|  | 04 | **DC1-DH2100-GEN-D21 Cx L3** |  | 2026-04-27 | 2026-07-28 |  |  |  |  |  |  |  |  |  |  |
| DC1-GEN-L3-CX-1090 |  | DC1-GEN-D21 FTE | 1d | 2026-04-27 A | 2026-04-27 A | DC1-SWD-L3-CX-1090, DC1-GEN-L2-1030 | 100% |  |  | ROS | Commissioning | DH2100 | L3 | GEN |  |
| DC1-GEN-L3-CX-1100 |  | DC1-GEN-D21 L3 Startup | 2d | 2026-05-11 A | 2026-07-22 A | DC1-GEN-L3-CX-1090 | 100% | 2026-06-03 | 2026-06-04 | HLT | Commissioning | DH2100 | L3 | GEN | BAB |
| DC1-GEN-L3-CX-1110 |  | DC1-GEN-D21 BMS/EPMS Programming | 1d | 2026-07-28 A | 2026-07-28 A | DC1-GEN-L3-CX-1100 | 100% | 2026-07-29 | 2026-07-29 | PRM | Commissioning | DH2100 | L3 | GEN | BAB |
|  | 05 | **DC1-DH2100-GEN-E21 Cx L3** |  | 2026-05-08 | 2026-07-28 |  |  |  |  |  |  |  |  |  |  |
| DC1-GEN-L3-CX-1120 |  | DC1-GEN-E21 FTE | 1d | 2026-05-08 A | 2026-05-08 A | DC1-SWD-L3-CX-1120, DC1-GEN-L2-1040 | 100% | 2026-06-03 | 2026-06-03 | ROS | Commissioning | DH2100 | L3 | GEN |  |
| DC1-GEN-L3-CX-1130 |  | DC1-GEN-E21 L3 Startup | 2d | 2026-05-11 A | 2026-07-22 A | DC1-GEN-L3-CX-1120 | 100% | 2026-06-04 | 2026-06-05 | HLT | Commissioning | DH2100 | L3 | GEN | BAB |
| DC1-GEN-L3-CX-1140 |  | DC1-GEN-E21 BMS/EPMS Programming | 1d | 2026-07-28 A | 2026-07-28 A | DC1-GEN-L3-CX-1130 | 100% | 2026-07-29 | 2026-07-29 | PRM | Commissioning | DH2100 | L3 | GEN | BAB |
|  | 06 | **DC1-DH2100-GEN-F21 Cx L3** |  | 2026-05-08 | 2026-07-28 |  |  |  |  |  |  |  |  |  |  |
| DC1-GEN-L3-CX-1150 |  | DC1-GEN-F21 FTE | 1d | 2026-05-08 A | 2026-05-08 A | DC1-SWD-L3-CX-1150, DC1-GEN-L2-1050 | 100% | 2026-06-03 | 2026-06-03 | ROS | Commissioning | DH2100 | L3 | GEN |  |
| DC1-GEN-L3-CX-1160 |  | DC1-GEN-F21 L3 Startup | 2d | 2026-05-11 A | 2026-07-22 A | DC1-GEN-L3-CX-1150 | 100% | 2026-06-04 | 2026-06-05 | HLT | Commissioning | DH2100 | L3 | GEN | BAB |
| DC1-GEN-L3-CX-1170 |  | DC1-GEN-F21 BMS/EPMS Programming | 1d | 2026-07-28 A | 2026-07-28 A | DC1-GEN-L3-CX-1160 | 100% | 2026-07-29 | 2026-07-29 | PRM | Commissioning | DH2100 | L3 | GEN | BAB |

Notes:
- DC1-GEN-L3-CX-1010: Steps: EC Startup Report; Vendor Startup
- DC1-GEN-L3-CX-1040: Steps: EC Startup Report; Vendor Startup
- DC1-GEN-L3-CX-1070: Steps: EC Startup Report; Vendor Startup
- DC1-GEN-L3-CX-1100: Steps: EC Startup Report; Vendor Startup
- DC1-GEN-L3-CX-1130: Steps: EC Startup Report; Vendor Startup
- DC1-GEN-L3-CX-1160: Steps: EC Startup Report; Vendor Startup

| ID | WBS | Activity | Duration | Start | Finish | Predecessors | Complete | Planned start | Planned finish | Vendor Responsible Party | Layton Discipline | Location | CX Level | Equipment | Contract |
| --- | --- | --- | --- | --- | --- | --- | --- | --- | --- | --- | --- | --- | --- | --- | --- |
|  | 07 | **DC1-DH2100-GEN-R21 Cx L3** |  | 2026-05-08 | 2026-07-28 |  |  |  |  |  |  |  |  |  |  |
| DC1-GEN-L3-CX-1180 |  | DC1-GEN-R21 FTE | 1d | 2026-05-08 A | 2026-05-08 A | DC1-SWD-L3-CX-1180, DC1-GEN-L2-1060 | 100% | 2026-06-03 | 2026-06-03 | ROS | Commissioning | DH2100 | L3 | GEN |  |
| DC1-GEN-L3-CX-1190 |  | DC1-GEN-R21 L3 Startup | 2d | 2026-05-11 A | 2026-07-22 A | DC1-GEN-L3-CX-1180 | 100% | 2026-06-04 | 2026-06-05 | HLT | Commissioning | DH2100 | L3 | GEN | BAB |
| DC1-GEN-L3-CX-1200 |  | DC1-GEN-R21 BMS/EPMS Programming | 1d | 2026-07-28 A | 2026-07-28 A | DC1-GEN-L3-CX-1190 | 100% | 2026-07-29 | 2026-07-29 | PRM | Commissioning | DH2100 | L3 | GEN | BAB |
|  | 02 | **DC1-DH2100 MV XFMRs Cx L3** |  | 2026-03-23 | 2026-07-28 |  |  |  |  |  |  |  |  |  |  |
|  | 01 | **DC1-DH2100 MV-XFMR-A21 Cx L3** |  | 2026-03-23 | 2026-07-28 |  |  |  |  |  |  |  |  |  |  |
| DC1-XFM-L3-CX-1000 |  | DC1-XFMR-A21 FTE | 1d | 2026-03-23 A | 2026-03-23 A | DC1-XFMR-L2-1000, QTS-1101 | 100% |  |  | ROS | Commissioning | DH2100 | L3 | XFMR |  |
| DC1-XFM-L3-CX-1010 |  | DC1-XFMR-A21 L3 Startup | 2d | 2026-05-08 A | 2026-07-22 A | DC1-XFM-L3-CX-1000 | 100% | 2026-05-06 | 2026-05-07 | VTC | Commissioning | DH2100 | L3 | XFMR | BAB |
| DC1-XFM-L3-CX-1020 |  | DC1-XFMR-A21 BMS/EPMS Programming | 1d | 2026-07-28 A | 2026-07-28 A | DC1-XFM-L3-CX-1010 | 100% | 2026-07-29 | 2026-07-29 | PRM | Commissioning | DH2100 | L3 | XFMR | BAB |
|  | 02 | **DC1-DH2100 MV-XFMR-B21 Cx L3** |  | 2026-03-23 | 2026-07-28 |  |  |  |  |  |  |  |  |  |  |
| DC1-XFM-L3-CX-1030 |  | DC1-XFMR-B21 FTE | 1d | 2026-03-23 A | 2026-03-23 A | DC1-XFMR-L2-1010, QTS-1101 | 100% |  |  | ROS | Commissioning | DH2100 | L3 | XFMR |  |
| DC1-XFM-L3-CX-1040 |  | DC1-XFMR-B21 L3 Startup | 2d | 2026-05-08 A | 2026-07-22 A | DC1-XFM-L3-CX-1030 | 100% | 2026-06-03 | 2026-06-04 | VTC | Commissioning | DH2100 | L3 | XFMR | BAB |
| DC1-XFM-L3-CX-1050 |  | DC1-XFMR-B21 BMS/EPMS Programming | 1d | 2026-07-28 A | 2026-07-28 A | DC1-XFM-L3-CX-1040 | 100% | 2026-07-29 | 2026-07-29 | PRM | Commissioning | DH2100 | L3 | XFMR | BAB |
|  | 03 | **DC1-DH2100 MV-XFMR-C21 Cx L3** |  | 2026-03-23 | 2026-07-28 |  |  |  |  |  |  |  |  |  |  |
| DC1-XFM-L3-CX-1060 |  | DC1-XFMR-C21 FTE | 1d | 2026-03-23 A | 2026-03-23 A | DC1-XFMR-L2-1020, QTS-1101 | 100% |  |  | ROS | Commissioning | DH2100 | L3 | XFMR |  |
| DC1-XFM-L3-CX-1070 |  | DC1-XFMR-C21 L3 Startup | 2d | 2026-05-08 A | 2026-07-22 A | DC1-XFM-L3-CX-1060 | 100% | 2026-06-03 | 2026-06-04 | VTC | Commissioning | DH2100 | L3 | XFMR | BAB |
| DC1-XFM-L3-CX-1080 |  | DC1-XFMR-C21 BMS/EPMS Programming | 1d | 2026-07-28 A | 2026-07-28 A | DC1-XFM-L3-CX-1070 | 100% | 2026-07-29 | 2026-07-29 | PRM | Commissioning | DH2100 | L3 | XFMR | BAB |
|  | 04 | **DC1-DH2100 MV-XFMR-D21 Cx L3** |  | 2026-03-23 | 2026-07-28 |  |  |  |  |  |  |  |  |  |  |
| DC1-XFM-L3-CX-1090 |  | DC1-XFMR-D21 FTE | 1d | 2026-03-23 A | 2026-03-23 A | DC1-XFMR-L2-1030, QTS-1101 | 100% |  |  | ROS | Commissioning | DH2100 | L3 | XFMR |  |
| DC1-XFM-L3-CX-1100 |  | DC1-XFMR-D21 L3 Startup | 2d | 2026-05-08 A | 2026-07-22 A | DC1-XFM-L3-CX-1090 | 100% | 2026-06-03 | 2026-06-04 | VTC | Commissioning | DH2100 | L3 | XFMR | BAB |
| DC1-XFM-L3-CX-1110 |  | DC1-XFMR-D21 BMS/EPMS Programming | 1d | 2026-07-28 A | 2026-07-28 A | DC1-XFM-L3-CX-1100 | 100% | 2026-07-29 | 2026-07-29 | PRM | Commissioning | DH2100 | L3 | XFMR | BAB |
|  | 05 | **DC1-DH2100 MV-XFMR-E21 Cx L3** |  | 2026-03-23 | 2026-07-28 |  |  |  |  |  |  |  |  |  |  |
| DC1-XFM-L3-CX-1120 |  | DC1-XFMR-E21 FTE | 1d | 2026-03-23 A | 2026-03-23 A | DC1-XFMR-L2-1040, QTS-1101 | 100% |  |  | ROS | Commissioning | DH2100 | L3 | XFMR |  |
| DC1-XFM-L3-CX-1130 |  | DC1-XFMR-E21 L3 Startup | 2d | 2026-05-08 A | 2026-07-22 A | DC1-XFM-L3-CX-1120 | 100% | 2026-06-03 | 2026-06-04 | VTC | Commissioning | DH2100 | L3 | XFMR | BAB |
| DC1-XFM-L3-CX-1140 |  | DC1-XFMR-E21 BMS/EPMS Programming | 1d | 2026-07-28 A | 2026-07-28 A | DC1-XFM-L3-CX-1130 | 100% | 2026-07-29 | 2026-07-29 | PRM | Commissioning | DH2100 | L3 | XFMR | BAB |

Notes:
- DC1-GEN-L3-CX-1190: Steps: EC Startup Report; Vendor Startup
- DC1-XFM-L3-CX-1010: Steps: EC Startup Report; Vendor Startup
- DC1-XFM-L3-CX-1040: Steps: EC Startup Report; Vendor Startup
- DC1-XFM-L3-CX-1070: Steps: EC Startup Report; Vendor Startup
- DC1-XFM-L3-CX-1100: Steps: EC Startup Report; Vendor Startup
- DC1-XFM-L3-CX-1130: Steps: EC Startup Report; Vendor Startup

| ID | WBS | Activity | Duration | Start | Finish | Predecessors | Complete | Planned start | Planned finish | Vendor Responsible Party | Layton Discipline | Location | CX Level | Equipment | Contract | Layton Super |
| --- | --- | --- | --- | --- | --- | --- | --- | --- | --- | --- | --- | --- | --- | --- | --- | --- |
|  | 06 | **DC1-DH2100 MV-XFMR-F21 Cx L3** |  | 2026-03-23 | 2026-07-28 |  |  |  |  |  |  |  |  |  |  |  |
| DC1-XFM-L3-CX-1150 |  | DC1-XFMR-F21 FTE | 1d | 2026-03-23 A | 2026-03-23 A | DC1-XFMR-L2-1050, QTS-1101 | 100% |  |  | ROS | Commissioning | DH2100 | L3 | XFMR |  |  |
| DC1-XFM-L3-CX-1160 |  | DC1-XFMR-F21 L3 Startup | 2d | 2026-05-08 A | 2026-07-22 A | DC1-XFM-L3-CX-1150 | 100% | 2026-06-03 | 2026-06-04 | VTC | Commissioning | DH2100 | L3 | XFMR | BAB |  |
| DC1-XFM-L3-CX-1170 |  | DC1-XFMR-F21 BMS/EPMS Programming | 1d | 2026-07-28 A | 2026-07-28 A | DC1-XFM-L3-CX-1160 | 100% | 2026-07-29 | 2026-07-29 | PRM | Commissioning | DH2100 | L3 | XFMR | BAB |  |
|  | 07 | **DC1-DH2100 MV-XFMR-R21 Cx L3** |  | 2026-03-23 | 2026-07-28 |  |  |  |  |  |  |  |  |  |  |  |
| DC1-XFM-L3-CX-1180 |  | DC1-XFMR-R21 FTE | 1d | 2026-03-23 A | 2026-03-23 A | DC1-XFMR-L2-1060, QTS-1101 | 100% |  |  | ROS | Commissioning | DH2100 | L3 | XFMR |  |  |
| DC1-XFM-L3-CX-1190 |  | DC1-XFMR-R21 L3 Startup | 2d | 2026-05-08 A | 2026-07-22 A | DC1-XFM-L3-CX-1180 | 100% | 2026-06-03 | 2026-06-04 | VTC | Commissioning | DH2100 | L3 | XFMR | BAB |  |
| DC1-XFM-L3-CX-1200 |  | DC1-XFMR-R21 BMS/EPMS Programming | 1d | 2026-07-28 A | 2026-07-28 A | DC1-XFM-L3-CX-1190 | 100% | 2026-07-29 | 2026-07-29 | PRM | Commissioning | DH2100 | L3 | XFMR | BAB |  |
|  | 03 | **DC1-DH2100 PODS Cx L3** |  | 2026-03-24 | 2026-07-28 |  |  |  |  |  |  |  |  |  |  |  |
|  | 01 | **DC1-DH2100 SWDs Cx L3** |  | 2026-03-24 | 2026-07-15 |  |  |  |  |  |  |  |  |  |  |  |
|  | 01 | **DC1-DH2100-SWD-A21 Cx L3** |  | 2026-03-24 | 2026-07-15 |  |  |  |  |  |  |  |  |  |  |  |
| DC1-SWD-L3-CX-1000 |  | DC1-SWD-A21 FTE | 1d | 2026-03-24 A | 2026-03-24 A | QTS-1100, DC1-XFM-L3-CX-1000 SS, DC1-SWD-L2-1000 | 100% |  |  | ROS | Commissioning | DH2100 | L3 | SWD |  |  |
| DC1-SWD-L3-CX-1010 |  | DC1-SWD-A21 L3 Startup | 2d | 2026-03-30 A | 2026-06-01 A | QTS-27331, DC1-SWD-L3-CX-1000 | 100% | 2026-03-30 | 2026-03-31 | SIE | Commissioning | DH2100 | L3 | SWD |  | Travis Todaro |
| DC1-SWD-L3-CX-1020 |  | DC1-SWD-A21 BMS/EPMS Programming | 1d | 2026-07-15 A | 2026-07-15 A | DC1-SWD-L3-CX-1010 | 100% |  |  | PRM | Commissioning | DH2100 | L3 | SWD |  |  |
|  | 02 | **DC1-DH2100-SWD-B21 Cx L3** |  | 2026-03-24 | 2026-07-15 |  |  |  |  |  |  |  |  |  |  |  |
| DC1-SWD-L3-CX-1030 |  | DC1-SWD-B21 FTE | 1d | 2026-03-24 A | 2026-03-24 A | QTS-1100, DC1-XFM-L3-CX-1030 SS, DC1-SWD-L2-1010 | 100% |  |  | ROS | Commissioning | DH2100 | L3 | SWD |  |  |
| DC1-SWD-L3-CX-1040 |  | DC1-SWD-B21 L3 Startup | 2d | 2026-03-30 A | 2026-06-01 A | QTS-27331, DC1-SWD-L3-CX-1030 | 100% | 2026-03-30 | 2026-03-31 | SIE | Commissioning | DH2100 | L3 | SWD |  | Travis Todaro |
| DC1-SWD-L3-CX-1050 |  | DC1-SWD-B21 BMS/EPMS Programming | 1d | 2026-07-15 A | 2026-07-15 A | DC1-SWD-L3-CX-1040, QTS-1007140 | 100% |  |  | PRM | Commissioning | DH2100 | L3 | SWD |  |  |
|  | 03 | **DC1-DH2100-SWD-C21 Cx L3** |  | 2026-03-24 | 2026-07-15 |  |  |  |  |  |  |  |  |  |  |  |
| DC1-SWD-L3-CX-1060 |  | DC1-SWD-C21 FTE | 1d | 2026-03-24 A | 2026-03-24 A | QTS-1100, DC1-XFM-L3-CX-1060 SS, DC1-SWD-L2-1020 | 100% |  |  | ROS | Commissioning | DH2100 | L3 | SWD |  |  |
| DC1-SWD-L3-CX-1070 |  | DC1-SWD-C21 L3 Startup | 2d | 2026-03-30 A | 2026-06-01 A | QTS-27331, DC1-SWD-L3-CX-1060 | 100% | 2026-03-30 | 2026-03-31 | SIE | Commissioning | DH2100 | L3 | SWD |  | Travis Todaro |
| DC1-SWD-L3-CX-1080 |  | DC1-SWD-C21 BMS/EPMS Programming | 1d | 2026-07-15 A | 2026-07-15 A | DC1-SWD-L3-CX-1070, QTS-1007140 | 100% |  |  | PRM | Commissioning | DH2100 | L3 | SWD |  |  |
|  | 04 | **DC1-DH2100-SWD-D21 Cx L3** |  | 2026-03-24 | 2026-07-15 |  |  |  |  |  |  |  |  |  |  |  |
| DC1-SWD-L3-CX-1090 |  | DC1-SWD-D21 FTE | 1d | 2026-03-24 A | 2026-03-24 A | QTS-1100, DC1-XFM-L3-CX-1090 SS, DC1-SWD-L2-1030 | 100% |  |  | ROS | Commissioning | DH2100 | L3 | SWD |  |  |
| DC1-SWD-L3-CX-1100 |  | DC1-SWD-D21 L3 Startup | 2d | 2026-03-30 A | 2026-06-01 A | QTS-27331, DC1-SWD-L3-CX-1090 | 100% | 2026-03-30 | 2026-03-31 | SIE | Commissioning | DH2100 | L3 | SWD |  | Travis Todaro |
| DC1-SWD-L3-CX-1110 |  | DC1-SWD-D21 BMS/EPMS Programming | 1d | 2026-07-15 A | 2026-07-15 A | DC1-SWD-L3-CX-1100, QTS-1007140 | 100% |  |  | PRM | Commissioning | DH2100 | L3 | SWD |  |  |

Notes:
- DC1-XFM-L3-CX-1160: Steps: EC Startup Report; Vendor Startup
- DC1-XFM-L3-CX-1190: Steps: EC Startup Report; Vendor Startup
- DC1-SWD-L3-CX-1010: Steps: EC Startup Report; Vendor Startup
- DC1-SWD-L3-CX-1040: Steps: EC Startup Report; Vendor Startup
- DC1-SWD-L3-CX-1070: Steps: EC Startup Report; Vendor Startup
- DC1-SWD-L3-CX-1100: Steps: EC Startup Report; Vendor Startup

| ID | WBS | Activity | Duration | Start | Finish | Predecessors | Complete | Planned start | Planned finish | Vendor Responsible Party | Layton Discipline | Location | CX Level | Equipment | Layton Super | Contract |
| --- | --- | --- | --- | --- | --- | --- | --- | --- | --- | --- | --- | --- | --- | --- | --- | --- |
|  | 05 | **DC1-DH2100-SWD-E21 Cx L3** |  | 2026-03-24 | 2026-07-15 |  |  |  |  |  |  |  |  |  |  |  |
| DC1-SWD-L3-CX-1120 |  | DC1-SWD-E21 FTE | 1d | 2026-03-24 A | 2026-03-24 A | QTS-1100, DC1-XFM-L3-CX-1120 SS, DC1-SWD-L2-1040 | 100% |  |  | ROS | Commissioning | DH2100 | L3 | SWD |  |  |
| DC1-SWD-L3-CX-1130 |  | DC1-SWD-E21 L3 Startup | 2d | 2026-03-30 A | 2026-06-01 A | QTS-27331, DC1-SWD-L3-CX-1120 | 100% | 2026-03-30 | 2026-03-31 | SIE | Commissioning | DH2100 | L3 | SWD | Travis Todaro |  |
| DC1-SWD-L3-CX-1140 |  | DC1-SWD-E21 BMS/EPMS Programming | 1d | 2026-07-15 A | 2026-07-15 A | DC1-SWD-L3-CX-1130, QTS-1007140 | 100% |  |  | PRM | Commissioning | DH2100 | L3 | SWD |  |  |
|  | 06 | **DC1-DH2100-SWD-F21 Cx L3** |  | 2026-03-24 | 2026-07-15 |  |  |  |  |  |  |  |  |  |  |  |
| DC1-SWD-L3-CX-1150 |  | DC1-SWD-F21 FTE | 1d | 2026-03-24 A | 2026-03-24 A | QTS-1100, DC1-XFM-L3-CX-1150 SS, DC1-SWD-L2-1050 | 100% |  |  | ROS | Commissioning | DH2100 | L3 | SWD |  |  |
| DC1-SWD-L3-CX-1160 |  | DC1-SWD-F21 L3 Startup | 2d | 2026-03-30 A | 2026-06-01 A | QTS-27331, DC1-SWD-L3-CX-1150 | 100% | 2026-03-30 | 2026-03-31 | SIE | Commissioning | DH2100 | L3 | SWD | Travis Todaro |  |
| DC1-SWD-L3-CX-1170 |  | DC1-SWD-F21 BMS/EPMS Programming | 1d | 2026-07-15 A | 2026-07-15 A | DC1-SWD-L3-CX-1160, QTS-1007140 | 100% |  |  | PRM | Commissioning | DH2100 | L3 | SWD |  |  |
|  | 07 | **DC1-DH2100-SWD-R21 Cx L3** |  | 2026-03-24 | 2026-07-15 |  |  |  |  |  |  |  |  |  |  |  |
| DC1-SWD-L3-CX-1180 |  | DC1-SWD-R21 FTE | 1d | 2026-03-24 A | 2026-03-24 A | QTS-1100, DC1-XFM-L3-CX-1180 SS, DC1-SWD-L2-1060 | 100% |  |  | ROS | Commissioning | DH2100 | L3 | SWD |  |  |
| DC1-SWD-L3-CX-1190 |  | DC1-SWD-R21 L3 Startup | 2d | 2026-03-30 A | 2026-06-01 A | QTS-27331, DC1-SWD-L3-CX-1180 | 100% | 2026-03-30 | 2026-03-31 | SIE | Commissioning | DH2100 | L3 | SWD | Travis Todaro |  |
| DC1-SWD-L3-CX-1200 |  | DC1-SWD-R21 BMS/EPMS Programming | 1d | 2026-07-15 A | 2026-07-15 A | DC1-SWD-L3-CX-1190, QTS-1007140 | 100% |  |  | PRM | Commissioning | DH2100 | L3 | SWD |  |  |
|  | 02 | **DC1-DH2100 MOD-01s Cx L3** |  | 2026-04-02 | 2026-07-28 |  |  |  |  |  |  |  |  |  |  |  |
|  | 01 | **DC1-DH2100-MOD-A21-01 Cx L3** |  | 2026-04-02 | 2026-07-28 |  |  |  |  |  |  |  |  |  |  |  |
| DC1-MOD1-L3-CX-1000 |  | DC1-MOD-01-A21 FTE | 1d | 2026-04-02 A | 2026-04-02 A | DC1-SWD-L3-CX-1000 SS | 100% |  |  | ROS | Commissioning | DH2100 | L3 | MOD-01 |  |  |
| DC1-MOD1-L3-CX-1010 |  | DC1-MOD-01-A21 L3 Startup | 2d | 2026-07-20 A | 2026-07-20 A | DC1-MOD1-L3-CX-1000, QTS - 26611 | 100% | 2026-07-22 | 2026-07-23 | PHE | Commissioning | DH2100 | L3 | MOD-01 |  | BAB |
| DC1-MOD1-L3-CX-1020 |  | DC1-MOD-01-A21 BMS/EPMS Programming | 1d | 2026-07-28 A | 2026-07-28 A | DC1-MOD1-L3-CX-1010 | 100% | 2026-07-29 | 2026-07-29 | PRM | Commissioning | DH2100 | L3 | MOD-01 |  | BAB |
|  | 02 | **DC1-DH2100-MOD-B21-01 Cx L3** |  | 2026-04-02 | 2026-07-28 |  |  |  |  |  |  |  |  |  |  |  |
| DC1-MOD1-L3-CX-1030 |  | DC1-MOD-01-B21 FTE | 1d | 2026-04-02 A | 2026-04-02 A | DC1-SWD-L3-CX-1030 SS | 100% |  |  | ROS | Commissioning | DH2100 | L3 | MOD-01 |  |  |
| DC1-MOD1-L3-CX-1040 |  | DC1-MOD-01-B21 L3 Startup | 2d | 2026-07-20 A | 2026-07-20 A | DC1-MOD1-L3-CX-1030, QTS - 26611 | 100% | 2026-07-22 | 2026-07-23 | PHE | Commissioning | DH2100 | L3 | MOD-01 |  | BAB |
| DC1-MOD1-L3-CX-1050 |  | DC1-MOD-01-B21 BMS/EPMS Programming | 1d | 2026-07-28 A | 2026-07-28 A | DC1-MOD1-L3-CX-1040 | 100% | 2026-07-29 | 2026-07-29 | PRM | Commissioning | DH2100 | L3 | MOD-01 |  | BAB |
|  | 03 | **DC1-DH2100-MOD-C21-01 Cx L3** |  | 2026-04-02 | 2026-07-28 |  |  |  |  |  |  |  |  |  |  |  |
| DC1-MOD1-L3-CX-1060 |  | DC1-MOD-01-C21 FTE | 1d | 2026-04-02 A | 2026-04-02 A | DC1-SWD-L3-CX-1060 SS | 100% |  |  | ROS | Commissioning | DH2100 | L3 | MOD-01 |  |  |
| DC1-MOD1-L3-CX-1070 |  | DC1-MOD-01-C21 L3 Startup | 2d | 2026-07-20 A | 2026-07-20 A | DC1-MOD1-L3-CX-1060, QTS - 26611 | 100% | 2026-07-22 | 2026-07-23 | PHE | Commissioning | DH2100 | L3 | MOD-01 |  | BAB |
| DC1-MOD1-L3-CX-1080 |  | DC1-MOD-01-C21 BMS/EPMS Programming | 1d | 2026-07-28 A | 2026-07-28 A | DC1-MOD1-L3-CX-1070 | 100% | 2026-07-29 | 2026-07-29 | PRM | Commissioning | DH2100 | L3 | MOD-01 |  | BAB |

Notes:
- DC1-SWD-L3-CX-1130: Steps: EC Startup Report; Vendor Startup
- DC1-SWD-L3-CX-1160: Steps: EC Startup Report; Vendor Startup
- DC1-SWD-L3-CX-1190: Steps: EC Startup Report; Vendor Startup

| ID | WBS | Activity | Duration | Start | Finish | Predecessors | Complete | Planned start | Planned finish | Vendor Responsible Party | Layton Discipline | Location | CX Level | Equipment | Contract |
| --- | --- | --- | --- | --- | --- | --- | --- | --- | --- | --- | --- | --- | --- | --- | --- |
|  | 04 | **DC1-DH2100-MOD-D21-01 Cx L3** |  | 2026-04-02 | 2026-07-28 |  |  |  |  |  |  |  |  |  |  |
| DC1-MOD1-L3-CX-1090 |  | DC1-MOD-01-D21 FTE | 1d | 2026-04-02 A | 2026-04-02 A | DC1-SWD-L3-CX-1090 SS | 100% |  |  | ROS | Commissioning | DH2100 | L3 | MOD-01 |  |
| DC1-MOD1-L3-CX-1100 |  | DC1-MOD-01-D21 L3 Startup | 2d | 2026-07-20 A | 2026-07-20 A | DC1-MOD1-L3-CX-1090, QTS - 26611 | 100% | 2026-07-22 | 2026-07-23 | PHE | Commissioning | DH2100 | L3 | MOD-01 | BAB |
| DC1-MOD1-L3-CX-1110 |  | DC1-MOD-01-D21 BMS/EPMS Programming | 1d | 2026-07-28 A | 2026-07-28 A | DC1-MOD1-L3-CX-1100 | 100% | 2026-07-29 | 2026-07-29 | PRM | Commissioning | DH2100 | L3 | MOD-01 | BAB |
|  | 05 | **DC1-DH2100-MOD-E21-01 Cx L3** |  | 2026-04-02 | 2026-07-28 |  |  |  |  |  |  |  |  |  |  |
| DC1-MOD1-L3-CX-1120 |  | DC1-MOD-01-E21 FTE | 1d | 2026-04-02 A | 2026-04-02 A | DC1-SWD-L3-CX-1120 SS | 100% |  |  | ROS | Commissioning | DH2100 | L3 | MOD-01 |  |
| DC1-MOD1-L3-CX-1130 |  | DC1-MOD-01-E21 L3 Startup | 2d | 2026-07-20 A | 2026-07-20 A | DC1-MOD1-L3-CX-1120, QTS - 26611 | 100% | 2026-07-22 | 2026-07-23 | PHE | Commissioning | DH2100 | L3 | MOD-01 | BAB |
| DC1-MOD1-L3-CX-1140 |  | DC1-MOD-01-E21 BMS/EPMS Programming | 1d | 2026-07-28 A | 2026-07-28 A | DC1-MOD1-L3-CX-1130 | 100% | 2026-07-29 | 2026-07-29 | PRM | Commissioning | DH2100 | L3 | MOD-01 | BAB |
|  | 06 | **DC1-DH2100-MOD-F21-01 Cx L3** |  | 2026-04-02 | 2026-07-28 |  |  |  |  |  |  |  |  |  |  |
| DC1-MOD1-L3-CX-1150 |  | DC1-MOD-01-F21 FTE | 1d | 2026-04-02 A | 2026-04-02 A | DC1-SWD-L3-CX-1150 SS | 100% |  |  | ROS | Commissioning | DH2100 | L3 | MOD-01 |  |
| DC1-MOD1-L3-CX-1160 |  | DC1-MOD-01-F21 L3 Startup | 2d | 2026-07-20 A | 2026-07-20 A | DC1-MOD1-L3-CX-1150, QTS - 26611 | 100% | 2026-07-22 | 2026-07-23 | PHE | Commissioning | DH2100 | L3 | MOD-01 | BAB |
| DC1-MOD1-L3-CX-1170 |  | DC1-MOD-01-F21 BMS/EPMS Programming | 1d | 2026-07-28 A | 2026-07-28 A | DC1-MOD1-L3-CX-1160 | 100% | 2026-07-29 | 2026-07-29 | PRM | Commissioning | DH2100 | L3 | MOD-01 | BAB |
|  | 07 | **DC1-DH2100-MOD-R21-01 Cx L3** |  | 2026-04-02 | 2026-07-28 |  |  |  |  |  |  |  |  |  |  |
| DC1-MOD1-L3-CX-1180 |  | DC1-MOD-01-R21 FTE | 1d | 2026-04-02 A | 2026-04-02 A | DC1-SWD-L3-CX-1180 SS | 100% |  |  | ROS | Commissioning | DH2100 | L3 | MOD-01 |  |
| DC1-MOD1-L3-CX-1190 |  | DC1-MOD-01-R21 L3 Startup | 2d | 2026-07-20 A | 2026-07-20 A | DC1-MOD1-L3-CX-1180, QTS - 26611 | 100% | 2026-07-22 | 2026-07-23 | PHE | Commissioning | DH2100 | L3 | MOD-01 | BAB |
| DC1-MOD1-L3-CX-1200 |  | DC1-MOD-01-R21 BMS/EPMS Programming | 1d | 2026-07-28 A | 2026-07-28 A | DC1-MOD1-L3-CX-1190 | 100% | 2026-07-29 | 2026-07-29 | PRM | Commissioning | DH2100 | L3 | MOD-01 | BAB |
|  | 03 | **DC1-DH2100 UPS-M Cx L3** |  | 2026-04-02 | 2026-07-28 |  |  |  |  |  |  |  |  |  |  |
|  | 01 | **DC1-DH2100-UPS-M-A21-01 Cx L3** |  | 2026-04-02 | 2026-07-28 |  |  |  |  |  |  |  |  |  |  |
| DC1-UPSM-L3-CX-1000 |  | DC1-UPS-M-A21 FTE | 1d | 2026-04-02 A | 2026-04-02 A | DC1-UPS-M-L2-1000 | 100% | 2026-04-27 | 2026-04-27 | ROS | Commissioning | DH2100 | L3 | UPS |  |
| DC1-UPSM-L3-CX-1010 |  | DC1-UPS-M-A21 L3 Startup | 2d | 2026-07-20 A | 2026-07-20 A | DC1-UPSM-L3-CX-1000, DC1-FAN-L3-CX-1010, DC1-COMP-L3-CX-1010, QTS-1013980 | 100% | 2026-07-22 | 2026-07-23 | VER | Commissioning | DH2100 | L3 | UPS | BAB |
| DC1-UPSM-L3-CX-1020 |  | DC1-UPS-M-A21 BMS/EPMS Programming | 1d | 2026-07-28 A | 2026-07-28 A | DC1-UPSM-L3-CX-1010 | 100% | 2026-07-29 | 2026-07-29 | PRM | Commissioning | DH2100 | L3 | UPS | BAB |
|  | 02 | **DC1-DH2100-UPS-M-B21-01 Cx L3** |  | 2026-04-02 | 2026-07-28 |  |  |  |  |  |  |  |  |  |  |
| DC1-UPSM-L3-CX-1030 |  | DC1-UPS-M-B21 FTE | 1d | 2026-04-02 A | 2026-04-02 A | DC1-MOD1-L3-CX-1030 FF, DC1-UPS-M-L2-1010 | 100% | 2026-04-01 | 2026-04-01 | ROS | Commissioning | DH2100 | L3 | UPS |  |
| DC1-UPSM-L3-CX-1040 |  | DC1-UPS-M-B21 L3 Startup | 2d | 2026-07-20 A | 2026-07-20 A | DC1-UPSM-L3-CX-1030, DC1-FAN-L3-CX-1040, DC1-COMP-L3-CX-1040, QTS-1013980 | 100% | 2026-07-22 | 2026-07-23 | VER | Commissioning | DH2100 | L3 | UPS | BAB |
| DC1-UPSM-L3-CX-1050 |  | DC1-UPS-M-B21 BMS/EPMS Programming | 1d | 2026-07-28 A | 2026-07-28 A | DC1-UPSM-L3-CX-1040 | 100% | 2026-07-29 | 2026-07-29 | PRM | Commissioning | DH2100 | L3 | UPS | BAB |

Notes:
- DC1-UPSM-L3-CX-1010: Steps: EC Startup Report; Vendor Startup
- DC1-UPSM-L3-CX-1040: Steps: EC Startup Report; Vendor Startup

| ID | WBS | Activity | Duration | Start | Finish | Predecessors | Complete | Planned start | Planned finish | Vendor Responsible Party | Layton Discipline | Location | CX Level | Equipment | Contract |
| --- | --- | --- | --- | --- | --- | --- | --- | --- | --- | --- | --- | --- | --- | --- | --- |
|  | 03 | **DC1-DH2100-UPS-M-C21-01 Cx L3** |  | 2026-04-02 | 2026-07-28 |  |  |  |  |  |  |  |  |  |  |
| DC1-UPSM-L3-CX-1060 |  | DC1-UPS-M-C21 FTE | 1d | 2026-04-02 A | 2026-04-02 A | DC1-MOD1-L3-CX-1060 FF, DC1-UPS-M-L2-1020 | 100% | 2026-04-01 | 2026-04-01 | ROS | Commissioning | DH2100 | L3 | UPS |  |
| DC1-UPSM-L3-CX-1070 |  | DC1-UPS-M-C21 L3 Startup | 2d | 2026-07-20 A | 2026-07-20 A | DC1-UPSM-L3-CX-1060, DC1-FAN-L3-CX-1070, DC1-COMP-L3-CX-1070, QTS-1013980 | 100% | 2026-07-22 | 2026-07-23 | VER | Commissioning | DH2100 | L3 | UPS | BAB |
| DC1-UPSM-L3-CX-1080 |  | DC1-UPS-M-C21 BMS/EPMS Programming | 1d | 2026-07-28 A | 2026-07-28 A | DC1-UPSM-L3-CX-1070 | 100% | 2026-07-29 | 2026-07-29 | PRM | Commissioning | DH2100 | L3 | UPS | BAB |
|  | 04 | **DC1-DH2100-UPS-M-D21-01 Cx L3** |  | 2026-04-02 | 2026-07-28 |  |  |  |  |  |  |  |  |  |  |
| DC1-UPSM-L3-CX-1090 |  | DC1-UPS-M-D21 FTE | 1d | 2026-04-02 A | 2026-04-02 A | DC1-MOD1-L3-CX-1090 FF, DC1-UPS-M-L2-1030 | 100% | 2026-04-01 | 2026-04-01 | ROS | Commissioning | DH2100 | L3 | UPS |  |
| DC1-UPSM-L3-CX-1100 |  | DC1-UPS-M-D21 L3 Startup | 2d | 2026-07-20 A | 2026-07-20 A | DC1-UPSM-L3-CX-1090, DC1-FAN-L3-CX-1100, DC1-COMP-L3-CX-1100, QTS-1013980 | 100% | 2026-07-22 | 2026-07-23 | VER | Commissioning | DH2100 | L3 | UPS | BAB |
| DC1-UPSM-L3-CX-1110 |  | DC1-UPS-M-D21 BMS/EPMS Programming | 1d | 2026-07-28 A | 2026-07-28 A | DC1-UPSM-L3-CX-1100 | 100% | 2026-07-29 | 2026-07-29 | PRM | Commissioning | DH2100 | L3 | UPS | BAB |
|  | 05 | **DC1-DH2100-UPS-M-E21-01 Cx L3** |  | 2026-04-02 | 2026-07-28 |  |  |  |  |  |  |  |  |  |  |
| DC1-UPSM-L3-CX-1120 |  | DC1-UPS-M-E21 FTE | 1d | 2026-04-02 A | 2026-04-02 A | DC1-MOD1-L3-CX-1120 FF, DC1-UPS-M-L2-1040 | 100% | 2026-04-01 | 2026-04-01 | ROS | Commissioning | DH2100 | L3 | UPS |  |
| DC1-UPSM-L3-CX-1130 |  | DC1-UPS-M-E21 L3 Startup | 2d | 2026-07-20 A | 2026-07-20 A | DC1-UPSM-L3-CX-1120, DC1-FAN-L3-CX-1130, DC1-COMP-L3-CX-1130, QTS-1013980 | 100% | 2026-07-22 | 2026-07-23 | VER | Commissioning | DH2100 | L3 | UPS | BAB |
| DC1-UPSM-L3-CX-1140 |  | DC1-UPS-M-E21 BMS/EPMS Programming | 1d | 2026-07-28 A | 2026-07-28 A | DC1-UPSM-L3-CX-1130 | 100% | 2026-07-29 | 2026-07-29 | PRM | Commissioning | DH2100 | L3 | UPS | BAB |
|  | 06 | **DC1-DH2100-UPS-M-F21-01 Cx L3** |  | 2026-04-02 | 2026-07-28 |  |  |  |  |  |  |  |  |  |  |
| DC1-UPSM-L3-CX-1150 |  | DC1-UPS-M-F21 FTE | 1d | 2026-04-02 A | 2026-04-02 A | DC1-MOD1-L3-CX-1150 FF, DC1-UPS-M-L2-1050 | 100% | 2026-04-01 | 2026-04-01 | ROS | Commissioning | DH2100 | L3 | UPS |  |
| DC1-UPSM-L3-CX-1160 |  | DC1-UPS-M-F21 L3 Startup | 2d | 2026-07-20 A | 2026-07-20 A | DC1-UPSM-L3-CX-1150, DC1-FAN-L3-CX-1160, DC1-COMP-L3-CX-1160, QTS-1013980 | 100% | 2026-07-22 | 2026-07-23 | VER | Commissioning | DH2100 | L3 | UPS | BAB |
| DC1-UPSM-L3-CX-1170 |  | DC1-UPS-M-F21 BMS/EPMS Programming | 1d | 2026-07-28 A | 2026-07-28 A | DC1-UPSM-L3-CX-1160 | 100% | 2026-07-29 | 2026-07-29 | PRM | Commissioning | DH2100 | L3 | UPS | BAB |
|  | 07 | **DC1-DH2100-UPS-M-R21-01 Cx L3** |  | 2026-04-02 | 2026-07-28 |  |  |  |  |  |  |  |  |  |  |
| DC1-UPSM-L3-CX-1180 |  | DC1-UPS-M-R21 FTE | 1d | 2026-04-02 A | 2026-04-02 A | DC1-MOD1-L3-CX-1180 FF, DC1-UPS-M-L2-1060 | 100% | 2026-04-01 | 2026-04-01 | ROS | Commissioning | DH2100 | L3 | UPS |  |
| DC1-UPSM-L3-CX-1190 |  | DC1-UPS-M-R21 L3 Startup | 2d | 2026-07-20 A | 2026-07-20 A | DC1-UPSM-L3-CX-1180, DC1-FAN-L3-CX-1190, DC1-COMP-L3-CX-1190, QTS-1013980 | 100% | 2026-07-22 | 2026-07-23 | VER | Commissioning | DH2100 | L3 | UPS | BAB |
| DC1-UPSM-L3-CX-1200 |  | DC1-UPS-M-R21 BMS/EPMS Programming | 1d | 2026-07-28 A | 2026-07-28 A | DC1-UPSM-L3-CX-1190 | 100% | 2026-07-29 | 2026-07-29 | PRM | Commissioning | DH2100 | L3 | UPS | BAB |
|  | 04 | **DC1-DH2100 COMPRESSOR/FAN UNITS Cx L3** |  | 2026-04-08 | 2026-07-16 |  |  |  |  |  |  |  |  |  |  |
|  | 01 | **DC1-DH2100 POD-AC UNITS A21 Cx L3** |  | 2026-04-08 | 2026-07-16 |  |  |  |  |  |  |  |  |  |  |
| DC1-COMP-L3-CX-1000 |  | DC1-COMP-A21-01 FTE (2) | 1d | 2026-04-08 A | 2026-04-08 A | DC1-MOD1-L3-CX-1000 | 100% |  |  | ROS | Commissioning | DH2100 | L3 | POD AC |  |
| DC1-FAN-L3-CX-1000 |  | DC1-FAN-A21-01 FTE (2) | 1d | 2026-04-08 A | 2026-04-08 A | DC1-MOD1-L3-CX-1000 | 100% | 2026-06-03 | 2026-06-03 | ROS | Commissioning | DH2100 | L3 | POD AC |  |
| DC1-COMP-L3-CX-1010 |  | DC1-COMP-A21-01 L3 Startup (2) | 2d | 2026-04-13 A | 2026-04-14 A | DC1-COMP-L3-CX-1000 | 100% |  |  | CAP | Commissioning | DH2100 | L3 | POD AC |  |
| DC1-FAN-L3-CX-1010 |  | DC1-FAN-A21-01 L3 Startup (2) | 2d | 2026-04-13 A | 2026-04-14 A | DC1-FAN-L3-CX-1000 | 100% |  |  | FBB | Commissioning | DH2100 | L3 | POD AC |  |
| DC1-COMP-L3-CX-1020 |  | DC1-COMP-A21-01 BMS/EPMS Programming (2) | 1d | 2026-05-28 A | 2026-07-16 A | DC1-COMP-L3-CX-1010 | 100% | 2026-05-28 | 2026-05-28 | PRM | Commissioning | DH2100 | L3 | POD AC |  |
| DC1-FAN-L3-CX-1020 |  | DC1-FAN-A21-01 BMS/EPMS Programming (2) | 1d | 2026-05-28 A | 2026-07-16 A | DC1-FAN-L3-CX-1010 | 100% | 2026-06-08 | 2026-06-08 | PRM | Commissioning | DH2100 | L3 | POD AC |  |

Notes:
- DC1-UPSM-L3-CX-1070: Steps: EC Startup Report; Vendor Startup
- DC1-UPSM-L3-CX-1100: Steps: EC Startup Report; Vendor Startup
- DC1-UPSM-L3-CX-1130: Steps: EC Startup Report; Vendor Startup
- DC1-UPSM-L3-CX-1160: Steps: EC Startup Report; Vendor Startup
- DC1-UPSM-L3-CX-1190: Steps: EC Startup Report; Vendor Startup

| ID | WBS | Activity | Duration | Start | Finish | Predecessors | Complete | Planned start | Planned finish | Vendor Responsible Party | Layton Discipline | Location | CX Level | Equipment |
| --- | --- | --- | --- | --- | --- | --- | --- | --- | --- | --- | --- | --- | --- | --- |
|  | 02 | **DC1-DH2100 POD-AC UNITS B21 Cx L3** |  | 2026-04-08 | 2026-07-16 |  |  |  |  |  |  |  |  |  |
| DC1-COMP-L3-CX-1030 |  | DC1-COMP-B21-01 FTE (2) | 1d | 2026-04-08 A | 2026-04-08 A | DC1-MOD1-L3-CX-1030 | 100% | 2026-06-03 | 2026-06-03 | ROS | Commissioning | DH2100 | L3 | POD AC |
| DC1-FAN-L3-CX-1030 |  | DC1-FAN-B21-01 FTE (2) | 1d | 2026-04-08 A | 2026-04-08 A | DC1-MOD1-L3-CX-1030 | 100% | 2026-06-03 | 2026-06-03 | ROS | Commissioning | DH2100 | L3 | POD AC |
| DC1-COMP-L3-CX-1040 |  | DC1-COMP-B21-01 L3 Startup (2) | 2d | 2026-04-13 A | 2026-04-14 A | DC1-COMP-L3-CX-1030 | 100% |  |  | CAP | Commissioning | DH2100 | L3 | POD AC |
| DC1-FAN-L3-CX-1040 |  | DC1-FAN-B21-01 L3 Startup (2) | 2d | 2026-04-13 A | 2026-04-14 A | DC1-FAN-L3-CX-1030 | 100% |  |  | FBB | Commissioning | DH2100 | L3 | POD AC |
| DC1-COMP-L3-CX-1050 |  | DC1-COMP-B21-01 BMS/EPMS Programming (2) | 1d | 2026-05-28 A | 2026-07-16 A | DC1-COMP-L3-CX-1040 | 100% | 2026-06-08 | 2026-06-08 | PRM | Commissioning | DH2100 | L3 | POD AC |
| DC1-FAN-L3-CX-1050 |  | DC1-FAN-B21-01 BMS/EPMS Programming (2) | 1d | 2026-05-28 A | 2026-07-16 A | DC1-FAN-L3-CX-1040 | 100% | 2026-06-08 | 2026-06-08 | PRM | Commissioning | DH2100 | L3 | POD AC |
|  | 03 | **DC1-DH2100 POD-AC UNITS C21 Cx L3** |  | 2026-04-08 | 2026-07-16 |  |  |  |  |  |  |  |  |  |
| DC1-COMP-L3-CX-1060 |  | DC1-COMP-C21-01 FTE (2) | 1d | 2026-04-08 A | 2026-04-08 A | DC1-MOD1-L3-CX-1060 | 100% | 2026-06-03 | 2026-06-03 | ROS | Commissioning | DH2100 | L3 | POD AC |
| DC1-FAN-L3-CX-1060 |  | DC1-FAN-C21-01 FTE (2) | 1d | 2026-04-08 A | 2026-04-08 A | DC1-MOD1-L3-CX-1060 | 100% | 2026-06-03 | 2026-06-03 | ROS | Commissioning | DH2100 | L3 | POD AC |
| DC1-COMP-L3-CX-1070 |  | DC1-COMP-C21-01 L3 Startup (2) | 2d | 2026-04-13 A | 2026-04-14 A | DC1-COMP-L3-CX-1060 | 100% |  |  | CAP | Commissioning | DH2100 | L3 | POD AC |
| DC1-FAN-L3-CX-1070 |  | DC1-FAN-C21-01 L3 Startup (2) | 2d | 2026-04-13 A | 2026-04-14 A | DC1-FAN-L3-CX-1060 | 100% |  |  | FBB | Commissioning | DH2100 | L3 | POD AC |
| DC1-COMP-L3-CX-1080 |  | DC1-COMP-C21-01 BMS/EPMS Programming (2) | 1d | 2026-05-28 A | 2026-07-16 A | DC1-COMP-L3-CX-1070 | 100% | 2026-05-28 | 2026-05-28 | PRM | Commissioning | DH2100 | L3 | POD AC |
| DC1-FAN-L3-CX-1080 |  | DC1-FAN-C21-01 BMS/EPMS Programming (2) | 1d | 2026-05-28 A | 2026-07-16 A | DC1-FAN-L3-CX-1070 | 100% | 2026-06-08 | 2026-06-08 | PRM | Commissioning | DH2100 | L3 | POD AC |
|  | 04 | **DC1-DH2100 POD-AC UNITS D21 Cx L3** |  | 2026-04-08 | 2026-07-16 |  |  |  |  |  |  |  |  |  |
| DC1-COMP-L3-CX-1090 |  | DC1-COMP-D21-01 FTE (2) | 1d | 2026-04-08 A | 2026-04-08 A | DC1-MOD1-L3-CX-1090 | 100% | 2026-06-03 | 2026-06-03 | ROS | Commissioning | DH2100 | L3 | POD AC |
| DC1-FAN-L3-CX-1090 |  | DC1-FAN-D21-01 FTE (2) | 1d | 2026-04-08 A | 2026-04-08 A | DC1-MOD1-L3-CX-1090 | 100% | 2026-06-03 | 2026-06-03 | ROS | Commissioning | DH2100 | L3 | POD AC |
| DC1-COMP-L3-CX-1100 |  | DC1-COMP-D21-01 L3 Startup (2) | 2d | 2026-04-13 A | 2026-04-14 A | DC1-COMP-L3-CX-1090 | 100% |  |  | CAP | Commissioning | DH2100 | L3 | POD AC |
| DC1-FAN-L3-CX-1100 |  | DC1-FAN-D21-01 L3 Startup (2) | 2d | 2026-04-13 A | 2026-04-14 A | DC1-FAN-L3-CX-1090 | 100% |  |  | FBB | Commissioning | DH2100 | L3 | POD AC |
| DC1-COMP-L3-CX-1110 |  | DC1-COMP-D21-01 BMS/EPMS Programming (2) | 1d | 2026-05-28 A | 2026-07-16 A | DC1-COMP-L3-CX-1100 | 100% | 2026-06-08 | 2026-06-08 | PRM | Commissioning | DH2100 | L3 | POD AC |
| DC1-FAN-L3-CX-1110 |  | DC1-FAN-D21-01 BMS/EPMS Programming (2) | 1d | 2026-05-28 A | 2026-07-16 A | DC1-FAN-L3-CX-1100 | 100% | 2026-06-08 | 2026-06-08 | PRM | Commissioning | DH2100 | L3 | POD AC |
|  | 05 | **DC1-DH2100 POD-AC UNITS E21 Cx L3** |  | 2026-04-08 | 2026-07-16 |  |  |  |  |  |  |  |  |  |
| DC1-COMP-L3-CX-1120 |  | DC1-COMP-E21-01 FTE (2) | 1d | 2026-04-08 A | 2026-04-08 A | DC1-MOD1-L3-CX-1120 | 100% | 2026-06-03 | 2026-06-03 | ROS | Commissioning | DH2100 | L3 | POD AC |
| DC1-FAN-L3-CX-1120 |  | DC1-FAN-E21-01 FTE (2) | 1d | 2026-04-08 A | 2026-04-08 A | DC1-MOD1-L3-CX-1120 | 100% | 2026-06-03 | 2026-06-03 | ROS | Commissioning | DH2100 | L3 | POD AC |
| DC1-COMP-L3-CX-1130 |  | DC1-COMP-E21-01 L3 Startup (2) | 2d | 2026-04-13 A | 2026-04-14 A | DC1-COMP-L3-CX-1120 | 100% |  |  | CAP | Commissioning | DH2100 | L3 | POD AC |
| DC1-FAN-L3-CX-1130 |  | DC1-FAN-E21-01 L3 Startup (2) | 2d | 2026-04-13 A | 2026-04-14 A | DC1-FAN-L3-CX-1120 | 100% |  |  | FBB | Commissioning | DH2100 | L3 | POD AC |
| DC1-COMP-L3-CX-1140 |  | DC1-COMP-E21-01 BMS/EPMS Programming (2) | 1d | 2026-05-28 A | 2026-07-16 A | DC1-COMP-L3-CX-1130 | 100% | 2026-05-28 | 2026-05-28 | PRM | Commissioning | DH2100 | L3 | POD AC |
| DC1-FAN-L3-CX-1140 |  | DC1-FAN-E21-01 BMS/EPMS Programming (2) | 1d | 2026-05-28 A | 2026-07-16 A | DC1-FAN-L3-CX-1130 | 100% | 2026-05-28 | 2026-05-28 | PRM | Commissioning | DH2100 | L3 | POD AC |

| ID | WBS | Activity | Duration | Start | Finish | Predecessors | Complete | Planned start | Planned finish | Vendor Responsible Party | Layton Discipline | Location | CX Level | Equipment | Notes | Schedule Note | Contract |
| --- | --- | --- | --- | --- | --- | --- | --- | --- | --- | --- | --- | --- | --- | --- | --- | --- | --- |
|  | 06 | **DC1-DH2100 POD-AC UNITS F21 Cx L3** |  | 2026-04-08 | 2026-07-16 |  |  |  |  |  |  |  |  |  |  |  |  |
| DC1-COMP-L3-CX-1150 |  | DC1-COMP-F21-01 FTE (2) | 1d | 2026-04-08 A | 2026-04-08 A | DC1-MOD1-L3-CX-1150 | 100% | 2026-06-03 | 2026-06-03 | ROS | Commissioning | DH2100 | L3 | POD AC |  |  |  |
| DC1-FAN-L3-CX-1150 |  | DC1-FAN-F21-01 FTE (2) | 1d | 2026-04-08 A | 2026-04-08 A | DC1-MOD1-L3-CX-1150 | 100% | 2026-06-03 | 2026-06-03 | ROS | Commissioning | DH2100 | L3 | POD AC |  |  |  |
| DC1-COMP-L3-CX-1160 |  | DC1-COMP-F21-01 L3 Startup (2) | 2d | 2026-04-13 A | 2026-04-14 A | DC1-COMP-L3-CX-1150 | 100% |  |  | CAP | Commissioning | DH2100 | L3 | POD AC |  |  |  |
| DC1-FAN-L3-CX-1160 |  | DC1-FAN-F21-01 L3 Startup (2) | 2d | 2026-04-13 A | 2026-04-14 A | DC1-FAN-L3-CX-1150 | 100% |  |  | FBB | Commissioning | DH2100 | L3 | POD AC |  |  |  |
| DC1-COMP-L3-CX-1170 |  | DC1-COMP-F21-01 BMS/EPMS Programming (2) | 1d | 2026-05-28 A | 2026-07-16 A | DC1-COMP-L3-CX-1160 | 100% | 2026-05-28 | 2026-05-28 | PRM | Commissioning | DH2100 | L3 | POD AC |  |  |  |
| DC1-FAN-L3-CX-1170 |  | DC1-FAN-F21-01 BMS/EPMS Programming (2) | 1d | 2026-05-28 A | 2026-07-16 A | DC1-FAN-L3-CX-1160 | 100% | 2026-05-28 | 2026-05-28 | PRM | Commissioning | DH2100 | L3 | POD AC |  |  |  |
|  | 07 | **DC1-DH2100 POD-AC UNITS R21 Cx L3** |  | 2026-04-08 | 2026-07-16 |  |  |  |  |  |  |  |  |  |  |  |  |
| DC1-COMP-L3-CX-1180 |  | DC1-COMP-R21-01 FTE (2) | 1d | 2026-04-08 A | 2026-04-08 A | DC1-MOD1-L3-CX-1180 | 100% | 2026-06-03 | 2026-06-03 | ROS | Commissioning | DH2100 | L3 | POD AC |  |  |  |
| DC1-FAN-L3-CX-1180 |  | DC1-FAN-R21-01 FTE (2) | 1d | 2026-04-08 A | 2026-04-08 A | DC1-MOD1-L3-CX-1180 | 100% | 2026-06-03 | 2026-06-03 | ROS | Commissioning | DH2100 | L3 | POD AC |  |  |  |
| DC1-COMP-L3-CX-1190 |  | DC1-COMP-R21-01 L3 Startup (2) | 2d | 2026-04-13 A | 2026-04-14 A | DC1-COMP-L3-CX-1180 | 100% |  |  | CAP | Commissioning | DH2100 | L3 | POD AC |  |  |  |
| DC1-FAN-L3-CX-1190 |  | DC1-FAN-R21-01 L3 Startup (2) | 2d | 2026-04-13 A | 2026-04-14 A | DC1-FAN-L3-CX-1180 | 100% |  |  | FBB | Commissioning | DH2100 | L3 | POD AC |  |  |  |
| DC1-COMP-L3-CX-1200 |  | DC1-COMP-R21-01 BMS/EPMS Programming (2) | 1d | 2026-05-28 A | 2026-07-16 A | DC1-COMP-L3-CX-1190 | 100% | 2026-05-28 | 2026-05-28 | PRM | Commissioning | DH2100 | L3 | POD AC |  |  |  |
| DC1-FAN-L3-CX-1200 |  | DC1-FAN-R21-01 BMS/EPMS Programming (2) | 1d | 2026-05-28 A | 2026-07-16 A | DC1-FAN-L3-CX-1190 | 100% | 2026-05-28 | 2026-05-28 | PRM | Commissioning | DH2100 | L3 | POD AC |  |  |  |
|  | 04 | **DC1-DH2100 BUS-R1X/BUS-R2X Cx L3** |  | 2026-05-07 | 2026-05-19 |  |  |  |  |  |  |  |  |  |  |  |  |
|  | 01 | **DC1-DH2100 BUS-R2 MAINTENANCE BUS DUCT Cx L3** |  | 2026-05-07 | 2026-05-19 |  |  |  |  |  |  |  |  |  |  |  |  |
| DC1-BUS-L3-CX-1000 |  | DC1-DH2100-BUS-R2 (R21) MAINTENANCE BUS FTE | 1d | 2026-05-07 A | 2026-05-07 A | DC1-SWD-L3-CX-1180 SS, DC1-BUS-L2-1000, DC1-BUS-L2-CX-2000 | 100% |  |  | ROS | Commissioning | DH2100 | L3 | BUS DUCT | CFCI |  |  |
| DC1-BUS-L3-CX-1010 |  | DC1-DH2100-BUS-R2 (R21) MAINTENANCE BUS L3 Startup | 2d | 2026-05-11 A | 2026-05-13 A | DC1-BUS-L3-CX-1000 | 100% | 2026-05-11 | 2026-05-12 | LAY | Commissioning | DH2100 | L3 | BUS DUCT | CFCI |  |  |
| DC1-BUS-L3-CX-1020 |  | DC1-DH2100-BUS-R2 (R21) MAINTENANCE BUS BMS/EPMS Programming | 1d | 2026-05-19 A | 2026-05-19 A | DC1-BUS-L3-CX-1010, QTS-1007140 | 100% |  |  | PRM | Commissioning | DH2100 | L3 | BUS DUCT | CFCI | 50 - No Contols Checklist in Cx Alloy |  |
|  | 02 | **DC1-DH2100 BUS-R1 CATCHER BUS DUCT Cx L3** |  | 2026-05-07 | 2026-05-19 |  |  |  |  |  |  |  |  |  |  |  |  |
| DC1-BUS-L3-CX-1030 |  | DC1-DH2100-BUS-R1 (R11) CATCHER BUS FTE | 1d | 2026-05-07 A | 2026-05-07 A | DC1-SWD-L3-CX-2180, DC1-BUS-L3-CX-2030 SS, DC1-BUS-L2-1010, DC1-BUS-L3-CX-1000 SS, DC1-BUS-L2-CX-2010 | 100% |  |  | ROS | Commissioning | DH2100 | L3 | BUS DUCT | CFCI |  |  |
| DC1-BUS-L3-CX-1040 |  | DC1-DH2100-BUS-R1 (R11) CATCHER BUS L3 Startup | 2d | 2026-05-11 A | 2026-05-13 A | DC1-BUS-L3-CX-1030 | 100% | 2026-05-11 | 2026-05-12 | LAY | Commissioning | DH2100 | L3 | BUS DUCT | CFCI |  |  |
| DC1-BUS-L3-CX-1050 |  | DC1-DH2100-BUS-R1 (R11) CATCHER BUS BMS/EPMS Programming | 1d | 2026-05-19 A | 2026-05-19 A | DC1-BUS-L3-CX-1040, QTS-1007140 | 100% |  |  | PRM | Commissioning | DH2100 | L3 | BUS DUCT | CFCI | 5/20 - No Controls Checklist in Cx Alloy |  |
|  | 05 | **DC1-DH2100 ATS Cx L3** |  | 2026-05-20 | 2026-07-28 |  |  |  |  |  |  |  |  |  |  |  |  |
|  | 01 | **DC1-DH2100 ATS-A21 Cx L3** |  | 2026-05-20 | 2026-07-28 |  |  |  |  |  |  |  |  |  |  |  |  |
|  | 01 | **DC1-DH2100-ATS-A21-01 Cx L3** |  | 2026-05-20 | 2026-07-28 |  |  |  |  |  |  |  |  |  |  |  |  |
| DC1-ATS-L3-CX-1000 |  | DC1-ATS-A21-01 FTE | 1d | 2026-05-20 A | 2026-05-20 A | DC1-SWD-L3-CX-1000 SS, DC1-BUS-L3-CX-1000 SS, DC1-ATS-L2-1000 | 100% |  |  | ROS | Commissioning | DH2100 | L3 | ATS | SWD - FS |  |  |
| DC1-ATS-L3-CX-1005 |  | DC1-ATS-A21-01 L3 Startup | 2d | 2026-05-26 A | 2026-05-29 A | DC1-ATS-L3-CX-1000 | 100% | 2026-06-04 | 2026-06-05 | MAV | Commissioning | DH2100 | L3 | ATS |  |  |  |
| DC1-ATS-L3-CX-1010 |  | DC1-ATS-A21-01 BMS/EPMS Programming | 1d | 2026-07-28 A | 2026-07-28 A | DC1-ATS-L3-CX-1005, QTS-1007140, DC1-FAN-L3-CX-1020 | 100% | 2026-07-29 | 2026-07-29 | PRM | Commissioning | DH2100 | L3 | ATS |  |  | BAB |

Notes:
- DC1-BUS-L3-CX-1010: Steps: EC Startup Report; Vendor Startup
- DC1-BUS-L3-CX-1040: Steps: EC Startup Report; Vendor Startup
- DC1-ATS-L3-CX-1005: Steps: EC Startup Report; Vendor Startup

| ID | WBS | Activity | Duration | Start | Finish | Predecessors | Complete | Planned start | Planned finish | Notes | Vendor Responsible Party | Layton Discipline | Location | CX Level | Equipment | Contract |
| --- | --- | --- | --- | --- | --- | --- | --- | --- | --- | --- | --- | --- | --- | --- | --- | --- |
|  | 02 | **DC1-DH2100-ATS-A21-02 Cx L3** |  | 2026-05-20 | 2026-07-28 |  |  |  |  |  |  |  |  |  |  |  |
| DC1-ATS-L3-CX-1015 |  | DC1-ATS-A21-02 FTE | 1d | 2026-05-20 A | 2026-05-20 A | DC1-BUS-L3-CX-1030 SS, DC1-BUS-L3-CX-1000 SS, DC1-ATS-L2-1010 | 100% | 2026-06-03 | 2026-06-03 | SWD - FS | ROS | Commissioning | DH2100 | L3 | ATS |  |
| DC1-ATS-L3-CX-1020 |  | DC1-ATS-A21-02 L3 Startup | 4d | 2026-05-26 A | 2026-05-29 A | DC1-ATS-L3-CX-1015 | 100% |  |  |  | MAV | Commissioning | DH2100 | L3 | ATS |  |
| DC1-ATS-L3-CX-1025 |  | DC1-ATS-A21-02 BMS/EPMS Programming | 1d | 2026-07-28 A | 2026-07-28 A | DC1-ATS-L3-CX-1020, QTS-1007140, DC1-FAN-L3-CX-1050 | 100% | 2026-07-29 | 2026-07-29 |  | PRM | Commissioning | DH2100 | L3 | ATS | BAB |
|  | 03 | **DC1-DH2100-ATS-A21-03 Cx L3** |  | 2026-05-20 | 2026-07-28 |  |  |  |  |  |  |  |  |  |  |  |
| DC1-ATS-L3-CX-1030 |  | DC1-ATS-A21-03 FTE | 1d | 2026-05-20 A | 2026-05-20 A | DC1-SWD-L3-CX-1000 SS, DC1-BUS-L3-CX-1000 SS, DC1-ATS-L2-1020 | 100% | 2026-06-03 | 2026-06-03 | SWD - FS | ROS | Commissioning | DH2100 | L3 | ATS |  |
| DC1-ATS-L3-CX-1035 |  | DC1-ATS-A21-03 L3 Startup | 2d | 2026-05-26 A | 2026-05-29 A | DC1-ATS-L3-CX-1030 | 100% | 2026-06-04 | 2026-06-05 |  | MAV | Commissioning | DH2100 | L3 | ATS |  |
| DC1-ATS-L3-CX-1040 |  | DC1-ATS-A21-03 BMS/EPMS Programming | 1d | 2026-07-28 A | 2026-07-28 A | DC1-ATS-L3-CX-1035, QTS-1007140, DC1-FAN-L3-CX-1080 | 100% | 2026-07-29 | 2026-07-29 |  | PRM | Commissioning | DH2100 | L3 | ATS | BAB |
|  | 04 | **DC1-DH2100-ATS-A21-04 Cx L3** |  | 2026-05-20 | 2026-07-28 |  |  |  |  |  |  |  |  |  |  |  |
| DC1-ATS-L3-CX-1045 |  | DC1-ATS-A21-04 FTE | 1d | 2026-05-20 A | 2026-05-20 A | DC1-BUS-L3-CX-1030 SS, DC1-BUS-L3-CX-1000 SS, DC1-ATS-L2-1030 | 100% | 2026-06-03 | 2026-06-03 | SWD - FS | ROS | Commissioning | DH2100 | L3 | ATS |  |
| DC1-ATS-L3-CX-1050 |  | DC1-ATS-A21-04 L3 Startup | 2d | 2026-05-26 A | 2026-05-29 A | DC1-ATS-L3-CX-1045 | 100% | 2026-06-04 | 2026-06-05 |  | MAV | Commissioning | DH2100 | L3 | ATS |  |
| DC1-ATS-L3-CX-1055 |  | DC1-ATS-A21-04 BMS/EPMS Programming | 1d | 2026-07-28 A | 2026-07-28 A | DC1-ATS-L3-CX-1050, QTS-1007140, DC1-FAN-L3-CX-1110, DC1-FAN-L3-CX-1140 | 100% | 2026-07-29 | 2026-07-29 |  | PRM | Commissioning | DH2100 | L3 | ATS | BAB |
|  | 05 | **DC1-DH2100-ATS-A21-05 Cx L3** |  | 2026-05-20 | 2026-07-28 |  |  |  |  |  |  |  |  |  |  |  |
| DC1-ATS-L3-CX-1060 |  | DC1-ATS-A21-05 FTE | 1d | 2026-05-20 A | 2026-05-20 A | DC1-SWD-L3-CX-1000 SS, DC1-BUS-L3-CX-1000 SS, DC1-ATS-L2-1040 | 100% | 2026-06-03 | 2026-06-03 | SWD - FS | ROS | Commissioning | DH2100 | L3 | ATS |  |
| DC1-ATS-L3-CX-1065 |  | DC1-ATS-A21-05 L3 Startup | 2d | 2026-05-26 A | 2026-06-02 A | DC1-ATS-L3-CX-1060 | 100% | 2026-06-04 | 2026-06-05 |  | MAV | Commissioning | DH2100 | L3 | ATS |  |
| DC1-ATS-L3-CX-1070 |  | DC1-ATS-A21-05 BMS/EPMS Programming | 1d | 2026-07-28 A | 2026-07-28 A | DC1-ATS-L3-CX-1065, QTS-1007140, DC1-FAN-L3-CX-1170 | 100% | 2026-07-29 | 2026-07-29 |  | PRM | Commissioning | DH2100 | L3 | ATS | BAB |
|  | 06 | **DC1-DH2100-ATS-A21-06 Cx L3** |  | 2026-05-20 | 2026-07-28 |  |  |  |  |  |  |  |  |  |  |  |
| DC1-ATS-L3-CX-1075 |  | DC1-ATS-A21-06 FTE | 1d | 2026-05-20 A | 2026-05-20 A | DC1-ATS-L2-1050, DC1-BUS-L3-CX-1030 SS, DC1-BUS-L3-CX-1000 SS | 100% | 2026-06-03 | 2026-06-03 | SWD - FS | ROS | Commissioning | DH2100 | L3 | ATS |  |
| DC1-ATS-L3-CX-1080 |  | DC1-ATS-A21-06 L3 Startup | 2d | 2026-05-26 A | 2026-06-02 A | DC1-ATS-L3-CX-1075 | 100% | 2026-06-04 | 2026-06-05 |  | MAV | Commissioning | DH2100 | L3 | ATS |  |
| DC1-ATS-L3-CX-1085 |  | DC1-ATS-A21-06 BMS/EPMS Programming | 1d | 2026-07-28 A | 2026-07-28 A | DC1-ATS-L3-CX-1080, QTS-1007140, DC1-FAN-L3-CX-1200 | 100% | 2026-07-29 | 2026-07-29 |  | PRM | Commissioning | DH2100 | L3 | ATS | BAB |
|  | 02 | **DC1-DH2100 ATS-B21 Cx L3** |  | 2026-05-20 | 2026-07-28 |  |  |  |  |  |  |  |  |  |  |  |
|  | 01 | **DC1-DH2100-ATS-B21-01 Cx L3** |  | 2026-05-20 | 2026-07-28 |  |  |  |  |  |  |  |  |  |  |  |
| DC1-ATS-L3-CX-1090 |  | DC1-ATS-B21-01 FTE | 1d | 2026-05-20 A | 2026-05-20 A | DC1-SWD-L3-CX-1030 SS, DC1-BUS-L3-CX-1000 SS, DC1-ATS-L2-1060 | 100% | 2026-06-03 | 2026-06-03 |  | ROS | Commissioning | DH2100 | L3 | ATS |  |
| DC1-ATS-L3-CX-1095 |  | DC1-ATS-B21-01 L3 Startup | 2d | 2026-05-26 A | 2026-05-29 A | DC1-ATS-L3-CX-1090 | 100% | 2026-06-04 | 2026-06-05 |  | MAV | Commissioning | DH2100 | L3 | ATS |  |
| DC1-ATS-L3-CX-1100 |  | DC1-ATS-B21-01 BMS/EPMS Programming | 1d | 2026-07-28 A | 2026-07-28 A | DC1-ATS-L3-CX-1095, QTS-1007140, DC1-ATS-L3-CX-1010 SS, DC1-ATS-L3-CX-1010 FF | 100% | 2026-07-29 | 2026-07-29 |  | PRM | Commissioning | DH2100 | L3 | ATS | BAB |

Notes:
- DC1-ATS-L3-CX-1020: Steps: EC Startup Report; Vendor Startup
- DC1-ATS-L3-CX-1035: Steps: EC Startup Report; Vendor Startup
- DC1-ATS-L3-CX-1050: Steps: EC Startup Report; Vendor Startup
- DC1-ATS-L3-CX-1065: Steps: EC Startup Report; Vendor Startup
- DC1-ATS-L3-CX-1080: Steps: EC Startup Report; Vendor Startup
- DC1-ATS-L3-CX-1095: Steps: EC Startup Report; Vendor Startup

| ID | WBS | Activity | Duration | Start | Finish | Predecessors | Complete | Planned start | Planned finish | Vendor Responsible Party | Layton Discipline | Location | CX Level | Equipment | Contract |
| --- | --- | --- | --- | --- | --- | --- | --- | --- | --- | --- | --- | --- | --- | --- | --- |
|  | 02 | **DC1-DH2100-ATS-B21-02 Cx L3** |  | 2026-05-20 | 2026-07-28 |  |  |  |  |  |  |  |  |  |  |
| DC1-ATS-L3-CX-1105 |  | DC1-ATS-B21-02 FTE | 1d | 2026-05-20 A | 2026-05-20 A | DC1-BUS-L3-CX-1030, DC1-BUS-L3-CX-1000 SS, DC1-ATS-L2-1070 | 100% | 2026-06-03 | 2026-06-03 | ROS | Commissioning | DH2100 | L3 | ATS |  |
| DC1-ATS-L3-CX-1110 |  | DC1-ATS-B21-02 L3 Startup | 2d | 2026-05-26 A | 2026-05-29 A | DC1-ATS-L3-CX-1105 | 100% | 2026-06-04 | 2026-06-05 | MAV | Commissioning | DH2100 | L3 | ATS |  |
| DC1-ATS-L3-CX-1115 |  | DC1-ATS-B21-02 BMS/EPMS Programming | 1d | 2026-07-28 A | 2026-07-28 A | DC1-ATS-L3-CX-1110, QTS-1007140, DC1-ATS-L3-CX-1025 SS, DC1-ATS-L3-CX-1025 FF | 100% | 2026-07-29 | 2026-07-29 | PRM | Commissioning | DH2100 | L3 | ATS | BAB |
|  | 03 | **DC1-DH2100-ATS-B21-03 Cx L3** |  | 2026-05-20 | 2026-07-28 |  |  |  |  |  |  |  |  |  |  |
| DC1-ATS-L3-CX-1120 |  | DC1-ATS-B21-03 FTE | 1d | 2026-05-20 A | 2026-05-20 A | DC1-SWD-L3-CX-1030 SS, DC1-BUS-L3-CX-1000 SS, DC1-ATS-L2-1080 | 100% | 2026-06-03 | 2026-06-03 | ROS | Commissioning | DH2100 | L3 | ATS |  |
| DC1-ATS-L3-CX-1125 |  | DC1-ATS-B21-03 L3 Startup | 2d | 2026-05-26 A | 2026-05-29 A | DC1-ATS-L3-CX-1120 | 100% | 2026-06-04 | 2026-06-05 | MAV | Commissioning | DH2100 | L3 | ATS |  |
| DC1-ATS-L3-CX-1130 |  | DC1-ATS-B21-03 BMS/EPMS Programming | 1d | 2026-07-28 A | 2026-07-28 A | DC1-ATS-L3-CX-1125, QTS-1007140, DC1-ATS-L3-CX-1040 SS, DC1-ATS-L3-CX-1040 FF | 100% | 2026-07-29 | 2026-07-29 | PRM | Commissioning | DH2100 | L3 | ATS | BAB |
|  | 04 | **DC1-DH2100-ATS-B21-04 Cx L3** |  | 2026-05-20 | 2026-07-28 |  |  |  |  |  |  |  |  |  |  |
| DC1-ATS-L3-CX-1135 |  | DC1-ATS-B21-04 FTE | 1d | 2026-05-20 A | 2026-05-20 A | DC1-BUS-L3-CX-1030, DC1-BUS-L3-CX-1000 SS, DC1-ATS-L2-1090 | 100% | 2026-06-03 | 2026-06-03 | ROS | Commissioning | DH2100 | L3 | ATS |  |
| DC1-ATS-L3-CX-1140 |  | DC1-ATS-B21-04 L3 Startup | 2d | 2026-05-26 A | 2026-05-29 A | DC1-ATS-L3-CX-1135 | 100% | 2026-06-04 | 2026-06-05 | MAV | Commissioning | DH2100 | L3 | ATS |  |
| DC1-ATS-L3-CX-1145 |  | DC1-ATS-B21-04 BMS/EPMS Programming | 1d | 2026-07-28 A | 2026-07-28 A | DC1-ATS-L3-CX-1140, QTS-1007140, DC1-ATS-L3-CX-1055 SS, DC1-ATS-L3-CX-1055 FF | 100% | 2026-07-29 | 2026-07-29 | PRM | Commissioning | DH2100 | L3 | ATS | BAB |
|  | 05 | **DC1-DH2100-ATS-B21-05 Cx L3** |  | 2026-05-20 | 2026-07-28 |  |  |  |  |  |  |  |  |  |  |
| DC1-ATS-L3-CX-1150 |  | DC1-ATS-B21-05 FTE | 1d | 2026-05-20 A | 2026-05-20 A | DC1-SWD-L3-CX-1030 SS, DC1-BUS-L3-CX-1000 SS, DC1-ATS-L2-1100 | 100% | 2026-06-03 | 2026-06-03 | ROS | Commissioning | DH2100 | L3 | ATS |  |
| DC1-ATS-L3-CX-1155 |  | DC1-ATS-B21-05 L3 Startup | 2d | 2026-05-26 A | 2026-05-29 A | DC1-ATS-L3-CX-1150 | 100% | 2026-06-04 | 2026-06-05 | MAV | Commissioning | DH2100 | L3 | ATS |  |
| DC1-ATS-L3-CX-1160 |  | DC1-ATS-B21-05 BMS/EPMS Programming | 1d | 2026-07-28 A | 2026-07-28 A | DC1-ATS-L3-CX-1155, QTS-1007140, DC1-ATS-L3-CX-1070 SS, DC1-ATS-L3-CX-1070 FF | 100% | 2026-07-29 | 2026-07-29 | PRM | Commissioning | DH2100 | L3 | ATS | BAB |
|  | 06 | **DC1-DH2100-ATS-B21-06 Cx L3** |  | 2026-05-20 | 2026-07-28 |  |  |  |  |  |  |  |  |  |  |
| DC1-ATS-L3-CX-1165 |  | DC1-ATS-B21-06 FTE | 1d | 2026-05-20 A | 2026-05-20 A | DC1-BUS-L3-CX-1030, DC1-BUS-L3-CX-1000 SS, DC1-ATS-L2-1110 | 100% | 2026-06-03 | 2026-06-03 | ROS | Commissioning | DH2100 | L3 | ATS |  |
| DC1-ATS-L3-CX-1170 |  | DC1-ATS-B21-06 L3 Startup | 2d | 2026-05-26 A | 2026-05-29 A | DC1-ATS-L3-CX-1165 | 100% | 2026-06-04 | 2026-06-05 | MAV | Commissioning | DH2100 | L3 | ATS |  |
| DC1-ATS-L3-CX-1175 |  | DC1-ATS-B21-06 BMS/EPMS Programming | 1d | 2026-07-28 A | 2026-07-28 A | DC1-ATS-L3-CX-1170, QTS-1007140, DC1-ATS-L3-CX-1085 SS, DC1-ATS-L3-CX-1085 FF | 100% | 2026-07-29 | 2026-07-29 | PRM | Commissioning | DH2100 | L3 | ATS | BAB |
|  | 03 | **DC1-DH2100 ATS-C21 Cx L3** |  | 2026-05-20 | 2026-07-28 |  |  |  |  |  |  |  |  |  |  |
|  | 01 | **DC1-DH2100-ATS-C21-01 Cx L3** |  | 2026-05-20 | 2026-07-28 |  |  |  |  |  |  |  |  |  |  |
| DC1-ATS-L3-CX-1180 |  | DC1-ATS-C21-01 FTE | 1d | 2026-05-20 A | 2026-05-20 A | DC1-SWD-L3-CX-1060 SS, DC1-BUS-L3-CX-1000 SS, DC1-ATS-L2-1120 | 100% | 2026-06-03 | 2026-06-03 | ROS | Commissioning | DH2100 | L3 | ATS |  |
| DC1-ATS-L3-CX-1185 |  | DC1-ATS-C21-01 L3 Startup | 2d | 2026-07-28 A | 2026-07-28 A | DC1-ATS-L3-CX-1180 | 100% | 2026-06-03 | 2026-06-04 | MAV | Commissioning | DH2100 | L3 | ATS | BAB |
| DC1-ATS-L3-CX-1190 |  | DC1-ATS-C21-01 BMS/EPMS Programming | 1d | 2026-07-28 A | 2026-07-28 A | DC1-ATS-L3-CX-1185 FF, QTS-1007140, DC1-ATS-L3-CX-1100 SS, DC1-ATS-L3-CX-1100 FF | 100% | 2026-07-29 | 2026-07-29 | PRM | Commissioning | DH2100 | L3 | ATS | BAB |

Notes:
- DC1-ATS-L3-CX-1110: Steps: EC Startup Report; Vendor Startup
- DC1-ATS-L3-CX-1125: Steps: EC Startup Report; Vendor Startup
- DC1-ATS-L3-CX-1140: Steps: EC Startup Report; Vendor Startup
- DC1-ATS-L3-CX-1155: Steps: EC Startup Report; Vendor Startup
- DC1-ATS-L3-CX-1170: Steps: EC Startup Report; Vendor Startup
- DC1-ATS-L3-CX-1185: Steps: EC Startup Report; Vendor Startup

| ID | WBS | Activity | Duration | Start | Finish | Predecessors | Complete | Planned start | Planned finish | Vendor Responsible Party | Layton Discipline | Location | CX Level | Equipment | Contract |
| --- | --- | --- | --- | --- | --- | --- | --- | --- | --- | --- | --- | --- | --- | --- | --- |
|  | 02 | **DC1-DH2100-ATS-C21-02 Cx L3** |  | 2026-05-20 | 2026-07-28 |  |  |  |  |  |  |  |  |  |  |
| DC1-ATS-L3-CX-1195 |  | DC1-ATS-C21-02 FTE | 1d | 2026-05-20 A | 2026-05-20 A | DC1-BUS-L3-CX-1030, DC1-BUS-L3-CX-1000 SS, DC1-ATS-L2-1130 | 100% | 2026-06-03 | 2026-06-03 | ROS | Commissioning | DH2100 | L3 | ATS |  |
| DC1-ATS-L3-CX-1200 |  | DC1-ATS-C21-02 L3 Startup | 2d | 2026-05-26 A | 2026-05-29 A | DC1-ATS-L3-CX-1195 | 100% | 2026-05-26 | 2026-05-27 | MAV | Commissioning | DH2100 | L3 | ATS |  |
| DC1-ATS-L3-CX-1205 |  | DC1-ATS-C21-02 BMS/EPMS Programming | 1d | 2026-07-28 A | 2026-07-28 A | DC1-ATS-L3-CX-1200, QTS-1007140, DC1-ATS-L3-CX-1115 SS, DC1-ATS-L3-CX-1115 FF, DC1-ATS-L3-CX-1190 SS, DC1-ATS-L3-CX-1190 FF | 100% | 2026-07-29 | 2026-07-29 | PRM | Commissioning | DH2100 | L3 | ATS | BAB |
|  | 03 | **DC1-DH2100-ATS-C21-03 Cx L3** |  | 2026-05-20 | 2026-07-28 |  |  |  |  |  |  |  |  |  |  |
| DC1-ATS-L3-CX-1210 |  | DC1-ATS-C21-03 FTE | 1d | 2026-05-20 A | 2026-05-20 A | DC1-SWD-L3-CX-1060 SS, DC1-BUS-L3-CX-1000 SS, DC1-ATS-L2-1140 | 100% | 2026-06-03 | 2026-06-03 | ROS | Commissioning | DH2100 | L3 | ATS |  |
| DC1-ATS-L3-CX-1215 |  | DC1-ATS-C21-03 L3 Startup | 2d | 2026-05-26 A | 2026-05-29 A | DC1-ATS-L3-CX-1210 | 100% | 2026-06-04 | 2026-06-05 | MAV | Commissioning | DH2100 | L3 | ATS |  |
| DC1-ATS-L3-CX-1220 |  | DC1-ATS-C21-03 BMS/EPMS Programming | 1d | 2026-07-28 A | 2026-07-28 A | DC1-ATS-L3-CX-1215, QTS-1007140, DC1-ATS-L3-CX-1130 SS, DC1-ATS-L3-CX-1130 FF, DC1-ATS-L3-CX-1205 SS, DC1-ATS-L3-CX-1205 FF | 100% | 2026-07-29 | 2026-07-29 | PRM | Commissioning | DH2100 | L3 | ATS | BAB |
|  | 04 | **DC1-DH2100-ATS-C21-04 Cx L3** |  | 2026-05-20 | 2026-07-28 |  |  |  |  |  |  |  |  |  |  |
| DC1-ATS-L3-CX-1225 |  | DC1-ATS-C21-04 FTE | 1d | 2026-05-20 A | 2026-05-20 A | DC1-BUS-L3-CX-1030, DC1-BUS-L3-CX-1000 SS, DC1-ATS-L2-1150 | 100% | 2026-06-03 | 2026-06-03 | ROS | Commissioning | DH2100 | L3 | ATS |  |
| DC1-ATS-L3-CX-1230 |  | DC1-ATS-C21-04 L3 Startup | 2d | 2026-05-26 A | 2026-05-29 A | DC1-ATS-L3-CX-1225 | 100% | 2026-06-04 | 2026-06-05 | MAV | Commissioning | DH2100 | L3 | ATS |  |
| DC1-ATS-L3-CX-1235 |  | DC1-ATS-C21-04 BMS/EPMS Programming | 1d | 2026-07-28 A | 2026-07-28 A | DC1-ATS-L3-CX-1230, QTS-1007140, DC1-ATS-L3-CX-1145 SS, DC1-ATS-L3-CX-1145 FF, DC1-ATS-L3-CX-1220 SS, DC1-ATS-L3-CX-1220 FF | 100% | 2026-07-29 | 2026-07-29 | PRM | Commissioning | DH2100 | L3 | ATS | BAB |
|  | 05 | **DC1-DH2100-ATS-C21-05 Cx L3** |  | 2026-05-20 | 2026-07-28 |  |  |  |  |  |  |  |  |  |  |
| DC1-ATS-L3-CX-1240 |  | DC1-ATS-C21-05 FTE | 1d | 2026-05-20 A | 2026-05-20 A | DC1-SWD-L3-CX-1060 SS, DC1-BUS-L3-CX-1000 SS, DC1-ATS-L2-1160 | 100% | 2026-06-03 | 2026-06-03 | ROS | Commissioning | DH2100 | L3 | ATS |  |
| DC1-ATS-L3-CX-1245 |  | DC1-ATS-C21-05 L3 Startup | 2d | 2026-05-26 A | 2026-05-29 A | DC1-ATS-L3-CX-1240 | 100% | 2026-06-04 | 2026-06-05 | MAV | Commissioning | DH2100 | L3 | ATS |  |
| DC1-ATS-L3-CX-1250 |  | DC1-ATS-C21-05 BMS/EPMS Programming | 1d | 2026-07-28 A | 2026-07-28 A | DC1-ATS-L3-CX-1245, QTS-1007140, DC1-ATS-L3-CX-1160 SS, DC1-ATS-L3-CX-1160 FF, DC1-ATS-L3-CX-1235 SS, DC1-ATS-L3-CX-1235 FF | 100% | 2026-07-29 | 2026-07-29 | PRM | Commissioning | DH2100 | L3 | ATS | BAB |
|  | 06 | **DC1-DH2100-ATS-C21-06 Cx L3** |  | 2026-05-20 | 2026-07-28 |  |  |  |  |  |  |  |  |  |  |
| DC1-ATS-L3-CX-1255 |  | DC1-ATS-C21-06 FTE | 1d | 2026-05-20 A | 2026-05-20 A | DC1-BUS-L3-CX-1030, DC1-BUS-L3-CX-1000 SS, DC1-ATS-L2-1170 | 100% | 2026-06-03 | 2026-06-03 | ROS | Commissioning | DH2100 | L3 | ATS |  |
| DC1-ATS-L3-CX-1260 |  | DC1-ATS-C21-06 L3 Startup | 2d | 2026-05-26 A | 2026-05-29 A | DC1-ATS-L3-CX-1255 | 100% | 2026-06-04 | 2026-06-05 | MAV | Commissioning | DH2100 | L3 | ATS |  |
| DC1-ATS-L3-CX-1265 |  | DC1-ATS-C21-06 BMS/EPMS Programming | 1d | 2026-07-28 A | 2026-07-28 A | DC1-ATS-L3-CX-1260, QTS-1007140, DC1-ATS-L3-CX-1175 SS, DC1-ATS-L3-CX-1175 FF, DC1-ATS-L3-CX-1250 SS, DC1-ATS-L3-CX-1250 FF | 100% | 2026-07-29 | 2026-07-29 | PRM | Commissioning | DH2100 | L3 | ATS | BAB |
|  | 04 | **DC1-DH2100 ATS-D21 Cx L3** |  | 2026-05-21 | 2026-07-28 |  |  |  |  |  |  |  |  |  |  |
|  | 01 | **DC1-DH2100-ATS-D21-01 Cx L3** |  | 2026-05-21 | 2026-07-28 |  |  |  |  |  |  |  |  |  |  |
| DC1-ATS-L3-CX-1270 |  | DC1-ATS-D21-01 FTE | 1d | 2026-05-21 A | 2026-05-21 A | DC1-SWD-L3-CX-1090 SS, DC1-BUS-L3-CX-1000 SS, DC1-ATS-L2-1180 | 100% | 2026-06-03 | 2026-06-03 | ROS | Commissioning | DH2100 | L3 | ATS |  |
| DC1-ATS-L3-CX-1275 |  | DC1-ATS-D21-01 L3 Startup | 2d | 2026-05-26 A | 2026-06-01 A | DC1-ATS-L3-CX-1270 | 100% | 2026-05-26 | 2026-05-27 | MAV | Commissioning | DH2100 | L3 | ATS |  |
| DC1-ATS-L3-CX-1280 |  | DC1-ATS-D21-01 BMS/EPMS Programming | 1d | 2026-07-28 A | 2026-07-28 A | DC1-ATS-L3-CX-1275, DC1-ATS-L3-CX-1190 | 100% | 2026-07-30 | 2026-07-30 | PRM | Commissioning | DH2100 | L3 | ATS | BAB |

Notes:
- DC1-ATS-L3-CX-1200: Steps: EC Startup Report; Vendor Startup
- DC1-ATS-L3-CX-1215: Steps: EC Startup Report; Vendor Startup
- DC1-ATS-L3-CX-1230: Steps: EC Startup Report; Vendor Startup
- DC1-ATS-L3-CX-1245: Steps: EC Startup Report; Vendor Startup
- DC1-ATS-L3-CX-1260: Steps: EC Startup Report; Vendor Startup
- DC1-ATS-L3-CX-1275: Steps: EC Startup Report; Vendor Startup

| ID | WBS | Activity | Duration | Start | Finish | Predecessors | Complete | Planned start | Planned finish | Vendor Responsible Party | Layton Discipline | Location | CX Level | Equipment | Contract |
| --- | --- | --- | --- | --- | --- | --- | --- | --- | --- | --- | --- | --- | --- | --- | --- |
|  | 02 | **DC1-DH2100-ATS-D21-02 Cx L3** |  | 2026-05-21 | 2026-07-28 |  |  |  |  |  |  |  |  |  |  |
| DC1-ATS-L3-CX-1285 |  | DC1-ATS-D21-02 FTE | 1d | 2026-05-21 A | 2026-05-21 A | DC1-BUS-L3-CX-1030, DC1-BUS-L3-CX-1000 SS, DC1-ATS-L2-1190 | 100% | 2026-06-03 | 2026-06-03 | ROS | Commissioning | DH2100 | L3 | ATS |  |
| DC1-ATS-L3-CX-1290 |  | DC1-ATS-D21-02 L3 Startup | 2d | 2026-05-26 A | 2026-06-01 A | DC1-ATS-L3-CX-1285 | 100% | 2026-06-04 | 2026-06-05 | MAV | Commissioning | DH2100 | L3 | ATS |  |
| DC1-ATS-L3-CX-1295 |  | DC1-ATS-D21-02 BMS/EPMS Programming | 1d | 2026-07-28 A | 2026-07-28 A | DC1-ATS-L3-CX-1290, DC1-ATS-L3-CX-1205 | 100% | 2026-07-30 | 2026-07-30 | PRM | Commissioning | DH2100 | L3 | ATS | BAB |
|  | 03 | **DC1-DH2100-ATS-D21-03 Cx L3** |  | 2026-05-21 | 2026-07-28 |  |  |  |  |  |  |  |  |  |  |
| DC1-ATS-L3-CX-1300 |  | DC1-ATS-D21-03 FTE | 1d | 2026-05-21 A | 2026-05-21 A | DC1-SWD-L3-CX-1090 SS, DC1-BUS-L3-CX-1000 SS, DC1-ATS-L2-1200 | 100% | 2026-06-03 | 2026-06-03 | ROS | Commissioning | DH2100 | L3 | ATS |  |
| DC1-ATS-L3-CX-1305 |  | DC1-ATS-D21-03 L3 Startup | 2d | 2026-05-26 A | 2026-06-01 A | DC1-ATS-L3-CX-1300 | 100% | 2026-06-04 | 2026-06-05 | MAV | Commissioning | DH2100 | L3 | ATS |  |
| DC1-ATS-L3-CX-1310 |  | DC1-ATS-D21-03 BMS/EPMS Programming | 1d | 2026-07-28 A | 2026-07-28 A | DC1-ATS-L3-CX-1305, DC1-ATS-L3-CX-1220 | 100% | 2026-07-30 | 2026-07-30 | PRM | Commissioning | DH2100 | L3 | ATS | BAB |
|  | 04 | **DC1-DH2100-ATS-D21-04 Cx L3** |  | 2026-05-21 | 2026-07-28 |  |  |  |  |  |  |  |  |  |  |
| DC1-ATS-L3-CX-1315 |  | DC1-ATS-D21-04 FTE | 1d | 2026-05-21 A | 2026-05-21 A | DC1-BUS-L3-CX-1030, DC1-BUS-L3-CX-1000 SS, DC1-ATS-L2-1210 | 100% | 2026-06-03 | 2026-06-03 | ROS | Commissioning | DH2100 | L3 | ATS |  |
| DC1-ATS-L3-CX-1320 |  | DC1-ATS-D21-04 L3 Startup | 2d | 2026-05-26 A | 2026-06-01 A | DC1-ATS-L3-CX-1315 | 100% | 2026-06-04 | 2026-06-05 | MAV | Commissioning | DH2100 | L3 | ATS |  |
| DC1-ATS-L3-CX-1325 |  | DC1-ATS-D21-04 BMS/EPMS Programming | 1d | 2026-07-28 A | 2026-07-28 A | DC1-ATS-L3-CX-1320, DC1-ATS-L3-CX-1235 | 100% | 2026-07-30 | 2026-07-30 | PRM | Commissioning | DH2100 | L3 | ATS | BAB |
|  | 05 | **DC1-DH2100-ATS-D21-05 Cx L3** |  | 2026-05-21 | 2026-07-28 |  |  |  |  |  |  |  |  |  |  |
| DC1-ATS-L3-CX-1330 |  | DC1-ATS-D21-05 FTE | 1d | 2026-05-21 A | 2026-05-21 A | DC1-SWD-L3-CX-1090 SS, DC1-BUS-L3-CX-1000 SS, DC1-ATS-L2-1220 | 100% | 2026-06-03 | 2026-06-03 | ROS | Commissioning | DH2100 | L3 | ATS |  |
| DC1-ATS-L3-CX-1335 |  | DC1-ATS-D21-05 L3 Startup | 2d | 2026-05-26 A | 2026-06-01 A | DC1-ATS-L3-CX-1330 | 100% | 2026-06-04 | 2026-06-05 | MAV | Commissioning | DH2100 | L3 | ATS |  |
| DC1-ATS-L3-CX-1340 |  | DC1-ATS-D21-05 BMS/EPMS Programming | 1d | 2026-07-28 A | 2026-07-28 A | DC1-ATS-L3-CX-1335, DC1-ATS-L3-CX-1250 | 100% | 2026-07-30 | 2026-07-30 | PRM | Commissioning | DH2100 | L3 | ATS | BAB |
|  | 06 | **DC1-DH2100-ATS-D21-06 Cx L3** |  | 2026-05-21 | 2026-07-28 |  |  |  |  |  |  |  |  |  |  |
| DC1-ATS-L3-CX-1345 |  | DC1-ATS-D21-06 FTE | 1d | 2026-05-21 A | 2026-05-21 A | DC1-BUS-L3-CX-1030, DC1-BUS-L3-CX-1000 SS, DC1-ATS-L2-1230 | 100% | 2026-06-03 | 2026-06-03 | ROS | Commissioning | DH2100 | L3 | ATS |  |
| DC1-ATS-L3-CX-1350 |  | DC1-ATS-D21-06 L3 Startup | 2d | 2026-05-26 A | 2026-06-01 A | DC1-ATS-L3-CX-1345 | 100% | 2026-06-04 | 2026-06-05 | MAV | Commissioning | DH2100 | L3 | ATS |  |
| DC1-ATS-L3-CX-1355 |  | DC1-ATS-D21-06 BMS/EPMS Programming | 1d | 2026-07-28 A | 2026-07-28 A | DC1-ATS-L3-CX-1350, DC1-ATS-L3-CX-1265 | 100% | 2026-07-30 | 2026-07-30 | PRM | Commissioning | DH2100 | L3 | ATS | BAB |
|  | 05 | **DC1-DH2100 ATS-E21 Cx L3** |  | 2026-05-21 | 2026-07-28 |  |  |  |  |  |  |  |  |  |  |
|  | 01 | **DC1-DH2100-ATS-E21-01 Cx L3** |  | 2026-05-21 | 2026-07-28 |  |  |  |  |  |  |  |  |  |  |
| DC1-ATS-L3-CX-1360 |  | DC1-ATS-E21-01 FTE | 1d | 2026-05-21 A | 2026-05-21 A | DC1-SWD-L3-CX-1120 SS, DC1-BUS-L3-CX-1000 SS, DC1-ATS-L2-1240 | 100% |  |  | ROS | Commissioning | DH2100 | L3 | ATS |  |
| DC1-ATS-L3-CX-1365 |  | DC1-ATS-E21-01 L3 Startup | 2d | 2026-05-26 A | 2026-06-01 A | DC1-ATS-L3-CX-1360 | 100% | 2026-06-04 | 2026-06-05 | MAV | Commissioning | DH2100 | L3 | ATS |  |
| DC1-ATS-L3-CX-1370 |  | DC1-ATS-E21-01 BMS/EPMS Programming | 1d | 2026-07-28 A | 2026-07-28 A | DC1-ATS-L3-CX-1365, DC1-ATS-L3-CX-1280 SS, DC1-ATS-L3-CX-1280 FF | 100% | 2026-07-30 | 2026-07-30 | PRM | Commissioning | DH2100 | L3 | ATS | BAB |

Notes:
- DC1-ATS-L3-CX-1290: Steps: EC Startup Report; Vendor Startup
- DC1-ATS-L3-CX-1305: Steps: EC Startup Report; Vendor Startup
- DC1-ATS-L3-CX-1320: Steps: EC Startup Report; Vendor Startup
- DC1-ATS-L3-CX-1335: Steps: EC Startup Report; Vendor Startup
- DC1-ATS-L3-CX-1350: Steps: EC Startup Report; Vendor Startup
- DC1-ATS-L3-CX-1365: Steps: EC Startup Report; Vendor Startup

| ID | WBS | Activity | Duration | Start | Finish | Predecessors | Complete | Planned start | Planned finish | Vendor Responsible Party | Layton Discipline | Location | CX Level | Equipment | Contract |
| --- | --- | --- | --- | --- | --- | --- | --- | --- | --- | --- | --- | --- | --- | --- | --- |
|  | 02 | **DC1-DH2100-ATS-E21-02 Cx L3** |  | 2026-05-21 | 2026-07-28 |  |  |  |  |  |  |  |  |  |  |
| DC1-ATS-L3-CX-1375 |  | DC1-ATS-E21-02 FTE | 1d | 2026-05-21 A | 2026-05-21 A | DC1-BUS-L3-CX-1030, DC1-BUS-L3-CX-1000 SS, DC1-ATS-L2-1250 | 100% | 2026-06-03 | 2026-06-03 | ROS | Commissioning | DH2100 | L3 | ATS |  |
| DC1-ATS-L3-CX-1380 |  | DC1-ATS-E21-02 L3 Startup | 2d | 2026-05-26 A | 2026-06-01 A | DC1-ATS-L3-CX-1375 | 100% | 2026-06-04 | 2026-06-05 | MAV | Commissioning | DH2100 | L3 | ATS |  |
| DC1-ATS-L3-CX-1385 |  | DC1-ATS-E21-02 BMS/EPMS Programming | 1d | 2026-07-28 A | 2026-07-28 A | DC1-ATS-L3-CX-1380, DC1-ATS-L3-CX-1295 SS, DC1-ATS-L3-CX-1295 FF | 100% | 2026-07-30 | 2026-07-30 | PRM | Commissioning | DH2100 | L3 | ATS | BAB |
|  | 03 | **DC1-DH2100-ATS-E21-03 Cx L3** |  | 2026-05-21 | 2026-07-28 |  |  |  |  |  |  |  |  |  |  |
| DC1-ATS-L3-CX-1390 |  | DC1-ATS-E21-03 FTE | 1d | 2026-05-21 A | 2026-05-21 A | DC1-SWD-L3-CX-1120 SS, DC1-BUS-L3-CX-1000 SS, DC1-ATS-L2-1260 | 100% | 2026-06-03 | 2026-06-03 | ROS | Commissioning | DH2100 | L3 | ATS |  |
| DC1-ATS-L3-CX-1395 |  | DC1-ATS-E21-03 L3 Startup | 2d | 2026-05-26 A | 2026-06-01 A | DC1-ATS-L3-CX-1390 | 100% | 2026-06-04 | 2026-06-05 | MAV | Commissioning | DH2100 | L3 | ATS |  |
| DC1-ATS-L3-CX-1400 |  | DC1-ATS-E21-03 BMS/EPMS Programming | 1d | 2026-07-28 A | 2026-07-28 A | DC1-ATS-L3-CX-1395, DC1-ATS-L3-CX-1310 SS, DC1-ATS-L3-CX-1310 FF | 100% | 2026-07-30 | 2026-07-30 | PRM | Commissioning | DH2100 | L3 | ATS | BAB |
|  | 04 | **DC1-DH2100-ATS-E21-04 Cx L3** |  | 2026-05-21 | 2026-07-28 |  |  |  |  |  |  |  |  |  |  |
| DC1-ATS-L3-CX-1405 |  | DC1-ATS-E21-04 FTE | 1d | 2026-05-21 A | 2026-05-21 A | DC1-BUS-L3-CX-1030, DC1-BUS-L3-CX-1000 SS, DC1-ATS-L2-1270 | 100% | 2026-06-03 | 2026-06-03 | ROS | Commissioning | DH2100 | L3 | ATS |  |
| DC1-ATS-L3-CX-1410 |  | DC1-ATS-E21-04 L3 Startup | 2d | 2026-05-26 A | 2026-06-01 A | DC1-ATS-L3-CX-1405 | 100% | 2026-06-04 | 2026-06-05 | MAV | Commissioning | DH2100 | L3 | ATS |  |
| DC1-ATS-L3-CX-1415 |  | DC1-ATS-E21-04 BMS/EPMS Programming | 1d | 2026-07-28 A | 2026-07-28 A | DC1-ATS-L3-CX-1410, DC1-ATS-L3-CX-1325 SS, DC1-ATS-L3-CX-1325 FF | 100% | 2026-07-30 | 2026-07-30 | PRM | Commissioning | DH2100 | L3 | ATS | BAB |
|  | 05 | **DC1-DH2100-ATS-E21-05 Cx L3** |  | 2026-05-21 | 2026-07-28 |  |  |  |  |  |  |  |  |  |  |
| DC1-ATS-L3-CX-1420 |  | DC1-ATS-E21-05 FTE | 1d | 2026-05-21 A | 2026-05-21 A | DC1-SWD-L3-CX-1120 SS, DC1-BUS-L3-CX-1000 SS, DC1-ATS-L2-1280 | 100% | 2026-06-03 | 2026-06-03 | ROS | Commissioning | DH2100 | L3 | ATS |  |
| DC1-ATS-L3-CX-1425 |  | DC1-ATS-E21-05 L3 Startup | 2d | 2026-05-26 A | 2026-06-01 A | DC1-ATS-L3-CX-1420 | 100% | 2026-06-04 | 2026-06-05 | MAV | Commissioning | DH2100 | L3 | ATS |  |
| DC1-ATS-L3-CX-1430 |  | DC1-ATS-E21-05 BMS/EPMS Programming | 1d | 2026-07-28 A | 2026-07-28 A | DC1-ATS-L3-CX-1425, DC1-ATS-L3-CX-1340 SS, DC1-ATS-L3-CX-1340 FF | 100% | 2026-07-30 | 2026-07-30 | PRM | Commissioning | DH2100 | L3 | ATS | BAB |
|  | 06 | **DC1-DH2100-ATS-E21-06 Cx L3** |  | 2026-05-21 | 2026-07-28 |  |  |  |  |  |  |  |  |  |  |
| DC1-ATS-L3-CX-1435 |  | DC1-ATS-E21-06 FTE | 1d | 2026-05-21 A | 2026-05-21 A | DC1-BUS-L3-CX-1030, DC1-BUS-L3-CX-1000 SS, DC1-ATS-L2-1290 | 100% | 2026-06-03 | 2026-06-03 | ROS | Commissioning | DH2100 | L3 | ATS |  |
| DC1-ATS-L3-CX-1440 |  | DC1-ATS-E21-06 L3 Startup | 2d | 2026-05-26 A | 2026-06-01 A | DC1-ATS-L3-CX-1435 | 100% | 2026-06-04 | 2026-06-05 | MAV | Commissioning | DH2100 | L3 | ATS |  |
| DC1-ATS-L3-CX-1445 |  | DC1-ATS-E21-06 BMS/EPMS Programming | 1d | 2026-07-28 A | 2026-07-28 A | DC1-ATS-L3-CX-1440, DC1-ATS-L3-CX-1355 SS, DC1-ATS-L3-CX-1355 FF | 100% | 2026-07-30 | 2026-07-30 | PRM | Commissioning | DH2100 | L3 | ATS | BAB |
|  | 06 | **DC1-DH2100 ATS-F21 Cx L3** |  | 2026-05-21 | 2026-07-28 |  |  |  |  |  |  |  |  |  |  |
|  | 01 | **DC1-DH2100-ATS-F21-01 Cx L3** |  | 2026-05-21 | 2026-07-28 |  |  |  |  |  |  |  |  |  |  |
| DC1-ATS-L3-CX-1450 |  | DC1-ATS-F21-01 FTE | 1d | 2026-05-21 A | 2026-05-21 A | DC1-SWD-L3-CX-1150 SS, DC1-BUS-L3-CX-1000 SS, DC1-ATS-L2-1300 | 100% | 2026-06-03 | 2026-06-03 | ROS | Commissioning | DH2100 | L3 | ATS |  |
| DC1-ATS-L3-CX-1455 |  | DC1-ATS-F21-01 L3 Startup | 2d | 2026-05-26 A | 2026-06-01 A | DC1-ATS-L3-CX-1450 | 100% | 2026-06-04 | 2026-06-05 | MAV | Commissioning | DH2100 | L3 | ATS |  |
| DC1-ATS-L3-CX-1460 |  | DC1-ATS-F21-01 BMS/EPMS Programming | 1d | 2026-07-28 A | 2026-07-28 A | DC1-ATS-L3-CX-1455, DC1-ATS-L3-CX-1370 SS, DC1-ATS-L3-CX-1370 FF | 100% | 2026-07-30 | 2026-07-30 | PRM | Commissioning | DH2100 | L3 | ATS | BAB |

Notes:
- DC1-ATS-L3-CX-1380: Steps: EC Startup Report; Vendor Startup
- DC1-ATS-L3-CX-1395: Steps: EC Startup Report; Vendor Startup
- DC1-ATS-L3-CX-1410: Steps: EC Startup Report; Vendor Startup
- DC1-ATS-L3-CX-1425: Steps: EC Startup Report; Vendor Startup
- DC1-ATS-L3-CX-1440: Steps: EC Startup Report; Vendor Startup
- DC1-ATS-L3-CX-1455: Steps: EC Startup Report; Vendor Startup

| ID | WBS | Activity | Duration | Start | Finish | Predecessors | Complete | Planned start | Planned finish | Vendor Responsible Party | Layton Discipline | Location | CX Level | Equipment | Contract | Layton Super |
| --- | --- | --- | --- | --- | --- | --- | --- | --- | --- | --- | --- | --- | --- | --- | --- | --- |
|  | 02 | **DC1-DH2100-ATS-F21-02 Cx L3** |  | 2026-05-21 | 2026-07-28 |  |  |  |  |  |  |  |  |  |  |  |
| DC1-ATS-L3-CX-1465 |  | DC1-ATS-F21-02 FTE | 1d | 2026-05-21 A | 2026-05-21 A | DC1-BUS-L3-CX-1030, DC1-BUS-L3-CX-1000 SS, DC1-ATS-L2-1310 | 100% | 2026-06-03 | 2026-06-03 | ROS | Commissioning | DH2100 | L3 | ATS |  |  |
| DC1-ATS-L3-CX-1470 |  | DC1-ATS-F21-02 L3 Startup | 2d | 2026-05-26 A | 2026-06-01 A | DC1-ATS-L3-CX-1465 | 100% | 2026-06-04 | 2026-06-05 | MAV | Commissioning | DH2100 | L3 | ATS |  |  |
| DC1-ATS-L3-CX-1475 |  | DC1-ATS-F21-02 BMS/EPMS Programming | 1d | 2026-07-28 A | 2026-07-28 A | DC1-ATS-L3-CX-1470, DC1-ATS-L3-CX-1385 SS, DC1-ATS-L3-CX-1385 FF | 100% | 2026-07-30 | 2026-07-30 | PRM | Commissioning | DH2100 | L3 | ATS | BAB |  |
|  | 03 | **DC1-DH2100-ATS-F21-03 Cx L3** |  | 2026-05-21 | 2026-07-28 |  |  |  |  |  |  |  |  |  |  |  |
| DC1-ATS-L3-CX-1480 |  | DC1-ATS-F21-03 FTE | 1d | 2026-05-21 A | 2026-05-21 A | DC1-SWD-L3-CX-1150 SS, DC1-BUS-L3-CX-1000 SS, DC1-ATS-L2-1320 | 100% | 2026-06-03 | 2026-06-03 | ROS | Commissioning | DH2100 | L3 | ATS |  |  |
| DC1-ATS-L3-CX-1485 |  | DC1-ATS-F21-03 L3 Startup | 2d | 2026-05-26 A | 2026-06-01 A | DC1-ATS-L3-CX-1480 | 100% | 2026-06-04 | 2026-06-05 | MAV | Commissioning | DH2100 | L3 | ATS |  |  |
| DC1-ATS-L3-CX-1490 |  | DC1-ATS-F21-03 BMS/EPMS Programming | 1d | 2026-07-28 A | 2026-07-28 A | DC1-ATS-L3-CX-1485, DC1-ATS-L3-CX-1400 SS, DC1-ATS-L3-CX-1400 FF | 100% | 2026-07-30 | 2026-07-30 | PRM | Commissioning | DH2100 | L3 | ATS | BAB |  |
|  | 04 | **DC1-DH2100-ATS-F21-04 Cx L3** |  | 2026-05-21 | 2026-07-28 |  |  |  |  |  |  |  |  |  |  |  |
| DC1-ATS-L3-CX-1495 |  | DC1-ATS-F21-04 FTE | 1d | 2026-05-21 A | 2026-05-21 A | DC1-BUS-L3-CX-1030, DC1-BUS-L3-CX-1000 SS, DC1-ATS-L2-1330 | 100% | 2026-06-03 | 2026-06-03 | ROS | Commissioning | DH2100 | L3 | ATS |  |  |
| DC1-ATS-L3-CX-1500 |  | DC1-ATS-F21-04 L3 Startup | 2d | 2026-05-26 A | 2026-06-01 A | DC1-ATS-L3-CX-1495 | 100% | 2026-06-04 | 2026-06-05 | MAV | Commissioning | DH2100 | L3 | ATS |  |  |
| DC1-ATS-L3-CX-1505 |  | DC1-ATS-F21-04 BMS/EPMS Programming | 1d | 2026-07-28 A | 2026-07-28 A | DC1-ATS-L3-CX-1500, DC1-ATS-L3-CX-1415 SS, DC1-ATS-L3-CX-1415 FF | 100% | 2026-07-30 | 2026-07-30 | PRM | Commissioning | DH2100 | L3 | ATS | BAB |  |
|  | 05 | **DC1-DH2100-ATS-F21-05 Cx L3** |  | 2026-05-21 | 2026-07-28 |  |  |  |  |  |  |  |  |  |  |  |
| DC1-ATS-L3-CX-1510 |  | DC1-ATS-F21-05 FTE | 1d | 2026-05-21 A | 2026-05-21 A | DC1-SWD-L3-CX-1150 SS, DC1-BUS-L3-CX-1000 SS, DC1-ATS-L2-1340 | 100% | 2026-06-03 | 2026-06-03 | ROS | Commissioning | DH2100 | L3 | ATS |  |  |
| DC1-ATS-L3-CX-1515 |  | DC1-ATS-F21-05 L3 Startup | 2d | 2026-05-26 A | 2026-06-01 A | DC1-ATS-L3-CX-1510 | 100% | 2026-06-04 | 2026-06-05 | MAV | Commissioning | DH2100 | L3 | ATS |  |  |
| DC1-ATS-L3-CX-1520 |  | DC1-ATS-F21-05 BMS/EPMS Programming | 1d | 2026-07-28 A | 2026-07-28 A | DC1-ATS-L3-CX-1515, DC1-ATS-L3-CX-1430 SS, DC1-ATS-L3-CX-1430 FF | 100% | 2026-07-30 | 2026-07-30 | PRM | Commissioning | DH2100 | L3 | ATS | BAB |  |
|  | 06 | **DC1-DH2100-ATS-F21-06 Cx L3** |  | 2026-05-21 | 2026-07-28 |  |  |  |  |  |  |  |  |  |  |  |
| DC1-ATS-L3-CX-1525 |  | DC1-ATS-F21-06 FTE | 1d | 2026-05-21 A | 2026-05-21 A | DC1-BUS-L3-CX-1030, DC1-BUS-L3-CX-1000 SS, DC1-ATS-L2-1350 | 100% | 2026-06-03 | 2026-06-03 | ROS | Commissioning | DH2100 | L3 | ATS |  |  |
| DC1-ATS-L3-CX-1530 |  | DC1-ATS-F21-06 L3 Startup | 2d | 2026-05-26 A | 2026-06-01 A | DC1-ATS-L3-CX-1525 | 100% | 2026-06-04 | 2026-06-05 | MAV | Commissioning | DH2100 | L3 | ATS |  |  |
| DC1-ATS-L3-CX-1535 |  | DC1-ATS-F21-06 BMS/EPMS Programming | 1d | 2026-07-28 A | 2026-07-28 A | DC1-ATS-L3-CX-1530, DC1-ATS-L3-CX-1445 SS, DC1-ATS-L3-CX-1445 FF | 100% | 2026-07-30 | 2026-07-30 | PRM | Commissioning | DH2100 | L3 | ATS | BAB |  |
|  | 06 | **DC1-DH2100 CODs Cx L3** |  | 2026-05-22 | 2026-07-15 |  |  |  |  |  |  |  |  |  |  |  |
|  | 01 | **DC1-DH2100-COD-A21 Cx L3** |  | 2026-05-22 | 2026-07-15 |  |  |  |  |  |  |  |  |  |  |  |
|  | 01 | **DC1-DH2100-COD-A21-01 Cx L3** |  | 2026-05-22 | 2026-07-15 |  |  |  |  |  |  |  |  |  |  |  |
| DC1-COD-L3-CX-1000 |  | DC1-COD-A21-01 FTE | 1d | 2026-05-22 A | 2026-05-22 A | QTS-1080.1, DC1-ATS-L3-CX-1000, DC1-COD-L2-1000 | 100% |  |  | ROS | Commissioning | DH2100 | L3 | COD |  |  |
| DC1-COD-L3-CX-1005 |  | DC1-COD-A21-01 L3 Startup | 2d | 2026-05-26 A | 2026-06-01 A | DC1-COD-L3-CX-1000 | 100% | 2026-06-04 | 2026-06-05 | SIE | Commissioning | DH2100 | L3 | COD |  | Travis Todaro |
| DC1-COD-L3-CX-1010 |  | DC1-COD-A21-01 BMS/EPMS Programming | 1d | 2026-07-15 A | 2026-07-15 A | DC1-COD-L3-CX-1005, QTS-1007140 | 100% |  |  | PRM | Commissioning | DH2100 | L3 | COD |  |  |

Notes:
- DC1-ATS-L3-CX-1470: Steps: EC Startup Report; Vendor Startup
- DC1-ATS-L3-CX-1485: Steps: EC Startup Report; Vendor Startup
- DC1-ATS-L3-CX-1500: Steps: EC Startup Report; Vendor Startup
- DC1-ATS-L3-CX-1515: Steps: EC Startup Report; Vendor Startup
- DC1-ATS-L3-CX-1530: Steps: EC Startup Report; Vendor Startup
- DC1-COD-L3-CX-1005: Steps: EC Startup Report; Vendor Startup

| ID | WBS | Activity | Duration | Start | Finish | Predecessors | Complete | Planned start | Planned finish | Vendor Responsible Party | Layton Discipline | Location | CX Level | Equipment | Layton Super |
| --- | --- | --- | --- | --- | --- | --- | --- | --- | --- | --- | --- | --- | --- | --- | --- |
|  | 02 | **DC1-DH2100-COD-A21-02 Cx L3** |  | 2026-05-22 | 2026-07-15 |  |  |  |  |  |  |  |  |  |  |
| DC1-COD-L3-CX-1015 |  | DC1-COD-A21-02 FTE | 1d | 2026-05-22 A | 2026-05-22 A | DC1-ATS-L3-CX-1015, DC1-COD-L2-1010 | 100% | 2026-06-03 | 2026-06-03 | ROS | Commissioning | DH2100 | L3 | COD |  |
| DC1-COD-L3-CX-1020 |  | DC1-COD-A21-02 L3 Startup | 2d | 2026-05-26 A | 2026-06-01 A | DC1-COD-L3-CX-1015 | 100% | 2026-06-04 | 2026-06-05 | SIE | Commissioning | DH2100 | L3 | COD | Travis Todaro |
| DC1-COD-L3-CX-1025 |  | DC1-COD-A21-02 BMS/EPMS Programming | 1d | 2026-07-15 A | 2026-07-15 A | DC1-COD-L3-CX-1020, QTS-1007140 | 100% |  |  | PRM | Commissioning | DH2100 | L3 | COD |  |
|  | 03 | **DC1-DH2100-COD-A21-03 Cx L3** |  | 2026-05-22 | 2026-07-15 |  |  |  |  |  |  |  |  |  |  |
| DC1-COD-L3-CX-1030 |  | DC1-COD-A21-03 FTE | 1d | 2026-05-22 A | 2026-05-22 A | DC1-ATS-L3-CX-1030, DC1-COD-L2-1020 | 100% | 2026-06-03 | 2026-06-03 | ROS | Commissioning | DH2100 | L3 | COD |  |
| DC1-COD-L3-CX-1035 |  | DC1-COD-A21-03 L3 Startup | 2d | 2026-05-26 A | 2026-06-01 A | DC1-COD-L3-CX-1030 | 100% | 2026-06-04 | 2026-06-05 | SIE | Commissioning | DH2100 | L3 | COD | Travis Todaro |
| DC1-COD-L3-CX-1040 |  | DC1-COD-A21-03 BMS/EPMS Programming | 1d | 2026-07-15 A | 2026-07-15 A | DC1-COD-L3-CX-1035, QTS-1007140 | 100% |  |  | PRM | Commissioning | DH2100 | L3 | COD |  |
|  | 04 | **DC1-DH2100-COD-A21-04 Cx L3** |  | 2026-05-22 | 2026-07-15 |  |  |  |  |  |  |  |  |  |  |
| DC1-COD-L3-CX-1045 |  | DC1-COD-A21-04 FTE | 1d | 2026-05-22 A | 2026-05-22 A | DC1-ATS-L3-CX-1045, DC1-COD-L2-1030 | 100% | 2026-06-03 | 2026-06-03 | ROS | Commissioning | DH2100 | L3 | COD |  |
| DC1-COD-L3-CX-1050 |  | DC1-COD-A21-04 L3 Startup | 2d | 2026-05-26 A | 2026-06-01 A | DC1-COD-L3-CX-1045 | 100% | 2026-06-04 | 2026-06-05 | SIE | Commissioning | DH2100 | L3 | COD | Travis Todaro |
| DC1-COD-L3-CX-1055 |  | DC1-COD-A21-04 BMS/EPMS Programming | 1d | 2026-07-15 A | 2026-07-15 A | DC1-COD-L3-CX-1050, QTS-1007140 | 100% |  |  | PRM | Commissioning | DH2100 | L3 | COD |  |
|  | 05 | **DC1-DH2100-COD-A21-05 Cx L3** |  | 2026-05-22 | 2026-07-15 |  |  |  |  |  |  |  |  |  |  |
| DC1-COD-L3-CX-1060 |  | DC1-COD-A21-05 FTE | 1d | 2026-05-22 A | 2026-05-22 A | DC1-ATS-L3-CX-1060, DC1-COD-L2-1040 | 100% | 2026-06-03 | 2026-06-03 | ROS | Commissioning | DH2100 | L3 | COD |  |
| DC1-COD-L3-CX-1065 |  | DC1-COD-A21-05 L3 Startup | 2d | 2026-05-26 A | 2026-06-01 A | DC1-COD-L3-CX-1060 | 100% | 2026-06-04 | 2026-06-05 | SIE | Commissioning | DH2100 | L3 | COD | Travis Todaro |
| DC1-COD-L3-CX-1070 |  | DC1-COD-A21-05 BMS/EPMS Programming | 1d | 2026-07-15 A | 2026-07-15 A | DC1-COD-L3-CX-1065, QTS-1007140 | 100% |  |  | PRM | Commissioning | DH2100 | L3 | COD |  |
|  | 06 | **DC1-DH2100-COD-A21-06 Cx L3** |  | 2026-05-22 | 2026-07-15 |  |  |  |  |  |  |  |  |  |  |
| DC1-COD-L3-CX-1075 |  | DC1-COD-A21-06 FTE | 1d | 2026-05-22 A | 2026-05-22 A | DC1-ATS-L3-CX-1075, DC1-COD-L2-1050 | 100% | 2026-06-03 | 2026-06-03 | ROS | Commissioning | DH2100 | L3 | COD |  |
| DC1-COD-L3-CX-1080 |  | DC1-COD-A21-06 L3 Startup | 2d | 2026-05-26 A | 2026-06-01 A | DC1-COD-L3-CX-1075 | 100% | 2026-06-04 | 2026-06-05 | SIE | Commissioning | DH2100 | L3 | COD | Travis Todaro |
| DC1-COD-L3-CX-1085 |  | DC1-COD-A21-06 BMS/EPMS Programming | 1d | 2026-07-15 A | 2026-07-15 A | DC1-COD-L3-CX-1080, QTS-1007140 | 100% |  |  | PRM | Commissioning | DH2100 | L3 | COD |  |
|  | 02 | **DC1-DH2100-COD-B21 Cx L3** |  | 2026-05-22 | 2026-07-15 |  |  |  |  |  |  |  |  |  |  |
|  | 01 | **DC1-DH2100-COD-B21-01 Cx L3** |  | 2026-05-22 | 2026-07-15 |  |  |  |  |  |  |  |  |  |  |
| DC1-COD-L3-CX-1090 |  | DC1-COD-B21-01 FTE | 1d | 2026-05-22 A | 2026-05-22 A | QTS-1080.1, DC1-ATS-L3-CX-1090, DC1-COD-L2-1060 | 100% | 2026-06-03 | 2026-06-03 | ROS | Commissioning | DH2100 | L3 | COD |  |
| DC1-COD-L3-CX-1095 |  | DC1-COD-B21-01 L3 Startup | 2d | 2026-05-26 A | 2026-06-01 A | DC1-COD-L3-CX-1090 | 100% | 2026-06-04 | 2026-06-05 | SIE | Commissioning | DH2100 | L3 | COD | Travis Todaro |
| DC1-COD-L3-CX-1100 |  | DC1-COD-B21-01 BMS/EPMS Programming | 1d | 2026-07-15 A | 2026-07-15 A | DC1-COD-L3-CX-1095, QTS-1007140 | 100% |  |  | PRM | Commissioning | DH2100 | L3 | COD |  |

Notes:
- DC1-COD-L3-CX-1020: Steps: EC Startup Report; Vendor Startup
- DC1-COD-L3-CX-1035: Steps: EC Startup Report; Vendor Startup
- DC1-COD-L3-CX-1050: Steps: EC Startup Report; Vendor Startup
- DC1-COD-L3-CX-1065: Steps: EC Startup Report; Vendor Startup
- DC1-COD-L3-CX-1080: Steps: EC Startup Report; Vendor Startup
- DC1-COD-L3-CX-1095: Steps: EC Startup Report; Vendor Startup

| ID | WBS | Activity | Duration | Start | Finish | Predecessors | Complete | Planned start | Planned finish | Vendor Responsible Party | Layton Discipline | Location | CX Level | Equipment | Layton Super |
| --- | --- | --- | --- | --- | --- | --- | --- | --- | --- | --- | --- | --- | --- | --- | --- |
|  | 02 | **DC1-DH2100-COD-B21-02 Cx L3** |  | 2026-05-22 | 2026-07-15 |  |  |  |  |  |  |  |  |  |  |
| DC1-COD-L3-CX-1105 |  | DC1-COD-B21-02 FTE | 1d | 2026-05-22 A | 2026-05-22 A | DC1-ATS-L3-CX-1105, DC1-COD-L2-1070 | 100% | 2026-06-03 | 2026-06-03 | ROS | Commissioning | DH2100 | L3 | COD |  |
| DC1-COD-L3-CX-1110 |  | DC1-COD-B21-02 L3 Startup | 2d | 2026-05-26 A | 2026-06-01 A | DC1-COD-L3-CX-1105 | 100% | 2026-06-04 | 2026-06-05 | SIE | Commissioning | DH2100 | L3 | COD | Travis Todaro |
| DC1-COD-L3-CX-1115 |  | DC1-COD-B21-02 BMS/EPMS Programming | 1d | 2026-07-15 A | 2026-07-15 A | DC1-COD-L3-CX-1110, QTS-1007140 | 100% |  |  | PRM | Commissioning | DH2100 | L3 | COD |  |
|  | 03 | **DC1-DH2100-COD-B21-03 Cx L3** |  | 2026-05-22 | 2026-07-15 |  |  |  |  |  |  |  |  |  |  |
| DC1-COD-L3-CX-1120 |  | DC1-COD-B21-03 FTE | 1d | 2026-05-22 A | 2026-05-22 A | DC1-ATS-L3-CX-1120, DC1-COD-L2-1080 | 100% | 2026-06-03 | 2026-06-03 | ROS | Commissioning | DH2100 | L3 | COD |  |
| DC1-COD-L3-CX-1125 |  | DC1-COD-B21-03 L3 Startup | 2d | 2026-05-26 A | 2026-06-01 A | DC1-COD-L3-CX-1120 | 100% | 2026-06-04 | 2026-06-05 | SIE | Commissioning | DH2100 | L3 | COD | Travis Todaro |
| DC1-COD-L3-CX-1130 |  | DC1-COD-B21-03 BMS/EPMS Programming | 1d | 2026-07-15 A | 2026-07-15 A | DC1-COD-L3-CX-1125, QTS-1007140 | 100% |  |  | PRM | Commissioning | DH2100 | L3 | COD |  |
|  | 04 | **DC1-DH2100-COD-B21-04 Cx L3** |  | 2026-05-22 | 2026-07-15 |  |  |  |  |  |  |  |  |  |  |
| DC1-COD-L3-CX-1135 |  | DC1-COD-B21-04 FTE | 1d | 2026-05-22 A | 2026-05-22 A | DC1-ATS-L3-CX-1135, DC1-COD-L2-1090 | 100% | 2026-06-03 | 2026-06-03 | ROS | Commissioning | DH2100 | L3 | COD |  |
| DC1-COD-L3-CX-1140 |  | DC1-COD-B21-04 L3 Startup | 2d | 2026-05-26 A | 2026-06-01 A | DC1-COD-L3-CX-1135 | 100% | 2026-06-04 | 2026-06-05 | SIE | Commissioning | DH2100 | L3 | COD | Travis Todaro |
| DC1-COD-L3-CX-1145 |  | DC1-COD-B21-04 BMS/EPMS Programming | 1d | 2026-07-15 A | 2026-07-15 A | DC1-COD-L3-CX-1140, QTS-1007140 | 100% |  |  | PRM | Commissioning | DH2100 | L3 | COD |  |
|  | 05 | **DC1-DH2100-COD-B21-05 Cx L3** |  | 2026-05-22 | 2026-07-15 |  |  |  |  |  |  |  |  |  |  |
| DC1-COD-L3-CX-1150 |  | DC1-COD-B21-05 FTE | 1d | 2026-05-22 A | 2026-05-22 A | DC1-ATS-L3-CX-1150, DC1-COD-L2-1100 | 100% | 2026-06-03 | 2026-06-03 | ROS | Commissioning | DH2100 | L3 | COD |  |
| DC1-COD-L3-CX-1155 |  | DC1-COD-B21-05 L3 Startup | 2d | 2026-05-26 A | 2026-06-01 A | DC1-COD-L3-CX-1150 | 100% | 2026-06-04 | 2026-06-05 | SIE | Commissioning | DH2100 | L3 | COD | Travis Todaro |
| DC1-COD-L3-CX-1160 |  | DC1-COD-B21-05 BMS/EPMS Programming | 1d | 2026-07-15 A | 2026-07-15 A | DC1-COD-L3-CX-1155, QTS-1007140 | 100% |  |  | PRM | Commissioning | DH2100 | L3 | COD |  |
|  | 06 | **DC1-DH2100-COD-B21-06 Cx L3** |  | 2026-05-22 | 2026-07-15 |  |  |  |  |  |  |  |  |  |  |
| DC1-COD-L3-CX-1165 |  | DC1-COD-B21-06 FTE | 1d | 2026-05-22 A | 2026-05-22 A | DC1-ATS-L3-CX-1165, DC1-COD-L2-1110 | 100% | 2026-06-03 | 2026-06-03 | ROS | Commissioning | DH2100 | L3 | COD |  |
| DC1-COD-L3-CX-1170 |  | DC1-COD-B21-06 L3 Startup | 2d | 2026-05-26 A | 2026-06-01 A | DC1-COD-L3-CX-1165 | 100% | 2026-06-04 | 2026-06-05 | SIE | Commissioning | DH2100 | L3 | COD | Travis Todaro |
| DC1-COD-L3-CX-1175 |  | DC1-COD-B21-06 BMS/EPMS Programming | 1d | 2026-07-15 A | 2026-07-15 A | DC1-COD-L3-CX-1170, QTS-1007140 | 100% |  |  | PRM | Commissioning | DH2100 | L3 | COD |  |
|  | 03 | **DC1-DH2100-COD-C21 Cx L3** |  | 2026-05-22 | 2026-07-15 |  |  |  |  |  |  |  |  |  |  |
|  | 01 | **DC1-DH2100-COD-C21-01 Cx L3** |  | 2026-05-22 | 2026-07-15 |  |  |  |  |  |  |  |  |  |  |
| DC1-COD-L3-CX-1180 |  | DC1-COD-C21-01 FTE | 1d | 2026-05-22 A | 2026-05-22 A | QTS-1080.1, DC1-ATS-L3-CX-1180, DC1-COD-L2-1120 | 100% | 2026-06-03 | 2026-06-03 | ROS | Commissioning | DH2100 | L3 | COD |  |
| DC1-COD-L3-CX-1185 |  | DC1-COD-C21-01 L3 Startup | 2d | 2026-05-26 A | 2026-06-01 A | DC1-COD-L3-CX-1180 | 100% | 2026-06-04 | 2026-06-05 | SIE | Commissioning | DH2100 | L3 | COD | Travis Todaro |
| DC1-COD-L3-CX-1190 |  | DC1-COD-C21-01 BMS/EPMS Programming | 1d | 2026-07-15 A | 2026-07-15 A | DC1-COD-L3-CX-1185, QTS-1007140 | 100% |  |  | PRM | Commissioning | DH2100 | L3 | COD |  |

Notes:
- DC1-COD-L3-CX-1110: Steps: EC Startup Report; Vendor Startup
- DC1-COD-L3-CX-1125: Steps: EC Startup Report; Vendor Startup
- DC1-COD-L3-CX-1140: Steps: EC Startup Report; Vendor Startup
- DC1-COD-L3-CX-1155: Steps: EC Startup Report; Vendor Startup
- DC1-COD-L3-CX-1170: Steps: EC Startup Report; Vendor Startup
- DC1-COD-L3-CX-1185: Steps: EC Startup Report; Vendor Startup

| ID | WBS | Activity | Duration | Start | Finish | Predecessors | Complete | Planned start | Planned finish | Vendor Responsible Party | Layton Discipline | Location | CX Level | Equipment | Layton Super |
| --- | --- | --- | --- | --- | --- | --- | --- | --- | --- | --- | --- | --- | --- | --- | --- |
|  | 02 | **DC1-DH2100-COD-C21-02 Cx L3** |  | 2026-05-22 | 2026-07-15 |  |  |  |  |  |  |  |  |  |  |
| DC1-COD-L3-CX-1195 |  | DC1-COD-C21-02 FTE | 1d | 2026-05-22 A | 2026-05-22 A | DC1-ATS-L3-CX-1195, DC1-COD-L2-1130 | 100% | 2026-06-03 | 2026-06-03 | ROS | Commissioning | DH2100 | L3 | COD |  |
| DC1-COD-L3-CX-1200 |  | DC1-COD-C21-02 L3 Startup | 2d | 2026-05-26 A | 2026-06-01 A | DC1-COD-L3-CX-1195 | 100% | 2026-06-04 | 2026-06-05 | SIE | Commissioning | DH2100 | L3 | COD | Travis Todaro |
| DC1-COD-L3-CX-1205 |  | DC1-COD-C21-02 BMS/EPMS Programming | 1d | 2026-07-15 A | 2026-07-15 A | DC1-COD-L3-CX-1200, QTS-1007140 | 100% |  |  | PRM | Commissioning | DH2100 | L3 | COD |  |
|  | 03 | **DC1-DH2100-COD-C21-03 Cx L3** |  | 2026-05-22 | 2026-07-15 |  |  |  |  |  |  |  |  |  |  |
| DC1-COD-L3-CX-1210 |  | DC1-COD-C21-03 FTE | 1d | 2026-05-22 A | 2026-05-22 A | DC1-ATS-L3-CX-1210, DC1-COD-L2-1140 | 100% | 2026-06-03 | 2026-06-03 | ROS | Commissioning | DH2100 | L3 | COD |  |
| DC1-COD-L3-CX-1215 |  | DC1-COD-C21-03 L3 Startup | 2d | 2026-05-26 A | 2026-06-01 A | DC1-COD-L3-CX-1210 | 100% | 2026-06-04 | 2026-06-05 | SIE | Commissioning | DH2100 | L3 | COD | Travis Todaro |
| DC1-COD-L3-CX-1220 |  | DC1-COD-C21-03 BMS/EPMS Programming | 1d | 2026-07-15 A | 2026-07-15 A | DC1-COD-L3-CX-1215, QTS-1007140 | 100% |  |  | PRM | Commissioning | DH2100 | L3 | COD |  |
|  | 04 | **DC1-DH2100-COD-C21-04 Cx L3** |  | 2026-05-22 | 2026-07-15 |  |  |  |  |  |  |  |  |  |  |
| DC1-COD-L3-CX-1225 |  | DC1-COD-C21-04 FTE | 1d | 2026-05-22 A | 2026-05-22 A | DC1-ATS-L3-CX-1225, DC1-COD-L2-1150 | 100% | 2026-06-03 | 2026-06-03 | ROS | Commissioning | DH2100 | L3 | COD |  |
| DC1-COD-L3-CX-1230 |  | DC1-COD-C21-04 L3 Startup | 2d | 2026-05-26 A | 2026-06-01 A | DC1-COD-L3-CX-1225 | 100% | 2026-06-04 | 2026-06-05 | SIE | Commissioning | DH2100 | L3 | COD | Travis Todaro |
| DC1-COD-L3-CX-1235 |  | DC1-COD-C21-04 BMS/EPMS Programming | 1d | 2026-07-15 A | 2026-07-15 A | DC1-COD-L3-CX-1230, QTS-1007140 | 100% |  |  | PRM | Commissioning | DH2100 | L3 | COD |  |
|  | 05 | **DC1-DH2100-COD-C21-05 Cx L3** |  | 2026-05-22 | 2026-07-15 |  |  |  |  |  |  |  |  |  |  |
| DC1-COD-L3-CX-1240 |  | DC1-COD-C21-05 FTE | 1d | 2026-05-22 A | 2026-05-22 A | DC1-ATS-L3-CX-1240, DC1-COD-L2-1160 | 100% | 2026-06-03 | 2026-06-03 | ROS | Commissioning | DH2100 | L3 | COD |  |
| DC1-COD-L3-CX-1245 |  | DC1-COD-C21-05 L3 Startup | 2d | 2026-05-26 A | 2026-06-01 A | DC1-COD-L3-CX-1240 | 100% | 2026-06-04 | 2026-06-05 | SIE | Commissioning | DH2100 | L3 | COD | Travis Todaro |
| DC1-COD-L3-CX-1250 |  | DC1-COD-C21-05 BMS/EPMS Programming | 1d | 2026-07-15 A | 2026-07-15 A | DC1-COD-L3-CX-1245, QTS-1007140 | 100% |  |  | PRM | Commissioning | DH2100 | L3 | COD |  |
|  | 06 | **DC1-DH2100-COD-C21-06 Cx L3** |  | 2026-05-22 | 2026-07-15 |  |  |  |  |  |  |  |  |  |  |
| DC1-COD-L3-CX-1255 |  | DC1-COD-C21-06 FTE | 1d | 2026-05-22 A | 2026-05-22 A | DC1-ATS-L3-CX-1255, DC1-COD-L2-1170 | 100% | 2026-06-03 | 2026-06-03 | ROS | Commissioning | DH2100 | L3 | COD |  |
| DC1-COD-L3-CX-1260 |  | DC1-COD-C21-06 L3 Startup | 2d | 2026-05-26 A | 2026-06-01 A | DC1-COD-L3-CX-1255 | 100% | 2026-06-04 | 2026-06-05 | SIE | Commissioning | DH2100 | L3 | COD | Travis Todaro |
| DC1-COD-L3-CX-1265 |  | DC1-COD-C21-06 BMS/EPMS Programming | 1d | 2026-07-15 A | 2026-07-15 A | DC1-COD-L3-CX-1260, QTS-1007140 | 100% |  |  | PRM | Commissioning | DH2100 | L3 | COD |  |
|  | 04 | **DC1-DH2100-COD-D21 Cx L3** |  | 2026-05-22 | 2026-07-15 |  |  |  |  |  |  |  |  |  |  |
|  | 01 | **DC1-DH2100-COD-D21-01 Cx L3** |  | 2026-05-22 | 2026-07-15 |  |  |  |  |  |  |  |  |  |  |
| DC1-COD-L3-CX-1270 |  | DC1-COD-D21-01 FTE | 1d | 2026-05-22 A | 2026-05-22 A | QTS-1080.1, DC1-ATS-L3-CX-1270, DC1-COD-L2-1180 | 100% | 2026-06-03 | 2026-06-03 | ROS | Commissioning | DH2100 | L3 | COD |  |
| DC1-COD-L3-CX-1275 |  | DC1-COD-D21-01 L3 Startup | 2d | 2026-05-26 A | 2026-06-01 A | DC1-COD-L3-CX-1270 | 100% | 2026-06-04 | 2026-06-05 | SIE | Commissioning | DH2100 | L3 | COD | Travis Todaro |
| DC1-COD-L3-CX-1280 |  | DC1-COD-D21-01 BMS/EPMS Programming | 1d | 2026-07-15 A | 2026-07-15 A | DC1-COD-L3-CX-1275, QTS-1007140 | 100% |  |  | PRM | Commissioning | DH2100 | L3 | COD |  |

Notes:
- DC1-COD-L3-CX-1200: Steps: EC Startup Report; Vendor Startup
- DC1-COD-L3-CX-1215: Steps: EC Startup Report; Vendor Startup
- DC1-COD-L3-CX-1230: Steps: EC Startup Report; Vendor Startup
- DC1-COD-L3-CX-1245: Steps: EC Startup Report; Vendor Startup
- DC1-COD-L3-CX-1260: Steps: EC Startup Report; Vendor Startup
- DC1-COD-L3-CX-1275: Steps: EC Startup Report; Vendor Startup

| ID | WBS | Activity | Duration | Start | Finish | Predecessors | Complete | Planned start | Planned finish | Vendor Responsible Party | Layton Discipline | Location | CX Level | Equipment | Layton Super |
| --- | --- | --- | --- | --- | --- | --- | --- | --- | --- | --- | --- | --- | --- | --- | --- |
|  | 02 | **DC1-DH2100-COD-D21-02 Cx L3** |  | 2026-05-22 | 2026-07-15 |  |  |  |  |  |  |  |  |  |  |
| DC1-COD-L3-CX-1285 |  | DC1-COD-D21-02 FTE | 1d | 2026-05-22 A | 2026-05-22 A | DC1-ATS-L3-CX-1285, DC1-COD-L2-1190 | 100% | 2026-06-03 | 2026-06-03 | ROS | Commissioning | DH2100 | L3 | COD |  |
| DC1-COD-L3-CX-1290 |  | DC1-COD-D21-02 L3 Startup | 2d | 2026-05-26 A | 2026-06-01 A | DC1-COD-L3-CX-1285 | 100% | 2026-06-04 | 2026-06-05 | SIE | Commissioning | DH2100 | L3 | COD | Travis Todaro |
| DC1-COD-L3-CX-1295 |  | DC1-COD-D21-02 BMS/EPMS Programming | 1d | 2026-07-15 A | 2026-07-15 A | DC1-COD-L3-CX-1290, QTS-1007140 | 100% |  |  | PRM | Commissioning | DH2100 | L3 | COD |  |
|  | 03 | **DC1-DH2100-COD-D21-03 Cx L3** |  | 2026-05-22 | 2026-07-15 |  |  |  |  |  |  |  |  |  |  |
| DC1-COD-L3-CX-1300 |  | DC1-COD-D21-03 FTE | 1d | 2026-05-22 A | 2026-05-22 A | DC1-ATS-L3-CX-1300, DC1-COD-L2-1200 | 100% | 2026-06-03 | 2026-06-03 | ROS | Commissioning | DH2100 | L3 | COD |  |
| DC1-COD-L3-CX-1305 |  | DC1-COD-D21-03 L3 Startup | 2d | 2026-05-26 A | 2026-06-01 A | DC1-COD-L3-CX-1300 | 100% | 2026-06-04 | 2026-06-05 | SIE | Commissioning | DH2100 | L3 | COD | Travis Todaro |
| DC1-COD-L3-CX-1310 |  | DC1-COD-D21-03 BMS/EPMS Programming | 1d | 2026-07-15 A | 2026-07-15 A | DC1-COD-L3-CX-1305, QTS-1007140 | 100% |  |  | PRM | Commissioning | DH2100 | L3 | COD |  |
|  | 04 | **DC1-DH2100-COD-D21-04 Cx L3** |  | 2026-05-22 | 2026-07-15 |  |  |  |  |  |  |  |  |  |  |
| DC1-COD-L3-CX-1315 |  | DC1-COD-D21-04 FTE | 1d | 2026-05-22 A | 2026-05-22 A | DC1-ATS-L3-CX-1315, DC1-COD-L2-1210 | 100% | 2026-06-03 | 2026-06-03 | ROS | Commissioning | DH2100 | L3 | COD |  |
| DC1-COD-L3-CX-1320 |  | DC1-COD-D21-04 L3 Startup | 2d | 2026-05-26 A | 2026-06-01 A | DC1-COD-L3-CX-1315 | 100% | 2026-06-04 | 2026-06-05 | SIE | Commissioning | DH2100 | L3 | COD | Travis Todaro |
| DC1-COD-L3-CX-1325 |  | DC1-COD-D21-04 BMS/EPMS Programming | 1d | 2026-07-15 A | 2026-07-15 A | DC1-COD-L3-CX-1320, QTS-1007140 | 100% |  |  | PRM | Commissioning | DH2100 | L3 | COD |  |
|  | 05 | **DC1-DH2100-COD-D21-05 Cx L3** |  | 2026-05-22 | 2026-07-15 |  |  |  |  |  |  |  |  |  |  |
| DC1-COD-L3-CX-1330 |  | DC1-COD-D21-05 FTE | 1d | 2026-05-22 A | 2026-05-22 A | DC1-ATS-L3-CX-1330, DC1-COD-L2-1220 | 100% | 2026-06-03 | 2026-06-03 | ROS | Commissioning | DH2100 | L3 | COD |  |
| DC1-COD-L3-CX-1335 |  | DC1-COD-D21-05 L3 Startup | 2d | 2026-05-26 A | 2026-06-01 A | DC1-COD-L3-CX-1330 | 100% | 2026-06-04 | 2026-06-05 | SIE | Commissioning | DH2100 | L3 | COD | Travis Todaro |
| DC1-COD-L3-CX-1340 |  | DC1-COD-D21-05 BMS/EPMS Programming | 1d | 2026-07-15 A | 2026-07-15 A | DC1-COD-L3-CX-1335, QTS-1007140 | 100% |  |  | PRM | Commissioning | DH2100 | L3 | COD |  |
|  | 06 | **DC1-DH2100-COD-D21-06 Cx L3** |  | 2026-05-22 | 2026-07-15 |  |  |  |  |  |  |  |  |  |  |
| DC1-COD-L3-CX-1345 |  | DC1-COD-D21-06 FTE | 1d | 2026-05-22 A | 2026-05-22 A | DC1-ATS-L3-CX-1345, DC1-COD-L2-1230 | 100% | 2026-06-03 | 2026-06-03 | ROS | Commissioning | DH2100 | L3 | COD |  |
| DC1-COD-L3-CX-1350 |  | DC1-COD-D21-06 L3 Startup | 2d | 2026-05-26 A | 2026-06-01 A | DC1-COD-L3-CX-1345 | 100% | 2026-06-04 | 2026-06-05 | SIE | Commissioning | DH2100 | L3 | COD | Travis Todaro |
| DC1-COD-L3-CX-1355 |  | DC1-COD-D21-06 BMS/EPMS Programming | 1d | 2026-07-15 A | 2026-07-15 A | DC1-COD-L3-CX-1350, QTS-1007140 | 100% |  |  | PRM | Commissioning | DH2100 | L3 | COD |  |
|  | 05 | **DC1-DH2100-COD-E21 Cx L3** |  | 2026-05-22 | 2026-07-15 |  |  |  |  |  |  |  |  |  |  |
|  | 01 | **DC1-DH2100-ATS-E21-01 Cx L3** |  | 2026-05-22 | 2026-07-15 |  |  |  |  |  |  |  |  |  |  |
| DC1-COD-L3-CX-1360 |  | DC1-COD-E21-01 FTE | 1d | 2026-05-22 A | 2026-05-22 A | QTS-1080.1, DC1-ATS-L3-CX-1360, DC1-COD-L2-1240 | 100% | 2026-06-03 | 2026-06-03 | ROS | Commissioning | DH2100 | L3 | COD |  |
| DC1-COD-L3-CX-1365 |  | DC1-COD-E21-01 L3 Startup | 2d | 2026-05-26 A | 2026-06-01 A | DC1-COD-L3-CX-1360 | 100% | 2026-06-04 | 2026-06-05 | SIE | Commissioning | DH2100 | L3 | COD | Travis Todaro |
| DC1-COD-L3-CX-1370 |  | DC1-COD-E21-01 BMS/EPMS Programming | 1d | 2026-07-15 A | 2026-07-15 A | DC1-COD-L3-CX-1365, QTS-1007140 | 100% |  |  | PRM | Commissioning | DH2100 | L3 | COD |  |

Notes:
- DC1-COD-L3-CX-1290: Steps: EC Startup Report; Vendor Startup
- DC1-COD-L3-CX-1305: Steps: EC Startup Report; Vendor Startup
- DC1-COD-L3-CX-1320: Steps: EC Startup Report; Vendor Startup
- DC1-COD-L3-CX-1335: Steps: EC Startup Report; Vendor Startup
- DC1-COD-L3-CX-1350: Steps: EC Startup Report; Vendor Startup
- DC1-COD-L3-CX-1365: Steps: EC Startup Report; Vendor Startup

| ID | WBS | Activity | Duration | Start | Finish | Predecessors | Complete | Planned start | Planned finish | Vendor Responsible Party | Layton Discipline | Location | CX Level | Equipment | Layton Super |
| --- | --- | --- | --- | --- | --- | --- | --- | --- | --- | --- | --- | --- | --- | --- | --- |
|  | 02 | **DC1-DH2100-ATS-E21-02 Cx L3** |  | 2026-05-22 | 2026-07-15 |  |  |  |  |  |  |  |  |  |  |
| DC1-COD-L3-CX-1375 |  | DC1-COD-E21-02 FTE | 1d | 2026-05-22 A | 2026-05-22 A | DC1-ATS-L3-CX-1375, DC1-COD-L2-1250 | 100% | 2026-06-03 | 2026-06-03 | ROS | Commissioning | DH2100 | L3 | COD |  |
| DC1-COD-L3-CX-1380 |  | DC1-COD-E21-02 L3 Startup | 2d | 2026-05-26 A | 2026-06-01 A | DC1-COD-L3-CX-1375 | 100% | 2026-06-04 | 2026-06-05 | SIE | Commissioning | DH2100 | L3 | COD | Travis Todaro |
| DC1-COD-L3-CX-1385 |  | DC1-COD-E21-02 BMS/EPMS Programming | 1d | 2026-07-15 A | 2026-07-15 A | DC1-COD-L3-CX-1380, QTS-1007140 | 100% |  |  | PRM | Commissioning | DH2100 | L3 | COD |  |
|  | 03 | **DC1-DH2100-ATS-E21-03 Cx L3** |  | 2026-05-22 | 2026-07-15 |  |  |  |  |  |  |  |  |  |  |
| DC1-COD-L3-CX-1390 |  | DC1-COD-E21-03 FTE | 1d | 2026-05-22 A | 2026-05-22 A | DC1-ATS-L3-CX-1390, DC1-COD-L2-1260 | 100% | 2026-06-03 | 2026-06-03 | ROS | Commissioning | DH2100 | L3 | COD |  |
| DC1-COD-L3-CX-1395 |  | DC1-COD-E21-03 L3 Startup | 2d | 2026-05-26 A | 2026-06-01 A | DC1-COD-L3-CX-1390 | 100% | 2026-06-04 | 2026-06-05 | SIE | Commissioning | DH2100 | L3 | COD | Travis Todaro |
| DC1-COD-L3-CX-1400 |  | DC1-COD-E21-03 BMS/EPMS Programming | 1d | 2026-07-15 A | 2026-07-15 A | DC1-COD-L3-CX-1395, QTS-1007140 | 100% |  |  | PRM | Commissioning | DH2100 | L3 | COD |  |
|  | 04 | **DC1-DH2100-ATS-E21-04 Cx L3** |  | 2026-05-22 | 2026-07-15 |  |  |  |  |  |  |  |  |  |  |
| DC1-COD-L3-CX-1405 |  | DC1-COD-E21-04 FTE | 1d | 2026-05-22 A | 2026-05-22 A | DC1-ATS-L3-CX-1405, DC1-COD-L2-1270 | 100% | 2026-06-03 | 2026-06-03 | ROS | Commissioning | DH2100 | L3 | COD |  |
| DC1-COD-L3-CX-1410 |  | DC1-COD-E21-04 L3 Startup | 2d | 2026-05-26 A | 2026-06-01 A | DC1-COD-L3-CX-1405 | 100% | 2026-06-04 | 2026-06-05 | SIE | Commissioning | DH2100 | L3 | COD | Travis Todaro |
| DC1-COD-L3-CX-1415 |  | DC1-COD-E21-04 BMS/EPMS Programming | 1d | 2026-07-15 A | 2026-07-15 A | DC1-COD-L3-CX-1410, QTS-1007140 | 100% |  |  | PRM | Commissioning | DH2100 | L3 | COD |  |
|  | 05 | **DC1-DH2100-ATS-E21-05 Cx L3** |  | 2026-05-22 | 2026-07-15 |  |  |  |  |  |  |  |  |  |  |
| DC1-COD-L3-CX-1420 |  | DC1-COD-E21-05 FTE | 1d | 2026-05-22 A | 2026-05-22 A | DC1-ATS-L3-CX-1420, DC1-COD-L2-1280 | 100% | 2026-06-03 | 2026-06-03 | ROS | Commissioning | DH2100 | L3 | COD |  |
| DC1-COD-L3-CX-1425 |  | DC1-COD-E21-05 L3 Startup | 2d | 2026-05-26 A | 2026-06-01 A | DC1-COD-L3-CX-1420 | 100% | 2026-06-04 | 2026-06-05 | SIE | Commissioning | DH2100 | L3 | COD | Travis Todaro |
| DC1-COD-L3-CX-1430 |  | DC1-COD-E21-05 BMS/EPMS Programming | 1d | 2026-07-15 A | 2026-07-15 A | DC1-COD-L3-CX-1425, QTS-1007140 | 100% |  |  | PRM | Commissioning | DH2100 | L3 | COD |  |
|  | 06 | **DC1-DH2100-ATS-E21-06 Cx L3** |  | 2026-05-22 | 2026-07-15 |  |  |  |  |  |  |  |  |  |  |
| DC1-COD-L3-CX-1435 |  | DC1-COD-E21-06 FTE | 1d | 2026-05-22 A | 2026-05-22 A | DC1-ATS-L3-CX-1435, DC1-COD-L2-1290 | 100% | 2026-06-03 | 2026-06-03 | ROS | Commissioning | DH2100 | L3 | COD |  |
| DC1-COD-L3-CX-1440 |  | DC1-COD-E21-06 L3 Startup | 2d | 2026-05-26 A | 2026-06-01 A | DC1-COD-L3-CX-1435 | 100% | 2026-06-04 | 2026-06-05 | SIE | Commissioning | DH2100 | L3 | COD | Travis Todaro |
| DC1-COD-L3-CX-1445 |  | DC1-COD-E21-06 BMS/EPMS Programming | 1d | 2026-07-15 A | 2026-07-15 A | DC1-COD-L3-CX-1440, QTS-1007140 | 100% |  |  | PRM | Commissioning | DH2100 | L3 | COD |  |
|  | 06 | **DC1-DH2100-COD-F21 Cx L3** |  | 2026-05-22 | 2026-07-15 |  |  |  |  |  |  |  |  |  |  |
|  | 01 | **DC1-DH2100-COD-F21-01 Cx L3** |  | 2026-05-22 | 2026-07-15 |  |  |  |  |  |  |  |  |  |  |
| DC1-COD-L3-CX-1450 |  | DC1-COD-F21-01 FTE | 1d | 2026-05-22 A | 2026-05-22 A | QTS-1080.1, DC1-ATS-L3-CX-1450, DC1-COD-L2-1300 | 100% | 2026-06-03 | 2026-06-03 | ROS | Commissioning | DH2100 | L3 | COD |  |
| DC1-COD-L3-CX-1455 |  | DC1-COD-F21-01 L3 Startup | 2d | 2026-05-26 A | 2026-06-01 A | DC1-COD-L3-CX-1450 | 100% | 2026-06-04 | 2026-06-05 | SIE | Commissioning | DH2100 | L3 | COD | Travis Todaro |
| DC1-COD-L3-CX-1460 |  | DC1-COD-F21-01 BMS/EPMS Programming | 1d | 2026-07-15 A | 2026-07-15 A | DC1-COD-L3-CX-1455, QTS-1007140 | 100% |  |  | PRM | Commissioning | DH2100 | L3 | COD |  |

Notes:
- DC1-COD-L3-CX-1380: Steps: EC Startup Report; Vendor Startup
- DC1-COD-L3-CX-1395: Steps: EC Startup Report; Vendor Startup
- DC1-COD-L3-CX-1410: Steps: EC Startup Report; Vendor Startup
- DC1-COD-L3-CX-1425: Steps: EC Startup Report; Vendor Startup
- DC1-COD-L3-CX-1440: Steps: EC Startup Report; Vendor Startup
- DC1-COD-L3-CX-1455: Steps: EC Startup Report; Vendor Startup

| ID | WBS | Activity | Duration | Start | Finish | Predecessors | Complete | Planned start | Planned finish | Vendor Responsible Party | Layton Discipline | Location | CX Level | Equipment | Layton Super | Contract |
| --- | --- | --- | --- | --- | --- | --- | --- | --- | --- | --- | --- | --- | --- | --- | --- | --- |
|  | 02 | **DC1-DH2100-COD-F21-02 Cx L3** |  | 2026-05-22 | 2026-07-15 |  |  |  |  |  |  |  |  |  |  |  |
| DC1-COD-L3-CX-1465 |  | DC1-COD-F21-02 FTE | 1d | 2026-05-22 A | 2026-05-22 A | DC1-ATS-L3-CX-1465, DC1-COD-L2-1310 | 100% | 2026-06-03 | 2026-06-03 | ROS | Commissioning | DH2100 | L3 | COD |  |  |
| DC1-COD-L3-CX-1470 |  | DC1-COD-F21-02 L3 Startup | 2d | 2026-05-26 A | 2026-06-01 A | DC1-COD-L3-CX-1465 | 100% | 2026-06-04 | 2026-06-05 | SIE | Commissioning | DH2100 | L3 | COD | Travis Todaro |  |
| DC1-COD-L3-CX-1475 |  | DC1-COD-F21-02 BMS/EPMS Programming | 1d | 2026-07-15 A | 2026-07-15 A | DC1-COD-L3-CX-1470, QTS-1007140 | 100% |  |  | PRM | Commissioning | DH2100 | L3 | COD |  |  |
|  | 03 | **DC1-DH2100-COD-F21-03 Cx L3** |  | 2026-05-22 | 2026-07-15 |  |  |  |  |  |  |  |  |  |  |  |
| DC1-COD-L3-CX-1480 |  | DC1-COD-F21-03 FTE | 1d | 2026-05-22 A | 2026-05-22 A | DC1-ATS-L3-CX-1480, DC1-COD-L2-1320 | 100% | 2026-06-03 | 2026-06-03 | ROS | Commissioning | DH2100 | L3 | COD |  |  |
| DC1-COD-L3-CX-1485 |  | DC1-COD-F21-03 L3 Startup | 2d | 2026-05-26 A | 2026-06-01 A | DC1-COD-L3-CX-1480 | 100% | 2026-06-04 | 2026-06-05 | SIE | Commissioning | DH2100 | L3 | COD | Travis Todaro |  |
| DC1-COD-L3-CX-1490 |  | DC1-COD-F21-03 BMS/EPMS Programming | 1d | 2026-07-15 A | 2026-07-15 A | DC1-COD-L3-CX-1485, QTS-1007140 | 100% |  |  | PRM | Commissioning | DH2100 | L3 | COD |  |  |
|  | 04 | **DC1-DH2100-COD-F21-04 Cx L3** |  | 2026-05-22 | 2026-07-15 |  |  |  |  |  |  |  |  |  |  |  |
| DC1-COD-L3-CX-1495 |  | DC1-COD-F21-04 FTE | 1d | 2026-05-22 A | 2026-05-22 A | DC1-ATS-L3-CX-1495, DC1-COD-L2-1330 | 100% | 2026-06-03 | 2026-06-03 | ROS | Commissioning | DH2100 | L3 | COD |  |  |
| DC1-COD-L3-CX-1500 |  | DC1-COD-F21-04 L3 Startup | 2d | 2026-05-26 A | 2026-06-01 A | DC1-COD-L3-CX-1495 | 100% | 2026-06-04 | 2026-06-05 | SIE | Commissioning | DH2100 | L3 | COD | Travis Todaro |  |
| DC1-COD-L3-CX-1505 |  | DC1-COD-F21-04 BMS/EPMS Programming | 1d | 2026-07-15 A | 2026-07-15 A | DC1-COD-L3-CX-1500, QTS-1007140 | 100% |  |  | PRM | Commissioning | DH2100 | L3 | COD |  |  |
|  | 05 | **DC1-DH2100-COD-F21-05 Cx L3** |  | 2026-05-22 | 2026-07-15 |  |  |  |  |  |  |  |  |  |  |  |
| DC1-COD-L3-CX-1510 |  | DC1-COD-F21-05 FTE | 1d | 2026-05-22 A | 2026-05-22 A | DC1-ATS-L3-CX-1510, DC1-COD-L2-1340 | 100% | 2026-06-03 | 2026-06-03 | ROS | Commissioning | DH2100 | L3 | COD |  |  |
| DC1-COD-L3-CX-1515 |  | DC1-COD-F21-05 L3 Startup | 2d | 2026-05-26 A | 2026-06-01 A | DC1-COD-L3-CX-1510 | 100% | 2026-06-04 | 2026-06-05 | SIE | Commissioning | DH2100 | L3 | COD | Travis Todaro |  |
| DC1-COD-L3-CX-1520 |  | DC1-COD-F21-05 BMS/EPMS Programming | 1d | 2026-07-15 A | 2026-07-15 A | DC1-COD-L3-CX-1515, QTS-1007140 | 100% |  |  | PRM | Commissioning | DH2100 | L3 | COD |  |  |
|  | 06 | **DC1-DH2100-COD-F21-06 Cx L3** |  | 2026-05-22 | 2026-07-15 |  |  |  |  |  |  |  |  |  |  |  |
| DC1-COD-L3-CX-1525 |  | DC1-COD-F21-06 FTE | 1d | 2026-05-22 A | 2026-05-22 A | DC1-ATS-L3-CX-1525, DC1-COD-L2-1350 | 100% | 2026-06-03 | 2026-06-03 | ROS | Commissioning | DH2100 | L3 | COD |  |  |
| DC1-COD-L3-CX-1530 |  | DC1-COD-F21-06 L3 Startup | 2d | 2026-05-26 A | 2026-06-01 A | DC1-COD-L3-CX-1525 | 100% | 2026-06-04 | 2026-06-05 | SIE | Commissioning | DH2100 | L3 | COD | Travis Todaro |  |
| DC1-COD-L3-CX-1535 |  | DC1-COD-F21-06 BMS/EPMS Programming | 1d | 2026-07-15 A | 2026-07-15 A | DC1-COD-L3-CX-1530, QTS-1007140 | 100% |  |  | PRM | Commissioning | DH2100 | L3 | COD |  |  |
|  | 07 | **DC1-DH2100 RPPs Cx L3** |  | 2026-06-02 | 2026-07-28 |  |  |  |  |  |  |  |  |  |  |  |
|  | 01 | **DC1-DH2100-RPP-A21 Cx L3** |  | 2026-06-02 | 2026-07-28 |  |  |  |  |  |  |  |  |  |  |  |
|  | 01 | **DC1-DH2100-RPP-A21-01 Cx L3** |  | 2026-06-02 | 2026-07-28 |  |  |  |  |  |  |  |  |  |  |  |
| DC1-RPP-L3-CX-1000 |  | DC1-RPP-A21-01 A/B FTE | 1d | 2026-06-02 A | 2026-06-02 A | DC1-COD-L3-CX-1000, DC1-RPP-L2-1000, DC1-COD-L3-CX-1005 | 100% | 2026-06-25 | 2026-06-25 | ROS | Commissioning | DH2100 | L3 | RPP | Travis Todaro |  |
| DC1-RPP-L3-CX-1005 |  | DC1-RPP-A21-01 A/B L3 Startup | 2d | 2026-06-02 A | 2026-06-02 A | DC1-RPP-L3-CX-1000 | 100% | 2026-06-26 | 2026-06-29 | SQD | Commissioning | DH2100 | L3 | RPP | Travis Todaro |  |
| DC1-RPP-L3-CX-1010 |  | DC1-RPP-A21-01 A/B BMS/EPMS Programming | 1d | 2026-07-28 A | 2026-07-28 A | DC1-RPP-L3-CX-1005 | 100% | 2026-07-29 | 2026-07-29 | PRM | Commissioning | DH2100 | L3 | RPP |  | BAB |

Notes:
- DC1-COD-L3-CX-1470: Steps: EC Startup Report; Vendor Startup
- DC1-COD-L3-CX-1485: Steps: EC Startup Report; Vendor Startup
- DC1-COD-L3-CX-1500: Steps: EC Startup Report; Vendor Startup
- DC1-COD-L3-CX-1515: Steps: EC Startup Report; Vendor Startup
- DC1-COD-L3-CX-1530: Steps: EC Startup Report; Vendor Startup
- DC1-RPP-L3-CX-1005: Steps: EC Startup Report; Vendor Startup

| ID | WBS | Activity | Duration | Start | Finish | Predecessors | Complete | Planned start | Planned finish | Vendor Responsible Party | Layton Discipline | Location | CX Level | Equipment | Layton Super | Contract |
| --- | --- | --- | --- | --- | --- | --- | --- | --- | --- | --- | --- | --- | --- | --- | --- | --- |
|  | 02 | **DC1-DH2100-RPP-A21-02 Cx L3** |  | 2026-06-02 | 2026-07-28 |  |  |  |  |  |  |  |  |  |  |  |
| DC1-RPP-L3-CX-1015 |  | DC1-RPP-A21-02 A/B FTE | 1d | 2026-06-02 A | 2026-06-02 A | DC1-COD-L3-CX-1015, DC1-RPP-L2-1010, DC1-COD-L3-CX-1020 | 100% | 2026-06-25 | 2026-06-25 | ROS | Commissioning | DH2100 | L3 | RPP | Travis Todaro |  |
| DC1-RPP-L3-CX-1020 |  | DC1-RPP-A21-02 A/B L3 Startup | 2d | 2026-06-02 A | 2026-06-02 A | DC1-RPP-L3-CX-1015 | 100% | 2026-06-26 | 2026-06-29 | SQD | Commissioning | DH2100 | L3 | RPP | Travis Todaro |  |
| DC1-RPP-L3-CX-1025 |  | DC1-RPP-A21-02 A/B BMS/EPMS Programming | 1d | 2026-07-28 A | 2026-07-28 A | DC1-RPP-L3-CX-1020 | 100% | 2026-07-29 | 2026-07-29 | PRM | Commissioning | DH2100 | L3 | RPP |  | BAB |
|  | 03 | **DC1-DH2100-RPP-A21-03 Cx L3** |  | 2026-06-02 | 2026-07-28 |  |  |  |  |  |  |  |  |  |  |  |
| DC1-RPP-L3-CX-1030 |  | DC1-RPP-A21-03 A/B FTE | 1d | 2026-06-02 A | 2026-06-02 A | DC1-COD-L3-CX-1030, DC1-RPP-L2-1020, DC1-COD-L3-CX-1035 | 100% | 2026-06-25 | 2026-06-25 | ROS | Commissioning | DH2100 | L3 | RPP | Travis Todaro |  |
| DC1-RPP-L3-CX-1035 |  | DC1-RPP-A21-03 A/B L3 Startup | 2d | 2026-06-02 A | 2026-06-02 A | DC1-RPP-L3-CX-1030 | 100% | 2026-06-26 | 2026-06-29 | SQD | Commissioning | DH2100 | L3 | RPP | Travis Todaro |  |
| DC1-RPP-L3-CX-1040 |  | DC1-RPP-A21-03 A/B BMS/EPMS Programming | 1d | 2026-07-28 A | 2026-07-28 A | DC1-RPP-L3-CX-1035 | 100% | 2026-07-29 | 2026-07-29 | PRM | Commissioning | DH2100 | L3 | RPP |  | BAB |
|  | 04 | **DC1-DH2100-RPP-A21-04 Cx L3** |  | 2026-06-02 | 2026-07-28 |  |  |  |  |  |  |  |  |  |  |  |
| DC1-RPP-L3-CX-1045 |  | DC1-RPP-A21-04 A/B FTE | 1d | 2026-06-02 A | 2026-06-02 A | DC1-COD-L3-CX-1045, DC1-RPP-L2-1030, DC1-COD-L3-CX-1050 | 100% | 2026-06-25 | 2026-06-25 | ROS | Commissioning | DH2100 | L3 | RPP | Travis Todaro |  |
| DC1-RPP-L3-CX-1050 |  | DC1-RPP-A21-04 A/B L3 Startup | 2d | 2026-06-02 A | 2026-06-02 A | DC1-RPP-L3-CX-1045 | 100% | 2026-06-26 | 2026-06-29 | SQD | Commissioning | DH2100 | L3 | RPP | Travis Todaro |  |
| DC1-RPP-L3-CX-1055 |  | DC1-RPP-A21-04 A/B BMS/EPMS Programming | 1d | 2026-07-28 A | 2026-07-28 A | DC1-RPP-L3-CX-1050 | 100% | 2026-07-29 | 2026-07-29 | PRM | Commissioning | DH2100 | L3 | RPP |  | BAB |
|  | 05 | **DC1-DH2100-RPP-A21-05 Cx L3** |  | 2026-06-02 | 2026-07-28 |  |  |  |  |  |  |  |  |  |  |  |
| DC1-RPP-L3-CX-1060 |  | DC1-RPP-A21-05 A/B FTE | 1d | 2026-06-02 A | 2026-06-02 A | DC1-COD-L3-CX-1060, DC1-RPP-L2-1040, DC1-COD-L3-CX-1065 | 100% | 2026-06-25 | 2026-06-25 | ROS | Commissioning | DH2100 | L3 | RPP | Travis Todaro |  |
| DC1-RPP-L3-CX-1065 |  | DC1-RPP-A21-05 A/B L3 Startup | 2d | 2026-06-02 A | 2026-06-02 A | DC1-RPP-L3-CX-1060 | 100% | 2026-06-26 | 2026-06-29 | SQD | Commissioning | DH2100 | L3 | RPP | Travis Todaro |  |
| DC1-RPP-L3-CX-1070 |  | DC1-RPP-A21-05 A/B BMS/EPMS Programming | 1d | 2026-07-28 A | 2026-07-28 A | DC1-RPP-L3-CX-1065 | 100% | 2026-07-29 | 2026-07-29 | PRM | Commissioning | DH2100 | L3 | RPP |  | BAB |
|  | 06 | **DC1-DH2100-RPP-A21-06 Cx L3** |  | 2026-06-02 | 2026-07-28 |  |  |  |  |  |  |  |  |  |  |  |
| DC1-RPP-L3-CX-1075 |  | DC1-RPP-A21-06 A/B FTE | 1d | 2026-06-02 A | 2026-06-02 A | DC1-COD-L3-CX-1075, DC1-RPP-L2-1050 | 100% | 2026-06-26 | 2026-06-26 | ROS | Commissioning | DH2100 | L3 | RPP | Travis Todaro |  |
| DC1-RPP-L3-CX-1080 |  | DC1-RPP-A21-06 A/B L3 Startup | 2d | 2026-06-02 A | 2026-06-02 A | DC1-RPP-L3-CX-1075, DC1-COD-L3-CX-1080 | 100% | 2026-06-29 | 2026-06-30 | SQD | Commissioning | DH2100 | L3 | RPP | Travis Todaro |  |
| DC1-RPP-L3-CX-1085 |  | DC1-RPP-A21-06 A/B BMS/EPMS Programming | 1d | 2026-07-28 A | 2026-07-28 A | DC1-RPP-L3-CX-1080 | 100% | 2026-07-29 | 2026-07-29 | PRM | Commissioning | DH2100 | L3 | RPP |  | BAB |
|  | 02 | **DC1-DH2100-RPP-B21 Cx L3** |  | 2026-06-02 | 2026-07-28 |  |  |  |  |  |  |  |  |  |  |  |
|  | 01 | **DC1-DH2100-RPP-B21-01 Cx L3** |  | 2026-06-02 | 2026-07-28 |  |  |  |  |  |  |  |  |  |  |  |
| DC1-RPP-L3-CX-1090 |  | DC1-RPP-B21-01 A/B FTE | 1d | 2026-06-02 A | 2026-06-02 A | DC1-COD-L3-CX-1090, DC1-RPP-L2-1060, DC1-COD-L3-CX-1095 | 100% | 2026-06-25 | 2026-06-25 | ROS | Commissioning | DH2100 | L3 | RPP | Travis Todaro |  |
| DC1-RPP-L3-CX-1095 |  | DC1-RPP-B21-01 A/B L3 Startup | 2d | 2026-06-02 A | 2026-06-02 A | DC1-RPP-L3-CX-1090 | 100% | 2026-06-26 | 2026-06-29 | SQD | Commissioning | DH2100 | L3 | RPP | Travis Todaro |  |
| DC1-RPP-L3-CX-1100 |  | DC1-RPP-B21-01 A/B BMS/EPMS Programming | 1d | 2026-07-28 A | 2026-07-28 A | DC1-RPP-L3-CX-1095 | 100% | 2026-07-29 | 2026-07-29 | PRM | Commissioning | DH2100 | L3 | RPP |  | BAB |

Notes:
- DC1-RPP-L3-CX-1020: Steps: EC Startup Report; Vendor Startup
- DC1-RPP-L3-CX-1035: Steps: EC Startup Report; Vendor Startup
- DC1-RPP-L3-CX-1050: Steps: EC Startup Report; Vendor Startup
- DC1-RPP-L3-CX-1065: Steps: EC Startup Report; Vendor Startup
- DC1-RPP-L3-CX-1080: Steps: EC Startup Report; Vendor Startup
- DC1-RPP-L3-CX-1095: Steps: EC Startup Report; Vendor Startup

| ID | WBS | Activity | Duration | Start | Finish | Predecessors | Complete | Planned start | Planned finish | Vendor Responsible Party | Layton Discipline | Location | CX Level | Equipment | Layton Super | Contract |
| --- | --- | --- | --- | --- | --- | --- | --- | --- | --- | --- | --- | --- | --- | --- | --- | --- |
|  | 02 | **DC1-DH2100-RPP-B21-02 Cx L3** |  | 2026-06-02 | 2026-07-28 |  |  |  |  |  |  |  |  |  |  |  |
| DC1-RPP-L3-CX-1105 |  | DC1-RPP-B21-02 A/B FTE | 1d | 2026-06-02 A | 2026-06-02 A | DC1-COD-L3-CX-1105, DC1-RPP-L2-1070, DC1-COD-L3-CX-1110 | 100% | 2026-06-25 | 2026-06-25 | ROS | Commissioning | DH2100 | L3 | RPP | Travis Todaro |  |
| DC1-RPP-L3-CX-1110 |  | DC1-RPP-B21-02 A/B L3 Startup | 2d | 2026-06-02 A | 2026-06-02 A | DC1-RPP-L3-CX-1105 | 100% | 2026-06-26 | 2026-06-29 | SQD | Commissioning | DH2100 | L3 | RPP | Travis Todaro |  |
| DC1-RPP-L3-CX-1115 |  | DC1-RPP-B21-02 A/B BMS/EPMS Programming | 1d | 2026-07-28 A | 2026-07-28 A | DC1-RPP-L3-CX-1110 | 100% | 2026-07-29 | 2026-07-29 | PRM | Commissioning | DH2100 | L3 | RPP |  | BAB |
|  | 03 | **DC1-DH2100-RPP-B21-03 Cx L3** |  | 2026-06-02 | 2026-07-28 |  |  |  |  |  |  |  |  |  |  |  |
| DC1-RPP-L3-CX-1120 |  | DC1-RPP-B21-03 A/B FTE | 1d | 2026-06-02 A | 2026-06-02 A | DC1-COD-L3-CX-1120, DC1-RPP-L2-1080, DC1-COD-L3-CX-1125 | 100% | 2026-06-25 | 2026-06-25 | ROS | Commissioning | DH2100 | L3 | RPP | Travis Todaro |  |
| DC1-RPP-L3-CX-1125 |  | DC1-RPP-B21-03 A/B L3 Startup | 2d | 2026-06-02 A | 2026-06-02 A | DC1-RPP-L3-CX-1120 | 100% | 2026-06-26 | 2026-06-29 | SQD | Commissioning | DH2100 | L3 | RPP | Travis Todaro |  |
| DC1-RPP-L3-CX-1130 |  | DC1-RPP-B21-03 A/B BMS/EPMS Programming | 1d | 2026-07-28 A | 2026-07-28 A | DC1-RPP-L3-CX-1125 | 100% | 2026-07-29 | 2026-07-29 | PRM | Commissioning | DH2100 | L3 | RPP |  | BAB |
|  | 04 | **DC1-DH2100-RPP-B21-04 Cx L3** |  | 2026-06-02 | 2026-07-28 |  |  |  |  |  |  |  |  |  |  |  |
| DC1-RPP-L3-CX-1135 |  | DC1-RPP-B21-04 A/B FTE | 1d | 2026-06-02 A | 2026-06-02 A | DC1-COD-L3-CX-1135, DC1-RPP-L2-1090, DC1-COD-L3-CX-1140 | 100% | 2026-06-25 | 2026-06-25 | ROS | Commissioning | DH2100 | L3 | RPP | Travis Todaro |  |
| DC1-RPP-L3-CX-1140 |  | DC1-RPP-B21-04 A/B L3 Startup | 2d | 2026-06-02 A | 2026-06-02 A | DC1-RPP-L3-CX-1135 | 100% | 2026-06-26 | 2026-06-29 | SQD | Commissioning | DH2100 | L3 | RPP | Travis Todaro |  |
| DC1-RPP-L3-CX-1145 |  | DC1-RPP-B21-04 A/B BMS/EPMS Programming | 1d | 2026-07-28 A | 2026-07-28 A | DC1-RPP-L3-CX-1140 | 100% | 2026-07-29 | 2026-07-29 | PRM | Commissioning | DH2100 | L3 | RPP |  | BAB |
|  | 05 | **DC1-DH2100-RPP-B21-05 Cx L3** |  | 2026-06-02 | 2026-07-28 |  |  |  |  |  |  |  |  |  |  |  |
| DC1-RPP-L3-CX-1150 |  | DC1-RPP-B21-05 A/B FTE | 1d | 2026-06-02 A | 2026-06-02 A | DC1-COD-L3-CX-1150, DC1-RPP-L2-1100, DC1-COD-L3-CX-1155 | 100% | 2026-06-25 | 2026-06-25 | ROS | Commissioning | DH2100 | L3 | RPP | Travis Todaro |  |
| DC1-RPP-L3-CX-1155 |  | DC1-RPP-B21-05 A/B L3 Startup | 2d | 2026-06-02 A | 2026-06-02 A | DC1-RPP-L3-CX-1150 | 100% | 2026-06-26 | 2026-06-29 | SQD | Commissioning | DH2100 | L3 | RPP | Travis Todaro |  |
| DC1-RPP-L3-CX-1160 |  | DC1-RPP-B21-05 A/B BMS/EPMS Programming | 1d | 2026-07-28 A | 2026-07-28 A | DC1-RPP-L3-CX-1155 | 100% | 2026-07-29 | 2026-07-29 | PRM | Commissioning | DH2100 | L3 | RPP |  | BAB |
|  | 06 | **DC1-DH2100-RPP-B21-06 Cx L3** |  | 2026-06-02 | 2026-07-28 |  |  |  |  |  |  |  |  |  |  |  |
| DC1-RPP-L3-CX-1165 |  | DC1-RPP-B21-06 A/B FTE | 1d | 2026-06-02 A | 2026-06-02 A | DC1-COD-L3-CX-1165, DC1-RPP-L2-1110, DC1-COD-L3-CX-1170 | 100% | 2026-06-25 | 2026-06-25 | ROS | Commissioning | DH2100 | L3 | RPP | Travis Todaro |  |
| DC1-RPP-L3-CX-1170 |  | DC1-RPP-B21-06 A/B L3 Startup | 2d | 2026-06-02 A | 2026-06-02 A | DC1-RPP-L3-CX-1165 | 100% | 2026-06-26 | 2026-06-29 | SQD | Commissioning | DH2100 | L3 | RPP | Travis Todaro |  |
| DC1-RPP-L3-CX-1175 |  | DC1-RPP-B21-06 A/B BMS/EPMS Programming | 1d | 2026-07-28 A | 2026-07-28 A | DC1-RPP-L3-CX-1170 | 100% | 2026-07-29 | 2026-07-29 | PRM | Commissioning | DH2100 | L3 | RPP |  | BAB |
|  | 03 | **DC1-DH2100-RPP-C21 Cx L3** |  | 2026-06-02 | 2026-07-28 |  |  |  |  |  |  |  |  |  |  |  |
|  | 01 | **DC1-DH2100-RPP-C21-01 Cx L3** |  | 2026-06-02 | 2026-07-28 |  |  |  |  |  |  |  |  |  |  |  |
| DC1-RPP-L3-CX-1180 |  | DC1-RPP-C21-01 A/B FTE | 1d | 2026-06-02 A | 2026-06-02 A | DC1-COD-L3-CX-1180, DC1-RPP-L2-1120, DC1-COD-L3-CX-1185 | 100% | 2026-06-25 | 2026-06-25 | ROS | Commissioning | DH2100 | L3 | RPP | Travis Todaro |  |
| DC1-RPP-L3-CX-1185 |  | DC1-RPP-C21-01 A/B L3 Startup | 2d | 2026-06-02 A | 2026-06-02 A | DC1-RPP-L3-CX-1180 | 100% | 2026-06-26 | 2026-06-29 | SQD | Commissioning | DH2100 | L3 | RPP | Travis Todaro |  |
| DC1-RPP-L3-CX-1190 |  | DC1-RPP-C21-01 A/B BMS/EPMS Programming | 1d | 2026-07-28 A | 2026-07-28 A | DC1-RPP-L3-CX-1185 | 100% | 2026-07-29 | 2026-07-29 | PRM | Commissioning | DH2100 | L3 | RPP |  | BAB |

Notes:
- DC1-RPP-L3-CX-1110: Steps: EC Startup Report; Vendor Startup
- DC1-RPP-L3-CX-1125: Steps: EC Startup Report; Vendor Startup
- DC1-RPP-L3-CX-1140: Steps: EC Startup Report; Vendor Startup
- DC1-RPP-L3-CX-1155: Steps: EC Startup Report; Vendor Startup
- DC1-RPP-L3-CX-1170: Steps: EC Startup Report; Vendor Startup
- DC1-RPP-L3-CX-1185: Steps: EC Startup Report; Vendor Startup

| ID | WBS | Activity | Duration | Start | Finish | Predecessors | Complete | Planned start | Planned finish | Vendor Responsible Party | Layton Discipline | Location | CX Level | Equipment | Layton Super | Contract |
| --- | --- | --- | --- | --- | --- | --- | --- | --- | --- | --- | --- | --- | --- | --- | --- | --- |
|  | 02 | **DC1-DH2100-RPP-C21-02 Cx L3** |  | 2026-06-02 | 2026-07-28 |  |  |  |  |  |  |  |  |  |  |  |
| DC1-RPP-L3-CX-1195 |  | DC1-RPP-C21-02 A/B FTE | 1d | 2026-06-02 A | 2026-06-02 A | DC1-COD-L3-CX-1195, DC1-RPP-L2-1130, DC1-COD-L3-CX-1200 | 100% | 2026-06-25 | 2026-06-25 | ROS | Commissioning | DH2100 | L3 | RPP | Travis Todaro |  |
| DC1-RPP-L3-CX-1200 |  | DC1-RPP-C21-02 A/B L3 Startup | 2d | 2026-06-02 A | 2026-06-02 A | DC1-RPP-L3-CX-1195 | 100% | 2026-06-26 | 2026-06-29 | SQD | Commissioning | DH2100 | L3 | RPP | Travis Todaro |  |
| DC1-RPP-L3-CX-1205 |  | DC1-RPP-C21-02 A/B BMS/EPMS Programming | 1d | 2026-07-28 A | 2026-07-28 A | DC1-RPP-L3-CX-1200 | 100% | 2026-07-29 | 2026-07-29 | PRM | Commissioning | DH2100 | L3 | RPP |  | BAB |
|  | 03 | **DC1-DH2100-RPP-C21-03 Cx L3** |  | 2026-06-02 | 2026-07-28 |  |  |  |  |  |  |  |  |  |  |  |
| DC1-RPP-L3-CX-1210 |  | DC1-RPP-C21-03 A/B FTE | 1d | 2026-06-02 A | 2026-06-02 A | DC1-COD-L3-CX-1210, DC1-RPP-L2-1140, DC1-COD-L3-CX-1215 | 100% | 2026-06-25 | 2026-06-25 | ROS | Commissioning | DH2100 | L3 | RPP | Travis Todaro |  |
| DC1-RPP-L3-CX-1215 |  | DC1-RPP-C21-03 A/B L3 Startup | 2d | 2026-06-02 A | 2026-06-02 A | DC1-RPP-L3-CX-1210 | 100% | 2026-06-26 | 2026-06-29 | SQD | Commissioning | DH2100 | L3 | RPP | Travis Todaro |  |
| DC1-RPP-L3-CX-1220 |  | DC1-RPP-C21-03 A/B BMS/EPMS Programming | 1d | 2026-07-28 A | 2026-07-28 A | DC1-RPP-L3-CX-1215 | 100% | 2026-07-29 | 2026-07-29 | PRM | Commissioning | DH2100 | L3 | RPP |  | BAB |
|  | 04 | **DC1-DH2100-RPP-C21-04 Cx L3** |  | 2026-06-02 | 2026-07-28 |  |  |  |  |  |  |  |  |  |  |  |
| DC1-RPP-L3-CX-1225 |  | DC1-RPP-C21-04 A/B FTE | 1d | 2026-06-02 A | 2026-06-02 A | DC1-COD-L3-CX-1225, DC1-RPP-L2-1150, DC1-COD-L3-CX-1230 | 100% | 2026-06-25 | 2026-06-25 | ROS | Commissioning | DH2100 | L3 | RPP | Travis Todaro |  |
| DC1-RPP-L3-CX-1230 |  | DC1-RPP-C21-04 A/B L3 Startup | 2d | 2026-06-02 A | 2026-06-02 A | DC1-RPP-L3-CX-1225 | 100% | 2026-06-26 | 2026-06-29 | SQD | Commissioning | DH2100 | L3 | RPP | Travis Todaro |  |
| DC1-RPP-L3-CX-1235 |  | DC1-RPP-C21-04 A/B BMS/EPMS Programming | 1d | 2026-07-28 A | 2026-07-28 A | DC1-RPP-L3-CX-1230 | 100% | 2026-07-29 | 2026-07-29 | PRM | Commissioning | DH2100 | L3 | RPP |  | BAB |
|  | 05 | **DC1-DH2100-RPP-C21-05 Cx L3** |  | 2026-06-02 | 2026-07-28 |  |  |  |  |  |  |  |  |  |  |  |
| DC1-RPP-L3-CX-1240 |  | DC1-RPP-C21-05 A/B FTE | 1d | 2026-06-02 A | 2026-06-02 A | DC1-COD-L3-CX-1240, DC1-RPP-L2-1160, DC1-COD-L3-CX-1245 | 100% | 2026-06-25 | 2026-06-25 | ROS | Commissioning | DH2100 | L3 | RPP | Travis Todaro |  |
| DC1-RPP-L3-CX-1245 |  | DC1-RPP-C21-05 A/B L3 Startup | 2d | 2026-06-02 A | 2026-06-02 A | DC1-RPP-L3-CX-1240 | 100% | 2026-06-26 | 2026-06-29 | SQD | Commissioning | DH2100 | L3 | RPP | Travis Todaro |  |
| DC1-RPP-L3-CX-1250 |  | DC1-RPP-C21-05 A/B BMS/EPMS Programming | 1d | 2026-07-28 A | 2026-07-28 A | DC1-RPP-L3-CX-1245 | 100% | 2026-07-29 | 2026-07-29 | PRM | Commissioning | DH2100 | L3 | RPP |  | BAB |
|  | 06 | **DC1-DH2100-RPP-C21-06 Cx L3** |  | 2026-06-02 | 2026-07-28 |  |  |  |  |  |  |  |  |  |  |  |
| DC1-RPP-L3-CX-1255 |  | DC1-RPP-C21-06 A/B FTE | 1d | 2026-06-02 A | 2026-06-02 A | DC1-COD-L3-CX-1255, DC1-RPP-L2-1170, DC1-COD-L3-CX-1260 | 100% | 2026-06-25 | 2026-06-25 | ROS | Commissioning | DH2100 | L3 | RPP | Travis Todaro |  |
| DC1-RPP-L3-CX-1260 |  | DC1-RPP-C21-06 A/B L3 Startup | 2d | 2026-06-02 A | 2026-06-02 A | DC1-RPP-L3-CX-1255 | 100% | 2026-06-26 | 2026-06-29 | SQD | Commissioning | DH2100 | L3 | RPP | Travis Todaro |  |
| DC1-RPP-L3-CX-1265 |  | DC1-RPP-C21-06 A/B BMS/EPMS Programming | 1d | 2026-07-28 A | 2026-07-28 A | DC1-RPP-L3-CX-1260 | 100% | 2026-07-29 | 2026-07-29 | PRM | Commissioning | DH2100 | L3 | RPP |  | BAB |
|  | 04 | **DC1-DH2100-RPP-D21 Cx L3** |  | 2026-06-08 | 2026-07-28 |  |  |  |  |  |  |  |  |  |  |  |
|  | 01 | **DC1-DH2100-RPP-D21-01 Cx L3** |  | 2026-06-08 | 2026-07-28 |  |  |  |  |  |  |  |  |  |  |  |
| DC1-RPP-L3-CX-1270 |  | DC1-RPP-D21-01 A/B FTE | 1d | 2026-06-08 A | 2026-06-08 A | DC1-COD-L3-CX-1270, DC1-RPP-L2-1180, DC1-COD-L3-CX-1275 | 100% | 2026-06-26 | 2026-06-26 | ROS | Commissioning | DH2100 | L3 | RPP | Travis Todaro |  |
| DC1-RPP-L3-CX-1275 |  | DC1-RPP-D21-01 A/B L3 Startup | 2d | 2026-06-08 A | 2026-06-08 A | DC1-RPP-L3-CX-1270 | 100% | 2026-06-29 | 2026-06-30 | SQD | Commissioning | DH2100 | L3 | RPP | Travis Todaro |  |
| DC1-RPP-L3-CX-1280 |  | DC1-RPP-D21-01 A/B BMS/EPMS Programming | 1d | 2026-07-28 A | 2026-07-28 A | DC1-RPP-L3-CX-1275 | 100% | 2026-07-29 | 2026-07-29 | PRM | Commissioning | DH2100 | L3 | RPP |  | BAB |

Notes:
- DC1-RPP-L3-CX-1200: Steps: EC Startup Report; Vendor Startup
- DC1-RPP-L3-CX-1215: Steps: EC Startup Report; Vendor Startup
- DC1-RPP-L3-CX-1230: Steps: EC Startup Report; Vendor Startup
- DC1-RPP-L3-CX-1245: Steps: EC Startup Report; Vendor Startup
- DC1-RPP-L3-CX-1260: Steps: EC Startup Report; Vendor Startup
- DC1-RPP-L3-CX-1275: Steps: EC Startup Report; Vendor Startup

| ID | WBS | Activity | Duration | Start | Finish | Predecessors | Complete | Planned start | Planned finish | Vendor Responsible Party | Layton Discipline | Location | CX Level | Equipment | Layton Super | Contract |
| --- | --- | --- | --- | --- | --- | --- | --- | --- | --- | --- | --- | --- | --- | --- | --- | --- |
|  | 02 | **DC1-DH2100-RPP-D21-02 Cx L3** |  | 2026-06-08 | 2026-07-28 |  |  |  |  |  |  |  |  |  |  |  |
| DC1-RPP-L3-CX-1285 |  | DC1-RPP-D21-02 A/B FTE | 1d | 2026-06-08 A | 2026-06-08 A | DC1-COD-L3-CX-1285, DC1-RPP-L2-1190, DC1-COD-L3-CX-1290 | 100% | 2026-06-26 | 2026-06-26 | ROS | Commissioning | DH2100 | L3 | RPP | Travis Todaro |  |
| DC1-RPP-L3-CX-1290 |  | DC1-RPP-D21-02 A/B L3 Startup | 2d | 2026-06-08 A | 2026-06-08 A | DC1-RPP-L3-CX-1285 | 100% | 2026-06-29 | 2026-06-30 | SQD | Commissioning | DH2100 | L3 | RPP | Travis Todaro |  |
| DC1-RPP-L3-CX-1295 |  | DC1-RPP-D21-02 A/B BMS/EPMS Programming | 1d | 2026-07-28 A | 2026-07-28 A | DC1-RPP-L3-CX-1290 | 100% | 2026-07-29 | 2026-07-29 | PRM | Commissioning | DH2100 | L3 | RPP |  | BAB |
|  | 03 | **DC1-DH2100-RPP-D21-03 Cx L3** |  | 2026-06-08 | 2026-07-28 |  |  |  |  |  |  |  |  |  |  |  |
| DC1-RPP-L3-CX-1300 |  | DC1-RPP-D21-03 A/B FTE | 1d | 2026-06-08 A | 2026-06-08 A | DC1-COD-L3-CX-1300, DC1-RPP-L2-1200, DC1-COD-L3-CX-1305 | 100% | 2026-06-26 | 2026-06-26 | ROS | Commissioning | DH2100 | L3 | RPP | Travis Todaro |  |
| DC1-RPP-L3-CX-1305 |  | DC1-RPP-D21-03 A/B L3 Startup | 2d | 2026-06-08 A | 2026-06-08 A | DC1-RPP-L3-CX-1300 | 100% | 2026-06-29 | 2026-06-30 | SQD | Commissioning | DH2100 | L3 | RPP | Travis Todaro |  |
| DC1-RPP-L3-CX-1310 |  | DC1-RPP-D21-03 A/B BMS/EPMS Programming | 1d | 2026-07-28 A | 2026-07-28 A | DC1-RPP-L3-CX-1305 | 100% | 2026-07-29 | 2026-07-29 | PRM | Commissioning | DH2100 | L3 | RPP |  | BAB |
|  | 04 | **DC1-DH2100-RPP-D21-04 Cx L3** |  | 2026-06-08 | 2026-07-28 |  |  |  |  |  |  |  |  |  |  |  |
| DC1-RPP-L3-CX-1315 |  | DC1-RPP-D21-04 A/B FTE | 1d | 2026-06-08 A | 2026-06-08 A | DC1-COD-L3-CX-1315, DC1-RPP-L2-1210, DC1-COD-L3-CX-1320 | 100% | 2026-06-26 | 2026-06-26 | ROS | Commissioning | DH2100 | L3 | RPP | Travis Todaro |  |
| DC1-RPP-L3-CX-1320 |  | DC1-RPP-D21-04 A/B L3 Startup | 2d | 2026-06-08 A | 2026-06-08 A | DC1-RPP-L3-CX-1315 | 100% | 2026-06-29 | 2026-06-30 | SQD | Commissioning | DH2100 | L3 | RPP | Travis Todaro |  |
| DC1-RPP-L3-CX-1325 |  | DC1-RPP-D21-04 A/B BMS/EPMS Programming | 1d | 2026-07-28 A | 2026-07-28 A | DC1-RPP-L3-CX-1320 | 100% | 2026-07-29 | 2026-07-29 | PRM | Commissioning | DH2100 | L3 | RPP |  | BAB |
|  | 05 | **DC1-DH2100-RPP-D21-05 Cx L3** |  | 2026-06-08 | 2026-07-28 |  |  |  |  |  |  |  |  |  |  |  |
| DC1-RPP-L3-CX-1330 |  | DC1-RPP-D21-05 A/B FTE | 1d | 2026-06-08 A | 2026-06-08 A | DC1-COD-L3-CX-1330, DC1-RPP-L2-1220, DC1-COD-L3-CX-1335 | 100% | 2026-06-26 | 2026-06-26 | ROS | Commissioning | DH2100 | L3 | RPP | Travis Todaro |  |
| DC1-RPP-L3-CX-1335 |  | DC1-RPP-D21-05 A/B L3 Startup | 2d | 2026-06-08 A | 2026-06-08 A | DC1-RPP-L3-CX-1330 | 100% | 2026-06-29 | 2026-06-30 | SQD | Commissioning | DH2100 | L3 | RPP | Travis Todaro |  |
| DC1-RPP-L3-CX-1340 |  | DC1-RPP-D21-05 A/B BMS/EPMS Programming | 1d | 2026-07-28 A | 2026-07-28 A | DC1-RPP-L3-CX-1335 | 100% | 2026-07-29 | 2026-07-29 | PRM | Commissioning | DH2100 | L3 | RPP |  | BAB |
|  | 06 | **DC1-DH2100-RPP-D21-06 Cx L3** |  | 2026-06-08 | 2026-07-28 |  |  |  |  |  |  |  |  |  |  |  |
| DC1-RPP-L3-CX-1345 |  | DC1-RPP-D21-06 A/B FTE | 1d | 2026-06-08 A | 2026-06-08 A | DC1-COD-L3-CX-1345, DC1-RPP-L2-1230, DC1-COD-L3-CX-1350 | 100% | 2026-06-26 | 2026-06-26 | ROS | Commissioning | DH2100 | L3 | RPP | Travis Todaro |  |
| DC1-RPP-L3-CX-1350 |  | DC1-RPP-D21-06 A/B L3 Startup | 2d | 2026-06-08 A | 2026-06-08 A | DC1-RPP-L3-CX-1345 | 100% | 2026-06-29 | 2026-06-30 | SQD | Commissioning | DH2100 | L3 | RPP | Travis Todaro |  |
| DC1-RPP-L3-CX-1355 |  | DC1-RPP-D21-06 A/B BMS/EPMS Programming | 1d | 2026-07-28 A | 2026-07-28 A | DC1-RPP-L3-CX-1350 | 100% | 2026-07-29 | 2026-07-29 | PRM | Commissioning | DH2100 | L3 | RPP |  | BAB |
|  | 05 | **DC1-DH2100-RPP-E21 Cx L3** |  | 2026-06-08 | 2026-07-28 |  |  |  |  |  |  |  |  |  |  |  |
|  | 01 | **DC1-DH2100-RPP-E21-01 Cx L3** |  | 2026-06-08 | 2026-07-28 |  |  |  |  |  |  |  |  |  |  |  |
| DC1-RPP-L3-CX-1360 |  | DC1-RPP-E21-01 A/B FTE | 1d | 2026-06-08 A | 2026-06-08 A | DC1-COD-L3-CX-1360, DC1-RPP-L2-1240, DC1-COD-L3-CX-1365 | 100% | 2026-06-26 | 2026-06-26 | ROS | Commissioning | DH2100 | L3 | RPP | Travis Todaro |  |
| DC1-RPP-L3-CX-1365 |  | DC1-RPP-E21-01 A/B L3 Startup | 2d | 2026-06-08 A | 2026-06-08 A | DC1-RPP-L3-CX-1360 | 100% | 2026-06-29 | 2026-06-30 | SQD | Commissioning | DH2100 | L3 | RPP | Travis Todaro |  |
| DC1-RPP-L3-CX-1370 |  | DC1-RPP-E21-01 A/B BMS/EPMS Programming | 1d | 2026-07-28 A | 2026-07-28 A | DC1-RPP-L3-CX-1365 | 100% | 2026-07-29 | 2026-07-29 | PRM | Commissioning | DH2100 | L3 | RPP |  | BAB |

Notes:
- DC1-RPP-L3-CX-1290: Steps: EC Startup Report; Vendor Startup
- DC1-RPP-L3-CX-1305: Steps: EC Startup Report; Vendor Startup
- DC1-RPP-L3-CX-1320: Steps: EC Startup Report; Vendor Startup
- DC1-RPP-L3-CX-1335: Steps: EC Startup Report; Vendor Startup
- DC1-RPP-L3-CX-1350: Steps: EC Startup Report; Vendor Startup
- DC1-RPP-L3-CX-1365: Steps: EC Startup Report; Vendor Startup

| ID | WBS | Activity | Duration | Start | Finish | Predecessors | Complete | Planned start | Planned finish | Vendor Responsible Party | Layton Discipline | Location | CX Level | Equipment | Layton Super | Contract |
| --- | --- | --- | --- | --- | --- | --- | --- | --- | --- | --- | --- | --- | --- | --- | --- | --- |
|  | 02 | **DC1-DH2100-RPP-E21-02 Cx L3** |  | 2026-06-08 | 2026-07-28 |  |  |  |  |  |  |  |  |  |  |  |
| DC1-RPP-L3-CX-1375 |  | DC1-RPP-E21-02 A/B FTE | 1d | 2026-06-08 A | 2026-06-08 A | DC1-COD-L3-CX-1375, DC1-RPP-L2-1250, DC1-COD-L3-CX-1380 | 100% | 2026-06-26 | 2026-06-26 | ROS | Commissioning | DH2100 | L3 | RPP | Travis Todaro |  |
| DC1-RPP-L3-CX-1380 |  | DC1-RPP-E21-02 A/B L3 Startup | 2d | 2026-06-08 A | 2026-06-08 A | DC1-RPP-L3-CX-1375 | 100% | 2026-06-29 | 2026-06-30 | SQD | Commissioning | DH2100 | L3 | RPP | Travis Todaro |  |
| DC1-RPP-L3-CX-1385 |  | DC1-RPP-E21-02 A/B BMS/EPMS Programming | 1d | 2026-07-28 A | 2026-07-28 A | DC1-RPP-L3-CX-1380 | 100% | 2026-07-29 | 2026-07-29 | PRM | Commissioning | DH2100 | L3 | RPP |  | BAB |
|  | 03 | **DC1-DH2100-RPP-E21-03 Cx L3** |  | 2026-06-08 | 2026-07-28 |  |  |  |  |  |  |  |  |  |  |  |
| DC1-RPP-L3-CX-1390 |  | DC1-RPP-E21-03 A/B FTE | 1d | 2026-06-08 A | 2026-06-08 A | DC1-COD-L3-CX-1390, DC1-RPP-L2-1260, DC1-COD-L3-CX-1395 | 100% | 2026-06-26 | 2026-06-26 | ROS | Commissioning | DH2100 | L3 | RPP | Travis Todaro |  |
| DC1-RPP-L3-CX-1395 |  | DC1-RPP-E21-03 A/B L3 Startup | 2d | 2026-06-08 A | 2026-06-08 A | DC1-RPP-L3-CX-1390 | 100% | 2026-06-29 | 2026-06-30 | SQD | Commissioning | DH2100 | L3 | RPP | Travis Todaro |  |
| DC1-RPP-L3-CX-1400 |  | DC1-RPP-E21-03 A/B BMS/EPMS Programming | 1d | 2026-07-28 A | 2026-07-28 A | DC1-RPP-L3-CX-1395 | 100% | 2026-07-29 | 2026-07-29 | PRM | Commissioning | DH2100 | L3 | RPP |  | BAB |
|  | 04 | **DC1-DH2100-RPP-E21-04 Cx L3** |  | 2026-06-08 | 2026-07-28 |  |  |  |  |  |  |  |  |  |  |  |
| DC1-RPP-L3-CX-1405 |  | DC1-RPP-E21-04 A/B FTE | 1d | 2026-06-08 A | 2026-06-08 A | DC1-COD-L3-CX-1405, DC1-RPP-L2-1270, DC1-COD-L3-CX-1410 | 100% | 2026-06-26 | 2026-06-26 | ROS | Commissioning | DH2100 | L3 | RPP | Travis Todaro |  |
| DC1-RPP-L3-CX-1410 |  | DC1-RPP-E21-04 A/B L3 Startup | 2d | 2026-06-08 A | 2026-06-08 A | DC1-RPP-L3-CX-1405 | 100% | 2026-06-29 | 2026-06-30 | SQD | Commissioning | DH2100 | L3 | RPP | Travis Todaro |  |
| DC1-RPP-L3-CX-1415 |  | DC1-RPP-E21-04 A/B BMS/EPMS Programming | 1d | 2026-07-28 A | 2026-07-28 A | DC1-RPP-L3-CX-1410 | 100% | 2026-07-29 | 2026-07-29 | PRM | Commissioning | DH2100 | L3 | RPP |  | BAB |
|  | 05 | **DC1-DH2100-RPP-E21-05 Cx L3** |  | 2026-06-08 | 2026-07-28 |  |  |  |  |  |  |  |  |  |  |  |
| DC1-RPP-L3-CX-1420 |  | DC1-RPP-E21-05 A/B FTE | 1d | 2026-06-08 A | 2026-06-08 A | DC1-COD-L3-CX-1420, DC1-RPP-L2-1280, DC1-COD-L3-CX-1425 | 100% | 2026-06-26 | 2026-06-26 | ROS | Commissioning | DH2100 | L3 | RPP | Travis Todaro |  |
| DC1-RPP-L3-CX-1425 |  | DC1-RPP-E21-05 A/B L3 Startup | 2d | 2026-06-08 A | 2026-06-08 A | DC1-RPP-L3-CX-1420 | 100% | 2026-06-29 | 2026-06-30 | SQD | Commissioning | DH2100 | L3 | RPP | Travis Todaro |  |
| DC1-RPP-L3-CX-1430 |  | DC1-RPP-E21-05 A/B BMS/EPMS Programming | 1d | 2026-07-28 A | 2026-07-28 A | DC1-RPP-L3-CX-1425 | 100% | 2026-07-29 | 2026-07-29 | PRM | Commissioning | DH2100 | L3 | RPP |  | BAB |
|  | 06 | **DC1-DH2100-RPP-E21-06 Cx L3** |  | 2026-06-08 | 2026-07-28 |  |  |  |  |  |  |  |  |  |  |  |
| DC1-RPP-L3-CX-1435 |  | DC1-RPP-E21-06 A/B FTE | 1d | 2026-06-08 A | 2026-06-08 A | DC1-COD-L3-CX-1435, DC1-RPP-L2-1290, DC1-COD-L3-CX-1440 | 100% | 2026-06-26 | 2026-06-26 | ROS | Commissioning | DH2100 | L3 | RPP | Travis Todaro |  |
| DC1-RPP-L3-CX-1440 |  | DC1-RPP-E21-06 A/B L3 Startup | 2d | 2026-06-08 A | 2026-06-08 A | DC1-RPP-L3-CX-1435 | 100% | 2026-06-29 | 2026-06-30 | SQD | Commissioning | DH2100 | L3 | RPP | Travis Todaro |  |
| DC1-RPP-L3-CX-1445 |  | DC1-RPP-E21-06 A/B BMS/EPMS Programming | 1d | 2026-07-28 A | 2026-07-28 A | DC1-RPP-L3-CX-1440 | 100% | 2026-07-29 | 2026-07-29 | PRM | Commissioning | DH2100 | L3 | RPP |  | BAB |
|  | 06 | **DC1-DH2100-RPP-F21 Cx L3** |  | 2026-06-08 | 2026-07-28 |  |  |  |  |  |  |  |  |  |  |  |
|  | 01 | **DC1-DH2100-RPP-F21-01 Cx L3** |  | 2026-06-08 | 2026-07-28 |  |  |  |  |  |  |  |  |  |  |  |
| DC1-RPP-L3-CX-1450 |  | DC1-RPP-F21-01 A/B FTE | 1d | 2026-06-08 A | 2026-06-08 A | DC1-COD-L3-CX-1450, DC1-RPP-L2-1300, DC1-COD-L3-CX-1455 | 100% | 2026-06-26 | 2026-06-26 | ROS | Commissioning | DH2100 | L3 | RPP | Travis Todaro |  |
| DC1-RPP-L3-CX-1455 |  | DC1-RPP-F21-01 A/B L3 Startup | 2d | 2026-06-08 A | 2026-06-08 A | DC1-RPP-L3-CX-1450 | 100% | 2026-06-29 | 2026-06-30 | SQD | Commissioning | DH2100 | L3 | RPP | Travis Todaro |  |
| DC1-RPP-L3-CX-1460 |  | DC1-RPP-F21-01 A/B BMS/EPMS Programming | 1d | 2026-07-28 A | 2026-07-28 A | DC1-RPP-L3-CX-1455 | 100% | 2026-07-29 | 2026-07-29 | PRM | Commissioning | DH2100 | L3 | RPP |  | BAB |

Notes:
- DC1-RPP-L3-CX-1380: Steps: EC Startup Report; Vendor Startup
- DC1-RPP-L3-CX-1395: Steps: EC Startup Report; Vendor Startup
- DC1-RPP-L3-CX-1410: Steps: EC Startup Report; Vendor Startup
- DC1-RPP-L3-CX-1425: Steps: EC Startup Report; Vendor Startup
- DC1-RPP-L3-CX-1440: Steps: EC Startup Report; Vendor Startup
- DC1-RPP-L3-CX-1455: Steps: EC Startup Report; Vendor Startup

| ID | WBS | Activity | Duration | Start | Finish | Predecessors | Complete | Planned start | Planned finish | Vendor Responsible Party | Layton Discipline | Location | CX Level | Equipment | Layton Super | Contract |
| --- | --- | --- | --- | --- | --- | --- | --- | --- | --- | --- | --- | --- | --- | --- | --- | --- |
|  | 02 | **DC1-DH2100-RPP-F21-02 Cx L3** |  | 2026-06-08 | 2026-07-28 |  |  |  |  |  |  |  |  |  |  |  |
| DC1-RPP-L3-CX-1465 |  | DC1-RPP-F21-02 A/B FTE | 1d | 2026-06-08 A | 2026-06-08 A | DC1-COD-L3-CX-1465, DC1-RPP-L2-1310, DC1-COD-L3-CX-1470 | 100% | 2026-06-26 | 2026-06-26 | ROS | Commissioning | DH2100 | L3 | RPP | Travis Todaro |  |
| DC1-RPP-L3-CX-1470 |  | DC1-RPP-F21-02 A/B L3 Startup | 2d | 2026-06-08 A | 2026-06-08 A | DC1-RPP-L3-CX-1465 | 100% | 2026-06-29 | 2026-06-30 | SQD | Commissioning | DH2100 | L3 | RPP | Travis Todaro |  |
| DC1-RPP-L3-CX-1475 |  | DC1-RPP-F21-02 A/B BMS/EPMS Programming | 1d | 2026-07-28 A | 2026-07-28 A | DC1-RPP-L3-CX-1470 | 100% | 2026-07-29 | 2026-07-29 | PRM | Commissioning | DH2100 | L3 | RPP |  | BAB |
|  | 03 | **DC1-DH2100-RPP-F21-03 Cx L3** |  | 2026-06-08 | 2026-07-28 |  |  |  |  |  |  |  |  |  |  |  |
| DC1-RPP-L3-CX-1480 |  | DC1-RPP-F21-03 A/B FTE | 1d | 2026-06-08 A | 2026-06-08 A | DC1-COD-L3-CX-1480, DC1-RPP-L2-1320, DC1-COD-L3-CX-1485 | 100% | 2026-06-26 | 2026-06-26 | ROS | Commissioning | DH2100 | L3 | RPP | Travis Todaro |  |
| DC1-RPP-L3-CX-1485 |  | DC1-RPP-F21-03 A/B L3 Startup | 2d | 2026-06-08 A | 2026-06-08 A | DC1-RPP-L3-CX-1480 | 100% | 2026-06-29 | 2026-06-30 | SQD | Commissioning | DH2100 | L3 | RPP | Travis Todaro |  |
| DC1-RPP-L3-CX-1490 |  | DC1-RPP-F21-03 A/B BMS/EPMS Programming | 1d | 2026-07-28 A | 2026-07-28 A | DC1-RPP-L3-CX-1485 | 100% | 2026-07-29 | 2026-07-29 | PRM | Commissioning | DH2100 | L3 | RPP |  | BAB |
|  | 04 | **DC1-DH2100-RPP-F21-04 Cx L3** |  | 2026-06-08 | 2026-07-28 |  |  |  |  |  |  |  |  |  |  |  |
| DC1-RPP-L3-CX-1495 |  | DC1-RPP-F21-04 A/B FTE | 1d | 2026-06-08 A | 2026-06-08 A | DC1-COD-L3-CX-1495, DC1-RPP-L2-1330, DC1-COD-L3-CX-1500 | 100% | 2026-06-26 | 2026-06-26 | ROS | Commissioning | DH2100 | L3 | RPP | Travis Todaro |  |
| DC1-RPP-L3-CX-1500 |  | DC1-RPP-F21-04 A/B L3 Startup | 2d | 2026-06-08 A | 2026-06-08 A | DC1-RPP-L3-CX-1495 | 100% | 2026-06-29 | 2026-06-30 | SQD | Commissioning | DH2100 | L3 | RPP | Travis Todaro |  |
| DC1-RPP-L3-CX-1505 |  | DC1-RPP-F21-04 A/B BMS/EPMS Programming | 1d | 2026-07-28 A | 2026-07-28 A | DC1-RPP-L3-CX-1500 | 100% | 2026-07-29 | 2026-07-29 | PRM | Commissioning | DH2100 | L3 | RPP |  | BAB |
|  | 05 | **DC1-DH2100-RPP-F21-05 Cx L3** |  | 2026-06-08 | 2026-07-28 |  |  |  |  |  |  |  |  |  |  |  |
| DC1-RPP-L3-CX-1510 |  | DC1-RPP-F21-05 A/B FTE | 1d | 2026-06-08 A | 2026-06-08 A | DC1-COD-L3-CX-1510, DC1-RPP-L2-1340, DC1-COD-L3-CX-1515 | 100% | 2026-06-26 | 2026-06-26 | ROS | Commissioning | DH2100 | L3 | RPP | Travis Todaro |  |
| DC1-RPP-L3-CX-1515 |  | DC1-RPP-F21-05 A/B L3 Startup | 2d | 2026-06-08 A | 2026-06-08 A | DC1-RPP-L3-CX-1510 | 100% | 2026-06-29 | 2026-06-30 | SQD | Commissioning | DH2100 | L3 | RPP | Travis Todaro |  |
| DC1-RPP-L3-CX-1520 |  | DC1-RPP-F21-05 A/B BMS/EPMS Programming | 1d | 2026-07-28 A | 2026-07-28 A | DC1-RPP-L3-CX-1515 | 100% | 2026-07-29 | 2026-07-29 | PRM | Commissioning | DH2100 | L3 | RPP |  | BAB |
|  | 06 | **DC1-DH2100-RPP-F21-06 Cx L3** |  | 2026-06-08 | 2026-07-28 |  |  |  |  |  |  |  |  |  |  |  |
| DC1-RPP-L3-CX-1525 |  | DC1-RPP-F21-06 A/B FTE | 1d | 2026-06-08 A | 2026-06-08 A | DC1-COD-L3-CX-1525, DC1-RPP-L2-1350, DC1-COD-L3-CX-1530 | 100% | 2026-06-26 | 2026-06-26 | ROS | Commissioning | DH2100 | L3 | RPP | Travis Todaro |  |
| DC1-RPP-L3-CX-1530 |  | DC1-RPP-F21-06 A/B L3 Startup | 2d | 2026-06-08 A | 2026-06-08 A | DC1-RPP-L3-CX-1525 | 100% | 2026-06-29 | 2026-06-30 | SQD | Commissioning | DH2100 | L3 | RPP | Travis Todaro |  |
| DC1-RPP-L3-CX-1535 |  | DC1-RPP-F21-06 A/B BMS/EPMS Programming | 1d | 2026-07-28 A | 2026-07-28 A | DC1-RPP-L3-CX-1530 | 100% | 2026-07-29 | 2026-07-29 | PRM | Commissioning | DH2100 | L3 | RPP |  | BAB |
|  | 08 | **DC1-DH2100 MOD-02 Cx L3** |  | 2026-05-07 | 2026-07-28 |  |  |  |  |  |  |  |  |  |  |  |
|  | 01 | **DC1-DH2100 MOD-A21-02 Cx L3** |  | 2026-05-07 | 2026-07-28 |  |  |  |  |  |  |  |  |  |  |  |
| DC1-MOD2-L3-Cx-1000 |  | DC1-MOD-A21-02 FTE | 1d | 2026-05-07 A | 2026-05-07 A | DC1-SWD-L3-CX-1000, DC1-MOD02-L2-1000 | 100% |  |  | ROS | Commissioning | DH2100 | L3 | MOD-02 |  |  |
| DC1-MOD2-L3-Cx-1010 |  | DC1-MOD-A21-02 L3 Startup | 2d | 2026-05-08 A | 2026-07-20 A | DC1-MOD2-L3-Cx-1000, QTS - 26611 | 100% | 2026-05-08 | 2026-05-11 | PHE | Commissioning | DH2100 | L3 | MOD-02 |  | BAB |
| DC1-MOD2-L3-Cx-1020 |  | DC1-MOD-A21-02 BMS/EPMS Programming | 1d | 2026-07-28 A | 2026-07-28 A | DC1-MOD2-L3-Cx-1010 | 100% | 2026-07-29 | 2026-07-29 | PRM | Commissioning | DH2100 | L3 | MOD-02 |  | BAB |

Notes:
- DC1-RPP-L3-CX-1470: Steps: EC Startup Report; Vendor Startup
- DC1-RPP-L3-CX-1485: Steps: EC Startup Report; Vendor Startup
- DC1-RPP-L3-CX-1500: Steps: EC Startup Report; Vendor Startup
- DC1-RPP-L3-CX-1515: Steps: EC Startup Report; Vendor Startup
- DC1-RPP-L3-CX-1530: Steps: EC Startup Report; Vendor Startup
- DC1-MOD2-L3-Cx-1010: Steps: EC Startup Report; Vendor Startup

| ID | WBS | Activity | Duration | Start | Finish | Predecessors | Complete | Planned start | Planned finish | Vendor Responsible Party | Layton Discipline | Location | CX Level | Equipment | Contract |
| --- | --- | --- | --- | --- | --- | --- | --- | --- | --- | --- | --- | --- | --- | --- | --- |
|  | 02 | **DC1-DH2100 MOD-B21-02 Cx L3** |  | 2026-05-07 | 2026-07-28 |  |  |  |  |  |  |  |  |  |  |
| DC1-MOD2-L3-Cx-1030 |  | DC1-MOD-B21-02 FTE | 1d | 2026-05-07 A | 2026-05-07 A | DC1-SWD-L3-CX-1030, DC1-MOD02-L2-1010 | 100% | 2026-05-20 | 2026-05-20 | ROS | Commissioning | DH2100 | L3 | MOD-02 |  |
| DC1-MOD2-L3-Cx-1040 |  | DC1-MOD-B21-02 L3 Startup | 2d | 2026-05-08 A | 2026-07-20 A | DC1-MOD2-L3-Cx-1030, QTS - 26611 | 100% | 2026-05-08 | 2026-05-11 | PHE | Commissioning | DH2100 | L3 | MOD-02 | BAB |
| DC1-MOD2-L3-Cx-1050 |  | DC1-MOD-B21-02 BMS/EPMS Programming | 1d | 2026-07-28 A | 2026-07-28 A | DC1-MOD2-L3-Cx-1040 | 100% | 2026-07-29 | 2026-07-29 | PRM | Commissioning | DH2100 | L3 | MOD-02 | BAB |
|  | 03 | **DC1-DH2100 MOD-C21-02 Cx L3** |  | 2026-05-07 | 2026-07-28 |  |  |  |  |  |  |  |  |  |  |
| DC1-MOD2-L3-Cx-1060 |  | DC1-MOD-C21-02 FTE | 1d | 2026-05-07 A | 2026-05-07 A | DC1-SWD-L3-CX-1060, DC1-MOD02-L2-1020 | 100% | 2026-05-20 | 2026-05-20 | ROS | Commissioning | DH2100 | L3 | MOD-02 |  |
| DC1-MOD2-L3-Cx-1070 |  | DC1-MOD-C21-02 L3 Startup | 2d | 2026-05-08 A | 2026-07-20 A | DC1-MOD2-L3-Cx-1060, QTS - 26611 | 100% | 2026-05-08 | 2026-05-11 | PHE | Commissioning | DH2100 | L3 | MOD-02 | BAB |
| DC1-MOD2-L3-Cx-1080 |  | DC1-MOD-C21-02 BMS/EPMS Programming | 1d | 2026-07-28 A | 2026-07-28 A | DC1-MOD2-L3-Cx-1070 | 100% | 2026-07-29 | 2026-07-29 | PRM | Commissioning | DH2100 | L3 | MOD-02 | BAB |
|  | 04 | **DC1-DH2100 MOD-D21-02 Cx L3** |  | 2026-05-07 | 2026-07-28 |  |  |  |  |  |  |  |  |  |  |
| DC1-MOD2-L3-Cx-1090 |  | DC1-MOD-D21-02 FTE | 1d | 2026-05-07 A | 2026-05-07 A | DC1-SWD-L3-CX-1090, DC1-MOD02-L2-1030 | 100% | 2026-05-20 | 2026-05-20 | ROS | Commissioning | DH2100 | L3 | MOD-02 |  |
| DC1-MOD2-L3-Cx-1100 |  | DC1-MOD-D21-02 L3 Startup | 2d | 2026-05-08 A | 2026-07-20 A | DC1-MOD2-L3-Cx-1090, QTS - 26611 | 100% | 2026-05-08 | 2026-05-11 | PHE | Commissioning | DH2100 | L3 | MOD-02 | BAB |
| DC1-MOD2-L3-Cx-1110 |  | DC1-MOD-D21-02 BMS/EPMS Programming | 1d | 2026-07-28 A | 2026-07-28 A | DC1-MOD2-L3-Cx-1100 | 100% | 2026-07-29 | 2026-07-29 | PRM | Commissioning | DH2100 | L3 | MOD-02 | BAB |
|  | 05 | **DC1-DH2100 MOD-E21-02 Cx L3** |  | 2026-05-07 | 2026-07-28 |  |  |  |  |  |  |  |  |  |  |
| DC1-MOD2-L3-Cx-1120 |  | DC1-MOD-E21-02 FTE | 1d | 2026-05-07 A | 2026-05-07 A | DC1-SWD-L3-CX-1120, DC1-MOD02-L2-1040 | 100% | 2026-05-20 | 2026-05-20 | ROS | Commissioning | DH2100 | L3 | MOD-02 |  |
| DC1-MOD2-L3-Cx-1130 |  | DC1-MOD-E21-02 L3 Startup | 2d | 2026-05-08 A | 2026-07-20 A | DC1-MOD2-L3-Cx-1120, QTS - 26611 | 100% | 2026-05-08 | 2026-05-11 | PHE | Commissioning | DH2100 | L3 | MOD-02 | BAB |
| DC1-MOD2-L3-Cx-1140 |  | DC1-MOD-E21-02 BMS/EPMS Programming | 1d | 2026-07-28 A | 2026-07-28 A | DC1-MOD2-L3-Cx-1130 | 100% | 2026-07-29 | 2026-07-29 | PRM | Commissioning | DH2100 | L3 | MOD-02 | BAB |
|  | 06 | **DC1-DH2100 MOD-F21-02 Cx L3** |  | 2026-05-07 | 2026-07-28 |  |  |  |  |  |  |  |  |  |  |
| DC1-MOD2-L3-Cx-1150 |  | DC1-MOD-F21-02 FTE | 1d | 2026-05-07 A | 2026-05-07 A | DC1-SWD-L3-CX-1150, DC1-MOD02-L2-1050 | 100% | 2026-05-20 | 2026-05-20 | ROS | Commissioning | DH2100 | L3 | MOD-02 |  |
| DC1-MOD2-L3-Cx-1160 |  | DC1-MOD-F21-02 L3 Startup | 2d | 2026-05-08 A | 2026-07-20 A | DC1-MOD2-L3-Cx-1150, QTS - 26611 | 100% | 2026-05-08 | 2026-05-11 | PHE | Commissioning | DH2100 | L3 | MOD-02 | BAB |
| DC1-MOD2-L3-Cx-1170 |  | DC1-MOD-F21-02 BMS/EPMS Programming | 1d | 2026-07-28 A | 2026-07-28 A | DC1-MOD2-L3-Cx-1160 | 100% | 2026-07-29 | 2026-07-29 | PRM | Commissioning | DH2100 | L3 | MOD-02 | BAB |
|  | 07 | **DC1-DH2100 MOD-R21-02 Cx L3** |  | 2026-05-07 | 2026-07-28 |  |  |  |  |  |  |  |  |  |  |
| DC1-MOD2-L3-Cx-1180 |  | DC1-MOD-R21-02 FTE | 1d | 2026-05-07 A | 2026-05-07 A | DC1-SWD-L3-CX-1180, DC1-MOD02-L2-1060 | 100% | 2026-05-20 | 2026-05-20 | ROS | Commissioning | DH2100 | L3 | MOD-02 |  |
| DC1-MOD2-L3-Cx-1190 |  | DC1-MOD-R21-02 L3 Startup | 2d | 2026-05-08 A | 2026-07-20 A | DC1-MOD2-L3-Cx-1180, QTS - 26611 | 100% | 2026-05-08 | 2026-05-11 | PHE | Commissioning | DH2100 | L3 | MOD-02 | BAB |
| DC1-MOD2-L3-Cx-1200 |  | DC1-MOD-R21-02 BMS/EPMS Programming | 1d | 2026-07-28 A | 2026-07-28 A | DC1-MOD2-L3-Cx-1190 | 100% | 2026-07-29 | 2026-07-29 | PRM | Commissioning | DH2100 | L3 | MOD-02 | BAB |

Notes:
- DC1-MOD2-L3-Cx-1040: Steps: EC Startup Report; Vendor Startup
- DC1-MOD2-L3-Cx-1070: Steps: EC Startup Report; Vendor Startup
- DC1-MOD2-L3-Cx-1100: Steps: EC Startup Report; Vendor Startup
- DC1-MOD2-L3-Cx-1130: Steps: EC Startup Report; Vendor Startup
- DC1-MOD2-L3-Cx-1160: Steps: EC Startup Report; Vendor Startup
- DC1-MOD2-L3-Cx-1190: Steps: EC Startup Report; Vendor Startup

| ID | WBS | Activity | Duration | Start | Finish | Predecessors | Complete | Planned start | Planned finish | Vendor Responsible Party | Layton Discipline | Location | CX Level | Equipment | Contract |
| --- | --- | --- | --- | --- | --- | --- | --- | --- | --- | --- | --- | --- | --- | --- | --- |
|  | 09 | **DC1-DH2100 MOD-03 Cx L3** |  | 2026-05-28 | 2026-07-28 |  |  |  |  |  |  |  |  |  |  |
|  | 01 | **DC1-DH2100 MOD-A21-03 Cx L3** |  | 2026-05-28 | 2026-07-28 |  |  |  |  |  |  |  |  |  |  |
| DC1-MOD3-L3-Cx-1000 |  | DC1-MOD-A21-03 FTE | 1d | 2026-05-28 A | 2026-05-28 A | DC1-UPSM-L3-CX-1000, DC1-MOD03-L2-1000 | 100% | 2026-05-26 | 2026-05-26 | ROS | Commissioning | DH2100 | L3 | MOD-03 |  |
| DC1-MOD3-L3-Cx-1010 |  | DC1-MOD-A21-03 L3 Startup | 2d | 2026-06-02 A | 2026-07-20 A | DC1-MOD3-L3-Cx-1000, QTS - 26611 | 100% | 2026-06-04 | 2026-06-05 | PHE | Commissioning | DH2100 | L3 | MOD-03 | BAB |
| DC1-MOD3-L3-Cx-1020 |  | DC1-MOD-A21-03 BMS/EPMS Programming | 1d | 2026-07-28 A | 2026-07-28 A | DC1-MOD3-L3-Cx-1010 | 100% | 2026-07-29 | 2026-07-29 | PRM | Commissioning | DH2100 | L3 | MOD-03 | BAB |
|  | 02 | **DC1-DH2100 MOD-B21-03 Cx L3** |  | 2026-05-28 | 2026-07-28 |  |  |  |  |  |  |  |  |  |  |
| DC1-MOD3-L3-Cx-1030 |  | DC1-MOD-B21-03 FTE | 1d | 2026-05-28 A | 2026-05-28 A | DC1-UPSM-L3-CX-1030, DC1-MOD03-L2-1010 | 100% | 2026-06-03 | 2026-06-03 | ROS | Commissioning | DH2100 | L3 | MOD-03 |  |
| DC1-MOD3-L3-Cx-1040 |  | DC1-MOD-B21-03 L3 Startup | 2d | 2026-06-02 A | 2026-07-20 A | DC1-MOD3-L3-Cx-1030, QTS - 26611 | 100% | 2026-06-04 | 2026-06-05 | PHE | Commissioning | DH2100 | L3 | MOD-03 | BAB |
| DC1-MOD3-L3-Cx-1050 |  | DC1-MOD-B21-03 BMS/EPMS Programming | 1d | 2026-07-28 A | 2026-07-28 A | DC1-MOD3-L3-Cx-1040 | 100% | 2026-07-29 | 2026-07-29 | PRM | Commissioning | DH2100 | L3 | MOD-03 | BAB |
|  | 03 | **DC1-DH2100 MOD-C21-03 Cx L3** |  | 2026-05-28 | 2026-07-28 |  |  |  |  |  |  |  |  |  |  |
| DC1-MOD3-L3-Cx-1060 |  | DC1-MOD-C21-03 FTE | 1d | 2026-05-28 A | 2026-05-28 A | DC1-UPSM-L3-CX-1060, DC1-MOD03-L2-1020 | 100% | 2026-06-03 | 2026-06-03 | ROS | Commissioning | DH2100 | L3 | MOD-03 |  |
| DC1-MOD3-L3-Cx-1070 |  | DC1-MOD-C21-03 L3 Startup | 2d | 2026-06-02 A | 2026-07-20 A | DC1-MOD3-L3-Cx-1060, QTS - 26611 | 100% | 2026-06-04 | 2026-06-05 | PHE | Commissioning | DH2100 | L3 | MOD-03 | BAB |
| DC1-MOD3-L3-Cx-1080 |  | DC1-MOD-C21-03 BMS/EPMS Programming | 1d | 2026-07-28 A | 2026-07-28 A | DC1-MOD3-L3-Cx-1070 | 100% | 2026-07-29 | 2026-07-29 | PRM | Commissioning | DH2100 | L3 | MOD-03 | BAB |
|  | 04 | **DC1-DH2100 MOD-D21-03 Cx L3** |  | 2026-05-28 | 2026-07-28 |  |  |  |  |  |  |  |  |  |  |
| DC1-MOD3-L3-Cx-1090 |  | DC1-MOD-D21-03 FTE | 1d | 2026-05-28 A | 2026-05-28 A | DC1-UPSM-L3-CX-1090, DC1-MOD03-L2-1030 | 100% | 2026-06-03 | 2026-06-03 | ROS | Commissioning | DH2100 | L3 | MOD-03 |  |
| DC1-MOD3-L3-Cx-1100 |  | DC1-MOD-D21-03 L3 Startup | 2d | 2026-06-02 A | 2026-07-20 A | DC1-MOD3-L3-Cx-1090, QTS - 26611 | 100% | 2026-06-04 | 2026-06-05 | PHE | Commissioning | DH2100 | L3 | MOD-03 | BAB |
| DC1-MOD3-L3-Cx-1110 |  | DC1-MOD-D21-03 BMS/EPMS Programming | 1d | 2026-07-28 A | 2026-07-28 A | DC1-MOD3-L3-Cx-1100 | 100% | 2026-07-29 | 2026-07-29 | PRM | Commissioning | DH2100 | L3 | MOD-03 | BAB |
|  | 05 | **DC1-DH2100 MOD-E21-03 Cx L3** |  | 2026-05-28 | 2026-07-28 |  |  |  |  |  |  |  |  |  |  |
| DC1-MOD3-L3-Cx-1120 |  | DC1-MOD-E21-03 FTE | 1d | 2026-05-28 A | 2026-05-28 A | DC1-UPSM-L3-CX-1120, DC1-MOD03-L2-1040 | 100% | 2026-06-03 | 2026-06-03 | ROS | Commissioning | DH2100 | L3 | MOD-03 |  |
| DC1-MOD3-L3-Cx-1130 |  | DC1-MOD-E21-03 L3 Startup | 2d | 2026-06-02 A | 2026-07-20 A | DC1-MOD3-L3-Cx-1120, QTS - 26611 | 100% | 2026-06-04 | 2026-06-05 | PHE | Commissioning | DH2100 | L3 | MOD-03 | BAB |
| DC1-MOD3-L3-Cx-1140 |  | DC1-MOD-E21-03 BMS/EPMS Programming | 1d | 2026-07-28 A | 2026-07-28 A | DC1-MOD3-L3-Cx-1130 | 100% | 2026-07-29 | 2026-07-29 | PRM | Commissioning | DH2100 | L3 | MOD-03 | BAB |
|  | 06 | **DC1-DH2100 MOD-F21-03 Cx L3** |  | 2026-05-28 | 2026-07-28 |  |  |  |  |  |  |  |  |  |  |
| DC1-MOD3-L3-Cx-1150 |  | DC1-MOD-F21-03 FTE | 1d | 2026-05-28 A | 2026-05-28 A | DC1-UPSM-L3-CX-1150, DC1-MOD03-L2-1050 | 100% | 2026-06-03 | 2026-06-03 | ROS | Commissioning | DH2100 | L3 | MOD-03 |  |
| DC1-MOD3-L3-Cx-1160 |  | DC1-MOD-F21-03 L3 Startup | 2d | 2026-06-02 A | 2026-07-20 A | DC1-MOD3-L3-Cx-1150, QTS - 26611 | 100% | 2026-06-04 | 2026-06-05 | PHE | Commissioning | DH2100 | L3 | MOD-03 | BAB |
| DC1-MOD3-L3-Cx-1170 |  | DC1-MOD-F21-03 BMS/EPMS Programming | 1d | 2026-07-28 A | 2026-07-28 A | DC1-MOD3-L3-Cx-1160 | 100% | 2026-07-29 | 2026-07-29 | PRM | Commissioning | DH2100 | L3 | MOD-03 | BAB |

Notes:
- DC1-MOD3-L3-Cx-1010: Steps: EC Startup Report; Vendor Startup
- DC1-MOD3-L3-Cx-1040: Steps: EC Startup Report; Vendor Startup
- DC1-MOD3-L3-Cx-1070: Steps: EC Startup Report; Vendor Startup
- DC1-MOD3-L3-Cx-1100: Steps: EC Startup Report; Vendor Startup
- DC1-MOD3-L3-Cx-1130: Steps: EC Startup Report; Vendor Startup
- DC1-MOD3-L3-Cx-1160: Steps: EC Startup Report; Vendor Startup

| ID | WBS | Activity | Duration | Start | Finish | Predecessors | Complete | Planned start | Planned finish | Vendor Responsible Party | Layton Discipline | Location | CX Level | Equipment | Contract |
| --- | --- | --- | --- | --- | --- | --- | --- | --- | --- | --- | --- | --- | --- | --- | --- |
|  | 07 | **DC1-DH2100 MOD-R21-03 Cx L3** |  | 2026-05-28 | 2026-07-28 |  |  |  |  |  |  |  |  |  |  |
| DC1-MOD3-L3-Cx-1180 |  | DC1-MOD-R21-03 FTE | 1d | 2026-05-28 A | 2026-05-28 A | DC1-UPSM-L3-CX-1180, DC1-MOD03-L2-1060 | 100% | 2026-06-03 | 2026-06-03 | ROS | Commissioning | DH2100 | L3 | MOD-03 |  |
| DC1-MOD3-L3-Cx-1190 |  | DC1-MOD-R21-03 L3 Startup | 2d | 2026-06-02 A | 2026-07-20 A | DC1-MOD3-L3-Cx-1180, QTS - 26611 | 100% | 2026-06-04 | 2026-06-05 | PHE | Commissioning | DH2100 | L3 | MOD-03 | BAB |
| DC1-MOD3-L3-Cx-1200 |  | DC1-MOD-R21-03 BMS/EPMS Programming | 1d | 2026-07-28 A | 2026-07-28 A | DC1-MOD3-L3-Cx-1190 | 100% | 2026-07-29 | 2026-07-29 | PRM | Commissioning | DH2100 | L3 | MOD-03 | BAB |
|  | 10 | **DC1-DH2100 CHLR-1RT40 Cx L3** |  | 2026-05-01 | 2026-05-28 |  |  |  |  |  |  |  |  |  |  |
|  | 01 | **DC1-DH2100 CHLR-1RT40-A21 Cx L3** |  | 2026-05-01 | 2026-05-28 |  |  |  |  |  |  |  |  |  |  |
| DC1-CHLR-L3-Cx-1000 |  | DC1-CHLR-1RT40-A21 FTE | 1d | 2026-05-01 A | 2026-05-01 A | DC1-CHLR-L2-1000, DC1-SWD-L3-CX-1000 SS | 100% |  |  | ROS | Commissioning | DH2100 | L3 | CHILLER |  |
| DC1-CHLR-L3-Cx-1005 |  | DC1-CHLR-1RT40-A21 Heat Up | 2d | 2026-05-04 A | 2026-05-04 A | DC1-CHLR-L3-Cx-1000 | 100% | 2026-06-08 | 2026-06-09 | LAY | Commissioning | DH2100 | L3 | CHILLER |  |
| DC1-CHLR-L3-Cx-1010 |  | DC1-CHLR-1RT40-A21 L3 Startup | 2d | 2026-05-05 A | 2026-05-27 A | DC1-DH2100-LB-1010 FF, DC1-CHLR-L3-Cx-1005 | 100% | 2026-05-05 | 2026-05-06 | TAS | Commissioning | DH2100 | L3 | CHILLER |  |
| DC1-CHLR-L3-Cx-1020 |  | DC1-CHLR-1RT40-A21 BMS/EPMS Programming | 1d | 2026-05-28 A | 2026-05-28 A | DC1-CHLR-L3-Cx-1010, QTS-1007140 | 100% | 2026-06-22 | 2026-06-22 | PRM | Commissioning | DH2100 | L3 | CHILLER |  |
|  | 02 | **DC1-DH2100 CHLR-1RT40-B21 Cx L3** |  | 2026-05-01 | 2026-05-28 |  |  |  |  |  |  |  |  |  |  |
| DC1-CHLR-L3-Cx-1030 |  | DC1-CHLR-1RT40-B21 FTE | 1d | 2026-05-01 A | 2026-05-01 A | DC1-CHLR-L2-1010, DC1-SWD-L3-CX-1030 SS | 100% | 2026-06-05 | 2026-06-05 | ROS | Commissioning | DH2100 | L3 | CHILLER |  |
| DC1-CHLR-L3-Cx-1035 |  | DC1-CHLR-1RT40-B21 Heat Up | 2d | 2026-05-04 A | 2026-05-04 A | DC1-CHLR-L3-Cx-1030 | 100% | 2026-06-08 | 2026-06-09 | LAY | Commissioning | DH2100 | L3 | CHILLER |  |
| DC1-CHLR-L3-Cx-1040 |  | DC1-CHLR-1RT40-B21 L3 Startup | 2d | 2026-05-05 A | 2026-05-27 A | DC1-DH2100-LB-1010 FF, DC1-CHLR-L3-Cx-1035 | 100% | 2026-05-05 | 2026-05-06 | TAS | Commissioning | DH2100 | L3 | CHILLER |  |
| DC1-CHLR-L3-Cx-1050 |  | DC1-CHLR-1RT40-B21 BMS/EPMS Programming | 1d | 2026-05-28 A | 2026-05-28 A | DC1-CHLR-L3-Cx-1020, DC1-CHLR-L3-Cx-1040, QTS-1007140 | 100% | 2026-06-23 | 2026-06-23 | PRM | Commissioning | DH2100 | L3 | CHILLER |  |
|  | 03 | **DC1-DH2100 CHLR-1RT40-C21 Cx L3** |  | 2026-05-01 | 2026-05-28 |  |  |  |  |  |  |  |  |  |  |
| DC1-CHLR-L3-Cx-1060 |  | DC1-CHLR-1RT40-C21 FTE | 1d | 2026-05-01 A | 2026-05-01 A | DC1-CHLR-L2-1020, DC1-SWD-L3-CX-1060 SS | 100% | 2026-06-05 | 2026-06-05 | ROS | Commissioning | DH2100 | L3 | CHILLER |  |
| DC1-CHLR-L3-Cx-1065 |  | DC1-CHLR-1RT40-C21 Heat Up | 2d | 2026-05-04 A | 2026-05-04 A | DC1-CHLR-L3-Cx-1060 | 100% | 2026-06-08 | 2026-06-09 | LAY | Commissioning | DH2100 | L3 | CHILLER |  |
| DC1-CHLR-L3-Cx-1070 |  | DC1-CHLR-1RT40-C21 L3 Startup | 2d | 2026-05-05 A | 2026-05-27 A | DC1-CHLR-L3-Cx-1040 SS, DC1-DH2100-LB-1010 FF, DC1-CHLR-L3-Cx-1065 | 100% | 2026-06-18 | 2026-06-19 | TAS | Commissioning | DH2100 | L3 | CHILLER |  |
| DC1-CHLR-L3-Cx-1080 |  | DC1-CHLR-1RT40-C21 BMS/EPMS Programming | 1d | 2026-05-28 A | 2026-05-28 A | DC1-CHLR-L3-Cx-1050, DC1-CHLR-L3-Cx-1070, QTS-1007140 | 100% | 2026-06-24 | 2026-06-24 | PRM | Commissioning | DH2100 | L3 | CHILLER |  |
|  | 04 | **DC1-DH2100 CHLR-1RT40-D21 Cx L3** |  | 2026-05-01 | 2026-05-28 |  |  |  |  |  |  |  |  |  |  |
| DC1-CHLR-L3-Cx-1090 |  | DC1-CHLR-1RT40-D21 FTE | 1d | 2026-05-01 A | 2026-05-01 A | DC1-CHLR-L2-1030, DC1-SWD-L3-CX-1090 SS | 100% | 2026-06-05 | 2026-06-05 | ROS | Commissioning | DH2100 | L3 | CHILLER |  |
| DC1-CHLR-L3-Cx-1095 |  | DC1-CHLR-1RT40-D21 Heat Up | 2d | 2026-05-04 A | 2026-05-04 A | DC1-CHLR-L3-Cx-1090 | 100% | 2026-06-08 | 2026-06-09 | LAY | Commissioning | DH2100 | L3 | CHILLER |  |
| DC1-CHLR-L3-Cx-1100 |  | DC1-CHLR-1RT40-D21 L3 Startup | 2d | 2026-05-05 A | 2026-05-27 A | DC1-CHLR-L3-Cx-1070 SS, DC1-DH2100-LB-1010 FF, DC1-CHLR-L3-Cx-1095 | 100% | 2026-06-18 | 2026-06-19 | TAS | Commissioning | DH2100 | L3 | CHILLER |  |
| DC1-CHLR-L3-Cx-1110 |  | DC1-CHLR-1RT40-D21 BMS/EPMS Programming | 1d | 2026-05-28 A | 2026-05-28 A | DC1-CHLR-L3-Cx-1080, DC1-CHLR-L3-Cx-1100, QTS-1007140 | 100% | 2026-06-25 | 2026-06-25 | PRM | Commissioning | DH2100 | L3 | CHILLER |  |

Notes:
- DC1-MOD3-L3-Cx-1190: Steps: EC Startup Report; Vendor Startup
- DC1-CHLR-L3-Cx-1010: Steps: EC Startup Report; MC Startup Report; Vendor Startup
- DC1-CHLR-L3-Cx-1040: Steps: EC Startup Report; MC Startup Report; Vendor Startup
- DC1-CHLR-L3-Cx-1070: Steps: EC Startup Report; MC Startup Report; Vendor Startup
- DC1-CHLR-L3-Cx-1100: Steps: EC Startup Report; MC Startup Report; Vendor Startup

| ID | WBS | Activity | Duration | Start | Finish | Predecessors | Complete | Planned start | Planned finish | Vendor Responsible Party | Layton Discipline | Location | CX Level | Equipment |
| --- | --- | --- | --- | --- | --- | --- | --- | --- | --- | --- | --- | --- | --- | --- |
|  | 05 | **DC1-DH2100 CHLR-1RT40-E21 Cx L3** |  | 2026-05-01 | 2026-05-28 |  |  |  |  |  |  |  |  |  |
| DC1-CHLR-L3-Cx-1120 |  | DC1-CHLR-1RT40-E21 FTE | 1d | 2026-05-01 A | 2026-05-01 A | DC1-CHLR-L2-1040, DC1-SWD-L3-CX-1120 SS | 100% | 2026-06-05 | 2026-06-05 | ROS | Commissioning | DH2100 | L3 | CHILLER |
| DC1-CHLR-L3-Cx-1125 |  | DC1-CHLR-1RT40-E21 Heat Up | 2d | 2026-05-04 A | 2026-05-04 A | DC1-CHLR-L3-Cx-1120 | 100% | 2026-06-08 | 2026-06-09 | LAY | Commissioning | DH2100 | L3 | CHILLER |
| DC1-CHLR-L3-Cx-1130 |  | DC1-CHLR-1RT40-E21 L3 Startup | 2d | 2026-05-05 A | 2026-05-27 A | DC1-CHLR-L3-Cx-1100, DC1-DH2100-LB-1010 FF, DC1-CHLR-L3-Cx-1125 | 100% | 2026-06-22 | 2026-06-23 | TAS | Commissioning | DH2100 | L3 | CHILLER |
| DC1-CHLR-L3-Cx-1140 |  | DC1-CHLR-1RT40-E21 BMS/EPMS Programming | 1d | 2026-05-28 A | 2026-05-28 A | DC1-CHLR-L3-Cx-1110, DC1-CHLR-L3-Cx-1130, QTS-1007140 | 100% | 2026-06-26 | 2026-06-26 | PRM | Commissioning | DH2100 | L3 | CHILLER |
|  | 06 | **DC1-DH2100 CHLR-1RT40-F21 Cx L3** |  | 2026-05-01 | 2026-05-28 |  |  |  |  |  |  |  |  |  |
| DC1-CHLR-L3-Cx-1150 |  | DC1-CHLR-1RT40-F21 FTE | 1d | 2026-05-01 A | 2026-05-01 A | DC1-CHLR-L2-1050, DC1-SWD-L3-CX-1150 SS | 100% | 2026-06-05 | 2026-06-05 | ROS | Commissioning | DH2100 | L3 | CHILLER |
| DC1-CHLR-L3-Cx-1155 |  | DC1-CHLR-1RT40-F21 Heat Up | 2d | 2026-05-04 A | 2026-05-04 A | DC1-CHLR-L3-Cx-1150 | 100% | 2026-06-08 | 2026-06-09 | LAY | Commissioning | DH2100 | L3 | CHILLER |
| DC1-CHLR-L3-Cx-1160 |  | DC1-CHLR-1RT40-F21 L3 Startup | 2d | 2026-05-05 A | 2026-05-27 A | DC1-CHLR-L3-Cx-1130 SS, DC1-DH2100-LB-1010 FF, DC1-CHLR-L3-Cx-1155 | 100% | 2026-06-22 | 2026-06-23 | TAS | Commissioning | DH2100 | L3 | CHILLER |
| DC1-CHLR-L3-Cx-1170 |  | DC1-CHLR-1RT40-F21 BMS/EPMS Programming | 1d | 2026-05-28 A | 2026-05-28 A | DC1-CHLR-L3-Cx-1140, DC1-CHLR-L3-Cx-1160, QTS-1007140 | 100% | 2026-06-29 | 2026-06-29 | PRM | Commissioning | DH2100 | L3 | CHILLER |
|  | 07 | **DC1-DH2100 CHLR-1RT40-R21 Cx L3** |  | 2026-05-01 | 2026-05-28 |  |  |  |  |  |  |  |  |  |
| DC1-CHLR-L3-Cx-1180 |  | DC1-CHLR-1RT40-R21 FTE | 1d | 2026-05-01 A | 2026-05-01 A | DC1-CHLR-L2-1060, DC1-SWD-L3-CX-1180 SS | 100% | 2026-06-08 | 2026-06-08 | ROS | Commissioning | DH2100 | L3 | CHILLER |
| DC1-CHLR-L3-Cx-1185 |  | DC1-CHLR-1RT40-R21 Heat Up | 2d | 2026-05-04 A | 2026-05-04 A | DC1-CHLR-L3-Cx-1180 | 100% | 2026-05-04 | 2026-05-05 | LAY | Commissioning | DH2100 | L3 | CHILLER |
| DC1-CHLR-L3-Cx-1190 |  | DC1-CHLR-1RT40-R21 L3 Startup | 2d | 2026-05-05 A | 2026-05-27 A | DC1-CHLR-L3-Cx-1160, DC1-DH2100-LB-1010 FF, DC1-CHLR-L3-Cx-1185 | 100% | 2026-06-24 | 2026-06-25 | TAS | Commissioning | DH2100 | L3 | CHILLER |
| DC1-CHLR-L3-Cx-1200 |  | DC1-CHLR-1RT40-R21 BMS/EPMS Programming | 1d | 2026-05-28 A | 2026-05-28 A | DC1-CHLR-L3-Cx-1170, DC1-CHLR-L3-Cx-1190, QTS-1007140 | 100% | 2026-06-30 | 2026-06-30 | PRM | Commissioning | DH2100 | L3 | CHILLER |
|  | 11 | **DC1-DH2100 CHWP-1RT40 Cx L3** |  | 2026-04-10 | 2026-06-02 |  |  |  |  |  |  |  |  |  |
|  | 01 | **DC1-DH2100 CHWP-1RT40-A21 Cx L3** |  | 2026-04-10 | 2026-06-02 |  |  |  |  |  |  |  |  |  |
| DC1-CHWP-L3-Cx-1000 |  | DC1-CHWP-1RT40-A21 FTE | 1d | 2026-04-10 A | 2026-04-10 A | DC1-CHWP-L2-Cx-1000, DC1-UPSM-L3-CX-1000 | 100% |  |  | ROS | Commissioning | DH2100 | L3 | CHWP |
| DC1-CHWP-L3-Cx-1010 |  | DC1-CHWP-1RT40-A21 L3 Startup | 2d | 2026-05-26 A | 2026-06-01 A | QTS-100300, DC1-CHWP-L3-Cx-1000 | 100% | 2026-06-03 | 2026-06-04 | LAY | Commissioning | DH2100 | L3 | CHWP |
| DC1-CHWP-L3-Cx-1020 |  | DC1-CHWP-1RT40-A21 BMS/EPMS Programming | 1d | 2026-06-02 A | 2026-06-02 A | DC1-CHWP-L3-Cx-1010, QTS-1007140 | 100% |  |  | PRM | Commissioning | DH2100 | L3 | CHWP |
|  | 02 | **DC1-DH2100 CHWP-1RT40-B21 Cx L3** |  | 2026-04-10 | 2026-06-02 |  |  |  |  |  |  |  |  |  |
| DC1-CHWP-L3-Cx-1030 |  | DC1-CHWP-1RT40-B21 FTE | 1d | 2026-04-10 A | 2026-04-10 A | DC1-CHWP-L2-Cx-1010, DC1-UPSM-L3-CX-1030 | 100% |  |  | ROS | Commissioning | DH2100 | L3 | CHWP |
| DC1-CHWP-L3-Cx-1040 |  | DC1-CHWP-1RT40-B21 L3 Startup | 2d | 2026-05-26 A | 2026-06-01 A | QTS-100300, DC1-CHWP-L3-Cx-1030 | 100% | 2026-06-03 | 2026-06-04 | LAY | Commissioning | DH2100 | L3 | CHWP |
| DC1-CHWP-L3-Cx-1050 |  | DC1-CHWP-1RT40-B21 BMS/EPMS Programming | 1d | 2026-06-02 A | 2026-06-02 A | DC1-CHWP-L3-Cx-1040, QTS-1007140 | 100% | 2026-06-05 | 2026-06-05 | PRM | Commissioning | DH2100 | L3 | CHWP |

Notes:
- DC1-CHLR-L3-Cx-1130: Steps: EC Startup Report; MC Startup Report; Vendor Startup
- DC1-CHLR-L3-Cx-1160: Steps: EC Startup Report; MC Startup Report; Vendor Startup
- DC1-CHLR-L3-Cx-1190: Steps: EC Startup Report; MC Startup Report; Vendor Startup
- DC1-CHWP-L3-Cx-1010: Steps: EC Startup Report; MC Startup Report; Vendor Startup
- DC1-CHWP-L3-Cx-1040: Steps: EC Startup Report; MC Startup Report; Vendor Startup

| ID | WBS | Activity | Duration | Start | Finish | Predecessors | Complete | Planned start | Planned finish | Vendor Responsible Party | Layton Discipline | Location | CX Level | Equipment | Layton Super |
| --- | --- | --- | --- | --- | --- | --- | --- | --- | --- | --- | --- | --- | --- | --- | --- |
|  | 03 | **DC1-DH2100 CHWP-1RT40-C21 Cx L3** |  | 2026-04-10 | 2026-06-02 |  |  |  |  |  |  |  |  |  |  |
| DC1-CHWP-L3-Cx-1060 |  | DC1-CHWP-1RT40-C21 FTE | 1d | 2026-04-10 A | 2026-04-10 A | DC1-CHWP-L2-Cx-1020, DC1-UPSM-L3-CX-1060 | 100% |  |  | ROS | Commissioning | DH2100 | L3 | CHWP |  |
| DC1-CHWP-L3-Cx-1070 |  | DC1-CHWP-1RT40-C21 L3 Startup | 2d | 2026-05-26 A | 2026-06-01 A | QTS-100300, DC1-CHWP-L3-Cx-1060 | 100% | 2026-06-03 | 2026-06-04 | LAY | Commissioning | DH2100 | L3 | CHWP |  |
| DC1-CHWP-L3-Cx-1080 |  | DC1-CHWP-1RT40-C21 BMS/EPMS Programming | 1d | 2026-06-02 A | 2026-06-02 A | DC1-CHWP-L3-Cx-1070, QTS-1007140 | 100% | 2026-06-05 | 2026-06-05 | PRM | Commissioning | DH2100 | L3 | CHWP |  |
|  | 04 | **DC1-DH2100 CHWP-1RT40-D21 Cx L3** |  | 2026-04-13 | 2026-06-02 |  |  |  |  |  |  |  |  |  |  |
| DC1-CHWP-L3-Cx-1090 |  | DC1-CHWP-1RT40-D21 FTE | 1d | 2026-04-13 A | 2026-04-13 A | DC1-CHWP-L2-Cx-1030, DC1-UPSM-L3-CX-1090 | 100% |  |  | ROS | Commissioning | DH2100 | L3 | CHWP |  |
| DC1-CHWP-L3-Cx-1100 |  | DC1-CHWP-1RT40-D21 L3 Startup | 2d | 2026-05-26 A | 2026-06-01 A | QTS-100300, DC1-CHWP-L3-Cx-1090 | 100% | 2026-06-03 | 2026-06-04 | LAY | Commissioning | DH2100 | L3 | CHWP |  |
| DC1-CHWP-L3-Cx-1110 |  | DC1-CHWP-1RT40-D21 BMS/EPMS Programming | 1d | 2026-06-02 A | 2026-06-02 A | DC1-CHWP-L3-Cx-1100, QTS-1007140 | 100% | 2026-06-05 | 2026-06-05 | PRM | Commissioning | DH2100 | L3 | CHWP |  |
|  | 05 | **DC1-DH2100 CHWP-1RT40-E21 Cx L3** |  | 2026-04-10 | 2026-06-02 |  |  |  |  |  |  |  |  |  |  |
| DC1-CHWP-L3-Cx-1120 |  | DC1-CHWP-1RT40-E21 FTE | 1d | 2026-04-10 A | 2026-04-10 A | DC1-CHWP-L2-Cx-1040, DC1-UPSM-L3-CX-1120 | 100% |  |  | ROS | Commissioning | DH2100 | L3 | CHWP |  |
| DC1-CHWP-L3-Cx-1130 |  | DC1-CHWP-1RT40-E21 L3 Startup | 2d | 2026-05-26 A | 2026-06-01 A | QTS-100300, DC1-CHWP-L3-Cx-1120 | 100% | 2026-06-03 | 2026-06-04 | LAY | Commissioning | DH2100 | L3 | CHWP |  |
| DC1-CHWP-L3-Cx-1140 |  | DC1-CHWP-1RT40-E21 BMS/EPMS Programming | 1d | 2026-06-02 A | 2026-06-02 A | DC1-CHWP-L3-Cx-1130, QTS-1007140 | 100% | 2026-06-05 | 2026-06-05 | PRM | Commissioning | DH2100 | L3 | CHWP |  |
|  | 06 | **DC1-DH2100 CHWP-1RT40-F21 Cx L3** |  | 2026-04-10 | 2026-06-02 |  |  |  |  |  |  |  |  |  |  |
| DC1-CHWP-L3-Cx-1150 |  | DC1-CHWP-1RT40-F21 FTE | 1d | 2026-04-10 A | 2026-04-10 A | DC1-CHWP-L2-Cx-1050, DC1-UPSM-L3-CX-1150 | 100% |  |  | ROS | Commissioning | DH2100 | L3 | CHWP |  |
| DC1-CHWP-L3-Cx-1160 |  | DC1-CHWP-1RT40-F21 L3 Startup | 2d | 2026-05-26 A | 2026-06-01 A | QTS-100300, DC1-CHWP-L3-Cx-1150 | 100% | 2026-06-03 | 2026-06-04 | LAY | Commissioning | DH2100 | L3 | CHWP |  |
| DC1-CHWP-L3-Cx-1170 |  | DC1-CHWP-1RT40-F21 BMS/EPMS Programming | 1d | 2026-06-02 A | 2026-06-02 A | DC1-CHWP-L3-Cx-1160, QTS-1007140 | 100% | 2026-06-05 | 2026-06-05 | PRM | Commissioning | DH2100 | L3 | CHWP |  |
|  | 07 | **DC1-DH2100 CHWP-1RT40-R21 Cx L3** |  | 2026-04-10 | 2026-06-02 |  |  |  |  |  |  |  |  |  |  |
| DC1-CHWP-L3-Cx-1180 |  | DC1-CHWP-1RT40-R21 FTE | 1d | 2026-04-10 A | 2026-04-10 A | DC1-CHWP-L2-Cx-1060, DC1-UPSM-L3-CX-1180 | 100% |  |  | ROS | Commissioning | DH2100 | L3 | CHWP |  |
| DC1-CHWP-L3-Cx-1190 |  | DC1-CHWP-1RT40-R21 L3 Startup | 2d | 2026-05-26 A | 2026-06-01 A | QTS-100300, DC1-CHWP-L3-Cx-1180 | 100% | 2026-06-03 | 2026-06-04 | LAY | Commissioning | DH2100 | L3 | CHWP |  |
| DC1-CHWP-L3-Cx-1200 |  | DC1-CHWP-1RT40-R21 BMS/EPMS Programming | 1d | 2026-06-02 A | 2026-06-02 A | DC1-CHWP-L3-Cx-1190, QTS-1007140 | 100% | 2026-06-05 | 2026-06-05 | PRM | Commissioning | DH2100 | L3 | CHWP |  |
|  | 12 | **DC1-DH2100 CDUs Cx L3** |  |  |  |  |  |  |  |  |  |  |  |  |  |
|  | 01 | **DC1-DH2100-CDU-A21 Cx L3** |  |  |  |  |  |  |  |  |  |  |  |  |  |
|  | 01 | **DC1-CDU-DH2100-01 Cx L3** |  |  |  |  |  |  |  |  |  |  |  |  |  |
|  | 02 | **DC1-CDU-DH2100-02 Cx L3** |  |  |  |  |  |  |  |  |  |  |  |  |  |
|  | 03 | **DC1-CDU-DH2100-03 Cx L3** |  |  |  |  |  |  |  |  |  |  |  |  |  |
|  | 04 | **DC1-CDU-DH2100-04 Cx L3** |  |  |  |  |  |  |  |  |  |  |  |  |  |
|  | 05 | **DC1-CDU-DH2100-05 Cx L3** |  |  |  |  |  |  |  |  |  |  |  |  |  |
|  | 06 | **DC1-CDU-DH2100-06 Cx L3** |  |  |  |  |  |  |  |  |  |  |  |  |  |
|  | 07 | **DC1-CDU-DH2100-07 Cx L3** |  |  |  |  |  |  |  |  |  |  |  |  |  |
|  | 08 | **DC1-CDU-DH2100-08 Cx L3** |  |  |  |  |  |  |  |  |  |  |  |  |  |
|  | 09 | **DC1-CDU-DH2100-09 Cx L3** |  |  |  |  |  |  |  |  |  |  |  |  |  |
|  | 10 | **DC1-CDU-DH2100-10 Cx L3** |  |  |  |  |  |  |  |  |  |  |  |  |  |
|  | 11 | **DC1-CDU-DH2100-11 Cx L3** |  |  |  |  |  |  |  |  |  |  |  |  |  |
|  | 12 | **DC1-CDU-DH2100-12 Cx L3** |  |  |  |  |  |  |  |  |  |  |  |  |  |
|  | 13 | **DC1-CDU-DH2100-13 Cx L3** |  |  |  |  |  |  |  |  |  |  |  |  |  |
|  | 14 | **DC1-CDU-DH2100-14 Cx L3** |  |  |  |  |  |  |  |  |  |  |  |  |  |
|  | 15 | **DC1-CDU-DH2100-15 Cx L3** |  |  |  |  |  |  |  |  |  |  |  |  |  |
|  | 16 | **DC1-CDU-DH2100-16 Cx L3** |  |  |  |  |  |  |  |  |  |  |  |  |  |
|  | 17 | **DC1-CDU-DH2100-17 Cx L3** |  |  |  |  |  |  |  |  |  |  |  |  |  |
|  | 18 | **DC1-CDU-DH2100-18 Cx L3** |  |  |  |  |  |  |  |  |  |  |  |  |  |
|  | 02 | **DC1-DH2100-CDU-B21 Cx L3** |  |  |  |  |  |  |  |  |  |  |  |  |  |
|  | 03 | **DC1-DH2100-CDU-C21 Cx L3** |  |  |  |  |  |  |  |  |  |  |  |  |  |
|  | 13 | **DC1-DH2100 CRAH/DOAS Cx L3** |  | 2026-05-12 | 2026-07-20 |  |  |  |  |  |  |  |  |  |  |
|  | 01 | **DH2100 CRAH-DH-01 L3** |  | 2026-05-12 | 2026-07-20 |  |  |  |  |  |  |  |  |  |  |
| DC1-CRAH-L3-Cx-1000 |  | DC1-DH2100-CRAH-DH-01 FTE | 1d | 2026-05-12 A | 2026-05-12 A | DC1-CRAH-L2-1000, DC1-MOD2-L3-Cx-1090 SS, DC1-MOD2-L3-Cx-1180 SS | 100% | 2026-05-22 | 2026-05-22 | ROS | Commissioning | DH2100 | L3 | DH CRAH | Michael Guard |
| DC1-CRAH-L3-Cx-1010 |  | DC1-DH2100-CRAH-DH-01 L3 Startup | 2d | 2026-05-13 A | 2026-07-20 A | DC1-CRAH-L3-Cx-1000 | 100% | 2026-05-13 | 2026-05-14 | UMAS | Commissioning | DH2100 | L3 | DH CRAH |  |
| DC1-CRAH-L3-Cx-1020 |  | DC1-DH2100-CRAH-DH-01 BMS/EPMS Programming | 1d | 2026-05-18 A | 2026-05-18 A | QTS-1007140, DC1-CRAH-L3-Cx-1000 | 100% |  |  | PRM | Commissioning | DH2100 | L3 | DH CRAH |  |

Notes:
- DC1-CHWP-L3-Cx-1070: Steps: EC Startup Report; MC Startup Report; Vendor Startup
- DC1-CHWP-L3-Cx-1100: Steps: EC Startup Report; MC Startup Report; Vendor Startup
- DC1-CHWP-L3-Cx-1130: Steps: EC Startup Report; MC Startup Report; Vendor Startup
- DC1-CHWP-L3-Cx-1160: Steps: EC Startup Report; MC Startup Report; Vendor Startup
- DC1-CHWP-L3-Cx-1190: Steps: EC Startup Report; MC Startup Report; Vendor Startup
- DC1-CRAH-L3-Cx-1010: Steps: EC Startup Checklist; MC Startup Checklist; Vendor Startup

| ID | WBS | Activity | Duration | Start | Finish | Predecessors | Complete | Planned start | Planned finish | Vendor Responsible Party | Layton Discipline | Location | CX Level | Equipment |
| --- | --- | --- | --- | --- | --- | --- | --- | --- | --- | --- | --- | --- | --- | --- |
|  | 02 | **DH2100 CRAH-DH-02 L3** |  | 2026-05-19 | 2026-07-20 |  |  |  |  |  |  |  |  |  |
| DC1-CRAH-L3-Cx-1030 |  | DC1-DH2100-CRAH-DH-02 FTE | 1d | 2026-05-19 A | 2026-05-19 A | DC1-CRAH-L2-1010, DC1-MOD2-L3-Cx-1150 SS, DC1-MOD2-L3-Cx-1060 SS | 100% |  |  | ROS | Commissioning | DH2100 | L3 | DH CRAH |
| DC1-CRAH-L3-Cx-1040 |  | DC1-DH2100-CRAH-DH-02 BMS/EPMS Programming | 2d | 2026-05-20 A | 2026-05-20 A | DC1-CRAH-L3-Cx-1030 | 100% | 2026-06-04 | 2026-06-05 | UMAS | Commissioning | DH2100 | L3 | DH CRAH |
| DC1-CRAH-L3-Cx-1050 |  | DC1-DH2100-CRAH-DH-02 L3 Startup | 2d | 2026-05-21 A | 2026-07-20 A | DC1-CRAH-L3-Cx-1040 | 100% | 2026-06-03 | 2026-06-04 | PRM | Commissioning | DH2100 | L3 | DH CRAH |
|  | 03 | **DH2100 CRAH-DH-03 L3** |  | 2026-05-19 | 2026-07-20 |  |  |  |  |  |  |  |  |  |
| DC1-CRAH-L3-Cx-1060 |  | DC1-DH2100-CRAH-DH-03 FTE | 1d | 2026-05-19 A | 2026-05-19 A | DC1-CRAH-L2-1020, DC1-MOD2-L3-Cx-1120 SS, DC1-MOD2-L3-Cx-1030 SS | 100% | 2026-06-03 | 2026-06-03 | ROS | Commissioning | DH2100 | L3 | DH CRAH |
| DC1-CRAH-L3-Cx-1070 |  | DC1-DH2100-CRAH-DH-03 BMS/EPMS Programming | 2d | 2026-05-20 A | 2026-05-20 A | DC1-CRAH-L3-Cx-1060 | 100% | 2026-06-04 | 2026-06-05 | UMAS | Commissioning | DH2100 | L3 | DH CRAH |
| DC1-CRAH-L3-Cx-1080 |  | DC1-DH2100-CRAH-DH-03 L3 Startup | 2d | 2026-05-21 A | 2026-07-20 A | DC1-CRAH-L3-Cx-1070 | 100% | 2026-06-03 | 2026-06-04 | PRM | Commissioning | DH2100 | L3 | DH CRAH |
|  | 04 | **DH2100 CRAH-DH-04 L3** |  | 2026-05-19 | 2026-07-20 |  |  |  |  |  |  |  |  |  |
| DC1-CRAH-L3-Cx-1090 |  | DC1-DH2100-CRAH-DH-04 FTE | 1d | 2026-05-19 A | 2026-05-19 A | DC1-CRAH-L2-1030, DC1-MOD2-L3-Cx-1090 SS, DC1-MOD2-L3-Cx-1000 SS | 100% | 2026-06-03 | 2026-06-03 | ROS | Commissioning | DH2100 | L3 | DH CRAH |
| DC1-CRAH-L3-Cx-1100 |  | DC1-DH2100-CRAH-DH-04 BMS/EPMS Programming | 2d | 2026-05-20 A | 2026-05-20 A | DC1-CRAH-L3-Cx-1090 | 100% | 2026-06-04 | 2026-06-05 | UMAS | Commissioning | DH2100 | L3 | DH CRAH |
| DC1-CRAH-L3-Cx-1110 |  | DC1-DH2100-CRAH-DH-04 L3 Startup | 2d | 2026-05-21 A | 2026-07-20 A | DC1-CRAH-L3-Cx-1100 | 100% | 2026-06-03 | 2026-06-04 | PRM | Commissioning | DH2100 | L3 | DH CRAH |
|  | 05 | **DH2100 CRAH-DH-05 L3** |  | 2026-05-19 | 2026-07-20 |  |  |  |  |  |  |  |  |  |
| DC1-CRAH-L3-Cx-1120 |  | DC1-DH2100-CRAH-DH-05 FTE | 1d | 2026-05-19 A | 2026-05-19 A | DC1-CRAH-L2-1040, DC1-MOD2-L3-Cx-1060 SS, DC1-MOD2-L3-Cx-1180 SS | 100% | 2026-06-03 | 2026-06-03 | ROS | Commissioning | DH2100 | L3 | DH CRAH |
| DC1-CRAH-L3-Cx-1130 |  | DC1-DH2100-CRAH-DH-05 BMS/EPMS Programming | 2d | 2026-05-20 A | 2026-05-20 A | DC1-CRAH-L3-Cx-1120 | 100% | 2026-06-04 | 2026-06-05 | UMAS | Commissioning | DH2100 | L3 | DH CRAH |
| DC1-CRAH-L3-Cx-1140 |  | DC1-DH2100-CRAH-DH-05 L3 Startup | 2d | 2026-05-21 A | 2026-07-20 A | DC1-CRAH-L3-Cx-1130 | 100% | 2026-06-03 | 2026-06-04 | PRM | Commissioning | DH2100 | L3 | DH CRAH |
|  | 06 | **DH2100 CRAH-DH-06 L3** |  | 2026-05-19 | 2026-07-20 |  |  |  |  |  |  |  |  |  |
| DC1-CRAH-L3-Cx-1150 |  | DC1-DH2100-CRAH-DH-06 FTE | 1d | 2026-05-19 A | 2026-05-19 A | DC1-CRAH-L2-1050, DC1-MOD2-L3-Cx-1150 SS, DC1-MOD2-L3-Cx-1030 SS | 100% | 2026-06-03 | 2026-06-03 | ROS | Commissioning | DH2100 | L3 | DH CRAH |
| DC1-CRAH-L3-Cx-1160 |  | DC1-DH2100-CRAH-DH-06 BMS/EPMS Programming | 2d | 2026-05-20 A | 2026-05-20 A | DC1-CRAH-L3-Cx-1150 | 100% | 2026-06-04 | 2026-06-05 | UMAS | Commissioning | DH2100 | L3 | DH CRAH |
| DC1-CRAH-L3-Cx-1170 |  | DC1-DH2100-CRAH-DH-06 L3 Startup | 2d | 2026-05-21 A | 2026-07-20 A | DC1-CRAH-L3-Cx-1160 | 100% | 2026-06-03 | 2026-06-04 | PRM | Commissioning | DH2100 | L3 | DH CRAH |
|  | 07 | **DH2100 CRAH-DH-07 L3** |  | 2026-05-19 | 2026-07-20 |  |  |  |  |  |  |  |  |  |
| DC1-CRAH-L3-Cx-1180 |  | DC1-DH2100-CRAH-DH-07 FTE | 1d | 2026-05-19 A | 2026-05-19 A | DC1-CRAH-L2-1060, DC1-MOD2-L3-Cx-1120 SS, DC1-MOD2-L3-Cx-1000 SS | 100% | 2026-06-03 | 2026-06-03 | ROS | Commissioning | DH2100 | L3 | DH CRAH |
| DC1-CRAH-L3-Cx-1190 |  | DC1-DH2100-CRAH-DH-07 BMS/EPMS Programming | 2d | 2026-05-20 A | 2026-05-20 A | DC1-CRAH-L3-Cx-1180 | 100% | 2026-06-04 | 2026-06-05 | UMAS | Commissioning | DH2100 | L3 | DH CRAH |
| DC1-CRAH-L3-Cx-1200 |  | DC1-DH2100-CRAH-DH-07 L3 Startup | 2d | 2026-05-21 A | 2026-07-20 A | DC1-CRAH-L3-Cx-1190 | 100% | 2026-06-03 | 2026-06-04 | PRM | Commissioning | DH2100 | L3 | DH CRAH |

Notes:
- DC1-CRAH-L3-Cx-1040: Steps: EC Startup Checklist; MC Startup Checklist; Vendor Startup
- DC1-CRAH-L3-Cx-1070: Steps: EC Startup Checklist; MC Startup Checklist; Vendor Startup
- DC1-CRAH-L3-Cx-1100: Steps: EC Startup Checklist; MC Startup Checklist; Vendor Startup
- DC1-CRAH-L3-Cx-1130: Steps: EC Startup Checklist; MC Startup Checklist; Vendor Startup
- DC1-CRAH-L3-Cx-1160: Steps: EC Startup Checklist; MC Startup Checklist; Vendor Startup
- DC1-CRAH-L3-Cx-1190: Steps: EC Startup Checklist; MC Startup Checklist; Vendor Startup

| ID | WBS | Activity | Duration | Start | Finish | Predecessors | Complete | Planned start | Planned finish | Vendor Responsible Party | Layton Discipline | Location | CX Level | Equipment |
| --- | --- | --- | --- | --- | --- | --- | --- | --- | --- | --- | --- | --- | --- | --- |
|  | 08 | **DH2100 CRAH-DH-08 L3** |  | 2026-05-19 | 2026-07-20 |  |  |  |  |  |  |  |  |  |
| DC1-CRAH-L3-Cx-1210 |  | DC1-DH2100-CRAH-DH-08 FTE | 1d | 2026-05-19 A | 2026-05-19 A | DC1-CRAH-L2-1070, DC1-MOD2-L3-Cx-1060 SS, DC1-MOD2-L3-Cx-1180 SS | 100% | 2026-06-03 | 2026-06-03 | ROS | Commissioning | DH2100 | L3 | DH CRAH |
| DC1-CRAH-L3-Cx-1220 |  | DC1-DH2100-CRAH-DH-08 BMS/EPMS Programming | 2d | 2026-05-20 A | 2026-05-20 A | DC1-CRAH-L3-Cx-1210 | 100% | 2026-06-04 | 2026-06-05 | UMAS | Commissioning | DH2100 | L3 | DH CRAH |
| DC1-CRAH-L3-Cx-1230 |  | DC1-DH2100-CRAH-DH-08 L3 Startup | 2d | 2026-05-21 A | 2026-07-20 A | DC1-CRAH-L3-Cx-1220 | 100% | 2026-06-03 | 2026-06-04 | PRM | Commissioning | DH2100 | L3 | DH CRAH |
|  | 09 | **DH2100 CRAH-DH-09 L3** |  | 2026-05-19 | 2026-07-20 |  |  |  |  |  |  |  |  |  |
| DC1-CRAH-L3-Cx-1240 |  | DC1-DH2100-CRAH-DH-09 FTE | 1d | 2026-05-19 A | 2026-05-19 A | DC1-CRAH-L2-1080, DC1-MOD2-L3-Cx-1150 SS, DC1-MOD2-L3-Cx-1030 SS | 100% | 2026-06-03 | 2026-06-03 | ROS | Commissioning | DH2100 | L3 | DH CRAH |
| DC1-CRAH-L3-Cx-1250 |  | DC1-DH2100-CRAH-DH-09 BMS/EPMS Programming | 2d | 2026-05-20 A | 2026-05-20 A | DC1-CRAH-L3-Cx-1240 | 100% | 2026-06-04 | 2026-06-05 | UMAS | Commissioning | DH2100 | L3 | DH CRAH |
| DC1-CRAH-L3-Cx-1260 |  | DC1-DH2100-CRAH-DH-09 L3 Startup | 2d | 2026-05-21 A | 2026-07-20 A | DC1-CRAH-L3-Cx-1250 | 100% | 2026-06-03 | 2026-06-04 | PRM | Commissioning | DH2100 | L3 | DH CRAH |
|  | 10 | **DH2100 CRAH-DH-10 L3** |  | 2026-05-19 | 2026-07-20 |  |  |  |  |  |  |  |  |  |
| DC1-CRAH-L3-Cx-1270 |  | DC1-DH2100-CRAH-DH-10 FTE | 1d | 2026-05-19 A | 2026-05-19 A | DC1-CRAH-L2-1090, DC1-MOD2-L3-Cx-1120 SS, DC1-MOD2-L3-Cx-1000 SS | 100% | 2026-06-03 | 2026-06-03 | ROS | Commissioning | DH2100 | L3 | DH CRAH |
| DC1-CRAH-L3-Cx-1280 |  | DC1-DH2100-CRAH-DH-10 BMS/EPMS Programming | 2d | 2026-05-20 A | 2026-05-20 A | DC1-CRAH-L3-Cx-1270 | 100% | 2026-06-04 | 2026-06-05 | UMAS | Commissioning | DH2100 | L3 | DH CRAH |
| DC1-CRAH-L3-Cx-1290 |  | DC1-DH2100-CRAH-DH-10 L3 Startup | 2d | 2026-05-21 A | 2026-07-20 A | DC1-CRAH-L3-Cx-1280 | 100% | 2026-06-03 | 2026-06-04 | PRM | Commissioning | DH2100 | L3 | DH CRAH |
|  | 11 | **DH2100 CRAH-DH-11 L3** |  | 2026-05-19 | 2026-07-20 |  |  |  |  |  |  |  |  |  |
| DC1-CRAH-L3-Cx-1300 |  | DC1-DH2100-CRAH-DH-11 FTE | 1d | 2026-05-19 A | 2026-05-19 A | DC1-CRAH-L2-1100, DC1-MOD2-L3-Cx-1090 SS, DC1-MOD2-L3-Cx-1180 SS | 100% | 2026-06-03 | 2026-06-03 | ROS | Commissioning | DH2100 | L3 | DH CRAH |
| DC1-CRAH-L3-Cx-1310 |  | DC1-DH2100-CRAH-DH-11 BMS/EPMS Programming | 2d | 2026-05-20 A | 2026-05-20 A | DC1-CRAH-L3-Cx-1300 | 100% | 2026-06-04 | 2026-06-05 | UMAS | Commissioning | DH2100 | L3 | DH CRAH |
| DC1-CRAH-L3-Cx-1320 |  | DC1-DH2100-CRAH-DH-11 L3 Startup | 2d | 2026-05-21 A | 2026-07-20 A | DC1-CRAH-L3-Cx-1310 | 100% | 2026-06-03 | 2026-06-04 | PRM | Commissioning | DH2100 | L3 | DH CRAH |
|  | 12 | **DH2100 CRAH-DH-12 L3** |  | 2026-05-19 | 2026-07-20 |  |  |  |  |  |  |  |  |  |
| DC1-CRAH-L3-Cx-1330 |  | DC1-DH2100-CRAH-DH-12 FTE | 1d | 2026-05-19 A | 2026-05-19 A | DC1-CRAH-L2-1110, DC1-MOD2-L3-Cx-1150 SS, DC1-MOD2-L3-Cx-1060 SS | 100% | 2026-06-03 | 2026-06-03 | ROS | Commissioning | DH2100 | L3 | DH CRAH |
| DC1-CRAH-L3-Cx-1340 |  | DC1-DH2100-CRAH-DH-12 BMS/EPMS Programming | 2d | 2026-05-20 A | 2026-05-20 A | DC1-CRAH-L3-Cx-1330 | 100% | 2026-06-04 | 2026-06-05 | UMAS | Commissioning | DH2100 | L3 | DH CRAH |
| DC1-CRAH-L3-Cx-1350 |  | DC1-DH2100-CRAH-DH-12 L3 Startup | 2d | 2026-05-21 A | 2026-07-20 A | DC1-CRAH-L3-Cx-1340 | 100% | 2026-06-03 | 2026-06-04 | PRM | Commissioning | DH2100 | L3 | DH CRAH |
|  | 13 | **DH2100 CRAH-DH-13 L3** |  | 2026-05-19 | 2026-07-20 |  |  |  |  |  |  |  |  |  |
| DC1-CRAH-L3-Cx-1360 |  | DC1-DH2100-CRAH-DH-13 FTE | 1d | 2026-05-19 A | 2026-05-19 A | DC1-CRAH-L2-1120, DC1-MOD2-L3-Cx-1120 SS, DC1-MOD2-L3-Cx-1030 SS | 100% | 2026-06-03 | 2026-06-03 | ROS | Commissioning | DH2100 | L3 | DH CRAH |
| DC1-CRAH-L3-Cx-1370 |  | DC1-DH2100-CRAH-DH-13 BMS/EPMS Programming | 2d | 2026-05-20 A | 2026-05-20 A | DC1-CRAH-L3-Cx-1360 | 100% | 2026-06-04 | 2026-06-05 | UMAS | Commissioning | DH2100 | L3 | DH CRAH |
| DC1-CRAH-L3-Cx-1380 |  | DC1-DH2100-CRAH-DH-13 L3 Startup | 2d | 2026-05-21 A | 2026-07-20 A | DC1-CRAH-L3-Cx-1370 | 100% | 2026-06-03 | 2026-06-04 | PRM | Commissioning | DH2100 | L3 | DH CRAH |

Notes:
- DC1-CRAH-L3-Cx-1220: Steps: EC Startup Checklist; MC Startup Checklist; Vendor Startup
- DC1-CRAH-L3-Cx-1250: Steps: EC Startup Checklist; MC Startup Checklist; Vendor Startup
- DC1-CRAH-L3-Cx-1280: Steps: EC Startup Checklist; MC Startup Checklist; Vendor Startup
- DC1-CRAH-L3-Cx-1310: Steps: EC Startup Checklist; MC Startup Checklist; Vendor Startup
- DC1-CRAH-L3-Cx-1340: Steps: EC Startup Checklist; MC Startup Checklist; Vendor Startup
- DC1-CRAH-L3-Cx-1370: Steps: EC Startup Checklist; MC Startup Checklist; Vendor Startup

| ID | WBS | Activity | Duration | Start | Finish | Predecessors | Complete | Planned start | Planned finish | Vendor Responsible Party | Layton Discipline | Location | CX Level | Equipment |
| --- | --- | --- | --- | --- | --- | --- | --- | --- | --- | --- | --- | --- | --- | --- |
|  | 14 | **DH2100 CRAH-DH-14 L3** |  | 2026-05-19 | 2026-07-20 |  |  |  |  |  |  |  |  |  |
| DC1-CRAH-L3-Cx-1390 |  | DC1-DH2100-CRAH-DH-14 FTE | 1d | 2026-05-19 A | 2026-05-19 A | DC1-CRAH-L2-1130, DC1-MOD2-L3-Cx-1090 SS, DC1-MOD2-L3-Cx-1000 SS | 100% | 2026-06-03 | 2026-06-03 | ROS | Commissioning | DH2100 | L3 | DH CRAH |
| DC1-CRAH-L3-Cx-1400 |  | DC1-DH2100-CRAH-DH-14 BMS/EPMS Programming | 2d | 2026-05-20 A | 2026-05-20 A | DC1-CRAH-L3-Cx-1390 | 100% | 2026-06-04 | 2026-06-05 | UMAS | Commissioning | DH2100 | L3 | DH CRAH |
| DC1-CRAH-L3-Cx-1410 |  | DC1-DH2100-CRAH-DH-14 L3 Startup | 2d | 2026-05-21 A | 2026-07-20 A | DC1-CRAH-L3-Cx-1400 | 100% | 2026-06-03 | 2026-06-04 | PRM | Commissioning | DH2100 | L3 | DH CRAH |
|  | 15 | **DH2100 CRAH-DH-15 L3** |  | 2026-05-19 | 2026-07-20 |  |  |  |  |  |  |  |  |  |
| DC1-CRAH-L3-Cx-1420 |  | DC1-DH2100-CRAH-DH-15 FTE | 1d | 2026-05-19 A | 2026-05-19 A | DC1-CRAH-L2-1140, DC1-MOD2-L3-Cx-1030 SS, DC1-MOD2-L3-Cx-1000 SS | 100% | 2026-06-03 | 2026-06-03 | ROS | Commissioning | DH2100 | L3 | DH CRAH |
| DC1-CRAH-L3-Cx-1430 |  | DC1-DH2100-CRAH-DH-15 BMS/EPMS Programming | 2d | 2026-05-20 A | 2026-05-20 A | DC1-CRAH-L3-Cx-1420 | 100% | 2026-06-04 | 2026-06-05 | UMAS | Commissioning | DH2100 | L3 | DH CRAH |
| DC1-CRAH-L3-Cx-1440 |  | DC1-DH2100-CRAH-DH-15 L3 Startup | 2d | 2026-05-21 A | 2026-07-20 A | DC1-CRAH-L3-Cx-1430 | 100% | 2026-06-03 | 2026-06-04 | PRM | Commissioning | DH2100 | L3 | DH CRAH |
|  | 16 | **DH2100 CRAH-DH-16 L3** |  | 2026-05-19 | 2026-07-20 |  |  |  |  |  |  |  |  |  |
| DC1-CRAH-L3-Cx-1450 |  | DC1-DH2100-CRAH-DH-16 FTE | 1d | 2026-05-19 A | 2026-05-19 A | DC1-CRAH-L2-1150, DC1-MOD2-L3-Cx-1060 SS, DC1-MOD2-L3-Cx-1030 SS | 100% | 2026-06-03 | 2026-06-03 | ROS | Commissioning | DH2100 | L3 | DH CRAH |
| DC1-CRAH-L3-Cx-1460 |  | DC1-DH2100-CRAH-DH-16 BMS/EPMS Programming | 2d | 2026-05-20 A | 2026-05-20 A | DC1-CRAH-L3-Cx-1450 | 100% | 2026-06-04 | 2026-06-05 | UMAS | Commissioning | DH2100 | L3 | DH CRAH |
| DC1-CRAH-L3-Cx-1470 |  | DC1-DH2100-CRAH-DH-16 L3 Startup | 2d | 2026-05-21 A | 2026-07-20 A | DC1-CRAH-L3-Cx-1460 | 100% | 2026-06-03 | 2026-06-04 | PRM | Commissioning | DH2100 | L3 | DH CRAH |
|  | 17 | **DH2100 CRAH-DH-17 L3** |  | 2026-05-19 | 2026-07-20 |  |  |  |  |  |  |  |  |  |
| DC1-CRAH-L3-Cx-1480 |  | DC1-DH2100-CRAH-DH-17 FTE | 1d | 2026-05-19 A | 2026-05-19 A | DC1-CRAH-L2-1160, DC1-MOD2-L3-Cx-1090 SS, DC1-MOD2-L3-Cx-1060 SS | 100% | 2026-06-03 | 2026-06-03 | ROS | Commissioning | DH2100 | L3 | DH CRAH |
| DC1-CRAH-L3-Cx-1490 |  | DC1-DH2100-CRAH-DH-17 BMS/EPMS Programming | 2d | 2026-05-20 A | 2026-05-20 A | DC1-CRAH-L3-Cx-1480 | 100% | 2026-06-04 | 2026-06-05 | UMAS | Commissioning | DH2100 | L3 | DH CRAH |
| DC1-CRAH-L3-Cx-1500 |  | DC1-DH2100-CRAH-DH-17 L3 Startup | 2d | 2026-05-21 A | 2026-07-20 A | DC1-CRAH-L3-Cx-1490 | 100% | 2026-06-03 | 2026-06-04 | PRM | Commissioning | DH2100 | L3 | DH CRAH |
|  | 18 | **DH2100 CRAH-DH-18 L3** |  | 2026-05-19 | 2026-07-20 |  |  |  |  |  |  |  |  |  |
| DC1-CRAH-L3-Cx-1510 |  | DC1-DH2100-CRAH-DH-18 FTE | 1d | 2026-05-19 A | 2026-05-19 A | DC1-CRAH-L2-1170, DC1-MOD2-L3-Cx-1120 SS, DC1-MOD2-L3-Cx-1090 SS | 100% | 2026-06-03 | 2026-06-03 | ROS | Commissioning | DH2100 | L3 | DH CRAH |
| DC1-CRAH-L3-Cx-1520 |  | DC1-DH2100-CRAH-DH-18 BMS/EPMS Programming | 2d | 2026-05-20 A | 2026-05-20 A | DC1-CRAH-L3-Cx-1510 | 100% | 2026-06-04 | 2026-06-05 | UMAS | Commissioning | DH2100 | L3 | DH CRAH |
| DC1-CRAH-L3-Cx-1530 |  | DC1-DH2100-CRAH-DH-18 L3 Startup | 2d | 2026-05-21 A | 2026-07-20 A | DC1-CRAH-L3-Cx-1520 | 100% | 2026-06-03 | 2026-06-04 | PRM | Commissioning | DH2100 | L3 | DH CRAH |
|  | 19 | **DH2100 CRAH-DH-19 L3** |  | 2026-05-19 | 2026-07-20 |  |  |  |  |  |  |  |  |  |
| DC1-CRAH-L3-Cx-1540 |  | DC1-DH2100-CRAH-DH-19 FTE | 1d | 2026-05-19 A | 2026-05-19 A | DC1-CRAH-L2-1180, DC1-MOD2-L3-Cx-1150 SS, DC1-MOD2-L3-Cx-1120 SS | 100% | 2026-06-03 | 2026-06-03 | ROS | Commissioning | DH2100 | L3 | DH CRAH |
| DC1-CRAH-L3-Cx-1550 |  | DC1-DH2100-CRAH-DH-19 BMS/EPMS Programming | 2d | 2026-05-20 A | 2026-05-20 A | DC1-CRAH-L3-Cx-1540 | 100% | 2026-05-20 | 2026-05-21 | UMAS | Commissioning | DH2100 | L3 | DH CRAH |
| DC1-CRAH-L3-Cx-1560 |  | DC1-DH2100-CRAH-DH-19 L3 Startup | 2d | 2026-05-21 A | 2026-07-20 A | DC1-CRAH-L3-Cx-1550 | 100% | 2026-06-03 | 2026-06-04 | PRM | Commissioning | DH2100 | L3 | DH CRAH |

Notes:
- DC1-CRAH-L3-Cx-1400: Steps: EC Startup Checklist; MC Startup Checklist; Vendor Startup
- DC1-CRAH-L3-Cx-1430: Steps: EC Startup Checklist; MC Startup Checklist; Vendor Startup
- DC1-CRAH-L3-Cx-1460: Steps: EC Startup Checklist; MC Startup Checklist; Vendor Startup
- DC1-CRAH-L3-Cx-1490: Steps: EC Startup Checklist; MC Startup Checklist; Vendor Startup
- DC1-CRAH-L3-Cx-1520: Steps: EC Startup Checklist; MC Startup Checklist; Vendor Startup
- DC1-CRAH-L3-Cx-1550: Steps: EC Startup Checklist; MC Startup Checklist; Vendor Startup

| ID | WBS | Activity | Duration | Start | Finish | Predecessors | Complete | Planned start | Planned finish | Vendor Responsible Party | Layton Discipline | Location | CX Level | Equipment |
| --- | --- | --- | --- | --- | --- | --- | --- | --- | --- | --- | --- | --- | --- | --- |
|  | 20 | **DH2100 CRAH-DH-20 L3** |  | 2026-05-19 | 2026-07-20 |  |  |  |  |  |  |  |  |  |
| DC1-CRAH-L3-Cx-1570 |  | DC1-DH2100-CRAH-DH-20 FTE | 1d | 2026-05-19 A | 2026-05-19 A | DC1-CRAH-L2-1190, DC1-MOD2-L3-Cx-1150 SS, DC1-MOD2-L3-Cx-1180 SS | 100% | 2026-06-03 | 2026-06-03 | ROS | Commissioning | DH2100 | L3 | DH CRAH |
| DC1-CRAH-L3-Cx-1580 |  | DC1-DH2100-CRAH-DH-20 BMS/EPMS Programming | 2d | 2026-05-20 A | 2026-05-20 A | DC1-CRAH-L3-Cx-1570 | 100% | 2026-06-04 | 2026-06-05 | UMAS | Commissioning | DH2100 | L3 | DH CRAH |
| DC1-CRAH-L3-Cx-1590 |  | DC1-DH2100-CRAH-DH-20 L3 Startup | 2d | 2026-05-21 A | 2026-07-20 A | DC1-CRAH-L3-Cx-1580 | 100% | 2026-06-03 | 2026-06-04 | PRM | Commissioning | DH2100 | L3 | DH CRAH |
|  | 21 | **DH2100 CRAH-DH-21 L3** |  | 2026-05-19 | 2026-07-20 |  |  |  |  |  |  |  |  |  |
| DC1-CRAH-L3-Cx-1600 |  | DC1-DH2100-CRAH-DH-21 FTE | 1d | 2026-05-19 A | 2026-05-19 A | DC1-MOD2-L3-Cx-1180 SS, DC1-CRAH-L2-1200, DC1-MOD2-L3-Cx-1000 SS | 100% | 2026-06-03 | 2026-06-03 | ROS | Commissioning | DH2100 | L3 | DH CRAH |
| DC1-CRAH-L3-Cx-1610 |  | DC1-DH2100-CRAH-DH-21 BMS/EPMS Programming | 2d | 2026-05-20 A | 2026-05-20 A | DC1-CRAH-L3-Cx-1600 | 100% | 2026-06-04 | 2026-06-05 | UMAS | Commissioning | DH2100 | L3 | DH CRAH |
| DC1-CRAH-L3-Cx-1620 |  | DC1-DH2100-CRAH-DH-21 L3 Startup | 2d | 2026-05-21 A | 2026-07-20 A | DC1-CRAH-L3-Cx-1610 | 100% | 2026-06-03 | 2026-06-04 | PRM | Commissioning | DH2100 | L3 | DH CRAH |
|  | 22 | **DH2100 CRAH-DH-22 L3** |  | 2026-05-19 | 2026-07-20 |  |  |  |  |  |  |  |  |  |
| DC1-CRAH-L3-Cx-1630 |  | DC1-DH2100-CRAH-DH-22 FTE | 1d | 2026-05-19 A | 2026-05-19 A | DC1-CRAH-L2-1210, DC1-MOD2-L3-Cx-1060 SS, DC1-MOD2-L3-Cx-1000 SS | 100% | 2026-06-03 | 2026-06-03 | ROS | Commissioning | DH2100 | L3 | DH CRAH |
| DC1-CRAH-L3-Cx-1640 |  | DC1-DH2100-CRAH-DH-22 BMS/EPMS Programming | 2d | 2026-05-20 A | 2026-05-20 A | DC1-CRAH-L3-Cx-1630 | 100% | 2026-06-04 | 2026-06-05 | UMAS | Commissioning | DH2100 | L3 | DH CRAH |
| DC1-CRAH-L3-Cx-1650 |  | DC1-DH2100-CRAH-DH-22 L3 Startup | 2d | 2026-05-21 A | 2026-07-20 A | DC1-CRAH-L3-Cx-1640 | 100% | 2026-06-03 | 2026-06-04 | PRM | Commissioning | DH2100 | L3 | DH CRAH |
|  | 23 | **DH2100 CRAH-DH-23 L3** |  | 2026-05-19 | 2026-07-20 |  |  |  |  |  |  |  |  |  |
| DC1-CRAH-L3-Cx-1660 |  | DC1-DH2100-CRAH-DH-23 FTE | 1d | 2026-05-19 A | 2026-05-19 A | DC1-CRAH-L2-1220, DC1-MOD2-L3-Cx-1090 SS, DC1-MOD2-L3-Cx-1030 SS | 100% | 2026-06-03 | 2026-06-03 | ROS | Commissioning | DH2100 | L3 | DH CRAH |
| DC1-CRAH-L3-Cx-1670 |  | DC1-DH2100-CRAH-DH-23 BMS/EPMS Programming | 2d | 2026-05-20 A | 2026-05-20 A | DC1-CRAH-L3-Cx-1660 | 100% | 2026-06-04 | 2026-06-05 | UMAS | Commissioning | DH2100 | L3 | DH CRAH |
| DC1-CRAH-L3-Cx-1680 |  | DC1-DH2100-CRAH-DH-23 L3 Startup | 2d | 2026-05-21 A | 2026-07-20 A | DC1-CRAH-L3-Cx-1670 | 100% | 2026-06-03 | 2026-06-04 | PRM | Commissioning | DH2100 | L3 | DH CRAH |
|  | 24 | **DH2100 CRAH-DH-24 L3** |  | 2026-05-19 | 2026-07-20 |  |  |  |  |  |  |  |  |  |
| DC1-CRAH-L3-Cx-1690 |  | DC1-DH2100-CRAH-DH-24 FTE | 1d | 2026-05-19 A | 2026-05-19 A | DC1-CRAH-L2-1230, DC1-MOD2-L3-Cx-1120 SS, DC1-MOD2-L3-Cx-1060 SS | 100% | 2026-06-03 | 2026-06-03 | ROS | Commissioning | DH2100 | L3 | DH CRAH |
| DC1-CRAH-L3-Cx-1700 |  | DC1-DH2100-CRAH-DH-24 BMS/EPMS Programming | 2d | 2026-05-20 A | 2026-05-20 A | DC1-CRAH-L3-Cx-1690 | 100% | 2026-06-04 | 2026-06-05 | UMAS | Commissioning | DH2100 | L3 | DH CRAH |
| DC1-CRAH-L3-Cx-1710 |  | DC1-DH2100-CRAH-DH-24 L3 Startup | 2d | 2026-05-21 A | 2026-07-20 A | DC1-CRAH-L3-Cx-1700 | 100% | 2026-06-03 | 2026-06-04 | PRM | Commissioning | DH2100 | L3 | DH CRAH |
|  | 25 | **DH2100 CRAH-DH-25 L3** |  | 2026-05-19 | 2026-07-20 |  |  |  |  |  |  |  |  |  |
| DC1-CRAH-L3-Cx-1720 |  | DC1-DH2100-CRAH-DH-25 FTE | 1d | 2026-05-19 A | 2026-05-19 A | DC1-CRAH-L2-1240, DC1-MOD2-L3-Cx-1150 SS, DC1-MOD2-L3-Cx-1090 SS | 100% | 2026-06-03 | 2026-06-03 | ROS | Commissioning | DH2100 | L3 | DH CRAH |
| DC1-CRAH-L3-Cx-1730 |  | DC1-DH2100-CRAH-DH-25 BMS/EPMS Programming | 2d | 2026-05-20 A | 2026-05-20 A | DC1-CRAH-L3-Cx-1720 | 100% | 2026-06-04 | 2026-06-05 | UMAS | Commissioning | DH2100 | L3 | DH CRAH |
| DC1-CRAH-L3-Cx-1740 |  | DC1-DH2100-CRAH-DH-25 L3 Startup | 2d | 2026-05-21 A | 2026-07-20 A | DC1-CRAH-L3-Cx-1730 | 100% | 2026-06-03 | 2026-06-04 | PRM | Commissioning | DH2100 | L3 | DH CRAH |

Notes:
- DC1-CRAH-L3-Cx-1580: Steps: EC Startup Checklist; MC Startup Checklist; Vendor Startup
- DC1-CRAH-L3-Cx-1610: Steps: EC Startup Checklist; MC Startup Checklist; Vendor Startup
- DC1-CRAH-L3-Cx-1640: Steps: EC Startup Checklist; MC Startup Checklist; Vendor Startup
- DC1-CRAH-L3-Cx-1670: Steps: EC Startup Checklist; MC Startup Checklist; Vendor Startup
- DC1-CRAH-L3-Cx-1700: Steps: EC Startup Checklist; MC Startup Checklist; Vendor Startup
- DC1-CRAH-L3-Cx-1730: Steps: EC Startup Checklist; MC Startup Checklist; Vendor Startup

| ID | WBS | Activity | Duration | Start | Finish | Predecessors | Complete | Planned start | Planned finish | Vendor Responsible Party | Layton Discipline | Location | CX Level | Equipment |
| --- | --- | --- | --- | --- | --- | --- | --- | --- | --- | --- | --- | --- | --- | --- |
|  | 26 | **DH2100 CRAH-DH-26 L3** |  | 2026-05-19 | 2026-07-20 |  |  |  |  |  |  |  |  |  |
| DC1-CRAH-L3-Cx-1750 |  | DC1-DH2100-CRAH-DH-26 FTE | 1d | 2026-05-19 A | 2026-05-19 A | DC1-CRAH-L2-1250, DC1-MOD2-L3-Cx-1120 SS, DC1-MOD2-L3-Cx-1180 SS | 100% | 2026-06-03 | 2026-06-03 | ROS | Commissioning | DH2100 | L3 | DH CRAH |
| DC1-CRAH-L3-Cx-1760 |  | DC1-DH2100-CRAH-DH-26 BMS/EPMS Programming | 2d | 2026-05-20 A | 2026-05-20 A | DC1-CRAH-L3-Cx-1750 | 100% | 2026-06-04 | 2026-06-05 | UMAS | Commissioning | DH2100 | L3 | DH CRAH |
| DC1-CRAH-L3-Cx-1770 |  | DC1-DH2100-CRAH-DH-26 L3 Startup | 2d | 2026-05-21 A | 2026-07-20 A | DC1-CRAH-L3-Cx-1760 | 100% | 2026-06-03 | 2026-06-04 | PRM | Commissioning | DH2100 | L3 | DH CRAH |
|  | 27 | **DH2100 CRAH-DH-27 L3** |  | 2026-05-19 | 2026-07-20 |  |  |  |  |  |  |  |  |  |
| DC1-CRAH-L3-Cx-1780 |  | DC1-DH2100-CRAH-DH-27 FTE | 1d | 2026-05-19 A | 2026-05-19 A | DC1-CRAH-L2-1260, DC1-MOD2-L3-Cx-1150 SS, DC1-MOD2-L3-Cx-1000 SS | 100% | 2026-06-03 | 2026-06-03 | ROS | Commissioning | DH2100 | L3 | DH CRAH |
| DC1-CRAH-L3-Cx-1790 |  | DC1-DH2100-CRAH-DH-27 BMS/EPMS Programming | 2d | 2026-05-20 A | 2026-05-20 A | DC1-CRAH-L3-Cx-1780 | 100% | 2026-06-04 | 2026-06-05 | UMAS | Commissioning | DH2100 | L3 | DH CRAH |
| DC1-CRAH-L3-Cx-1800 |  | DC1-DH2100-CRAH-DH-27 L3 Startup | 2d | 2026-05-21 A | 2026-07-20 A | DC1-CRAH-L3-Cx-1790 | 100% | 2026-06-03 | 2026-06-04 | PRM | Commissioning | DH2100 | L3 | DH CRAH |
|  | 28 | **DH2100 CRAH-DH-28 L3** |  | 2026-05-19 | 2026-07-20 |  |  |  |  |  |  |  |  |  |
| DC1-CRAH-L3-Cx-1810 |  | DC1-DH2100-CRAH-DH-28 FTE | 1d | 2026-05-19 A | 2026-05-19 A | DC1-MOD2-L3-Cx-1180 SS, DC1-CRAH-L2-1270, DC1-MOD2-L3-Cx-1030 SS | 100% | 2026-06-03 | 2026-06-03 | ROS | Commissioning | DH2100 | L3 | DH CRAH |
| DC1-CRAH-L3-Cx-1820 |  | DC1-DH2100-CRAH-DH-28 BMS/EPMS Programming | 2d | 2026-05-20 A | 2026-05-20 A | DC1-CRAH-L3-Cx-1810 | 100% | 2026-06-04 | 2026-06-05 | UMAS | Commissioning | DH2100 | L3 | DH CRAH |
| DC1-CRAH-L3-Cx-1830 |  | DC1-DH2100-CRAH-DH-28 L3 Startup | 2d | 2026-05-21 A | 2026-07-20 A | DC1-CRAH-L3-Cx-1820 | 100% | 2026-06-03 | 2026-06-04 | PRM | Commissioning | DH2100 | L3 | DH CRAH |
|  | 29 | **DH2100 CRAH-EG-01 L3** |  | 2026-05-14 | 2026-07-20 |  |  |  |  |  |  |  |  |  |
| DC1-CRAH-L3-Cx-1840 |  | DC1-DH2100-CRAH-EG-2102-01 FTE | 1d | 2026-05-14 A | 2026-05-14 A | DC1-MOD2-L3-Cx-1150 SS, DC1-CRAH-L2-1280 | 100% |  |  | ROS | Commissioning | DH2100 | L3 | EG CRAH |
| DC1-CRAH-L3-Cx-1850 |  | DC1-DH2100-CRAH-EG-2102-01 L3 Startup | 2d | 2026-05-20 A | 2026-07-20 A | DC1-CRAH-L3-Cx-1840 | 100% | 2026-06-04 | 2026-06-05 | VER | Commissioning | DH2100 | L3 | EG CRAH |
| DC1-CRAH-L3-Cx-1860 |  | DC1-DH2100-CRAH-EG-2102-01 BMS/EPMS Programming | 1d | 2026-05-28 A | 2026-05-28 A | QTS-1007140 | 100% |  |  | PRM | Commissioning | DH2100 | L3 | EG CRAH |
|  | 30 | **DH2100 CRAH-EG-02 L3** |  | 2026-05-14 | 2026-07-20 |  |  |  |  |  |  |  |  |  |
| DC1-CRAH-L3-Cx-1870 |  | DC1-DH2100-CRAH-EG-2102-02 FTE | 1d | 2026-05-14 A | 2026-05-14 A | DC1-CRAH-L2-1290, DC1-MOD2-L3-Cx-1090 SS | 100% |  |  | ROS | Commissioning | DH2100 | L3 | EG CRAH |
| DC1-CRAH-L3-Cx-1880 |  | DC1-DH2100-CRAH-EG-2102-02 L3 Startup | 2d | 2026-05-20 A | 2026-07-20 A | DC1-CRAH-L3-Cx-1870 | 100% | 2026-06-04 | 2026-06-05 | VER | Commissioning | DH2100 | L3 | EG CRAH |
| DC1-CRAH-L3-Cx-1890 |  | DC1-DH2100-CRAH-EG-2102-02 BMS/EPMS Programming | 1d | 2026-05-28 A | 2026-05-28 A | QTS-1007140 | 100% | 2026-06-08 | 2026-06-08 | PRM | Commissioning | DH2100 | L3 | EG CRAH |
|  | 31 | **DH2100 CRAH-EG-03 L3** |  | 2026-05-14 | 2026-07-20 |  |  |  |  |  |  |  |  |  |
| DC1-CRAH-L3-Cx-1900 |  | DC1-DH2100-CRAH-EG-2102-03 FTE | 1d | 2026-05-14 A | 2026-05-14 A | DC1-CRAH-L2-1300, DC1-MOD2-L3-Cx-1060 SS | 100% |  |  | ROS | Commissioning | DH2100 | L3 | EG CRAH |
| DC1-CRAH-L3-Cx-1910 |  | DC1-DH2100-CRAH-EG-2102-03 L3 Startup | 2d | 2026-05-20 A | 2026-07-20 A | DC1-CRAH-L3-Cx-1900 | 100% | 2026-06-04 | 2026-06-05 | VER | Commissioning | DH2100 | L3 | EG CRAH |
| DC1-CRAH-L3-Cx-1920 |  | DC1-DH2100-CRAH-EG-2102-03 BMS/EPMS Programming | 1d | 2026-05-28 A | 2026-05-28 A | QTS-1007140 | 100% | 2026-06-08 | 2026-06-08 | PRM | Commissioning | DH2100 | L3 | EG CRAH |

Notes:
- DC1-CRAH-L3-Cx-1760: Steps: EC Startup Checklist; MC Startup Checklist; Vendor Startup
- DC1-CRAH-L3-Cx-1790: Steps: EC Startup Checklist; MC Startup Checklist; Vendor Startup
- DC1-CRAH-L3-Cx-1820: Steps: EC Startup Checklist; MC Startup Checklist; Vendor Startup
- DC1-CRAH-L3-Cx-1850: Steps: EC Startup Checklist; MC Startup Checklist; Vendor Startup
- DC1-CRAH-L3-Cx-1880: Steps: EC Startup Checklist; MC Startup Checklist; Vendor Startup
- DC1-CRAH-L3-Cx-1910: Steps: EC Startup Checklist; MC Startup Checklist; Vendor Startup

| ID | WBS | Activity | Duration | Start | Finish | Predecessors | Complete | Planned start | Planned finish | Vendor Responsible Party | Layton Discipline | Location | CX Level | Equipment | Notes | NICK |
| --- | --- | --- | --- | --- | --- | --- | --- | --- | --- | --- | --- | --- | --- | --- | --- | --- |
|  | 32 | **DH2100 CRAH-EG-04 L3** |  | 2026-05-14 | 2026-07-20 |  |  |  |  |  |  |  |  |  |  |  |
| DC1-CRAH-L3-Cx-1930 |  | DC1-DH2100-CRAH-EG-2102-04 FTE | 1d | 2026-05-14 A | 2026-05-14 A | DC1-MOD2-L3-Cx-1000 SS, DC1-CRAH-L2-1310 | 100% |  |  | ROS | Commissioning | DH2100 | L3 | EG CRAH |  |  |
| DC1-CRAH-L3-Cx-1940 |  | DC1-DH2100-CRAH-EG-2102-04 L3 Startup | 2d | 2026-05-20 A | 2026-07-20 A | DC1-CRAH-L3-Cx-1930 | 100% | 2026-06-04 | 2026-06-05 | VER | Commissioning | DH2100 | L3 | EG CRAH |  |  |
| DC1-CRAH-L3-Cx-1950 |  | DC1-DH2100-CRAH-EG-2102-04 BMS/EPMS Programming | 1d | 2026-05-28 A | 2026-05-28 A | QTS-1007140 | 100% | 2026-06-08 | 2026-06-08 | PRM | Commissioning | DH2100 | L3 | EG CRAH |  |  |
|  | 33 | **DC1-DH2100-DOAS-RT-01 L3** |  | 2026-05-28 | 2026-07-20 |  |  |  |  |  |  |  |  |  |  |  |
| DC1-DOAS-L3-Cx-1000 |  | DC1-DH2100-DOAS-RT-01 FTE | 1d | 2026-05-28 A | 2026-05-28 A | DC1-DOAS-L2-1000, DC1-MOD2-L3-Cx-1000 SS | 100% |  |  | ROS | Commissioning | DH2100 | L3 | DOAS |  |  |
| DC1-DOAS-L3-Cx-1020 |  | DC1-DH2100-DOAS-RT-01 BMS/EPMS Programming | 1d | 2026-05-28 A | 2026-05-28 A | QTS-1007140 | 100% | 2026-06-08 | 2026-06-08 | PRM | Commissioning | DH2100 | L3 | DOAS |  |  |
| DC1-DOAS-L3-Cx-1010 |  | DC1-DH2100-DOAS-RT-01 L3 Startup | 2d | 2026-05-29 A | 2026-07-20 A | DC1-DOAS-L3-Cx-1000 | 100% | 2026-06-04 | 2026-06-05 | TAS | Commissioning | DH2100 | L3 | DOAS |  |  |
|  | 34 | **DC1-DH2100-DOAS-RT-02 L3** |  | 2026-05-28 | 2026-07-20 |  |  |  |  |  |  |  |  |  |  |  |
| DC1-DOAS-L3-Cx-1030 |  | DC1-DH2100-DOAS-RT-02 FTE | 1d | 2026-05-28 A | 2026-05-28 A | DC1-DOAS-L2-1010, DC1-MOD2-L3-Cx-1180 SS | 100% | 2026-06-03 | 2026-06-03 | ROS | Commissioning | DH2100 | L3 | DOAS |  |  |
| DC1-DOAS-L3-Cx-1050 |  | DC1-DH2100-DOAS-RT-02 BMS/EPMS Programming | 1d | 2026-05-28 A | 2026-05-28 A | QTS-1007140 | 100% | 2026-06-08 | 2026-06-08 | PRM | Commissioning | DH2100 | L3 | DOAS |  |  |
| DC1-DOAS-L3-Cx-1040 |  | DC1-DH2100-DOAS-RT-02 L3 Startup | 2d | 2026-05-29 A | 2026-07-20 A | DC1-DOAS-L3-Cx-1030 | 100% | 2026-06-04 | 2026-06-05 | TAS | Commissioning | DH2100 | L3 | DOAS |  |  |
|  | 1 | **DC1-DH2100 CDU SCP Cx L3** |  |  |  |  |  |  |  |  |  |  |  |  |  |  |
|  | 14 | **DC1-DH2100 LOADBANK** |  | 2026-05-11 | 2026-05-21 |  |  |  |  |  |  |  |  |  |  |  |
| DC1-DH2100-LB-1000 |  | DC1-DH2100 Connect Air Cooled Load Banks at RPPs | 5d | 2026-05-11 A | 2026-05-15 A | DC1-RPP-L3-CX-1005, DC1-RPP-L3-CX-1020, DC1-RPP-L3-CX-1035, DC1-RPP-L3-CX-1050, DC1-RPP-L3-CX-1065, DC1-RPP-L3-CX-1080, DC1-RPP-L3-CX-1095, DC1-RPP-L3-CX-1110, DC1-RPP-L3-CX-1125, DC1-RPP-L3-CX-1140, DC1-RPP-L3-CX-1155, DC1-RPP-L3-CX-1170, DC1-RPP-L3-CX-1185, DC1-RPP-L3-CX-1200, DC1-RPP-L3-CX-1215, DC1-RPP-L3-CX-1230, DC1-RPP-L3-CX-1245, DC1-RPP-L3-CX-1260, DC1-RPP-L3-CX-1275, DC1-RPP-L3-CX-1290, DC1-RPP-L3-CX-1305, DC1-RPP-L3-CX-1320, DC1-RPP-L3-CX-1335, DC1-RPP-L3-CX-1350 | 100% |  |  | PHE | Commissioning | DH2100 | L3 | COD |  |  |
| DC1-DH2100-LB-1010 |  | DC1-DH2100 Burn in Chillers | 5d | 2026-05-15 A | 2026-05-21 A | DC1-DH1100-LB-1010, DC1-DH2100-LB-1000 | 100% |  |  | LAY | Commissioning | DH2100 | L3 | CHILLER | Connected to RPPs | NICK |
|  | 15 | **DC1-DH2100 TAB** |  | 2026-05-12 | 2026-05-12 |  |  |  |  |  |  |  |  |  |  |  |
| DC1-DH2100-TAB-1000 |  | DC1-DH2100 Water Tab (Industrial Loop) | 5d | 2026-05-12 A | 2026-05-12 A | DC1-DH1100-TAB-1000 SS, DC1-DH1100-TAB-1000 FF | 100% | 2026-04-27 | 2026-05-01 | LAY | Commissioning | DH2100 | L3 |  |  |  |
|  | 04 | **Data Hall 2100 Cx L4** |  | 2026-04-27 | 2026-05-12 |  |  |  |  |  |  |  |  |  |  |  |
|  | 01 | **Data Hall 2100 Electrical Cx L4** |  | 2026-04-27 | 2026-05-12 |  |  |  |  |  |  |  |  |  |  |  |
| DC1-L4-Cx-1020 |  | DC1 Data Hall 2100 Generator Burns A21 & B21 | 1d | 2026-04-27 A | 2026-04-27 A | DC1-GEN-L3-CX-1030, DC1-GEN-L3-CX-1000 | 100% |  |  | HLT | Commissioning | DH2100 | L4 | GEN |  |  |
| DC1-L4-Cx-1030 |  | DC1 Data Hall 2100 Generator Burns C21 & D21 | 1d | 2026-04-28 A | 2026-04-28 A | DC1-GEN-L3-CX-1090, DC1-GEN-L3-CX-1060, DC1-L4-Cx-1020 | 100% |  |  | HLT | Commissioning | DH2100 | L4 | GEN |  |  |
| DC1-L4-Cx-1040 |  | DC1 Data Hall 2100 Generator Burns E21 & F21 | 1d | 2026-05-11 A | 2026-05-11 A | DC1-GEN-L3-CX-1150, DC1-GEN-L3-CX-1120, DC1-L4-Cx-1030 | 100% |  |  | HLT | Commissioning | DH2100 | L4 | GEN |  |  |
| DC1-L4-Cx-1050 |  | DC1 Data Hall 2100 Generator Burns R21 | 1d | 2026-05-12 A | 2026-05-12 A | DC1-GEN-L3-CX-1180, DC1-L4-Cx-1040 | 100% |  |  | HLT | Commissioning | DH2100 | L4 | GEN |  |  |

Notes:
- DC1-CRAH-L3-Cx-1940: Steps: EC Startup Checklist; MC Startup Checklist; Vendor Startup
- DC1-DOAS-L3-Cx-1010: Steps: EC Startup Checklist; MC Startup Checklist; Vendor Startup
- DC1-DOAS-L3-Cx-1040: Steps: EC Startup Checklist; MC Startup Checklist; Vendor Startup

| ID | WBS | Activity | Duration | Start | Finish | Predecessors | Complete | Planned start | Planned finish | Vendor Responsible Party | Allucent CSI Group | Layton Discipline | Location | CX Level | Equipment |
| --- | --- | --- | --- | --- | --- | --- | --- | --- | --- | --- | --- | --- | --- | --- | --- |
|  | 02 | **Data Hall 2100 Mechanical Cx L4** |  |  |  |  |  |  |  |  |  |  |  |  |  |
|  | 05 | **Data Hall 2100 Cx L5** |  |  |  |  |  |  |  |  |  |  |  |  |  |
|  | 03 | **Data Hall 1100 Commissioning** |  | 2025-12-17 | 2026-07-24 |  |  |  |  |  |  |  |  |  |  |
|  | 02 | **Data Hall 1100 Cx L2** |  | 2025-12-17 | 2026-07-14 |  |  |  |  |  |  |  |  |  |  |
|  | 01 | **DC1-DH1100 Generators Cx L2** |  | 2026-03-16 | 2026-03-26 |  |  |  |  |  |  |  |  |  |  |
| DC1-GEN-L2-2000 |  | DH1100 GEN-A11 L2 Checklist | 7d | 2026-03-16 A | 2026-03-26 A | QTS-1001190, QTS-1000280, QTS-17351, QTS-1004490 FF, QTS-1005490 FF+2d, QTS-1007080 FF | 100% | 2026-03-16 | 2026-03-24 | HLT | 01ADMIN | Commissioning | DH1100 | L2 | GEN |
| DC1-GEN-L2-2010 |  | DH1100 GEN-B11 L2 Checklist | 7d | 2026-03-16 A | 2026-03-26 A | QTS-1001190, QTS-1000280, QTS-1004490 FF, DC1-GEN-L2-2000 SS, QTS-1005580 FF+2d, QTS-1007080 FF | 100% | 2026-03-16 | 2026-03-24 | HLT | 01ADMIN | Commissioning | DH1100 | L2 | GEN |
| DC1-GEN-L2-2020 |  | DH1100 GEN-C11 L2 Checklist | 7d | 2026-03-16 A | 2026-03-26 A | QTS-1001190, QTS-1000280, QTS-1004490 FF, DC1-GEN-L2-2010 SS, QTS-1005670 FF+2d, QTS-1007080 FF | 100% | 2026-03-16 | 2026-03-24 | HLT |  | Commissioning | DH1100 | L2 | GEN |
| DC1-GEN-L2-2030 |  | DH1100 GEN-D11 L2 Checklist | 7d | 2026-03-16 A | 2026-03-26 A | QTS-1001190, QTS-1000280, QTS-1004490 FF, DC1-GEN-L2-2020 SS, QTS-1005760 FF+2d, QTS-1007080 FF | 100% | 2026-03-16 | 2026-03-24 | HLT |  | Commissioning | DH1100 | L2 | GEN |
| DC1-GEN-L2-2060 |  | DH1100 GEN-R11 L2 Checklist | 7d | 2026-03-16 A | 2026-03-26 A | QTS-1001190, QTS-1000280, QTS-1004490 FF, QTS-1006060 FF+2d, QTS-1007080 FF | 100% | 2026-03-19 | 2026-03-27 | HLT |  | Commissioning | DH1100 | L2 | GEN |
| DC1-GEN-L2-2040 |  | DH1100 GEN-E11 L2 Checklist | 7d | 2026-03-19 A | 2026-03-26 A | QTS-1001190, QTS-1000280, QTS-1004490 FF, DC1-GEN-L2-2030 SS, QTS-1005850 FF+2d, QTS-1007080 FF | 100% | 2026-03-19 | 2026-03-27 | HLT |  | Commissioning | DH1100 | L2 | GEN |
| DC1-GEN-L2-2050 |  | DH1100 GEN-F11 L2 Checklist | 7d | 2026-03-23 A | 2026-03-26 A | QTS-1001190, QTS-1000280, QTS-1004490 FF, DC1-GEN-L2-2040 SS, QTS-1005950 FF+2d, QTS-1007080 FF | 100% | 2026-03-23 | 2026-03-31 | HLT |  | Commissioning | DH1100 | L2 | GEN |
|  | 02 | **DC1-DH1100 MV XFMRs Cx L2** |  | 2025-12-17 | 2026-04-20 |  |  |  |  |  |  |  |  |  |  |
| DC1-XFMR-L2-2000 |  | DH1100 XFMR-A11 L2 Checklist | 3d | 2025-12-17 A | 2026-03-11 A | QTS-42781, QTS-1004480 FF+1d | 100% | 2025-12-17 | 2025-12-19 | VTC |  | Commissioning | DH1100 | L2 | XFMR |
| DC1-XFMR-L2-2060 |  | DH1100 XFMR-R11 L2 Checklist | 3d | 2025-12-17 A | 2026-03-11 A | QTS-42781, QTS-15841, QTS-1004480 FF+1d | 100% | 2025-12-17 | 2025-12-19 | VTC |  | Commissioning | DH1100 | L2 | XFMR |
| DC1-XFMR-L2-2010 |  | DH1100 XFMR-B11 L2 Checklist | 3d | 2026-01-09 A | 2026-03-11 A | QTS-42781, QTS-1004480 FF+1d | 100% | 2026-01-09 | 2026-01-13 | VTC |  | Commissioning | DH1100 | L2 | XFMR |
| DC1-XFMR-L2-2030 |  | DH1100 XFMR-D11 L2 Checklist | 3d | 2026-01-13 A | 2026-03-11 A | QTS-42781, QTS-1004480 FF+1d | 100% | 2026-01-13 | 2026-01-15 | VTC |  | Commissioning | DH1100 | L2 | XFMR |
| DC1-XFMR-L2-2040 |  | DH1100 XFMR-E11 L2 Checklist | 3d | 2026-01-13 A | 2026-03-11 A | QTS-42781, QTS-1004480 FF+1d | 100% | 2026-01-13 | 2026-01-15 | VTC |  | Commissioning | DH1100 | L2 | XFMR |
| DC1-XFMR-L2-2050 |  | DH1100 XFMR-F11 L2 Checklist | 3d | 2026-01-13 A | 2026-03-11 A | QTS-42781, QTS-1004480 FF+1d | 100% | 2026-01-13 | 2026-01-15 | VTC |  | Commissioning | DH1100 | L2 | XFMR |
| DC1-XFMR-L2-2020 |  | DH1100 XFMR-C11 L2 Checklist | 3d | 2026-01-21 A | 2026-03-11 A | QTS-42781, QTS-1004480 FF+1d | 100% | 2026-01-21 | 2026-01-23 | VTC |  | Commissioning | DH1100 | L2 | XFMR |
| DC1-XFMR-L2-2350 |  | DH1100 XFMR-A11 L2 Checklist - R2 | 1d | 2026-04-20 A | 2026-04-20 A | DC1-SWD-L3-CX-3060 FF | 100% |  |  | VTC |  | Commissioning | DH1100 | L2 | XFMR |
| DC1-XFMR-L2-2360 |  | DH1100 XFMR-B11 L2 Checklist - R2 | 1d | 2026-04-20 A | 2026-04-20 A | DC1-SWD-L3-CX-3060 FF | 100% |  |  | VTC |  | Commissioning | DH1100 | L2 | XFMR |
| DC1-XFMR-L2-2370 |  | DH1100 XFMR-C11 L2 Checklist - R2 | 1d | 2026-04-20 A | 2026-04-20 A | DC1-SWD-L3-CX-3060 FF | 100% |  |  | VTC |  | Commissioning | DH1100 | L2 | XFMR |
| DC1-XFMR-L2-2380 |  | DH1100 XFMR-D11 L2 Checklist - R2 | 1d | 2026-04-20 A | 2026-04-20 A | DC1-SWD-L3-CX-3060 FF | 100% |  |  | VTC |  | Commissioning | DH1100 | L2 | XFMR |
| DC1-XFMR-L2-2390 |  | DH1100 XFMR-E11 L2 Checklist - R2 | 1d | 2026-04-20 A | 2026-04-20 A | DC1-SWD-L3-CX-3060 FF | 100% |  |  | VTC |  | Commissioning | DH1100 | L2 | XFMR |
| DC1-XFMR-L2-2400 |  | DH1100 XFMR-F11 L2 Checklist - R2 | 1d | 2026-04-20 A | 2026-04-20 A | DC1-SWD-L3-CX-3060 FF | 100% |  |  | VTC |  | Commissioning | DH1100 | L2 | XFMR |
| DC1-XFMR-L2-2410 |  | DH1100 XFMR-R11 L2 Checklist - R2 | 1d | 2026-04-20 A | 2026-04-20 A | DC1-SWD-L3-CX-3060 FF | 100% |  |  | VTC |  | Commissioning | DH1100 | L2 | XFMR |

Notes:
- DC1-GEN-L2-2000: Steps: EC Installation Checklist; MC Installation Checklist; CC Installation Checklist (done); Vendor Pre-Energization Checklist (done); CXA Pre-Energization Inspection; PEI/Clean-Walk
- DC1-GEN-L2-2010: Steps: EC Installation Checklist (done); MC Installation Checklist; CC Installation Checklist (done); Vendor Pre-Energization Checklist (done); CXA Pre-Energization Inspection; PEI/Clean-Walk
- DC1-GEN-L2-2020: Steps: EC Installation Checklist (done); MC Installation Checklist; CC Installation Checklist (done); Vendor Pre-Energization Checklist (done); CXA Pre-Energization Inspection; PEI/Clean-Walk
- DC1-GEN-L2-2030: Steps: EC Installation Checklist (done); MC Installation Checklist; CC Installation Checklist (done); Vendor Pre-Energization Checklist (done); CXA Pre-Energization Inspection; PEI/Clean-Walk
- DC1-GEN-L2-2060: Steps: EC Installation Checklist (done); MC Installation Checklist; CC Installation Checklist (done); Vendor Pre-Energization Checklist (done); CXA Pre-Energization Inspection; PEI/Clean-Walk
- DC1-GEN-L2-2040: Steps: EC Installation Checklist (done); MC Installation Checklist; CC Installation Checklist (done); Vendor Pre-Energization Checklist (done); CXA Pre-Energization Inspection; PEI/Clean-Walk
- DC1-GEN-L2-2050: Steps: EC Installation Checklist (done); MC Installation Checklist; CC Installation Checklist (done); Vendor Pre-Energization Checklist (done); CXA Pre-Energization Inspection; PEI/Clean-Walk
- DC1-XFMR-L2-2000: Steps: EC Installation Checklist (done); CC Installation Checklist (done); Vendor Pre-Energization Checklist (done); CXA Pre-Energization Inspection (done); PEI/Clean-Walk (done)
- DC1-XFMR-L2-2060: Steps: EC Installation Checklist (done); CC Installation Checklist (done); Vendor Pre-Energization Checklist (done); CXA Pre-Energization Inspection (done); PEI/Clean-Walk (done)
- DC1-XFMR-L2-2010: Steps: EC Installation Checklist (done); CC Installation Checklist (done); Vendor Pre-Energization Checklist (done); CXA Pre-Energization Inspection (done); PEI/Clean-Walk (done)
- DC1-XFMR-L2-2030: Steps: EC Installation Checklist (done); CC Installation Checklist (done); Vendor Pre-Energization Checklist (done); CXA Pre-Energization Inspection (done); PEI/Clean-Walk (done)
- DC1-XFMR-L2-2040: Steps: EC Installation Checklist (done); CC Installation Checklist (done); Vendor Pre-Energization Checklist (done); CXA Pre-Energization Inspection (done); PEI/Clean-Walk (done)
- DC1-XFMR-L2-2050: Steps: EC Installation Checklist (done); CC Installation Checklist (done); Vendor Pre-Energization Checklist (done); CXA Pre-Energization Inspection (done); PEI/Clean-Walk (done)
- DC1-XFMR-L2-2020: Steps: EC Installation Checklist; CC Installation Checklist (done); Vendor Pre-Energization Checklist (done); CXA Pre-Energization Inspection (done); PEI/Clean-Walk (done)
- DC1-XFMR-L2-2350: Steps: EC Installation Checklist (done); CC Installation Checklist (done); Vendor Pre-Energization Checklist (done); CXA Pre-Energization Inspection (done); PEI/Clean-Walk (done)
- DC1-XFMR-L2-2360: Steps: EC Installation Checklist (done); CC Installation Checklist (done); Vendor Pre-Energization Checklist (done); CXA Pre-Energization Inspection (done); PEI/Clean-Walk (done)
- DC1-XFMR-L2-2370: Steps: EC Installation Checklist (done); CC Installation Checklist (done); Vendor Pre-Energization Checklist (done); CXA Pre-Energization Inspection (done); PEI/Clean-Walk (done)
- DC1-XFMR-L2-2380: Steps: EC Installation Checklist (done); CC Installation Checklist (done); Vendor Pre-Energization Checklist (done); CXA Pre-Energization Inspection (done); PEI/Clean-Walk (done)
- DC1-XFMR-L2-2390: Steps: EC Installation Checklist (done); CC Installation Checklist (done); Vendor Pre-Energization Checklist (done); CXA Pre-Energization Inspection (done); PEI/Clean-Walk (done)
- DC1-XFMR-L2-2400: Steps: EC Installation Checklist (done); CC Installation Checklist (done); Vendor Pre-Energization Checklist (done); CXA Pre-Energization Inspection (done); PEI/Clean-Walk (done)
- DC1-XFMR-L2-2410: Steps: EC Installation Checklist (done); CC Installation Checklist (done); Vendor Pre-Energization Checklist (done); CXA Pre-Energization Inspection (done); PEI/Clean-Walk (done)

| ID | WBS | Activity | Duration | Start | Finish | Predecessors | Complete | Planned start | Planned finish | Vendor Responsible Party | Layton Discipline | Location | CX Level | Equipment | Allucent CSI Group |
| --- | --- | --- | --- | --- | --- | --- | --- | --- | --- | --- | --- | --- | --- | --- | --- |
|  | 03 | **DC1-DH1100 PODS** |  | 2026-01-21 | 2026-03-27 |  |  |  |  |  |  |  |  |  |  |
|  | 01 | **DC1-DH1100 SWDs Cx L2** |  | 2026-01-21 | 2026-03-11 |  |  |  |  |  |  |  |  |  |  |
| DC1-SWD-L2-2060 |  | DH1100 SWD-R11 L2 Checklist | 1d | 2026-01-21 A | 2026-03-11 A | QTS-43721 FF, QTS-17351 FF, QTS-15841, QTS-1004480 FF+1d | 100% | 2026-01-21 | 2026-01-21 | SIE | Commissioning | DH1100 | L2 | SWD |  |
| DC1-SWD-L2-2040 |  | DH1100 SWD-E11 L2 Checklist | 1d | 2026-02-03 A | 2026-03-11 A | QTS-43721 FF, QTS-1004480 FF+1d, QTS-43711 FF | 100% | 2026-02-03 | 2026-02-03 | SIE | Commissioning | DH1100 | L2 | SWD |  |
| DC1-SWD-L2-2000 |  | DH1100 SWD-A11 L2 Checklist | 1d | 2026-03-11 A | 2026-03-11 A | QTS-25591, QTS-24911, QTS-18621, QTS-1004480 FF+1d, QTS-1005180, QTS-1005190 | 100% |  |  | SIE | Commissioning | DH1100 | L2 | SWD |  |
| DC1-SWD-L2-2010 |  | DH1100 SWD-B11 L2 Checklist | 1d | 2026-03-11 A | 2026-03-11 A | QTS-18621, QTS-1004480 FF+1d | 100% |  |  | SIE | Commissioning | DH1100 | L2 | SWD |  |
| DC1-SWD-L2-2020 |  | DH1100 SWD-C11 L2 Checklist | 1d | 2026-03-11 A | 2026-03-11 A | QTS-18621, QTS-1004480 FF+1d | 100% |  |  | SIE | Commissioning | DH1100 | L2 | SWD |  |
| DC1-SWD-L2-2030 |  | DH1100 SWD-D11 L2 Checklist | 1d | 2026-03-11 A | 2026-03-11 A | QTS-18621, QTS-1004480 FF+1d | 100% |  |  | SIE | Commissioning | DH1100 | L2 | SWD |  |
| DC1-SWD-L2-2050 |  | DH1100 SWD-F11 L2 Checklist | 1d | 2026-03-11 A | 2026-03-11 A | QTS-43721 FF, QTS-1004480 FF+1d | 100% |  |  | SIE | Commissioning | DH1100 | L2 | SWD |  |
|  | 02 | **DC1-DH1100 MOD-01s Cx L2** |  | 2026-03-11 | 2026-03-12 |  |  |  |  |  |  |  |  |  |  |
| DC1-MOD01-L2-2000 |  | DH1100 MOD-A11-01 L2 Checklist | 3d | 2026-03-11 A | 2026-03-12 A | QTS-13541 | 100% | 2026-03-11 | 2026-03-13 | PHE | Commissioning | DH1100 | L2 | MOD-01 | 01ADMIN |
| DC1-MOD01-L2-2010 |  | DH1100 MOD-B11-01 L2 Checklist | 3d | 2026-03-11 A | 2026-03-12 A | QTS-13541 | 100% | 2026-03-17 | 2026-03-19 | PHE | Commissioning | DH1100 | L2 | MOD-01 | 01ADMIN |
| DC1-MOD01-L2-2020 |  | DH1100 MOD-C11-01 L2 Checklist | 3d | 2026-03-11 A | 2026-03-12 A | QTS-13541 | 100% | 2026-03-18 | 2026-03-20 | PHE | Commissioning | DH1100 | L2 | MOD-01 | 01ADMIN |
| DC1-MOD01-L2-2030 |  | DH1100 MOD-D11-01 L2 Checklist | 3d | 2026-03-11 A | 2026-03-12 A | QTS-13541 | 100% | 2026-03-18 | 2026-03-20 | PHE | Commissioning | DH1100 | L2 | MOD-01 | 01ADMIN |
| DC1-MOD01-L2-2040 |  | DH1100 MOD-E11-01 L2 Checklist | 3d | 2026-03-11 A | 2026-03-12 A | QTS-13541 | 100% | 2026-03-17 | 2026-03-19 | PHE | Commissioning | DH1100 | L2 | MOD-01 | 01ADMIN |
| DC1-MOD01-L2-2050 |  | DH1100 MOD-F11-01 L2 Checklist | 3d | 2026-03-11 A | 2026-03-12 A | QTS-13541 | 100% | 2026-03-18 | 2026-03-20 | PHE | Commissioning | DH1100 | L2 | MOD-01 | 01ADMIN |
| DC1-MOD01-L2-2060 |  | DH1100 MOD-R11-01 L2 Checklist | 3d | 2026-03-11 A | 2026-03-12 A | QTS-13541 | 100% | 2026-03-18 | 2026-03-20 | PHE | Commissioning | DH1100 | L2 | MOD-01 | 01ADMIN |
|  | 03 | **DC1-DH1100 UPS-M Cx L2** |  | 2026-03-14 | 2026-03-27 |  |  |  |  |  |  |  |  |  |  |
| DC1-UPS-M-L2-2000 |  | DH1100 UPS-M-A11 L2 Checklist | 1d | 2026-03-14 A | 2026-03-23 A | QTS-43691, QTS-18621, QTS-1005470 FF+2d | 100% | 2026-03-16 | 2026-03-16 | VER | Commissioning | DH1100 | L2 | UPS |  |
| DC1-UPS-M-L2-2010 |  | DH1100 UPS-M-B11 L2 Checklist | 1d | 2026-03-14 A | 2026-03-23 A | QTS-18621, QTS-1005570 FF+2d | 100% | 2026-03-25 | 2026-03-25 | VER | Commissioning | DH1100 | L2 | UPS |  |
| DC1-UPS-M-L2-2020 |  | DH1100 UPS-M-C11 L2 Checklist | 1d | 2026-03-14 A | 2026-03-23 A | QTS-18621, QTS-1005660 FF+2d | 100% | 2026-03-25 | 2026-03-25 | VER | Commissioning | DH1100 | L2 | UPS |  |
| DC1-UPS-M-L2-2030 |  | DH1100 UPS-M-D11 L2 Checklist | 1d | 2026-03-14 A | 2026-03-23 A | QTS-43721 FF, QTS-1005750 FF+2d | 100% | 2026-03-25 | 2026-03-25 | VER | Commissioning | DH1100 | L2 | UPS |  |
| DC1-UPS-M-L2-2040 |  | DH1100 UPS-M-E11 L2 Checklist | 1d | 2026-03-14 A | 2026-03-23 A | QTS-43721 FF, QTS-1005840 FF+2d | 100% | 2026-03-25 | 2026-03-25 | VER | Commissioning | DH1100 | L2 | UPS |  |
| DC1-UPS-M-L2-2050 |  | DH1100 UPS-M-F11 L2 Checklist | 1d | 2026-03-14 A | 2026-03-23 A | QTS-43721 FF, QTS-1005940 FF+2d | 100% | 2026-03-25 | 2026-03-25 | VER | Commissioning | DH1100 | L2 | UPS |  |
| DC1-UPS-M-L2-2060 |  | DH1100 UPS-M-R11 L2 Checklist | 1d | 2026-03-14 A | 2026-03-27 A | QTS-18621, QTS-1006050 FF+2d | 100% | 2026-03-25 | 2026-03-25 | VER | Commissioning | DH1100 | L2 | UPS |  |

Notes:
- DC1-SWD-L2-2060: Steps: Vendor Pre-Energization Checklist (done); CXA Pre-Energization Inspection (done); PEI/Clean-Walk
- DC1-SWD-L2-2040: Steps: Vendor Pre-Energization Checklist (done); CXA Pre-Energization Inspection (done); PEI/Clean-Walk
- DC1-SWD-L2-2000: Steps: Vendor Pre-Energization Checklist (done); CXA Pre-Energization Inspection (done); PEI/Clean-Walk
- DC1-SWD-L2-2010: Steps: Vendor Pre-Energization Checklist (done); CXA Pre-Energization Inspection; PEI/Clean-Walk
- DC1-SWD-L2-2020: Steps: Vendor Pre-Energization Checklist (done); CXA Pre-Energization Inspection (done); PEI/Clean-Walk
- DC1-SWD-L2-2030: Steps: Vendor Pre-Energization Checklist (done); CXA Pre-Energization Inspection (done); PEI/Clean-Walk
- DC1-SWD-L2-2050: Steps: Vendor Pre-Energization Checklist (done); CXA Pre-Energization Inspection (done); PEI/Clean-Walk
- DC1-MOD01-L2-2000: allucent_notes_20251216_165335: Jason Johnston on 2025-12-09 15:16: Need to confirm who is responsible for updating this / Riley Warring on 2025-12-16 14:35: Not started as of 12/16 / Riley Warring on 2025-12-16 14:36: Not started as of 12/16 / allucent_notes_20251209_203830: Jason Johnston on 2025-12-09 15:16: Need to confirm who is responsible for updating this / allucent_notes_20251230_164549: Jason Johnston on 2025-12-09 15:16: Need to confirm who is responsible for updating this / Riley Warring on 2025-12-16 14:35: Not started as of 12/16 / Riley Warring on 2025-12-16 14:36: Not started as of 12/16 / Riley Warring on 2025-12-29 12:11: Checklist not started in Cx Alloy / Steps: Vendor Pre-Energization Checklist; EC; CXA Pre-Energization Inspection; PEI/Clean-Walk / allucent_notes: 2025-12-09 15:16 - User: Jason Johnston - Date Added: 2025-12-09 15:16 - Note: Need to confirm who is responsible for updating this / 2025-12-16 14:35 - User: Riley Warring - Date Added: 2025-12-16 14:35 - Note: Not started as of 12/16 / 2025-12-16 14:3
- DC1-MOD01-L2-2010: allucent_notes_20251216_165335: Jason Johnston on 2025-12-09 15:16: Need to confirm who is responsible for updating this / Riley Warring on 2025-12-16 14:36: Not started as of 12/16 / allucent_notes_20251209_203830: Jason Johnston on 2025-12-09 15:16: Need to confirm who is responsible for updating this / allucent_notes_20251230_164549: Jason Johnston on 2025-12-09 15:16: Need to confirm who is responsible for updating this / Riley Warring on 2025-12-16 14:36: Not started as of 12/16 / Riley Warring on 2025-12-29 12:12: Checklist not started in Cx Alloy / Steps: Vendor Pre-Energization Checklist (done); EC (done); CXA Pre-Energization Inspection; PEI/Clean-Walk / allucent_notes: 2025-12-09 15:16 - User: Jason Johnston - Date Added: 2025-12-09 15:16 - Note: Need to confirm who is responsible for updating this / 2025-12-16 14:36 - User: Riley Warring - Date Added: 2025-12-16 14:36 - Note: Not started as of 12/16 / 2025-12-29 12:1
- DC1-MOD01-L2-2020: allucent_notes_20251216_165335: Jason Johnston on 2025-12-09 15:16: Need to confirm who is responsible for updating this / Riley Warring on 2025-12-16 14:35: Not started as of 12/16 / allucent_notes_20251209_203830: Jason Johnston on 2025-12-09 15:16: Need to confirm who is responsible for updating this / allucent_notes_20251230_164549: Jason Johnston on 2025-12-09 15:16: Need to confirm who is responsible for updating this / Riley Warring on 2025-12-16 14:35: Not started as of 12/16 / Riley Warring on 2025-12-29 12:12: Checklist not started in Cx Alloy / Steps: Vendor Pre-Energization Checklist; CXA Pre-Energization Inspection; PEI/Clean-Walk / allucent_notes: 2025-12-09 15:16 - User: Jason Johnston - Date Added: 2025-12-09 15:16 - Note: Need to confirm who is responsible for updating this / 2025-12-16 14:35 - User: Riley Warring - Date Added: 2025-12-16 14:35 - Note: Not started as of 12/16 / 2025-12-29 12:1
- DC1-MOD01-L2-2030: allucent_notes_20251216_165335: Jason Johnston on 2025-12-09 15:16: Need to confirm who is responsible for updating this / Riley Warring on 2025-12-16 14:36: Not started as of 12/16 / allucent_notes_20251209_203830: Jason Johnston on 2025-12-09 15:16: Need to confirm who is responsible for updating this / allucent_notes_20251230_164549: Jason Johnston on 2025-12-09 15:16: Need to confirm who is responsible for updating this / Riley Warring on 2025-12-16 14:36: Not started as of 12/16 / Riley Warring on 2025-12-29 12:12: Checklist not started in Cx Alloy / Steps: Vendor Pre-Energization Checklist; EC; CXA Pre-Energization Inspection; PEI/Clean-Walk / allucent_notes: 2025-12-09 15:16 - User: Jason Johnston - Date Added: 2025-12-09 15:16 - Note: Need to confirm who is responsible for updating this / 2025-12-16 14:36 - User: Riley Warring - Date Added: 2025-12-16 14:36 - Note: Not started as of 12/16 / 2025-12-29 12:1
- DC1-MOD01-L2-2040: allucent_notes_20251216_165335: Jason Johnston on 2025-12-09 15:16: Need to confirm who is responsible for updating this / Riley Warring on 2025-12-16 14:36: Not started as of 12/16 / allucent_notes_20251209_203830: Jason Johnston on 2025-12-09 15:16: Need to confirm who is responsible for updating this / allucent_notes_20251230_164549: Jason Johnston on 2025-12-09 15:16: Need to confirm who is responsible for updating this / Riley Warring on 2025-12-16 14:36: Not started as of 12/16 / Riley Warring on 2025-12-29 12:12: Checklist not started in Cx Alloy / Steps: Vendor Pre-Energization Checklist; EC (done); CXA Pre-Energization Inspection; PEI/Clean-Walk / allucent_notes: 2025-12-09 15:16 - User: Jason Johnston - Date Added: 2025-12-09 15:16 - Note: Need to confirm who is responsible for updating this / 2025-12-16 14:36 - User: Riley Warring - Date Added: 2025-12-16 14:36 - Note: Not started as of 12/16 / 2025-12-29 12:1
- DC1-MOD01-L2-2050: allucent_notes_20251216_165335: Jason Johnston on 2025-12-09 15:16: Need to confirm who is responsible for updating this / Riley Warring on 2025-12-16 14:36: Not started as of 12/16 / allucent_notes_20251209_203830: Jason Johnston on 2025-12-09 15:16: Need to confirm who is responsible for updating this / allucent_notes_20251230_164549: Jason Johnston on 2025-12-09 15:16: Need to confirm who is responsible for updating this / Riley Warring on 2025-12-16 14:36: Not started as of 12/16 / Riley Warring on 2025-12-29 12:12: Checklist not started in Cx Alloy / Steps: Vendor Pre-Energization Checklist; EC; CXA Pre-Energization Inspection; PEI/Clean-Walk / allucent_notes: 2025-12-09 15:16 - User: Jason Johnston - Date Added: 2025-12-09 15:16 - Note: Need to confirm who is responsible for updating this / 2025-12-16 14:36 - User: Riley Warring - Date Added: 2025-12-16 14:36 - Note: Not started as of 12/16 / 2025-12-29 12:1
- DC1-MOD01-L2-2060: allucent_notes_20251216_165335: Jason Johnston on 2025-12-09 15:17: Need to confirm who is responsible for updating this / Riley Warring on 2025-12-16 14:36: Not started as of 12/16 / allucent_notes_20251209_203830: Jason Johnston on 2025-12-09 15:17: Need to confirm who is responsible for updating this / allucent_notes_20251230_164549: Jason Johnston on 2025-12-09 15:17: Need to confirm who is responsible for updating this / Riley Warring on 2025-12-16 14:36: Not started as of 12/16 / Riley Warring on 2025-12-29 12:12: Checklist not started in Cx Alloy / Steps: Vendor Pre-Energization Checklist; CXA Pre-Energization Inspection; PEI/Clean-Walk / allucent_notes: 2025-12-09 15:17 - User: Jason Johnston - Date Added: 2025-12-09 15:17 - Note: Need to confirm who is responsible for updating this / 2025-12-16 14:36 - User: Riley Warring - Date Added: 2025-12-16 14:36 - Note: Not started as of 12/16 / 2025-12-29 12:1
- DC1-UPS-M-L2-2000: Steps: EC Installation Checklist (done); Vendor Pre-Energization Checklist (done); CXA Pre-Energization Inspection; PEI/Clean-Walk
- DC1-UPS-M-L2-2010: Steps: EC Installation Checklist (done); Vendor Pre-Energization Checklist (done); CXA Pre-Energization Inspection; PEI/Clean-Walk
- DC1-UPS-M-L2-2020: Steps: EC Installation Checklist; Vendor Pre-Energization Checklist (done); CXA Pre-Energization Inspection; PEI/Clean-Walk
- DC1-UPS-M-L2-2030: Steps: EC Installation Checklist (done); Vendor Pre-Energization Checklist (done); CXA Pre-Energization Inspection; PEI/Clean-Walk
- DC1-UPS-M-L2-2040: Steps: EC Installation Checklist (done); Vendor Pre-Energization Checklist (done); CXA Pre-Energization Inspection; PEI/Clean-Walk
- DC1-UPS-M-L2-2050: Steps: EC Installation Checklist (done); Vendor Pre-Energization Checklist (done); CXA Pre-Energization Inspection; PEI/Clean-Walk
- DC1-UPS-M-L2-2060: Steps: EC Installation Checklist (done); Vendor Pre-Energization Checklist (done); CXA Pre-Energization Inspection; PEI/Clean-Walk

| ID | WBS | Activity | Duration | Start | Finish | Predecessors | Complete | Planned start | Planned finish | Vendor Responsible Party | Layton Discipline | Location | CX Level | Equipment |
| --- | --- | --- | --- | --- | --- | --- | --- | --- | --- | --- | --- | --- | --- | --- |
|  | 04 | **DC1-DH1100 COMPRESSOR/FAN UNITS Cx L2** |  |  |  |  |  |  |  |  |  |  |  |  |
|  | 01 | **DC1-DH1100 POD-AC UNITS A11 Cx L2** |  |  |  |  |  |  |  |  |  |  |  |  |
|  | 02 | **DC1-DH1100 POD-AC UNITS B11 Cx L2** |  |  |  |  |  |  |  |  |  |  |  |  |
|  | 03 | **DC1-DH1100 POD-AC UNITS C11 Cx L2** |  |  |  |  |  |  |  |  |  |  |  |  |
|  | 04 | **DC1-DH1100 POD-AC UNITS D11 Cx L2** |  |  |  |  |  |  |  |  |  |  |  |  |
|  | 05 | **DC1-DH1100 POD-AC UNITS E11 Cx L2** |  |  |  |  |  |  |  |  |  |  |  |  |
|  | 06 | **DC1-DH1100 POD-AC UNITS F11 Cx L2** |  |  |  |  |  |  |  |  |  |  |  |  |
|  | 07 | **DC1-DH1100 POD-AC UNITS R11 Cx L2** |  |  |  |  |  |  |  |  |  |  |  |  |
|  | 04 | **DC1-DH1100 BUS-R1X/BUS-R2X Cx L2** |  | 2026-04-22 | 2026-05-06 |  |  |  |  |  |  |  |  |  |
| DC1-BUS-L2-CX-2000 |  | DH1100 BUS-R2 (R21) CATCHER BUS Duct L2 Checklist | 6d | 2026-04-22 A | 2026-05-06 A | QTS-7031 | 100% | 2026-04-22 | 2026-04-29 | LAY | Commissioning | DH1100 | L2 | BUS DUCT |
| DC1-BUS-L2-CX-2010 |  | DH1100 BUS-R1 (R11) MAINTENANCE BUS Duct L2 Checklist | 5d | 2026-04-22 A | 2026-04-27 A | QTS-7081 | 100% | 2026-04-22 | 2026-04-28 | LAY | Commissioning | DH1100 | L2 | BUS DUCT |
|  | 05 | **DC1-DH1100 ATS Cx L2** |  | 2026-03-26 | 2026-05-08 |  |  |  |  |  |  |  |  |  |
|  | 01 | **DC1-DH1100 ATS-A11 Cx L2** |  | 2026-03-26 | 2026-04-27 |  |  |  |  |  |  |  |  |  |
| DC1-ATS-L2-2000 |  | DH1100 ATS-A11-01 L2 Checklist | 3d | 2026-03-26 A | 2026-04-27 A | QTS-18091, QTS-1006840 FF+2d | 100% | 2026-03-26 | 2026-03-30 | MAV | Commissioning | DH1100 | L2 | ATS |
| DC1-ATS-L2-2010 |  | DH1100 ATS-A11-02 L2 Checklist | 3d | 2026-03-26 A | 2026-04-27 A | QTS-18091, QTS-1006840 FF+2d | 100% | 2026-03-26 | 2026-03-30 | MAV | Commissioning | DH1100 | L2 | ATS |
| DC1-ATS-L2-2020 |  | DH1100 ATS-A11-03 L2 Checklist | 3d | 2026-03-26 A | 2026-04-27 A | QTS-18091, QTS-1006840 FF+2d | 100% | 2026-03-26 | 2026-03-30 | MAV | Commissioning | DH1100 | L2 | ATS |
| DC1-ATS-L2-2030 |  | DH1100 ATS-A11-04 L2 Checklist | 3d | 2026-03-26 A | 2026-04-27 A | QTS-18091, QTS-1006840 FF+2d | 100% | 2026-03-26 | 2026-03-30 | MAV | Commissioning | DH1100 | L2 | ATS |
| DC1-ATS-L2-2040 |  | DH1100 ATS-A11-05 L2 Checklist | 3d | 2026-03-26 A | 2026-04-27 A | QTS-18091, QTS-1006840 FF+2d | 100% | 2026-03-26 | 2026-03-30 | MAV | Commissioning | DH1100 | L2 | ATS |
| DC1-ATS-L2-2050 |  | DH1100 ATS-A11-06 L2 Checklist | 3d | 2026-03-26 A | 2026-04-27 A | QTS-18091, QTS-1006840 FF+2d | 100% | 2026-03-26 | 2026-03-30 | MAV | Commissioning | DH1100 | L2 | ATS |
|  | 02 | **DC1-DH1100 ATS-B11 Cx L2** |  | 2026-04-22 | 2026-04-27 |  |  |  |  |  |  |  |  |  |
| DC1-ATS-L2-2060 |  | DH1100 ATS-B11-01 L2 Checklist | 3d | 2026-04-22 A | 2026-04-27 A | QTS-8911, QTS-1006820 FF+2d | 100% | 2026-04-22 | 2026-04-24 | MAV | Commissioning | DH1100 | L2 | ATS |
| DC1-ATS-L2-2070 |  | DH1100 ATS-B11-02 L2 Checklist | 3d | 2026-04-22 A | 2026-04-27 A | QTS-8911, QTS-1006820 FF+2d | 100% | 2026-04-22 | 2026-04-24 | MAV | Commissioning | DH1100 | L2 | ATS |
| DC1-ATS-L2-2080 |  | DH1100 ATS-B11-03 L2 Checklist | 3d | 2026-04-22 A | 2026-04-27 A | QTS-8911, QTS-1006820 FF+2d | 100% | 2026-04-22 | 2026-04-24 | MAV | Commissioning | DH1100 | L2 | ATS |
| DC1-ATS-L2-2090 |  | DH1100 ATS-B11-04 L2 Checklist | 3d | 2026-04-22 A | 2026-04-27 A | QTS-8911, QTS-1006820 FF+2d | 100% | 2026-04-22 | 2026-04-24 | MAV | Commissioning | DH1100 | L2 | ATS |
| DC1-ATS-L2-2100 |  | DH1100 ATS-B11-05 L2 Checklist | 3d | 2026-04-22 A | 2026-04-27 A | QTS-8911, QTS-1006820 FF+2d | 100% | 2026-04-22 | 2026-04-24 | MAV | Commissioning | DH1100 | L2 | ATS |
| DC1-ATS-L2-2110 |  | DH1100 ATS-B11-06 L2 Checklist | 3d | 2026-04-22 A | 2026-04-27 A | QTS-8911, QTS-1006820 FF+2d | 100% | 2026-04-22 | 2026-04-24 | MAV | Commissioning | DH1100 | L2 | ATS |

Notes:
- DC1-BUS-L2-CX-2000: Steps: EC Pre-Energization Checklist; Vendor Pre-Energization Checklist; CXA Pre-Energization Inspection; PEI/Clean-Walk
- DC1-BUS-L2-CX-2010: Steps: EC Pre-Energization Checklist; Vendor Pre-Energization Checklist; CXA Pre-Energization Inspection; PEI/Clean-Walk
- DC1-ATS-L2-2000: Steps: EC Installation Checklist; CC Installation Checklist; Vendor Pre-Energization Checklist; CXA Pre-Energization Inspection; PEI/Clean-Walk
- DC1-ATS-L2-2010: Steps: EC Installation Checklist; CC Installation Checklist; Vendor Pre-Energization Checklist; CXA Pre-Energization Inspection; PEI/Clean-Walk
- DC1-ATS-L2-2020: Steps: EC Installation Checklist; CC Installation Checklist; Vendor Pre-Energization Checklist; CXA Pre-Energization Inspection; PEI/Clean-Walk
- DC1-ATS-L2-2030: Steps: EC Installation Checklist; CC Installation Checklist; Vendor Pre-Energization Checklist; CXA Pre-Energization Inspection; PEI/Clean-Walk
- DC1-ATS-L2-2040: Steps: EC Installation Checklist; CC Installation Checklist; Vendor Pre-Energization Checklist; CXA Pre-Energization Inspection; PEI/Clean-Walk
- DC1-ATS-L2-2050: Steps: EC Installation Checklist; CC Installation Checklist; Vendor Pre-Energization Checklist; CXA Pre-Energization Inspection; PEI/Clean-Walk
- DC1-ATS-L2-2060: Steps: EC Installation Checklist; CC Installation Checklist; Vendor Pre-Energization Checklist; CXA Pre-Energization Inspection; PEI/Clean-Walk
- DC1-ATS-L2-2070: Steps: EC Installation Checklist; CC Installation Checklist; Vendor Pre-Energization Checklist; CXA Pre-Energization Inspection; PEI/Clean-Walk
- DC1-ATS-L2-2080: Steps: EC Installation Checklist; CC Installation Checklist; Vendor Pre-Energization Checklist; CXA Pre-Energization Inspection; PEI/Clean-Walk
- DC1-ATS-L2-2090: Steps: EC Installation Checklist; CC Installation Checklist; Vendor Pre-Energization Checklist; CXA Pre-Energization Inspection; PEI/Clean-Walk
- DC1-ATS-L2-2100: Steps: EC Installation Checklist; CC Installation Checklist; Vendor Pre-Energization Checklist; CXA Pre-Energization Inspection; PEI/Clean-Walk
- DC1-ATS-L2-2110: Steps: EC Installation Checklist; CC Installation Checklist; Vendor Pre-Energization Checklist; CXA Pre-Energization Inspection; PEI/Clean-Walk

| ID | WBS | Activity | Duration | Start | Finish | Predecessors | Complete | Planned start | Planned finish | Vendor Responsible Party | Layton Discipline | Location | CX Level | Equipment |
| --- | --- | --- | --- | --- | --- | --- | --- | --- | --- | --- | --- | --- | --- | --- |
|  | 03 | **DC1-DH1100 ATS-C11 Cx L2** |  | 2026-04-15 | 2026-05-08 |  |  |  |  |  |  |  |  |  |
| DC1-ATS-L2-2120 |  | DH1100 ATS-C11-01 L2 Checklist | 1d | 2026-04-15 A | 2026-05-08 A | QTS-8941, QTS-1006800 FF+2d | 100% | 2026-05-06 | 2026-05-06 | MAV | Commissioning | DH1100 | L2 | ATS |
| DC1-ATS-L2-2130 |  | DH1100 ATS-C11-02 L2 Checklist | 3d | 2026-04-15 A | 2026-05-08 A | QTS-8941, QTS-1006800 FF+2d | 100% | 2026-04-15 | 2026-04-17 | MAV | Commissioning | DH1100 | L2 | ATS |
| DC1-ATS-L2-2140 |  | DH1100 ATS-C11-03 L2 Checklist | 3d | 2026-04-15 A | 2026-05-08 A | QTS-8941, QTS-1006800 FF+2d | 100% | 2026-04-15 | 2026-04-17 | MAV | Commissioning | DH1100 | L2 | ATS |
| DC1-ATS-L2-2150 |  | DH1100 ATS-C11-04 L2 Checklist | 3d | 2026-04-15 A | 2026-05-08 A | QTS-8941, QTS-1006800 FF+2d | 100% | 2026-04-15 | 2026-04-17 | MAV | Commissioning | DH1100 | L2 | ATS |
| DC1-ATS-L2-2160 |  | DH1100 ATS-C11-05 L2 Checklist | 3d | 2026-04-15 A | 2026-05-08 A | QTS-8941, QTS-1006800 FF+2d | 100% | 2026-04-15 | 2026-04-17 | MAV | Commissioning | DH1100 | L2 | ATS |
| DC1-ATS-L2-2170 |  | DH1100 ATS-C11-06 L2 Checklist | 3d | 2026-04-15 A | 2026-05-08 A | QTS-8941, QTS-1006800 FF+2d | 100% | 2026-04-15 | 2026-04-17 | MAV | Commissioning | DH1100 | L2 | ATS |
|  | 04 | **DC1-DH1100 ATS-D11 Cx L2** |  | 2026-04-16 | 2026-05-08 |  |  |  |  |  |  |  |  |  |
| DC1-ATS-L2-2180 |  | DH1100 ATS-D11-01 L2 Checklist | 3d | 2026-04-16 A | 2026-05-08 A | QTS-8971, QTS-1006780 FF+2d | 100% | 2026-04-16 | 2026-04-20 | MAV | Commissioning | DH1100 | L2 | ATS |
| DC1-ATS-L2-2190 |  | DH1100 ATS-D11-02 L2 Checklist | 3d | 2026-04-16 A | 2026-05-08 A | QTS-8971, QTS-1006780 FF+2d | 100% | 2026-04-16 | 2026-04-20 | MAV | Commissioning | DH1100 | L2 | ATS |
| DC1-ATS-L2-2200 |  | DH1100 ATS-D11-03 L2 Checklist | 3d | 2026-04-16 A | 2026-05-08 A | QTS-8971, QTS-1006780 FF+2d | 100% | 2026-04-16 | 2026-04-20 | MAV | Commissioning | DH1100 | L2 | ATS |
| DC1-ATS-L2-2210 |  | DH1100 ATS-D11-04 L2 Checklist | 3d | 2026-04-16 A | 2026-05-08 A | QTS-8971, QTS-1006780 FF+2d | 100% | 2026-04-16 | 2026-04-20 | MAV | Commissioning | DH1100 | L2 | ATS |
| DC1-ATS-L2-2220 |  | DH1100 ATS-D11-05 L2 Checklist | 3d | 2026-04-16 A | 2026-05-08 A | QTS-8971, QTS-1006780 FF+2d | 100% | 2026-04-16 | 2026-04-20 | MAV | Commissioning | DH1100 | L2 | ATS |
| DC1-ATS-L2-2230 |  | DH1100 ATS-D11-06 L2 Checklist | 3d | 2026-04-16 A | 2026-05-08 A | QTS-8971, QTS-1006780 FF+2d | 100% | 2026-04-16 | 2026-04-20 | MAV | Commissioning | DH1100 | L2 | ATS |
|  | 05 | **DC1-DH1100 ATS-E11 Cx L2** |  | 2026-04-16 | 2026-05-08 |  |  |  |  |  |  |  |  |  |
| DC1-ATS-L2-2240 |  | DH1100 ATS-E11-01 L2 Checklist | 3d | 2026-04-16 A | 2026-05-08 A | QTS-9001, QTS-1006760 FF+2d | 100% | 2026-04-16 | 2026-04-20 | MAV | Commissioning | DH1100 | L2 | ATS |
| DC1-ATS-L2-2250 |  | DH1100 ATS-E11-02 L2 Checklist | 3d | 2026-04-16 A | 2026-05-08 A | QTS-9001, QTS-1006760 FF+2d | 100% | 2026-04-16 | 2026-04-20 | MAV | Commissioning | DH1100 | L2 | ATS |
| DC1-ATS-L2-2260 |  | DH1100 ATS-E11-03 L2 Checklist | 3d | 2026-04-16 A | 2026-05-08 A | QTS-9001, QTS-1006760 FF+2d | 100% | 2026-04-16 | 2026-04-20 | MAV | Commissioning | DH1100 | L2 | ATS |
| DC1-ATS-L2-2270 |  | DH1100 ATS-E11-04 L2 Checklist | 3d | 2026-04-16 A | 2026-05-08 A | QTS-9001, QTS-1006760 FF+2d | 100% | 2026-04-16 | 2026-04-20 | MAV | Commissioning | DH1100 | L2 | ATS |
| DC1-ATS-L2-2280 |  | DH1100 ATS-E11-05 L2 Checklist | 3d | 2026-04-16 A | 2026-05-08 A | QTS-9001, QTS-1006760 FF+2d | 100% | 2026-04-16 | 2026-04-20 | MAV | Commissioning | DH1100 | L2 | ATS |
| DC1-ATS-L2-2290 |  | DH1100 ATS-E11-06 L2 Checklist | 3d | 2026-04-16 A | 2026-05-08 A | QTS-9001, QTS-1006760 FF+2d | 100% | 2026-04-16 | 2026-04-20 | MAV | Commissioning | DH1100 | L2 | ATS |
|  | 06 | **DC1-DH1100 ATS-F11 Cx L2** |  | 2026-04-16 | 2026-05-08 |  |  |  |  |  |  |  |  |  |
| DC1-ATS-L2-2300 |  | DH1100 ATS-F11-01 L2 Checklist | 3d | 2026-04-16 A | 2026-05-08 A | QTS-9031, QTS-1006740 FF+2d | 100% | 2026-04-16 | 2026-04-20 | MAV | Commissioning | DH1100 | L2 | ATS |
| DC1-ATS-L2-2310 |  | DH1100 ATS-F11-02 L2 Checklist | 3d | 2026-04-16 A | 2026-05-08 A | QTS-9031, QTS-1006740 FF+2d | 100% | 2026-04-16 | 2026-04-20 | MAV | Commissioning | DH1100 | L2 | ATS |
| DC1-ATS-L2-2320 |  | DH1100 ATS-F11-03 L2 Checklist | 3d | 2026-04-16 A | 2026-05-08 A | QTS-9031, QTS-1006740 FF+2d | 100% | 2026-04-16 | 2026-04-20 | MAV | Commissioning | DH1100 | L2 | ATS |
| DC1-ATS-L2-2330 |  | DH1100 ATS-F11-04 L2 Checklist | 3d | 2026-04-16 A | 2026-05-08 A | QTS-9031, QTS-1006740 FF+2d | 100% | 2026-04-16 | 2026-04-20 | MAV | Commissioning | DH1100 | L2 | ATS |
| DC1-ATS-L2-2340 |  | DH1100 ATS-F11-05 L2 Checklist | 3d | 2026-04-16 A | 2026-05-08 A | QTS-9031, QTS-1006740 FF+2d | 100% | 2026-04-16 | 2026-04-20 | MAV | Commissioning | DH1100 | L2 | ATS |
| DC1-ATS-L2-2350 |  | DH1100 ATS-F11-06 L2 Checklist | 3d | 2026-04-16 A | 2026-05-08 A | QTS-9031, QTS-1006740 FF+2d | 100% | 2026-04-16 | 2026-04-20 | MAV | Commissioning | DH1100 | L2 | ATS |

Notes:
- DC1-ATS-L2-2120: Steps: EC Installation Checklist (Rosendin) (done); CC Installation Checklist (Maverick) (done); Controls Installation Checklist (E2 Optics) (done); CXA Pre-Energization Inspection (ERS) (done); PEI/Clean-Walk (LCC) (done)
- DC1-ATS-L2-2130: Steps: EC Installation Checklist (Rosendin) (done); Manufacturer Checklist (Maverick) (done); Controls Checklist (E2 Optics) (done); PEI/Clean-Walk (LCC) (done); CXA Pre-Energization Inspection (ERS) (done)
- DC1-ATS-L2-2140: Steps: EC Installation Checklist (Rosendin) (done); Manufacturer Installation Checklist (Maverick) (done); Vendor Pre-Energization Checklist (done); CXA Pre-Energization Inspection (done); PEI/Clean-Walk (done)
- DC1-ATS-L2-2150: Steps: EC Installation Checklist; CC Installation Checklist; Vendor Pre-Energization Checklist; CXA Pre-Energization Inspection; PEI/Clean-Walk
- DC1-ATS-L2-2160: Steps: EC Installation Checklist; CC Installation Checklist; Vendor Pre-Energization Checklist; CXA Pre-Energization Inspection; PEI/Clean-Walk
- DC1-ATS-L2-2170: Schedulers Notes: 5/11/26 - Checklist does not exist in Cx Alloy. -TM
- DC1-ATS-L2-2180: Steps: EC Installation Checklist; CC Installation Checklist; Vendor Pre-Energization Checklist; CXA Pre-Energization Inspection; PEI/Clean-Walk
- DC1-ATS-L2-2190: Steps: EC Installation Checklist; CC Installation Checklist; Vendor Pre-Energization Checklist; CXA Pre-Energization Inspection; PEI/Clean-Walk
- DC1-ATS-L2-2200: Steps: EC Installation Checklist; CC Installation Checklist; Vendor Pre-Energization Checklist; CXA Pre-Energization Inspection; PEI/Clean-Walk
- DC1-ATS-L2-2210: Steps: EC Installation Checklist; CC Installation Checklist; Vendor Pre-Energization Checklist; CXA Pre-Energization Inspection; PEI/Clean-Walk
- DC1-ATS-L2-2220: Steps: EC Installation Checklist; CC Installation Checklist; Vendor Pre-Energization Checklist; CXA Pre-Energization Inspection; PEI/Clean-Walk
- DC1-ATS-L2-2230: Steps: EC Installation Checklist; CC Installation Checklist; Vendor Pre-Energization Checklist; CXA Pre-Energization Inspection; PEI/Clean-Walk
- DC1-ATS-L2-2240: Steps: EC Installation Checklist; CC Installation Checklist; Vendor Pre-Energization Checklist; CXA Pre-Energization Inspection; PEI/Clean-Walk
- DC1-ATS-L2-2250: Steps: EC Installation Checklist; CC Installation Checklist; Vendor Pre-Energization Checklist; CXA Pre-Energization Inspection; PEI/Clean-Walk
- DC1-ATS-L2-2260: Steps: EC Installation Checklist; CC Installation Checklist; Vendor Pre-Energization Checklist; CXA Pre-Energization Inspection; PEI/Clean-Walk
- DC1-ATS-L2-2270: Steps: EC Installation Checklist; CC Installation Checklist; Vendor Pre-Energization Checklist; CXA Pre-Energization Inspection; PEI/Clean-Walk
- DC1-ATS-L2-2280: Steps: EC Installation Checklist; CC Installation Checklist; Vendor Pre-Energization Checklist; CXA Pre-Energization Inspection; PEI/Clean-Walk
- DC1-ATS-L2-2290: Steps: EC Installation Checklist; CC Installation Checklist; Vendor Pre-Energization Checklist; CXA Pre-Energization Inspection; PEI/Clean-Walk
- DC1-ATS-L2-2300: Steps: EC Installation Checklist; CC Installation Checklist; Vendor Pre-Energization Checklist; CXA Pre-Energization Inspection; PEI/Clean-Walk
- DC1-ATS-L2-2310: Steps: EC Installation Checklist; CC Installation Checklist; Vendor Pre-Energization Checklist; CXA Pre-Energization Inspection; PEI/Clean-Walk
- DC1-ATS-L2-2320: Steps: EC Installation Checklist; CC Installation Checklist; Vendor Pre-Energization Checklist; CXA Pre-Energization Inspection; PEI/Clean-Walk
- DC1-ATS-L2-2330: Steps: EC Installation Checklist; CC Installation Checklist; Vendor Pre-Energization Checklist; CXA Pre-Energization Inspection; PEI/Clean-Walk
- DC1-ATS-L2-2340: Steps: EC Installation Checklist; CC Installation Checklist; Vendor Pre-Energization Checklist; CXA Pre-Energization Inspection; PEI/Clean-Walk
- DC1-ATS-L2-2350: Steps: EC Installation Checklist; CC Installation Checklist; Vendor Pre-Energization Checklist; CXA Pre-Energization Inspection; PEI/Clean-Walk

| ID | WBS | Activity | Duration | Start | Finish | Predecessors | Complete | Planned start | Planned finish | Vendor Responsible Party | Layton Discipline | Location | CX Level | Equipment |
| --- | --- | --- | --- | --- | --- | --- | --- | --- | --- | --- | --- | --- | --- | --- |
|  | 06 | **DC1-DH1100 CODs Cx L2** |  | 2026-04-16 | 2026-05-12 |  |  |  |  |  |  |  |  |  |
|  | 01 | **DC1-DH1100 COD A11 Cx L2** |  | 2026-04-22 | 2026-04-27 |  |  |  |  |  |  |  |  |  |
| DC1-COD-L2-2000 |  | DH1100 COD-A11-01 L2 Checklist | 3d | 2026-04-22 A | 2026-04-27 A | QTS-18101, QTS-1005450 FF+2d, QTS - 25721 | 100% | 2026-04-22 | 2026-04-24 | SIE | Commissioning | DH1100 | L2 | COD |
| DC1-COD-L2-2010 |  | DH1100 COD-A11-02 L2 Checklist | 3d | 2026-04-22 A | 2026-04-27 A | QTS-18101, DC1-COD-L2-2000 SS, QTS-1005450 FF+2d, QTS - 25721 | 100% | 2026-04-22 | 2026-04-24 | SIE | Commissioning | DH1100 | L2 | COD |
| DC1-COD-L2-2020 |  | DH1100 COD-A11-03 L2 Checklist | 3d | 2026-04-22 A | 2026-04-27 A | QTS-18101, DC1-COD-L2-2010 SS, QTS-1005450 FF+2d, QTS - 25721 | 100% | 2026-04-22 | 2026-04-24 | SIE | Commissioning | DH1100 | L2 | COD |
| DC1-COD-L2-2030 |  | DH1100 COD-A11-04 L2 Checklist | 3d | 2026-04-22 A | 2026-04-27 A | QTS-18101, DC1-COD-L2-2020 SS, QTS-1005450 FF+2d, QTS - 25721 | 100% | 2026-04-22 | 2026-04-24 | SIE | Commissioning | DH1100 | L2 | COD |
| DC1-COD-L2-2040 |  | DH1100 COD-A11-05 L2 Checklist | 3d | 2026-04-22 A | 2026-04-27 A | QTS-18101, DC1-COD-L2-2030 SS, QTS-1005450 FF+2d, QTS - 25721 | 100% | 2026-04-22 | 2026-04-24 | SIE | Commissioning | DH1100 | L2 | COD |
| DC1-COD-L2-2050 |  | DH1100 COD-A11-06 L2 Checklist | 3d | 2026-04-22 A | 2026-04-27 A | QTS-18101, DC1-COD-L2-2040 SS, QTS-1005450 FF+2d, QTS - 25721 | 100% | 2026-04-22 | 2026-04-24 | SIE | Commissioning | DH1100 | L2 | COD |
|  | 02 | **DC1-DH1100 COD B11 Cx L2** |  | 2026-04-22 | 2026-04-27 |  |  |  |  |  |  |  |  |  |
| DC1-COD-L2-2060 |  | DH1100 COD-B11-01 L2 Checklist | 3d | 2026-04-22 A | 2026-04-27 A | QTS-8921, QTS-1005560 FF+2d, QTS - 25721 | 100% | 2026-04-22 | 2026-04-24 | SIE | Commissioning | DH1100 | L2 | COD |
| DC1-COD-L2-2070 |  | DH1100 COD-B11-02 L2 Checklist | 3d | 2026-04-22 A | 2026-04-27 A | QTS-8921, QTS-1005560 FF+2d, QTS - 25721 | 100% | 2026-04-22 | 2026-04-24 | SIE | Commissioning | DH1100 | L2 | COD |
| DC1-COD-L2-2080 |  | DH1100 COD-B11-03 L2 Checklist | 3d | 2026-04-22 A | 2026-04-27 A | QTS-8921, QTS-1005560 FF+2d, QTS - 25721 | 100% | 2026-04-22 | 2026-04-24 | SIE | Commissioning | DH1100 | L2 | COD |
| DC1-COD-L2-2090 |  | DH1100 COD-B11-04 L2 Checklist | 3d | 2026-04-22 A | 2026-04-27 A | QTS-8921, QTS-1005560 FF+2d, QTS - 25721 | 100% | 2026-04-22 | 2026-04-24 | SIE | Commissioning | DH1100 | L2 | COD |
| DC1-COD-L2-2100 |  | DH1100 COD-B11-05 L2 Checklist | 3d | 2026-04-22 A | 2026-04-27 A | QTS-8921, QTS-1005560 FF+2d, QTS - 25721 | 100% | 2026-04-22 | 2026-04-24 | SIE | Commissioning | DH1100 | L2 | COD |
| DC1-COD-L2-2110 |  | DH1100 COD-B11-06 L2 Checklist | 3d | 2026-04-22 A | 2026-04-27 A | QTS-8921, QTS-1005560 FF+2d, QTS - 25721 | 100% | 2026-04-22 | 2026-04-24 | SIE | Commissioning | DH1100 | L2 | COD |
|  | 03 | **DC1-DH1100 COD C11 Cx L2** |  | 2026-04-16 | 2026-05-12 |  |  |  |  |  |  |  |  |  |
| DC1-COD-L2-2120 |  | DH1100 COD-C11-01 L2 Checklist | 3d | 2026-04-16 A | 2026-05-12 A | QTS-8951, QTS-1005650 FF+2d, QTS - 25731 | 100% | 2026-04-09 | 2026-04-13 | SIE | Commissioning | DH1100 | L2 | COD |
| DC1-COD-L2-2130 |  | DH1100 COD-C11-02 L2 Checklist | 3d | 2026-04-16 A | 2026-05-12 A | QTS-8951, QTS-1005650 FF+2d, QTS - 25731 | 100% | 2026-04-09 | 2026-04-13 | SIE | Commissioning | DH1100 | L2 | COD |
| DC1-COD-L2-2140 |  | DH1100 COD-C11-03 L2 Checklist | 3d | 2026-04-16 A | 2026-05-12 A | QTS-8951, QTS-1005650 FF+2d, QTS - 25731 | 100% | 2026-04-09 | 2026-04-13 | SIE | Commissioning | DH1100 | L2 | COD |
| DC1-COD-L2-2150 |  | DH1100 COD-C11-04 L2 Checklist | 3d | 2026-04-16 A | 2026-05-12 A | QTS-8951, QTS-1005650 FF+2d, QTS - 25731 | 100% | 2026-04-09 | 2026-04-13 | SIE | Commissioning | DH1100 | L2 | COD |
| DC1-COD-L2-2160 |  | DH1100 COD-C11-05 L2 Checklist | 3d | 2026-04-16 A | 2026-05-12 A | QTS-8951, QTS-1005650 FF+2d, QTS - 25731 | 100% | 2026-04-09 | 2026-04-13 | SIE | Commissioning | DH1100 | L2 | COD |
| DC1-COD-L2-2170 |  | DH1100 COD-C11-06 L2 Checklist | 3d | 2026-04-16 A | 2026-05-12 A | QTS-8951, QTS-1005650 FF+2d, QTS - 25731 | 100% | 2026-04-09 | 2026-04-13 | SIE | Commissioning | DH1100 | L2 | COD |
|  | 04 | **DC1-DH1100 COD D11 Cx L2** |  | 2026-04-16 | 2026-05-12 |  |  |  |  |  |  |  |  |  |
| DC1-COD-L2-2180 |  | DH1100 COD-D11-01 L2 Checklist | 3d | 2026-04-16 A | 2026-05-12 A | QTS-8981, QTS-1005740 FF+2d, QTS - 25731 | 100% | 2026-04-09 | 2026-04-13 | SIE | Commissioning | DH1100 | L2 | COD |
| DC1-COD-L2-2190 |  | DH1100 COD-D11-02 L2 Checklist | 3d | 2026-04-16 A | 2026-05-12 A | QTS-8981, QTS-1005740 FF+2d, QTS - 25731 | 100% | 2026-04-09 | 2026-04-13 | SIE | Commissioning | DH1100 | L2 | COD |
| DC1-COD-L2-2200 |  | DH1100 COD-D11-03 L2 Checklist | 3d | 2026-04-16 A | 2026-05-12 A | QTS-8981, QTS-1005740 FF+2d, QTS - 25731 | 100% | 2026-04-09 | 2026-04-13 | SIE | Commissioning | DH1100 | L2 | COD |
| DC1-COD-L2-2210 |  | DH1100 COD-D11-04 L2 Checklist | 3d | 2026-04-16 A | 2026-05-05 A | QTS-8981, QTS-1005740 FF+2d, QTS - 25731 | 100% | 2026-04-09 | 2026-04-13 | SIE | Commissioning | DH1100 | L2 | COD |
| DC1-COD-L2-2220 |  | DH1100 COD-D11-05 L2 Checklist | 3d | 2026-04-16 A | 2026-05-12 A | QTS-8981, QTS-1005740 FF+2d, QTS - 25731 | 100% | 2026-04-09 | 2026-04-13 | SIE | Commissioning | DH1100 | L2 | COD |
| DC1-COD-L2-2230 |  | DH1100 COD-D11-06 L2 Checklist | 3d | 2026-04-16 A | 2026-05-12 A | QTS-8981, QTS-1005740 FF+2d, QTS - 25731 | 100% | 2026-04-09 | 2026-04-13 | SIE | Commissioning | DH1100 | L2 | COD |

Notes:
- DC1-COD-L2-2000: Steps: EC Installation Checklist; CC Installation Checklist; Vendor Pre-Energization Checklist; CXA Pre-Energization Inspection; PEI/Clean-Walk
- DC1-COD-L2-2010: Steps: EC Installation Checklist; CC Installation Checklist; Vendor Pre-Energization Checklist; CXA Pre-Energization Inspection; PEI/Clean-Walk
- DC1-COD-L2-2020: Steps: EC Installation Checklist; CC Installation Checklist; Vendor Pre-Energization Checklist; CXA Pre-Energization Inspection; PEI/Clean-Walk
- DC1-COD-L2-2030: Steps: EC Installation Checklist; CC Installation Checklist; Vendor Pre-Energization Checklist; CXA Pre-Energization Inspection; PEI/Clean-Walk
- DC1-COD-L2-2040: Steps: EC Installation Checklist; CC Installation Checklist; Vendor Pre-Energization Checklist; CXA Pre-Energization Inspection; PEI/Clean-Walk
- DC1-COD-L2-2050: Steps: EC Installation Checklist; CC Installation Checklist; Vendor Pre-Energization Checklist; CXA Pre-Energization Inspection; PEI/Clean-Walk
- DC1-COD-L2-2060: Steps: EC Installation Checklist; CC Installation Checklist; Vendor Pre-Energization Checklist; CXA Pre-Energization Inspection; PEI/Clean-Walk
- DC1-COD-L2-2070: Steps: EC Installation Checklist; CC Installation Checklist; Vendor Pre-Energization Checklist; CXA Pre-Energization Inspection; PEI/Clean-Walk
- DC1-COD-L2-2080: Steps: EC Installation Checklist; CC Installation Checklist; Vendor Pre-Energization Checklist; CXA Pre-Energization Inspection; PEI/Clean-Walk
- DC1-COD-L2-2090: Steps: EC Installation Checklist; CC Installation Checklist; Vendor Pre-Energization Checklist; CXA Pre-Energization Inspection; PEI/Clean-Walk
- DC1-COD-L2-2100: Steps: EC Installation Checklist; CC Installation Checklist; Vendor Pre-Energization Checklist; CXA Pre-Energization Inspection; PEI/Clean-Walk
- DC1-COD-L2-2110: Steps: EC Installation Checklist; CC Installation Checklist; Vendor Pre-Energization Checklist; CXA Pre-Energization Inspection; PEI/Clean-Walk
- DC1-COD-L2-2120: Steps: EC Installation Checklist (Rosendin) (done); CC Installation Checklist (E2) (done); Vendor Pre-Energization Checklist (Siemens) (done); CXA Pre-Energization Inspection; PEI/Clean-Walk (LCC) (done)
- DC1-COD-L2-2130: Steps: EC Installation Checklist (Rosendin) (done); CC Installation Checklist (E2) (done); Vendor Pre-Energization Checklist (Siemens) (done); CXA Pre-Energization Inspection (ERS) (done); PEI/Clean-Walk (LCC) (done)
- DC1-COD-L2-2140: Steps: EC Installation Checklist (Rosendin) (done); CC Installation Checklist (done); Vendor Pre-Energization Checklist (done); CXA Pre-Energization Inspection (done); PEI/Clean-Walk (done)
- DC1-COD-L2-2150: Steps: EC Installation Checklist (done); CC Installation Checklist (done); Vendor Pre-Energization Checklist (done); CXA Pre-Energization Inspection (done); PEI/Clean-Walk (done)
- DC1-COD-L2-2160: Steps: EC Installation Checklist (done); CC Installation Checklist (done); Vendor Pre-Energization Checklist (done); CXA Pre-Energization Inspection (done); PEI/Clean-Walk (done)
- DC1-COD-L2-2170: Steps: EC Installation Checklist (done); CC Installation Checklist (done); Vendor Pre-Energization Checklist (done); CXA Pre-Energization Inspection (done); PEI/Clean-Walk (done)
- DC1-COD-L2-2180: Steps: EC Installation Checklist (done); CC Installation Checklist (done); Vendor Pre-Energization Checklist (done); CXA Pre-Energization Inspection (done); PEI/Clean-Walk (done)
- DC1-COD-L2-2190: Steps: EC Installation Checklist (done); CC Installation Checklist (done); Vendor Pre-Energization Checklist (done); CXA Pre-Energization Inspection (done); PEI/Clean-Walk (done)
- DC1-COD-L2-2200: Steps: EC Installation Checklist (done); CC Installation Checklist (done); Vendor Pre-Energization Checklist (done); CXA Pre-Energization Inspection (done); PEI/Clean-Walk (done)
- DC1-COD-L2-2210: Steps: EC Installation Checklist (done); CC Installation Checklist (done); Vendor Pre-Energization Checklist (done); CXA Pre-Energization Inspection (done); PEI/Clean-Walk (done)
- DC1-COD-L2-2220: Steps: EC Installation Checklist (done); CC Installation Checklist (done); Vendor Pre-Energization Checklist (done); CXA Pre-Energization Inspection (done); PEI/Clean-Walk (done)
- DC1-COD-L2-2230: Steps: EC Installation Checklist (done); CC Installation Checklist (done); Vendor Pre-Energization Checklist (done); CXA Pre-Energization Inspection (done); PEI/Clean-Walk (done)

| ID | WBS | Activity | Duration | Start | Finish | Predecessors | Complete | Planned start | Planned finish | Vendor Responsible Party | Layton Discipline | Location | CX Level | Equipment |
| --- | --- | --- | --- | --- | --- | --- | --- | --- | --- | --- | --- | --- | --- | --- |
|  | 05 | **DC1-DH1100 COD E11 Cx L2** |  | 2026-04-16 | 2026-05-12 |  |  |  |  |  |  |  |  |  |
| DC1-COD-L2-2240 |  | DH1100 COD-E11-01 L2 Checklist | 3d | 2026-04-16 A | 2026-05-12 A | QTS-9011, QTS-1005830 FF+2d, QTS - 25741 | 100% | 2026-04-09 | 2026-04-13 | SIE | Commissioning | DH1100 | L2 | COD |
| DC1-COD-L2-2250 |  | DH1100 COD-E11-02 L2 Checklist | 3d | 2026-04-16 A | 2026-05-12 A | QTS-9011, QTS-1005830 FF+2d, QTS - 25741 | 100% | 2026-04-09 | 2026-04-13 | SIE | Commissioning | DH1100 | L2 | COD |
| DC1-COD-L2-2260 |  | DH1100 COD-E11-03 L2 Checklist | 3d | 2026-04-16 A | 2026-05-12 A | QTS-9011, QTS-1005830 FF+2d, QTS - 25741 | 100% | 2026-04-09 | 2026-04-13 | SIE | Commissioning | DH1100 | L2 | COD |
| DC1-COD-L2-2270 |  | DH1100 COD-E11-04 L2 Checklist | 3d | 2026-04-16 A | 2026-05-12 A | QTS-9011, QTS-1005830 FF+2d, QTS - 25741 | 100% | 2026-04-09 | 2026-04-13 | SIE | Commissioning | DH1100 | L2 | COD |
| DC1-COD-L2-2280 |  | DH1100 COD-E11-05 L2 Checklist | 3d | 2026-04-16 A | 2026-05-12 A | QTS-9011, QTS-1005830 FF+2d, QTS - 25741 | 100% | 2026-04-09 | 2026-04-13 | SIE | Commissioning | DH1100 | L2 | COD |
| DC1-COD-L2-2290 |  | DH1100 COD-E11-06 L2 Checklist | 3d | 2026-04-16 A | 2026-05-12 A | QTS-9011, QTS-1005830 FF+2d, QTS - 25741 | 100% | 2026-04-09 | 2026-04-13 | SIE | Commissioning | DH1100 | L2 | COD |
|  | 06 | **DC1-DH1100 COD F11 Cx L2** |  | 2026-04-16 | 2026-05-12 |  |  |  |  |  |  |  |  |  |
| DC1-COD-L2-2300 |  | DH1100 COD-F11-01 L2 Checklist | 3d | 2026-04-16 A | 2026-05-12 A | QTS-9041, QTS-1005930 FF+2d, QTS - 25741 | 100% | 2026-04-09 | 2026-04-13 | SIE | Commissioning | DH1100 | L2 | COD |
| DC1-COD-L2-2310 |  | DH1100 COD-F11-02 L2 Checklist | 3d | 2026-04-16 A | 2026-05-12 A | QTS-9041, QTS-1005930 FF+2d, QTS - 25741 | 100% | 2026-04-09 | 2026-04-13 | SIE | Commissioning | DH1100 | L2 | COD |
| DC1-COD-L2-2320 |  | DH1100 COD-F11-03 L2 Checklist | 3d | 2026-04-16 A | 2026-05-12 A | QTS-9041, QTS-1005930 FF+2d, QTS - 25741 | 100% | 2026-04-09 | 2026-04-13 | SIE | Commissioning | DH1100 | L2 | COD |
| DC1-COD-L2-2330 |  | DH1100 COD-F11-04 L2 Checklist | 3d | 2026-04-16 A | 2026-05-12 A | QTS-9041, QTS-1005930 FF+2d, QTS - 25741 | 100% | 2026-04-09 | 2026-04-13 | SIE | Commissioning | DH1100 | L2 | COD |
| DC1-COD-L2-2340 |  | DH1100 COD-F11-05 L2 Checklist | 3d | 2026-04-16 A | 2026-05-12 A | QTS-9041, QTS-1005930 FF+2d, QTS - 25741 | 100% | 2026-04-09 | 2026-04-13 | SIE | Commissioning | DH1100 | L2 | COD |
| DC1-COD-L2-2350 |  | DH1100 COD-F11-06 L2 Checklist | 3d | 2026-04-16 A | 2026-05-12 A | QTS-9041, QTS-1005930 FF+2d, QTS - 25741 | 100% | 2026-04-09 | 2026-04-13 | SIE | Commissioning | DH1100 | L2 | COD |
|  | 1 | **DC1-DH1100 RPPs Cx L2** |  | 2026-04-22 | 2026-05-14 |  |  |  |  |  |  |  |  |  |
|  | 01 | **DC1-DH1100 RPP A11 Cx L2** |  | 2026-04-22 | 2026-04-30 |  |  |  |  |  |  |  |  |  |
| DC1-RPP-L2-2000 |  | DH1100 RPP-A11-01 A/B L2 Checklist | 3d | 2026-04-22 A | 2026-04-30 A | QTS - 3780 | 100% | 2026-04-22 | 2026-04-24 | SQD | Commissioning | DH1100 | L2 | RPP |
| DC1-RPP-L2-2010 |  | DH1100 RPP-A11-02 A/B L2 Checklist | 3d | 2026-04-22 A | 2026-04-30 A | QTS - 3780 | 100% | 2026-04-22 | 2026-04-24 | SQD | Commissioning | DH1100 | L2 | RPP |
| DC1-RPP-L2-2020 |  | DH1100 RPP-A11-03 A/B L2 Checklist | 3d | 2026-04-22 A | 2026-04-30 A | QTS - 3780 | 100% | 2026-04-22 | 2026-04-24 | SQD | Commissioning | DH1100 | L2 | RPP |
| DC1-RPP-L2-2030 |  | DH1100 RPP-A11-04 A/B L2 Checklist | 3d | 2026-04-22 A | 2026-04-30 A | QTS - 3780 | 100% | 2026-04-22 | 2026-04-24 | SQD | Commissioning | DH1100 | L2 | RPP |
| DC1-RPP-L2-2040 |  | DH1100 RPP-A11-05 A/B L2 Checklist | 3d | 2026-04-22 A | 2026-04-30 A | QTS - 3780 | 100% | 2026-04-22 | 2026-04-24 | SQD | Commissioning | DH1100 | L2 | RPP |
| DC1-RPP-L2-2050 |  | DH1100 RPP-A11-06 A/B L2 Checklist | 3d | 2026-04-22 A | 2026-04-30 A | QTS - 3780 | 100% | 2026-04-22 | 2026-04-24 | SQD | Commissioning | DH1100 | L2 | RPP |
|  | 02 | **DC1-DH1100 RPP B11 Cx L2** |  | 2026-04-22 | 2026-04-30 |  |  |  |  |  |  |  |  |  |
| DC1-RPP-L2-2060 |  | DH1100 RPP-B11-01 A/B L2 Checklist | 3d | 2026-04-22 A | 2026-04-30 A | QTS - 3780 | 100% | 2026-04-22 | 2026-04-24 | SQD | Commissioning | DH1100 | L2 | RPP |
| DC1-RPP-L2-2070 |  | DH1100 RPP-B11-02 A/B L2 Checklist | 3d | 2026-04-22 A | 2026-04-30 A | QTS - 3780 | 100% | 2026-04-22 | 2026-04-24 | SQD | Commissioning | DH1100 | L2 | RPP |
| DC1-RPP-L2-2080 |  | DH1100 RPP-B11-03 A/B L2 Checklist | 3d | 2026-04-22 A | 2026-04-30 A | QTS - 3780 | 100% | 2026-04-22 | 2026-04-24 | SQD | Commissioning | DH1100 | L2 | RPP |
| DC1-RPP-L2-2090 |  | DH1100 RPP-B11-04 A/B L2 Checklist | 3d | 2026-04-22 A | 2026-04-30 A | QTS - 3780 | 100% | 2026-04-22 | 2026-04-24 | SQD | Commissioning | DH1100 | L2 | RPP |
| DC1-RPP-L2-2100 |  | DH1100 RPP-B11-05 A/B L2 Checklist | 3d | 2026-04-22 A | 2026-04-30 A | QTS - 3780 | 100% | 2026-04-22 | 2026-04-24 | SQD | Commissioning | DH1100 | L2 | RPP |
| DC1-RPP-L2-2110 |  | DH1100 RPP-B11-06 A/B L2 Checklist | 3d | 2026-04-22 A | 2026-04-30 A | QTS - 3780 | 100% | 2026-04-22 | 2026-04-24 | SQD | Commissioning | DH1100 | L2 | RPP |

Notes:
- DC1-COD-L2-2240: Steps: EC Installation Checklist; CC Installation Checklist; Vendor Pre-Energization Checklist; CXA Pre-Energization Inspection; PEI/Clean-Walk
- DC1-COD-L2-2250: Steps: EC Installation Checklist; CC Installation Checklist; Vendor Pre-Energization Checklist; CXA Pre-Energization Inspection; PEI/Clean-Walk
- DC1-COD-L2-2260: Steps: EC Installation Checklist; CC Installation Checklist; Vendor Pre-Energization Checklist; CXA Pre-Energization Inspection; PEI/Clean-Walk
- DC1-COD-L2-2270: Steps: EC Installation Checklist; CC Installation Checklist; Vendor Pre-Energization Checklist; CXA Pre-Energization Inspection; PEI/Clean-Walk
- DC1-COD-L2-2280: Steps: EC Installation Checklist; CC Installation Checklist; Vendor Pre-Energization Checklist; CXA Pre-Energization Inspection; PEI/Clean-Walk
- DC1-COD-L2-2290: Steps: EC Installation Checklist; CC Installation Checklist; Vendor Pre-Energization Checklist; CXA Pre-Energization Inspection; PEI/Clean-Walk
- DC1-COD-L2-2300: Steps: EC Installation Checklist; CC Installation Checklist; Vendor Pre-Energization Checklist; CXA Pre-Energization Inspection; PEI/Clean-Walk
- DC1-COD-L2-2310: Steps: EC Installation Checklist; CC Installation Checklist; Vendor Pre-Energization Checklist; CXA Pre-Energization Inspection; PEI/Clean-Walk
- DC1-COD-L2-2320: Steps: EC Installation Checklist; CC Installation Checklist; Vendor Pre-Energization Checklist; CXA Pre-Energization Inspection; PEI/Clean-Walk
- DC1-COD-L2-2330: Steps: EC Installation Checklist; CC Installation Checklist; Vendor Pre-Energization Checklist; CXA Pre-Energization Inspection; PEI/Clean-Walk
- DC1-COD-L2-2340: Steps: EC Installation Checklist; CC Installation Checklist; Vendor Pre-Energization Checklist; CXA Pre-Energization Inspection; PEI/Clean-Walk
- DC1-COD-L2-2350: Steps: EC Installation Checklist; CC Installation Checklist; Vendor Pre-Energization Checklist; CXA Pre-Energization Inspection; PEI/Clean-Walk
- DC1-RPP-L2-2000: Steps: EC Installation Checklist; CC Installation Checklist; Vendor Pre-Energization Checklist; CXA Pre-Energization Inspection; PEI/Clean-Walk
- DC1-RPP-L2-2010: Steps: EC Installation Checklist; CC Installation Checklist; Vendor Pre-Energization Checklist; CXA Pre-Energization Inspection; PEI/Clean-Walk
- DC1-RPP-L2-2020: Steps: EC Installation Checklist; CC Installation Checklist; Vendor Pre-Energization Checklist; CXA Pre-Energization Inspection; PEI/Clean-Walk
- DC1-RPP-L2-2030: Steps: EC Installation Checklist; CC Installation Checklist; Vendor Pre-Energization Checklist; CXA Pre-Energization Inspection; PEI/Clean-Walk
- DC1-RPP-L2-2040: Steps: EC Installation Checklist; CC Installation Checklist; Vendor Pre-Energization Checklist; CXA Pre-Energization Inspection; PEI/Clean-Walk
- DC1-RPP-L2-2050: Steps: EC Installation Checklist; CC Installation Checklist; Vendor Pre-Energization Checklist; CXA Pre-Energization Inspection; PEI/Clean-Walk
- DC1-RPP-L2-2060: Steps: EC Installation Checklist; CC Installation Checklist; Vendor Pre-Energization Checklist; CXA Pre-Energization Inspection; PEI/Clean-Walk
- DC1-RPP-L2-2070: Steps: EC Installation Checklist; CC Installation Checklist; Vendor Pre-Energization Checklist; CXA Pre-Energization Inspection; PEI/Clean-Walk
- DC1-RPP-L2-2080: Steps: EC Installation Checklist; CC Installation Checklist; Vendor Pre-Energization Checklist; CXA Pre-Energization Inspection; PEI/Clean-Walk
- DC1-RPP-L2-2090: Steps: EC Installation Checklist; CC Installation Checklist; Vendor Pre-Energization Checklist; CXA Pre-Energization Inspection; PEI/Clean-Walk
- DC1-RPP-L2-2100: Steps: EC Installation Checklist; CC Installation Checklist; Vendor Pre-Energization Checklist; CXA Pre-Energization Inspection; PEI/Clean-Walk
- DC1-RPP-L2-2110: Steps: EC Installation Checklist; CC Installation Checklist; Vendor Pre-Energization Checklist; CXA Pre-Energization Inspection; PEI/Clean-Walk

| ID | WBS | Activity | Duration | Start | Finish | Predecessors | Complete | Planned start | Planned finish | Vendor Responsible Party | Layton Discipline | Location | CX Level | Equipment |
| --- | --- | --- | --- | --- | --- | --- | --- | --- | --- | --- | --- | --- | --- | --- |
|  | 03 | **DC1-DH1100 RPP C11 Cx L2** |  | 2026-05-07 | 2026-05-14 |  |  |  |  |  |  |  |  |  |
| DC1-RPP-L2-2120 |  | DH1100 RPP-C11-01 A/B L2 Checklist | 3d | 2026-05-07 A | 2026-05-14 A | QTS - 15230 | 100% | 2026-05-07 | 2026-05-11 | SQD | Commissioning | DH1100 | L2 | RPP |
| DC1-RPP-L2-2130 |  | DH1100 RPP-C11-02 A/B L2 Checklist | 3d | 2026-05-07 A | 2026-05-14 A | QTS - 15230 | 100% | 2026-05-15 | 2026-05-19 | SQD | Commissioning | DH1100 | L2 | RPP |
| DC1-RPP-L2-2140 |  | DH1100 RPP-C11-03 A/B L2 Checklist | 3d | 2026-05-07 A | 2026-05-14 A | QTS - 15230 | 100% | 2026-05-15 | 2026-05-19 | SQD | Commissioning | DH1100 | L2 | RPP |
| DC1-RPP-L2-2150 |  | DH1100 RPP-C11-04 A/B L2 Checklist | 3d | 2026-05-07 A | 2026-05-14 A | QTS - 15230 | 100% | 2026-05-15 | 2026-05-19 | SQD | Commissioning | DH1100 | L2 | RPP |
| DC1-RPP-L2-2160 |  | DH1100 RPP-C11-05 A/B L2 Checklist | 3d | 2026-05-07 A | 2026-05-14 A | QTS - 15230 | 100% | 2026-05-15 | 2026-05-19 | SQD | Commissioning | DH1100 | L2 | RPP |
| DC1-RPP-L2-2170 |  | DH1100 RPP-C11-06 A/B L2 Checklist | 3d | 2026-05-07 A | 2026-05-14 A | QTS - 15230 | 100% | 2026-05-15 | 2026-05-19 | SQD | Commissioning | DH1100 | L2 | RPP |
|  | 04 | **DC1-DH1100 RPP D11 Cx L2** |  | 2026-05-07 | 2026-05-14 |  |  |  |  |  |  |  |  |  |
| DC1-RPP-L2-2180 |  | DH1100 RPP-D11-01 A/B L2 Checklist | 3d | 2026-05-07 A | 2026-05-14 A | QTS - 15230, DC1-RPP-L2-2120 SS, DC1-RPP-L2-2120 FF | 100% | 2026-05-15 | 2026-05-19 | SQD | Commissioning | DH1100 | L2 | RPP |
| DC1-RPP-L2-2190 |  | DH1100 RPP-D11-02 A/B L2 Checklist | 3d | 2026-05-07 A | 2026-05-14 A | QTS - 15230, DC1-RPP-L2-2130 SS, DC1-RPP-L2-2130 FF | 100% | 2026-05-15 | 2026-05-19 | SQD | Commissioning | DH1100 | L2 | RPP |
| DC1-RPP-L2-2200 |  | DH1100 RPP-D11-03 A/B L2 Checklist | 3d | 2026-05-07 A | 2026-05-14 A | QTS - 15230, DC1-RPP-L2-2140 SS, DC1-RPP-L2-2140 FF | 100% | 2026-05-15 | 2026-05-19 | SQD | Commissioning | DH1100 | L2 | RPP |
| DC1-RPP-L2-2210 |  | DH1100 RPP-D11-04 A/B L2 Checklist | 3d | 2026-05-07 A | 2026-05-14 A | QTS - 15230, DC1-RPP-L2-2150 SS, DC1-RPP-L2-2150 FF | 100% | 2026-05-15 | 2026-05-19 | SQD | Commissioning | DH1100 | L2 | RPP |
| DC1-RPP-L2-2220 |  | DH1100 RPP-D11-05 A/B L2 Checklist | 3d | 2026-05-07 A | 2026-05-14 A | QTS - 15230, DC1-RPP-L2-2160 SS, DC1-RPP-L2-2160 FF | 100% | 2026-05-15 | 2026-05-19 | SQD | Commissioning | DH1100 | L2 | RPP |
| DC1-RPP-L2-2230 |  | DH1100 RPP-D11-06 A/B L2 Checklist | 3d | 2026-05-07 A | 2026-05-14 A | QTS - 15230, DC1-RPP-L2-2170 FF, DC1-RPP-L2-2170 SS | 100% | 2026-05-15 | 2026-05-19 | SQD | Commissioning | DH1100 | L2 | RPP |
|  | 05 | **DC1-DH1100 RPP E11 Cx L2** |  | 2026-05-07 | 2026-05-14 |  |  |  |  |  |  |  |  |  |
| DC1-RPP-L2-2240 |  | DH1100 RPP-E11-01 A/B L2 Checklist | 3d | 2026-05-07 A | 2026-05-14 A | QTS - 24691, DC1-RPP-L2-2180 SS, DC1-RPP-L2-2180 FF | 100% | 2026-05-15 | 2026-05-19 | SQD | Commissioning | DH1100 | L2 | RPP |
| DC1-RPP-L2-2250 |  | DH1100 RPP-E11-02 A/B L2 Checklist | 3d | 2026-05-07 A | 2026-05-14 A | QTS - 24691, DC1-RPP-L2-2190 SS, DC1-RPP-L2-2190 FF | 100% | 2026-05-15 | 2026-05-19 | SQD | Commissioning | DH1100 | L2 | RPP |
| DC1-RPP-L2-2260 |  | DH1100 RPP-E11-03 A/B L2 Checklist | 3d | 2026-05-07 A | 2026-05-14 A | QTS - 24691, DC1-RPP-L2-2200 SS, DC1-RPP-L2-2200 FF | 100% | 2026-05-15 | 2026-05-19 | SQD | Commissioning | DH1100 | L2 | RPP |
| DC1-RPP-L2-2270 |  | DH1100 RPP-E11-04 A/B L2 Checklist | 3d | 2026-05-07 A | 2026-05-14 A | QTS - 24691, DC1-RPP-L2-2210 SS, DC1-RPP-L2-2210 FF | 100% | 2026-05-15 | 2026-05-19 | SQD | Commissioning | DH1100 | L2 | RPP |
| DC1-RPP-L2-2280 |  | DH1100 RPP-E11-05 A/B L2 Checklist | 3d | 2026-05-07 A | 2026-05-14 A | QTS - 24691, DC1-RPP-L2-2220 SS, DC1-RPP-L2-2220 FF | 100% | 2026-05-15 | 2026-05-19 | SQD | Commissioning | DH1100 | L2 | RPP |
| DC1-RPP-L2-2290 |  | DH1100 RPP-E11-06 A/B L2 Checklist | 3d | 2026-05-07 A | 2026-05-14 A | QTS - 24691, DC1-RPP-L2-2230 SS, DC1-RPP-L2-2230 FF | 100% | 2026-05-15 | 2026-05-19 | SQD | Commissioning | DH1100 | L2 | RPP |
|  | 06 | **DC1-DH1100 RPP F11 Cx L2** |  | 2026-05-11 | 2026-05-14 |  |  |  |  |  |  |  |  |  |
| DC1-RPP-L2-2300 |  | DH1100 RPP-F11-01 A/B L2 Checklist | 3d | 2026-05-11 A | 2026-05-14 A | QTS - 24691, DC1-RPP-L2-2240 SS, DC1-RPP-L2-2240 FF | 100% | 2026-05-15 | 2026-05-19 | SQD | Commissioning | DH1100 | L2 | RPP |
| DC1-RPP-L2-2310 |  | DH1100 RPP-F11-02 A/B L2 Checklist | 3d | 2026-05-11 A | 2026-05-14 A | QTS - 24691, DC1-RPP-L2-2250 SS, DC1-RPP-L2-2250 FF | 100% | 2026-05-15 | 2026-05-19 | SQD | Commissioning | DH1100 | L2 | RPP |
| DC1-RPP-L2-2320 |  | DH1100 RPP-F11-03 A/B L2 Checklist | 3d | 2026-05-11 A | 2026-05-14 A | QTS - 24691, DC1-RPP-L2-2260 SS, DC1-RPP-L2-2260 FF | 100% | 2026-05-15 | 2026-05-19 | SQD | Commissioning | DH1100 | L2 | RPP |
| DC1-RPP-L2-2330 |  | DH1100 RPP-F11-04 A/B L2 Checklist | 3d | 2026-05-11 A | 2026-05-14 A | QTS - 24691, DC1-RPP-L2-2270 SS, DC1-RPP-L2-2270 FF | 100% | 2026-05-15 | 2026-05-19 | SQD | Commissioning | DH1100 | L2 | RPP |
| DC1-RPP-L2-2340 |  | DH1100 RPP-F11-05 A/B L2 Checklist | 3d | 2026-05-11 A | 2026-05-14 A | QTS - 24691, DC1-RPP-L2-2280 SS, DC1-RPP-L2-2280 FF | 100% | 2026-05-15 | 2026-05-19 | SQD | Commissioning | DH1100 | L2 | RPP |
| DC1-RPP-L2-2350 |  | DH1100 RPP-F11-06 A/B L2 Checklist | 3d | 2026-05-11 A | 2026-05-14 A | QTS - 24691, DC1-RPP-L2-2290 SS, DC1-RPP-L2-2290 FF | 100% | 2026-05-15 | 2026-05-19 | SQD | Commissioning | DH1100 | L2 | RPP |

Notes:
- DC1-RPP-L2-2120: Steps: EC Installation Checklist; CC Installation Checklist; Vendor Pre-Energization Checklist; CXA Pre-Energization Inspection; PEI/Clean-Walk
- DC1-RPP-L2-2130: Steps: EC Installation Checklist; CC Installation Checklist; Vendor Pre-Energization Checklist; CXA Pre-Energization Inspection; PEI/Clean-Walk
- DC1-RPP-L2-2140: Steps: EC Installation Checklist; CC Installation Checklist; Vendor Pre-Energization Checklist; CXA Pre-Energization Inspection; PEI/Clean-Walk
- DC1-RPP-L2-2150: Steps: EC Installation Checklist; CC Installation Checklist; Vendor Pre-Energization Checklist; CXA Pre-Energization Inspection; PEI/Clean-Walk
- DC1-RPP-L2-2160: Steps: EC Installation Checklist; CC Installation Checklist; Vendor Pre-Energization Checklist; CXA Pre-Energization Inspection; PEI/Clean-Walk
- DC1-RPP-L2-2170: Steps: EC Installation Checklist; CC Installation Checklist; Vendor Pre-Energization Checklist; CXA Pre-Energization Inspection; PEI/Clean-Walk
- DC1-RPP-L2-2180: Steps: EC Installation Checklist; CC Installation Checklist; Vendor Pre-Energization Checklist; CXA Pre-Energization Inspection; PEI/Clean-Walk
- DC1-RPP-L2-2190: Steps: EC Installation Checklist; CC Installation Checklist; Vendor Pre-Energization Checklist; CXA Pre-Energization Inspection; PEI/Clean-Walk
- DC1-RPP-L2-2200: Steps: EC Installation Checklist; CC Installation Checklist; Vendor Pre-Energization Checklist; CXA Pre-Energization Inspection; PEI/Clean-Walk
- DC1-RPP-L2-2210: Steps: EC Installation Checklist; CC Installation Checklist; Vendor Pre-Energization Checklist; CXA Pre-Energization Inspection; PEI/Clean-Walk
- DC1-RPP-L2-2220: Steps: EC Installation Checklist; CC Installation Checklist; Vendor Pre-Energization Checklist; CXA Pre-Energization Inspection; PEI/Clean-Walk
- DC1-RPP-L2-2230: Steps: EC Installation Checklist; CC Installation Checklist; Vendor Pre-Energization Checklist; CXA Pre-Energization Inspection; PEI/Clean-Walk
- DC1-RPP-L2-2240: Steps: EC Installation Checklist; CC Installation Checklist; Vendor Pre-Energization Checklist; CXA Pre-Energization Inspection; PEI/Clean-Walk
- DC1-RPP-L2-2250: Steps: EC Installation Checklist; CC Installation Checklist; Vendor Pre-Energization Checklist; CXA Pre-Energization Inspection; PEI/Clean-Walk
- DC1-RPP-L2-2260: Steps: EC Installation Checklist; CC Installation Checklist; Vendor Pre-Energization Checklist; CXA Pre-Energization Inspection; PEI/Clean-Walk
- DC1-RPP-L2-2270: Steps: EC Installation Checklist; CC Installation Checklist; Vendor Pre-Energization Checklist; CXA Pre-Energization Inspection; PEI/Clean-Walk
- DC1-RPP-L2-2280: Steps: EC Installation Checklist; CC Installation Checklist; Vendor Pre-Energization Checklist; CXA Pre-Energization Inspection; PEI/Clean-Walk
- DC1-RPP-L2-2290: Steps: EC Installation Checklist; CC Installation Checklist; Vendor Pre-Energization Checklist; CXA Pre-Energization Inspection; PEI/Clean-Walk
- DC1-RPP-L2-2300: Steps: EC Installation Checklist; CC Installation Checklist; Vendor Pre-Energization Checklist; CXA Pre-Energization Inspection; PEI/Clean-Walk
- DC1-RPP-L2-2310: Steps: EC Installation Checklist; CC Installation Checklist; Vendor Pre-Energization Checklist; CXA Pre-Energization Inspection; PEI/Clean-Walk
- DC1-RPP-L2-2320: Steps: EC Installation Checklist; CC Installation Checklist; Vendor Pre-Energization Checklist; CXA Pre-Energization Inspection; PEI/Clean-Walk
- DC1-RPP-L2-2330: Steps: EC Installation Checklist; CC Installation Checklist; Vendor Pre-Energization Checklist; CXA Pre-Energization Inspection; PEI/Clean-Walk
- DC1-RPP-L2-2340: Steps: EC Installation Checklist; CC Installation Checklist; Vendor Pre-Energization Checklist; CXA Pre-Energization Inspection; PEI/Clean-Walk
- DC1-RPP-L2-2350: Steps: EC Installation Checklist; CC Installation Checklist; Vendor Pre-Energization Checklist; CXA Pre-Energization Inspection; PEI/Clean-Walk

| ID | WBS | Activity | Duration | Start | Finish | Predecessors | Complete | Planned start | Planned finish | Calendar | Vendor Responsible Party | Layton Discipline | Location | CX Level | Equipment |
| --- | --- | --- | --- | --- | --- | --- | --- | --- | --- | --- | --- | --- | --- | --- | --- |
|  | 07 | **DC1-DH1100 MOD-02 Cx L2** |  | 2026-03-13 | 2026-04-06 |  |  |  |  |  |  |  |  |  |  |
| DC1-MOD02-L2-2000 |  | DH1100 MOD-A11-02 L2 Checklist | 3d | 2026-03-13 A | 2026-04-06 A | QTS-43691, QTS-1005430 FF+2d, DC1-COMM-1020 SS | 100% | 2026-03-13 | 2026-03-17 |  | PHE | Commissioning | DH1100 | L2 | MOD-02 |
| DC1-MOD02-L2-2010 |  | DH1100 MOD-B11-02 L2 Checklist | 3d | 2026-03-13 A | 2026-04-06 A | DC1-MOD02-L2-2000 SS, QTS-1005550 FF+2d, QTS-43691, DC1-COMM-1020 SS | 100% | 2026-03-13 | 2026-03-17 |  | PHE | Commissioning | DH1100 | L2 | MOD-02 |
| DC1-MOD02-L2-2020 |  | DH1100 MOD-C11-02 L2 Checklist | 3d | 2026-03-13 A | 2026-04-06 A | DC1-MOD02-L2-2010 SS, QTS-1005640 FF+2d, QTS-43691, DC1-COMM-1020 SS | 100% | 2026-03-13 | 2026-03-17 |  | PHE | Commissioning | DH1100 | L2 | MOD-02 |
| DC1-MOD02-L2-2030 |  | DH1100 MOD-D11-02 L2 Checklist | 3d | 2026-03-13 A | 2026-04-06 A | DC1-MOD02-L2-2020 SS, QTS-1005730 FF+2d, QTS-43691, DC1-COMM-1020 SS | 100% | 2026-03-13 | 2026-03-17 |  | PHE | Commissioning | DH1100 | L2 | MOD-02 |
| DC1-MOD02-L2-2040 |  | DH1100 MOD-E11-02 L2 Checklist | 3d | 2026-03-13 A | 2026-04-06 A | DC1-MOD02-L2-2030 SS, QTS-1005820 FF+2d, QTS-43691, DC1-COMM-1020 SS | 100% | 2026-03-13 | 2026-03-17 |  | PHE | Commissioning | DH1100 | L2 | MOD-02 |
| DC1-MOD02-L2-2050 |  | DH1100 MOD-F11-02 L2 Checklist | 3d | 2026-03-13 A | 2026-04-06 A | DC1-MOD02-L2-2040 SS, QTS-1005920 FF+2d, QTS-43691, DC1-COMM-1020 SS | 100% | 2026-03-13 | 2026-03-17 |  | PHE | Commissioning | DH1100 | L2 | MOD-02 |
| DC1-MOD02-L2-2060 |  | DH1100 MOD-R11-02 L2 Checklist | 3d | 2026-03-13 A | 2026-04-06 A | DC1-MOD02-L2-2050 SS, QTS-1006030 FF+2d, QTS-43691, DC1-COMM-1020 SS | 100% | 2026-03-13 | 2026-03-17 |  | PHE | Commissioning | DH1100 | L2 | MOD-02 |
|  | 08 | **DC1-DH1100 MOD-03 Cx L2** |  | 2026-04-06 | 2026-04-22 |  |  |  |  |  |  |  |  |  |  |
| DC1-MOD03-L2-2060 |  | DH1100 MOD-R11-03 L2 Checklist | 3d | 2026-04-06 A | 2026-04-06 A | QTS - 4620, QTS - 4810, QTS-1001600, QTS-43691 | 100% | 2026-04-06 | 2026-04-08 | QTS-PHX3 DC1 - 6 day w/ Holidays | PHE | Commissioning | DH1100 | L2 | MOD-03 |
| DC1-MOD03-L2-2000 |  | DH1100 MOD-A11-03 L2 Checklist | 3d | 2026-04-22 A | 2026-04-22 A | QTS - 4620, QTS - 4810, QTS-1001600, QTS-43691 | 100% | 2026-04-22 | 2026-04-24 | QTS-PHX3 DC1 - 6 day w/ Holidays | PHE | Commissioning | DH1100 | L2 | MOD-03 |
| DC1-MOD03-L2-2010 |  | DH1100 MOD-B11-03 L2 Checklist | 3d | 2026-04-22 A | 2026-04-22 A | QTS - 4620, QTS - 4810, QTS-1001600, QTS-43691 | 100% | 2026-04-22 | 2026-04-24 | QTS-PHX3 DC1 - 6 day w/ Holidays | PHE | Commissioning | DH1100 | L2 | MOD-03 |
| DC1-MOD03-L2-2020 |  | DH1100 MOD-C11-03 L2 Checklist | 3d | 2026-04-22 A | 2026-04-22 A | QTS - 4620, QTS - 4810, QTS-1001600, QTS-43691 | 100% | 2026-04-22 | 2026-04-24 | QTS-PHX3 DC1 - 6 day w/ Holidays | PHE | Commissioning | DH1100 | L2 | MOD-03 |
| DC1-MOD03-L2-2030 |  | DH1100 MOD-D11-03 L2 Checklist | 3d | 2026-04-22 A | 2026-04-22 A | QTS - 4620, QTS - 4810, QTS-1001600, QTS-43691 | 100% | 2026-04-22 | 2026-04-24 | QTS-PHX3 DC1 - 6 day w/ Holidays | PHE | Commissioning | DH1100 | L2 | MOD-03 |
| DC1-MOD03-L2-2040 |  | DH1100 MOD-E11-03 L2 Checklist | 3d | 2026-04-22 A | 2026-04-22 A | QTS - 4620, QTS - 4810, QTS-1001600, QTS-43691 | 100% | 2026-04-22 | 2026-04-24 | QTS-PHX3 DC1 - 6 day w/ Holidays | PHE | Commissioning | DH1100 | L2 | MOD-03 |
| DC1-MOD03-L2-2050 |  | DH1100 MOD-F11-03 L2 Checklist | 3d | 2026-04-22 A | 2026-04-22 A | QTS - 4620, QTS - 4810, QTS-1001600, QTS-43691 | 100% | 2026-04-22 | 2026-04-24 | QTS-PHX3 DC1 - 6 day w/ Holidays | PHE | Commissioning | DH1100 | L2 | MOD-03 |
|  | 2 | **DC1-DH1100 CDUs Cx L2** |  | 2026-04-30 | 2026-07-08 |  |  |  |  |  |  |  |  |  |  |
| DC1-CDU-L2-2000 |  | CDU-DH1100-01 L2 Checklist | 3d | 2026-04-30 A | 2026-07-08 A | QTS - 4930, QTS - 4810 | 100% | 2026-05-14 | 2026-05-18 |  | VER | Commissioning | DH1100 | L2 | CDU |
| DC1-CDU-L2-2010 |  | CDU-DH1100-02 L2 Checklist | 3d | 2026-04-30 A | 2026-07-08 A | QTS - 4930, QTS - 4810 | 100% | 2026-05-14 | 2026-05-18 |  | VER | Commissioning | DH1100 | L2 | CDU |
| DC1-CDU-L2-2020 |  | CDU-DH1100-03 L2 Checklist | 3d | 2026-04-30 A | 2026-07-08 A | QTS - 4930, QTS - 4810 | 100% | 2026-05-14 | 2026-05-18 |  | VER | Commissioning | DH1100 | L2 | CDU |
| DC1-CDU-L2-2030 |  | CDU-DH1100-04 L2 Checklist | 3d | 2026-04-30 A | 2026-07-08 A | QTS - 4620, QTS - 4930 | 100% | 2026-05-14 | 2026-05-18 |  | VER | Commissioning | DH1100 | L2 | CDU |
| DC1-CDU-L2-2040 |  | CDU-DH1100-05 L2 Checklist | 3d | 2026-04-30 A | 2026-07-08 A | QTS - 4620, QTS - 4930 | 100% | 2026-05-14 | 2026-05-18 |  | VER | Commissioning | DH1100 | L2 | CDU |
| DC1-CDU-L2-2050 |  | CDU-DH1100-06 L2 Checklist | 3d | 2026-04-30 A | 2026-07-08 A | QTS - 4620, QTS - 4930 | 100% | 2026-05-14 | 2026-05-18 |  | VER | Commissioning | DH1100 | L2 | CDU |
|  | 09 | **DC1-DH1100 CHLR Cx L2** |  | 2026-03-16 | 2026-03-26 |  |  |  |  |  |  |  |  |  |  |
| DC1-CHLR-L2-Cx-2000 |  | DH1100 CHLR-1RT40-A11 L2 Checklist | 3d | 2026-03-16 A | 2026-03-26 A | QTS-18621, QTS-1005410 FF+2d | 100% | 2026-03-16 | 2026-03-18 |  | TAS | Commissioning | DH1100 | L2 | CHILLER |
| DC1-CHLR-L2-Cx-2010 |  | DH1100 CHLR-1RT40-B11 L2 Checklist | 3d | 2026-03-16 A | 2026-03-26 A | QTS-18621, QTS-1005500 FF+2d | 100% | 2026-03-16 | 2026-03-18 |  | TAS | Commissioning | DH1100 | L2 | CHILLER |
| DC1-CHLR-L2-Cx-2020 |  | DH1100 CHLR-1RT40-C11 L2 Checklist | 3d | 2026-03-16 A | 2026-03-26 A | QTS-18621, QTS-1005590 FF+2d | 100% | 2026-03-16 | 2026-03-18 |  | TAS | Commissioning | DH1100 | L2 | CHILLER |
| DC1-CHLR-L2-Cx-2030 |  | DH1100 CHLR-1RT40-D11 L2 Checklist | 3d | 2026-03-16 A | 2026-03-26 A | QTS-18631, QTS-1005680 FF+2d | 100% | 2026-03-16 | 2026-03-18 |  | TAS | Commissioning | DH1100 | L2 | CHILLER |
| DC1-CHLR-L2-Cx-2040 |  | DH1100 CHLR-1RT40-E11 L2 Checklist | 3d | 2026-03-16 A | 2026-03-26 A | QTS-18631, QTS-1005770 FF+2d | 100% | 2026-03-16 | 2026-03-18 |  | TAS | Commissioning | DH1100 | L2 | CHILLER |
| DC1-CHLR-L2-Cx-2050 |  | DH1100 CHLR-1RT40-F11 L2 Checklist | 3d | 2026-03-16 A | 2026-03-26 A | QTS-18631, QTS-1005870 FF+2d | 100% | 2026-03-16 | 2026-03-18 |  | TAS | Commissioning | DH1100 | L2 | CHILLER |
| DC1-CHLR-L2-Cx-2060 |  | DH1100 CHLR-1RT40-R11 L2 Checklist | 3d | 2026-03-16 A | 2026-03-26 A | QTS-18621, QTS-1005970 FF+2d | 100% | 2026-03-16 | 2026-03-18 |  | TAS | Commissioning | DH1100 | L2 | CHILLER |

Notes:
- DC1-MOD02-L2-2000: Steps: EC Installation Checklist; CC Installation Checklist (done); Vendor Pre-Energization Checklist (done); CXA Pre-Energization Inspection; PEI/Clean-Walk
- DC1-MOD02-L2-2010: Steps: EC Installation Checklist; CC Installation Checklist (done); Vendor Pre-Energization Checklist (done); CXA Pre-Energization Inspection; PEI/Clean-Walk
- DC1-MOD02-L2-2020: Steps: EC Installation Checklist; CC Installation Checklist (done); Vendor Pre-Energization Checklist (done); CXA Pre-Energization Inspection; PEI/Clean-Walk
- DC1-MOD02-L2-2030: Steps: EC Installation Checklist; CC Installation Checklist (done); Vendor Pre-Energization Checklist (done); CXA Pre-Energization Inspection; PEI/Clean-Walk
- DC1-MOD02-L2-2040: Steps: EC Installation Checklist; CC Installation Checklist (done); Vendor Pre-Energization Checklist (done); CXA Pre-Energization Inspection; PEI/Clean-Walk
- DC1-MOD02-L2-2050: Steps: EC Installation Checklist; CC Installation Checklist (done); Vendor Pre-Energization Checklist (done); CXA Pre-Energization Inspection; PEI/Clean-Walk
- DC1-MOD02-L2-2060: Steps: EC Installation Checklist; CC Installation Checklist (done); Vendor Pre-Energization Checklist (done); CXA Pre-Energization Inspection; PEI/Clean-Walk
- DC1-MOD03-L2-2060: Steps: EC Installation Checklist; CC Installation Checklist; Vendor Pre-Energization Checklist; CXA Pre-Energization Inspection; PEI/Clean-Walk
- DC1-MOD03-L2-2000: Steps: EC Installation Checklist; CC Installation Checklist; Vendor Pre-Energization Checklist; CXA Pre-Energization Inspection; PEI/Clean-Walk
- DC1-MOD03-L2-2010: Steps: EC Installation Checklist; CC Installation Checklist; Vendor Pre-Energization Checklist; CXA Pre-Energization Inspection; PEI/Clean-Walk
- DC1-MOD03-L2-2020: Steps: EC Installation Checklist; CC Installation Checklist; Vendor Pre-Energization Checklist; CXA Pre-Energization Inspection; PEI/Clean-Walk
- DC1-MOD03-L2-2030: Steps: EC Installation Checklist; CC Installation Checklist; Vendor Pre-Energization Checklist; CXA Pre-Energization Inspection; PEI/Clean-Walk
- DC1-MOD03-L2-2040: Steps: EC Installation Checklist; CC Installation Checklist; Vendor Pre-Energization Checklist; CXA Pre-Energization Inspection; PEI/Clean-Walk
- DC1-MOD03-L2-2050: Steps: EC Installation Checklist; CC Installation Checklist; Vendor Pre-Energization Checklist; CXA Pre-Energization Inspection; PEI/Clean-Walk
- DC1-CDU-L2-2000: Steps: EC Installation Checklist (done); MC Installation Checklist (done); CC Installation Checklist (done); GC Installation Checklist (done); Vendor Pre-Energization Checklist (done); CXA Pre-Energization Inspection; PEI/Clean-Walk
- DC1-CDU-L2-2010: Steps: EC Installation Checklist (done); MC Installation Checklist (done); CC Installation Checklist (done); GC Installation Checklist (done); Vendor Pre-Energization Checklist (done); CXA Pre-Energization Inspection; PEI/Clean-Walk
- DC1-CDU-L2-2020: Steps: EC Installation Checklist (done); MC Installation Checklist (done); CC Installation Checklist (done); Vendor Pre-Energization Checklist (done); GC Installation Checklist (done); CXA Pre-Energization Inspection; PEI/Clean-Walk
- DC1-CDU-L2-2030: Steps: EC Installation Checklist (done); MC Installation Checklist (done); CC Installation Checklist (done); Vendor Pre-Energization Checklist (done); GC Installation Checklist (done); CXA Pre-Energization Inspection; PEI/Clean-Walk
- DC1-CDU-L2-2040: Steps: EC Installation Checklist (done); MC Installation Checklist (done); CC Installation Checklist (done); Vendor Pre-Energization Checklist (done); GC Installation Checklist (done); CXA Pre-Energization Inspection; PEI/Clean-Walk
- DC1-CDU-L2-2050: Steps: EC Installation Checklist (done); MC Installation Checklist (done); CC Installation Checklist (done); Vendor Pre-Energization Checklist (done); GC Installation Checklist (done); CXA Pre-Energization Inspection; PEI/Clean-Walk
- DC1-CHLR-L2-Cx-2000: Steps: EC Installation Checklist (done); MC Installation Checklist (done); CC Installation Checklist (done); Vendor Pre-Energization Checklist (done); CXA Pre-Energization Inspection (done); PEI/Clean-Walk (done)
- DC1-CHLR-L2-Cx-2010: Steps: EC Installation Checklist (done); MC Installation Checklist (done); CC Installation Checklist (done); Vendor Pre-Energization Checklist (done); CXA Pre-Energization Inspection (done); PEI/Clean-Walk (done)
- DC1-CHLR-L2-Cx-2020: Steps: EC Installation Checklist (done); MC Installation Checklist (done); CC Installation Checklist (done); Vendor Pre-Energization Checklist (done); CXA Pre-Energization Inspection (done); PEI/Clean-Walk (done)
- DC1-CHLR-L2-Cx-2030: Steps: EC Installation Checklist (done); MC Installation Checklist (done); CC Installation Checklist (done); Vendor Pre-Energization Checklist (done); CXA Pre-Energization Inspection (done); PEI/Clean-Walk (done)
- DC1-CHLR-L2-Cx-2040: Steps: EC Installation Checklist (done); MC Installation Checklist (done); CC Installation Checklist (done); Vendor Pre-Energization Checklist (done); CXA Pre-Energization Inspection (done); PEI/Clean-Walk (done)
- DC1-CHLR-L2-Cx-2050: Steps: EC Installation Checklist (done); MC Installation Checklist (done); CC Installation Checklist (done); Vendor Pre-Energization Checklist (done); CXA Pre-Energization Inspection (done); PEI/Clean-Walk (done)
- DC1-CHLR-L2-Cx-2060: Steps: EC Installation Checklist (done); MC Installation Checklist (done); CC Installation Checklist (done); Vendor Pre-Energization Checklist (done); CXA Pre-Energization Inspection (done); PEI/Clean-Walk (done)

| ID | WBS | Activity | Duration | Start | Finish | Predecessors | Complete | Planned start | Planned finish | Vendor Responsible Party | Layton Discipline | Location | CX Level | Equipment |
| --- | --- | --- | --- | --- | --- | --- | --- | --- | --- | --- | --- | --- | --- | --- |
|  | 10 | **DC1-DH1100 CHWP Cx L2** |  | 2026-03-12 | 2026-03-25 |  |  |  |  |  |  |  |  |  |
| DC1-CHWP-L2-Cx-2000 |  | DH1100 CHWP-1RT40-A11 L2 Checklist | 1d | 2026-03-12 A | 2026-03-25 A | QTS-18951 FF, DC1-COMM-1020 SS | 100% | 2026-03-12 | 2026-03-12 | LAY | Commissioning | DH1100 | L2 | CHWP |
| DC1-CHWP-L2-Cx-2010 |  | DH1100 CHWP-1RT40-B11 L2 Checklist | 1d | 2026-03-12 A | 2026-03-25 A | QTS-18951 FF, DC1-COMM-1020 SS | 100% | 2026-03-12 | 2026-03-12 | LAY | Commissioning | DH1100 | L2 | CHWP |
| DC1-CHWP-L2-Cx-2020 |  | DH1100 CHWP-1RT40-C11 L2 Checklist | 1d | 2026-03-12 A | 2026-03-25 A | QTS-18951 FF, DC1-COMM-1020 SS | 100% | 2026-03-12 | 2026-03-12 | LAY | Commissioning | DH1100 | L2 | CHWP |
| DC1-CHWP-L2-Cx-2030 |  | DH1100 CHWP-1RT40-D11 L2 Checklist | 1d | 2026-03-13 A | 2026-03-25 A | QTS-43731 FF, DC1-COMM-1020 SS | 100% | 2026-03-13 | 2026-03-13 | LAY | Commissioning | DH1100 | L2 | CHWP |
| DC1-CHWP-L2-Cx-2040 |  | DH1100 CHWP-1RT40-E11 L2 Checklist | 1d | 2026-03-13 A | 2026-03-25 A | QTS-43731 FF, DC1-COMM-1020 SS | 100% | 2026-03-13 | 2026-03-13 | LAY | Commissioning | DH1100 | L2 | CHWP |
| DC1-CHWP-L2-Cx-2050 |  | DH1100 CHWP-1RT40-F11 L2 Checklist | 1d | 2026-03-13 A | 2026-03-25 A | QTS-43731 FF, DC1-COMM-1020 SS | 100% | 2026-03-13 | 2026-03-13 | LAY | Commissioning | DH1100 | L2 | CHWP |
| DC1-CHWP-L2-Cx-2060 |  | DH1100 CHWP-1RT40-R11 L2 Checklist | 1d | 2026-03-13 A | 2026-03-25 A | QTS-18951 FF, DC1-COMM-1020 SS | 100% | 2026-03-13 | 2026-03-13 | LAY | Commissioning | DH1100 | L2 | CHWP |
|  | 11 | **DC1-DH1100 CRAH/DOAS Cx L2** |  | 2026-03-03 | 2026-04-21 |  |  |  |  |  |  |  |  |  |
| DC1-DOAS-L2-2000 |  | DH1100 DOAS-RT-01 L2 Checklist | 3d | 2026-03-03 A | 2026-04-21 A | QTS-100420 FF, QTS-46531 FF, DC1-COMM-1020 SS | 100% | 2026-03-03 | 2026-03-05 | TAS | Commissioning | DH1100 | L2 | DOAS |
| DC1-DOAS-L2-2010 |  | DH1100 DOAS-RT-02 L2 Checklist | 3d | 2026-03-03 A | 2026-04-21 A | QTS-100420 FF, QTS-46531 FF, DC1-COMM-1020 SS | 100% | 2026-03-03 | 2026-03-05 | TAS | Commissioning | DH1100 | L2 | DOAS |
| DC1-CRAH-L2-2020 |  | DH1100 CRAH-DH-03 L2 Checklist | 3d | 2026-03-25 A | 2026-04-07 A | QTS-15441, QTS-46521 | 100% | 2026-03-25 | 2026-03-27 | UMAS | Commissioning | DH1100 | L2 | DH CRAH |
| DC1-CRAH-L2-2130 |  | DH1100 CRAH-DH-14 L2 Checklist | 3d | 2026-03-25 A | 2026-04-07 A | QTS-15441, QTS-46521 | 100% | 2026-03-25 | 2026-03-27 | UMAS | Commissioning | DH1100 | L2 | DH CRAH |
| DC1-CRAH-L2-2140 |  | DH1100 CRAH-DH-15 L2 Checklist | 3d | 2026-03-25 A | 2026-04-07 A | QTS-16231, QTS-46521 | 100% | 2026-03-25 | 2026-03-27 | UMAS | Commissioning | DH1100 | L2 | DH CRAH |
| DC1-CRAH-L2-2200 |  | DH1100 CRAH-DH-21 L2 Checklist | 3d | 2026-03-25 A | 2026-04-07 A | QTS-16231, QTS-46521 | 100% | 2026-03-25 | 2026-03-27 | UMAS | Commissioning | DH1100 | L2 | DH CRAH |
| DC1-CRAH-L2-2000 |  | DH1100 CRAH-DH-01 L2 Checklist | 3d | 2026-04-07 A | 2026-04-07 A | QTS-46521, QTS-15441 | 100% | 2026-04-15 | 2026-04-17 | UMAS | Commissioning | DH1100 | L2 | DH CRAH |
| DC1-CRAH-L2-2010 |  | DH1100 CRAH-DH-02 L2 Checklist | 3d | 2026-04-07 A | 2026-04-07 A | QTS-15441, QTS-46521, DC1-COMM-1020 SS | 100% | 2026-04-15 | 2026-04-17 | UMAS | Commissioning | DH1100 | L2 | DH CRAH |
| DC1-CRAH-L2-2030 |  | DH1100 CRAH-DH-04 L2 Checklist | 3d | 2026-04-07 A | 2026-04-07 A | QTS-15441, QTS-46521 | 100% | 2026-04-15 | 2026-04-17 | UMAS | Commissioning | DH1100 | L2 | DH CRAH |
| DC1-CRAH-L2-2040 |  | DH1100 CRAH-DH-05 L2 Checklist | 3d | 2026-04-07 A | 2026-04-07 A | QTS-15441, QTS-46521 | 100% | 2026-04-15 | 2026-04-17 | UMAS | Commissioning | DH1100 | L2 | DH CRAH |
| DC1-CRAH-L2-2050 |  | DH1100 CRAH-DH-06 L2 Checklist | 3d | 2026-04-07 A | 2026-04-07 A | QTS-15441, QTS-46521 | 100% | 2026-04-15 | 2026-04-17 | UMAS | Commissioning | DH1100 | L2 | DH CRAH |
| DC1-CRAH-L2-2060 |  | DH1100 CRAH-DH-07 L2 Checklist | 3d | 2026-04-07 A | 2026-04-07 A | QTS-15441, QTS-46521 | 100% | 2026-04-15 | 2026-04-17 | UMAS | Commissioning | DH1100 | L2 | DH CRAH |
| DC1-CRAH-L2-2070 |  | DH1100 CRAH-DH-08 L2 Checklist | 3d | 2026-04-07 A | 2026-04-07 A | QTS-15441, QTS-46521 | 100% | 2026-04-15 | 2026-04-17 | UMAS | Commissioning | DH1100 | L2 | DH CRAH |
| DC1-CRAH-L2-2080 |  | DH1100 CRAH-DH-09 L2 Checklist | 3d | 2026-04-07 A | 2026-04-07 A | QTS-15441, QTS-46521 | 100% | 2026-04-15 | 2026-04-17 | UMAS | Commissioning | DH1100 | L2 | DH CRAH |
| DC1-CRAH-L2-2090 |  | DH1100 CRAH-DH-10 L2 Checklist | 3d | 2026-04-07 A | 2026-04-07 A | QTS-15441, QTS-46521 | 100% | 2026-04-15 | 2026-04-17 | UMAS | Commissioning | DH1100 | L2 | DH CRAH |
| DC1-CRAH-L2-2100 |  | DH1100 CRAH-DH-11 L2 Checklist | 3d | 2026-04-07 A | 2026-04-07 A | QTS-15441, QTS-46521 | 100% | 2026-04-15 | 2026-04-17 | UMAS | Commissioning | DH1100 | L2 | DH CRAH |
| DC1-CRAH-L2-2110 |  | DH1100 CRAH-DH-12 L2 Checklist | 3d | 2026-04-07 A | 2026-04-07 A | QTS-15441, QTS-46521 | 100% | 2026-04-15 | 2026-04-17 | UMAS | Commissioning | DH1100 | L2 | DH CRAH |
| DC1-CRAH-L2-2120 |  | DH1100 CRAH-DH-13 L2 Checklist | 3d | 2026-04-07 A | 2026-04-07 A | QTS-15441, QTS-46521 | 100% | 2026-04-15 | 2026-04-17 | UMAS | Commissioning | DH1100 | L2 | DH CRAH |
| DC1-CRAH-L2-2150 |  | DH1100 CRAH-DH-16 L2 Checklist | 3d | 2026-04-07 A | 2026-04-07 A | QTS-16231, QTS-46521 | 100% | 2026-04-15 | 2026-04-17 | UMAS | Commissioning | DH1100 | L2 | DH CRAH |
| DC1-CRAH-L2-2160 |  | DH1100 CRAH-DH-17 L2 Checklist | 3d | 2026-04-07 A | 2026-04-07 A | QTS-16231, QTS-46521 | 100% | 2026-04-15 | 2026-04-17 | UMAS | Commissioning | DH1100 | L2 | DH CRAH |
| DC1-CRAH-L2-2170 |  | DH1100 CRAH-DH-18 L2 Checklist | 3d | 2026-04-07 A | 2026-04-07 A | QTS-16231, QTS-46521 | 100% | 2026-04-15 | 2026-04-17 | UMAS | Commissioning | DH1100 | L2 | DH CRAH |
| DC1-CRAH-L2-2180 |  | DH1100 CRAH-DH-19 L2 Checklist | 3d | 2026-04-07 A | 2026-04-07 A | QTS-16231, QTS-46521 | 100% | 2026-04-15 | 2026-04-17 | UMAS | Commissioning | DH1100 | L2 | DH CRAH |
| DC1-CRAH-L2-2190 |  | DH1100 CRAH-DH-20 L2 Checklist | 3d | 2026-04-07 A | 2026-04-07 A | QTS-16231, QTS-46521 | 100% | 2026-04-15 | 2026-04-17 | UMAS | Commissioning | DH1100 | L2 | DH CRAH |
| DC1-CRAH-L2-2210 |  | DH1100 CRAH-DH-22 L2 Checklist | 3d | 2026-04-07 A | 2026-04-07 A | QTS-16231, QTS-46521 | 100% | 2026-04-15 | 2026-04-17 | UMAS | Commissioning | DH1100 | L2 | DH CRAH |
| DC1-CRAH-L2-2220 |  | DH1100 CRAH-DH-23 L2 Checklist | 3d | 2026-04-07 A | 2026-04-07 A | QTS-16231, QTS-46521 | 100% | 2026-04-15 | 2026-04-17 | UMAS | Commissioning | DH1100 | L2 | DH CRAH |
| DC1-CRAH-L2-2230 |  | DH1100 CRAH-DH-24 L2 Checklist | 3d | 2026-04-07 A | 2026-04-07 A | QTS-16231, QTS-46521 | 100% | 2026-04-15 | 2026-04-17 | UMAS | Commissioning | DH1100 | L2 | DH CRAH |
| DC1-CRAH-L2-2240 |  | DH1100 CRAH-DH-25 L2 Checklist | 3d | 2026-04-07 A | 2026-04-07 A | QTS-16231, QTS-46521 | 100% | 2026-04-15 | 2026-04-17 | UMAS | Commissioning | DH1100 | L2 | DH CRAH |
| DC1-CRAH-L2-2250 |  | DH1100 CRAH-DH-26 L2 Checklist | 3d | 2026-04-07 A | 2026-04-07 A | QTS-16231, QTS-46521 | 100% | 2026-04-15 | 2026-04-17 | UMAS | Commissioning | DH1100 | L2 | DH CRAH |
| DC1-CRAH-L2-2260 |  | DH1100 CRAH-DH-27 L2 Checklist | 3d | 2026-04-07 A | 2026-04-07 A | QTS-16231, QTS-46521 | 100% | 2026-04-15 | 2026-04-17 | UMAS | Commissioning | DH1100 | L2 | DH CRAH |
| DC1-CRAH-L2-2270 |  | DH1100 CRAH-DH-28 L2 Checklist | 3d | 2026-04-07 A | 2026-04-07 A | QTS-16231, QTS-46521 | 100% | 2026-04-15 | 2026-04-17 | UMAS | Commissioning | DH1100 | L2 | DH CRAH |
| DC1-CRAH-L2-2280 |  | DH1100 CRAH-EG1102-01 L2 Checklist | 3d | 2026-04-07 A | 2026-04-07 A | QTS-46511, QTS-46521 | 100% | 2026-04-15 | 2026-04-17 | VER | Commissioning | DH1100 | L2 | EG CRAH |
| DC1-CRAH-L2-2290 |  | DH1100 CRAH-EG1102-02 L2 Checklist | 3d | 2026-04-07 A | 2026-04-07 A | QTS-46511, QTS-46521 | 100% | 2026-04-15 | 2026-04-17 | VER | Commissioning | DH1100 | L2 | EG CRAH |
| DC1-CRAH-L2-2300 |  | DH1100 CRAH-EG1102-03 L2 Checklist | 3d | 2026-04-07 A | 2026-04-07 A | QTS-46511, QTS-46521 | 100% | 2026-04-15 | 2026-04-17 | VER | Commissioning | DH1100 | L2 | EG CRAH |
| DC1-CRAH-L2-2310 |  | DH1100 CRAH-EG1102-04 L2 Checklist | 3d | 2026-04-07 A | 2026-04-07 A | QTS-46511, QTS-46521 | 100% | 2026-04-15 | 2026-04-17 | VER | Commissioning | DH1100 | L2 | EG CRAH |

Notes:
- DC1-CHWP-L2-Cx-2000: Steps: EC Installation Checklist (done); MC Installation Checklist (done); CC Installation Checklist (done); Vendor Pre-Energization Checklist (done); CXA Pre-Energization Inspection (done); PEI/Clean-Walk (done)
- DC1-CHWP-L2-Cx-2010: Steps: EC Installation Checklist (done); MC Installation Checklist (done); CC Installation Checklist (done); Vendor Pre-Energization Checklist (done); CXA Pre-Energization Inspection (done); PEI/Clean-Walk (done)
- DC1-CHWP-L2-Cx-2020: Steps: EC Installation Checklist (done); MC Installation Checklist (done); CC Installation Checklist (done); Vendor Pre-Energization Checklist (done); CXA Pre-Energization Inspection (done); PEI/Clean-Walk (done)
- DC1-CHWP-L2-Cx-2030: Steps: EC Installation Checklist (done); MC Installation Checklist (done); CC Installation Checklist (done); Vendor Pre-Energization Checklist (done); CXA Pre-Energization Inspection (done); PEI/Clean-Walk (done)
- DC1-CHWP-L2-Cx-2040: Steps: EC Installation Checklist (done); MC Installation Checklist (done); CC Installation Checklist (done); Vendor Pre-Energization Checklist (done); CXA Pre-Energization Inspection (done); PEI/Clean-Walk (done)
- DC1-CHWP-L2-Cx-2050: Steps: EC Installation Checklist (done); MC Installation Checklist (done); CC Installation Checklist (done); Vendor Pre-Energization Checklist (done); CXA Pre-Energization Inspection (done); PEI/Clean-Walk (done)
- DC1-CHWP-L2-Cx-2060: Steps: EC Installation Checklist (done); MC Installation Checklist (done); CC Installation Checklist (done); Vendor Pre-Energization Checklist (done); CXA Pre-Energization Inspection (done); PEI/Clean-Walk (done)
- DC1-DOAS-L2-2000: Steps: EC Installation Checklist; MC Installation Checklist (done); CC Installation Checklist; Vendor Pre-Energization Checklist (done); CXA Pre-Energization Inspection; PEI/Clean-Walk
- DC1-DOAS-L2-2010: Steps: EC Installation Checklist; MC Installation Checklist (done); CC Installation Checklist; Vendor Pre-Energization Checklist (done); CXA Pre-Energization Inspection; PEI/Clean-Walk
- DC1-CRAH-L2-2020: Steps: EC Installation Checklist; MC Installation Checklist; CC Installation Checklist; Vendor Pre-Energization Checklist (done); CXA Pre-Energization Inspection; PEI/Clean-Walk
- DC1-CRAH-L2-2130: Steps: EC Installation Checklist; MC Installation Checklist; CC Installation Checklist; Vendor Pre-Energization Checklist (done); CXA Pre-Energization Inspection; PEI/Clean-Walk
- DC1-CRAH-L2-2140: Steps: EC Installation Checklist; MC Installation Checklist; CC Installation Checklist; Vendor Pre-Energization Checklist (done); CXA Pre-Energization Inspection; PEI/Clean-Walk
- DC1-CRAH-L2-2200: Steps: EC Installation Checklist; MC Installation Checklist; CC Installation Checklist; Vendor Pre-Energization Checklist (done); CXA Pre-Energization Inspection; PEI/Clean-Walk
- DC1-CRAH-L2-2000: Steps: EC Installation Checklist (done); MC Installation Checklist; CC Installation Checklist; Vendor Pre-Energization Checklist; CXA Pre-Energization Inspection; PEI/Clean-Walk
- DC1-CRAH-L2-2010: Steps: EC Installation Checklist; MC Installation Checklist; CC Installation Checklist; Vendor Pre-Energization Checklist; CXA Pre-Energization Inspection; PEI/Clean-Walk
- DC1-CRAH-L2-2030: Steps: EC Installation Checklist; MC Installation Checklist; CC Installation Checklist; Vendor Pre-Energization Checklist; CXA Pre-Energization Inspection; PEI/Clean-Walk
- DC1-CRAH-L2-2040: Steps: EC Installation Checklist; MC Installation Checklist; CC Installation Checklist; Vendor Pre-Energization Checklist; CXA Pre-Energization Inspection; PEI/Clean-Walk
- DC1-CRAH-L2-2050: Steps: EC Installation Checklist; MC Installation Checklist; CC Installation Checklist; Vendor Pre-Energization Checklist; CXA Pre-Energization Inspection; PEI/Clean-Walk
- DC1-CRAH-L2-2060: Steps: EC Installation Checklist; MC Installation Checklist; CC Installation Checklist; Vendor Pre-Energization Checklist; CXA Pre-Energization Inspection; PEI/Clean-Walk
- DC1-CRAH-L2-2070: Steps: EC Installation Checklist; MC Installation Checklist; CC Installation Checklist; Vendor Pre-Energization Checklist; CXA Pre-Energization Inspection; PEI/Clean-Walk
- DC1-CRAH-L2-2080: Steps: EC Installation Checklist; MC Installation Checklist; CC Installation Checklist; Vendor Pre-Energization Checklist; CXA Pre-Energization Inspection; PEI/Clean-Walk
- DC1-CRAH-L2-2090: Steps: EC Installation Checklist; MC Installation Checklist; CC Installation Checklist; Vendor Pre-Energization Checklist; CXA Pre-Energization Inspection; PEI/Clean-Walk
- DC1-CRAH-L2-2100: Steps: EC Installation Checklist; MC Installation Checklist; CC Installation Checklist; Vendor Pre-Energization Checklist; CXA Pre-Energization Inspection; PEI/Clean-Walk
- DC1-CRAH-L2-2110: Steps: EC Installation Checklist; MC Installation Checklist; CC Installation Checklist; Vendor Pre-Energization Checklist; CXA Pre-Energization Inspection; PEI/Clean-Walk
- DC1-CRAH-L2-2120: Steps: EC Installation Checklist; MC Installation Checklist; CC Installation Checklist; Vendor Pre-Energization Checklist; CXA Pre-Energization Inspection; PEI/Clean-Walk
- DC1-CRAH-L2-2150: Steps: EC Installation Checklist; MC Installation Checklist; CC Installation Checklist; Vendor Pre-Energization Checklist; CXA Pre-Energization Inspection; PEI/Clean-Walk
- DC1-CRAH-L2-2160: Steps: EC Installation Checklist; MC Installation Checklist; CC Installation Checklist; Vendor Pre-Energization Checklist; CXA Pre-Energization Inspection; PEI/Clean-Walk
- DC1-CRAH-L2-2170: Steps: EC Installation Checklist; MC Installation Checklist; CC Installation Checklist; Vendor Pre-Energization Checklist; CXA Pre-Energization Inspection; PEI/Clean-Walk
- DC1-CRAH-L2-2180: Steps: EC Installation Checklist; MC Installation Checklist; CC Installation Checklist; Vendor Pre-Energization Checklist; CXA Pre-Energization Inspection; PEI/Clean-Walk
- DC1-CRAH-L2-2190: Steps: EC Installation Checklist; MC Installation Checklist; CC Installation Checklist; Vendor Pre-Energization Checklist; CXA Pre-Energization Inspection; PEI/Clean-Walk
- DC1-CRAH-L2-2210: Steps: EC Installation Checklist; MC Installation Checklist; CC Installation Checklist; Vendor Pre-Energization Checklist; CXA Pre-Energization Inspection; PEI/Clean-Walk
- DC1-CRAH-L2-2220: Steps: EC Installation Checklist; MC Installation Checklist; CC Installation Checklist; Vendor Pre-Energization Checklist; CXA Pre-Energization Inspection; PEI/Clean-Walk
- DC1-CRAH-L2-2230: Steps: EC Installation Checklist; MC Installation Checklist; CC Installation Checklist; Vendor Pre-Energization Checklist; CXA Pre-Energization Inspection; PEI/Clean-Walk
- DC1-CRAH-L2-2240: Steps: EC Installation Checklist; MC Installation Checklist; CC Installation Checklist; Vendor Pre-Energization Checklist; CXA Pre-Energization Inspection; PEI/Clean-Walk
- DC1-CRAH-L2-2250: Steps: EC Installation Checklist; MC Installation Checklist; CC Installation Checklist; Vendor Pre-Energization Checklist; CXA Pre-Energization Inspection; PEI/Clean-Walk
- DC1-CRAH-L2-2260: Steps: EC Installation Checklist; MC Installation Checklist; CC Installation Checklist; Vendor Pre-Energization Checklist; CXA Pre-Energization Inspection; PEI/Clean-Walk
- DC1-CRAH-L2-2270: Steps: EC Installation Checklist; MC Installation Checklist; CC Installation Checklist; Vendor Pre-Energization Checklist; CXA Pre-Energization Inspection; PEI/Clean-Walk
- DC1-CRAH-L2-2280: Steps: EC Installation Checklist (done); MC Installation Checklist (done); CC Installation Checklist (done); Vendor Pre-Energization Checklist (done); CXA Pre-Energization Inspection (done); PEI/Clean-Walk (done)
- DC1-CRAH-L2-2290: Steps: EC Installation Checklist (done); MC Installation Checklist (done); CC Installation Checklist (done); Vendor Pre-Energization Checklist (done); CXA Pre-Energization Inspection (done); PEI/Clean-Walk (done)
- DC1-CRAH-L2-2300: Steps: EC Installation Checklist (done); MC Installation Checklist (done); CC Installation Checklist (done); Vendor Pre-Energization Checklist (done); CXA Pre-Energization Inspection (done); PEI/Clean-Walk (done)
- DC1-CRAH-L2-2310: Steps: EC Installation Checklist (done); MC Installation Checklist (done); CC Installation Checklist (done); Vendor Pre-Energization Checklist (done); CXA Pre-Energization Inspection (done); PEI/Clean-Walk (done)

| ID | WBS | Activity | Duration | Start | Finish | Predecessors | Complete | Planned start | Planned finish | Vendor Responsible Party | Layton Discipline | Location | CX Level | Equipment | Fragnet | Owner Impact Analysis | Fragnet Responsible Party |
| --- | --- | --- | --- | --- | --- | --- | --- | --- | --- | --- | --- | --- | --- | --- | --- | --- | --- |
|  | 3 | **DC1-DH1100 CDU SCP Cx L2** |  | 2026-07-14 | 2026-07-14 |  |  |  |  |  |  |  |  |  |  |  |  |
| DC1-CRAH-L2-3610 |  | DH1100 CDU SCP L2 Checklist | 3d | 2026-07-14 A | 2026-07-14 A | DC1-CDU-L2-2050 | 100% | 2026-07-23 | 2026-07-27 | VER | Commissioning | DH1100 | L2 | CDU SCP |  |  |  |
|  | 03 | **Data Hall 1100 Cx L3** |  | 2026-03-12 | 2026-07-24 |  |  |  |  |  |  |  |  |  |  |  |  |
|  | 2 | **Fragnet / POD MPZ Equipment Failure** |  | 2026-04-10 | 2026-04-20 |  |  |  |  |  |  |  |  |  |  |  |  |
| DC1-SWD-L3-CX-3050 |  | Fragnet / B11 Pod MPZ Equipment Failure | 1d | 2026-04-10 A | 2026-04-10 A | QTS-1371 SS | 100% | 2026-03-13 | 2026-03-13 | SIE | Commissioning | DH1100 | L3 | SWD | Fragnet | Y | Siemens |
| DC1-SWD-L3-CX-3060 |  | Fragnet / Equipment Failure Investigation - L3s Impacted for Pod B11, C11, D11, E11, & F11 | 5d | 2026-04-13 A | 2026-04-20 A | DC1-SWD-L3-CX-3050 | 100% | 2026-03-13 | 2026-03-19 | SIE | Commissioning | DH1100 | L3 | SWD | Fragnet | Y | Siemens |
|  | 01 | **DC1-DH1100 Generators Cx L3** |  | 2026-03-23 | 2026-07-06 |  |  |  |  |  |  |  |  |  |  |  |  |
|  | 01 | **DC1-DH1100-GEN-A11 Cx L3** |  | 2026-03-23 | 2026-07-06 |  |  |  |  |  |  |  |  |  |  |  |  |
| DC1-GEN-L3-CX-2000 |  | DC1-GEN-A11 FTE | 1d | 2026-03-23 A | 2026-03-23 A | DC1-SWD-L3-CX-2000, DC1-GEN-L2-2000 | 100% |  |  | ROS | Commissioning | DH1100 | L3 | GEN |  |  |  |
| DC1-GEN-L3-CX-2010 |  | DC1-GEN-A11 L3 Startup | 2d | 2026-04-13 A | 2026-07-06 A | DC1-GEN-L3-CX-2000 | 100% | 2026-04-13 | 2026-04-14 | HLT | Commissioning | DH1100 | L3 | GEN |  |  |  |
| DC1-GEN-L3-CX-2020 |  | DC1-GEN-A11 BMS/EPMS Programming | 1d | 2026-07-06 A | 2026-07-06 A | DC1-GEN-L3-CX-2010, QTS-1007140 | 100% | 2026-07-16 | 2026-07-16 | PRM | Commissioning | DH1100 | L3 | GEN |  |  |  |
|  | 02 | **DC1-DH1100-GEN-B11 Cx L3** |  | 2026-03-23 | 2026-07-06 |  |  |  |  |  |  |  |  |  |  |  |  |
| DC1-GEN-L3-CX-2030 |  | DC1-GEN-B11 FTE | 1d | 2026-03-23 A | 2026-03-23 A | DC1-SWD-L3-CX-2030, DC1-GEN-L2-2010 | 100% |  |  | ROS | Commissioning | DH1100 | L3 | GEN |  |  |  |
| DC1-GEN-L3-CX-2040 |  | DC1-GEN-B11 L3 Startup | 2d | 2026-04-13 A | 2026-07-06 A | DC1-GEN-L3-CX-2030 | 100% | 2026-04-15 | 2026-04-16 | HLT | Commissioning | DH1100 | L3 | GEN |  |  |  |
| DC1-GEN-L3-CX-2050 |  | DC1-GEN-B11 BMS/EPMS Programming | 1d | 2026-07-06 A | 2026-07-06 A | DC1-GEN-L3-CX-2040, QTS-1007140 | 100% | 2026-07-16 | 2026-07-16 | PRM | Commissioning | DH1100 | L3 | GEN |  |  |  |
|  | 03 | **DC1-DH1100-GEN-C11 Cx L3** |  | 2026-03-23 | 2026-07-06 |  |  |  |  |  |  |  |  |  |  |  |  |
| DC1-GEN-L3-CX-2060 |  | DC1-GEN-C11 FTE | 1d | 2026-03-23 A | 2026-03-23 A | DC1-SWD-L3-CX-2060, DC1-GEN-L2-2020 | 100% |  |  | ROS | Commissioning | DH1100 | L3 | GEN |  |  |  |
| DC1-GEN-L3-CX-2070 |  | DC1-GEN-C11 L3 Startup | 2d | 2026-04-13 A | 2026-07-06 A | DC1-GEN-L3-CX-2060 | 100% | 2026-05-13 | 2026-05-14 | HLT | Commissioning | DH1100 | L3 | GEN |  |  |  |
| DC1-GEN-L3-CX-2080 |  | DC1-GEN-C11 BMS/EPMS Programming | 1d | 2026-07-06 A | 2026-07-06 A | DC1-GEN-L3-CX-2070, QTS-1007140 | 100% | 2026-07-16 | 2026-07-16 | PRM | Commissioning | DH1100 | L3 | GEN |  |  |  |
|  | 04 | **DC1-DH1100-GEN-D11 Cx L3** |  | 2026-03-23 | 2026-07-06 |  |  |  |  |  |  |  |  |  |  |  |  |
| DC1-GEN-L3-CX-2090 |  | DC1-GEN-D11 FTE | 1d | 2026-03-23 A | 2026-03-23 A | DC1-SWD-L3-CX-2090, DC1-GEN-L2-2030 | 100% |  |  | ROS | Commissioning | DH1100 | L3 | GEN |  |  |  |
| DC1-GEN-L3-CX-2100 |  | DC1-GEN-D11 L3 Startup | 2d | 2026-04-13 A | 2026-07-06 A | DC1-GEN-L3-CX-2090 | 100% | 2026-05-13 | 2026-05-14 | HLT | Commissioning | DH1100 | L3 | GEN |  |  |  |
| DC1-GEN-L3-CX-2110 |  | DC1-GEN-D11 BMS/EPMS Programming | 1d | 2026-07-06 A | 2026-07-06 A | DC1-GEN-L3-CX-2100, QTS-1007140 | 100% | 2026-07-16 | 2026-07-16 | PRM | Commissioning | DH1100 | L3 | GEN |  |  |  |
|  | 05 | **DC1-DH1100-GEN-E11 Cx L3** |  | 2026-03-23 | 2026-07-06 |  |  |  |  |  |  |  |  |  |  |  |  |
| DC1-GEN-L3-CX-2120 |  | DC1-GEN-E11 FTE | 1d | 2026-03-23 A | 2026-03-23 A | DC1-SWD-L3-CX-2120, DC1-GEN-L2-2040 | 100% |  |  | ROS | Commissioning | DH1100 | L3 | GEN |  |  |  |
| DC1-GEN-L3-CX-2130 |  | DC1-GEN-E11 L3 Startup | 2d | 2026-04-13 A | 2026-07-06 A | DC1-GEN-L3-CX-2120 | 100% | 2026-05-13 | 2026-05-14 | HLT | Commissioning | DH1100 | L3 | GEN |  |  |  |
| DC1-GEN-L3-CX-2140 |  | DC1-GEN-E11 BMS/EPMS Programming | 1d | 2026-07-06 A | 2026-07-06 A | DC1-GEN-L3-CX-2130, QTS-1007140 | 100% | 2026-07-16 | 2026-07-16 | PRM | Commissioning | DH1100 | L3 | GEN |  |  |  |

Notes:
- DC1-CRAH-L2-3610: Steps: EC Installation Checklist; CC Installation Checklist; Vendor Pre-Energization Checklist; CXA Pre-Energization Inspection; PEI/Clean-Walk
- DC1-SWD-L3-CX-3050: Scheduler Notes: B11 Pod MPZ Equipment Failure / Steps: EC Startup Report; Vendor Startup
- DC1-SWD-L3-CX-3060: Steps: EC Startup Report; Vendor Startup
- DC1-GEN-L3-CX-2010: Steps: EC Startup Report (done); Vendor Startup
- DC1-GEN-L3-CX-2040: Steps: EC Startup Report (done); Vendor Startup
- DC1-GEN-L3-CX-2070: Steps: EC Startup Report (done); Vendor Startup (done)
- DC1-GEN-L3-CX-2100: Steps: EC Startup Report; Vendor Startup (done)
- DC1-GEN-L3-CX-2130: Steps: EC Startup Report (done); Vendor Startup (done)

| ID | WBS | Activity | Duration | Start | Finish | Predecessors | Complete | Planned start | Planned finish | Vendor Responsible Party | Layton Discipline | Location | CX Level | Equipment | Fragnet | Fragnet Responsible Party | Owner Impact Analysis |
| --- | --- | --- | --- | --- | --- | --- | --- | --- | --- | --- | --- | --- | --- | --- | --- | --- | --- |
|  | 06 | **DC1-DH1100-GEN-F11 Cx L3** |  | 2026-03-23 | 2026-07-06 |  |  |  |  |  |  |  |  |  |  |  |  |
| DC1-GEN-L3-CX-2150 |  | DC1-GEN-F11 FTE | 1d | 2026-03-23 A | 2026-03-23 A | DC1-SWD-L3-CX-2150, DC1-GEN-L2-2050 | 100% |  |  | ROS | Commissioning | DH1100 | L3 | GEN |  |  |  |
| DC1-GEN-L3-CX-2160 |  | DC1-GEN-F11 L3 Startup | 2d | 2026-04-13 A | 2026-07-06 A | DC1-GEN-L3-CX-2150 | 100% | 2026-05-13 | 2026-05-14 | HLT | Commissioning | DH1100 | L3 | GEN |  |  |  |
| DC1-GEN-L3-CX-2170 |  | DC1-GEN-F11 BMS/EPMS Programming | 1d | 2026-07-06 A | 2026-07-06 A | DC1-GEN-L3-CX-2160, QTS-1007140 | 100% | 2026-07-16 | 2026-07-16 | PRM | Commissioning | DH1100 | L3 | GEN |  |  |  |
|  | 07 | **DC1-DH1100-GEN-R11 Cx L3** |  | 2026-03-23 | 2026-07-06 |  |  |  |  |  |  |  |  |  |  |  |  |
| DC1-GEN-L3-CX-2180 |  | DC1-GEN-R11 FTE | 1d | 2026-03-23 A | 2026-03-23 A | DC1-SWD-L3-CX-2180, DC1-GEN-L2-2060 | 100% |  |  | ROS | Commissioning | DH1100 | L3 | GEN |  |  |  |
| DC1-GEN-L3-CX-2190 |  | DC1-GEN-R11 L3 Startup | 2d | 2026-04-13 A | 2026-07-06 A | DC1-GEN-L3-CX-2180 | 100% | 2026-05-06 | 2026-05-07 | HLT | Commissioning | DH1100 | L3 | GEN |  |  |  |
| DC1-GEN-L3-CX-2200 |  | DC1-GEN-R11 BMS/EPMS Programming | 1d | 2026-07-06 A | 2026-07-06 A | DC1-GEN-L3-CX-2190, QTS-1007140 | 100% | 2026-07-16 | 2026-07-16 | PRM | Commissioning | DH1100 | L3 | GEN |  |  |  |
|  | 02 | **DC1-DH1100 MV XFMRs Cx L3** |  | 2026-03-12 | 2026-05-29 |  |  |  |  |  |  |  |  |  |  |  |  |
|  | 01 | **DC1-DH1100 MV-XFMR-A11 Cx L3** |  | 2026-03-12 | 2026-05-29 |  |  |  |  |  |  |  |  |  |  |  |  |
| DC1-XFMR-L3-CX-2000 |  | DC1-XFMR-A11 FTE | 1d | 2026-03-12 A | 2026-03-12 A | DC1-XFMR-L2-2000, QTS-1101 | 100% |  |  | ROS | Commissioning | DH1100 | L3 | XFMR |  |  |  |
|  | 3 | **Fragnet / XFMR De-Energization** |  | 2026-05-19 | 2026-05-28 |  |  |  |  |  |  |  |  |  |  |  |  |
| DC1-XFMR-L3-CX-2210 |  | Fragnet / XFMR De-Energization (Testing) | 2d | 2026-05-19 A | 2026-05-28 A | QTS-1371 | 100% | 2026-05-19 | 2026-05-20 | VTC | Commissioning | DH1100 | L3 | XFMR | Fragnet | Virginia Transformer Corporation |  |
|  | 1 | **Fragnet / XFMR A11 Bushing Leaking** |  | 2026-04-17 | 2026-04-20 |  |  |  |  |  |  |  |  |  |  |  |  |
| DC1-XFMR-L3-CX-2300 |  | Fragnet / XFMR A11 Bushings Excess Grease Discovered | 1d | 2026-04-17 A | 2026-04-17 A | DC1-XFMR-L3-CX-2030, DC1-XFMR-L3-CX-2060, DC1-XFMR-L3-CX-2090, DC1-XFMR-L3-CX-2120, DC1-XFMR-L3-CX-2150, DC1-XFMR-L3-CX-2180 | 100% |  |  | VTC | Commissioning | DH1100 | L3 | XFMR | Fragnet | Virginia Transformer Corporation | Y |
| DC1-XFMR-L3-CX-2220 |  | Fragnet / Vendor Contacted and Mobilizing to Site to Evaluate XFMR A11 Issue | 5d | 2026-04-20 A | 2026-04-20 A | DC1-XFMR-L3-CX-2300 | 100% | 2026-04-20 | 2026-04-24 | VTC | Commissioning | DH1100 | L3 | XFMR | Fragnet | Virginia Transformer Corporation | Y |
| DC1-XFMR-L3-CX-2230 |  | DC1-XFMR-A11 FTE R2 | 1d | 2026-04-20 A | 2026-04-20 A | DC1-XFMR-L3-CX-2220 FF, DC1-XFMR-L2-2350 FF | 100% | 2026-04-27 | 2026-04-27 | ROS | Commissioning | DH1100 | L3 | XFMR | Fragnet | Rosendin Electric Inc. |  |
|  | 2 | **Remaining Scope** |  | 2026-05-06 | 2026-05-29 |  |  |  |  |  |  |  |  |  |  |  |  |
| DC1-XFMR-L3-CX-2010 |  | DC1-XFMR-A11 L3 Startup | 2d | 2026-05-06 A | 2026-05-18 A | DC1-XFMR-L3-CX-2000, DC1-XFMR-L3-CX-2230 | 100% | 2026-05-06 | 2026-05-07 | VTC | Commissioning | DH1100 | L3 | XFMR |  |  |  |
| DC1-XFMR-L3-CX-2020 |  | DC1-XFMR-A11 BMS/EPMS Programming | 2d | 2026-05-19 A | 2026-05-29 A | DC1-XFMR-L3-CX-2010, QTS-1007140, DC1-XFMR-L3-CX-2210 FF | 100% | 2026-05-19 | 2026-05-20 | PRM | Commissioning | DH1100 | L3 | XFMR |  |  |  |
|  | 02 | **DC1-DH1100 MV-XFMR-B11 Cx L3** |  | 2026-03-12 | 2026-05-29 |  |  |  |  |  |  |  |  |  |  |  |  |
| DC1-XFMR-L3-CX-2030 |  | DC1-XFMR-B11 FTE | 1d | 2026-03-12 A | 2026-03-12 A | DC1-XFMR-L3-CX-2000 SS, DC1-XFMR-L2-2010 SS, QTS-1101 | 100% |  |  | ROS | Commissioning | DH1100 | L3 | XFMR |  |  |  |
| DC1-XFMR-L3-CX-2240 |  | DC1-XFMR-B11 FTE - R2 | 1d | 2026-04-20 A | 2026-04-20 A | DC1-XFMR-L2-2360 FF | 100% |  |  | ROS | Commissioning | DH1100 | L3 | XFMR |  |  |  |
| DC1-XFMR-L3-CX-2040 |  | DC1-XFMR-B11 L3 Startup | 2d | 2026-05-06 A | 2026-05-18 A | DC1-XFMR-L3-CX-2030, DC1-XFMR-L3-CX-2240 | 100% | 2026-05-06 | 2026-05-07 | VTC | Commissioning | DH1100 | L3 | XFMR |  |  |  |
| DC1-XFMR-L3-CX-2050 |  | DC1-XFMR-B11 BMS/EPMS Programming | 2d | 2026-05-19 A | 2026-05-29 A | DC1-XFMR-L3-CX-2040, QTS-1007140 | 100% | 2026-05-22 | 2026-05-26 | PRM | Commissioning | DH1100 | L3 | XFMR |  |  |  |

Notes:
- DC1-GEN-L3-CX-2160: Steps: EC Startup Report (done); Vendor Startup
- DC1-GEN-L3-CX-2190: Steps: EC Startup Report (done); Vendor Startup (done)
- DC1-XFMR-L3-CX-2210: Scheduler Notes: Transformer De-Energization - Bushings Excess Grease / Discovered / Steps: EC Startup Report; Vendor Startup
- DC1-XFMR-L3-CX-2300: Scheduler Notes: XFMR A11 Bushings Excess Grease Discovered / Steps: EC Startup Report; Vendor Startup
- DC1-XFMR-L3-CX-2220: Steps: EC Startup Report; Vendor Startup
- DC1-XFMR-L3-CX-2010: Steps: EC Startup Report; Vendor Startup
- DC1-XFMR-L3-CX-2040: Steps: EC Startup Report; Vendor Startup

| ID | WBS | Activity | Duration | Start | Finish | Predecessors | Complete | Planned start | Planned finish | Vendor Responsible Party | Layton Discipline | Location | CX Level | Equipment |
| --- | --- | --- | --- | --- | --- | --- | --- | --- | --- | --- | --- | --- | --- | --- |
|  | 03 | **DC1-DH1100 MV-XFMR-C11 Cx L3** |  | 2026-03-12 | 2026-05-29 |  |  |  |  |  |  |  |  |  |
| DC1-XFMR-L3-CX-2060 |  | DC1-XFMR-C11 FTE | 1d | 2026-03-12 A | 2026-03-12 A | DC1-XFMR-L3-CX-2030 SS, DC1-XFMR-L2-2020 SS, QTS-1101 | 100% |  |  | ROS | Commissioning | DH1100 | L3 | XFMR |
| DC1-XFMR-L3-CX-2250 |  | DC1-XFMR-C11 FTE - R2 | 1d | 2026-04-20 A | 2026-04-20 A | DC1-XFMR-L3-CX-2240 SS, DC1-XFMR-L2-2370 FF | 100% |  |  | ROS | Commissioning | DH1100 | L3 | XFMR |
| DC1-XFMR-L3-CX-2070 |  | DC1-XFMR-C11 L3 Startup | 2d | 2026-05-06 A | 2026-05-18 A | DC1-XFMR-L3-CX-2060, DC1-XFMR-L3-CX-2250 | 100% | 2026-05-06 | 2026-05-07 | VTC | Commissioning | DH1100 | L3 | XFMR |
| DC1-XFMR-L3-CX-2080 |  | DC1-XFMR-C11 BMS/EPMS Programming | 2d | 2026-05-19 A | 2026-05-29 A | DC1-XFMR-L3-CX-2070, QTS-1007140 | 100% | 2026-05-22 | 2026-05-26 | PRM | Commissioning | DH1100 | L3 | XFMR |
|  | 04 | **DC1-DH1100 MV-XFMR-D11 Cx L3** |  | 2026-03-12 | 2026-05-29 |  |  |  |  |  |  |  |  |  |
| DC1-XFMR-L3-CX-2090 |  | DC1-XFMR-D11 FTE | 1d | 2026-03-12 A | 2026-03-12 A | DC1-XFMR-L3-CX-2060 SS, DC1-XFMR-L2-2030 SS, QTS-1101 | 100% |  |  | ROS | Commissioning | DH1100 | L3 | XFMR |
| DC1-XFMR-L3-CX-2260 |  | DC1-XFMR-D11 FTE - R2 | 1d | 2026-04-20 A | 2026-04-20 A | DC1-XFMR-L3-CX-2250 SS, DC1-XFMR-L2-2380 FF | 100% |  |  | ROS | Commissioning | DH1100 | L3 | XFMR |
| DC1-XFMR-L3-CX-2100 |  | DC1-XFMR-D11 L3 Startup | 2d | 2026-05-06 A | 2026-05-18 A | DC1-XFMR-L3-CX-2090, DC1-XFMR-L3-CX-2260 | 100% | 2026-05-06 | 2026-05-07 | VTC | Commissioning | DH1100 | L3 | XFMR |
| DC1-XFMR-L3-CX-2110 |  | DC1-XFMR-D11 BMS/EPMS Programming | 2d | 2026-05-19 A | 2026-05-29 A | DC1-XFMR-L3-CX-2100, QTS-1007140 | 100% | 2026-05-22 | 2026-05-26 | PRM | Commissioning | DH1100 | L3 | XFMR |
|  | 05 | **DC1-DH1100 MV-XFMR-E11 Cx L3** |  | 2026-03-12 | 2026-05-29 |  |  |  |  |  |  |  |  |  |
| DC1-XFMR-L3-CX-2120 |  | DC1-XFMR-E11 FTE | 1d | 2026-03-12 A | 2026-03-12 A | DC1-XFMR-L3-CX-2090 SS, DC1-XFMR-L2-2040 SS, QTS-1101 | 100% |  |  | ROS | Commissioning | DH1100 | L3 | XFMR |
| DC1-XFMR-L3-CX-2270 |  | DC1-XFMR-E11 FTE - R2 | 1d | 2026-04-20 A | 2026-04-20 A | DC1-XFMR-L3-CX-2260 SS, DC1-XFMR-L2-2390 FF | 100% |  |  | ROS | Commissioning | DH1100 | L3 | XFMR |
| DC1-XFMR-L3-CX-2130 |  | DC1-XFMR-E11 L3 Startup | 2d | 2026-05-06 A | 2026-05-18 A | DC1-XFMR-L3-CX-2120, DC1-XFMR-L3-CX-2270 | 100% | 2026-05-06 | 2026-05-07 | VTC | Commissioning | DH1100 | L3 | XFMR |
| DC1-XFMR-L3-CX-2140 |  | DC1-XFMR-E11 BMS/EPMS Programming | 2d | 2026-05-19 A | 2026-05-29 A | DC1-XFMR-L3-CX-2130, QTS-1007140 | 100% | 2026-05-22 | 2026-05-26 | PRM | Commissioning | DH1100 | L3 | XFMR |
|  | 06 | **DC1-DH1100 MV-XFMR-F11 Cx L3** |  | 2026-03-12 | 2026-05-29 |  |  |  |  |  |  |  |  |  |
| DC1-XFMR-L3-CX-2150 |  | DC1-XFMR-F11 FTE | 1d | 2026-03-12 A | 2026-03-12 A | DC1-XFMR-L3-CX-2120 SS, DC1-XFMR-L2-2050 SS, QTS-1101 | 100% |  |  | ROS | Commissioning | DH1100 | L3 | XFMR |
| DC1-XFMR-L3-CX-2280 |  | DC1-XFMR-F11 FTE - R2 | 1d | 2026-04-20 A | 2026-04-20 A | DC1-XFMR-L3-CX-2270 SS, DC1-XFMR-L2-2400 FF | 100% |  |  | ROS | Commissioning | DH1100 | L3 | XFMR |
| DC1-XFMR-L3-CX-2160 |  | DC1-XFMR-F11 L3 Startup | 2d | 2026-05-06 A | 2026-05-18 A | DC1-XFMR-L3-CX-2150, DC1-XFMR-L3-CX-2280 | 100% | 2026-05-06 | 2026-05-07 | VTC | Commissioning | DH1100 | L3 | XFMR |
| DC1-XFMR-L3-CX-2170 |  | DC1-XFMR-F11 BMS/EPMS Programming | 2d | 2026-05-19 A | 2026-05-29 A | DC1-XFMR-L3-CX-2160, QTS-1007140 | 100% | 2026-05-22 | 2026-05-26 | PRM | Commissioning | DH1100 | L3 | XFMR |
|  | 07 | **DC1-DH1100 MV-XFMR-R11 Cx L3** |  | 2026-03-12 | 2026-05-29 |  |  |  |  |  |  |  |  |  |
| DC1-XFMR-L3-CX-2180 |  | DC1-XFMR-R11 FTE | 1d | 2026-03-12 A | 2026-03-12 A | DC1-XFMR-L3-CX-2150 SS, DC1-XFMR-L2-2060, QTS-1101 | 100% |  |  | ROS | Commissioning | DH1100 | L3 | XFMR |
| DC1-XFMR-L3-CX-2290 |  | DC1-XFMR-R11 FTE - R2 | 1d | 2026-04-20 A | 2026-04-20 A | DC1-XFMR-L3-CX-2280 SS, DC1-XFMR-L2-2410 FF | 100% |  |  | ROS | Commissioning | DH1100 | L3 | XFMR |
| DC1-XFMR-L3-CX-2190 |  | DC1-XFMR-R11 L3 Startup | 2d | 2026-05-08 A | 2026-05-18 A | DC1-XFMR-L3-CX-2180, DC1-XFMR-L3-CX-2290 | 100% | 2026-05-08 | 2026-05-11 | VTC | Commissioning | DH1100 | L3 | XFMR |
| DC1-XFMR-L3-CX-2200 |  | DC1-XFMR-R11 BMS/EPMS Programming | 2d | 2026-05-19 A | 2026-05-29 A | DC1-XFMR-L3-CX-2190, QTS-1007140 | 100% | 2026-05-22 | 2026-05-26 | PRM | Commissioning | DH1100 | L3 | XFMR |

Notes:
- DC1-XFMR-L3-CX-2070: Steps: EC Startup Report; Vendor Startup
- DC1-XFMR-L3-CX-2100: Steps: EC Startup Report; Vendor Startup
- DC1-XFMR-L3-CX-2130: Steps: EC Startup Report; Vendor Startup
- DC1-XFMR-L3-CX-2160: Steps: EC Startup Report; Vendor Startup
- DC1-XFMR-L3-CX-2190: Steps: EC Startup Report; Vendor Startup

| ID | WBS | Activity | Duration | Start | Finish | Predecessors | Complete | Planned start | Planned finish | Vendor Responsible Party | Layton Discipline | Location | CX Level | Equipment |
| --- | --- | --- | --- | --- | --- | --- | --- | --- | --- | --- | --- | --- | --- | --- |
|  | 03 | **DC1-DH1100 PODS Cx L3** |  | 2026-03-12 | 2026-07-16 |  |  |  |  |  |  |  |  |  |
|  | 01 | **DC1-DH1100 SWDs Cx L3** |  | 2026-03-12 | 2026-07-06 |  |  |  |  |  |  |  |  |  |
|  | 01 | **DC1-DH1100-SWD-A11 Cx L3** |  | 2026-03-12 | 2026-07-06 |  |  |  |  |  |  |  |  |  |
| DC1-SWD-L3-CX-2000 |  | DC1-SWD-A11 FTE | 1d | 2026-03-12 A | 2026-03-12 A | DC1-XFMR-L3-CX-2000 SS, DC1-SWD-L2-2000, QTS-1100 | 100% |  |  | ROS | Commissioning | DH1100 | L3 | SWD |
| DC1-SWD-L3-CX-2010 |  | DC1-SWD-A11 L3 Startup | 2d | 2026-03-13 A | 2026-05-13 A | QTS-1671, DC1-SWD-L3-CX-2000 | 100% | 2026-03-13 | 2026-03-16 | SIE | Commissioning | DH1100 | L3 | SWD |
| DC1-SWD-L3-CX-2020 |  | DC1-SWD-A11 BMS/EPMS Programming | 1d | 2026-05-18 A | 2026-07-06 A | QTS-1007140, DC1-SWD-L3-CX-2000, DC1-SWD-L3-CX-2010 | 100% | 2026-05-22 | 2026-05-22 | PRM | Commissioning | DH1100 | L3 | SWD |
|  | 02 | **DC1-DH1100-SWD-B11 Cx L3** |  | 2026-03-12 | 2026-07-06 |  |  |  |  |  |  |  |  |  |
| DC1-SWD-L3-CX-2030 |  | DC1-SWD-B11 FTE | 1d | 2026-03-12 A | 2026-03-12 A | DC1-XFMR-L3-CX-2030, DC1-SWD-L2-2010, QTS-1100 | 100% |  |  | ROS | Commissioning | DH1100 | L3 | SWD |
| DC1-SWD-L3-CX-2040 |  | DC1-SWD-B11 L3 Startup | 2d | 2026-03-13 A | 2026-05-13 A | QTS-1671, DC1-SWD-L3-CX-2030, DC1-SWD-L3-CX-3060 FF | 100% | 2026-03-13 | 2026-03-16 | SIE | Commissioning | DH1100 | L3 | SWD |
| DC1-SWD-L3-CX-2050 |  | DC1-SWD-B11 BMS/EPMS Programming | 1d | 2026-05-18 A | 2026-07-06 A | DC1-SWD-L3-CX-2040, QTS-1007140 | 100% | 2026-05-22 | 2026-05-22 | PRM | Commissioning | DH1100 | L3 | SWD |
|  | 03 | **DC1-DH1100-SWD-C11 Cx L3** |  | 2026-03-12 | 2026-07-06 |  |  |  |  |  |  |  |  |  |
| DC1-SWD-L3-CX-2060 |  | DC1-SWD-C11 FTE | 1d | 2026-03-12 A | 2026-03-12 A | DC1-XFMR-L3-CX-2060, DC1-SWD-L2-2020, QTS-1100 | 100% |  |  | ROS | Commissioning | DH1100 | L3 | SWD |
| DC1-SWD-L3-CX-2070 |  | DC1-SWD-C11 L3 Startup | 2d | 2026-03-13 A | 2026-05-13 A | QTS-1671, DC1-SWD-L3-CX-2060, DC1-SWD-L3-CX-3060 FF | 100% | 2026-03-13 | 2026-03-16 | SIE | Commissioning | DH1100 | L3 | SWD |
| DC1-SWD-L3-CX-2080 |  | DC1-SWD-C11 BMS/EPMS Programming | 1d | 2026-05-18 A | 2026-07-06 A | DC1-SWD-L3-CX-2070, QTS-1007140 | 100% | 2026-05-22 | 2026-05-22 | PRM | Commissioning | DH1100 | L3 | SWD |
|  | 04 | **DC1-DH1100-SWD-D11 Cx L3** |  | 2026-03-12 | 2026-07-06 |  |  |  |  |  |  |  |  |  |
| DC1-SWD-L3-CX-2090 |  | DC1-SWD-D11 FTE | 1d | 2026-03-12 A | 2026-03-12 A | DC1-XFMR-L3-CX-2090, DC1-SWD-L2-2030, QTS-1100 | 100% |  |  | ROS | Commissioning | DH1100 | L3 | SWD |
| DC1-SWD-L3-CX-2100 |  | DC1-SWD-D11 L3 Startup | 2d | 2026-03-13 A | 2026-05-13 A | QTS-1671, DC1-SWD-L3-CX-2090, DC1-SWD-L3-CX-3060 FF | 100% | 2026-03-13 | 2026-03-16 | SIE | Commissioning | DH1100 | L3 | SWD |
| DC1-SWD-L3-CX-2110 |  | DC1-SWD-D11 BMS/EPMS Programming | 1d | 2026-05-18 A | 2026-07-06 A | DC1-SWD-L3-CX-2100, QTS-1007140 | 100% | 2026-05-22 | 2026-05-22 | PRM | Commissioning | DH1100 | L3 | SWD |
|  | 05 | **DC1-DH1100-SWD-E11 Cx L3** |  | 2026-03-12 | 2026-07-06 |  |  |  |  |  |  |  |  |  |
| DC1-SWD-L3-CX-2120 |  | DC1-SWD-E11 FTE | 1d | 2026-03-12 A | 2026-03-12 A | DC1-XFMR-L3-CX-2120, DC1-SWD-L2-2040, QTS-1100 | 100% |  |  | ROS | Commissioning | DH1100 | L3 | SWD |
| DC1-SWD-L3-CX-2130 |  | DC1-SWD-E11 L3 Startup | 2d | 2026-03-13 A | 2026-05-13 A | QTS-1671, DC1-SWD-L3-CX-2120, DC1-SWD-L3-CX-3060 FF | 100% | 2026-03-13 | 2026-03-16 | SIE | Commissioning | DH1100 | L3 | SWD |
| DC1-SWD-L3-CX-2140 |  | DC1-SWD-E11 BMS/EPMS Programming | 1d | 2026-05-18 A | 2026-07-06 A | DC1-SWD-L3-CX-2130, QTS-1007140 | 100% | 2026-05-22 | 2026-05-22 | PRM | Commissioning | DH1100 | L3 | SWD |
|  | 06 | **DC1-DH1100-SWD-F11 Cx L3** |  | 2026-03-12 | 2026-07-06 |  |  |  |  |  |  |  |  |  |
| DC1-SWD-L3-CX-2150 |  | DC1-SWD-F11 FTE | 1d | 2026-03-12 A | 2026-03-12 A | DC1-XFMR-L3-CX-2150, DC1-SWD-L2-2050, QTS-1100 | 100% |  |  | ROS | Commissioning | DH1100 | L3 | SWD |
| DC1-SWD-L3-CX-2160 |  | DC1-SWD-F11 L3 Startup | 2d | 2026-03-13 A | 2026-05-13 A | QTS-1671, DC1-SWD-L3-CX-2150, DC1-SWD-L3-CX-3060 FF | 100% | 2026-03-13 | 2026-03-16 | SIE | Commissioning | DH1100 | L3 | SWD |
| DC1-SWD-L3-CX-2170 |  | DC1-SWD-F11 BMS/EPMS Programming | 1d | 2026-05-18 A | 2026-07-06 A | DC1-SWD-L3-CX-2160, QTS-1007140 | 100% | 2026-05-22 | 2026-05-22 | PRM | Commissioning | DH1100 | L3 | SWD |

Notes:
- DC1-SWD-L3-CX-2010: Steps: EC Startup Report; Vendor Startup
- DC1-SWD-L3-CX-2040: Steps: EC Startup Report; Vendor Startup
- DC1-SWD-L3-CX-2070: Steps: EC Startup Report; Vendor Startup
- DC1-SWD-L3-CX-2100: Steps: EC Startup Report; Vendor Startup
- DC1-SWD-L3-CX-2130: Steps: EC Startup Report; Vendor Startup
- DC1-SWD-L3-CX-2160: Steps: EC Startup Report; Vendor Startup

| ID | WBS | Activity | Duration | Start | Finish | Predecessors | Complete | Planned start | Planned finish | Vendor Responsible Party | Layton Discipline | Location | CX Level | Equipment |
| --- | --- | --- | --- | --- | --- | --- | --- | --- | --- | --- | --- | --- | --- | --- |
|  | 07 | **DC1-DH1100-SWD-R11 Cx L3** |  | 2026-03-12 | 2026-07-06 |  |  |  |  |  |  |  |  |  |
| DC1-SWD-L3-CX-2180 |  | DC1-SWD-R11 FTE | 1d | 2026-03-12 A | 2026-03-12 A | DC1-XFMR-L3-CX-2180, DC1-SWD-L2-2060, QTS-1100 | 100% |  |  | ROS | Commissioning | DH1100 | L3 | SWD |
| DC1-SWD-L3-CX-2190 |  | DC1-SWD-R11 L3 Startup | 2d | 2026-03-13 A | 2026-05-13 A | QTS-1671, DC1-SWD-L3-CX-2180 | 100% | 2026-03-13 | 2026-03-16 | SIE | Commissioning | DH1100 | L3 | SWD |
| DC1-SWD-L3-CX-2200 |  | DC1-SWD-R11 BMS/EPMS Programming | 1d | 2026-05-18 A | 2026-07-06 A | DC1-SWD-L3-CX-2190, QTS-1007140 | 100% | 2026-05-22 | 2026-05-22 | PRM | Commissioning | DH1100 | L3 | SWD |
|  | 02 | **DC1-DH1100 MOD-01s Cx L3** |  | 2026-03-26 | 2026-06-24 |  |  |  |  |  |  |  |  |  |
|  | 01 | **DC1-DH1100-MOD-A11-01 Cx L3** |  | 2026-03-26 | 2026-06-24 |  |  |  |  |  |  |  |  |  |
| DC1-MOD1-L3-CX-2000 |  | DC1-MOD-01-A11 FTE | 1d | 2026-03-26 A | 2026-03-26 A | DC1-SWD-L3-CX-2000, DC1-MOD01-L2-2000 | 100% |  |  | ROS | Commissioning | DH1100 | L3 | MOD-01 |
| DC1-MOD1-L3-CX-2010 |  | DC1-MOD-01-A11 L3 Startup | 2d | 2026-04-20 A | 2026-05-18 A | DC1-MOD1-L3-CX-2000 | 100% | 2026-05-20 | 2026-05-21 | PHE | Commissioning | DH1100 | L3 | MOD-01 |
| DC1-MOD1-L3-CX-2020 |  | DC1-MOD-01-A11 BMS/EPMS Programming | 1d | 2026-05-26 A | 2026-06-24 A | DC1-MOD1-L3-CX-2010, QTS-1007140 | 100% | 2026-05-26 | 2026-05-26 | PRM | Commissioning | DH1100 | L3 | MOD-01 |
|  | 02 | **DC1-DH1100-MOD-B11-01 Cx L3** |  | 2026-03-26 | 2026-06-24 |  |  |  |  |  |  |  |  |  |
| DC1-MOD1-L3-CX-2030 |  | DC1-MOD-01-B11 FTE | 1d | 2026-03-26 A | 2026-03-26 A | DC1-SWD-L3-CX-2030 SS, DC1-MOD01-L2-2010 | 100% |  |  | ROS | Commissioning | DH1100 | L3 | MOD-01 |
| DC1-MOD1-L3-CX-2040 |  | DC1-MOD-01-B11 L3 Startup | 2d | 2026-04-20 A | 2026-05-18 A | DC1-MOD1-L3-CX-2030 | 100% | 2026-05-20 | 2026-05-21 | PHE | Commissioning | DH1100 | L3 | MOD-01 |
| DC1-MOD1-L3-CX-2050 |  | DC1-MOD-01-B11 BMS/EPMS Programming | 1d | 2026-05-26 A | 2026-06-24 A | DC1-MOD1-L3-CX-2040, QTS-1007140 | 100% | 2026-06-03 | 2026-06-03 | PRM | Commissioning | DH1100 | L3 | MOD-01 |
|  | 03 | **DC1-DH1100-MOD-C11-01 Cx L3** |  | 2026-03-26 | 2026-06-24 |  |  |  |  |  |  |  |  |  |
| DC1-MOD1-L3-CX-2060 |  | DC1-MOD-01-C11 FTE | 1d | 2026-03-26 A | 2026-03-26 A | DC1-SWD-L3-CX-2060, DC1-MOD01-L2-2020 | 100% |  |  | ROS | Commissioning | DH1100 | L3 | MOD-01 |
| DC1-MOD1-L3-CX-2070 |  | DC1-MOD-01-C11 L3 Startup | 2d | 2026-04-20 A | 2026-05-18 A | DC1-MOD1-L3-CX-2060 | 100% | 2026-05-20 | 2026-05-21 | PHE | Commissioning | DH1100 | L3 | MOD-01 |
| DC1-MOD1-L3-CX-2080 |  | DC1-MOD-01-C11 BMS/EPMS Programming | 1d | 2026-05-26 A | 2026-06-24 A | DC1-MOD1-L3-CX-2070, QTS-1007140 | 100% | 2026-06-03 | 2026-06-03 | PRM | Commissioning | DH1100 | L3 | MOD-01 |
|  | 04 | **DC1-DH1100-MOD-D11-01 Cx L3** |  | 2026-03-26 | 2026-06-24 |  |  |  |  |  |  |  |  |  |
| DC1-MOD1-L3-CX-2090 |  | DC1-MOD-01-D11 FTE | 1d | 2026-03-26 A | 2026-03-26 A | DC1-SWD-L3-CX-2090, DC1-MOD01-L2-2030 | 100% |  |  | ROS | Commissioning | DH1100 | L3 | MOD-01 |
| DC1-MOD1-L3-CX-2100 |  | DC1-MOD-01-D11 L3 Startup | 2d | 2026-04-20 A | 2026-05-18 A | DC1-MOD1-L3-CX-2090 | 100% | 2026-05-20 | 2026-05-21 | PHE | Commissioning | DH1100 | L3 | MOD-01 |
| DC1-MOD1-L3-CX-2110 |  | DC1-MOD-01-D11 BMS/EPMS Programming | 1d | 2026-05-26 A | 2026-06-24 A | DC1-MOD1-L3-CX-2100, QTS-1007140 | 100% | 2026-06-03 | 2026-06-03 | PRM | Commissioning | DH1100 | L3 | MOD-01 |
|  | 05 | **DC1-DH1100-MOD-E11-01 Cx L3** |  | 2026-03-26 | 2026-06-24 |  |  |  |  |  |  |  |  |  |
| DC1-MOD1-L3-CX-2120 |  | DC1-MOD-01-E11 FTE | 1d | 2026-03-26 A | 2026-03-26 A | DC1-SWD-L3-CX-2120, DC1-MOD01-L2-2040 | 100% |  |  | ROS | Commissioning | DH1100 | L3 | MOD-01 |
| DC1-MOD1-L3-CX-2130 |  | DC1-MOD-01-E11 L3 Startup | 2d | 2026-04-20 A | 2026-05-18 A | DC1-MOD1-L3-CX-2120 | 100% | 2026-05-20 | 2026-05-21 | PHE | Commissioning | DH1100 | L3 | MOD-01 |
| DC1-MOD1-L3-CX-2140 |  | DC1-MOD-01-E11 BMS/EPMS Programming | 1d | 2026-05-26 A | 2026-06-24 A | DC1-MOD1-L3-CX-2130, QTS-1007140 | 100% | 2026-06-03 | 2026-06-03 | PRM | Commissioning | DH1100 | L3 | MOD-01 |

Notes:
- DC1-SWD-L3-CX-2190: Steps: EC Startup Report; Vendor Startup

| ID | WBS | Activity | Type | Duration | Start | Finish | Predecessors | Complete | Planned start | Planned finish | Calendar | Vendor Responsible Party | Layton Discipline | Location | CX Level | Equipment | Allucent CSI Group | Project Section | Baseline | Project Section-1 | Precon Phase | Owner Impact Analysis |
| --- | --- | --- | --- | --- | --- | --- | --- | --- | --- | --- | --- | --- | --- | --- | --- | --- | --- | --- | --- | --- | --- | --- |
|  | 06 | **DC1-DH1100-MOD-F11-01 Cx L3** |  |  | 2026-03-26 | 2026-06-24 |  |  |  |  |  |  |  |  |  |  |  |  |  |  |  |  |
| DC1-MOD1-L3-CX-2150 |  | DC1-MOD-01-F11 FTE |  | 1d | 2026-03-26 A | 2026-03-26 A | DC1-SWD-L3-CX-2150, DC1-MOD01-L2-2050 | 100% |  |  |  | ROS | Commissioning | DH1100 | L3 | MOD-01 |  |  |  |  |  |  |
| DC1-MOD1-L3-CX-2160 |  | DC1-MOD-01-F11 L3 Startup |  | 2d | 2026-04-20 A | 2026-05-18 A | DC1-MOD1-L3-CX-2150 | 100% | 2026-05-20 | 2026-05-21 |  | PHE | Commissioning | DH1100 | L3 | MOD-01 |  |  |  |  |  |  |
| DC1-MOD1-L3-CX-2170 |  | DC1-MOD-01-F11 BMS/EPMS Programming |  | 1d | 2026-05-26 A | 2026-06-24 A | DC1-MOD1-L3-CX-2160, QTS-1007140 | 100% | 2026-06-03 | 2026-06-03 |  | PRM | Commissioning | DH1100 | L3 | MOD-01 |  |  |  |  |  |  |
|  | 07 | **DC1-DH1100-MOD-R11-01 Cx L3** |  |  | 2026-03-26 | 2026-06-24 |  |  |  |  |  |  |  |  |  |  |  |  |  |  |  |  |
| DC1-MOD1-L3-CX-2180 |  | DC1-MOD-01-R11 FTE |  | 1d | 2026-03-26 A | 2026-03-26 A | DC1-SWD-L3-CX-2180, DC1-MOD01-L2-2060 | 100% |  |  |  | ROS | Commissioning | DH1100 | L3 | MOD-01 |  |  |  |  |  |  |
| DC1-MOD1-L3-CX-2190 |  | DC1-MOD-01-R11 L3 Startup |  | 2d | 2026-04-20 A | 2026-05-18 A | DC1-MOD1-L3-CX-2180 | 100% | 2026-05-20 | 2026-05-21 |  | PHE | Commissioning | DH1100 | L3 | MOD-01 |  |  |  |  |  |  |
| DC1-MOD1-L3-CX-2200 |  | DC1-MOD-01-R11 BMS/EPMS Programming |  | 1d | 2026-05-26 A | 2026-06-24 A | DC1-MOD1-L3-CX-2190, QTS-1007140 | 100% | 2026-06-03 | 2026-06-03 |  | PRM | Commissioning | DH1100 | L3 | MOD-01 |  |  |  |  |  |  |
|  | 03 | **DC1-DH1100 UPS-M Cx L3** |  |  | 2026-03-26 | 2026-07-16 |  |  |  |  |  |  |  |  |  |  |  |  |  |  |  |  |
| QTS-1012210 |  | DH1100 UPS-M L3 STARTUP TESTING | level of effort | 16d | 2026-07-16 A | 2026-07-16 A | DC1-UPSM-L3-CX-2010 SS, DC1-UPSM-L3-CX-2040 SS, DC1-UPSM-L3-CX-2170 FF, DC1-UPSM-L3-CX-2200 | 100% | 2026-07-15 | 2026-08-05 |  |  | Commissioning |  |  |  | 01ADMIN | Preconstruction | GMP | Preconstruction | CFCI Procurement | Y |
|  | 01 | **DC1-DH1100-UPS-M-A11-01 Cx L3** |  |  | 2026-03-26 | 2026-07-16 |  |  |  |  |  |  |  |  |  |  |  |  |  |  |  |  |
| DC1-UPSM-L3-CX-2000 |  | DC1-UPS-M-A11 FTE |  | 1d | 2026-03-26 A | 2026-03-26 A | DC1-MOD1-L3-CX-2000 SS, DC1-UPS-M-L2-2000 | 100% |  |  |  | ROS | Commissioning | DH1100 | L3 | UPS |  |  |  |  |  |  |
| DC1-UPSM-L3-CX-2010 |  | DC1-UPS-M-A11 L3 Startup |  | 2d | 2026-07-15 A | 2026-07-16 A | DC1-UPSM-L3-CX-2000, QTS-1013980 | 100% |  |  | QTS-PHX3 DC1 - 6 day w/ Holidays | VER | Commissioning | DH1100 | L3 | UPS |  |  |  |  |  | Y |
| DC1-UPSM-L3-CX-2020 |  | DC1-UPS-M-A11 BMS/EPMS Programming |  | 1d | 2026-07-15 A | 2026-07-16 A | DC1-UPSM-L3-CX-2010 SS, DC1-UPSM-L3-CX-2010 FF | 100% | 2026-07-16 | 2026-07-16 |  | PRM | Commissioning | DH1100 | L3 | UPS |  |  |  |  |  | Y |
|  | 02 | **DC1-DH1100-UPS-M-B11-01 Cx L3** |  |  | 2026-03-26 | 2026-07-16 |  |  |  |  |  |  |  |  |  |  |  |  |  |  |  |  |
| DC1-UPSM-L3-CX-2030 |  | DC1-UPS-M-B11 FTE |  | 1d | 2026-03-26 A | 2026-03-26 A | DC1-MOD1-L3-CX-2030 SS, DC1-UPS-M-L2-2010 | 100% |  |  |  | ROS | Commissioning | DH1100 | L3 | UPS |  |  |  |  |  |  |
| DC1-UPSM-L3-CX-2040 |  | DC1-UPS-M-B11 L3 Startup |  | 2d | 2026-07-15 A | 2026-07-16 A | DC1-UPSM-L3-CX-2030, DC1-UPSM-L3-CX-2010 SS, DC1-UPSM-L3-CX-2010 FF, QTS-1013980 | 100% |  |  | QTS-PHX3 DC1 - 6 day w/ Holidays | VER | Commissioning | DH1100 | L3 | UPS |  |  |  |  |  |  |
| DC1-UPSM-L3-CX-2050 |  | DC1-UPS-M-B11 BMS/EPMS Programming |  | 1d | 2026-07-15 A | 2026-07-16 A | DC1-UPSM-L3-CX-2040 SS, DC1-UPSM-L3-CX-2040 FF | 100% | 2026-07-16 | 2026-07-16 |  | PRM | Commissioning | DH1100 | L3 | UPS |  |  |  |  |  |  |
|  | 03 | **DC1-DH1100-UPS-M-C11-01 Cx L3** |  |  | 2026-03-26 | 2026-07-16 |  |  |  |  |  |  |  |  |  |  |  |  |  |  |  |  |
| DC1-UPSM-L3-CX-2060 |  | DC1-UPS-M-C11 FTE |  | 1d | 2026-03-26 A | 2026-03-26 A | DC1-MOD1-L3-CX-2060 SS, DC1-UPS-M-L2-2020 | 100% |  |  |  | ROS | Commissioning | DH1100 | L3 | UPS |  |  |  |  |  |  |
| DC1-UPSM-L3-CX-2070 |  | DC1-UPS-M-C11 L3 Startup |  | 2d | 2026-07-15 A | 2026-07-16 A | DC1-UPSM-L3-CX-2060, DC1-UPSM-L3-CX-2040 SS, DC1-UPSM-L3-CX-2040 FF, QTS-1013980 | 100% |  |  | QTS-PHX3 DC1 - 6 day w/ Holidays | VER | Commissioning | DH1100 | L3 | UPS |  |  |  |  |  |  |
| DC1-UPSM-L3-CX-2080 |  | DC1-UPS-M-C11 BMS/EPMS Programming |  | 1d | 2026-07-15 A | 2026-07-16 A | DC1-UPSM-L3-CX-2070 SS, DC1-UPSM-L3-CX-2070 FF, DC1-UPSM-L3-CX-2110 | 100% | 2026-07-17 | 2026-07-17 |  | PRM | Commissioning | DH1100 | L3 | UPS |  |  |  |  |  |  |
|  | 04 | **DC1-DH1100-UPS-M-D11-01 Cx L3** |  |  | 2026-03-26 | 2026-07-16 |  |  |  |  |  |  |  |  |  |  |  |  |  |  |  |  |
| DC1-UPSM-L3-CX-2090 |  | DC1-UPS-M-D11 FTE |  | 1d | 2026-03-26 A | 2026-03-26 A | DC1-MOD1-L3-CX-2090 SS, DC1-UPS-M-L2-2030 | 100% |  |  |  | ROS | Commissioning | DH1100 | L3 | UPS |  |  |  |  |  |  |
| DC1-UPSM-L3-CX-2100 |  | DC1-UPS-M-D11 L3 Startup |  | 2d | 2026-07-15 A | 2026-07-16 A | DC1-UPSM-L3-CX-2090, DC1-UPSM-L3-CX-2070 SS, DC1-UPSM-L3-CX-2070 FF, QTS-1013980 | 100% |  |  | QTS-PHX3 DC1 - 6 day w/ Holidays | VER | Commissioning | DH1100 | L3 | UPS |  |  |  |  |  |  |
| DC1-UPSM-L3-CX-2110 |  | DC1-UPS-M-D11 BMS/EPMS Programming |  | 1d | 2026-07-15 A | 2026-07-16 A | DC1-UPSM-L3-CX-2100 SS, DC1-UPSM-L3-CX-2100 FF | 100% | 2026-07-16 | 2026-07-16 |  | PRM | Commissioning | DH1100 | L3 | UPS |  |  |  |  |  |  |

Notes:
- QTS-1012210: allucent_notes_20251216_165335: John Capriotti on 2025-08-05 15:08: Olympic West to submit the design to the city on 8/6, City review to 8/7. / John Capriotti on 2025-08-12 14:08: Fire Suppression contractor submitted the design to the city for review/approval on 8/8. / Chris Perales on 2025-09-02 12:09: Delay in getting fire pump approved by the city. City is requesting more documentation from tenant / Jason Johnston on 2025-10-21 14:10: Awaiting response / Jason Johnston on 2025-10-27 16:10: Waiting for feedback from city. / Jason Johnston on 2025-10-28 16:10: Need an answer from CP / Jason Johnston on 2025-12-02 14:16: Waiting for design submittal approval / Jason Johnston on 2025-12-16 15:49: no update / allucent_notes_20251209_203830: John Capriotti on 2025-08-05 15:08: Olympic West to submit the design to the city on 8/6, City review to 8/7. / John Capriotti on 2025-08-12 14:08: Fire Suppression contractor submitted the design to the city for review/approval on 8/8. / Chris Perales on 2025-09-02 12:09: Delay in getting fire pump approved by the city. City is requesting more documentation from tenant / Jason Johnston on 2025-10-21 14:10: Awaiting response / Jason Johnston on 2025-10-27 16:10: Waiting for feedback from city. / Jason Johnston on 2025-10-28 16:10: Need an answer from CP / Jason Johnston on 2025-12-02 14:16: Waiting for design submittal approval / allucent_notes_20251202_153722: John Capriotti on 2025-08-05 15:08: Olympic West to submit the design to the city on 8/6, City review to 8/7. / John Capriotti on 2025-08-12 14:08: Fire Suppression contractor submitted the design to the city for review/approval on 8/8. / Chris Perales on 2025-09-02 12:09: Delay in getting fire pump approved by the city. City is requesting more documentation from tenant / Jason Johnston on 2025-10-21 14:10: Awaiting response / Jason Johnston on 2025-10-27 16:10: Waiting for feedback from city. / Jason Johnston on 2025-10-28 16:10: Need an answer from CP / Jason Johnston on 2025-12-02 14:16: Waiting for design submittal approval / allucent_notes_20251118_192630: John Capriotti on 2025-08-05 15:08: Olympic West to submit the design to the city on 8/6, City review to 8/7. / John Capriotti on 2025-08-12 14:08: Fire Suppression contractor submitted the design to the city for review/approval on 8/8. / Chris Perales on 2025-09-02 12:09: Delay in getting fire pump approved by the city. City is requesting more documentation from tenant / Jason Johnston on 2025-10-21 14:10: Awaiting response / Jason Johnston on 2025-10-27 16:10: Waiting for feedback from city. / Jason Johnston on 2025-10-28 16:10: Need an answer from CP / allucent_notes_20251111_182405: John Capriotti on 2025-08-05 15:08: Olympic West to submit the design to the city on 8/6, City review to 8/7. / John Capriotti on 2025-08-12 14:08: Fire Suppression contractor submitted the design to the city for review/approval on 8/8. / Chris Perales on 2025-09-02 12:09: Delay in getting fire pump approved by the city. City is requesting more documentation from tenant / Jason Johnston on 2025-10-21 14:10: Awaiting response / Jason Johnston on 2025-10-27 16:10: Waiting for feedback from city. / Jason Johnston on 2025-10-28 16:10: Need an answer from CP / allucent_notes_20251104_160200: John Capriotti on 2025-08-05 15:08: Olympic West to submit the design to the city on 8/6, City review to 8/7. / John Capriotti on 2025-08-12 14:08: Fire Suppression contractor submitted the design to the city for review/approval on 8/8. / Chris Perales on 2025-09-02 12:09: Delay in getting fire pump approved by the city. City is requesting more documentation from tenant / Jason Johnston on 2025-10-21 14:10: Awaiting response / Jason Johnston on 2025-10-27 16:10: Waiting for feedback from city. / Jason Johnston on 2025-10-28 16:10: Need an answer from CP / allucent_notes_20251028_163138: John Capriotti on 2025-08-05 15:08: Olympic West to submit the design to the city on 8/6, City review to 8/7. / John Capriotti on 2025-08-12 14:08: Fire Suppression contractor submitted the design to the city for review/approval on 8/8. / Chris Perales on 2025-09-02 12:09: Delay in getting fire pump approved by the city. City is requesting more documentation from tenant / Jason Johnston on 2025-10-21 14:10: Awaiting response / Jason Johnston on 2025-10-27 16:10: Waiting for feedback from city. / Jason Johnston on 2025-10-28 16:10: Need an answer from CP / allucent_notes_20251027_224008: John Capriotti on 2025-08-05 15:08: Olympic West to submit the design to the city on 8/6, City review to 8/7. / John Capriotti on 2025-08-12 14:08: Fire Suppression contractor submitted the design to the city for review/approval on 8/8. / Chris Perales on 2025-09-02 12:09: Delay in getting fire pump approved by the city. City is requesting more documentation from tenant / Jason Johnston on 2025-10-21 14:10: Awaiting response / Jason Johnston on 2025-10-27 16:10: Waiting for feedback from city. / allucent_notes_20251021_145627: John Capriotti on 2025-08-05 15:08: Olympic West to submit the design to the city on 8/6, City review to 8/7. / John Capriotti on 2025-08-12 14:08: Fire Suppression contractor submitted the design to the city for review/approval on 8/8. / Chris Perales on 2025-09-02 12:09: Delay in getting fire pump approved by the city. City is requesting more documentation from tenant / Jason Johnston on 2025-10-21 14:10: Awaiting response / allucent_notes_20251014_152335: John Capriotti on 2025-08-05 15:08: Olympic West to submit the design to the city on 8/6, City review to 8/7. / John Capriotti on 2025-08-12 14:08: Fire Suppression contractor submitted the design to the city for review/approval on 8/8. / Chris Perales on 2025-09-02 12:09: Delay in getting fire pump approved by the city. City is requesting more documentation from tenant / allucent_notes: John Capriotti on 2025-08-05 15:08: Olympic West to submit the design to the city on 8/6, City review to 8/7. / allucent_notes_20251230_164549: John Capriotti on 2025-08-05 15:08: Olympic West to submit the design to the city on 8/6, City review to 8/7. / John Capriotti on 2025-08-12 14:08: Fire Suppression contractor submitted the design to the city for review/approval on 8/8. / Chris Perales on 2025-09-02 12:09: Delay in getting fire pump approved by the city. City is requesting more documentation from tenant / Jason Johnston on 2025-10-21 14:10: Awaiting response / Jason Johnston on 2025-10-27 16:10: Waiting for feedback from city. / Jason Johnston on 2025-10-28 16:10: Need an answer from CP / Jason Johnston on 2025-12-02 14:16: Waiting for design submittal approval / Jason Johnston on 2025-12-16 15:49: no update / allucent_notes: 2025-08-05 15:08 - User: John Capriotti - Date Added: 2025-08-05 15:08 - Note: Olympic West to submit the design to the city on 8/6, City review to 8/7. / 2025-08-12 14:08 - User: John Capriotti - Date Added: 2025-08-12 14:08 - Note: Fire Suppression con
- DC1-UPSM-L3-CX-2010: Steps: EC Startup Report; Vendor Startup
- DC1-UPSM-L3-CX-2040: Steps: EC Startup Report; Vendor Startup
- DC1-UPSM-L3-CX-2070: Steps: EC Startup Report; Vendor Startup
- DC1-UPSM-L3-CX-2100: Steps: EC Startup Report; Vendor Startup

| ID | WBS | Activity | Duration | Start | Finish | Predecessors | Complete | Planned start | Planned finish | Calendar | Vendor Responsible Party | Layton Discipline | Location | CX Level | Equipment |
| --- | --- | --- | --- | --- | --- | --- | --- | --- | --- | --- | --- | --- | --- | --- | --- |
|  | 05 | **DC1-DH1100-UPS-M-E11-01 Cx L3** |  | 2026-03-26 | 2026-07-16 |  |  |  |  |  |  |  |  |  |  |
| DC1-UPSM-L3-CX-2120 |  | DC1-UPS-M-E11 FTE | 1d | 2026-03-26 A | 2026-03-26 A | DC1-MOD1-L3-CX-2120 SS, DC1-UPS-M-L2-2040 | 100% |  |  |  | ROS | Commissioning | DH1100 | L3 | UPS |
| DC1-UPSM-L3-CX-2130 |  | DC1-UPS-M-E11 L3 Startup | 2d | 2026-07-15 A | 2026-07-16 A | DC1-UPSM-L3-CX-2120, DC1-UPSM-L3-CX-2110, DC1-UPSM-L3-CX-2100, QTS-1013980 | 100% | 2026-07-17 | 2026-07-18 | QTS-PHX3 DC1 - 6 day w/ Holidays | VER | Commissioning | DH1100 | L3 | UPS |
| DC1-UPSM-L3-CX-2140 |  | DC1-UPS-M-E11 BMS/EPMS Programming | 1d | 2026-07-15 A | 2026-07-16 A | DC1-UPSM-L3-CX-2130 SS, DC1-UPSM-L3-CX-2130 FF | 100% | 2026-07-17 | 2026-07-17 |  | PRM | Commissioning | DH1100 | L3 | UPS |
|  | 06 | **DC1-DH1100-UPS-M-F11-01 Cx L3** |  | 2026-03-26 | 2026-07-16 |  |  |  |  |  |  |  |  |  |  |
| DC1-UPSM-L3-CX-2150 |  | DC1-UPS-M-F11 FTE | 1d | 2026-03-26 A | 2026-03-26 A | DC1-MOD1-L3-CX-2150 SS, DC1-UPS-M-L2-2050 | 100% |  |  |  | ROS | Commissioning | DH1100 | L3 | UPS |
| DC1-UPSM-L3-CX-2160 |  | DC1-UPS-M-F11 L3 Startup | 2d | 2026-07-15 A | 2026-07-16 A | DC1-UPSM-L3-CX-2150, DC1-UPSM-L3-CX-2130 SS, DC1-UPSM-L3-CX-2130 FF, QTS-1013980 | 100% | 2026-07-17 | 2026-07-18 | QTS-PHX3 DC1 - 6 day w/ Holidays | VER | Commissioning | DH1100 | L3 | UPS |
| DC1-UPSM-L3-CX-2170 |  | DC1-UPS-M-F11 BMS/EPMS Programming | 1d | 2026-07-15 A | 2026-07-16 A | DC1-UPSM-L3-CX-2160 SS, DC1-UPSM-L3-CX-2160 FF | 100% | 2026-07-17 | 2026-07-17 |  | PRM | Commissioning | DH1100 | L3 | UPS |
|  | 07 | **DC1-DH1100-UPS-M-R11-01 Cx L3** |  | 2026-03-26 | 2026-07-16 |  |  |  |  |  |  |  |  |  |  |
| DC1-UPSM-L3-CX-2180 |  | DC1-UPS-M-R11 FTE | 1d | 2026-03-26 A | 2026-03-26 A | DC1-MOD1-L3-CX-2180 SS, DC1-UPS-M-L2-2060 | 100% |  |  |  | ROS | Commissioning | DH1100 | L3 | UPS |
| DC1-UPSM-L3-CX-2190 |  | DC1-UPS-M-R11 L3 Startup | 2d | 2026-07-15 A | 2026-07-16 A | DC1-UPSM-L3-CX-2180, DC1-UPSM-L3-CX-2160 SS, DC1-UPSM-L3-CX-2160 FF, QTS-1013980 | 100% | 2026-07-17 | 2026-07-18 | QTS-PHX3 DC1 - 6 day w/ Holidays | VER | Commissioning | DH1100 | L3 | UPS |
| DC1-UPSM-L3-CX-2200 |  | DC1-UPS-M-R11 BMS/EPMS Programming | 1d | 2026-07-15 A | 2026-07-16 A | DC1-UPSM-L3-CX-2190 SS, DC1-UPSM-L3-CX-2190 FF | 100% | 2026-07-17 | 2026-07-17 |  | PRM | Commissioning | DH1100 | L3 | UPS |
|  | 04 | **DC1-DH1100 COMPRESSOR/FAN UNITS Cx L3** |  | 2026-04-01 | 2026-06-24 |  |  |  |  |  |  |  |  |  |  |
|  | 01 | **DC1-DH1100 POD-AC UNITS A11 Cx L3** |  | 2026-04-01 | 2026-06-24 |  |  |  |  |  |  |  |  |  |  |
| DC1-COMP-L3-CX-2000 |  | DC1-COMP-A11-01 FTE (2) | 1d | 2026-04-01 A | 2026-04-01 A | DC1-MOD1-L3-CX-2000 SS | 100% |  |  |  | ROS | Commissioning | DH1100 | L3 | POD AC |
| DC1-FAN-L3-CX-2000 |  | DC1-FAN-A11-01 FTE (2) | 1d | 2026-04-01 A | 2026-04-01 A | DC1-MOD1-L3-CX-2000 SS | 100% | 2026-05-14 | 2026-05-14 |  | ROS | Commissioning | DH1100 | L3 | POD AC |
| DC1-COMP-L3-CX-2010 |  | DC1-COMP-A11-01 L3 Startup (2) | 1d | 2026-04-14 A | 2026-05-18 A | DC1-COMP-L3-CX-2000 | 100% | 2026-05-21 | 2026-05-21 |  | CAP | Commissioning | DH1100 | L3 | POD AC |
| DC1-FAN-L3-CX-2010 |  | DC1-FAN-A11-01 L3 Startup (2) | 1d | 2026-04-14 A | 2026-05-18 A | DC1-FAN-L3-CX-2000 | 100% | 2026-05-21 | 2026-05-21 |  | FBB | Commissioning | DH1100 | L3 | POD AC |
| DC1-COMP-L3-CX-2020 |  | DC1-COMP-A11-01 BMS/EPMS Programming (2) | 1d | 2026-06-24 A | 2026-06-24 A | DC1-COMP-L3-CX-2010, QTS-1007140 | 100% | 2026-07-15 | 2026-07-15 |  | PRM | Commissioning | DH1100 | L3 | POD AC |
| DC1-FAN-L3-CX-2020 |  | DC1-FAN-A11-01 BMS/EPMS Programming (2) | 1d | 2026-06-24 A | 2026-06-24 A | DC1-FAN-L3-CX-2010, QTS-1007140, DC1-COMP-L3-CX-2020 | 100% | 2026-07-16 | 2026-07-16 |  | PRM | Commissioning | DH1100 | L3 | POD AC |
|  | 02 | **DC1-DH1100 POD-AC UNITS B11 Cx L3** |  | 2026-04-01 | 2026-06-24 |  |  |  |  |  |  |  |  |  |  |
| DC1-COMP-L3-CX-2030 |  | DC1-COMP-B11-01 FTE (2) | 1d | 2026-04-01 A | 2026-04-01 A | DC1-MOD1-L3-CX-2030 SS | 100% | 2026-05-20 | 2026-05-20 |  | ROS | Commissioning | DH1100 | L3 | POD AC |
| DC1-FAN-L3-CX-2030 |  | DC1-FAN-B11-01 FTE (2) | 1d | 2026-04-01 A | 2026-04-01 A | DC1-MOD1-L3-CX-2030 SS | 100% | 2026-05-20 | 2026-05-20 |  | ROS | Commissioning | DH1100 | L3 | POD AC |
| DC1-COMP-L3-CX-2040 |  | DC1-COMP-B11-01 L3 Startup (2) | 1d | 2026-04-14 A | 2026-05-18 A | DC1-COMP-L3-CX-2030 | 100% | 2026-05-21 | 2026-05-21 |  | CAP | Commissioning | DH1100 | L3 | POD AC |
| DC1-FAN-L3-CX-2040 |  | DC1-FAN-B11-01 L3 Startup (2) | 1d | 2026-04-14 A | 2026-05-18 A | DC1-FAN-L3-CX-2030 | 100% | 2026-05-21 | 2026-05-21 |  | FBB | Commissioning | DH1100 | L3 | POD AC |
| DC1-COMP-L3-CX-2050 |  | DC1-COMP-B11-01 BMS/EPMS Programming (2) | 1d | 2026-06-24 A | 2026-06-24 A | DC1-COMP-L3-CX-2040, QTS-1007140 | 100% | 2026-07-15 | 2026-07-15 |  | PRM | Commissioning | DH1100 | L3 | POD AC |
| DC1-FAN-L3-CX-2050 |  | DC1-FAN-B11-01 BMS/EPMS Programming (2) | 1d | 2026-06-24 A | 2026-06-24 A | DC1-FAN-L3-CX-2040, QTS-1007140, DC1-COMP-L3-CX-2050 | 100% | 2026-07-16 | 2026-07-16 |  | PRM | Commissioning | DH1100 | L3 | POD AC |

Notes:
- DC1-UPSM-L3-CX-2130: Steps: EC Startup Report; Vendor Startup
- DC1-UPSM-L3-CX-2160: Steps: EC Startup Report; Vendor Startup
- DC1-UPSM-L3-CX-2190: Steps: EC Startup Report; Vendor Startup

| ID | WBS | Activity | Duration | Start | Finish | Predecessors | Complete | Planned start | Planned finish | Vendor Responsible Party | Layton Discipline | Location | CX Level | Equipment |
| --- | --- | --- | --- | --- | --- | --- | --- | --- | --- | --- | --- | --- | --- | --- |
|  | 03 | **DC1-DH1100 POD-AC UNITS C11 Cx L3** |  | 2026-04-01 | 2026-06-24 |  |  |  |  |  |  |  |  |  |
| DC1-COMP-L3-CX-2060 |  | DC1-COMP-C11-01 FTE (2) | 1d | 2026-04-01 A | 2026-04-01 A | DC1-MOD1-L3-CX-2060 SS | 100% | 2026-05-20 | 2026-05-20 | ROS | Commissioning | DH1100 | L3 | POD AC |
| DC1-FAN-L3-CX-2060 |  | DC1-FAN-C11-01 FTE (2) | 1d | 2026-04-01 A | 2026-04-01 A | DC1-MOD1-L3-CX-2060 SS | 100% | 2026-05-20 | 2026-05-20 | ROS | Commissioning | DH1100 | L3 | POD AC |
| DC1-COMP-L3-CX-2070 |  | DC1-COMP-C11-01 L3 Startup (2) | 1d | 2026-04-14 A | 2026-05-18 A | DC1-COMP-L3-CX-2060 | 100% | 2026-05-21 | 2026-05-21 | CAP | Commissioning | DH1100 | L3 | POD AC |
| DC1-FAN-L3-CX-2070 |  | DC1-FAN-C11-01 L3 Startup (2) | 1d | 2026-04-14 A | 2026-05-18 A | DC1-FAN-L3-CX-2060 | 100% | 2026-05-21 | 2026-05-21 | FBB | Commissioning | DH1100 | L3 | POD AC |
| DC1-COMP-L3-CX-2080 |  | DC1-COMP-C11-01 BMS/EPMS Programming (2) | 1d | 2026-06-24 A | 2026-06-24 A | DC1-COMP-L3-CX-2070, QTS-1007140 | 100% | 2026-07-15 | 2026-07-15 | PRM | Commissioning | DH1100 | L3 | POD AC |
| DC1-FAN-L3-CX-2080 |  | DC1-FAN-C11-01 BMS/EPMS Programming (2) | 1d | 2026-06-24 A | 2026-06-24 A | DC1-FAN-L3-CX-2070, QTS-1007140, DC1-COMP-L3-CX-2080 | 100% | 2026-07-16 | 2026-07-16 | PRM | Commissioning | DH1100 | L3 | POD AC |
|  | 04 | **DC1-DH1100 POD-AC UNITS D11 Cx L3** |  | 2026-04-02 | 2026-06-24 |  |  |  |  |  |  |  |  |  |
| DC1-COMP-L3-CX-2090 |  | DC1-COMP-D11-01 FTE (2) | 1d | 2026-04-02 A | 2026-04-02 A | DC1-MOD1-L3-CX-2090 SS | 100% | 2026-05-20 | 2026-05-20 | ROS | Commissioning | DH1100 | L3 | POD AC |
| DC1-FAN-L3-CX-2090 |  | DC1-FAN-D11-01 FTE (2) | 1d | 2026-04-02 A | 2026-04-02 A | DC1-MOD1-L3-CX-2090 SS | 100% | 2026-05-20 | 2026-05-20 | ROS | Commissioning | DH1100 | L3 | POD AC |
| DC1-COMP-L3-CX-2100 |  | DC1-COMP-D11-01 L3 Startup (2) | 1d | 2026-04-14 A | 2026-05-18 A | DC1-COMP-L3-CX-2090 | 100% | 2026-05-21 | 2026-05-21 | CAP | Commissioning | DH1100 | L3 | POD AC |
| DC1-FAN-L3-CX-2100 |  | DC1-FAN-D11-01 L3 Startup (2) | 1d | 2026-04-14 A | 2026-05-18 A | DC1-FAN-L3-CX-2090 | 100% | 2026-05-21 | 2026-05-21 | FBB | Commissioning | DH1100 | L3 | POD AC |
| DC1-COMP-L3-CX-2110 |  | DC1-COMP-D11-01 BMS/EPMS Programming (2) | 1d | 2026-06-24 A | 2026-06-24 A | DC1-COMP-L3-CX-2100, QTS-1007140 | 100% | 2026-07-15 | 2026-07-15 | PRM | Commissioning | DH1100 | L3 | POD AC |
| DC1-FAN-L3-CX-2110 |  | DC1-FAN-D11-01 BMS/EPMS Programming (2) | 1d | 2026-06-24 A | 2026-06-24 A | DC1-FAN-L3-CX-2100, QTS-1007140, DC1-COMP-L3-CX-2110 | 100% | 2026-07-16 | 2026-07-16 | PRM | Commissioning | DH1100 | L3 | POD AC |
|  | 05 | **DC1-DH1100 POD-AC UNITS E11 Cx L3** |  | 2026-04-02 | 2026-06-24 |  |  |  |  |  |  |  |  |  |
| DC1-COMP-L3-CX-2120 |  | DC1-COMP-E11-01 FTE (2) | 1d | 2026-04-02 A | 2026-04-02 A | DC1-MOD1-L3-CX-2120 SS | 100% | 2026-05-20 | 2026-05-20 | ROS | Commissioning | DH1100 | L3 | POD AC |
| DC1-FAN-L3-CX-2120 |  | DC1-FAN-E11-01 FTE (2) | 1d | 2026-04-02 A | 2026-04-02 A | DC1-MOD1-L3-CX-2120 SS | 100% | 2026-05-20 | 2026-05-20 | ROS | Commissioning | DH1100 | L3 | POD AC |
| DC1-COMP-L3-CX-2130 |  | DC1-COMP-E11-01 L3 Startup (2) | 1d | 2026-04-14 A | 2026-05-18 A | DC1-COMP-L3-CX-2120 | 100% | 2026-05-21 | 2026-05-21 | CAP | Commissioning | DH1100 | L3 | POD AC |
| DC1-FAN-L3-CX-2130 |  | DC1-FAN-E11-01 L3 Startup (2) | 1d | 2026-04-14 A | 2026-05-18 A | DC1-FAN-L3-CX-2120 | 100% | 2026-05-21 | 2026-05-21 | FBB | Commissioning | DH1100 | L3 | POD AC |
| DC1-COMP-L3-CX-2140 |  | DC1-COMP-E11-01 BMS/EPMS Programming (2) | 1d | 2026-06-24 A | 2026-06-24 A | DC1-COMP-L3-CX-2130, QTS-1007140 | 100% | 2026-07-15 | 2026-07-15 | PRM | Commissioning | DH1100 | L3 | POD AC |
| DC1-FAN-L3-CX-2140 |  | DC1-FAN-E11-01 BMS/EPMS Programming (2) | 1d | 2026-06-24 A | 2026-06-24 A | DC1-FAN-L3-CX-2130, QTS-1007140, DC1-COMP-L3-CX-2140 | 100% | 2026-07-16 | 2026-07-16 | PRM | Commissioning | DH1100 | L3 | POD AC |
|  | 06 | **DC1-DH1100 POD-AC UNITS F11 Cx L3** |  | 2026-04-02 | 2026-06-24 |  |  |  |  |  |  |  |  |  |
| DC1-COMP-L3-CX-2150 |  | DC1-COMP-F11-01 FTE (2) | 1d | 2026-04-02 A | 2026-04-02 A | DC1-MOD1-L3-CX-2150 SS | 100% | 2026-05-20 | 2026-05-20 | ROS | Commissioning | DH1100 | L3 | POD AC |
| DC1-FAN-L3-CX-2150 |  | DC1-FAN-F11-01 FTE (2) | 1d | 2026-04-02 A | 2026-04-02 A | DC1-MOD1-L3-CX-2150 SS | 100% | 2026-05-20 | 2026-05-20 | ROS | Commissioning | DH1100 | L3 | POD AC |
| DC1-COMP-L3-CX-2160 |  | DC1-COMP-F11-01 L3 Startup (2) | 1d | 2026-04-14 A | 2026-05-18 A | DC1-COMP-L3-CX-2150 | 100% | 2026-05-21 | 2026-05-21 | CAP | Commissioning | DH1100 | L3 | POD AC |
| DC1-FAN-L3-CX-2160 |  | DC1-FAN-F11-01 L3 Startup (2) | 1d | 2026-04-14 A | 2026-05-18 A | DC1-FAN-L3-CX-2150 | 100% | 2026-05-21 | 2026-05-21 | FBB | Commissioning | DH1100 | L3 | POD AC |
| DC1-COMP-L3-CX-2170 |  | DC1-COMP-F11-01 BMS/EPMS Programming (2) | 1d | 2026-06-24 A | 2026-06-24 A | DC1-COMP-L3-CX-2160, QTS-1007140 | 100% | 2026-07-15 | 2026-07-15 | PRM | Commissioning | DH1100 | L3 | POD AC |
| DC1-FAN-L3-CX-2170 |  | DC1-FAN-F11-01 BMS/EPMS Programming (2) | 1d | 2026-06-24 A | 2026-06-24 A | DC1-FAN-L3-CX-2160, QTS-1007140, DC1-COMP-L3-CX-2170 | 100% | 2026-07-16 | 2026-07-16 | PRM | Commissioning | DH1100 | L3 | POD AC |

| ID | WBS | Activity | Duration | Start | Finish | Predecessors | Complete | Planned start | Planned finish | Vendor Responsible Party | Layton Discipline | Location | CX Level | Equipment | Notes | Layton Super |
| --- | --- | --- | --- | --- | --- | --- | --- | --- | --- | --- | --- | --- | --- | --- | --- | --- |
|  | 07 | **DC1-DH1100 POD-AC UNITS R11 Cx L3** |  | 2026-04-03 | 2026-06-24 |  |  |  |  |  |  |  |  |  |  |  |
| DC1-COMP-L3-CX-2180 |  | DC1-COMP-R11-01 FTE (2) | 1d | 2026-04-03 A | 2026-04-03 A | DC1-MOD1-L3-CX-2180 SS | 100% | 2026-05-20 | 2026-05-20 | ROS | Commissioning | DH1100 | L3 | POD AC |  |  |
| DC1-FAN-L3-CX-2180 |  | DC1-FAN-R11-01 FTE (2) | 1d | 2026-04-03 A | 2026-04-03 A | DC1-MOD1-L3-CX-2180 SS | 100% | 2026-05-20 | 2026-05-20 | ROS | Commissioning | DH1100 | L3 | POD AC |  |  |
| DC1-COMP-L3-CX-2190 |  | DC1-COMP-R11-01 L3 Startup (2) | 1d | 2026-04-14 A | 2026-05-18 A | DC1-COMP-L3-CX-2180 | 100% | 2026-05-21 | 2026-05-21 | CAP | Commissioning | DH1100 | L3 | POD AC |  |  |
| DC1-FAN-L3-CX-2190 |  | DC1-FAN-R11-01 L3 Startup (2) | 1d | 2026-04-14 A | 2026-05-18 A | DC1-FAN-L3-CX-2180 | 100% | 2026-05-21 | 2026-05-21 | FBB | Commissioning | DH1100 | L3 | POD AC |  |  |
| DC1-COMP-L3-CX-2200 |  | DC1-COMP-R11-01 BMS/EPMS Programming (2) | 1d | 2026-06-24 A | 2026-06-24 A | DC1-COMP-L3-CX-2190, QTS-1007140 | 100% | 2026-07-15 | 2026-07-15 | PRM | Commissioning | DH1100 | L3 | POD AC |  |  |
| DC1-FAN-L3-CX-2200 |  | DC1-FAN-R11-01 BMS/EPMS Programming (2) | 1d | 2026-06-24 A | 2026-06-24 A | DC1-FAN-L3-CX-2190, QTS-1007140, DC1-COMP-L3-CX-2200 | 100% | 2026-07-16 | 2026-07-16 | PRM | Commissioning | DH1100 | L3 | POD AC |  |  |
|  | 04 | **DC1-DH1100 BUS-R1X/BUS-R2X Cx L3** |  | 2026-05-08 | 2026-05-19 |  |  |  |  |  |  |  |  |  |  |  |
|  | 01 | **DC1-DH1100 BUS-R1 CATCHER BUS DUCT Cx L3** |  | 2026-05-08 | 2026-05-19 |  |  |  |  |  |  |  |  |  |  |  |
| DC1-BUS-L3-CX-2000 |  | DC1-DH1100-BUS-R1 (R21) CATCHER BUS FTE | 1d | 2026-05-08 A | 2026-05-08 A | DC1-SWD-L3-CX-1180 SS, DC1-BUS-L2-CX-2000, DC1-BUS-L3-CX-1000 SS, DC1-BUS-L2-1000 | 100% |  |  | ROS | Commissioning | DH1100 | L3 | BUS DUCT | CFCI |  |
| DC1-BUS-L3-CX-2010 |  | DC1-DH1100-BUS-R1 (R21) CATCHER BUS L3 Startup | 2d | 2026-05-18 A | 2026-05-18 A | DC1-BUS-L3-CX-2000 | 100% | 2026-05-18 | 2026-05-19 | LAY | Commissioning | DH1100 | L3 | BUS DUCT | CFCI |  |
| DC1-BUS-L3-CX-2020 |  | DC1-DH1100-BUS-R1 (R21) CATCHER BUS BMS/EPMS Programming | 1d | 2026-05-19 A | 2026-05-19 A | DC1-BUS-L3-CX-2010, QTS-1007140 | 100% |  |  | PRM | Commissioning | DH1100 | L3 | BUS DUCT | CFCI |  |
|  | 02 | **DC1-DH1100 BUS-R2 MAINTENANCE BUS DUCT Cx L3** |  | 2026-05-11 | 2026-05-19 |  |  |  |  |  |  |  |  |  |  |  |
| DC1-BUS-L3-CX-2030 |  | DC1-DH1100-BUS-R2 (R11) MAINTENANCE BUS FTE | 1d | 2026-05-11 A | 2026-05-11 A | DC1-BUS-L2-1010, DC1-SWD-L3-CX-2180, DC1-BUS-L2-CX-2010 SS, DC1-BUS-L3-CX-2000 SS | 100% |  |  | ROS | Commissioning | DH1100 | L3 | BUS DUCT | CFCI |  |
| DC1-BUS-L3-CX-2040 |  | DC1-DH1100-BUS-R2 (R11) MAINTENANCE BUS L3 Startup | 2d | 2026-05-18 A | 2026-05-18 A | DC1-BUS-L3-CX-2030 | 100% | 2026-05-18 | 2026-05-19 | LAY | Commissioning | DH1100 | L3 | BUS DUCT | CFCI |  |
| DC1-BUS-L3-CX-2050 |  | DC1-DH1100-BUS-R2 (R11) MAINTENANCE BUS BMS/EPMS Programming | 1d | 2026-05-19 A | 2026-05-19 A | DC1-BUS-L3-CX-2040 | 100% |  |  | PRM | Commissioning | DH1100 | L3 | BUS DUCT | CFCI |  |
|  | 05 | **DC1-DH1100 ATS Cx L3** |  | 2026-04-28 | 2026-06-24 |  |  |  |  |  |  |  |  |  |  |  |
|  | 01 | **DC1-DH1100 ATS-A11 Cx L3** |  | 2026-04-28 | 2026-06-24 |  |  |  |  |  |  |  |  |  |  |  |
|  | 01 | **DC1-DH1100-ATS-A11-01 Cx L3** |  | 2026-04-28 | 2026-06-24 |  |  |  |  |  |  |  |  |  |  |  |
| DC1-ATS-L3-CX-2000 |  | DC1-ATS-A11-01 FTE | 1d | 2026-04-28 A | 2026-04-28 A | DC1-SWD-L3-CX-2000 SS, DC1-ATS-L2-2000 | 100% |  |  | ROS | Commissioning | DH1100 | L3 | ATS |  | Michael Guard |
| DC1-ATS-L3-CX-2005 |  | DC1-ATS-A11-01 L3 Startup | 2d | 2026-05-04 A | 2026-05-15 A | DC1-ATS-L3-CX-2000 | 100% | 2026-05-20 | 2026-05-21 | MAV | Commissioning | DH1100 | L3 | ATS |  |  |
| DC1-ATS-L3-CX-2010 |  | DC1-ATS-A11-01 BMS/EPMS Programming | 1d | 2026-05-28 A | 2026-06-24 A | DC1-ATS-L3-CX-2005, QTS-1007140 | 100% | 2026-06-03 | 2026-06-03 | PRM | Commissioning | DH1100 | L3 | ATS |  |  |
|  | 02 | **DC1-DH1100-ATS-A11-02 Cx L3** |  | 2026-04-28 | 2026-06-24 |  |  |  |  |  |  |  |  |  |  |  |
| DC1-ATS-L3-CX-2015 |  | DC1-ATS-A11-02 FTE | 1d | 2026-04-28 A | 2026-04-28 A | DC1-ATS-L2-2010 | 100% |  |  | ROS | Commissioning | DH1100 | L3 | ATS |  | Michael Guard |
| DC1-ATS-L3-CX-2020 |  | DC1-ATS-A11-02 L3 Startup | 2d | 2026-05-04 A | 2026-05-15 A | DC1-ATS-L3-CX-2015 | 100% | 2026-05-20 | 2026-05-21 | MAV | Commissioning | DH1100 | L3 | ATS |  |  |
| DC1-ATS-L3-CX-2025 |  | DC1-ATS-A11-02 BMS/EPMS Programming | 1d | 2026-05-28 A | 2026-06-24 A | DC1-ATS-L3-CX-2020, QTS-1007140 | 100% | 2026-06-03 | 2026-06-03 | PRM | Commissioning | DH1100 | L3 | ATS |  |  |

Notes:
- DC1-BUS-L3-CX-2010: Steps: EC Startup Report; Vendor Startup
- DC1-BUS-L3-CX-2040: Steps: EC Startup Report; Vendor Startup
- DC1-ATS-L3-CX-2005: Steps: EC Startup Report; Vendor Startup
- DC1-ATS-L3-CX-2020: Steps: EC Startup Report; Vendor Startup

| ID | WBS | Activity | Duration | Start | Finish | Predecessors | Complete | Planned start | Planned finish | Vendor Responsible Party | Layton Discipline | Location | CX Level | Equipment | Layton Super |
| --- | --- | --- | --- | --- | --- | --- | --- | --- | --- | --- | --- | --- | --- | --- | --- |
|  | 03 | **DC1-DH1100-ATS-A11-03 Cx L3** |  | 2026-04-28 | 2026-06-24 |  |  |  |  |  |  |  |  |  |  |
| DC1-ATS-L3-CX-2030 |  | DC1-ATS-A11-03 FTE | 1d | 2026-04-28 A | 2026-04-28 A | DC1-SWD-L3-CX-2000 SS, DC1-ATS-L2-2020 | 100% | 2026-05-06 | 2026-05-06 | ROS | Commissioning | DH1100 | L3 | ATS | Michael Guard |
| DC1-ATS-L3-CX-2035 |  | DC1-ATS-A11-03 L3 Startup | 2d | 2026-05-04 A | 2026-05-15 A | DC1-ATS-L3-CX-2030 | 100% | 2026-05-20 | 2026-05-21 | MAV | Commissioning | DH1100 | L3 | ATS |  |
| DC1-ATS-L3-CX-2040 |  | DC1-ATS-A11-03 BMS/EPMS Programming | 1d | 2026-05-28 A | 2026-06-24 A | DC1-ATS-L3-CX-2035, QTS-1007140 | 100% | 2026-06-03 | 2026-06-03 | PRM | Commissioning | DH1100 | L3 | ATS |  |
|  | 04 | **DC1-DH1100-ATS-A11-04 Cx L3** |  | 2026-04-28 | 2026-06-24 |  |  |  |  |  |  |  |  |  |  |
| DC1-ATS-L3-CX-2045 |  | DC1-ATS-A11-04 FTE | 1d | 2026-04-28 A | 2026-04-28 A | DC1-ATS-L2-2030 | 100% | 2026-05-20 | 2026-05-20 | ROS | Commissioning | DH1100 | L3 | ATS |  |
| DC1-ATS-L3-CX-2050 |  | DC1-ATS-A11-04 L3 Startup | 2d | 2026-05-04 A | 2026-05-15 A | DC1-ATS-L3-CX-2045 | 100% | 2026-05-21 | 2026-05-22 | MAV | Commissioning | DH1100 | L3 | ATS |  |
| DC1-ATS-L3-CX-2055 |  | DC1-ATS-A11-04 BMS/EPMS Programming | 1d | 2026-05-28 A | 2026-06-24 A | DC1-ATS-L3-CX-2050, QTS-1007140 | 100% | 2026-06-03 | 2026-06-03 | PRM | Commissioning | DH1100 | L3 | ATS |  |
|  | 05 | **DC1-DH1100-ATS-A11-05 Cx L3** |  | 2026-04-28 | 2026-06-24 |  |  |  |  |  |  |  |  |  |  |
| DC1-ATS-L3-CX-2060 |  | DC1-ATS-A11-05 FTE | 1d | 2026-04-28 A | 2026-04-28 A | DC1-SWD-L3-CX-2000 SS, DC1-ATS-L2-2040 | 100% | 2026-05-20 | 2026-05-20 | ROS | Commissioning | DH1100 | L3 | ATS |  |
| DC1-ATS-L3-CX-2065 |  | DC1-ATS-A11-05 L3 Startup | 2d | 2026-05-04 A | 2026-05-15 A | DC1-ATS-L3-CX-2060 | 100% | 2026-05-21 | 2026-05-22 | MAV | Commissioning | DH1100 | L3 | ATS |  |
| DC1-ATS-L3-CX-2070 |  | DC1-ATS-A11-05 BMS/EPMS Programming | 1d | 2026-05-28 A | 2026-06-24 A | DC1-ATS-L3-CX-2065, QTS-1007140 | 100% | 2026-06-03 | 2026-06-03 | PRM | Commissioning | DH1100 | L3 | ATS |  |
|  | 06 | **DC1-DH1100-ATS-A11-06 Cx L3** |  | 2026-04-28 | 2026-06-24 |  |  |  |  |  |  |  |  |  |  |
| DC1-ATS-L3-CX-2075 |  | DC1-ATS-A11-06 FTE | 1d | 2026-04-28 A | 2026-04-28 A | DC1-ATS-L2-2050 | 100% | 2026-05-20 | 2026-05-20 | ROS | Commissioning | DH1100 | L3 | ATS |  |
| DC1-ATS-L3-CX-2080 |  | DC1-ATS-A11-06 L3 Startup | 2d | 2026-05-04 A | 2026-05-15 A | DC1-ATS-L3-CX-2075 | 100% | 2026-05-21 | 2026-05-22 | MAV | Commissioning | DH1100 | L3 | ATS |  |
| DC1-ATS-L3-CX-2085 |  | DC1-ATS-A11-06 BMS/EPMS Programming | 1d | 2026-05-28 A | 2026-06-24 A | DC1-ATS-L3-CX-2080, QTS-1007140 | 100% | 2026-06-03 | 2026-06-03 | PRM | Commissioning | DH1100 | L3 | ATS |  |
|  | 02 | **DC1-DH1100-ATS-B11 Cx L3** |  | 2026-04-28 | 2026-06-24 |  |  |  |  |  |  |  |  |  |  |
|  | 01 | **DC1-DH1100-ATS-B11-01 Cx L3** |  | 2026-04-28 | 2026-06-24 |  |  |  |  |  |  |  |  |  |  |
| DC1-ATS-L3-CX-2090 |  | DC1-ATS-B11-01 FTE | 1d | 2026-04-28 A | 2026-04-28 A | DC1-SWD-L3-CX-2030 SS, DC1-ATS-L2-2060 | 100% | 2026-05-20 | 2026-05-20 | ROS | Commissioning | DH1100 | L3 | ATS |  |
| DC1-ATS-L3-CX-2095 |  | DC1-ATS-B11-01 L3 Startup | 2d | 2026-05-04 A | 2026-05-12 A | DC1-ATS-L3-CX-2090 | 100% | 2026-05-21 | 2026-05-22 | MAV | Commissioning | DH1100 | L3 | ATS |  |
| DC1-ATS-L3-CX-2100 |  | DC1-ATS-B11-01 BMS/EPMS Programming | 1d | 2026-05-28 A | 2026-06-24 A | DC1-ATS-L3-CX-2095, QTS-1007140 | 100% | 2026-06-03 | 2026-06-03 | PRM | Commissioning | DH1100 | L3 | ATS |  |
|  | 02 | **DC1-DH1100-ATS-B11-02 Cx L3** |  | 2026-04-28 | 2026-06-24 |  |  |  |  |  |  |  |  |  |  |
| DC1-ATS-L3-CX-2105 |  | DC1-ATS-B11-02 FTE | 1d | 2026-04-28 A | 2026-04-28 A | DC1-ATS-L2-2070 | 100% | 2026-05-20 | 2026-05-20 | ROS | Commissioning | DH1100 | L3 | ATS |  |
| DC1-ATS-L3-CX-2110 |  | DC1-ATS-B11-02 L3 Startup | 2d | 2026-05-04 A | 2026-05-12 A | DC1-ATS-L3-CX-2105 | 100% | 2026-05-21 | 2026-05-22 | MAV | Commissioning | DH1100 | L3 | ATS |  |
| DC1-ATS-L3-CX-2115 |  | DC1-ATS-B11-02 BMS/EPMS Programming | 1d | 2026-05-28 A | 2026-06-24 A | DC1-ATS-L3-CX-2110, QTS-1007140 | 100% | 2026-06-03 | 2026-06-03 | PRM | Commissioning | DH1100 | L3 | ATS |  |

Notes:
- DC1-ATS-L3-CX-2035: Steps: EC Startup Report; Vendor Startup
- DC1-ATS-L3-CX-2050: Steps: EC Startup Report; Vendor Startup
- DC1-ATS-L3-CX-2065: Steps: EC Startup Report; Vendor Startup
- DC1-ATS-L3-CX-2080: Steps: EC Startup Report; Vendor Startup
- DC1-ATS-L3-CX-2095: Steps: EC Startup Report; Vendor Startup
- DC1-ATS-L3-CX-2110: Steps: EC Startup Report; Vendor Startup

| ID | WBS | Activity | Duration | Start | Finish | Predecessors | Complete | Planned start | Planned finish | Vendor Responsible Party | Layton Discipline | Location | CX Level | Equipment |
| --- | --- | --- | --- | --- | --- | --- | --- | --- | --- | --- | --- | --- | --- | --- |
|  | 03 | **DC1-DH1100-ATS-B11-03 Cx L3** |  | 2026-04-28 | 2026-06-24 |  |  |  |  |  |  |  |  |  |
| DC1-ATS-L3-CX-2120 |  | DC1-ATS-B11-03 FTE | 1d | 2026-04-28 A | 2026-04-28 A | DC1-SWD-L3-CX-2030 SS, DC1-ATS-L2-2080 | 100% | 2026-05-20 | 2026-05-20 | ROS | Commissioning | DH1100 | L3 | ATS |
| DC1-ATS-L3-CX-2125 |  | DC1-ATS-B11-03 L3 Startup | 2d | 2026-05-04 A | 2026-05-12 A | DC1-ATS-L3-CX-2120 | 100% | 2026-05-21 | 2026-05-22 | MAV | Commissioning | DH1100 | L3 | ATS |
| DC1-ATS-L3-CX-2130 |  | DC1-ATS-B11-03 BMS/EPMS Programming | 1d | 2026-05-28 A | 2026-06-24 A | DC1-ATS-L3-CX-2125, QTS-1007140 | 100% | 2026-06-03 | 2026-06-03 | PRM | Commissioning | DH1100 | L3 | ATS |
|  | 04 | **DC1-DH1100-ATS-B11-04 Cx L3** |  | 2026-04-28 | 2026-06-24 |  |  |  |  |  |  |  |  |  |
| DC1-ATS-L3-CX-2135 |  | DC1-ATS-B11-04 FTE | 1d | 2026-04-28 A | 2026-04-28 A | DC1-ATS-L2-2090 | 100% | 2026-05-20 | 2026-05-20 | ROS | Commissioning | DH1100 | L3 | ATS |
| DC1-ATS-L3-CX-2140 |  | DC1-ATS-B11-04 L3 Startup | 2d | 2026-05-04 A | 2026-05-12 A | DC1-ATS-L3-CX-2135 | 100% | 2026-05-21 | 2026-05-22 | MAV | Commissioning | DH1100 | L3 | ATS |
| DC1-ATS-L3-CX-2145 |  | DC1-ATS-B11-04 BMS/EPMS Programming | 1d | 2026-05-28 A | 2026-06-24 A | DC1-ATS-L3-CX-2140, QTS-1007140 | 100% | 2026-06-03 | 2026-06-03 | PRM | Commissioning | DH1100 | L3 | ATS |
|  | 05 | **DC1-DH1100-ATS-B11-05 Cx L3** |  | 2026-04-28 | 2026-06-24 |  |  |  |  |  |  |  |  |  |
| DC1-ATS-L3-CX-2150 |  | DC1-ATS-B11-05 FTE | 1d | 2026-04-28 A | 2026-04-28 A | DC1-SWD-L3-CX-2030 SS, DC1-ATS-L2-2100 | 100% | 2026-05-20 | 2026-05-20 | ROS | Commissioning | DH1100 | L3 | ATS |
| DC1-ATS-L3-CX-2155 |  | DC1-ATS-B11-05 L3 Startup | 2d | 2026-05-04 A | 2026-05-12 A | DC1-ATS-L3-CX-2150 | 100% | 2026-05-21 | 2026-05-22 | MAV | Commissioning | DH1100 | L3 | ATS |
| DC1-ATS-L3-CX-2160 |  | DC1-ATS-B11-05 BMS/EPMS Programming | 1d | 2026-05-28 A | 2026-06-24 A | DC1-ATS-L3-CX-2155, QTS-1007140 | 100% | 2026-06-03 | 2026-06-03 | PRM | Commissioning | DH1100 | L3 | ATS |
|  | 06 | **DC1-DH1100-ATS-B11-06 Cx L3** |  | 2026-04-28 | 2026-06-24 |  |  |  |  |  |  |  |  |  |
| DC1-ATS-L3-CX-2165 |  | DC1-ATS-B11-06 FTE | 1d | 2026-04-28 A | 2026-04-28 A | DC1-ATS-L2-2110 | 100% | 2026-05-20 | 2026-05-20 | ROS | Commissioning | DH1100 | L3 | ATS |
| DC1-ATS-L3-CX-2170 |  | DC1-ATS-B11-06 L3 Startup | 2d | 2026-05-04 A | 2026-05-12 A | DC1-ATS-L3-CX-2165 | 100% | 2026-05-21 | 2026-05-22 | MAV | Commissioning | DH1100 | L3 | ATS |
| DC1-ATS-L3-CX-2175 |  | DC1-ATS-B11-06 BMS/EPMS Programming | 1d | 2026-05-28 A | 2026-06-24 A | DC1-ATS-L3-CX-2170, QTS-1007140 | 100% | 2026-06-03 | 2026-06-03 | PRM | Commissioning | DH1100 | L3 | ATS |
|  | 03 | **DC1-DH1100 ATS-C11 Cx L3** |  | 2026-04-29 | 2026-06-24 |  |  |  |  |  |  |  |  |  |
|  | 01 | **DC1-DH1100-ATS-C11-01 Cx L3** |  | 2026-04-29 | 2026-06-24 |  |  |  |  |  |  |  |  |  |
| DC1-ATS-L3-CX-2180 |  | DC1-ATS-C11-01 FTE | 1d | 2026-04-29 A | 2026-04-29 A | DC1-SWD-L3-CX-2060 SS, DC1-ATS-L2-2120 | 100% |  |  | ROS | Commissioning | DH1100 | L3 | ATS |
| DC1-ATS-L3-CX-2185 |  | DC1-ATS-C11-01 L3 Startup | 2d | 2026-05-04 A | 2026-05-12 A | DC1-ATS-L3-CX-2180 | 100% | 2026-05-04 | 2026-05-05 | MAV | Commissioning | DH1100 | L3 | ATS |
| DC1-ATS-L3-CX-2190 |  | DC1-ATS-C11-01 BMS/EPMS Programming | 1d | 2026-05-28 A | 2026-06-24 A | DC1-ATS-L3-CX-2185, QTS-1007140 | 100% | 2026-06-03 | 2026-06-03 | PRM | Commissioning | DH1100 | L3 | ATS |
|  | 02 | **DC1-DH1100-ATS-C11-02 Cx L3** |  | 2026-04-29 | 2026-06-24 |  |  |  |  |  |  |  |  |  |
| DC1-ATS-L3-CX-2195 |  | DC1-ATS-C11-02 FTE | 1d | 2026-04-29 A | 2026-04-29 A | DC1-ATS-L2-2130 | 100% | 2026-05-20 | 2026-05-20 | ROS | Commissioning | DH1100 | L3 | ATS |
| DC1-ATS-L3-CX-2200 |  | DC1-ATS-C11-02 L3 Startup | 2d | 2026-05-04 A | 2026-05-12 A | DC1-ATS-L3-CX-2195 | 100% | 2026-05-21 | 2026-05-22 | MAV | Commissioning | DH1100 | L3 | ATS |
| DC1-ATS-L3-CX-2205 |  | DC1-ATS-C11-02 BMS/EPMS Programming | 1d | 2026-05-28 A | 2026-06-24 A | DC1-ATS-L3-CX-2200, QTS-1007140 | 100% | 2026-06-03 | 2026-06-03 | PRM | Commissioning | DH1100 | L3 | ATS |

Notes:
- DC1-ATS-L3-CX-2125: Steps: EC Startup Report; Vendor Startup
- DC1-ATS-L3-CX-2140: Steps: EC Startup Report; Vendor Startup
- DC1-ATS-L3-CX-2155: Steps: EC Startup Report; Vendor Startup
- DC1-ATS-L3-CX-2170: Steps: EC Startup Report; Vendor Startup
- DC1-ATS-L3-CX-2185: Steps: EC Startup Report; Vendor Startup
- DC1-ATS-L3-CX-2200: Steps: EC Startup Report; Vendor Startup

| ID | WBS | Activity | Duration | Start | Finish | Predecessors | Complete | Planned start | Planned finish | Vendor Responsible Party | Layton Discipline | Location | CX Level | Equipment |
| --- | --- | --- | --- | --- | --- | --- | --- | --- | --- | --- | --- | --- | --- | --- |
|  | 03 | **DC1-DH1100-ATS-C11-03 Cx L3** |  | 2026-04-29 | 2026-06-24 |  |  |  |  |  |  |  |  |  |
| DC1-ATS-L3-CX-2210 |  | DC1-ATS-C11-03 FTE | 1d | 2026-04-29 A | 2026-04-29 A | DC1-SWD-L3-CX-2060 SS, DC1-ATS-L2-2140 | 100% | 2026-05-20 | 2026-05-20 | ROS | Commissioning | DH1100 | L3 | ATS |
| DC1-ATS-L3-CX-2215 |  | DC1-ATS-C11-03 L3 Startup | 2d | 2026-05-04 A | 2026-05-12 A | DC1-ATS-L3-CX-2210 | 100% | 2026-05-21 | 2026-05-22 | MAV | Commissioning | DH1100 | L3 | ATS |
| DC1-ATS-L3-CX-2220 |  | DC1-ATS-C11-03 BMS/EPMS Programming | 1d | 2026-05-28 A | 2026-06-24 A | DC1-ATS-L3-CX-2215, QTS-1007140 | 100% | 2026-06-03 | 2026-06-03 | PRM | Commissioning | DH1100 | L3 | ATS |
|  | 04 | **DC1-DH1100-ATS-C11-04 Cx L3** |  | 2026-04-29 | 2026-06-24 |  |  |  |  |  |  |  |  |  |
| DC1-ATS-L3-CX-2225 |  | DC1-ATS-C11-04 FTE | 1d | 2026-04-29 A | 2026-04-29 A | DC1-ATS-L2-2150 | 100% | 2026-05-20 | 2026-05-20 | ROS | Commissioning | DH1100 | L3 | ATS |
| DC1-ATS-L3-CX-2230 |  | DC1-ATS-C11-04 L3 Startup | 2d | 2026-05-04 A | 2026-05-12 A | DC1-ATS-L3-CX-2225 | 100% | 2026-05-21 | 2026-05-22 | MAV | Commissioning | DH1100 | L3 | ATS |
| DC1-ATS-L3-CX-2235 |  | DC1-ATS-C11-04 BMS/EPMS Programming | 1d | 2026-05-28 A | 2026-06-24 A | DC1-ATS-L3-CX-2230, QTS-1007140 | 100% | 2026-06-03 | 2026-06-03 | PRM | Commissioning | DH1100 | L3 | ATS |
|  | 05 | **DC1-DH1100-ATS-C11-05 Cx L3** |  | 2026-04-29 | 2026-06-24 |  |  |  |  |  |  |  |  |  |
| DC1-ATS-L3-CX-2240 |  | DC1-ATS-C11-05 FTE | 1d | 2026-04-29 A | 2026-04-29 A | DC1-SWD-L3-CX-2060 SS, DC1-ATS-L2-2160 | 100% | 2026-05-20 | 2026-05-20 | ROS | Commissioning | DH1100 | L3 | ATS |
| DC1-ATS-L3-CX-2245 |  | DC1-ATS-C11-05 L3 Startup | 2d | 2026-05-04 A | 2026-05-12 A | DC1-ATS-L3-CX-2240 | 100% | 2026-05-21 | 2026-05-22 | MAV | Commissioning | DH1100 | L3 | ATS |
| DC1-ATS-L3-CX-2250 |  | DC1-ATS-C11-05 BMS/EPMS Programming | 1d | 2026-05-28 A | 2026-06-24 A | DC1-ATS-L3-CX-2245, QTS-1007140 | 100% | 2026-06-03 | 2026-06-03 | PRM | Commissioning | DH1100 | L3 | ATS |
|  | 06 | **DC1-DH1100-ATS-C11-06 Cx L3** |  | 2026-04-29 | 2026-06-24 |  |  |  |  |  |  |  |  |  |
| DC1-ATS-L3-CX-2255 |  | DC1-ATS-C11-06 FTE | 1d | 2026-04-29 A | 2026-04-29 A | DC1-ATS-L2-2170 | 100% | 2026-05-20 | 2026-05-20 | ROS | Commissioning | DH1100 | L3 | ATS |
| DC1-ATS-L3-CX-2260 |  | DC1-ATS-C11-06 L3 Startup | 2d | 2026-05-04 A | 2026-05-12 A | DC1-ATS-L3-CX-2255 | 100% | 2026-05-21 | 2026-05-22 | MAV | Commissioning | DH1100 | L3 | ATS |
| DC1-ATS-L3-CX-2265 |  | DC1-ATS-C11-06 BMS/EPMS Programming | 1d | 2026-05-28 A | 2026-06-24 A | DC1-ATS-L3-CX-2260, QTS-1007140 | 100% | 2026-06-03 | 2026-06-03 | PRM | Commissioning | DH1100 | L3 | ATS |
|  | 04 | **DC1-DH1100-ATS-D11 Cx L3** |  | 2026-04-29 | 2026-06-24 |  |  |  |  |  |  |  |  |  |
|  | 01 | **DC1-DH1100-ATS-D11-01 Cx L3** |  | 2026-04-29 | 2026-06-24 |  |  |  |  |  |  |  |  |  |
| DC1-ATS-L3-CX-2270 |  | DC1-ATS-D11-01 FTE | 1d | 2026-04-29 A | 2026-04-29 A | DC1-SWD-L3-CX-2090 SS, DC1-ATS-L2-2180 | 100% | 2026-05-20 | 2026-05-20 | ROS | Commissioning | DH1100 | L3 | ATS |
| DC1-ATS-L3-CX-2275 |  | DC1-ATS-D11-01 L3 Startup | 2d | 2026-05-04 A | 2026-05-15 A | DC1-ATS-L3-CX-2270 | 100% | 2026-05-21 | 2026-05-22 | MAV | Commissioning | DH1100 | L3 | ATS |
| DC1-ATS-L3-CX-2280 |  | DC1-ATS-D11-01 BMS/EPMS Programming | 1d | 2026-05-28 A | 2026-06-24 A | DC1-ATS-L3-CX-2275, QTS-1007140 | 100% | 2026-06-03 | 2026-06-03 | PRM | Commissioning | DH1100 | L3 | ATS |
|  | 02 | **DC1-DH1100-ATS-D11-02 Cx L3** |  | 2026-04-29 | 2026-06-24 |  |  |  |  |  |  |  |  |  |
| DC1-ATS-L3-CX-2285 |  | DC1-ATS-D11-02 FTE | 1d | 2026-04-29 A | 2026-04-29 A | DC1-ATS-L2-2190 | 100% | 2026-05-20 | 2026-05-20 | ROS | Commissioning | DH1100 | L3 | ATS |
| DC1-ATS-L3-CX-2290 |  | DC1-ATS-D11-02 L3 Startup | 2d | 2026-05-04 A | 2026-05-15 A | DC1-ATS-L3-CX-2285 | 100% | 2026-05-21 | 2026-05-22 | MAV | Commissioning | DH1100 | L3 | ATS |
| DC1-ATS-L3-CX-2295 |  | DC1-ATS-D11-02 BMS/EPMS Programming | 1d | 2026-05-28 A | 2026-06-24 A | DC1-ATS-L3-CX-2290, QTS-1007140 | 100% | 2026-06-03 | 2026-06-03 | PRM | Commissioning | DH1100 | L3 | ATS |

Notes:
- DC1-ATS-L3-CX-2215: Steps: EC Startup Report; Vendor Startup
- DC1-ATS-L3-CX-2230: Steps: EC Startup Report; Vendor Startup
- DC1-ATS-L3-CX-2245: Steps: EC Startup Report; Vendor Startup
- DC1-ATS-L3-CX-2260: Steps: EC Startup Report; Vendor Startup
- DC1-ATS-L3-CX-2275: Steps: EC Startup Report; Vendor Startup
- DC1-ATS-L3-CX-2290: Steps: EC Startup Report; Vendor Startup

| ID | WBS | Activity | Duration | Start | Finish | Predecessors | Complete | Planned start | Planned finish | Vendor Responsible Party | Layton Discipline | Location | CX Level | Equipment |
| --- | --- | --- | --- | --- | --- | --- | --- | --- | --- | --- | --- | --- | --- | --- |
|  | 03 | **DC1-DH1100-ATS-D11-03 Cx L3** |  | 2026-04-29 | 2026-06-24 |  |  |  |  |  |  |  |  |  |
| DC1-ATS-L3-CX-2300 |  | DC1-ATS-D11-03 FTE | 1d | 2026-04-29 A | 2026-04-29 A | DC1-SWD-L3-CX-2090 SS, DC1-ATS-L2-2200 | 100% | 2026-05-20 | 2026-05-20 | ROS | Commissioning | DH1100 | L3 | ATS |
| DC1-ATS-L3-CX-2305 |  | DC1-ATS-D11-03 L3 Startup | 2d | 2026-05-04 A | 2026-05-15 A | DC1-ATS-L3-CX-2300 | 100% | 2026-05-21 | 2026-05-22 | MAV | Commissioning | DH1100 | L3 | ATS |
| DC1-ATS-L3-CX-2310 |  | DC1-ATS-D11-03 BMS/EPMS Programming | 1d | 2026-05-28 A | 2026-06-24 A | DC1-ATS-L3-CX-2305, QTS-1007140 | 100% | 2026-06-03 | 2026-06-03 | PRM | Commissioning | DH1100 | L3 | ATS |
|  | 04 | **DC1-DH1100-ATS-D11-04 Cx L3** |  | 2026-04-29 | 2026-06-24 |  |  |  |  |  |  |  |  |  |
| DC1-ATS-L3-CX-2315 |  | DC1-ATS-D11-04 FTE | 1d | 2026-04-29 A | 2026-04-29 A | DC1-ATS-L2-2210 | 100% | 2026-05-20 | 2026-05-20 | ROS | Commissioning | DH1100 | L3 | ATS |
| DC1-ATS-L3-CX-2320 |  | DC1-ATS-D11-04 L3 Startup | 2d | 2026-05-04 A | 2026-05-15 A | DC1-ATS-L3-CX-2315 | 100% | 2026-05-21 | 2026-05-22 | MAV | Commissioning | DH1100 | L3 | ATS |
| DC1-ATS-L3-CX-2325 |  | DC1-ATS-D11-04 BMS/EPMS Programming | 1d | 2026-05-28 A | 2026-06-24 A | DC1-ATS-L3-CX-2320, QTS-1007140 | 100% | 2026-06-03 | 2026-06-03 | PRM | Commissioning | DH1100 | L3 | ATS |
|  | 05 | **DC1-DH1100-ATS-D11-05 Cx L3** |  | 2026-04-29 | 2026-06-24 |  |  |  |  |  |  |  |  |  |
| DC1-ATS-L3-CX-2330 |  | DC1-ATS-D11-05 FTE | 1d | 2026-04-29 A | 2026-04-29 A | DC1-SWD-L3-CX-2090 SS, DC1-ATS-L2-2220 | 100% | 2026-05-20 | 2026-05-20 | ROS | Commissioning | DH1100 | L3 | ATS |
| DC1-ATS-L3-CX-2335 |  | DC1-ATS-D11-05 L3 Startup | 2d | 2026-05-04 A | 2026-05-15 A | DC1-ATS-L3-CX-2330 | 100% | 2026-05-21 | 2026-05-22 | MAV | Commissioning | DH1100 | L3 | ATS |
| DC1-ATS-L3-CX-2340 |  | DC1-ATS-D11-05 BMS/EPMS Programming | 1d | 2026-05-28 A | 2026-06-24 A | DC1-ATS-L3-CX-2335, QTS-1007140 | 100% | 2026-06-03 | 2026-06-03 | PRM | Commissioning | DH1100 | L3 | ATS |
|  | 06 | **DC1-DH1100-ATS-D11-06 Cx L3** |  | 2026-04-29 | 2026-06-24 |  |  |  |  |  |  |  |  |  |
| DC1-ATS-L3-CX-2345 |  | DC1-ATS-D11-06 FTE | 1d | 2026-04-29 A | 2026-04-29 A | DC1-ATS-L2-2230 | 100% | 2026-05-20 | 2026-05-20 | ROS | Commissioning | DH1100 | L3 | ATS |
| DC1-ATS-L3-CX-2350 |  | DC1-ATS-D11-06 L3 Startup | 2d | 2026-05-04 A | 2026-05-15 A | DC1-ATS-L3-CX-2345 | 100% | 2026-05-21 | 2026-05-22 | MAV | Commissioning | DH1100 | L3 | ATS |
| DC1-ATS-L3-CX-2355 |  | DC1-ATS-D11-06 BMS/EPMS Programming | 1d | 2026-05-28 A | 2026-06-24 A | DC1-ATS-L3-CX-2350, QTS-1007140 | 100% | 2026-06-03 | 2026-06-03 | PRM | Commissioning | DH1100 | L3 | ATS |
|  | 05 | **DC1-DH1100 ATS-E11 Cx L3** |  | 2026-04-30 | 2026-06-24 |  |  |  |  |  |  |  |  |  |
|  | 01 | **DC1-DH1100-ATS-E11-01 Cx L3** |  | 2026-04-30 | 2026-06-24 |  |  |  |  |  |  |  |  |  |
| DC1-ATS-L3-CX-2360 |  | DC1-ATS-E11-01 FTE | 1d | 2026-04-30 A | 2026-04-30 A | DC1-SWD-L3-CX-2120 SS, DC1-ATS-L2-2240 | 100% | 2026-05-20 | 2026-05-20 | ROS | Commissioning | DH1100 | L3 | ATS |
| DC1-ATS-L3-CX-2365 |  | DC1-ATS-E11-01 L3 Startup | 2d | 2026-05-04 A | 2026-05-15 A | DC1-ATS-L3-CX-2360 | 100% | 2026-05-21 | 2026-05-22 | MAV | Commissioning | DH1100 | L3 | ATS |
| DC1-ATS-L3-CX-2370 |  | DC1-ATS-E11-01 BMS/EPMS Programming | 1d | 2026-05-28 A | 2026-06-24 A | DC1-ATS-L3-CX-2365, QTS-1007140 | 100% | 2026-06-03 | 2026-06-03 | PRM | Commissioning | DH1100 | L3 | ATS |
|  | 02 | **DC1-DH1100-ATS-E11-02 Cx L3** |  | 2026-04-30 | 2026-06-24 |  |  |  |  |  |  |  |  |  |
| DC1-ATS-L3-CX-2375 |  | DC1-ATS-E11-02 FTE | 1d | 2026-04-30 A | 2026-04-30 A | DC1-ATS-L2-2250 | 100% | 2026-05-20 | 2026-05-20 | ROS | Commissioning | DH1100 | L3 | ATS |
| DC1-ATS-L3-CX-2380 |  | DC1-ATS-E11-02 L3 Startup | 2d | 2026-05-04 A | 2026-05-15 A | DC1-ATS-L3-CX-2375 | 100% | 2026-05-21 | 2026-05-22 | MAV | Commissioning | DH1100 | L3 | ATS |
| DC1-ATS-L3-CX-2385 |  | DC1-ATS-E11-02 BMS/EPMS Programming | 1d | 2026-05-28 A | 2026-06-24 A | DC1-ATS-L3-CX-2380, QTS-1007140 | 100% | 2026-06-03 | 2026-06-03 | PRM | Commissioning | DH1100 | L3 | ATS |

Notes:
- DC1-ATS-L3-CX-2305: Steps: EC Startup Report; Vendor Startup
- DC1-ATS-L3-CX-2320: Steps: EC Startup Report; Vendor Startup
- DC1-ATS-L3-CX-2335: Steps: EC Startup Report; Vendor Startup
- DC1-ATS-L3-CX-2350: Steps: EC Startup Report; Vendor Startup
- DC1-ATS-L3-CX-2365: Steps: EC Startup Report; Vendor Startup
- DC1-ATS-L3-CX-2380: Steps: EC Startup Report; Vendor Startup

| ID | WBS | Activity | Duration | Start | Finish | Predecessors | Complete | Planned start | Planned finish | Vendor Responsible Party | Layton Discipline | Location | CX Level | Equipment |
| --- | --- | --- | --- | --- | --- | --- | --- | --- | --- | --- | --- | --- | --- | --- |
|  | 03 | **DC1-DH1100-ATS-E11-03 Cx L3** |  | 2026-04-30 | 2026-06-24 |  |  |  |  |  |  |  |  |  |
| DC1-ATS-L3-CX-2390 |  | DC1-ATS-E11-03 FTE | 1d | 2026-04-30 A | 2026-04-30 A | DC1-SWD-L3-CX-2120 SS, DC1-ATS-L2-2260 | 100% | 2026-05-20 | 2026-05-20 | ROS | Commissioning | DH1100 | L3 | ATS |
| DC1-ATS-L3-CX-2395 |  | DC1-ATS-E11-03 L3 Startup | 2d | 2026-05-04 A | 2026-05-15 A | DC1-ATS-L3-CX-2390 | 100% | 2026-05-21 | 2026-05-22 | MAV | Commissioning | DH1100 | L3 | ATS |
| DC1-ATS-L3-CX-2400 |  | DC1-ATS-E11-03 BMS/EPMS Programming | 1d | 2026-05-28 A | 2026-06-24 A | DC1-ATS-L3-CX-2395, QTS-1007140 | 100% | 2026-06-03 | 2026-06-03 | PRM | Commissioning | DH1100 | L3 | ATS |
|  | 04 | **DC1-DH1100-ATS-E11-04 Cx L3** |  | 2026-04-30 | 2026-06-24 |  |  |  |  |  |  |  |  |  |
| DC1-ATS-L3-CX-2405 |  | DC1-ATS-E11-04 FTE | 1d | 2026-04-30 A | 2026-04-30 A | DC1-ATS-L2-2270 | 100% | 2026-05-20 | 2026-05-20 | ROS | Commissioning | DH1100 | L3 | ATS |
| DC1-ATS-L3-CX-2410 |  | DC1-ATS-E11-04 L3 Startup | 2d | 2026-05-04 A | 2026-05-15 A | DC1-ATS-L3-CX-2405 | 100% | 2026-05-21 | 2026-05-22 | MAV | Commissioning | DH1100 | L3 | ATS |
| DC1-ATS-L3-CX-2415 |  | DC1-ATS-E11-04 BMS/EPMS Programming | 1d | 2026-05-28 A | 2026-06-24 A | DC1-ATS-L3-CX-2410, QTS-1007140 | 100% | 2026-06-03 | 2026-06-03 | PRM | Commissioning | DH1100 | L3 | ATS |
|  | 05 | **DC1-DH1100-ATS-E11-05 Cx L3** |  | 2026-04-30 | 2026-06-24 |  |  |  |  |  |  |  |  |  |
| DC1-ATS-L3-CX-2420 |  | DC1-ATS-E11-05 FTE | 1d | 2026-04-30 A | 2026-04-30 A | DC1-SWD-L3-CX-2120 SS, DC1-ATS-L2-2280 | 100% | 2026-05-20 | 2026-05-20 | ROS | Commissioning | DH1100 | L3 | ATS |
| DC1-ATS-L3-CX-2425 |  | DC1-ATS-E11-05 L3 Startup | 2d | 2026-05-04 A | 2026-05-15 A | DC1-ATS-L3-CX-2420 | 100% | 2026-05-21 | 2026-05-22 | MAV | Commissioning | DH1100 | L3 | ATS |
| DC1-ATS-L3-CX-2430 |  | DC1-ATS-E11-05 BMS/EPMS Programming | 1d | 2026-05-28 A | 2026-06-24 A | DC1-ATS-L3-CX-2425, QTS-1007140 | 100% | 2026-06-03 | 2026-06-03 | PRM | Commissioning | DH1100 | L3 | ATS |
|  | 06 | **DC1-DH1100-ATS-E11-06 Cx L3** |  | 2026-04-30 | 2026-06-24 |  |  |  |  |  |  |  |  |  |
| DC1-ATS-L3-CX-2435 |  | DC1-ATS-E11-06 FTE | 1d | 2026-04-30 A | 2026-04-30 A | DC1-ATS-L2-2290 | 100% | 2026-05-20 | 2026-05-20 | ROS | Commissioning | DH1100 | L3 | ATS |
| DC1-ATS-L3-CX-2440 |  | DC1-ATS-E11-06 L3 Startup | 2d | 2026-05-04 A | 2026-05-15 A | DC1-ATS-L3-CX-2435 | 100% | 2026-05-21 | 2026-05-22 | MAV | Commissioning | DH1100 | L3 | ATS |
| DC1-ATS-L3-CX-2445 |  | DC1-ATS-E11-06 BMS/EPMS Programming | 1d | 2026-05-28 A | 2026-06-24 A | DC1-ATS-L3-CX-2440, QTS-1007140 | 100% | 2026-06-03 | 2026-06-03 | PRM | Commissioning | DH1100 | L3 | ATS |
|  | 06 | **DC1-DH1100 ATS-F11 Cx L3** |  | 2026-04-30 | 2026-06-24 |  |  |  |  |  |  |  |  |  |
|  | 01 | **DC1-DH1100-ATS-F11-01 Cx L3** |  | 2026-04-30 | 2026-06-24 |  |  |  |  |  |  |  |  |  |
| DC1-ATS-L3-CX-2450 |  | DC1-ATS-F11-01 FTE | 1d | 2026-04-30 A | 2026-04-30 A | DC1-SWD-L3-CX-2150 SS, DC1-ATS-L2-2300 | 100% |  |  | ROS | Commissioning | DH1100 | L3 | ATS |
| DC1-ATS-L3-CX-2455 |  | DC1-ATS-F11-01 L3 Startup | 2d | 2026-05-04 A | 2026-05-15 A | DC1-ATS-L3-CX-2450 | 100% | 2026-05-04 | 2026-05-05 | MAV | Commissioning | DH1100 | L3 | ATS |
| DC1-ATS-L3-CX-2460 |  | DC1-ATS-F11-01 BMS/EPMS Programming | 1d | 2026-05-28 A | 2026-06-24 A | DC1-ATS-L3-CX-2455, QTS-1007140 | 100% | 2026-06-03 | 2026-06-03 | PRM | Commissioning | DH1100 | L3 | ATS |
|  | 02 | **DC1-DH1100-ATS-F11-02 Cx L3** |  | 2026-04-30 | 2026-06-24 |  |  |  |  |  |  |  |  |  |
| DC1-ATS-L3-CX-2465 |  | DC1-ATS-F11-02 FTE | 1d | 2026-04-30 A | 2026-04-30 A | DC1-ATS-L2-2310 | 100% |  |  | ROS | Commissioning | DH1100 | L3 | ATS |
| DC1-ATS-L3-CX-2470 |  | DC1-ATS-F11-02 L3 Startup | 2d | 2026-05-04 A | 2026-05-15 A | DC1-ATS-L3-CX-2465 | 100% | 2026-05-04 | 2026-05-05 | MAV | Commissioning | DH1100 | L3 | ATS |
| DC1-ATS-L3-CX-2475 |  | DC1-ATS-F11-02 BMS/EPMS Programming | 1d | 2026-05-28 A | 2026-06-24 A | DC1-ATS-L3-CX-2470, QTS-1007140 | 100% | 2026-06-03 | 2026-06-03 | PRM | Commissioning | DH1100 | L3 | ATS |

Notes:
- DC1-ATS-L3-CX-2395: Steps: EC Startup Report; Vendor Startup
- DC1-ATS-L3-CX-2410: Steps: EC Startup Report; Vendor Startup
- DC1-ATS-L3-CX-2425: Steps: EC Startup Report; Vendor Startup
- DC1-ATS-L3-CX-2440: Steps: EC Startup Report; Vendor Startup
- DC1-ATS-L3-CX-2455: Steps: EC Startup Report; Vendor Startup
- DC1-ATS-L3-CX-2470: Steps: EC Startup Report; Vendor Startup

| ID | WBS | Activity | Duration | Start | Finish | Predecessors | Complete | Planned start | Planned finish | Vendor Responsible Party | Layton Discipline | Location | CX Level | Equipment | Layton Super |
| --- | --- | --- | --- | --- | --- | --- | --- | --- | --- | --- | --- | --- | --- | --- | --- |
|  | 03 | **DC1-DH1100-ATS-F11-03 Cx L3** |  | 2026-04-30 | 2026-06-24 |  |  |  |  |  |  |  |  |  |  |
| DC1-ATS-L3-CX-2480 |  | DC1-ATS-F11-03 FTE | 1d | 2026-04-30 A | 2026-04-30 A | DC1-SWD-L3-CX-2150 SS, DC1-ATS-L2-2320 | 100% |  |  | ROS | Commissioning | DH1100 | L3 | ATS |  |
| DC1-ATS-L3-CX-2485 |  | DC1-ATS-F11-03 L3 Startup | 2d | 2026-05-04 A | 2026-05-15 A | DC1-ATS-L3-CX-2480 | 100% | 2026-05-04 | 2026-05-05 | MAV | Commissioning | DH1100 | L3 | ATS |  |
| DC1-ATS-L3-CX-2490 |  | DC1-ATS-F11-03 BMS/EPMS Programming | 1d | 2026-05-28 A | 2026-06-24 A | DC1-ATS-L3-CX-2485, QTS-1007140 | 100% | 2026-06-03 | 2026-06-03 | PRM | Commissioning | DH1100 | L3 | ATS |  |
|  | 04 | **DC1-DH1100-ATS-F11-04 Cx L3** |  | 2026-04-30 | 2026-06-24 |  |  |  |  |  |  |  |  |  |  |
| DC1-ATS-L3-CX-2495 |  | DC1-ATS-F11-04 FTE | 1d | 2026-04-30 A | 2026-04-30 A | DC1-ATS-L2-2330 | 100% |  |  | ROS | Commissioning | DH1100 | L3 | ATS |  |
| DC1-ATS-L3-CX-2500 |  | DC1-ATS-F11-04 L3 Startup | 2d | 2026-05-04 A | 2026-05-15 A | DC1-ATS-L3-CX-2495 | 100% | 2026-05-04 | 2026-05-05 | MAV | Commissioning | DH1100 | L3 | ATS |  |
| DC1-ATS-L3-CX-2505 |  | DC1-ATS-F11-04 BMS/EPMS Programming | 1d | 2026-05-28 A | 2026-06-24 A | DC1-ATS-L3-CX-2500, QTS-1007140 | 100% | 2026-06-03 | 2026-06-03 | PRM | Commissioning | DH1100 | L3 | ATS |  |
|  | 05 | **DC1-DH1100-ATS-F11-05 Cx L3** |  | 2026-04-30 | 2026-06-24 |  |  |  |  |  |  |  |  |  |  |
| DC1-ATS-L3-CX-2510 |  | DC1-ATS-F11-05 FTE | 1d | 2026-04-30 A | 2026-04-30 A | DC1-SWD-L3-CX-2150 SS, DC1-ATS-L2-2340 | 100% |  |  | ROS | Commissioning | DH1100 | L3 | ATS |  |
| DC1-ATS-L3-CX-2515 |  | DC1-ATS-F11-05 L3 Startup | 2d | 2026-05-04 A | 2026-05-15 A | DC1-ATS-L3-CX-2510 | 100% | 2026-05-04 | 2026-05-05 | MAV | Commissioning | DH1100 | L3 | ATS |  |
| DC1-ATS-L3-CX-2520 |  | DC1-ATS-F11-05 BMS/EPMS Programming | 1d | 2026-05-28 A | 2026-06-24 A | DC1-ATS-L3-CX-2515, QTS-1007140 | 100% | 2026-06-03 | 2026-06-03 | PRM | Commissioning | DH1100 | L3 | ATS |  |
|  | 06 | **DC1-DH1100-ATS-F11-06 Cx L3** |  | 2026-04-30 | 2026-06-24 |  |  |  |  |  |  |  |  |  |  |
| DC1-ATS-L3-CX-2525 |  | DC1-ATS-F11-06 FTE | 1d | 2026-04-30 A | 2026-04-30 A | DC1-ATS-L2-2350 | 100% |  |  | ROS | Commissioning | DH1100 | L3 | ATS |  |
| DC1-ATS-L3-CX-2530 |  | DC1-ATS-F11-06 L3 Startup | 2d | 2026-05-04 A | 2026-05-15 A | DC1-ATS-L3-CX-2525 | 100% | 2026-05-04 | 2026-05-05 | MAV | Commissioning | DH1100 | L3 | ATS |  |
| DC1-ATS-L3-CX-2535 |  | DC1-ATS-F11-06 BMS/EPMS Programming | 1d | 2026-05-28 A | 2026-06-24 A | DC1-ATS-L3-CX-2530, QTS-1007140 | 100% | 2026-06-03 | 2026-06-03 | PRM | Commissioning | DH1100 | L3 | ATS |  |
|  | 06 | **DC1-DH1100 CODs Cx L3** |  | 2026-04-29 | 2026-06-01 |  |  |  |  |  |  |  |  |  |  |
|  | 01 | **DC1-DH1100-COD-A11 Cx L3** |  | 2026-04-29 | 2026-06-01 |  |  |  |  |  |  |  |  |  |  |
|  | 01 | **DC1-DH1100-COD-A11-01 Cx L3** |  | 2026-05-01 | 2026-06-01 |  |  |  |  |  |  |  |  |  |  |
| DC1-COD-L3-CX-2000 |  | DC1-COD-A11-01 FTE | 1d | 2026-05-01 A | 2026-05-01 A | DC1-ATS-L3-CX-2000, DC1-COD-L2-2000, DC1-MOD2-L3-Cx-2000 | 100% |  |  | ROS | Commissioning | DH1100 | L3 | COD | Michael Guard |
| DC1-COD-L3-CX-2005 |  | DC1-COD-A11-01 L3 Startup | 2d | 2026-05-04 A | 2026-05-18 A | DC1-COD-L3-CX-2000 | 100% | 2026-05-04 | 2026-05-05 | SIE | Commissioning | DH1100 | L3 | COD |  |
| DC1-COD-L3-CX-2010 |  | DC1-COD-A11-01 BMS/EPMS Programming | 1d | 2026-06-01 A | 2026-06-01 A | DC1-COD-L3-CX-2005, QTS-1007140 | 100% |  |  | PRM | Commissioning | DH1100 | L3 | COD |  |
|  | 02 | **DC1-DH1100-COD-A11-02 Cx L3** |  | 2026-04-29 | 2026-06-01 |  |  |  |  |  |  |  |  |  |  |
| DC1-COD-L3-CX-2015 |  | DC1-COD-A11-02 FTE | 1d | 2026-04-29 A | 2026-04-29 A | DC1-ATS-L3-CX-2015, DC1-COD-L2-2010 | 100% | 2026-04-28 | 2026-04-28 | ROS | Commissioning | DH1100 | L3 | COD | Michael Guard |
| DC1-COD-L3-CX-2020 |  | DC1-COD-A11-02 L3 Startup | 2d | 2026-05-04 A | 2026-05-18 A | DC1-COD-L3-CX-2015 | 100% | 2026-05-04 | 2026-05-05 | SIE | Commissioning | DH1100 | L3 | COD |  |
| DC1-COD-L3-CX-2025 |  | DC1-COD-A11-02 BMS/EPMS Programming | 1d | 2026-06-01 A | 2026-06-01 A | DC1-COD-L3-CX-2020, QTS-1007140 | 100% | 2026-06-03 | 2026-06-03 | PRM | Commissioning | DH1100 | L3 | COD |  |

Notes:
- DC1-ATS-L3-CX-2485: Steps: EC Startup Report; Vendor Startup
- DC1-ATS-L3-CX-2500: Steps: EC Startup Report; Vendor Startup
- DC1-ATS-L3-CX-2515: Steps: EC Startup Report; Vendor Startup
- DC1-ATS-L3-CX-2530: Steps: EC Startup Report; Vendor Startup
- DC1-COD-L3-CX-2005: Steps: EC Startup Report; Vendor Startup
- DC1-COD-L3-CX-2020: Steps: EC Startup Report; Vendor Startup

| ID | WBS | Activity | Duration | Start | Finish | Predecessors | Complete | Planned start | Planned finish | Vendor Responsible Party | Layton Discipline | Location | CX Level | Equipment | Layton Super |
| --- | --- | --- | --- | --- | --- | --- | --- | --- | --- | --- | --- | --- | --- | --- | --- |
|  | 03 | **DC1-DH1100-COD-A11-03 Cx L3** |  | 2026-04-29 | 2026-06-01 |  |  |  |  |  |  |  |  |  |  |
| DC1-COD-L3-CX-2030 |  | DC1-COD-A11-03 FTE | 1d | 2026-04-29 A | 2026-04-29 A | DC1-ATS-L3-CX-2030, DC1-COD-L2-2020 | 100% |  |  | ROS | Commissioning | DH1100 | L3 | COD | Michael Guard |
| DC1-COD-L3-CX-2035 |  | DC1-COD-A11-03 L3 Startup | 2d | 2026-05-04 A | 2026-05-18 A | DC1-COD-L3-CX-2030 | 100% | 2026-05-04 | 2026-05-05 | SIE | Commissioning | DH1100 | L3 | COD |  |
| DC1-COD-L3-CX-2040 |  | DC1-COD-A11-03 BMS/EPMS Programming | 1d | 2026-06-01 A | 2026-06-01 A | DC1-COD-L3-CX-2035, QTS-1007140 | 100% | 2026-06-03 | 2026-06-03 | PRM | Commissioning | DH1100 | L3 | COD |  |
|  | 04 | **DC1-DH1100-COD-A11-04 Cx L3** |  | 2026-05-01 | 2026-06-01 |  |  |  |  |  |  |  |  |  |  |
| DC1-COD-L3-CX-2045 |  | DC1-COD-A11-04 FTE | 1d | 2026-05-01 A | 2026-05-01 A | DC1-COD-L2-2030 | 100% | 2026-05-14 | 2026-05-14 | ROS | Commissioning | DH1100 | L3 | COD | Michael Guard |
| DC1-COD-L3-CX-2050 |  | DC1-COD-A11-04 L3 Startup | 2d | 2026-05-04 A | 2026-05-18 A | DC1-COD-L3-CX-2045 | 100% | 2026-05-20 | 2026-05-21 | SIE | Commissioning | DH1100 | L3 | COD |  |
| DC1-COD-L3-CX-2055 |  | DC1-COD-A11-04 BMS/EPMS Programming | 1d | 2026-06-01 A | 2026-06-01 A | DC1-COD-L3-CX-2050, QTS-1007140 | 100% | 2026-06-03 | 2026-06-03 | PRM | Commissioning | DH1100 | L3 | COD |  |
|  | 05 | **DC1-DH1100-COD-A11-05 Cx L3** |  | 2026-05-01 | 2026-06-01 |  |  |  |  |  |  |  |  |  |  |
| DC1-COD-L3-CX-2060 |  | DC1-COD-A11-05 FTE | 1d | 2026-05-01 A | 2026-05-01 A | DC1-COD-L2-2040 | 100% | 2026-05-14 | 2026-05-14 | ROS | Commissioning | DH1100 | L3 | COD | Michael Guard |
| DC1-COD-L3-CX-2065 |  | DC1-COD-A11-05 L3 Startup | 2d | 2026-05-04 A | 2026-05-18 A | DC1-COD-L3-CX-2060 | 100% | 2026-05-20 | 2026-05-21 | SIE | Commissioning | DH1100 | L3 | COD |  |
| DC1-COD-L3-CX-2070 |  | DC1-COD-A11-05 BMS/EPMS Programming | 1d | 2026-06-01 A | 2026-06-01 A | DC1-COD-L3-CX-2065, QTS-1007140 | 100% | 2026-06-03 | 2026-06-03 | PRM | Commissioning | DH1100 | L3 | COD |  |
|  | 06 | **DC1-DH1100-COD-A11-06 Cx L3** |  | 2026-05-01 | 2026-06-01 |  |  |  |  |  |  |  |  |  |  |
| DC1-COD-L3-CX-2075 |  | DC1-COD-A11-06 FTE | 1d | 2026-05-01 A | 2026-05-01 A | DC1-COD-L2-2050 | 100% | 2026-05-14 | 2026-05-14 | ROS | Commissioning | DH1100 | L3 | COD | Michael Guard |
| DC1-COD-L3-CX-2080 |  | DC1-COD-A11-06 L3 Startup | 2d | 2026-05-04 A | 2026-05-18 A | DC1-COD-L3-CX-2075 | 100% | 2026-05-20 | 2026-05-21 | SIE | Commissioning | DH1100 | L3 | COD |  |
| DC1-COD-L3-CX-2085 |  | DC1-COD-A11-06 BMS/EPMS Programming | 1d | 2026-06-01 A | 2026-06-01 A | DC1-COD-L3-CX-2080, QTS-1007140 | 100% | 2026-06-03 | 2026-06-03 | PRM | Commissioning | DH1100 | L3 | COD |  |
|  | 02 | **DC1-DH1100-COD-B11 Cx L3** |  | 2026-05-01 | 2026-06-01 |  |  |  |  |  |  |  |  |  |  |
|  | 01 | **DC1-DH1100-COD-B11-01 Cx L3** |  | 2026-05-01 | 2026-06-01 |  |  |  |  |  |  |  |  |  |  |
| DC1-COD-L3-CX-2090 |  | DC1-COD-B11-01 FTE | 1d | 2026-05-01 A | 2026-05-01 A | DC1-ATS-L3-CX-2090, DC1-COD-L2-2060, DC1-MOD2-L3-Cx-2000 | 100% | 2026-05-20 | 2026-05-20 | ROS | Commissioning | DH1100 | L3 | COD |  |
| DC1-COD-L3-CX-2095 |  | DC1-COD-B11-01 L3 Startup | 2d | 2026-05-04 A | 2026-05-18 A | DC1-COD-L3-CX-2090 | 100% | 2026-05-21 | 2026-05-22 | SIE | Commissioning | DH1100 | L3 | COD |  |
| DC1-COD-L3-CX-2100 |  | DC1-COD-B11-01 BMS/EPMS Programming | 1d | 2026-06-01 A | 2026-06-01 A | DC1-COD-L3-CX-2095, QTS-1007140 | 100% | 2026-06-03 | 2026-06-03 | PRM | Commissioning | DH1100 | L3 | COD |  |
|  | 02 | **DC1-DH1100-COD-B11-02 Cx L3** |  | 2026-05-01 | 2026-06-01 |  |  |  |  |  |  |  |  |  |  |
| DC1-COD-L3-CX-2105 |  | DC1-COD-B11-02 FTE | 1d | 2026-05-01 A | 2026-05-01 A | DC1-ATS-L3-CX-2105, DC1-COD-L2-2070 | 100% | 2026-05-20 | 2026-05-20 | ROS | Commissioning | DH1100 | L3 | COD |  |
| DC1-COD-L3-CX-2110 |  | DC1-COD-B11-02 L3 Startup | 2d | 2026-05-04 A | 2026-05-18 A | DC1-COD-L3-CX-2105 | 100% | 2026-05-21 | 2026-05-22 | SIE | Commissioning | DH1100 | L3 | COD |  |
| DC1-COD-L3-CX-2115 |  | DC1-COD-B11-02 BMS/EPMS Programming | 1d | 2026-06-01 A | 2026-06-01 A | DC1-COD-L3-CX-2110, QTS-1007140 | 100% | 2026-06-03 | 2026-06-03 | PRM | Commissioning | DH1100 | L3 | COD |  |

Notes:
- DC1-COD-L3-CX-2035: Steps: EC Startup Report; Vendor Startup
- DC1-COD-L3-CX-2050: Steps: EC Startup Report; Vendor Startup
- DC1-COD-L3-CX-2065: Steps: EC Startup Report; Vendor Startup
- DC1-COD-L3-CX-2080: Steps: EC Startup Report; Vendor Startup
- DC1-COD-L3-CX-2095: Steps: EC Startup Report; Vendor Startup
- DC1-COD-L3-CX-2110: Steps: EC Startup Report; Vendor Startup

| ID | WBS | Activity | Duration | Start | Finish | Predecessors | Complete | Planned start | Planned finish | Vendor Responsible Party | Layton Discipline | Location | CX Level | Equipment |
| --- | --- | --- | --- | --- | --- | --- | --- | --- | --- | --- | --- | --- | --- | --- |
|  | 03 | **DC1-DH1100-COD-B11-03 Cx L3** |  | 2026-05-01 | 2026-06-01 |  |  |  |  |  |  |  |  |  |
| DC1-COD-L3-CX-2120 |  | DC1-COD-B11-03 FTE | 1d | 2026-05-01 A | 2026-05-01 A | DC1-ATS-L3-CX-2120, DC1-COD-L2-2080 | 100% | 2026-05-20 | 2026-05-20 | ROS | Commissioning | DH1100 | L3 | COD |
| DC1-COD-L3-CX-2125 |  | DC1-COD-B11-03 L3 Startup | 2d | 2026-05-04 A | 2026-05-18 A | DC1-COD-L3-CX-2120 | 100% | 2026-05-21 | 2026-05-22 | SIE | Commissioning | DH1100 | L3 | COD |
| DC1-COD-L3-CX-2130 |  | DC1-COD-B11-03 BMS/EPMS Programming | 1d | 2026-06-01 A | 2026-06-01 A | DC1-COD-L3-CX-2125, QTS-1007140 | 100% | 2026-06-03 | 2026-06-03 | PRM | Commissioning | DH1100 | L3 | COD |
|  | 04 | **DC1-DH1100-COD-B11-04 Cx L3** |  | 2026-05-01 | 2026-06-01 |  |  |  |  |  |  |  |  |  |
| DC1-COD-L3-CX-2135 |  | DC1-COD-B11-04 FTE | 1d | 2026-05-01 A | 2026-05-01 A | DC1-ATS-L3-CX-2135, DC1-COD-L2-2090 | 100% | 2026-05-20 | 2026-05-20 | ROS | Commissioning | DH1100 | L3 | COD |
| DC1-COD-L3-CX-2140 |  | DC1-COD-B11-04 L3 Startup | 2d | 2026-05-04 A | 2026-05-18 A | DC1-COD-L3-CX-2135 | 100% | 2026-05-21 | 2026-05-22 | SIE | Commissioning | DH1100 | L3 | COD |
| DC1-COD-L3-CX-2145 |  | DC1-COD-B11-04 BMS/EPMS Programming | 1d | 2026-06-01 A | 2026-06-01 A | DC1-COD-L3-CX-2140, QTS-1007140 | 100% | 2026-06-03 | 2026-06-03 | PRM | Commissioning | DH1100 | L3 | COD |
|  | 05 | **DC1-DH1100-COD-B11-05 Cx L3** |  | 2026-05-01 | 2026-06-01 |  |  |  |  |  |  |  |  |  |
| DC1-COD-L3-CX-2150 |  | DC1-COD-B11-05 FTE | 1d | 2026-05-01 A | 2026-05-01 A | DC1-ATS-L3-CX-2150, DC1-COD-L2-2100 | 100% | 2026-05-20 | 2026-05-20 | ROS | Commissioning | DH1100 | L3 | COD |
| DC1-COD-L3-CX-2155 |  | DC1-COD-B11-05 L3 Startup | 2d | 2026-05-04 A | 2026-05-18 A | DC1-COD-L3-CX-2150 | 100% | 2026-05-21 | 2026-05-22 | SIE | Commissioning | DH1100 | L3 | COD |
| DC1-COD-L3-CX-2160 |  | DC1-COD-B11-05 BMS/EPMS Programming | 1d | 2026-06-01 A | 2026-06-01 A | DC1-COD-L3-CX-2155, QTS-1007140 | 100% | 2026-06-03 | 2026-06-03 | PRM | Commissioning | DH1100 | L3 | COD |
|  | 06 | **DC1-DH1100-COD-B11-06 Cx L3** |  | 2026-05-01 | 2026-06-01 |  |  |  |  |  |  |  |  |  |
| DC1-COD-L3-CX-2165 |  | DC1-COD-B11-06 FTE | 1d | 2026-05-01 A | 2026-05-01 A | DC1-ATS-L3-CX-2165, DC1-COD-L2-2110 | 100% | 2026-05-20 | 2026-05-20 | ROS | Commissioning | DH1100 | L3 | COD |
| DC1-COD-L3-CX-2170 |  | DC1-COD-B11-06 L3 Startup | 2d | 2026-05-04 A | 2026-05-18 A | DC1-COD-L3-CX-2165 | 100% | 2026-05-21 | 2026-05-22 | SIE | Commissioning | DH1100 | L3 | COD |
| DC1-COD-L3-CX-2175 |  | DC1-COD-B11-06 BMS/EPMS Programming | 1d | 2026-06-01 A | 2026-06-01 A | DC1-COD-L3-CX-2170, QTS-1007140 | 100% | 2026-06-03 | 2026-06-03 | PRM | Commissioning | DH1100 | L3 | COD |
|  | 03 | **DC1-DH1100-COD-C11 Cx L3** |  | 2026-05-04 | 2026-06-01 |  |  |  |  |  |  |  |  |  |
|  | 01 | **DC1-DH1100-COD-C11-01 Cx L3** |  | 2026-05-04 | 2026-06-01 |  |  |  |  |  |  |  |  |  |
| DC1-COD-L3-CX-2180 |  | DC1-COD-C11-01 FTE | 1d | 2026-05-04 A | 2026-05-04 A | DC1-ATS-L3-CX-2180, DC1-COD-L2-2120 | 100% |  |  | ROS | Commissioning | DH1100 | L3 | COD |
| DC1-COD-L3-CX-2185 |  | DC1-COD-C11-01 L3 Startup | 2d | 2026-05-05 A | 2026-05-18 A | DC1-COD-L3-CX-2180 | 100% | 2026-05-07 | 2026-05-08 | SIE | Commissioning | DH1100 | L3 | COD |
| DC1-COD-L3-CX-2190 |  | DC1-COD-C11-01 BMS/EPMS Programming | 1d | 2026-06-01 A | 2026-06-01 A | DC1-COD-L3-CX-2185, QTS-1007140 | 100% | 2026-06-03 | 2026-06-03 | PRM | Commissioning | DH1100 | L3 | COD |
|  | 02 | **DC1-DH1100-COD-C11-02 Cx L3** |  | 2026-05-04 | 2026-06-01 |  |  |  |  |  |  |  |  |  |
| DC1-COD-L3-CX-2195 |  | DC1-COD-C11-02 FTE | 1d | 2026-05-04 A | 2026-05-04 A | DC1-ATS-L3-CX-2195, DC1-COD-L2-2130 | 100% | 2026-05-20 | 2026-05-20 | ROS | Commissioning | DH1100 | L3 | COD |
| DC1-COD-L3-CX-2200 |  | DC1-COD-C11-02 L3 Startup | 2d | 2026-05-05 A | 2026-05-18 A | DC1-COD-L3-CX-2195 | 100% | 2026-05-05 | 2026-05-06 | SIE | Commissioning | DH1100 | L3 | COD |
| DC1-COD-L3-CX-2205 |  | DC1-COD-C11-02 BMS/EPMS Programming | 1d | 2026-06-01 A | 2026-06-01 A | DC1-COD-L3-CX-2200, QTS-1007140 | 100% | 2026-06-03 | 2026-06-03 | PRM | Commissioning | DH1100 | L3 | COD |

Notes:
- DC1-COD-L3-CX-2125: Steps: EC Startup Report; Vendor Startup
- DC1-COD-L3-CX-2140: Steps: EC Startup Report; Vendor Startup
- DC1-COD-L3-CX-2155: Steps: EC Startup Report; Vendor Startup
- DC1-COD-L3-CX-2170: Steps: EC Startup Report; Vendor Startup
- DC1-COD-L3-CX-2185: Steps: EC Startup Report; Vendor Startup
- DC1-COD-L3-CX-2200: Steps: EC Startup Report; Vendor Startup

| ID | WBS | Activity | Duration | Start | Finish | Predecessors | Complete | Planned start | Planned finish | Vendor Responsible Party | Layton Discipline | Location | CX Level | Equipment |
| --- | --- | --- | --- | --- | --- | --- | --- | --- | --- | --- | --- | --- | --- | --- |
|  | 03 | **DC1-DH1100-COD-C11-03 Cx L3** |  | 2026-05-04 | 2026-06-01 |  |  |  |  |  |  |  |  |  |
| DC1-COD-L3-CX-2210 |  | DC1-COD-C11-03 FTE | 1d | 2026-05-04 A | 2026-05-04 A | DC1-ATS-L3-CX-2210, DC1-COD-L2-2140 | 100% | 2026-05-20 | 2026-05-20 | ROS | Commissioning | DH1100 | L3 | COD |
| DC1-COD-L3-CX-2215 |  | DC1-COD-C11-03 L3 Startup | 2d | 2026-05-05 A | 2026-05-18 A | DC1-COD-L3-CX-2210 | 100% | 2026-05-05 | 2026-05-06 | SIE | Commissioning | DH1100 | L3 | COD |
| DC1-COD-L3-CX-2220 |  | DC1-COD-C11-03 BMS/EPMS Programming | 1d | 2026-06-01 A | 2026-06-01 A | DC1-COD-L3-CX-2215, QTS-1007140 | 100% | 2026-06-03 | 2026-06-03 | PRM | Commissioning | DH1100 | L3 | COD |
|  | 04 | **DC1-DH1100-COD-C11-04 Cx L3** |  | 2026-05-04 | 2026-06-01 |  |  |  |  |  |  |  |  |  |
| DC1-COD-L3-CX-2225 |  | DC1-COD-C11-04 FTE | 1d | 2026-05-04 A | 2026-05-04 A | DC1-ATS-L3-CX-2225, DC1-COD-L2-2150 | 100% | 2026-05-20 | 2026-05-20 | ROS | Commissioning | DH1100 | L3 | COD |
| DC1-COD-L3-CX-2230 |  | DC1-COD-C11-04 L3 Startup | 2d | 2026-05-05 A | 2026-05-18 A | DC1-COD-L3-CX-2225 | 100% | 2026-05-05 | 2026-05-06 | SIE | Commissioning | DH1100 | L3 | COD |
| DC1-COD-L3-CX-2235 |  | DC1-COD-C11-04 BMS/EPMS Programming | 1d | 2026-06-01 A | 2026-06-01 A | DC1-COD-L3-CX-2230, QTS-1007140 | 100% | 2026-06-03 | 2026-06-03 | PRM | Commissioning | DH1100 | L3 | COD |
|  | 05 | **DC1-DH1100-COD-C11-05 Cx L3** |  | 2026-05-04 | 2026-06-01 |  |  |  |  |  |  |  |  |  |
| DC1-COD-L3-CX-2240 |  | DC1-COD-C11-05 FTE | 1d | 2026-05-04 A | 2026-05-04 A | DC1-ATS-L3-CX-2240, DC1-COD-L2-2160 | 100% | 2026-05-20 | 2026-05-20 | ROS | Commissioning | DH1100 | L3 | COD |
| DC1-COD-L3-CX-2245 |  | DC1-COD-C11-05 L3 Startup | 2d | 2026-05-05 A | 2026-05-18 A | DC1-COD-L3-CX-2240 | 100% | 2026-05-05 | 2026-05-06 | SIE | Commissioning | DH1100 | L3 | COD |
| DC1-COD-L3-CX-2250 |  | DC1-COD-C11-05 BMS/EPMS Programming | 1d | 2026-06-01 A | 2026-06-01 A | DC1-COD-L3-CX-2245, QTS-1007140 | 100% | 2026-06-03 | 2026-06-03 | PRM | Commissioning | DH1100 | L3 | COD |
|  | 06 | **DC1-DH1100-COD-C11-06 Cx L3** |  | 2026-05-04 | 2026-06-01 |  |  |  |  |  |  |  |  |  |
| DC1-COD-L3-CX-2255 |  | DC1-COD-C11-06 FTE | 1d | 2026-05-04 A | 2026-05-04 A | DC1-ATS-L3-CX-2255, DC1-COD-L2-2170 | 100% | 2026-05-20 | 2026-05-20 | ROS | Commissioning | DH1100 | L3 | COD |
| DC1-COD-L3-CX-2260 |  | DC1-COD-C11-06 L3 Startup | 2d | 2026-05-05 A | 2026-05-18 A | DC1-COD-L3-CX-2255 | 100% | 2026-05-05 | 2026-05-06 | SIE | Commissioning | DH1100 | L3 | COD |
| DC1-COD-L3-CX-2265 |  | DC1-COD-C11-06 BMS/EPMS Programming | 1d | 2026-06-01 A | 2026-06-01 A | DC1-COD-L3-CX-2260, QTS-1007140 | 100% | 2026-06-03 | 2026-06-03 | PRM | Commissioning | DH1100 | L3 | COD |
|  | 04 | **DC1-DH1100-COD-D11 Cx L3** |  | 2026-05-04 | 2026-06-01 |  |  |  |  |  |  |  |  |  |
|  | 01 | **DC1-DH1100-COD-D11-01 Cx L3** |  | 2026-05-04 | 2026-06-01 |  |  |  |  |  |  |  |  |  |
| DC1-COD-L3-CX-2270 |  | DC1-COD-D11-01 FTE | 1d | 2026-05-04 A | 2026-05-04 A | DC1-ATS-L3-CX-2270, DC1-COD-L2-2180 | 100% | 2026-05-20 | 2026-05-20 | ROS | Commissioning | DH1100 | L3 | COD |
| DC1-COD-L3-CX-2275 |  | DC1-COD-D11-01 L3 Startup | 2d | 2026-05-05 A | 2026-05-18 A | DC1-COD-L3-CX-2270 | 100% | 2026-05-21 | 2026-05-22 | SIE | Commissioning | DH1100 | L3 | COD |
| DC1-COD-L3-CX-2280 |  | DC1-COD-D11-01 BMS/EPMS Programming | 1d | 2026-06-01 A | 2026-06-01 A | DC1-COD-L3-CX-2275, QTS-1007140 | 100% | 2026-06-03 | 2026-06-03 | PRM | Commissioning | DH1100 | L3 | COD |
|  | 02 | **DC1-DH1100-COD-D11-02 Cx L3** |  | 2026-05-04 | 2026-06-01 |  |  |  |  |  |  |  |  |  |
| DC1-COD-L3-CX-2285 |  | DC1-COD-D11-02 FTE | 1d | 2026-05-04 A | 2026-05-04 A | DC1-ATS-L3-CX-2285, DC1-COD-L2-2190 | 100% | 2026-05-20 | 2026-05-20 | ROS | Commissioning | DH1100 | L3 | COD |
| DC1-COD-L3-CX-2290 |  | DC1-COD-D11-02 L3 Startup | 2d | 2026-05-05 A | 2026-05-18 A | DC1-COD-L3-CX-2285 | 100% | 2026-05-21 | 2026-05-22 | SIE | Commissioning | DH1100 | L3 | COD |
| DC1-COD-L3-CX-2295 |  | DC1-COD-D11-02 BMS/EPMS Programming | 1d | 2026-06-01 A | 2026-06-01 A | DC1-COD-L3-CX-2290, QTS-1007140 | 100% | 2026-06-03 | 2026-06-03 | PRM | Commissioning | DH1100 | L3 | COD |

Notes:
- DC1-COD-L3-CX-2215: Steps: EC Startup Report; Vendor Startup
- DC1-COD-L3-CX-2230: Steps: EC Startup Report; Vendor Startup
- DC1-COD-L3-CX-2245: Steps: EC Startup Report; Vendor Startup
- DC1-COD-L3-CX-2260: Steps: EC Startup Report; Vendor Startup
- DC1-COD-L3-CX-2275: Steps: EC Startup Report; Vendor Startup
- DC1-COD-L3-CX-2290: Steps: EC Startup Report; Vendor Startup

| ID | WBS | Activity | Duration | Start | Finish | Predecessors | Complete | Planned start | Planned finish | Vendor Responsible Party | Layton Discipline | Location | CX Level | Equipment |
| --- | --- | --- | --- | --- | --- | --- | --- | --- | --- | --- | --- | --- | --- | --- |
|  | 03 | **DC1-DH1100-COD-D11-03 Cx L3** |  | 2026-05-04 | 2026-06-01 |  |  |  |  |  |  |  |  |  |
| DC1-COD-L3-CX-2300 |  | DC1-COD-D11-03 FTE | 1d | 2026-05-04 A | 2026-05-04 A | DC1-ATS-L3-CX-2300, DC1-COD-L2-2200 | 100% | 2026-05-20 | 2026-05-20 | ROS | Commissioning | DH1100 | L3 | COD |
| DC1-COD-L3-CX-2305 |  | DC1-COD-D11-03 L3 Startup | 2d | 2026-05-05 A | 2026-05-18 A | DC1-COD-L3-CX-2300 | 100% | 2026-05-21 | 2026-05-22 | SIE | Commissioning | DH1100 | L3 | COD |
| DC1-COD-L3-CX-2310 |  | DC1-COD-D11-03 BMS/EPMS Programming | 1d | 2026-06-01 A | 2026-06-01 A | DC1-COD-L3-CX-2305, QTS-1007140 | 100% | 2026-06-03 | 2026-06-03 | PRM | Commissioning | DH1100 | L3 | COD |
|  | 04 | **DC1-DH1100-COD-D11-04 Cx L3** |  | 2026-05-04 | 2026-06-01 |  |  |  |  |  |  |  |  |  |
| DC1-COD-L3-CX-2315 |  | DC1-COD-D11-04 FTE | 1d | 2026-05-04 A | 2026-05-04 A | DC1-ATS-L3-CX-2315, DC1-COD-L2-2210 | 100% | 2026-05-20 | 2026-05-20 | ROS | Commissioning | DH1100 | L3 | COD |
| DC1-COD-L3-CX-2320 |  | DC1-COD-D11-04 L3 Startup | 2d | 2026-05-05 A | 2026-05-18 A | DC1-COD-L3-CX-2315 | 100% | 2026-05-21 | 2026-05-22 | SIE | Commissioning | DH1100 | L3 | COD |
| DC1-COD-L3-CX-2325 |  | DC1-COD-D11-04 BMS/EPMS Programming | 1d | 2026-06-01 A | 2026-06-01 A | DC1-COD-L3-CX-2320, QTS-1007140 | 100% | 2026-06-03 | 2026-06-03 | PRM | Commissioning | DH1100 | L3 | COD |
|  | 05 | **DC1-DH1100-COD-D11-05 Cx L3** |  | 2026-05-04 | 2026-06-01 |  |  |  |  |  |  |  |  |  |
| DC1-COD-L3-CX-2330 |  | DC1-COD-D11-05 FTE | 1d | 2026-05-04 A | 2026-05-04 A | DC1-ATS-L3-CX-2330, DC1-COD-L2-2220 | 100% | 2026-05-20 | 2026-05-20 | ROS | Commissioning | DH1100 | L3 | COD |
| DC1-COD-L3-CX-2335 |  | DC1-COD-D11-05 L3 Startup | 2d | 2026-05-05 A | 2026-05-18 A | DC1-COD-L3-CX-2330 | 100% | 2026-05-21 | 2026-05-22 | SIE | Commissioning | DH1100 | L3 | COD |
| DC1-COD-L3-CX-2340 |  | DC1-COD-D11-05 BMS/EPMS Programming | 1d | 2026-06-01 A | 2026-06-01 A | DC1-COD-L3-CX-2335, QTS-1007140 | 100% | 2026-06-03 | 2026-06-03 | PRM | Commissioning | DH1100 | L3 | COD |
|  | 06 | **DC1-DH1100-COD-D11-06 Cx L3** |  | 2026-05-04 | 2026-06-01 |  |  |  |  |  |  |  |  |  |
| DC1-COD-L3-CX-2345 |  | DC1-COD-D11-06 FTE | 1d | 2026-05-04 A | 2026-05-04 A | DC1-ATS-L3-CX-2345, DC1-COD-L2-2230 | 100% | 2026-05-20 | 2026-05-20 | ROS | Commissioning | DH1100 | L3 | COD |
| DC1-COD-L3-CX-2350 |  | DC1-COD-D11-06 L3 Startup | 2d | 2026-05-05 A | 2026-05-18 A | DC1-COD-L3-CX-2345 | 100% | 2026-05-21 | 2026-05-22 | SIE | Commissioning | DH1100 | L3 | COD |
| DC1-COD-L3-CX-2355 |  | DC1-COD-D11-06 BMS/EPMS Programming | 1d | 2026-06-01 A | 2026-06-01 A | DC1-COD-L3-CX-2350, QTS-1007140 | 100% | 2026-06-03 | 2026-06-03 | PRM | Commissioning | DH1100 | L3 | COD |
|  | 05 | **DC1-DH1100-COD-E11 Cx L3** |  | 2026-05-05 | 2026-06-01 |  |  |  |  |  |  |  |  |  |
|  | 01 | **DC1-DH1100-ATS-E11-01 Cx L3** |  | 2026-05-05 | 2026-06-01 |  |  |  |  |  |  |  |  |  |
| DC1-COD-L3-CX-2360 |  | DC1-COD-E11-01 FTE | 1d | 2026-05-05 A | 2026-05-05 A | DC1-ATS-L3-CX-2360, DC1-COD-L2-2240 | 100% |  |  | ROS | Commissioning | DH1100 | L3 | COD |
| DC1-COD-L3-CX-2365 |  | DC1-COD-E11-01 L3 Startup | 2d | 2026-05-07 A | 2026-05-18 A | DC1-COD-L3-CX-2360 | 100% | 2026-05-07 | 2026-05-08 | SIE | Commissioning | DH1100 | L3 | COD |
| DC1-COD-L3-CX-2370 |  | DC1-COD-E11-01 BMS/EPMS Programming | 1d | 2026-06-01 A | 2026-06-01 A | DC1-COD-L3-CX-2365, QTS-1007140 | 100% | 2026-06-03 | 2026-06-03 | PRM | Commissioning | DH1100 | L3 | COD |
|  | 02 | **DC1-DH1100-ATS-E11-02 Cx L3** |  | 2026-05-05 | 2026-06-01 |  |  |  |  |  |  |  |  |  |
| DC1-COD-L3-CX-2375 |  | DC1-COD-E11-02 FTE | 1d | 2026-05-05 A | 2026-05-05 A | DC1-ATS-L3-CX-2375, DC1-COD-L2-2250 | 100% | 2026-05-20 | 2026-05-20 | ROS | Commissioning | DH1100 | L3 | COD |
| DC1-COD-L3-CX-2380 |  | DC1-COD-E11-02 L3 Startup | 2d | 2026-05-07 A | 2026-05-18 A | DC1-COD-L3-CX-2375 | 100% | 2026-05-21 | 2026-05-22 | SIE | Commissioning | DH1100 | L3 | COD |
| DC1-COD-L3-CX-2385 |  | DC1-COD-E11-02 BMS/EPMS Programming | 1d | 2026-06-01 A | 2026-06-01 A | DC1-COD-L3-CX-2380, QTS-1007140 | 100% | 2026-06-03 | 2026-06-03 | PRM | Commissioning | DH1100 | L3 | COD |

Notes:
- DC1-COD-L3-CX-2305: Steps: EC Startup Report; Vendor Startup
- DC1-COD-L3-CX-2320: Steps: EC Startup Report; Vendor Startup
- DC1-COD-L3-CX-2335: Steps: EC Startup Report; Vendor Startup
- DC1-COD-L3-CX-2350: Steps: EC Startup Report; Vendor Startup
- DC1-COD-L3-CX-2365: Steps: EC Startup Report; Vendor Startup
- DC1-COD-L3-CX-2380: Steps: EC Startup Report; Vendor Startup

| ID | WBS | Activity | Duration | Start | Finish | Predecessors | Complete | Planned start | Planned finish | Vendor Responsible Party | Layton Discipline | Location | CX Level | Equipment |
| --- | --- | --- | --- | --- | --- | --- | --- | --- | --- | --- | --- | --- | --- | --- |
|  | 03 | **DC1-DH1100-ATS-E11-03 Cx L3** |  | 2026-05-05 | 2026-06-01 |  |  |  |  |  |  |  |  |  |
| DC1-COD-L3-CX-2390 |  | DC1-COD-E11-03 FTE | 1d | 2026-05-05 A | 2026-05-05 A | DC1-ATS-L3-CX-2390, DC1-COD-L2-2260 | 100% | 2026-05-20 | 2026-05-20 | ROS | Commissioning | DH1100 | L3 | COD |
| DC1-COD-L3-CX-2395 |  | DC1-COD-E11-03 L3 Startup | 2d | 2026-05-07 A | 2026-05-18 A | DC1-COD-L3-CX-2390 | 100% | 2026-05-21 | 2026-05-22 | SIE | Commissioning | DH1100 | L3 | COD |
| DC1-COD-L3-CX-2400 |  | DC1-COD-E11-03 BMS/EPMS Programming | 1d | 2026-06-01 A | 2026-06-01 A | DC1-COD-L3-CX-2395, QTS-1007140 | 100% | 2026-06-03 | 2026-06-03 | PRM | Commissioning | DH1100 | L3 | COD |
|  | 04 | **DC1-DH1100-ATS-E11-04 Cx L3** |  | 2026-05-05 | 2026-06-01 |  |  |  |  |  |  |  |  |  |
| DC1-COD-L3-CX-2405 |  | DC1-COD-E11-04 FTE | 1d | 2026-05-05 A | 2026-05-05 A | DC1-ATS-L3-CX-2405, DC1-COD-L2-2270 | 100% | 2026-05-20 | 2026-05-20 | ROS | Commissioning | DH1100 | L3 | COD |
| DC1-COD-L3-CX-2410 |  | DC1-COD-E11-04 L3 Startup | 2d | 2026-05-07 A | 2026-05-18 A | DC1-COD-L3-CX-2405 | 100% | 2026-05-21 | 2026-05-22 | SIE | Commissioning | DH1100 | L3 | COD |
| DC1-COD-L3-CX-2415 |  | DC1-COD-E11-04 BMS/EPMS Programming | 1d | 2026-06-01 A | 2026-06-01 A | DC1-COD-L3-CX-2410, QTS-1007140 | 100% | 2026-06-03 | 2026-06-03 | PRM | Commissioning | DH1100 | L3 | COD |
|  | 05 | **DC1-DH1100-ATS-E11-05 Cx L3** |  | 2026-05-05 | 2026-06-01 |  |  |  |  |  |  |  |  |  |
| DC1-COD-L3-CX-2420 |  | DC1-COD-E11-05 FTE | 1d | 2026-05-05 A | 2026-05-05 A | DC1-ATS-L3-CX-2420, DC1-COD-L2-2280 | 100% | 2026-05-20 | 2026-05-20 | ROS | Commissioning | DH1100 | L3 | COD |
| DC1-COD-L3-CX-2425 |  | DC1-COD-E11-05 L3 Startup | 2d | 2026-05-07 A | 2026-05-18 A | DC1-COD-L3-CX-2420 | 100% | 2026-05-21 | 2026-05-22 | SIE | Commissioning | DH1100 | L3 | COD |
| DC1-COD-L3-CX-2430 |  | DC1-COD-E11-05 BMS/EPMS Programming | 1d | 2026-06-01 A | 2026-06-01 A | DC1-COD-L3-CX-2425, QTS-1007140 | 100% | 2026-06-03 | 2026-06-03 | PRM | Commissioning | DH1100 | L3 | COD |
|  | 06 | **DC1-DH1100-ATS-E11-06 Cx L3** |  | 2026-05-05 | 2026-06-01 |  |  |  |  |  |  |  |  |  |
| DC1-COD-L3-CX-2435 |  | DC1-COD-E11-06 FTE | 1d | 2026-05-05 A | 2026-05-05 A | DC1-ATS-L3-CX-2435, DC1-COD-L2-2290 | 100% | 2026-05-20 | 2026-05-20 | ROS | Commissioning | DH1100 | L3 | COD |
| DC1-COD-L3-CX-2440 |  | DC1-COD-E11-06 L3 Startup | 2d | 2026-05-07 A | 2026-05-18 A | DC1-COD-L3-CX-2435 | 100% | 2026-05-21 | 2026-05-22 | SIE | Commissioning | DH1100 | L3 | COD |
| DC1-COD-L3-CX-2445 |  | DC1-COD-E11-06 BMS/EPMS Programming | 1d | 2026-06-01 A | 2026-06-01 A | DC1-COD-L3-CX-2440, QTS-1007140 | 100% | 2026-06-03 | 2026-06-03 | PRM | Commissioning | DH1100 | L3 | COD |
|  | 06 | **DC1-DH1100-COD-F11 Cx L3** |  | 2026-05-05 | 2026-06-01 |  |  |  |  |  |  |  |  |  |
|  | 01 | **DC1-DH1100-COD-F11-01 Cx L3** |  | 2026-05-05 | 2026-06-01 |  |  |  |  |  |  |  |  |  |
| DC1-COD-L3-CX-2450 |  | DC1-COD-F11-01 FTE | 1d | 2026-05-05 A | 2026-05-05 A | DC1-ATS-L3-CX-2450, DC1-COD-L2-2300 | 100% | 2026-05-20 | 2026-05-20 | ROS | Commissioning | DH1100 | L3 | COD |
| DC1-COD-L3-CX-2455 |  | DC1-COD-F11-01 L3 Startup | 2d | 2026-05-07 A | 2026-05-18 A | DC1-COD-L3-CX-2450 | 100% | 2026-05-07 | 2026-05-08 | SIE | Commissioning | DH1100 | L3 | COD |
| DC1-COD-L3-CX-2460 |  | DC1-COD-F11-01 BMS/EPMS Programming | 1d | 2026-06-01 A | 2026-06-01 A | DC1-COD-L3-CX-2455, QTS-1007140 | 100% | 2026-06-03 | 2026-06-03 | PRM | Commissioning | DH1100 | L3 | COD |
|  | 02 | **DC1-DH1100-COD-F11-02 Cx L3** |  | 2026-05-05 | 2026-06-01 |  |  |  |  |  |  |  |  |  |
| DC1-COD-L3-CX-2465 |  | DC1-COD-F11-02 FTE | 1d | 2026-05-05 A | 2026-05-05 A | DC1-ATS-L3-CX-2465, DC1-COD-L2-2310 | 100% | 2026-05-20 | 2026-05-20 | ROS | Commissioning | DH1100 | L3 | COD |
| DC1-COD-L3-CX-2470 |  | DC1-COD-F11-02 L3 Startup | 2d | 2026-05-07 A | 2026-05-18 A | DC1-COD-L3-CX-2465 | 100% | 2026-05-21 | 2026-05-22 | SIE | Commissioning | DH1100 | L3 | COD |
| DC1-COD-L3-CX-2475 |  | DC1-COD-F11-02 BMS/EPMS Programming | 1d | 2026-06-01 A | 2026-06-01 A | DC1-COD-L3-CX-2470, QTS-1007140 | 100% | 2026-06-03 | 2026-06-03 | PRM | Commissioning | DH1100 | L3 | COD |

Notes:
- DC1-COD-L3-CX-2395: Steps: EC Startup Report; Vendor Startup
- DC1-COD-L3-CX-2410: Steps: EC Startup Report; Vendor Startup
- DC1-COD-L3-CX-2425: Steps: EC Startup Report; Vendor Startup
- DC1-COD-L3-CX-2440: Steps: EC Startup Report; Vendor Startup
- DC1-COD-L3-CX-2455: Steps: EC Startup Report; Vendor Startup
- DC1-COD-L3-CX-2470: Steps: EC Startup Report; Vendor Startup

| ID | WBS | Activity | Duration | Start | Finish | Predecessors | Complete | Planned start | Planned finish | Vendor Responsible Party | Layton Discipline | Location | CX Level | Equipment | Contract | Layton Super |
| --- | --- | --- | --- | --- | --- | --- | --- | --- | --- | --- | --- | --- | --- | --- | --- | --- |
|  | 03 | **DC1-DH1100-COD-F11-03 Cx L3** |  | 2026-05-05 | 2026-06-01 |  |  |  |  |  |  |  |  |  |  |  |
| DC1-COD-L3-CX-2480 |  | DC1-COD-F11-03 FTE | 1d | 2026-05-05 A | 2026-05-05 A | DC1-ATS-L3-CX-2480, DC1-COD-L2-2320 | 100% | 2026-05-20 | 2026-05-20 | ROS | Commissioning | DH1100 | L3 | COD |  |  |
| DC1-COD-L3-CX-2485 |  | DC1-COD-F11-03 L3 Startup | 2d | 2026-05-07 A | 2026-05-18 A | DC1-COD-L3-CX-2480 | 100% | 2026-05-21 | 2026-05-22 | SIE | Commissioning | DH1100 | L3 | COD |  |  |
| DC1-COD-L3-CX-2490 |  | DC1-COD-F11-03 BMS/EPMS Programming | 1d | 2026-06-01 A | 2026-06-01 A | DC1-COD-L3-CX-2485, QTS-1007140 | 100% | 2026-06-03 | 2026-06-03 | PRM | Commissioning | DH1100 | L3 | COD |  |  |
|  | 04 | **DC1-DH1100-COD-F11-04 Cx L3** |  | 2026-05-05 | 2026-06-01 |  |  |  |  |  |  |  |  |  |  |  |
| DC1-COD-L3-CX-2495 |  | DC1-COD-F11-04 FTE | 1d | 2026-05-05 A | 2026-05-05 A | DC1-ATS-L3-CX-2495, DC1-COD-L2-2330 | 100% | 2026-05-20 | 2026-05-20 | ROS | Commissioning | DH1100 | L3 | COD |  |  |
| DC1-COD-L3-CX-2500 |  | DC1-COD-F11-04 L3 Startup | 2d | 2026-05-07 A | 2026-05-18 A | DC1-COD-L3-CX-2495 | 100% | 2026-05-21 | 2026-05-22 | SIE | Commissioning | DH1100 | L3 | COD |  |  |
| DC1-COD-L3-CX-2505 |  | DC1-COD-F11-04 BMS/EPMS Programming | 1d | 2026-06-01 A | 2026-06-01 A | DC1-COD-L3-CX-2500, QTS-1007140 | 100% | 2026-06-03 | 2026-06-03 | PRM | Commissioning | DH1100 | L3 | COD |  |  |
|  | 05 | **DC1-DH1100-COD-F11-05 Cx L3** |  | 2026-05-05 | 2026-06-01 |  |  |  |  |  |  |  |  |  |  |  |
| DC1-COD-L3-CX-2510 |  | DC1-COD-F11-05 FTE | 1d | 2026-05-05 A | 2026-05-05 A | DC1-ATS-L3-CX-2510, DC1-COD-L2-2340 | 100% | 2026-05-20 | 2026-05-20 | ROS | Commissioning | DH1100 | L3 | COD |  |  |
| DC1-COD-L3-CX-2515 |  | DC1-COD-F11-05 L3 Startup | 2d | 2026-05-07 A | 2026-05-18 A | DC1-COD-L3-CX-2510 | 100% | 2026-05-21 | 2026-05-22 | SIE | Commissioning | DH1100 | L3 | COD |  |  |
| DC1-COD-L3-CX-2520 |  | DC1-COD-F11-05 BMS/EPMS Programming | 1d | 2026-06-01 A | 2026-06-01 A | DC1-COD-L3-CX-2515, QTS-1007140 | 100% | 2026-06-03 | 2026-06-03 | PRM | Commissioning | DH1100 | L3 | COD |  |  |
|  | 06 | **DC1-DH1100-COD-F11-06 Cx L3** |  | 2026-05-05 | 2026-06-01 |  |  |  |  |  |  |  |  |  |  |  |
| DC1-COD-L3-CX-2525 |  | DC1-COD-F11-06 FTE | 1d | 2026-05-05 A | 2026-05-05 A | DC1-ATS-L3-CX-2525, DC1-COD-L2-2350 | 100% | 2026-05-20 | 2026-05-20 | ROS | Commissioning | DH1100 | L3 | COD |  |  |
| DC1-COD-L3-CX-2530 |  | DC1-COD-F11-06 L3 Startup | 2d | 2026-05-07 A | 2026-05-18 A | DC1-COD-L3-CX-2525 | 100% | 2026-05-21 | 2026-05-22 | SIE | Commissioning | DH1100 | L3 | COD |  |  |
| DC1-COD-L3-CX-2535 |  | DC1-COD-F11-06 BMS/EPMS Programming | 1d | 2026-06-01 A | 2026-06-01 A | DC1-COD-L3-CX-2530, QTS-1007140 | 100% | 2026-06-03 | 2026-06-03 | PRM | Commissioning | DH1100 | L3 | COD |  |  |
|  | 07 | **DC1-DH1100 RPPs Cx L3** |  | 2026-05-01 | 2026-07-24 |  |  |  |  |  |  |  |  |  |  |  |
|  | 01 | **DC1-DH1100-RPP-A11 Cx L3** |  | 2026-05-01 | 2026-07-24 |  |  |  |  |  |  |  |  |  |  |  |
|  | 01 | **DC1-DH1100-RPP-A11-01 Cx L3** |  | 2026-05-05 | 2026-07-24 |  |  |  |  |  |  |  |  |  |  |  |
| DC1-RPP-L3-CX-2010 |  | DC1-RPP-A11-01 A/B BMS/EPMS Programming | 1d | 2026-05-05 A | 2026-05-05 A | QTS-1007140 | 100% |  |  | PRM | Commissioning | DH1100 | L3 | RPP |  |  |
| DC1-RPP-L3-CX-2000 |  | DC1-RPP-A11-01 A/B FTE | 1d | 2026-05-07 A | 2026-05-07 A | DC1-RPP-L2-2000, DC1-COD-L3-CX-2000 | 100% | 2026-06-03 | 2026-06-03 | ROS | Commissioning | DH1100 | L3 | RPP |  |  |
| DC1-RPP-L3-CX-2005 |  | DC1-RPP-A11-01 A/B L3 Startup | 2d | 2026-05-08 A | 2026-07-24 A | DC1-RPP-L3-CX-2000, QTS - 26611 | 100% | 2026-05-08 | 2026-05-11 | SQD | Commissioning | DH1100 | L3 | RPP | BAB |  |
|  | 02 | **DC1-DH1100-RPP-A11-02 Cx L3** |  | 2026-05-01 | 2026-07-24 |  |  |  |  |  |  |  |  |  |  |  |
| DC1-RPP-L3-CX-2015 |  | DC1-RPP-A11-02 A/B FTE | 1d | 2026-05-01 A | 2026-05-01 A | DC1-RPP-L2-2010, DC1-COD-L3-CX-2015 | 100% |  |  | ROS | Commissioning | DH1100 | L3 | RPP |  | Michael Guard |
| DC1-RPP-L3-CX-2025 |  | DC1-RPP-A11-02 A/B BMS/EPMS Programming | 1d | 2026-05-05 A | 2026-05-05 A | QTS-1007140 | 100% |  |  | PRM | Commissioning | DH1100 | L3 | RPP |  |  |
| DC1-RPP-L3-CX-2020 |  | DC1-RPP-A11-02 A/B L3 Startup | 2d | 2026-05-08 A | 2026-07-24 A | DC1-RPP-L3-CX-2015, QTS - 26611 | 100% | 2026-06-03 | 2026-06-04 | SQD | Commissioning | DH1100 | L3 | RPP | BAB |  |

Notes:
- DC1-COD-L3-CX-2485: Steps: EC Startup Report; Vendor Startup
- DC1-COD-L3-CX-2500: Steps: EC Startup Report; Vendor Startup
- DC1-COD-L3-CX-2515: Steps: EC Startup Report; Vendor Startup
- DC1-COD-L3-CX-2530: Steps: EC Startup Report; Vendor Startup
- DC1-RPP-L3-CX-2010: Schedulers Notes: 5/7/26 - RPP BMS/EPMS Checklist does not exist for all lineups / in DH1100 - actualized to remove from IST critical path
- DC1-RPP-L3-CX-2005: Steps: EC Startup Report; Vendor Startup
- DC1-RPP-L3-CX-2020: Steps: EC Startup Report; Vendor Startup
